# Infrastructure Works of Area J -3rd Industrial City-Dammam-Phase 2 - Part 2-Rev.01

How a schedule from Primavera P6 changed from version to version. A marks actual dates.

## Version 2 (data date 2025-01-12, saved 2026-11-04, file MOD3-J-2769-BL01-R01-106-Baseline.xer)

| ID | WBS | Task | Duration | Start | Finish | Predecessors | Total float | Constraint |
| --- | --- | --- | --- | --- | --- | --- | --- | --- |
|  | MS | **Key Milestones** |  | 2025-01-12 | 2027-01-11 |  |  |  |
|  | CM | **Contractual Milestones** |  | 2025-01-12 | 2027-01-11 |  |  |  |
| MS-CS-PS |  | Project Commencement Date ( Site Handover ) | 0d | 2025-01-12 | 2025-01-12 |  | 0d |  |
| MS-CF-EBL |  | Completion of Work Plan and Baseline Schedule | 0d | 2025-02-10 | 2025-02-10 | PRE-CON-MDC-20 FF, PRE-CON-MDC-30 FF, PRE-CON-MDC-40 FF, PRE-CON-MDC-50 FF, PRE-CON-MDC-60 FF, PRE-CON-MDC-70 FF, PRE-CON-MDC-80 FF | 0d | finish on or before 2025-02-11 |
| MS-CF-ENG |  | Completion of Submitting and Approval of Shopdrwing and Material | 0d | 2025-02-10 | 2025-02-10 | ENG-SH-PW-ML-A-110 FF, ENG-SH-SW-ML-A-110 FF, ENG-SH-SD-ML-A-110 FF, ENG-SH-SD-CB-A-110 FF, ENG-SH-IR-ML-A-110 FF, ENG-SH-IR-LL-A-110 FF, ENG-SH-SL-A-110 FF, ENG-SH-TE-A-110 FF, ENG-SH-MV-A-110 FF, ENG-SH-RD-A-130 FF, ENG-SH-MRK-A-110 FF, ENG-SH-HS-A-110 FF, ENG-SH-RD-A-110 FF, ENG-SH-RD-A-120 FF, ENG-MS-PW-ML-A-110 FF, ENG-MS-SW-ML-A-110 FF, ENG-MS-SD-ML-A-110 FF, ENG-MS-SD-CB-A-110 FF, ENG-MS-IR-ML-A-110 FF, ENG-MS-IR-LL-A-110 FF, ENG-MS-SL-A-110 FF, ENG-MS-TE-A-110 FF, ENG-MS-MV-A-110 FF, ENG-MS-RD-A-40 FF, ENG-MS-MRK-A-10 FF, ENG-MS-HS-A-10 FF, ENG-MS-RD-A-20 FF, ENG-MS-RD-A-30 FF, ENG-SH-PW-FH-A-110 FF, ENG-MT-SW-ML-A-110 FF, ENG-MT-SW-ML-A-100 FF, ENG-MT-SW-TF-A-100 FF, ENG-MT-SW-TF-A-120 FF, ENG-MT-SD-ML-A-100 FF, ENG-MT-SD-ML-A-110 FF, ENG-MT-SD-CB-A-110 FF, ENG-MT-SD-CB-A-100 FF, ENG-MT-SD-TF-A-100 FF, ENG-MT-SD-TF-A-110 FF, ENG-MT-SD-TF-A-120 FF, ENG-MT-PW-ML-A-100 FF, ENG-MT-PW-ML-A-110 FF, ENG-MT-PW-FH-A-100 FF, ENG-MT-PW-TF-A-100 FF, ENG-MT-IR-ML-A-100 FF, ENG-MT-IR-ML-A-110 FF, ENG-MT-MV-ML-A-100 FF, ENG-MT-MV-SS-A-100 FF, ENG-MT-MV-TF-A-100 FF, ENG-MT-SL-ML-A-100 FF, ENG-MT-SL-A-100 FF, ENG-MT-SL-A-110 FF, ENG-MT-SL-A-120 FF, ENG-MT-SL-DB-A-100 FF, ENG-MT-SL-TF-A-100 FF, ENG-MT-SL-TF-A-110 FF, ENG-MT-SL-ES-A-100 FF, ENG-MT-TE-A-100 FF, ENG-MT-TE-A-110 FF, ENG-MT-SPS-CV-A-110 FF, ENG-MT-DPO-CV-A-110 FF, ENG-MT-MV-A-10 FF, ENG-MT-SPS-MC-A-110 FF, ENG-MS-CTV-A-110 FF, ENG-SH-CTV-A-110 FF | 0d | finish on or before 2025-02-11 |
| MS-CF-MOB |  | Completion of Mobilization Works | 0d | 2025-03-09 | 2025-03-09 | MOB-30, MOB-40, MOB-50, MOB-60, MOB-70, MOB-80 FF | 0d | finish on or before 2025-03-09 |
| MS-CF-TE |  | Completion of Construction Works for Telecom Network | 0d | 2026-09-01 | 2026-09-01 | CO-R09.S01-TE-130, CO-R09.S01-TE-160, CO-R10.S03-ES-TE-130, CO-R10.S03-ES-TE-160, CO-R11.S05-TE-130, CO-R11.S05-TE-160, CO-R14.S07-TE-130, CO-R14.S07-TE-160, CO-R15.S09-TE-130, CO-R15.S09-TE-160, CO-R16.S11-TE-130, CO-R16.S11-TE-160, CO-R17.S13-TE-130, CO-R17.S13-TE-160, CO-R17.S14-TE-160 FF, CO-R17.S14-TE-130 FF, CO-R16.S12-TE-160 FF, CO-R16.S12-TE-130 FF, CO-R15.S10-TE-160 FF, CO-R15.S10-TE-130 FF, CO-R14.S08-TE-160 FF, CO-R14.S08-TE-130 FF, CO-R11.S06-TE-160 FF, CO-R11.S06-TE-130 FF, CO-R10.S04-ES-TE-130 FF, CO-R10.S04-ES-TE-160 FF, CO-R09.S02-TE-160 FF, CO-R10.S03-WE-TE-130, CO-R10.S03-WE-TE-160, CO-R10.S04-WE-TE-130 FF, CO-R10.S04-WE-TE-160 FF | 0d | finish on or before 2026-09-01 |
| MS-CF-SL |  | Completion of Construction Works for Street Lighting Network | 0d | 2026-10-15 | 2026-10-15 | CO-R09.S01-SL-120, CO-R09.S01-SL-130, CO-R09.S01-SL-160, CO-R09.S01-SL-180, CO-R09.S01-SL-190, CO-R09-SL-TF-100, CO-R09-SL-TF-110, CO-R09-SL-ES-100, CO-R09-SL-ES-110, CO-R18-SL-TF-120, CO-R18-SL-TF-130, CO-R10.S03-ES-SL-120, CO-R10.S03-ES-SL-130, CO-R10.S03-ES-SL-160, CO-R10.S03-ES-SL-180, CO-R10.S03-ES-SL-190, CO-R10-SL-TF-140, CO-R10-SL-TF-150, CO-R10-SL-ES-140, CO-R10-SL-ES-150, CO-R11-SL-TF-160, CO-R11-SL-TF-170, CO-R14.S07-SL-120, CO-R14.S07-SL-130, CO-R14.S07-SL-160, CO-R14.S07-SL-180, CO-R14.S07-SL-190, CO-R11-SL-TF-180, CO-R11-SL-TF-190, CO-R15-SL-TF-200, CO-R15-SL-TF-210, CO-R16-SL-TF-220, CO-R16-SL-TF-230, CO-R17-SL-TF-240, CO-R17-SL-TF-250, CO-R14.S08-SL-850 FF, CO-R09-SL-TF-380, CO-R10-SL-TF-380, CO-R11-SL-TF-380, CO-R14-SL-TF-380, CO-R15-SL-TF-380, CO-R16-SL-TF-380, CO-R17-SL-TF-380, CO-R18-SL-TF-380, CO-R15.S10-SL-130 FF, CO-R15.S10-SL-160 FF, CO-R15.S10-SL-190 FF, CO-R17.S14-SL-130 FF, CO-R17.S14-SL-160 FF, CO-R17.S14-SL-190 FF, CO-R18.S16-SL-130 FF, CO-R18.S16-SL-160 FF, CO-R18.S16-SL-190 FF, CO-R09.S02-SL-130 FF, CO-R10.S03-WE-SL-120, CO-R10.S03-WE-SL-130, CO-R10.S03-WE-SL-160, CO-R10.S03-WE-SL-180, CO-R10.S03-WE-SL-190 | 0d | finish on or before 2026-10-15 |
| MS-CF-IR |  | Completion of Construction Works for Irrigation Network | 0d | 2026-10-28 | 2026-10-28 | CO-R09.S01-IR-140, CO-R09-IR-TF-100, CO-R18-IR-TF-110, CO-R10.S03-ES-IR-130, CO-R10-IR-TF-120, CO-R11.S05-IR-130, CO-R11-IR-TF-130, CO-R14.S07-IR-130, CO-R11-IR-TF-140, CO-R15.S09-IR-130, CO-R15-IR-TF-150, CO-R16.S11-IR-130, CO-R16-IR-TF-160, CO-R17.S13-IR-130, CO-R17-IR-TF-170, CO-R10.S03-WE-IR-130 | 0d | finish on or before 2026-10-28 |
| MS-CF-MV |  | Completion of Construction Works for Medium Voltage Network | 0d | 2026-10-28 | 2026-10-28 | CO-R09.S01-MV-120, CO-R09-MV-TF-100, ENG-SH-MV-A-110, CO-R09.S01-EW-100, CO-R09.S01-EW-110, CO-R18-MV-TF-120, CO-R10.S03-ES-MV-120, CO-R10-MV-TF-140, CO-R10.S03-ES-EW-100, CO-R10.S03-ES-EW-110, CO-R11.S05-MV-120, CO-R11-MV-TF-160, CO-R11.S05-EW-100, CO-R11.S05-EW-110, CO-R11-MV-TF-180, CO-R14.S07-EW-100, CO-R14.S07-EW-110, CO-R15.S09-MV-ML-270, CO-R15-MV-TF-200, CO-R15.S09-EW-200, CO-R15.S09-EW-110, CO-R16.S11-MV-ML-300, CO-R16-MV-TF-220, CO-R16.S11-EW-100, CO-R16.S11-EW-110, CO-R17.S13-MV-ML-330, CO-R17-MV-TF-240, CO-R17.S13-EW-100, CO-R17.S13-EW-110, ENG-MS-MV-A-110, CO-R10.S03-WE-MV-120, CO-R10.S03-WE-EW-100, CO-R10.S03-WE-EW-110 | 0d | finish on or before 2026-10-28 |
| MS-CF-SW |  | Completion of Construction Works for Sewage Network | 0d | 2026-11-08 | 2026-11-08 | CO-R09.S01-SW-130, CO-R09-SW-TF-100, CO-R09-SW-TF-110, CO-R09-SW-TF-120, CO-R18-SW-TF-100, CO-R18-SW-TF-110, CO-R18-SW-TF-130, CO-R10-SW-TF-100, CO-R10-SW-TF-110, CO-R10-SW-TF-130, CO-R11.S05-SW-130, CO-R11-SW-TF-100, CO-R11-SW-TF-110, CO-R11-SW-TF-130, CO-R14.S07-SW-130, CO-R14-SW-TF-100, CO-R14-SW-TF-110, CO-R14-SW-TF-130, CO-R15.S09-SW-130, CO-R15-SW-TF-100, CO-R15-SW-TF-110, CO-R15-SW-TF-130, CO-R16.S11-SW-130, CO-R16-SW-TF-100, CO-R16-SW-TF-110, CO-R16-SW-TF-130, CO-R17.S13-SW-130, CO-R17-SW-TF-100, CO-R17-SW-TF-110, CO-R17-SW-TF-130, CO-R11.S06-SW-130 FF, CO-R14.S08-SW-130 FF, CO-R09.S02-SW-130 FF | 0d | finish on or before 2026-11-08 |
| MS-CF-PW |  | Completion of Construction Works for Potable Water Network | 0d | 2026-11-18 | 2026-11-18 | CO-R09-PW-TF-100, CO-R09-PW-TF-110, CO-R09-PW-TF-120, CO-R18-PW-TF-100, CO-R18-PW-TF-110, CO-R18-PW-TF-120, CO-R10.S03-ES-PW-130, CO-R10.S03-ES-PW-160, CO-R10-PW-TF-100, CO-R10-PW-TF-110, CO-R10-PW-TF-120, CO-R11-PW-TF-100, CO-R11-PW-TF-110, CO-R11-PW-TF-120, CO-R14-PW-TF-100, CO-R14-PW-TF-110, CO-R14-PW-TF-120, CO-R15-PW-TF-100, CO-R15-PW-TF-110, CO-R15-PW-TF-120, CO-R16-PW-TF-100, CO-R16-PW-TF-110, CO-R16-PW-TF-120, CO-R17-PW-TF-100, CO-R17-PW-TF-110, CO-R17-PW-TF-120, CO-R10.S03-WE-PW-130, CO-R10.S03-WE-PW-160 | 0d | finish on or before 2026-11-18 |
| MS-CF-SD |  | Completion of Construction Works for Storm Drainage Network | 0d | 2026-12-12 | 2026-12-12 | CO-R09.S01-SD-130, CO-R09.S01-SD-170, CO-R09-SD-TF-100, CO-R09-SD-TF-110, CO-R09-SD-TF-120, CO-R09-SD-TF-130, CO-R18-SD-TF-100, CO-R18-SD-TF-110, CO-R18-SD-TF-120, CO-R18-SD-TF-130, CO-R10.S03-ES-SD-130, CO-R10.S03-ES-SD-170, CO-R10-SD-TF-100, CO-R10-SD-TF-110, CO-R10-SD-TF-120, CO-R10-SD-TF-130, CO-R11.S05-SD-130, CO-R11.S05-SD-170, CO-R11-SD-TF-100, CO-R11-SD-TF-110, CO-R11-SD-TF-120, CO-R11-SD-TF-130, CO-R14.S07-SD-130, CO-R14.S07-SD-170, CO-R14-SD-TF-110, CO-R14-SD-TF-120, CO-R14-SD-TF-130, CO-R15.S09-SD-130, CO-R15.S09-SD-170, CO-R15-SD-TF-100, CO-R15-SD-TF-110, CO-R15-SD-TF-120, CO-R15-SD-TF-130, CO-R16.S11-SD-130, CO-R16.S11-SD-170, CO-R16-SD-TF-100, CO-R16-SD-TF-110, CO-R16-SD-TF-120, CO-R16-SD-TF-130, CO-R17.S13-SD-130, CO-R17.S13-SD-170, CO-R17-SD-TF-100, CO-R17-SD-TF-110, CO-R17-SD-TF-120, CO-R17-SD-TF-130, CO-R14-SD-TF-100, CO-R10.S03-WE-SD-130, CO-R10.S03-WE-SD-170 | 0d | finish on or before 2026-12-12 |
| MS-CF-RD |  | Completion of Construction Works for Road Works | 0d | 2026-12-28 | 2026-12-28 | CO-R09-S1-RD-F-150 FF, CO-R09-S2-RD-F-170 FF, CO-R18-S15-RD-F-130 FF, CO-R18-S16-RD-F-160 FF, CO-R10-S03-RD-F-100 FF, CO-R10-S04-RD-F-130 FF, CO-R11-S05-RD-F-100 FF, CO-R11-S06-RD-F-130 FF, CO-R11-S07-RD-F-100 FF, CO-R11-S08-RD-F-130 FF, CO-R15-S09-RD-F-100 FF, CO-R15-S10-RD-F-130 FF, CO-R16-S11-RD-F-100 FF, CO-R16-S12-RD-F-130 FF, CO-R17-S13-RD-F-100 FF, CO-R17-S14-RD-F-130 FF, CO-R09-S1-RD-F-140 FF, CO-R09-S2-RD-F-160 FF, CO-R18-S15-RD-F-120 FF, CO-R18-S16-RD-F-140 FF, CO-R10-S03-RD-F-160 FF, CO-R10-S04-RD-F-170 FF, CO-R11-S05-RD-F-160 FF, CO-R11-S06-RD-F-170 FF, CO-R11-S07-RD-F-160 FF, CO-R11-S08-RD-F-170 FF, CO-R15-S09-RD-F-160 FF, CO-R15-S10-RD-F-170 FF, CO-R16-S11-RD-F-160 FF, CO-R16-S12-RD-F-170 FF, CO-R17-S13-RD-F-160 FF, CO-R17-S14-RD-F-170 FF, CO-R18.S15-RD-P-150 FF, CO-R18.S16-RD-P-150 FF | 0d |  |
| MS-CF-PF |  | Project Completion Date | 0d | 2027-01-11 | 2027-01-11 | MS-CF-IR, MS-CF-SL, MS-CF-TE, MS-CF-RD, HO-120 FF, HO-230 FF, HO-220 FF, HO-280 FF, CO-RM-SW-310 FF | 0d |  |
|  | CM1 | **Control Milestones** |  | 2025-07-09 | 2026-06-21 |  |  |  |
| MS-CS-SW |  | The Employer Approval NOC for Sewage Network | 0d | 2025-07-09 | 2025-07-09 | CO-R09.S01-SW-100 SS | 35d |  |
| MS-CS-SD |  | The Employer Approval NOC for Storm Drainage Network | 0d | 2025-09-08 | 2025-09-08 | CO-R09.S01-SD-100 SS | 44.5d |  |
| MS-CS-PW |  | The Employer Approval NOC for Potable Water Network | 0d | 2025-11-03 | 2025-11-03 | CO-R09.S02-PW-100 SS | 111.5d |  |
| MS-CS-IR |  | The Employer Approval NOC for Irrigation Network | 0d | 2025-11-19 | 2025-11-19 | CO-R09.S01-IR-100 SS | 50.5d |  |
| MS-CS-SL |  | The Employer Approval NOC for Street Lighting Network | 0d | 2025-12-29 | 2025-12-29 | CO-R09.S01-SL-100 SS | 53.5d |  |
| MS-CS-MV |  | The Employer Approval NOC for Medium Voltage Network | 0d | 2026-02-14 | 2026-02-14 | CO-R09.S01-MV-100 SS | 52d |  |
| MS-CS-TE |  | The Employer Approval NOC for Telecom Network | 0d | 2026-05-03 | 2026-05-03 | CO-R09.S01-TE-100 SS | 10d |  |
| MS-CS-RD |  | The Employer Approval NOC for Roads Works | 0d | 2026-06-21 | 2026-06-21 | CO-R09.S01-RD-P-100 SS | 39d |  |
|  | MM | **Intermediate Milestones** |  | 2026-08-24 | 2026-12-28 |  |  |  |
| MS-MO-20 |  | Completion of Storm Drainage Ponds | 0d | 2026-08-24 | 2026-08-24 | CO-SD-PO-K2-130 | 100d |  |
| MS-MO-10 |  | Completion of Sewage Pump Stations | 0d | 2026-12-01 | 2026-12-01 | CO-SW-PS7-SWS-110 | 16d |  |
| MS-MO-30 |  | Completion of Tie In To Existing Networks | 0d | 2026-12-28 | 2026-12-28 | TIE-SD-R09 FF, TIE-SW-R09 FF, TIE-PW-R09 FF, TIE-IR-R09 FF, TIE-R09-MV FF, TIE-R09-SL FF, TIE-R09-TE FF, TIE-SD-R10 FF, TIE-SW-R10 FF, TIE-PW-R10 FF, TIE-IR-R10 FF, TIE-R10-MV FF, TIE-R10-SL FF, TIE-R10-TE FF, TIE-R10-RD FF, TIE-SD-R11 FF, TIE-SW-R11 FF, TIE-PW-R11 FF, TIE-IR-R11 FF, TIE-R11-MV FF, TIE-R11-SL FF, TIE-R11-TE FF, TIE-SD-R14 FF, TIE-SW-R14 FF, TIE-PW-R14 FF, TIE-IR-R14 FF, TIE-R14-MV FF, TIE-R14-SL FF, TIE-R14-TE FF, TIE-R14-RD FF, TIE-SD-R15 FF, TIE-SW-R15 FF, TIE-PW-R15 FF, TIE-IR-R15 FF, TIE-R15-MV FF, TIE-R15-SL FF, TIE-R15-TE FF, TIE-SD-R16 FF, TIE-SW-R16 FF, TIE-PW-R16 FF, TIE-IR-R16 FF, TIE-R16-MV FF, TIE-R16-SL FF, TIE-R16-TE FF, TIE-SD-R17 FF, TIE-SW-R17 FF, TIE-PW-R17 FF, TIE-IR-R17 FF, TIE-R17-MV FF, TIE-R17-SL FF, TIE-R17-TE FF | 3d |  |
|  | MOB | **Preliminaries and Mobilization Works** |  | 2025-01-12 | 2025-03-09 |  |  |  |
|  | MOB | **Mobilization Works** |  | 2025-01-12 | 2025-03-09 |  |  |  |
| MOB-10 |  | Clear and Grub for Offices and Access Roads | 24d | 2025-01-12 | 2025-02-08 | MS-CS-PS SS | 0d |  |
| MOB-20 |  | Project Site Layout Plan Approval | 24d | 2025-01-12 | 2025-02-08 | MS-CS-PS SS | 0d |  |
| MOB-30 |  | Supply & Install of Project Supervision Offices | 24d | 2025-02-09 | 2025-03-09 | MS-CS-PS SS, MOB-20, MOB-10 | 0d |  |
| MOB-40 |  | Construction Project Store & Temporary Fence | 24d | 2025-02-09 | 2025-03-09 | MOB-10 | 0d |  |
| MOB-50 |  | Mobilization of Major Manpower | 24d | 2025-02-09 | 2025-03-09 | MOB-20 | 0d |  |
| MOB-60 |  | Mobilization of Major Equipments | 24d | 2025-02-09 | 2025-03-09 | MOB-20 | 0d |  |
| MOB-70 |  | Installation Project Sign Board | 24d | 2025-02-09 | 2025-03-09 | MOB-10 | 0d |  |
| MOB-80 |  | Construction Site Access Roads | 24d | 2025-02-09 | 2025-03-09 | MOB-10 | 0d |  |
|  | 2 | **Project Documents Provision From The Employer** |  | 2025-01-12 | 2025-01-12 |  |  |  |
| PRE-EMP-MDC-10 |  | Receive of Approved Project Master Plans of works (IFC) From The Employer | 0d | 2025-01-12 | 2025-01-12 | PRE-EMP-MDC-20 SS | 0d |  |
| PRE-EMP-MDC-20 |  | Receive of Site Benchmark Coordinates (Original Point) From The Employer | 0d | 2025-01-12 | 2025-01-12 | MS-CS-PS SS | 0d |  |
| PRE-EMP-MDC-30 |  | Receive of Site Surveying Details From The Employer | 0d | 2025-01-12 | 2025-01-12 | PRE-EMP-MDC-20 SS | 0d |  |
|  | 1 | **Project Main Documents From The Contractor** |  | 2025-01-12 | 2025-02-10 |  |  |  |
| PRE-CON-MDC-20 |  | Submission Project Baseline Schedule | 26d | 2025-01-12 | 2025-02-10 | MS-CS-PS SS | 0d |  |
| PRE-CON-MDC-30 |  | Submission Project Health & Safety Plan | 26d | 2025-01-12 | 2025-02-10 | MS-CS-PS SS | 0d |  |
| PRE-CON-MDC-40 |  | Submission Project Quality Control Plan | 26d | 2025-01-12 | 2025-02-10 | MS-CS-PS SS | 0d |  |
| PRE-CON-MDC-50 |  | Submission Project Surveying Report | 26d | 2025-01-12 | 2025-02-10 | MS-CS-PS SS | 0d |  |
| PRE-CON-MDC-60 |  | Submission Project Geotechnical Soil Report | 26d | 2025-01-12 | 2025-02-10 | MS-CS-PS SS | 0d |  |
| PRE-CON-MDC-70 |  | Submission Project Environmental Plan | 26d | 2025-01-12 | 2025-02-10 | MS-CS-PS SS | 0d |  |
| PRE-CON-MDC-80 |  | Submission Project Organization Chart and Communications Plan | 26d | 2025-01-12 | 2025-02-10 | MS-CS-PS SS | 0d |  |
|  | ENG | **Engineering Works** |  | 2025-01-12 | 2025-02-16 |  |  |  |
|  | DS | **Design Reviews** |  | 2025-01-12 | 2025-01-21 |  |  |  |
|  | INF | **Infrastructure Networks** |  | 2025-01-12 | 2025-01-21 |  |  |  |
|  | RD | **Road Works** |  | 2025-01-12 | 2025-01-21 |  |  |  |
| ENG-DS-RD-S-100 |  | Receive of Design Drawing Package for Road Works from Modon | 6d | 2025-01-12 | 2025-01-18 | PRE-EMP-MDC-10, PRE-EMP-MDC-20, PRE-EMP-MDC-30 | 0d |  |
| ENG-DS-RD-A-110 |  | Review and Comment of Design Drawings for Road Works by Contractor | 6d | 2025-01-15 | 2025-01-21 | ENG-DS-RD-S-100 FF+3d, ENG-DS-RD-S-100 SS+3d | 0d |  |
|  | SW | **Sewage Network** |  | 2025-01-12 | 2025-01-21 |  |  |  |
| ENG-DS-SW-S-100 |  | Receive of Design Drawing Package for Sewage Network from Modon | 6d | 2025-01-12 | 2025-01-18 | PRE-EMP-MDC-10, PRE-EMP-MDC-20, PRE-EMP-MDC-30 | 0d |  |
| ENG-DS-SW-A-110 |  | Review and Comment of Design Drawings for Sewage Network by Contractor | 6d | 2025-01-15 | 2025-01-21 | ENG-DS-SW-S-100 FF+3d, ENG-DS-SW-S-100 SS+3d | 0d |  |
|  | SD | **Storm Drainage Network** |  | 2025-01-12 | 2025-01-21 |  |  |  |
| ENG-DS-SD-S-100 |  | Receive of Design Drawing Package for Storm Drainage Network from Modon | 6d | 2025-01-12 | 2025-01-18 | PRE-EMP-MDC-10, PRE-EMP-MDC-20, PRE-EMP-MDC-30 | 0d |  |
| ENG-DS-SD-A-110 |  | Review and Comment of Design Drawings for Storm Drainage Network by Contractor | 6d | 2025-01-15 | 2025-01-21 | ENG-DS-SD-S-100 FF+3d, ENG-DS-SD-S-100 SS+3d | 0d |  |
|  | PW | **Potable Water Network** |  | 2025-01-12 | 2025-01-21 |  |  |  |
| ENG-DS-PW-S-100 |  | Receive of Design Drawing Package for Potable Water Network from Modon | 6d | 2025-01-12 | 2025-01-18 | PRE-EMP-MDC-10, PRE-EMP-MDC-20 | 0d |  |
| ENG-DS-PW-A-110 |  | Review and Comment of Design Drawings for Potable Water Network by Contractor | 6d | 2025-01-15 | 2025-01-21 | ENG-DS-PW-S-100 FF+3d, ENG-DS-PW-S-100 SS+3d | 0d |  |
|  | IR | **Irrigation Network** |  | 2025-01-12 | 2025-01-21 |  |  |  |
| ENG-DS-IR-S-100 |  | Receive of Design Drawing Package for Irrigation Network from Modon | 6d | 2025-01-12 | 2025-01-18 | PRE-EMP-MDC-10, PRE-EMP-MDC-20, PRE-EMP-MDC-30 | 0d |  |
| ENG-DS-IR-A-110 |  | Review and Comment of Design Drawings for Irrigation Network by Contractor | 6d | 2025-01-15 | 2025-01-21 | ENG-DS-IR-S-100 FF+3d, ENG-DS-IR-S-100 SS+3d | 0d |  |
|  | MV | **Medium Voltage Network** |  | 2025-01-12 | 2025-01-21 |  |  |  |
| ENG-DS-MV-S-100 |  | Receive of Design Drawing Package for Medium Voltage Network from Modon | 6d | 2025-01-12 | 2025-01-18 | PRE-EMP-MDC-10, PRE-EMP-MDC-20, PRE-EMP-MDC-30 | 0d |  |

| ID | WBS | Task | Duration | Start | Finish | Predecessors | Total float |
| --- | --- | --- | --- | --- | --- | --- | --- |
| ENG-DS-MV-A-110 |  | Review and Comment of Design Drawings for Medium Voltage Network by Contractor | 6d | 2025-01-15 | 2025-01-21 | ENG-DS-MV-S-100 FF+3d, ENG-DS-MV-S-100 SS+3d | 0d |
|  | SL | **Street Lighting Network** |  | 2025-01-12 | 2025-01-21 |  |  |
| ENG-DS-SL-S-100 |  | Receive of Design Drawing Package for Street Lighting Network from Modon | 6d | 2025-01-12 | 2025-01-18 | PRE-EMP-MDC-10, PRE-EMP-MDC-20, PRE-EMP-MDC-30 | 0d |
| ENG-DS-SL-A-110 |  | Review and Comment of Design Drawings for Street Lighting Network by Contractor | 6d | 2025-01-15 | 2025-01-21 | ENG-DS-SL-S-100 FF+3d, ENG-DS-SL-S-100 SS+3d | 0d |
|  | TE | **Telecom Network** |  | 2025-01-12 | 2025-01-21 |  |  |
| ENG-DS-TE-S-100 |  | Receive of Design Drawing Package for Telecom Network from Modon | 6d | 2025-01-12 | 2025-01-18 | PRE-EMP-MDC-10, PRE-EMP-MDC-20, PRE-EMP-MDC-30 | 0d |
| ENG-DS-TE-A-110 |  | Review and Comment of Design Drawings for Telecom Network by Contractor | 6d | 2025-01-15 | 2025-01-21 | ENG-DS-TE-S-100 FF+3d, ENG-DS-TE-S-100 SS+3d | 0d |
|  | 1 | **Superstructure Works** |  | 2025-01-12 | 2025-01-21 |  |  |
|  | SL | **Sewage Pump Stations ( PS06 )** |  | 2025-01-12 | 2025-01-21 |  |  |
| ENG-DS-SPS-S-100 |  | Receive of Design Drawing Package for Sewage Pump Stations from Modon | 6d | 2025-01-12 | 2025-01-18 | PRE-EMP-MDC-10, PRE-EMP-MDC-20, PRE-EMP-MDC-30 | 88d |
| ENG-DS-SPS-A-110 |  | Review and Comment of Design Drawings for Sewage Pump Stations by Contractor | 6d | 2025-01-15 | 2025-01-21 | ENG-DS-SPS-S-100 FF+3d, ENG-DS-SPS-S-100 SS | 88d |
|  | TE | **Storm Drainage Ponds ( PO-J1 , PO-J2 )** |  | 2025-01-12 | 2025-01-21 |  |  |
| ENG-DS-DPO-S-100 |  | Receive of Design Drawing Package for Storm Drainage Ponds from Modon | 6d | 2025-01-12 | 2025-01-18 | PRE-EMP-MDC-10, PRE-EMP-MDC-20, PRE-EMP-MDC-30 | 100d |
| ENG-DS-DPO-A-110 |  | Review and Comment of Design Drawings for Storm Drainage Ponds by Contractor | 6d | 2025-01-15 | 2025-01-21 | ENG-DS-DPO-S-100 FF+3d, ENG-DS-DPO-S-100 SS | 100d |
|  | SD | **Shop Drawings** |  | 2025-01-22 | 2025-02-10 |  |  |
|  | INF | **Infrastructure Networks** |  | 2025-01-22 | 2025-02-10 |  |  |
|  | 10 | **Road Works** |  | 2025-01-22 | 2025-02-10 |  |  |
|  | 1 | **Road Pavement Works** |  | 2025-01-22 | 2025-02-10 |  |  |
| ENG-SH-RD-S-100 |  | Submission Shop Drawings for Plan and Profile of Road Works | 7d | 2025-01-22 | 2025-01-29 | ENG-DS-RD-A-110 | 2d |
| ENG-SH-RD-S-110 |  | Submission Shop Drawings for Roads Typical Sections and Pavement Details | 7d | 2025-01-22 | 2025-01-29 | ENG-DS-RD-A-110 | 0d |
| ENG-SH-RD-S-120 |  | Submission Shop Drawings of Extraover for Pedestrian ramps | 7d | 2025-01-22 | 2025-01-29 | ENG-DS-RD-A-110 | 0d |
| ENG-SH-RD-S-130 |  | Submission Shop Drawings for Intersections of Road Works | 7d | 2025-01-22 | 2025-01-29 | ENG-DS-RD-A-110 | 0d |
| ENG-SH-RD-A-100 |  | Approval Shop Drawings for Plan and Profile of Road Works | 8d | 2025-01-30 | 2025-02-08 | ENG-SH-RD-S-100 | 2d |
| ENG-SH-RD-A-110 |  | Approval Shop Drawings for Roads Typical Sections and Pavement Details | 10d | 2025-01-30 | 2025-02-10 | ENG-SH-RD-S-110 | 0d |
| ENG-SH-RD-A-120 |  | Approval Shop Drawings of Extraover for Pedestrian ramps | 10d | 2025-01-30 | 2025-02-10 | ENG-SH-RD-S-120 | 0d |
| ENG-SH-RD-A-130 |  | Approval Shop Drawings for Intersections of Road Works | 10d | 2025-01-30 | 2025-02-10 | ENG-SH-RD-S-130, ENG-SH-RD-A-100 FF | 0d |
|  | 10 | **Pavement Works** |  | 2025-01-22 | 2025-02-09 |  |  |
| ENG-SH-HS-S-100 |  | Submission Shop Drawings for Hardscaping Works | 6d | 2025-01-22 | 2025-01-28 | ENG-DS-RD-A-110 | 1d |
| ENG-SH-HS-A-110 |  | Approval Shop Drawings for Hardscaping Works | 10d | 2025-01-29 | 2025-02-09 | ENG-SH-HS-S-100 | 1d |
|  | 11 | **Traffic Sign Boards and Road Marking** |  | 2025-01-22 | 2025-02-09 |  |  |
| ENG-SH-MRK-S-110 |  | Submission Shop Drawings for Roads Markings | 6d | 2025-01-22 | 2025-01-28 | ENG-DS-RD-A-110 | 1d |
| ENG-SH-TSB-S-100 |  | Submission Shop Drawings for Traffic Signs Boards | 6d | 2025-01-22 | 2025-01-28 | ENG-DS-RD-A-110 | 1d |
| ENG-SH-MRK-A-110 |  | Approval Shop Drawings for Roads Markings | 10d | 2025-01-29 | 2025-02-09 | ENG-SH-MRK-S-110, ENG-SH-TSB-A-100 FF | 1d |
| ENG-SH-TSB-A-100 |  | Approval Shop Drawings for Traffic Signs Boards | 10d | 2025-01-29 | 2025-02-09 | ENG-SH-TSB-S-100 | 1d |
|  | 2 | **Sewage Network** |  | 2025-01-22 | 2025-02-04 |  |  |
|  | 1 | **Main Line Sections** |  | 2025-01-22 | 2025-02-04 |  |  |
| ENG-SH-SW-ML-S-100 |  | Submission Shop Drawings for Main Line of Sewage Network | 5d | 2025-01-22 | 2025-01-27 | ENG-DS-SW-A-110 | 0d |
| ENG-SH-SW-ML-A-110 |  | Approval Shop Drawings for Main Line of Sewage Network | 7d | 2025-01-28 | 2025-02-04 | ENG-SH-SW-ML-S-100 | 0d |
|  | 9 | **Storm Drainage Network** |  | 2025-01-22 | 2025-02-09 |  |  |
|  | 1 | **Main Line Sections** |  | 2025-01-22 | 2025-02-09 |  |  |
| ENG-SH-SD-ML-S-100 |  | Submission Shop Drawings for Main Line of Storm Drainage Network | 6d | 2025-01-22 | 2025-01-28 | ENG-DS-SD-A-110 | 1d |
| ENG-SH-SD-ML-A-110 |  | Approval Shop Drawings for Main Line of Storm Drainage Network | 10d | 2025-01-29 | 2025-02-09 | ENG-SH-SD-ML-S-100 | 1d |
|  | 2 | **Catch Basin Sections** |  | 2025-01-22 | 2025-02-09 |  |  |
| ENG-SH-SD-CB-S-100 |  | Submission Shop Drawings for Catch Basin of Storm Drainage Network | 6d | 2025-01-22 | 2025-01-28 | ENG-DS-SD-A-110 | 1d |
| ENG-SH-SD-CB-A-110 |  | Approval Shop Drawings for Catch Basin of Storm Drainage Network | 10d | 2025-01-29 | 2025-02-09 | ENG-SH-SD-CB-S-100 | 1d |
|  | 3 | **Potable Water Network** |  | 2025-01-22 | 2025-02-08 |  |  |
|  | 1 | **Main Line Sections** |  | 2025-01-22 | 2025-02-08 |  |  |
| ENG-SH-PW-ML-S-100 |  | Submission Shop Drawings for Main Line of Potable Water Network | 5d | 2025-01-22 | 2025-01-27 | ENG-DS-PW-A-110 | 2d |
| ENG-SH-PW-ML-A-110 |  | Approval Shop Drawings for Main Line of Potable Water Network | 10d | 2025-01-28 | 2025-02-08 | ENG-SH-PW-ML-S-100 | 2d |
|  | 1 | **Main Line Sections** |  |  |  |  |  |
|  | 2 | **Fire Hydrant** |  | 2025-01-22 | 2025-02-08 |  |  |
| ENG-SH-PW-FH-S-100 |  | Submission Shop Drawings for Fire Hydrant Network | 5d | 2025-01-22 | 2025-01-27 | ENG-DS-PW-A-110 | 2d |
| ENG-SH-PW-FH-A-110 |  | Approval Shop Drawings for Fire Hydrant Network | 10d | 2025-01-28 | 2025-02-08 | ENG-SH-PW-FH-S-100 | 2d |
|  | 1 | **Main Line Sections** |  |  |  |  |  |
|  | 4 | **Irrigation Network** |  | 2025-01-22 | 2025-02-09 |  |  |
|  | 1 | **Main Line Sections** |  | 2025-01-22 | 2025-02-09 |  |  |
| ENG-SH-IR-ML-S-100 |  | Submission Shop Drawings for Main Line of Irrigation Network | 6d | 2025-01-22 | 2025-01-28 | ENG-DS-IR-A-110 | 1d |
| ENG-SH-IR-ML-A-110 |  | Approval Shop Drawings for Main Line of Irrigation Network | 10d | 2025-01-29 | 2025-02-09 | ENG-SH-IR-ML-S-100 | 1d |
|  | 2 | **Lateral Line Sections** |  | 2025-01-22 | 2025-02-09 |  |  |
| ENG-SH-IR-LL-S-100 |  | Submission Shop Drawings for Lateral Line of Irrigation Network | 6d | 2025-01-22 | 2025-01-28 | ENG-DS-IR-A-110 | 1d |
| ENG-SH-IR-LL-A-110 |  | Approval Shop Drawings for Lateral Line of Irrigation Network | 10d | 2025-01-29 | 2025-02-09 | ENG-SH-IR-LL-S-100 | 1d |
|  | 5 | **Medium Voltage Network** |  | 2025-01-22 | 2025-02-09 |  |  |
| ENG-SH-MV-S-100 |  | Submission Shop Drawings for Medium Voltage Network | 6d | 2025-01-22 | 2025-01-28 | ENG-DS-MV-A-110 | 1d |
| ENG-SH-MV-A-110 |  | Approval Shop Drawings for Medium Voltage Network | 10d | 2025-01-29 | 2025-02-09 | ENG-SH-MV-S-100 | 1d |
|  | 7 | **Street Lighting Network** |  | 2025-01-22 | 2025-02-09 |  |  |
| ENG-SH-SL-S-100 |  | Submission Shop Drawings for Street Lighting Network | 6d | 2025-01-22 | 2025-01-28 | ENG-DS-SL-A-110 | 1d |
| ENG-SH-SL-A-110 |  | Approval Shop Drawings for Street Lighting Network | 10d | 2025-01-29 | 2025-02-09 | ENG-SH-SL-S-100 | 1d |
|  | 8 | **Telecom Network** |  | 2025-01-22 | 2025-02-09 |  |  |
| ENG-SH-CTV-S-100 |  | Submission Shop Drawings for CCTV Complete System | 6d | 2025-01-22 | 2025-01-28 | ENG-DS-TE-A-110 | 1d |
| ENG-SH-TE-S-100 |  | Submission Shop Drawings for Telecom Network | 6d | 2025-01-22 | 2025-01-28 | ENG-DS-TE-A-110 | 1d |

| ID | WBS | Task | Duration | Start | Finish | Predecessors | Total float |
| --- | --- | --- | --- | --- | --- | --- | --- |
| ENG-SH-CTV-A-110 |  | Approval Shop Drawings for CCTV Complete System | 10d | 2025-01-29 | 2025-02-09 | ENG-SH-CTV-S-100 | 1d |
| ENG-SH-TE-A-110 |  | Approval Shop Drawings for Telecom Network | 10d | 2025-01-29 | 2025-02-09 | ENG-SH-TE-S-100 | 1d |
|  | 1 | **Superstructure Works** |  | 2025-01-22 | 2025-02-10 |  |  |
|  | SL | **Sewage Pump Stations ( PS 06 )** |  | 2025-01-22 | 2025-02-10 |  |  |
| ENG-SH-SPS-S-110 |  | Submission Shop Drawings Package for Sewage Pump Stations | 7d | 2025-01-22 | 2025-01-29 | ENG-DS-SPS-A-110 | 88d |
| ENG-SH-SPS-A-110 |  | Approval Shop Drawings Package for Sewage Pump Stations | 10d | 2025-01-30 | 2025-02-10 | ENG-SH-SPS-S-110 | 88d |
|  | TE | **Storm Drainage Ponds ( PO-J1 , PO-J2 )** |  | 2025-01-22 | 2025-02-10 |  |  |
| ENG-SH-DPO-S-100 |  | Submission Shop Drawings Package for Storm Drainage Ponds | 7d | 2025-01-22 | 2025-01-29 | ENG-DS-DPO-A-110 | 100d |
| ENG-SH-DPO-A-110 |  | Approval Shop Drawings Package for Storm Drainage Ponds | 10d | 2025-01-30 | 2025-02-10 | ENG-SH-DPO-S-100 | 100d |
|  | SD1 | **Method Statements** |  | 2025-01-22 | 2025-02-10 |  |  |
|  | INF | **Infrastructure Networks** |  | 2025-01-22 | 2025-02-10 |  |  |
|  | 10 | **Road Works** |  | 2025-01-22 | 2025-02-10 |  |  |
|  | 1 | **Road Pavement Works** |  | 2025-01-22 | 2025-02-10 |  |  |
| ENG-MS-RD-S-10 |  | Submission Method Statement for Plan and Profile of Road Works | 7d | 2025-01-22 | 2025-01-29 | ENG-DS-RD-A-110 | 2d |
| ENG-MS-RD-S-20 |  | Submission Method Statement for Roads Typical Sections and Pavement Details | 7d | 2025-01-22 | 2025-01-29 | ENG-DS-RD-A-110 | 0d |
| ENG-MS-RD-S-30 |  | Submission Method Statement of Extraover for Pedestrian ramps | 7d | 2025-01-22 | 2025-01-29 | ENG-DS-RD-A-110 | 0d |
| ENG-MS-RD-S-40 |  | Submission Method Statement for Intersections of Road Works | 7d | 2025-01-22 | 2025-01-29 | ENG-DS-RD-A-110 | 0d |
| ENG-MS-RD-A-10 |  | Approval Method Statement for Plan and Profile of Road Works | 8d | 2025-01-30 | 2025-02-08 | ENG-MS-RD-S-10 | 2d |
| ENG-MS-RD-A-20 |  | Approval Method Statement for Roads Typical Sections and Pavement Details | 10d | 2025-01-30 | 2025-02-10 | ENG-MS-RD-S-20 | 0d |
| ENG-MS-RD-A-30 |  | Approval Method Statement of Extraover for Pedestrian ramps | 10d | 2025-01-30 | 2025-02-10 | ENG-MS-RD-S-30 | 0d |
| ENG-MS-RD-A-40 |  | Approval Method Statement for Intersections of Road Works | 10d | 2025-01-30 | 2025-02-10 | ENG-MS-RD-S-40, ENG-MS-RD-A-10 FF | 0d |
|  | 10 | **Pavement Works** |  | 2025-01-22 | 2025-02-10 |  |  |
| ENG-MS-HS-S-10 |  | Submission Method Statement for Hardscaping Works | 7d | 2025-01-22 | 2025-01-29 | ENG-DS-RD-A-110 | 0d |
| ENG-MS-HS-A-10 |  | Approval Method Statement for Hardscaping Works | 10d | 2025-01-30 | 2025-02-10 | ENG-MS-HS-S-10 | 0d |
|  | 11 | **Traffic Sign Boards and Road Marking** |  | 2025-01-22 | 2025-02-10 |  |  |
| ENG-MS-MRK-S-10 |  | Submission Method Statement for Roads Markings | 7d | 2025-01-22 | 2025-01-29 | ENG-DS-RD-A-110 | 0d |
| ENG-MS-TSB-S-10 |  | Submission Method Statement for Traffic Signs Boards | 7d | 2025-01-22 | 2025-01-29 | ENG-DS-RD-A-110 | 0d |
| ENG-MS-MRK-A-10 |  | Approval Method Statement for Roads Markings | 10d | 2025-01-30 | 2025-02-10 | ENG-MS-MRK-S-10, ENG-MS-TSB-A-10 FF | 0d |
| ENG-MS-TSB-A-10 |  | Approval Method Statement for Traffic Signs Boards | 10d | 2025-01-30 | 2025-02-10 | ENG-MS-TSB-S-10 | 0d |
|  | 2 | **Sewage Network** |  | 2025-01-22 | 2025-02-04 |  |  |
|  | 1 | **Main Line Sections** |  | 2025-01-22 | 2025-02-04 |  |  |
| ENG-MS-SW-ML-S-100 |  | Submission Method Statement for Main Line of Sewage Network | 5d | 2025-01-22 | 2025-01-27 | ENG-DS-SW-A-110 | 0d |
| ENG-MS-SW-ML-A-110 |  | Approval Method Statement for Main Line of Sewage Network | 7d | 2025-01-28 | 2025-02-04 | ENG-MS-SW-ML-S-100 | 0d |
|  | 9 | **Storm Drainage Network** |  | 2025-01-22 | 2025-02-09 |  |  |
|  | 1 | **Main Line Sections** |  | 2025-01-22 | 2025-02-09 |  |  |
| ENG-MS-SD-ML-S-100 |  | Submission Method Statement for Main Line of Storm Drainage Network | 6d | 2025-01-22 | 2025-01-28 | ENG-DS-SD-A-110 | 1d |
| ENG-MS-SD-ML-A-110 |  | Approval Method Statement for Main Line of Storm Drainage Network | 10d | 2025-01-29 | 2025-02-09 | ENG-MS-SD-ML-S-100 | 1d |
|  | 2 | **Catch Basin Sections** |  | 2025-01-22 | 2025-02-09 |  |  |
| ENG-MS-SD-CB-S-100 |  | Submission Method Statement for Catch Basin of Storm Drainage Network | 6d | 2025-01-22 | 2025-01-28 | ENG-DS-SD-A-110 | 1d |
| ENG-MS-SD-CB-A-110 |  | Approval Method Statement for Catch Basin of Storm Drainage Network | 10d | 2025-01-29 | 2025-02-09 | ENG-MS-SD-CB-S-100 | 1d |
|  | 3 | **Potable Water Network** |  | 2025-01-22 | 2025-02-08 |  |  |
|  | 1 | **Main Line Sections** |  | 2025-01-22 | 2025-02-08 |  |  |
| ENG-MS-PW-ML-S-100 |  | Submission Method Statement for Main Line of Potable Water Network | 5d | 2025-01-22 | 2025-01-27 | ENG-DS-PW-A-110 | 2d |
| ENG-MS-PW-ML-A-110 |  | Approval Method Statement for Main Line of Potable Water Network | 10d | 2025-01-28 | 2025-02-08 | ENG-MS-PW-ML-S-100 | 2d |
|  | 4 | **Irrigation Network** |  | 2025-01-22 | 2025-02-09 |  |  |
|  | 1 | **Main Line Sections** |  | 2025-01-22 | 2025-02-09 |  |  |
| ENG-MS-IR-ML-S-100 |  | Submission Method Statement for Main Line of Irrigation Network | 6d | 2025-01-22 | 2025-01-28 | ENG-DS-IR-A-110 | 1d |
| ENG-MS-IR-ML-A-110 |  | Approval Method Statement for Main Line of Irrigation Network | 10d | 2025-01-29 | 2025-02-09 | ENG-MS-IR-ML-S-100 | 1d |
|  | 2 | **Lateral Line Sections** |  | 2025-01-22 | 2025-02-09 |  |  |
| ENG-MS-IR-LL-S-100 |  | Submission Method Statement for Lateral Line of Irrigation Network | 6d | 2025-01-22 | 2025-01-28 | ENG-DS-IR-A-110 | 1d |
| ENG-MS-IR-LL-A-110 |  | Approval Method Statement for Lateral Line of Irrigation Network | 10d | 2025-01-29 | 2025-02-09 | ENG-MS-IR-LL-S-100 | 1d |
|  | 5 | **Medium Voltage Network** |  | 2025-01-22 | 2025-02-09 |  |  |
| ENG-MS-MV-S-100 |  | Submission Method Statement for Medium Voltage Network | 6d | 2025-01-22 | 2025-01-28 | ENG-DS-MV-A-110 | 1d |
| ENG-MS-MV-A-110 |  | Approval Method Statement for Medium Voltage Network | 10d | 2025-01-29 | 2025-02-09 | ENG-MS-MV-S-100 | 1d |
|  | 7 | **Street Lighting Network** |  | 2025-01-22 | 2025-02-09 |  |  |
| ENG-MS-SL-S-100 |  | Submission Method Statement for Street Lighting Network | 6d | 2025-01-22 | 2025-01-28 | ENG-DS-SL-A-110 | 1d |
| ENG-MS-SL-A-110 |  | Approval Method Statement for Street Lighting Network | 10d | 2025-01-29 | 2025-02-09 | ENG-MS-SL-S-100 | 1d |
|  | 8 | **Telecom Network** |  | 2025-01-22 | 2025-02-09 |  |  |
| ENG-MS-CTV-S-100 |  | Submission Method Statement for CCTV Complete System | 6d | 2025-01-22 | 2025-01-28 | ENG-DS-TE-A-110 | 1d |
| ENG-MS-TE-S-100 |  | Submission Method Statement for Telecom Network | 6d | 2025-01-22 | 2025-01-28 | ENG-DS-TE-A-110 | 1d |
| ENG-MS-CTV-A-110 |  | Approval Method Statement for CCTV Complete System | 10d | 2025-01-29 | 2025-02-09 | ENG-MS-CTV-S-100 | 1d |
| ENG-MS-TE-A-110 |  | Approval Method Statement for Telecom Network | 10d | 2025-01-29 | 2025-02-09 | ENG-MS-TE-S-100 | 1d |
|  | 1 | **Superstructure Works** |  | 2025-01-22 | 2025-02-10 |  |  |
|  | SL | **Sewage Pump Stations ( PS 06 )** |  | 2025-01-22 | 2025-02-10 |  |  |
| ENG-MS-SPS-S-100 |  | Submission Method Statement Package for Sewage Pump Stations | 7d | 2025-01-22 | 2025-01-29 | ENG-DS-SPS-A-110 | 88d |
| ENG-MS-SPS-A-110 |  | Approval Method Statement Package for Sewage Pump Stations | 10d | 2025-01-30 | 2025-02-10 | ENG-MS-SPS-S-100 | 88d |
|  | TE | **Storm Drainage Ponds ( PO-J1 , PO-J2 )** |  | 2025-01-22 | 2025-02-10 |  |  |
| ENG-MS-DPO-S-100 |  | Submission Method Statement Package for Storm Drainage Ponds | 7d | 2025-01-22 | 2025-01-29 | ENG-DS-DPO-A-110 | 100d |
| ENG-MS-DPO-A-110 |  | Approval Method Statement Package for Storm Drainage Ponds | 10d | 2025-01-30 | 2025-02-10 | ENG-MS-DPO-S-100 | 100d |
|  | SD11 | **Material Submittals** |  | 2025-01-22 | 2025-02-16 |  |  |

| ID | WBS | Task | Duration | Start | Finish | Predecessors | Total float |
| --- | --- | --- | --- | --- | --- | --- | --- |
|  | 2 | **Short Lead Time Items** |  | 2025-01-22 | 2025-02-16 |  |  |
|  | INF | **Infrastructure Networks** |  | 2025-01-22 | 2025-02-16 |  |  |
|  | 10 | **Road Works** |  | 2025-01-22 | 2025-02-16 |  |  |
|  | MS | **Submission of Material** |  | 2025-01-22 | 2025-02-04 |  |  |
|  | 1 | **Roads Works** |  | 2025-01-22 | 2025-02-04 |  |  |
| ENG-MT-RD-S-100 |  | Material Submittal for Subgrade of Road Works | 12d | 2025-01-22 | 2025-02-04 | ENG-DS-RD-A-110 | 29d |
| ENG-MT-RD-S-110 |  | Material Submittal for Aggregate Base Course of Road Works | 12d | 2025-01-22 | 2025-02-04 | ENG-DS-RD-A-110 | 35d |
| ENG-MT-RD-S-120 |  | Material Submittal for Prime Coat of Road Works | 12d | 2025-01-22 | 2025-02-04 | ENG-DS-RD-A-110 | 113d |
| ENG-MT-RD-S-130 |  | Material Submittal for Bituminous Base & Wearing Courses of Road Works | 12d | 2025-01-22 | 2025-02-04 | ENG-DS-RD-A-110 | 139d |
|  | 10 | **Pavement Works** |  | 2025-01-22 | 2025-02-04 |  |  |
| ENG-MT-RD-S-140 |  | Material Submittal for Interlock Tiles of Landscaping | 12d | 2025-01-22 | 2025-02-04 | ENG-DS-RD-A-110 | 56d |
| ENG-MT-RD-S-150 |  | Material Submittal for Curbstones of Landscaping | 12d | 2025-01-22 | 2025-02-04 | ENG-DS-RD-A-110 | 82d |
|  | 11 | **Traffic Signs Boards and Roads Marking** |  | 2025-01-22 | 2025-02-04 |  |  |
| ENG-MT-TS-S-100 |  | Material Submittal for Traffic Signs Boards of Road Works | 12d | 2025-01-22 | 2025-02-04 | ENG-DS-RD-A-110 | 140d |
| ENG-MT-TS-S-110 |  | Material Submittal for Road Markings of Road Works | 12d | 2025-01-22 | 2025-02-04 | ENG-DS-RD-A-110 | 166d |
|  | NA | **Approval of Material** |  | 2025-02-05 | 2025-02-16 |  |  |
|  | 1 | **Road Works** |  | 2025-02-05 | 2025-02-10 |  |  |
| ENG-MT-RD-A-100 |  | Material Approval for Subgrade of Road Works | 5d | 2025-02-05 | 2025-02-10 | ENG-MT-RD-S-100 | 29d |
| ENG-MT-RD-A-110 |  | Material Approval for Aggregate Base Course of Road Works | 5d | 2025-02-05 | 2025-02-10 | ENG-MT-RD-S-110 | 35d |
| ENG-MT-RD-A-120 |  | Material Approval for Prime Coat of Road Works | 5d | 2025-02-05 | 2025-02-10 | ENG-MT-RD-S-120 | 113d |
| ENG-MT-RD-A-130 |  | Material Approval for Bituminous Base & Wearing Courses of Road Works | 5d | 2025-02-05 | 2025-02-10 | ENG-MT-RD-S-130 | 139d |
|  | 2 | **Pavement Works** |  | 2025-02-05 | 2025-02-16 |  |  |
| ENG-MT-RD-A-140 |  | Material Approval of Interlock Tiles for Landscaping | 10d | 2025-02-05 | 2025-02-16 | ENG-MT-RD-S-140 | 56d |
| ENG-MT-RD-A-150 |  | Material Approval of Curbstones for Landscaping | 10d | 2025-02-05 | 2025-02-16 | ENG-MT-RD-S-150 | 82d |
|  | 3 | **Traffic Signs Boards and Roads Marking** |  | 2025-02-05 | 2025-02-16 |  |  |
| ENG-MT-TS-A-100 |  | Material Approval for Traffic Signs Boards of Road Works | 10d | 2025-02-05 | 2025-02-16 | ENG-MT-TS-S-100 | 140d |
| ENG-MT-TS-A-110 |  | Material Approval for Road Markings of Road Works | 10d | 2025-02-05 | 2025-02-16 | ENG-MT-TS-S-110 | 166d |
|  | 2 | **Sewage Network** |  | 2025-01-22 | 2025-02-10 |  |  |
|  | MS | **Submission of Material** |  | 2025-01-22 | 2025-01-29 |  |  |
|  | 1 | **Main Line Sections** |  | 2025-01-22 | 2025-01-29 |  |  |
| ENG-MT-SW-ML-S-100 |  | Material Submittal for Manholes of Sewage Network | 5d | 2025-01-22 | 2025-01-27 | ENG-DS-SW-A-110 | 1d |
| ENG-MT-SW-ML-S-110 |  | Material Submittal for Main Line Pipes of Sewage Network | 7d | 2025-01-22 | 2025-01-29 | ENG-DS-SW-A-110 | 0d |
|  | 3 | **Testing and Finishes** |  | 2025-01-22 | 2025-01-29 |  |  |
| ENG-MT-SW-TF-S-100 |  | Material Submittal for Manhole Covers of Sewage Network | 7d | 2025-01-22 | 2025-01-29 | ENG-DS-SW-A-110 | 0d |
| ENG-MT-SW-TF-S-120 |  | Material Submittal for Membrane Insulation of Sewage Network | 7d | 2025-01-22 | 2025-01-29 | ENG-DS-SW-A-110 | 0d |
|  | MA | **Approval of Material** |  | 2025-01-28 | 2025-02-10 |  |  |
|  | 1 | **Main Line Sections** |  | 2025-01-28 | 2025-02-10 |  |  |
| ENG-MT-SW-ML-A-100 |  | Material Approval for Manholes of Sewage Network | 6d | 2025-01-28 | 2025-02-03 | ENG-MT-SW-ML-S-100 | 1d |
| ENG-MT-SW-ML-A-110 |  | Material Approval for Main Line Pipes of Sewage Network | 10d | 2025-01-30 | 2025-02-10 | ENG-MT-SW-ML-S-110 | 0d |
|  | 3 | **Testing and Finishes** |  | 2025-01-30 | 2025-02-10 |  |  |
| ENG-MT-SW-TF-A-100 |  | Material Approval for Manhole Covers of Sewage Network | 10d | 2025-01-30 | 2025-02-10 | ENG-MT-SW-TF-S-100 | 0d |
| ENG-MT-SW-TF-A-120 |  | Material Approval for Membrane Insulation of Sewage Network | 10d | 2025-01-30 | 2025-02-10 | ENG-MT-SW-TF-S-120 | 0d |
|  | 9 | **Storm Drainage Network** |  | 2025-01-22 | 2025-02-10 |  |  |
|  | MS | **Submission of Material** |  | 2025-01-22 | 2025-01-29 |  |  |
|  | 1 | **Main Line Sections** |  | 2025-01-22 | 2025-01-29 |  |  |
| ENG-MT-SD-ML-S-100 |  | Material Submittal for Manholes of Storm Drainage Network | 7d | 2025-01-22 | 2025-01-29 | ENG-DS-SD-A-110 | 0d |
| ENG-MT-SD-ML-S-110 |  | Material Submittal for Main Line Pipes of Storm Drainage Network | 7d | 2025-01-22 | 2025-01-29 | ENG-DS-SD-A-110 | 0d |
|  | 2 | **Catch Basin Sections** |  | 2025-01-22 | 2025-01-29 |  |  |
| ENG-MT-SD-CB-S-100 |  | Material Submittal for Catch Basins of Storm Drainage Network | 7d | 2025-01-22 | 2025-01-29 | ENG-DS-SD-A-110 | 0d |
| ENG-MT-SD-CB-S-110 |  | Material Submittal for Catch Basin Pipes of Storm Drainage Network | 7d | 2025-01-22 | 2025-01-29 | ENG-DS-SD-A-110 | 0d |
|  | 3 | **Testing and Finishes** |  | 2025-01-22 | 2025-01-29 |  |  |
| ENG-MT-SD-TF-S-100 |  | Material Submittal for Manhole Covers of Storm Drainage Network | 7d | 2025-01-22 | 2025-01-29 | ENG-DS-SD-A-110 | 0d |
| ENG-MT-SD-TF-S-110 |  | Material Submittal for Catch Basin Covers of Storm Drainage Network | 7d | 2025-01-22 | 2025-01-29 | ENG-DS-SD-A-110 | 0d |
| ENG-MT-SD-TF-S-120 |  | Material Submittal for Epoxy Insulation of Storm Drainage Network | 7d | 2025-01-22 | 2025-01-29 | ENG-DS-SD-A-110 | 0d |
|  | MA | **Approval of Material** |  | 2025-01-30 | 2025-02-10 |  |  |
|  | 1 | **Main Line Sections** |  | 2025-01-30 | 2025-02-10 |  |  |
| ENG-MT-SD-ML-A-100 |  | Material Approval for Manholes of Storm Drainage Network | 10d | 2025-01-30 | 2025-02-10 | ENG-MT-SD-ML-S-100 | 0d |
| ENG-MT-SD-ML-A-110 |  | Material Approval for Main Line Pipes of Storm Drainage Network | 10d | 2025-01-30 | 2025-02-10 | ENG-MT-SD-ML-S-110 | 0d |
|  | 2 | **Catch Basin Sections** |  | 2025-01-30 | 2025-02-10 |  |  |
| ENG-MT-SD-CB-A-100 |  | Material Approval for Catch Basins of Storm Drainage Network | 10d | 2025-01-30 | 2025-02-10 | ENG-MT-SD-CB-S-100 | 0d |
| ENG-MT-SD-CB-A-110 |  | Material Approval for Catch Basin Pipes of Storm Drainage Network | 10d | 2025-01-30 | 2025-02-10 | ENG-MT-SD-CB-S-110 | 0d |
|  | 3 | **Testing and Finishes** |  | 2025-01-30 | 2025-02-10 |  |  |
| ENG-MT-SD-TF-A-100 |  | Material Approval for Manhole Covers of Storm Drainage Network | 10d | 2025-01-30 | 2025-02-10 | ENG-MT-SD-TF-S-100 | 0d |
| ENG-MT-SD-TF-A-110 |  | Material Approval for Catch Basin Covers of Storm Drainage Network | 10d | 2025-01-30 | 2025-02-10 | ENG-MT-SD-TF-S-110 | 0d |
| ENG-MT-SD-TF-A-120 |  | Material Approval for Epoxy Insulation of Storm Drainage Network | 10d | 2025-01-30 | 2025-02-10 | ENG-MT-SD-TF-S-120 | 0d |
|  | 3 | **Potable Water Network** |  | 2025-01-22 | 2025-02-10 |  |  |
|  | MS | **Submission of Material** |  | 2025-01-22 | 2025-01-29 |  |  |
|  | 1 | **Main Line Sections** |  | 2025-01-22 | 2025-01-29 |  |  |
| ENG-MT-PW-ML-S-100 |  | Material Submittal for Main Line Pipes of Potable Water Network | 7d | 2025-01-22 | 2025-01-29 | ENG-DS-PW-A-110 | 0d |
| ENG-MT-PW-ML-S-110 |  | Material Submittal for Main Line Valves of Potable Water Network | 7d | 2025-01-22 | 2025-01-29 | ENG-DS-PW-A-110 | 0d |

| ID | WBS | Task | Duration | Start | Finish | Predecessors | Total float |
| --- | --- | --- | --- | --- | --- | --- | --- |
|  | 3 | **Fire Hydrant** |  | 2025-01-22 | 2025-01-29 |  |  |
| ENG-MT-PW-FH-S-100 |  | Material Submittal for Fire Hydrant of Potable Water Network | 7d | 2025-01-22 | 2025-01-29 | ENG-DS-PW-A-110 | 0d |
|  | 4 | **Testing and Finishes** |  | 2025-01-22 | 2025-01-29 |  |  |
| ENG-MT-PW-TF-S-100 |  | Material Submittal for Surface Box of Potable Water Network | 7d | 2025-01-22 | 2025-01-29 | ENG-DS-PW-A-110 | 9.37d |
|  | MA | **Approval of Material** |  | 2025-01-30 | 2025-02-10 |  |  |
|  | 1 | **Main Line Sections** |  | 2025-01-30 | 2025-02-10 |  |  |
| ENG-MT-PW-ML-A-100 |  | Material Approval for Main Line Pipes of Potable Water Network | 10d | 2025-01-30 | 2025-02-10 | ENG-MT-PW-ML-S-100 | 0d |
| ENG-MT-PW-ML-A-110 |  | Material Approval for Valves of Potable Water Network | 10d | 2025-01-30 | 2025-02-10 | ENG-MT-PW-ML-S-110 | 0d |
|  | 3 | **Fire Hydrant** |  | 2025-01-30 | 2025-02-10 |  |  |
| ENG-MT-PW-FH-A-100 |  | Material Approval for Fire Hydrants of Potable Water Network | 10d | 2025-01-30 | 2025-02-10 | ENG-MT-PW-FH-S-100 | 0d |
|  | 4 | **Testing and Finishes** |  | 2025-01-30 | 2025-01-30 |  |  |
| ENG-MT-PW-TF-A-100 |  | Material Approval for Surface Box of Potable Water Network | 0.63d | 2025-01-30 | 2025-01-30 | ENG-MT-PW-TF-S-100 | 9.37d |
|  | 4 | **Irrigation Network** |  | 2025-01-22 | 2025-02-10 |  |  |
|  | MS | **Submission of Material** |  | 2025-01-22 | 2025-01-29 |  |  |
|  | 1 | **Main Line Pipes** |  | 2025-01-22 | 2025-01-29 |  |  |
| ENG-MT-IR-ML-S-100 |  | Material Submittal for Main Line Pipes of Irrigation Network | 7d | 2025-01-22 | 2025-01-29 | ENG-DS-IR-A-110 | 0d |
| ENG-MT-IR-ML-S-110 |  | Material Submittal for Main Line Valves of Irrigation Network | 7d | 2025-01-22 | 2025-01-29 | ENG-DS-IR-A-110 | 0d |
|  | MA | **Approval of Material** |  | 2025-01-30 | 2025-02-10 |  |  |
|  | 1 | **Main Line Pipes** |  | 2025-01-30 | 2025-02-10 |  |  |
| ENG-MT-IR-ML-A-100 |  | Material Approval for Main Line Pipes of Irrigation Network | 10d | 2025-01-30 | 2025-02-10 | ENG-MT-IR-ML-S-100 | 0d |
| ENG-MT-IR-ML-A-110 |  | Material Approval for Valves of Irrigation Network | 10d | 2025-01-30 | 2025-02-10 | ENG-MT-IR-ML-S-110 | 0d |
|  | 5 | **Medium Voltage Network** |  | 2025-01-22 | 2025-02-10 |  |  |
|  | MS | **Submission of Material** |  | 2025-01-22 | 2025-01-29 |  |  |
|  | 1 | **Cabling Works** |  | 2025-01-22 | 2025-01-29 |  |  |
| ENG-MT-MV-ML-S-100 |  | Material Submittal for Medium Voltage Cables of Medium Voltage Network | 7d | 2025-01-22 | 2025-01-29 | ENG-DS-MV-A-110 | 0d |
|  | 2 | **RMU Concrete Works** |  | 2025-01-22 | 2025-01-29 |  |  |
| ENG-MT-MV-SS-S-100 |  | Material Submittal for RMU Concrete Foundations of Medium Voltage Network | 7d | 2025-01-22 | 2025-01-29 | ENG-DS-MV-A-110 | 0d |
|  | 3 | **Termination and Testing Works** |  | 2025-01-22 | 2025-01-29 |  |  |
| ENG-MT-MV-TF-S-100 |  | Material Submittal for Termination Kits of Medium Voltage Network | 7d | 2025-01-22 | 2025-01-29 | ENG-DS-MV-A-110 | 0d |
|  | MA | **Approval of Material** |  | 2025-01-30 | 2025-02-10 |  |  |
|  | 1 | **Cabling Works** |  | 2025-01-30 | 2025-02-10 |  |  |
| ENG-MT-MV-ML-A-100 |  | Material Approval for Medium Voltage Cables of Medium Voltage Network | 10d | 2025-01-30 | 2025-02-10 | ENG-MT-MV-ML-S-100 | 0d |
|  | 2 | **RMU Concrete Works** |  | 2025-01-30 | 2025-02-10 |  |  |
| ENG-MT-MV-SS-A-100 |  | Material Approval for RMU Concrete Foundations of Medium Voltage Network | 10d | 2025-01-30 | 2025-02-10 | ENG-MT-MV-SS-S-100 | 0d |
|  | 3 | **Termination and Testing Works** |  | 2025-01-30 | 2025-02-10 |  |  |
| ENG-MT-MV-TF-A-100 |  | Material Approval for Termination and Joints Kits of Medium Voltage Network | 10d | 2025-01-30 | 2025-02-10 | ENG-MT-MV-TF-S-100 | 0d |
|  | 7 | **Street Lighting Network** |  | 2025-01-22 | 2025-02-10 |  |  |
|  | MS | **Submission of Material** |  | 2025-01-22 | 2025-01-29 |  |  |
|  | 1 | **Cabling Works** |  | 2025-01-22 | 2025-01-29 |  |  |
| ENG-MT-SL-ML-S-100 |  | Material Submittal for Lighting Cables of Street Lighting Network | 7d | 2025-01-22 | 2025-01-29 | ENG-DS-SL-A-110 | 0d |
|  | 2 | **Lighting Poles Works** |  | 2025-01-22 | 2025-01-29 |  |  |
| ENG-MT-SL-S-100 |  | Material Submittal for Lighting Poles Concrete Foundations of Street Lighting Network | 7d | 2025-01-22 | 2025-01-29 | ENG-DS-SL-A-110 | 0d |
| ENG-MT-SL-S-110 |  | Material Submittal for Lighting Poles of Street Lighting Network | 7d | 2025-01-22 | 2025-01-29 | ENG-DS-SL-A-110 | 0d |
| ENG-MT-SL-S-120 |  | Material Submittal for Lighting Fixtures of Street Lighting Network | 7d | 2025-01-22 | 2025-01-29 | ENG-DS-SL-A-110 | 0d |
|  | 3 | **Distribution Panel Board** |  | 2025-01-22 | 2025-01-29 |  |  |
| ENG-MT-SL-DB-S-100 |  | Material Submittal for Lighting Distrubution Panel Boards of Street Lighting Network | 7d | 2025-01-22 | 2025-01-29 | ENG-DS-SL-A-110 | 0d |
|  | 5 | **Termination and Testing Works** |  | 2025-01-22 | 2025-01-29 |  |  |
| ENG-MT-SL-TF-S-100 |  | Material Submittal for Fuse Boxes of Street Lighting Network | 7d | 2025-01-22 | 2025-01-29 | ENG-DS-SL-A-110 | 0d |
| ENG-MT-SL-TF-S-110 |  | Material Submittal for Cable Lugs of Street Lighting Network | 7d | 2025-01-22 | 2025-01-29 | ENG-DS-SL-A-110 | 0d |
|  | 4 | **Earthing System Works** |  | 2025-01-22 | 2025-01-29 |  |  |
| ENG-MT-SL-ES-S-100 |  | Material Submittal for Lighting Earthing of Street Lighting Network | 7d | 2025-01-22 | 2025-01-29 | ENG-DS-SL-A-110 | 0d |
|  | MA | **Approval of Material** |  | 2025-01-30 | 2025-02-10 |  |  |
|  | 1 | **Cabling Works** |  | 2025-01-30 | 2025-02-10 |  |  |
| ENG-MT-SL-ML-A-100 |  | Material Approval for Lighting Cables of Street Lighting Network | 10d | 2025-01-30 | 2025-02-10 | ENG-MT-SL-ML-S-100 | 0d |
|  | 2 | **Lighting Poles Works** |  | 2025-01-30 | 2025-02-10 |  |  |
| ENG-MT-SL-A-100 |  | Material Approval for Lighting Poles Concrete Foundations of Street Lighting Network | 10d | 2025-01-30 | 2025-02-10 | ENG-MT-SL-S-100 | 0d |
| ENG-MT-SL-A-110 |  | Material Approval for Lighting Poles of Street Lighting Network | 10d | 2025-01-30 | 2025-02-10 | ENG-MT-SL-S-110 | 0d |
| ENG-MT-SL-A-120 |  | Material Approval for Lighting Fixtures of Street Lighting Network | 10d | 2025-01-30 | 2025-02-10 | ENG-MT-SL-S-120 | 0d |
|  | 3 | **Distribution Panel Board** |  | 2025-01-30 | 2025-02-10 |  |  |
| ENG-MT-SL-DB-A-100 |  | Material Approval for Distrubution Panel Boards of Street Lighting Network | 10d | 2025-01-30 | 2025-02-10 | ENG-MT-SL-DB-S-100 | 0d |
|  | 4 | **Earthing System Works** |  | 2025-01-30 | 2025-02-10 |  |  |
| ENG-MT-SL-ES-A-100 |  | Material Approval for Lighting Earthing of Street Lighting Network | 10d | 2025-01-30 | 2025-02-10 | ENG-MT-SL-ES-S-100 | 0d |
|  | 5 | **Termination and Testing Works** |  | 2025-01-30 | 2025-02-10 |  |  |
| ENG-MT-SL-TF-A-100 |  | Material Approval for Fuse Boxes of Street Lighting Network | 10d | 2025-01-30 | 2025-02-10 | ENG-MT-SL-TF-S-100 | 0d |
| ENG-MT-SL-TF-A-110 |  | Material Approval for Cable Lugs of Street Lighting Network | 10d | 2025-01-30 | 2025-02-10 | ENG-MT-SL-TF-S-110 | 0d |
|  | 8 | **Telecom Network** |  | 2025-01-22 | 2025-02-10 |  |  |
|  | MS | **Submission of Material** |  | 2025-01-22 | 2025-01-29 |  |  |
|  | 1 | **Ducts Works** |  | 2025-01-22 | 2025-01-29 |  |  |
| ENG-MT-TE-S-100 |  | Material Submittal for Ducts of Telecom Network | 7d | 2025-01-22 | 2025-01-29 | ENG-DS-TE-A-110 | 0d |
|  | 3 | **Manholes Works** |  | 2025-01-22 | 2025-01-29 |  |  |

| ID | WBS | Task | Duration | Start | Finish | Predecessors | Total float |
| --- | --- | --- | --- | --- | --- | --- | --- |
| ENG-MT-TE-S-110 |  | Material Submittal for Manholes of Telecom Network | 7d | 2025-01-22 | 2025-01-29 | ENG-DS-TE-A-110 | 0d |
|  | MA | **Approval of Material** |  | 2025-01-30 | 2025-02-10 |  |  |
|  | 1 | **Ducts Works** |  | 2025-01-30 | 2025-02-10 |  |  |
| ENG-MT-TE-A-100 |  | Material Approval for Ducts of Telecom Network | 10d | 2025-01-30 | 2025-02-10 | ENG-MT-TE-S-100 | 0d |
|  | 3 | **Manholes Works** |  | 2025-01-30 | 2025-02-10 |  |  |
| ENG-MT-TE-A-110 |  | Material Approval for Manholes of Telecom Network | 10d | 2025-01-30 | 2025-02-10 | ENG-MT-TE-S-110 | 0d |
|  | 1 | **Superstructure Works** |  | 2025-01-22 | 2025-02-10 |  |  |
|  | SL | **Sewage Pump Stations ( PS 06 )** |  | 2025-01-22 | 2025-02-10 |  |  |
|  | 1 | **Submission of Material** |  | 2025-01-22 | 2025-01-29 |  |  |
| ENG-MT-SPS-CV-S-100 |  | Material Submittal for Civil Works for Sewage Pump Stations | 7d | 2025-01-22 | 2025-01-29 | ENG-DS-SW-A-110 | 0d |
|  | 2 | **Approval of Material** |  | 2025-01-30 | 2025-02-10 |  |  |
| ENG-MT-SPS-CV-A-110 |  | Material Approval for Civil Works for Sewage Pump Stations | 10d | 2025-01-30 | 2025-02-10 | ENG-MT-SPS-CV-S-100 | 0d |
|  | TE | **Storm Drainage Ponds ( PO-J1 , PO-J2 )** |  | 2025-01-22 | 2025-02-10 |  |  |
|  | 1 | **Submission of Material** |  | 2025-01-22 | 2025-01-29 |  |  |
| ENG-MT-DPO-CV-S-100 |  | Material Submittal for Civil Works for Storm Drainage Ponds | 7d | 2025-01-22 | 2025-01-29 | ENG-DS-SD-A-110 | 0d |
|  | 2 | **Approval of Material** |  | 2025-01-30 | 2025-02-10 |  |  |
| ENG-MT-DPO-CV-A-110 |  | Material Approval for Civil Works for Storm Drainage Ponds | 10d | 2025-01-30 | 2025-02-10 | ENG-MT-DPO-CV-S-100 | 0d |
|  | 1 | **Long Lead Time Items** |  | 2025-01-22 | 2025-02-10 |  |  |
|  | 1 | **Infrastructure Networks** |  | 2025-01-22 | 2025-02-01 |  |  |
|  | 1 | **RMU Works of Medium Voltage Network** |  | 2025-01-22 | 2025-02-01 |  |  |
|  | MS | **Submission of Material** |  | 2025-01-22 | 2025-01-29 |  |  |
| ENG-MT-MV-S-10 |  | Material Submittal for RMU of Medium Voltage Network | 7d | 2025-01-22 | 2025-01-29 | ENG-DS-MV-A-110 | 8d |
|  | MA | **Approval of Material** |  | 2025-01-30 | 2025-02-01 |  |  |
| ENG-MT-MV-A-10 |  | Material Approval for RMU of Medium Voltage Network | 2d | 2025-01-30 | 2025-02-01 | ENG-MT-MV-S-10 | 8d |
|  | 2 | **Superstructure Works** |  | 2025-01-22 | 2025-02-10 |  |  |
|  | SL | **Sewage Pump Stations ( PS 06 )** |  | 2025-01-22 | 2025-02-10 |  |  |
|  | 1 | **Submission of Material** |  | 2025-01-22 | 2025-01-29 |  |  |
| ENG-MT-SPS-MC-S-100 |  | Material Submittal for Electromechanical Works for Sewage Pump Stations | 7d | 2025-01-22 | 2025-01-29 | ENG-DS-SW-A-110 | 0d |
|  | 2 | **Approval of Material** |  | 2025-01-30 | 2025-02-10 |  |  |
| ENG-MT-SPS-MC-A-110 |  | Material Approval for Electromechanical Works for Sewage Pump Stations | 10d | 2025-01-30 | 2025-02-10 | ENG-MT-SPS-MC-S-100 | 0d |
|  | PROC | **Procurement Cycle** |  | 2025-02-05 | 2026-10-05 |  |  |
|  | NLL | **Short Lead Time Items** |  | 2025-02-05 | 2026-10-05 |  |  |
|  | INF | **Infrastructure Networks** |  | 2025-02-05 | 2026-10-05 |  |  |
|  | RD | **Road Works** |  | 2025-02-11 | 2026-10-05 |  |  |
|  | PO | **Issuance of Purchase Orders** |  | 2025-02-11 | 2025-03-03 |  |  |
|  | 1 | **Road Works** |  | 2025-02-11 | 2025-02-25 |  |  |
| PRO-RD-PO-100 |  | Issuance of Purchase Order for Subgrade of Road Works | 12d | 2025-02-11 | 2025-02-25 | ENG-MT-RD-A-100, ENG-SH-RD-A-100, ENG-MS-RD-A-10 | 29d |
| PRO-RD-PO-110 |  | Issuance of Purchase Order for Aggregate Base Course of Road Works | 12d | 2025-02-11 | 2025-02-25 | ENG-MT-RD-A-110, ENG-SH-RD-A-100, ENG-MS-RD-A-10 | 35d |
| PRO-RD-PO-120 |  | Issuance of Purchase Order for Prime Coat of Road Works | 12d | 2025-02-11 | 2025-02-25 | ENG-MT-RD-A-120, ENG-SH-RD-A-100, ENG-MS-RD-A-10 | 113d |
| PRO-RD-PO-130 |  | Issuance of Purchase Order for Bituminous Base & Wearing Courses of Road Works | 12d | 2025-02-11 | 2025-02-25 | ENG-MT-RD-A-130, ENG-SH-RD-A-100, ENG-MS-RD-A-10 | 139d |
|  | 2 | **Pavement Works** |  | 2025-02-17 | 2025-03-03 |  |  |
| PRO-RD-PO-140 |  | Issuance of Purchase Order for Interlock Tiles of Landscaping | 12d | 2025-02-17 | 2025-03-03 | ENG-MT-RD-A-140, ENG-SH-HS-A-110, ENG-MS-HS-A-10 | 56d |
| PRO-RD-PO-150 |  | Issuance of Purchase Order for Curbstones of Landscaping | 12d | 2025-02-17 | 2025-03-03 | ENG-MT-RD-A-150, ENG-SH-HS-A-110, ENG-MS-HS-A-10 | 82d |
|  | 3 | **Traffic Signs Boards and Roads Marking** |  | 2025-02-17 | 2025-03-03 |  |  |
| PRO-RD-PO-160 |  | Issuance of Purchase Order for Traffic Signs Boards of Road Works | 12d | 2025-02-17 | 2025-03-03 | ENG-MT-TS-A-100, ENG-SH-TSB-A-100, ENG-MS-TSB-A-10 | 140d |
| PRO-RD-PO-170 |  | Issuance of Purchase Order for Road Markings of Road Works | 12d | 2025-02-17 | 2025-03-03 | ENG-MT-TS-A-110, ENG-SH-MRK-A-110, ENG-MS-MRK-A-10 | 166d |
|  | MF | **Manufacturing of Material** |  | 2025-02-26 | 2025-08-11 |  |  |
|  | 1 | **Road Works** |  | 2025-02-26 | 2025-07-13 |  |  |
| PRO-RD-MF-100 |  | Manufacturing of Subgrade for Road Works | 90d | 2025-02-26 | 2025-06-19 | PRO-RD-PO-100 | 29d |
| PRO-RD-MF-110 |  | Manufacturing of Aggregate Base Course for Road Works | 110d | 2025-02-26 | 2025-07-13 | PRO-RD-PO-110 | 35d |
| PRO-RD-MF-120 |  | Manufacturing of Prime Coat for Road Works | 110d | 2025-02-26 | 2025-07-13 | PRO-RD-PO-120 | 113d |
| PRO-RD-MF-130 |  | Manufacturing of Bituminous Base & Wearing Courses for Road Works | 110d | 2025-02-26 | 2025-07-13 | PRO-RD-PO-130 | 139d |
|  | 2 | **Pavement Works** |  | 2025-03-04 | 2025-07-19 |  |  |
| PRO-RD-MF-140 |  | Manufacturing of Interlock Tiles for Landscaping | 110d | 2025-03-04 | 2025-07-19 | PRO-RD-PO-140 | 56d |
| PRO-RD-MF-150 |  | Manufacturing of Curbstones for Landscaping | 110d | 2025-03-04 | 2025-07-19 | PRO-RD-PO-150 | 82d |
|  | 3 | **Traffic Signs Boards and Roads Marking** |  | 2025-03-04 | 2025-08-11 |  |  |
| PRO-RD-MF-160 |  | Manufacturing of Traffic Signs Boards for Road Works | 130d | 2025-03-04 | 2025-08-11 | PRO-RD-PO-160 | 140d |
| PRO-RD-MF-170 |  | Manufacturing of Road Markings for Road Works | 130d | 2025-03-04 | 2025-08-11 | PRO-RD-PO-170 | 166d |
|  | 1DL | **1st Material Delivery & Site Inspection** |  | 2025-06-21 | 2025-08-18 |  |  |
|  | 1 | **Road Works** |  | 2025-06-21 | 2025-07-20 |  |  |
| PRO-RD-1DL-100 |  | 1ST Material Delivery for Subgrade of Road Works | 6d | 2025-06-21 | 2025-06-26 | PRO-RD-MF-100 | 29d |
| PRO-RD-1DL-110 |  | 1ST Material Delivery for Aggregate Base Course of Road Works | 6d | 2025-07-14 | 2025-07-20 | PRO-RD-MF-110 | 35d |
| PRO-RD-1DL-120 |  | 1ST Material Delivery for Prime Coat of Road Works | 6d | 2025-07-14 | 2025-07-20 | PRO-RD-MF-120 | 113d |
| PRO-RD-1DL-130 |  | 1ST Material Delivery for Bituminous Base & Wearing Courses of Road Works | 6d | 2025-07-14 | 2025-07-20 | PRO-RD-MF-130 | 139d |
|  | 2 | **Pavement Works** |  | 2025-07-20 | 2025-07-26 |  |  |
| PRO-RD-1DL-140 |  | 1ST Material Delivery for Interlock Tiles of Landscaping | 6d | 2025-07-20 | 2025-07-26 | PRO-RD-MF-140 | 56d |
| PRO-RD-1DL-150 |  | 1ST Material Delivery for Curbstones of Landscaping | 6d | 2025-07-20 | 2025-07-26 | PRO-RD-MF-150 | 82d |
|  | 3 | **Traffic Signs Boards and Roads Marking** |  | 2025-08-12 | 2025-08-18 |  |  |
| PRO-RD-1DL-160 |  | 1ST Material Delivery for Traffic Signs Boards of Road Works | 6d | 2025-08-12 | 2025-08-18 | PRO-RD-MF-160 | 140d |
| PRO-RD-1DL-170 |  | 1ST Material Delivery for Road Markings of Road Works | 6d | 2025-08-12 | 2025-08-18 | PRO-RD-MF-170 | 166d |

| ID | WBS | Task | Duration | Start | Finish | Predecessors | Total float |
| --- | --- | --- | --- | --- | --- | --- | --- |
|  | DL | **Material Delivery & Site Inspection** |  | 2025-06-28 | 2026-10-05 |  |  |
|  | 1 | **Road 18 Local 1 ( 479 LM )** |  | 2025-06-28 | 2026-02-25 |  |  |
|  | 1 | **Pre-Bituminous Construction** |  | 2025-06-28 | 2025-08-26 |  |  |
| PRO-R18-RD-DL-220 |  | Material Delivery & Site Inspection for Subgrade of Road Works | 26d | 2025-06-28 | 2025-07-27 | PRO-RD-1DL-100 | 29d |
| PRO-R18-RD-DL-230 |  | Material Delivery & Site Inspection for Aggregate Base Course of Road Works | 26d | 2025-07-28 | 2025-08-26 | PRO-RD-1DL-110, PRO-R18-RD-DL-220 | 29d |
|  | 2 | **Pavement Works** |  | 2025-08-27 | 2025-10-27 |  |  |
| PRO-R18-RD-DL-180 |  | Material Delivery & Site Inspection of Interlock Tiles for Landscaping | 26d | 2025-08-27 | 2025-09-27 | PRO-RD-1DL-140, PRO-R18-RD-DL-230 | 29d |
| PRO-R18-RD-DL-190 |  | Material Delivery & Site Inspection of Curbstones for Landscaping | 26d | 2025-09-28 | 2025-10-27 | PRO-RD-1DL-150, PRO-R18-RD-DL-180 | 29d |
|  | 4 | **Bituminous Construction** |  | 2025-10-28 | 2025-12-27 |  |  |
| PRO-R18-RD-DL-240 |  | Material Delivery & Site Inspection for Prime Coat of Road Works | 26d | 2025-10-28 | 2025-11-26 | PRO-RD-1DL-120, PRO-R18-RD-DL-190 | 29d |
| PRO-R18-RD-DL-250 |  | Material Delivery & Site Inspection for Bituminous Base & Wearing Courses of Road Works | 26d | 2025-11-27 | 2025-12-27 | PRO-RD-1DL-130, PRO-R18-RD-DL-240 | 29d |
|  | 3 | **Traffic Signs Boards and Roads Marking** |  | 2025-12-28 | 2026-02-25 |  |  |
| PRO-R18-RD-DL-200 |  | Material Delivery & Site Inspection of Traffic Signs Boards For Road Works | 26d | 2025-12-28 | 2026-01-26 | PRO-R18-RD-DL-250 FF, PRO-RD-1DL-160, PRO-R18-RD-DL-250 | 29d |
| PRO-R18-RD-DL-210 |  | Material Delivery & Site Inspection of Road Markings For Road Works | 26d | 2026-01-27 | 2026-02-25 | PRO-R18-RD-DL-200 SS, PRO-RD-1DL-170, PRO-R18-RD-DL-200 | 29d |
|  | 9 | **Road 17 Local 1 ( 500 LM )** |  | 2025-07-28 | 2026-03-31 |  |  |
|  | 1 | **Pre-Bituminous Construction** |  | 2025-07-28 | 2025-09-27 |  |  |
| PRO-R17-RD-DL-120 |  | Material Delivery & Site Inspection for Subgrade of Road Works | 26d | 2025-07-28 | 2025-08-26 | PRO-RD-1DL-100, PRO-R18-RD-DL-220 | 29d |
| PRO-R17-RD-DL-130 |  | Material Delivery & Site Inspection for Aggregate Base Course of Road Works | 26d | 2025-08-27 | 2025-09-27 | PRO-RD-1DL-110, PRO-R18-RD-DL-230, PRO-R17-RD-DL-120 | 29d |
|  | 2 | **Pavement Works** |  | 2025-09-28 | 2025-11-26 |  |  |
| PRO-R17-RD-DL-100 |  | Material Delivery & Site Inspection of Interlock Tiles for Landscaping | 26d | 2025-09-28 | 2025-10-27 | PRO-RD-1DL-140, PRO-R18-RD-DL-180, PRO-R17-RD-DL-130 | 29d |
| PRO-R17-RD-DL-110 |  | Material Delivery & Site Inspection of Curbstones for Landscaping | 26d | 2025-10-28 | 2025-11-26 | PRO-RD-1DL-150, PRO-R18-RD-DL-190, PRO-R17-RD-DL-100 | 29d |
|  | 4 | **Bituminous Construction** |  | 2025-11-27 | 2026-01-26 |  |  |
| PRO-R17-RD-DL-160 |  | Material Delivery & Site Inspection for Prime Coat of Road Works | 26d | 2025-11-27 | 2025-12-27 | PRO-RD-1DL-120, PRO-R18-RD-DL-240, PRO-R17-RD-DL-110 | 29d |
| PRO-R17-RD-DL-170 |  | Material Delivery & Site Inspection for Bituminous Base & Wearing Courses of Road Works | 26d | 2025-12-28 | 2026-01-26 | PRO-RD-1DL-130, PRO-R18-RD-DL-250, PRO-R17-RD-DL-160 | 29d |
|  | 3 | **Traffic Signs Boards and Roads Marking** |  | 2026-01-27 | 2026-03-31 |  |  |
| PRO-R17-RD-DL-140 |  | Material Delivery & Site Inspection of Traffic Signs Boards For Road Works | 26d | 2026-01-27 | 2026-02-25 | PRO-RD-1DL-160, PRO-R17-RD-DL-170 FF, PRO-R18-RD-DL-200, PRO-R17-RD-DL-170 | 29d |
| PRO-R17-RD-DL-150 |  | Material Delivery & Site Inspection of Road Markings For Road Works | 26d | 2026-02-26 | 2026-03-31 | PRO-RD-1DL-170, PRO-R17-RD-DL-140 SS, PRO-R18-RD-DL-210, PRO-R17-RD-DL-140 | 29d |
|  | 8 | **Road 16 Local 1 ( 527 LM )** |  | 2025-08-27 | 2026-04-30 |  |  |
|  | 1 | **Pre-Bituminous Construction** |  | 2025-08-27 | 2025-10-27 |  |  |
| PRO-R16-RD-DL-100 |  | Material Delivery & Site Inspection for Subgrade of Road Works | 26d | 2025-08-27 | 2025-09-27 | PRO-RD-1DL-100, PRO-R17-RD-DL-120 | 142d |
| PRO-R16-RD-DL-110 |  | Material Delivery & Site Inspection for Aggregate Base Course of Road Works | 26d | 2025-09-28 | 2025-10-27 | PRO-RD-1DL-110, PRO-R17-RD-DL-130 | 130d |
|  | 2 | **Pavement Works** |  | 2025-10-28 | 2025-12-27 |  |  |
| PRO-R16-RD-DL-120 |  | Material Delivery & Site Inspection of Interlock Tiles for Landscaping | 26d | 2025-10-28 | 2025-11-26 | PRO-RD-1DL-140, PRO-R17-RD-DL-100 | 107d |
| PRO-R16-RD-DL-130 |  | Material Delivery & Site Inspection of Curbstones for Landscaping | 26d | 2025-11-27 | 2025-12-27 | PRO-RD-1DL-150, PRO-R16-RD-DL-110 FF, PRO-R17-RD-DL-110 | 81d |
|  | 4 | **Bituminous Construction** |  | 2025-12-28 | 2026-02-25 |  |  |
| PRO-R16-RD-DL-160 |  | Material Delivery & Site Inspection for Prime Coat of Road Works | 26d | 2025-12-28 | 2026-01-26 | PRO-RD-1DL-120, PRO-R17-RD-DL-160 | 94d |
| PRO-R16-RD-DL-170 |  | Material Delivery & Site Inspection for Bituminous Base & Wearing Courses of Road Works | 26d | 2026-01-27 | 2026-02-25 | PRO-RD-1DL-130, PRO-R16-RD-DL-120, PRO-R17-RD-DL-170 | 55d |
|  | 3 | **Traffic Signs Boards and Roads Marking** |  | 2026-02-26 | 2026-04-30 |  |  |
| PRO-R16-RD-DL-140 |  | Material Delivery & Site Inspection of Traffic Signs Boards For Road Works | 26d | 2026-02-26 | 2026-03-31 | PRO-RD-1DL-160, PRO-R16-RD-DL-170 FF, PRO-R17-RD-DL-140 | 55d |
| PRO-R16-RD-DL-150 |  | Material Delivery & Site Inspection of Road Markings For Road Works | 26d | 2026-04-01 | 2026-04-30 | PRO-RD-1DL-170, PRO-R16-RD-DL-140 SS, PRO-R17-RD-DL-150 | 29d |
|  | 7 | **Road 15 Local 1 ( 556 LM )** |  | 2025-09-28 | 2026-06-04 |  |  |
|  | 1 | **Pre-Bituminous Construction** |  | 2025-09-28 | 2025-11-26 |  |  |
| PRO-R15-RD-DL-100 |  | Material Delivery & Site Inspection for Subgrade of Road Works | 26d | 2025-09-28 | 2025-10-27 | PRO-RD-1DL-100, PRO-R16-RD-DL-100 | 142d |
| PRO-R15-RD-DL-110 |  | Material Delivery & Site Inspection for Aggregate Base Course of Road Works | 26d | 2025-10-28 | 2025-11-26 | PRO-RD-1DL-110, PRO-R16-RD-DL-110 | 130d |
|  | 2 | **Pavement Works** |  | 2025-11-27 | 2026-01-26 |  |  |
| PRO-R15-RD-DL-120 |  | Material Delivery & Site Inspection of Interlock Tiles for Landscaping | 26d | 2025-11-27 | 2025-12-27 | PRO-RD-1DL-140, PRO-R16-RD-DL-120 | 107d |
| PRO-R15-RD-DL-130 |  | Material Delivery & Site Inspection of Curbstones for Landscaping | 26d | 2025-12-28 | 2026-01-26 | PRO-RD-1DL-150, PRO-R15-RD-DL-110 FF, PRO-R16-RD-DL-130 | 81d |
|  | 4 | **Bituminous Construction** |  | 2026-01-27 | 2026-03-31 |  |  |
| PRO-R15-RD-DL-160 |  | Material Delivery & Site Inspection for Prime Coat of Road Works | 26d | 2026-01-27 | 2026-02-25 | PRO-RD-1DL-120, PRO-R16-RD-DL-160 | 94d |
| PRO-R15-RD-DL-170 |  | Material Delivery & Site Inspection for Bituminous Base & Wearing Courses of Road Works | 26d | 2026-02-26 | 2026-03-31 | PRO-RD-1DL-130, PRO-R15-RD-DL-120, PRO-R16-RD-DL-170 | 55d |
|  | 3 | **Traffic Signs Boards and Roads Marking** |  | 2026-04-01 | 2026-06-04 |  |  |
| PRO-R15-RD-DL-140 |  | Material Delivery & Site Inspection of Traffic Signs Boards For Road Works | 26d | 2026-04-01 | 2026-04-30 | PRO-RD-1DL-160, PRO-R15-RD-DL-170 FF, PRO-R16-RD-DL-140 | 55d |
| PRO-R15-RD-DL-150 |  | Material Delivery & Site Inspection of Road Markings For Road Works | 26d | 2026-05-02 | 2026-06-04 | PRO-RD-1DL-170, PRO-R15-RD-DL-140 SS, PRO-R16-RD-DL-150 | 29d |
|  | 4 | **Road 10 Local 2 ( 2352 LM )** |  | 2025-10-28 | 2026-07-05 |  |  |
|  | 1 | **Pre-Bituminous Construction** |  | 2025-10-28 | 2025-12-27 |  |  |
| PRO-R10-RD-DL-100 |  | Material Delivery & Site Inspection for Subgrade of Road Works | 26d | 2025-10-28 | 2025-11-26 | PRO-RD-1DL-100, PRO-R15-RD-DL-100 | 142d |
| PRO-R10-RD-DL-110 |  | Material Delivery & Site Inspection for Aggregate Base Course of Road Works | 26d | 2025-11-27 | 2025-12-27 | PRO-RD-1DL-110, PRO-R15-RD-DL-110 | 130d |
|  | 2 | **Pavement Works** |  | 2025-12-28 | 2026-02-25 |  |  |
| PRO-R10-RD-DL-120 |  | Material Delivery & Site Inspection of Interlock Tiles for Landscaping | 26d | 2025-12-28 | 2026-01-26 | PRO-RD-1DL-140, PRO-R15-RD-DL-120 | 107d |
| PRO-R10-RD-DL-130 |  | Material Delivery & Site Inspection of Curbstones for Landscaping | 26d | 2026-01-27 | 2026-02-25 | PRO-RD-1DL-150, PRO-R10-RD-DL-110 FF, PRO-R15-RD-DL-130 | 81d |
|  | 4 | **Bituminous Construction** |  | 2026-02-26 | 2026-04-30 |  |  |
| PRO-R10-RD-DL-160 |  | Material Delivery & Site Inspection for Prime Coat of Road Works | 26d | 2026-02-26 | 2026-03-31 | PRO-RD-1DL-120, PRO-R15-RD-DL-160 | 94d |
| PRO-R10-RD-DL-170 |  | Material Delivery & Site Inspection for Bituminous Base & Wearing Courses of Road Works | 26d | 2026-04-01 | 2026-04-30 | PRO-RD-1DL-130, PRO-R10-RD-DL-120, PRO-R15-RD-DL-170 | 55d |
|  | 3 | **Traffic Signs Boards and Roads Marking** |  | 2026-05-02 | 2026-07-05 |  |  |
| PRO-R10-RD-DL-140 |  | Material Delivery & Site Inspection of Traffic Signs Boards For Road Works | 26d | 2026-05-02 | 2026-06-04 | PRO-RD-1DL-160, PRO-R10-RD-DL-170 FF, PRO-R15-RD-DL-140 | 55d |
| PRO-R10-RD-DL-150 |  | Material Delivery & Site Inspection of Road Markings For Road Works | 26d | 2026-06-06 | 2026-07-05 | PRO-RD-1DL-170, PRO-R10-RD-DL-140 SS, PRO-R15-RD-DL-150 | 29d |
|  | 6 | **Road 14 Local 1 ( 584 LM )** |  | 2025-11-27 | 2026-08-04 |  |  |
|  | 1 | **Pre-Bituminous Construction** |  | 2025-11-27 | 2026-01-26 |  |  |
| PRO-R14-RD-DL-100 |  | Material Delivery & Site Inspection for Subgrade of Road Works | 26d | 2025-11-27 | 2025-12-27 | PRO-RD-1DL-100, PRO-R10-RD-DL-100 | 142d |
| PRO-R14-RD-DL-110 |  | Material Delivery & Site Inspection for Aggregate Base Course of Road Works | 26d | 2025-12-28 | 2026-01-26 | PRO-RD-1DL-110, PRO-R10-RD-DL-110 | 130d |

| ID | WBS | Task | Duration | Start | Finish | Predecessors | Total float |
| --- | --- | --- | --- | --- | --- | --- | --- |
|  | 2 | **Pavement Works** |  | 2026-01-27 | 2026-03-31 |  |  |
| PRO-R14-RD-DL-120 |  | Material Delivery & Site Inspection of Interlock Tiles for Landscaping | 26d | 2026-01-27 | 2026-02-25 | PRO-RD-1DL-140, PRO-R10-RD-DL-120 | 107d |
| PRO-R14-RD-DL-130 |  | Material Delivery & Site Inspection of Curbstones for Landscaping | 26d | 2026-02-26 | 2026-03-31 | PRO-RD-1DL-150, PRO-R14-RD-DL-110 FF, PRO-R10-RD-DL-130 | 81d |
|  | 4 | **Bituminous Construction** |  | 2026-04-01 | 2026-06-04 |  |  |
| PRO-R14-RD-DL-160 |  | Material Delivery & Site Inspection for Prime Coat of Road Works | 26d | 2026-04-01 | 2026-04-30 | PRO-RD-1DL-120, PRO-R10-RD-DL-160 | 94d |
| PRO-R14-RD-DL-170 |  | Material Delivery & Site Inspection for Bituminous Base & Wearing Courses of Road Works | 26d | 2026-05-02 | 2026-06-04 | PRO-RD-1DL-130, PRO-R14-RD-DL-120, PRO-R10-RD-DL-170 | 55d |
|  | 3 | **Traffic Signs Boards and Roads Marking** |  | 2026-06-06 | 2026-08-04 |  |  |
| PRO-R14-RD-DL-140 |  | Material Delivery & Site Inspection of Traffic Signs Boards For Road Works | 26d | 2026-06-06 | 2026-07-05 | PRO-RD-1DL-160, PRO-R14-RD-DL-170 FF, PRO-R10-RD-DL-140 | 55d |
| PRO-R14-RD-DL-150 |  | Material Delivery & Site Inspection of Road Markings For Road Works | 26d | 2026-07-06 | 2026-08-04 | PRO-RD-1DL-170, PRO-R14-RD-DL-140 SS, PRO-R10-RD-DL-150 | 29d |
|  | 2 | **Road 09 Local 2 ( 2278 LM )** |  | 2025-12-28 | 2026-09-03 |  |  |
|  | 1 | **Pre-Bituminous Construction** |  | 2025-12-28 | 2026-02-25 |  |  |
| PRO-R09-RD-DL-100 |  | Material Delivery & Site Inspection for Subgrade of Road Works | 26d | 2025-12-28 | 2026-01-26 | PRO-RD-1DL-100, PRO-RD-1DL-100 FF, PRO-R14-RD-DL-100 | 142d |
| PRO-R09-RD-DL-110 |  | Material Delivery & Site Inspection for Aggregate Base Course of Road Works | 26d | 2026-01-27 | 2026-02-25 | PRO-RD-1DL-110, PRO-RD-1DL-110 FF, PRO-R14-RD-DL-110 | 130d |
|  | 2 | **Pavement Works** |  | 2026-02-26 | 2026-04-30 |  |  |
| PRO-R09-RD-DL-120 |  | Material Delivery & Site Inspection of Interlock Tiles for Landscaping | 26d | 2026-02-26 | 2026-03-31 | PRO-RD-1DL-140, PRO-R14-RD-DL-120 | 107d |
| PRO-R09-RD-DL-130 |  | Material Delivery & Site Inspection of Curbstones for Landscaping | 26d | 2026-04-01 | 2026-04-30 | PRO-RD-1DL-150, PRO-R09-RD-DL-110 FF, PRO-R14-RD-DL-130 | 81d |
|  | 4 | **Bituminous Construction** |  | 2026-05-02 | 2026-07-05 |  |  |
| PRO-R09-RD-DL-160 |  | Material Delivery & Site Inspection for Prime Coat of Road Works | 26d | 2026-05-02 | 2026-06-04 | PRO-RD-1DL-120, PRO-RD-1DL-120 FF, PRO-R14-RD-DL-160 | 94d |
| PRO-R09-RD-DL-170 |  | Material Delivery & Site Inspection for Bituminous Base & Wearing Courses of Road Works | 26d | 2026-06-06 | 2026-07-05 | PRO-RD-1DL-130, PRO-RD-1DL-130 FF, PRO-R09-RD-DL-120, PRO-R14-RD-DL-170 | 55d |
|  | 3 | **Traffic Signs Boards and Roads Marking** |  | 2026-07-06 | 2026-09-03 |  |  |
| PRO-R09-RD-DL-140 |  | Material Delivery & Site Inspection of Traffic Signs Boards For Road Works | 26d | 2026-07-06 | 2026-08-04 | PRO-RD-1DL-160, PRO-R09-RD-DL-170, PRO-R14-RD-DL-140 | 55d |
| PRO-R09-RD-DL-150 |  | Material Delivery & Site Inspection of Road Markings For Road Works | 26d | 2026-08-05 | 2026-09-03 | PRO-RD-1DL-170, PRO-R09-RD-DL-140 SS, PRO-R14-RD-DL-150 | 29d |
|  | 5 | **Road 11 Local 1 ( 670 LM )** |  | 2026-01-27 | 2026-10-05 |  |  |
|  | 1 | **Pre-Bituminous Construction** |  | 2026-01-27 | 2026-03-31 |  |  |
| PRO-R11-RD-DL-100 |  | Material Delivery & Site Inspection for Subgrade of Road Works | 26d | 2026-01-27 | 2026-02-25 | PRO-RD-1DL-100, PRO-R09-RD-DL-100 | 142d |
| PRO-R11-RD-DL-110 |  | Material Delivery & Site Inspection for Aggregate Base Course of Road Works | 26d | 2026-02-26 | 2026-03-31 | PRO-RD-1DL-110, PRO-R09-RD-DL-110 | 130d |
|  | 2 | **Pavement Works** |  | 2026-04-01 | 2026-06-04 |  |  |
| PRO-R11-RD-DL-120 |  | Material Delivery & Site Inspection of Interlock Tiles for Landscaping | 26d | 2026-04-01 | 2026-04-30 | PRO-RD-1DL-140, PRO-R09-RD-DL-120 | 123d |
| PRO-R11-RD-DL-130 |  | Material Delivery & Site Inspection of Curbstones for Landscaping | 26d | 2026-05-02 | 2026-06-04 | PRO-RD-1DL-150, PRO-R11-RD-DL-110 FF, PRO-R09-RD-DL-130 | 81d |
|  | 4 | **Bituminous Construction** |  | 2026-06-06 | 2026-08-04 |  |  |
| PRO-R11-RD-DL-160 |  | Material Delivery & Site Inspection for Prime Coat of Road Works | 26d | 2026-06-06 | 2026-07-05 | PRO-RD-1DL-120, PRO-R09-RD-DL-160 | 94d |
| PRO-R11-RD-DL-170 |  | Material Delivery & Site Inspection for Bituminous Base & Wearing Courses of Road Works | 26d | 2026-07-06 | 2026-08-04 | PRO-RD-1DL-130, PRO-R11-RD-DL-120, PRO-R09-RD-DL-170 | 71d |
|  | 3 | **Traffic Signs Boards and Roads Marking** |  | 2026-08-05 | 2026-10-05 |  |  |
| PRO-R11-RD-DL-140 |  | Material Delivery & Site Inspection of Traffic Signs Boards For Road Works | 26d | 2026-08-05 | 2026-09-03 | PRO-RD-1DL-160, PRO-R11-RD-DL-170 FF, PRO-R09-RD-DL-140 | 55d |
| PRO-R11-RD-DL-150 |  | Material Delivery & Site Inspection of Road Markings For Road Works | 26d | 2026-09-05 | 2026-10-05 | PRO-RD-1DL-170, PRO-R11-RD-DL-140 SS, PRO-R09-RD-DL-150 | 29d |
|  | SW | **Sewage Network** |  | 2025-02-05 | 2026-03-29 |  |  |
|  | PO | **Issuance of Purchase Orders** |  | 2025-02-05 | 2025-02-17 |  |  |
|  | 1 | **Main Line Sections** |  | 2025-02-05 | 2025-02-17 |  |  |
| PRO-SW-PO-110 |  | Issuance of Purchase Order for Manhole of Sewage Network | 6d | 2025-02-05 | 2025-02-11 | ENG-MT-SW-ML-A-100, ENG-SH-SW-ML-A-110, ENG-MS-SW-ML-A-110 | 0d |
| PRO-SW-PO-100 |  | Issuance of Purchase Order for Main Line Pipes of Sewage Network | 6d | 2025-02-11 | 2025-02-17 | ENG-MT-SW-ML-A-110, ENG-SH-SW-ML-A-110, ENG-MS-SW-ML-A-110 | 11d |
|  | 3 | **Testing and Finishes** |  | 2025-02-11 | 2025-02-17 |  |  |
| PRO-SW-PO-120 |  | Issuance of Purchase Order for Manhole Covers of Sewage Network | 6d | 2025-02-11 | 2025-02-17 | ENG-MT-SW-TF-A-100, ENG-SH-SW-ML-A-110, ENG-MS-SW-ML-A-110 | 136d |
| PRO-SW-PO-140 |  | Issuance of Purchase Order for Membrane Insulation of Sewage Network | 6d | 2025-02-11 | 2025-02-17 | ENG-MT-SW-TF-A-120, ENG-SH-SW-ML-A-110, ENG-MS-SW-ML-A-110 | 162d |
|  | MF | **Manufacturing of Material** |  | 2025-02-12 | 2025-07-17 |  |  |
|  | 1 | **Main Line Sections** |  | 2025-02-12 | 2025-03-25 |  |  |
| PRO-SW-MF-110 |  | Manufacturing of Manholes for Sewage Network | 30d | 2025-02-12 | 2025-03-19 | PRO-SW-PO-110 | 0d |
| PRO-SW-MF-100 |  | Manufacturing of Main Line Pipes for Sewage Network | 30d | 2025-02-18 | 2025-03-25 | PRO-SW-PO-100 | 11d |
|  | 3 | **Testing and Finishes** |  | 2025-02-18 | 2025-07-17 |  |  |
| PRO-SW-MF-120 |  | Manufacturing of Manhole Covers for Sewage Network | 120d | 2025-02-18 | 2025-07-17 | PRO-SW-PO-120 | 136d |
| PRO-SW-MF-140 |  | Manufacturing of Membrane Insulation for Sewage Network | 120d | 2025-02-18 | 2025-07-17 | PRO-SW-PO-140 | 162d |
|  | 1DL | **1st Material Delivery & Site Inspection** |  | 2025-03-19 | 2025-07-24 |  |  |
|  | 1 | **Main Line Sections** |  | 2025-03-19 | 2025-03-26 |  |  |
| PRO-SW-1DL-100 |  | 1ST Material Delivery for Main Line Pipes of Sewage Network | 6d | 2025-03-19 | 2025-03-25 | PRO-SW-MF-100 FF, PRO-SW-MF-100 SS+24d | 11d |
| PRO-SW-1DL-110 |  | 1ST Material Delivery for Manholes of Sewage Network | 6d | 2025-03-20 | 2025-03-26 | PRO-SW-MF-110 | 0d |
|  | 3 | **Testing and Finishes** |  | 2025-07-19 | 2025-07-24 |  |  |
| PRO-SW-1DL-120 |  | 1ST Material Delivery for Manholes Covers of Sewage Network | 6d | 2025-07-19 | 2025-07-24 | PRO-SW-MF-120 | 136d |
| PRO-SW-1DL-140 |  | 1ST Material Delivery for Membrane Insulation of Sewage Network | 6d | 2025-07-19 | 2025-07-24 | PRO-SW-MF-140 | 162d |
|  | DL | **Material Delivery & Site Inspection** |  | 2025-03-26 | 2026-03-29 |  |  |
|  | 1 | **Road 18 Local 1 ( 479 LM )** |  | 2025-03-27 | 2025-09-24 |  |  |
|  | 1 | **Main Line Sections** |  | 2025-03-27 | 2025-04-23 |  |  |
| PRO-R18-SW-DL-160 |  | Material Delivery & Site Inspection of Manholes for Sewage Network | 10d | 2025-03-27 | 2025-04-12 | PRO-SW-1DL-110 | 0d |
| PRO-R18-SW-DL-150 |  | Material Delivery & Site Inspection of Main Line Pipes for Sewage Network | 10d | 2025-04-13 | 2025-04-23 | PRO-SW-1DL-100, PRO-R18-SW-DL-160 | 0d |
|  | 3 | **Testing and Finishes** |  | 2025-07-26 | 2025-09-24 |  |  |
| PRO-R18-SW-DL-170 |  | Material Delivery & Site Inspection of Manholes Covers for Sewage Network | 26d | 2025-07-26 | 2025-08-24 | PRO-SW-1DL-120, PRO-R18-SW-DL-150 | 136d |
| PRO-R18-SW-DL-190 |  | Material Delivery & Site Inspection of Membrane Insulation for Sewage Network | 26d | 2025-08-25 | 2025-09-24 | PRO-SW-1DL-140, PRO-R18-SW-DL-170 | 136d |
|  | 9 | **Road 17 Local 1 ( 500 LM )** |  | 2025-04-13 | 2025-10-25 |  |  |
|  | 1 | **Main Line Sections** |  | 2025-04-13 | 2025-05-10 |  |  |
| PRO-R17-SW-DL-110 |  | Material Delivery & Site Inspection of Manholes for Sewage Network | 15d | 2025-04-13 | 2025-04-29 | PRO-SW-1DL-110, PRO-R18-SW-DL-160 | 22d |
| PRO-R17-SW-DL-100 |  | Material Delivery & Site Inspection of Main Line Pipes for Sewage Network | 14d | 2025-04-24 | 2025-05-10 | PRO-SW-1DL-100, PRO-R18-SW-DL-150 | 13d |
|  | 3 | **Testing and Finishes** |  | 2025-08-25 | 2025-10-25 |  |  |

| ID | WBS | Task | Duration | Start | Finish | Predecessors | Total float |
| --- | --- | --- | --- | --- | --- | --- | --- |
| PRO-R17-SW-DL-120 |  | Material Delivery & Site Inspection of Manholes Covers for Sewage Network | 26d | 2025-08-25 | 2025-09-24 | PRO-SW-1DL-120, PRO-R18-SW-DL-170 | 159d |
| PRO-R17-SW-DL-130 |  | Material Delivery & Site Inspection of Membrane Insulation for Sewage Network | 26d | 2025-09-25 | 2025-10-25 | PRO-SW-1DL-140, PRO-R18-SW-DL-190 | 136d |
|  | 8 | **Road 16 Local 1 ( 527 LM )** |  | 2025-04-30 | 2025-11-24 |  |  |
|  | 1 | **Main Line Sections** |  | 2025-04-30 | 2025-05-26 |  |  |
| PRO-R16-SW-DL-110 |  | Material Delivery & Site Inspection of Manholes for Sewage Network | 15d | 2025-04-30 | 2025-05-17 | PRO-SW-1DL-110, PRO-R17-SW-DL-110 | 27d |
| PRO-R16-SW-DL-100 |  | Material Delivery & Site Inspection of Main Line Pipes for Sewage Network | 14d | 2025-05-11 | 2025-05-26 | PRO-SW-1DL-100, PRO-R17-SW-DL-100 | 19d |
|  | 3 | **Testing and Finishes** |  | 2025-09-25 | 2025-11-24 |  |  |
| PRO-R16-SW-DL-120 |  | Material Delivery & Site Inspection of Manholes Covers for Sewage Network | 26d | 2025-09-25 | 2025-10-25 | PRO-SW-1DL-120, PRO-R17-SW-DL-120 | 159d |
| PRO-R16-SW-DL-130 |  | Material Delivery & Site Inspection of Membrane Insulation for Sewage Network | 26d | 2025-10-26 | 2025-11-24 | PRO-SW-1DL-140, PRO-R17-SW-DL-130 | 136d |
|  | 7 | **Road 15 Local 1 ( 556 LM )** |  | 2025-05-18 | 2025-12-24 |  |  |
|  | 1 | **Main Line Sections** |  | 2025-05-18 | 2025-06-16 |  |  |
| PRO-R15-SW-DL-110 |  | Material Delivery & Site Inspection of Manholes for Sewage Network | 15d | 2025-05-18 | 2025-06-03 | PRO-SW-1DL-110, PRO-R16-SW-DL-110 | 32d |
| PRO-R15-SW-DL-100 |  | Material Delivery & Site Inspection of Main Line Pipes for Sewage Network | 14d | 2025-05-27 | 2025-06-16 | PRO-SW-1DL-100, PRO-R16-SW-DL-100 | 25d |
|  | 3 | **Testing and Finishes** |  | 2025-10-26 | 2025-12-24 |  |  |
| PRO-R15-SW-DL-120 |  | Material Delivery & Site Inspection of Manholes Covers for Sewage Network | 26d | 2025-10-26 | 2025-11-24 | PRO-SW-1DL-120, PRO-R16-SW-DL-120 | 159d |
| PRO-R15-SW-DL-130 |  | Material Delivery & Site Inspection of Membrane Insulation for Sewage Network | 26d | 2025-11-25 | 2025-12-24 | PRO-SW-1DL-140, PRO-R16-SW-DL-130 | 136d |
|  | 4 | **Road 10 Local 2 ( 2352 LM )** |  | 2025-06-04 | 2026-01-24 |  |  |
|  | 1 | **Main Line Sections** |  | 2025-06-04 | 2025-07-02 |  |  |
| PRO-R10-SW-DL-110 |  | Material Delivery & Site Inspection of Manholes for Sewage Network | 15d | 2025-06-04 | 2025-06-25 | PRO-SW-1DL-110, PRO-R15-SW-DL-110 | 47d |
| PRO-R10-SW-DL-100 |  | Material Delivery & Site Inspection of Main Line Pipes for Sewage Network | 14d | 2025-06-17 | 2025-07-02 | PRO-SW-1DL-100, PRO-R15-SW-DL-100 | 39d |
|  | 3 | **Testing and Finishes** |  | 2025-11-25 | 2026-01-24 |  |  |
| PRO-R10-SW-DL-120 |  | Material Delivery & Site Inspection of Manholes Covers for Sewage Network | 26d | 2025-11-25 | 2025-12-24 | PRO-SW-1DL-120, PRO-R15-SW-DL-120 | 159d |
| PRO-R10-SW-DL-130 |  | Material Delivery & Site Inspection of Membrane Insulation for Sewage Network | 26d | 2025-12-25 | 2026-01-24 | PRO-SW-1DL-140, PRO-R15-SW-DL-130 | 136d |
|  | 6 | **Road 14 Local 1 ( 584 LM )** |  | 2025-06-26 | 2026-02-23 |  |  |
|  | 1 | **Main Line Sections** |  | 2025-06-26 | 2025-07-19 |  |  |
| PRO-R14-SW-DL-110 |  | Material Delivery & Site Inspection of Manholes for Sewage Network | 15d | 2025-06-26 | 2025-07-13 | PRO-SW-1DL-110, PRO-R10-SW-DL-110 | 62d |
| PRO-R14-SW-DL-100 |  | Material Delivery & Site Inspection of Main Line Pipes for Sewage Network | 14d | 2025-07-03 | 2025-07-19 | PRO-SW-1DL-100, PRO-R10-SW-DL-100 | 55d |
|  | 3 | **Testing and Finishes** |  | 2025-12-25 | 2026-02-23 |  |  |
| PRO-R14-SW-DL-120 |  | Material Delivery & Site Inspection of Manholes Covers for Sewage Network | 26d | 2025-12-25 | 2026-01-24 | PRO-SW-1DL-120, PRO-R10-SW-DL-120 | 159d |
| PRO-R14-SW-DL-130 |  | Material Delivery & Site Inspection of Membrane Insulation for Sewage Network | 26d | 2026-01-25 | 2026-02-23 | PRO-SW-1DL-140, PRO-R10-SW-DL-130 | 136d |
|  | 2 | **Road 09 Local 2 ( 2278 LM )** |  | 2025-03-26 | 2025-09-07 |  |  |
|  | 1 | **Main Line Sections** |  | 2025-03-26 | 2025-04-10 |  |  |
| PRO-R09-SW-DL-100 |  | Material Delivery & Site Inspection of Main Line Pipes for Rising Main Network | 10d | 2025-03-26 | 2025-04-10 | PRO-SW-1DL-100 | 107d |
| PRO-R09-SW-DL-110 |  | Material Delivery & Site Inspection of Manholes for Rising Main Network | 7d | 2025-03-27 | 2025-04-08 | PRO-SW-1DL-110 | 114d |
|  | 3 | **Testing and Finishes** |  | 2025-07-26 | 2025-09-07 |  |  |
| PRO-R09-SW-DL-120 |  | Material Delivery & Site Inspection of Manholes Covers for Rising Main Network | 38d | 2025-07-26 | 2025-09-07 | PRO-SW-1DL-120 | 296d |
| PRO-R09-SW-DL-130 |  | Material Delivery & Site Inspection of Membrane Insulation for Rising Main Network | 38d | 2025-07-26 | 2025-09-07 | PRO-SW-1DL-140 | 312d |
|  | 5 | **Road 11 Local 1 ( 670 LM )** |  | 2025-07-14 | 2026-03-29 |  |  |
|  | 1 | **Main Line Sections** |  | 2025-07-14 | 2025-08-04 |  |  |
| PRO-R11-SW-DL-110 |  | Material Delivery & Site Inspection of Manholes for Sewage Network | 15d | 2025-07-14 | 2025-07-30 | PRO-SW-1DL-110, PRO-R14-SW-DL-110 | 67d |
| PRO-R11-SW-DL-100 |  | Material Delivery & Site Inspection of Main Line Pipes for Sewage Network | 14d | 2025-07-20 | 2025-08-04 | PRO-SW-1DL-100, PRO-R14-SW-DL-100 | 61d |
|  | 3 | **Testing and Finishes** |  | 2026-01-25 | 2026-03-29 |  |  |
| PRO-R11-SW-DL-120 |  | Material Delivery & Site Inspection of Manholes Covers for Sewage Network | 26d | 2026-01-25 | 2026-02-23 | PRO-SW-1DL-120, PRO-R14-SW-DL-120 | 159d |
| PRO-R11-SW-DL-130 |  | Material Delivery & Site Inspection of Membrane Insulation for Sewage Network | 26d | 2026-02-24 | 2026-03-29 | PRO-SW-1DL-140, PRO-R14-SW-DL-130 | 136d |
|  | SD | **Storm Drainage Network** |  | 2025-02-11 | 2026-03-29 |  |  |
|  | MF | **Manufacturing of Material** |  | 2025-02-18 | 2025-07-17 |  |  |
|  | 1 | **Main Line Sections** |  | 2025-02-18 | 2025-04-22 |  |  |
| PRO-SD-MF-100 |  | Manufacturing of Materials for Manholes of Storm Drainage Network | 50d | 2025-02-18 | 2025-04-22 | PRO-SD-PO-100 | 79d |
| PRO-SD-MF-110 |  | Manufacturing of Materials for Main Line Pipes of Storm Drainage Network | 40d | 2025-02-18 | 2025-04-10 | PRO-SD-PO-110 | 26d |
|  | 2 | **Catch Basin Sections** |  | 2025-02-18 | 2025-04-22 |  |  |
| PRO-SD-MF-130 |  | Manufacturing of Materials for Catch Basins of Storm Drainage Network | 50d | 2025-02-18 | 2025-04-22 | PRO-SD-PO-130 | 91d |
| PRO-SD-MF-150 |  | Manufacturing of Materials for Catch Basin Pipes of Storm Drainage Network | 50d | 2025-02-18 | 2025-04-22 | PRO-SD-PO-150 | 93d |
|  | 3 | **Testing and Finishes** |  | 2025-02-18 | 2025-07-17 |  |  |
| PRO-SD-MF-120 |  | Manufacturing of Materials for Manhole Covers of Storm Drainage Network | 120d | 2025-02-18 | 2025-07-17 | PRO-SD-PO-120 | 126d |
| PRO-SD-MF-140 |  | Manufacturing of Materials for Catch Basin Covers of Storm Drainage Network | 120d | 2025-02-18 | 2025-07-17 | PRO-SD-PO-140 | 134d |
| PRO-SD-MF-160 |  | Manufacturing of Materials for Epoxy Insulation of Storm Drainage Network | 120d | 2025-02-18 | 2025-07-17 | PRO-SD-PO-160 | 146d |
|  | PO | **Issuance of Purchase Orders** |  | 2025-02-11 | 2025-02-17 |  |  |
|  | 1 | **Main Line Sections** |  | 2025-02-11 | 2025-02-17 |  |  |
| PRO-SD-PO-100 |  | Issuance of Purchase Order for Manholes of Storm Drainage Network | 6d | 2025-02-11 | 2025-02-17 | ENG-MT-SD-ML-A-100, ENG-SH-SD-ML-A-110, ENG-MS-SD-ML-A-110 | 79d |
| PRO-SD-PO-110 |  | Issuance of Purchase Order for Main Line Pipes of Storm Drainage Network | 6d | 2025-02-11 | 2025-02-17 | ENG-MT-SD-ML-A-110, ENG-SH-SD-ML-A-110, ENG-MS-SD-ML-A-110 | 26d |
|  | 2 | **Catch Basin Sections** |  | 2025-02-11 | 2025-02-17 |  |  |
| PRO-SD-PO-130 |  | Issuance of Purchase Order for Catch Basins of Storm Drainage Network | 6d | 2025-02-11 | 2025-02-17 | ENG-MT-SD-CB-A-100, ENG-SH-SD-CB-A-110, ENG-MS-SD-CB-A-110 | 91d |
| PRO-SD-PO-150 |  | Issuance of Purchase Order for Catch Basin Pipes of Storm Drainage Network | 6d | 2025-02-11 | 2025-02-17 | ENG-MT-SD-CB-A-110, ENG-SH-SD-CB-A-110, ENG-MS-SD-CB-A-110 | 93d |
|  | 3 | **Testing and Finishes** |  | 2025-02-11 | 2025-02-17 |  |  |
| PRO-SD-PO-120 |  | Issuance of Purchase Order for Manhole Covers of Storm Drainage Network | 6d | 2025-02-11 | 2025-02-17 | ENG-MT-SD-TF-A-100, ENG-SH-SD-ML-A-110, ENG-MS-SD-ML-A-110 | 94d |
| PRO-SD-PO-140 |  | Issuance of Purchase Order for Catch Basin Covers of Storm Drainage Network | 6d | 2025-02-11 | 2025-02-17 | ENG-MT-SD-TF-A-110, ENG-SH-SD-CB-A-110, ENG-MS-SD-CB-A-110 | 94d |
| PRO-SD-PO-160 |  | Issuance of Purchase Order for Epoxy Insulation of Storm Drainage Network | 6d | 2025-02-11 | 2025-02-17 | ENG-MT-SD-TF-A-120, ENG-SH-SD-ML-A-110, ENG-MS-SD-ML-A-110 | 94d |
|  | 1DL | **1st Material Delivery & Site Inspection** |  | 2025-04-12 | 2025-07-24 |  |  |
|  | 1 | **Main Line Sections** |  | 2025-04-12 | 2025-04-29 |  |  |
| PRO-SD-1DL-110 |  | 1ST Material Delivery for Main Line Pipes of Storm Drainage Network | 6d | 2025-04-12 | 2025-04-17 | PRO-SD-MF-110 | 26d |

| ID | WBS | Task | Duration | Start | Finish | Predecessors | Total float |
| --- | --- | --- | --- | --- | --- | --- | --- |
| PRO-SD-1DL-100 |  | 1ST Material Delivery for Manholes of Storm Drainage Network | 6d | 2025-04-23 | 2025-04-29 | PRO-SD-MF-100 | 79d |
|  | 2 | **Catch Basin Sections** |  | 2025-04-23 | 2025-04-29 |  |  |
| PRO-SD-1DL-120 |  | 1ST Material Delivery for Catch Basin Pipes of Storm Drainage Network | 6d | 2025-04-23 | 2025-04-29 | PRO-SD-MF-150 | 93d |
| PRO-SD-1DL-130 |  | 1ST Material Delivery for Catch Basins of Storm Drainage Network | 6d | 2025-04-23 | 2025-04-29 | PRO-SD-MF-130 | 91d |
|  | 3 | **Testing and Finishes** |  | 2025-07-19 | 2025-07-24 |  |  |
| PRO-SD-1DL-140 |  | 1ST Material Delivery for Manholes Covers of Storm Drainage Network | 6d | 2025-07-19 | 2025-07-24 | PRO-SD-MF-120 | 126d |
| PRO-SD-1DL-150 |  | 1ST Material Delivery for Catch Basin Covers of Storm Drainage Network | 6d | 2025-07-19 | 2025-07-24 | PRO-SD-MF-140 | 134d |
| PRO-SD-1DL-160 |  | 1ST Material Delivery for Epoxy Insulation of Storm Drainage Network | 6d | 2025-07-19 | 2025-07-24 | PRO-SD-MF-160 | 146d |
|  | DL | **Material Delivery & Site Inspection** |  | 2025-04-19 | 2026-03-29 |  |  |
|  | 1 | **Road 18 Local 1 ( 479 LM )** |  | 2025-04-19 | 2025-08-24 |  |  |
|  | 1 | **Main Line Sections** |  | 2025-04-19 | 2025-05-22 |  |  |
| PRO-R18-SD-DL-180 |  | Material Delivery & Site Inspection of Main Line Pipes of Storm Drainage Network | 17d | 2025-04-19 | 2025-05-07 | PRO-SD-1DL-110 | 26d |
| PRO-R18-SD-DL-170 |  | Material Delivery & Site Inspection of Manholes of Storm Drainage Network | 20d | 2025-04-30 | 2025-05-22 | PRO-SD-1DL-100 | 79d |
|  | 2 | **Catch Basin Sections** |  | 2025-04-30 | 2025-05-29 |  |  |
| PRO-R18-SD-DL-200 |  | Material Delivery & Site Inspection of Catch Basins for Storm Drainage Network | 26d | 2025-04-30 | 2025-05-29 | PRO-SD-1DL-130 | 91d |
| PRO-R18-SD-DL-220 |  | Material Delivery & Site Inspection of Catch Basin Pipes for Storm Drainage Network | 26d | 2025-04-30 | 2025-05-29 | PRO-SD-1DL-120 | 93d |
|  | 3 | **Testing and Finishes** |  | 2025-07-26 | 2025-08-24 |  |  |
| PRO-R18-SD-DL-190 |  | Material Delivery & Site Inspection of Manholes Covers for Storm Drainage Network | 26d | 2025-07-26 | 2025-08-24 | PRO-SD-1DL-140 | 126d |
| PRO-R18-SD-DL-210 |  | Material Delivery & Site Inspection of Catch Basin Covers for Storm Drainage Network | 26d | 2025-07-26 | 2025-08-24 | PRO-SD-1DL-150 | 134d |
| PRO-R18-SD-DL-230 |  | Material Delivery & Site Inspection of Epoxy Insulation for Storm Drainage Network | 26d | 2025-07-26 | 2025-08-24 | PRO-SD-1DL-160 | 146d |
|  | 9 | **Road 17 Local 1 ( 500 LM )** |  | 2025-05-08 | 2025-09-24 |  |  |
|  | 1 | **Main Line Sections** |  | 2025-05-08 | 2025-06-19 |  |  |
| PRO-R17-SD-DL-120 |  | Material Delivery & Site Inspection of Main Line Pipes of Storm Drainage Network | 17d | 2025-05-08 | 2025-05-27 | PRO-SD-1DL-110, PRO-R18-SD-DL-180 | 26d |
| PRO-R17-SD-DL-100 |  | Material Delivery & Site Inspection of Manholes of Storm Drainage Network | 20d | 2025-05-24 | 2025-06-19 | PRO-SD-1DL-100, PRO-R18-SD-DL-170 | 248.25d |
|  | 2 | **Catch Basin Sections** |  | 2025-05-31 | 2025-07-03 |  |  |
| PRO-R17-SD-DL-110 |  | Material Delivery & Site Inspection of Catch Basin Pipes for Storm Drainage Network | 26d | 2025-05-31 | 2025-07-03 | PRO-SD-1DL-120, PRO-R18-SD-DL-220 | 106d |
| PRO-R17-SD-DL-130 |  | Material Delivery & Site Inspection of Catch Basins for Storm Drainage Network | 26d | 2025-05-31 | 2025-07-03 | PRO-SD-1DL-130, PRO-R18-SD-DL-200 | 91d |
|  | 3 | **Testing and Finishes** |  | 2025-08-25 | 2025-09-24 |  |  |
| PRO-R17-SD-DL-140 |  | Material Delivery & Site Inspection of Manholes Covers for Storm Drainage Network | 26d | 2025-08-25 | 2025-09-24 | PRO-SD-1DL-140, PRO-R18-SD-DL-190 | 126d |
| PRO-R17-SD-DL-150 |  | Material Delivery & Site Inspection of Catch Basin Covers for Storm Drainage Network | 26d | 2025-08-25 | 2025-09-24 | PRO-SD-1DL-150, PRO-R18-SD-DL-210 | 134d |
| PRO-R17-SD-DL-160 |  | Material Delivery & Site Inspection of Epoxy Insulation for Storm Drainage Network | 26d | 2025-08-25 | 2025-09-24 | PRO-SD-1DL-160, PRO-R18-SD-DL-230 | 146d |
|  | 8 | **Road 16 Local 1 ( 527 LM )** |  | 2025-05-28 | 2025-10-25 |  |  |
|  | 1 | **Main Line Sections** |  | 2025-05-28 | 2025-07-13 |  |  |
| PRO-R16-SD-DL-120 |  | Material Delivery & Site Inspection of Main Line Pipes of Storm Drainage Network | 17d | 2025-05-28 | 2025-06-21 | PRO-SD-1DL-110, PRO-R17-SD-DL-120 | 26d |
| PRO-R16-SD-DL-100 |  | Material Delivery & Site Inspection of Manholes of Storm Drainage Network | 20d | 2025-06-21 | 2025-07-13 | PRO-SD-1DL-100, PRO-R17-SD-DL-100 | 248.25d |
|  | 2 | **Catch Basin Sections** |  | 2025-07-05 | 2025-08-03 |  |  |
| PRO-R16-SD-DL-110 |  | Material Delivery & Site Inspection of Catch Basin Pipes for Storm Drainage Network | 26d | 2025-07-05 | 2025-08-03 | PRO-SD-1DL-120, PRO-R17-SD-DL-110 | 106d |
| PRO-R16-SD-DL-130 |  | Material Delivery & Site Inspection of Catch Basins for Storm Drainage Network | 26d | 2025-07-05 | 2025-08-03 | PRO-SD-1DL-130, PRO-R17-SD-DL-130 | 91d |
|  | 3 | **Testing and Finishes** |  | 2025-09-25 | 2025-10-25 |  |  |
| PRO-R16-SD-DL-140 |  | Material Delivery & Site Inspection of Manholes Covers for Storm Drainage Network | 26d | 2025-09-25 | 2025-10-25 | PRO-SD-1DL-140, PRO-R17-SD-DL-140 | 126d |
| PRO-R16-SD-DL-150 |  | Material Delivery & Site Inspection of Catch Basin Covers for Storm Drainage Network | 26d | 2025-09-25 | 2025-10-25 | PRO-SD-1DL-150, PRO-R17-SD-DL-150 | 134d |
| PRO-R16-SD-DL-160 |  | Material Delivery & Site Inspection of Epoxy Insulation for Storm Drainage Network | 26d | 2025-09-25 | 2025-10-25 | PRO-SD-1DL-160, PRO-R17-SD-DL-160 | 146d |
|  | 7 | **Road 15 Local 1 ( 556 LM )** |  | 2025-06-22 | 2025-11-24 |  |  |
|  | 1 | **Main Line Sections** |  | 2025-06-22 | 2025-08-12 |  |  |
| PRO-R15-SD-DL-120 |  | Material Delivery & Site Inspection of Main Line Pipes of Storm Drainage Network | 17d | 2025-06-22 | 2025-07-10 | PRO-SD-1DL-110, PRO-R16-SD-DL-120 | 26d |
| PRO-R15-SD-DL-100 |  | Material Delivery & Site Inspection of Manholes of Storm Drainage Network | 25.75d | 2025-07-14 | 2025-08-12 | PRO-SD-1DL-100, PRO-R16-SD-DL-100 | 248.25d |
|  | 2 | **Catch Basin Sections** |  | 2025-08-04 | 2025-09-02 |  |  |
| PRO-R15-SD-DL-110 |  | Material Delivery & Site Inspection of Catch Basin Pipes for Storm Drainage Network | 26d | 2025-08-04 | 2025-09-02 | PRO-SD-1DL-120, PRO-R16-SD-DL-110 | 106d |
| PRO-R15-SD-DL-130 |  | Material Delivery & Site Inspection of Catch Basins for Storm Drainage Network | 26d | 2025-08-04 | 2025-09-02 | PRO-SD-1DL-130, PRO-R16-SD-DL-130 | 91d |
|  | 3 | **Testing and Finishes** |  | 2025-10-26 | 2025-11-24 |  |  |
| PRO-R15-SD-DL-140 |  | Material Delivery & Site Inspection of Manholes Covers for Storm Drainage Network | 26d | 2025-10-26 | 2025-11-24 | PRO-SD-1DL-140, PRO-R16-SD-DL-140 | 126d |
| PRO-R15-SD-DL-150 |  | Material Delivery & Site Inspection of Catch Basin Covers for Storm Drainage Network | 26d | 2025-10-26 | 2025-11-24 | PRO-SD-1DL-150, PRO-R16-SD-DL-150 | 134d |
| PRO-R15-SD-DL-160 |  | Material Delivery & Site Inspection of Epoxy Insulation for Storm Drainage Network | 26d | 2025-10-26 | 2025-11-24 | PRO-SD-1DL-160, PRO-R16-SD-DL-160 | 146d |
|  | 4 | **Road 10 Local 2 ( 2352 LM )** |  | 2025-07-12 | 2025-12-24 |  |  |
|  | 1 | **Main Line Sections** |  | 2025-07-12 | 2025-09-11 |  |  |
| PRO-R10-SD-DL-120 |  | Material Delivery & Site Inspection of Main Line Pipes of Storm Drainage Network | 17d | 2025-07-12 | 2025-07-30 | PRO-SD-1DL-110, PRO-R15-SD-DL-120 | 26d |
| PRO-R10-SD-DL-100 |  | Material Delivery & Site Inspection of Manholes of Storm Drainage Network | 26d | 2025-08-12 | 2025-09-11 | PRO-SD-1DL-100, PRO-R15-SD-DL-100 | 248.25d |
|  | 2 | **Catch Basin Sections** |  | 2025-09-03 | 2025-10-04 |  |  |
| PRO-R10-SD-DL-110 |  | Material Delivery & Site Inspection of Catch Basin Pipes for Storm Drainage Network | 26d | 2025-09-03 | 2025-10-04 | PRO-SD-1DL-120, PRO-R15-SD-DL-110 | 106d |
| PRO-R10-SD-DL-130 |  | Material Delivery & Site Inspection of Catch Basins for Storm Drainage Network | 26d | 2025-09-03 | 2025-10-04 | PRO-SD-1DL-130, PRO-R15-SD-DL-130 | 96d |
|  | 3 | **Testing and Finishes** |  | 2025-11-25 | 2025-12-24 |  |  |
| PRO-R10-SD-DL-140 |  | Material Delivery & Site Inspection of Manholes Covers for Storm Drainage Network | 26d | 2025-11-25 | 2025-12-24 | PRO-SD-1DL-140, PRO-R15-SD-DL-140 | 126d |
| PRO-R10-SD-DL-150 |  | Material Delivery & Site Inspection of Catch Basin Covers for Storm Drainage Network | 26d | 2025-11-25 | 2025-12-24 | PRO-SD-1DL-150, PRO-R15-SD-DL-150 | 134d |
| PRO-R10-SD-DL-160 |  | Material Delivery & Site Inspection of Epoxy Insulation for Storm Drainage Network | 26d | 2025-11-25 | 2025-12-24 | PRO-SD-1DL-160, PRO-R15-SD-DL-160 | 146d |
|  | 6 | **Road 14 Local 1 ( 584 LM )** |  | 2025-07-31 | 2026-01-24 |  |  |
|  | 1 | **Main Line Sections** |  | 2025-07-31 | 2025-10-13 |  |  |
| PRO-R14-SD-DL-120 |  | Material Delivery & Site Inspection of Main Line Pipes of Storm Drainage Network | 17d | 2025-07-31 | 2025-08-19 | PRO-SD-1DL-110, PRO-R10-SD-DL-120 | 26d |
| PRO-R14-SD-DL-100 |  | Material Delivery & Site Inspection of Manholes of Storm Drainage Network | 26d | 2025-09-11 | 2025-10-13 | PRO-SD-1DL-100, PRO-R10-SD-DL-100 | 248.25d |
|  | 2 | **Catch Basin Sections** |  | 2025-10-05 | 2025-11-03 |  |  |
| PRO-R14-SD-DL-110 |  | Material Delivery & Site Inspection of Catch Basin Pipes for Storm Drainage Network | 26d | 2025-10-05 | 2025-11-03 | PRO-SD-1DL-120, PRO-R10-SD-DL-110 | 164d |

| ID | WBS | Task | Duration | Start | Finish | Predecessors | Total float |
| --- | --- | --- | --- | --- | --- | --- | --- |
| PRO-R14-SD-DL-130 |  | Material Delivery & Site Inspection of Catch Basins for Storm Drainage Network | 26d | 2025-10-05 | 2025-11-03 | PRO-SD-1DL-130, PRO-R10-SD-DL-130 | 158d |
|  | 3 | **Testing and Finishes** |  | 2025-12-25 | 2026-01-24 |  |  |
| PRO-R14-SD-DL-140 |  | Material Delivery & Site Inspection of Manholes Covers for Storm Drainage Network | 26d | 2025-12-25 | 2026-01-24 | PRO-SD-1DL-140, PRO-R10-SD-DL-140 | 126d |
| PRO-R14-SD-DL-150 |  | Material Delivery & Site Inspection of Catch Basin Covers for Storm Drainage Network | 26d | 2025-12-25 | 2026-01-24 | PRO-SD-1DL-150, PRO-R10-SD-DL-150 | 134d |
| PRO-R14-SD-DL-160 |  | Material Delivery & Site Inspection of Epoxy Insulation for Storm Drainage Network | 26d | 2025-12-25 | 2026-01-24 | PRO-SD-1DL-160, PRO-R10-SD-DL-160 | 146d |
|  | 2 | **Road 09 Local 2 ( 2278 LM )** |  | 2025-08-20 | 2026-02-23 |  |  |
|  | 1 | **Main Line Sections** |  | 2025-08-20 | 2025-10-27 |  |  |
| PRO-R09-SD-DL-120 |  | Material Delivery & Site Inspection of Main Line Pipes of Storm Drainage Network | 17d | 2025-08-20 | 2025-09-08 | PRO-SD-1DL-110, PRO-R14-SD-DL-120 | 26d |
| PRO-R09-SD-DL-100 |  | Material Delivery & Site Inspection of Manholes of Storm Drainage Network | 12d | 2025-10-13 | 2025-10-27 | PRO-SD-1DL-100, PRO-R14-SD-DL-100 | 248.25d |
|  | 2 | **Catch Basin Sections** |  | 2025-11-04 | 2025-12-03 |  |  |
| PRO-R09-SD-DL-110 |  | Material Delivery & Site Inspection of Catch Basin Pipes for Storm Drainage Network | 26d | 2025-11-04 | 2025-12-03 | PRO-SD-1DL-120, PRO-R14-SD-DL-110 | 164d |
| PRO-R09-SD-DL-130 |  | Material Delivery & Site Inspection of Catch Basins for Storm Drainage Network | 26d | 2025-11-04 | 2025-12-03 | PRO-SD-1DL-130, PRO-R14-SD-DL-130 | 158d |
|  | 3 | **Testing and Finishes** |  | 2026-01-25 | 2026-02-23 |  |  |
| PRO-R09-SD-DL-140 |  | Material Delivery & Site Inspection of Manholes Covers for Storm Drainage Network | 26d | 2026-01-25 | 2026-02-23 | PRO-SD-1DL-140, PRO-R14-SD-DL-140 | 126d |
| PRO-R09-SD-DL-150 |  | Material Delivery & Site Inspection of Catch Basin Covers for Storm Drainage Network | 26d | 2026-01-25 | 2026-02-23 | PRO-SD-1DL-150, PRO-R14-SD-DL-150 | 134d |
| PRO-R09-SD-DL-160 |  | Material Delivery & Site Inspection of Epoxy Insulation for Storm Drainage Network | 26d | 2026-01-25 | 2026-02-23 | PRO-SD-1DL-160, PRO-R14-SD-DL-160 | 146d |
|  | 5 | **Road 11 Local 1 ( 670 LM )** |  | 2025-09-09 | 2026-03-29 |  |  |
|  | 1 | **Main Line Sections** |  | 2025-09-09 | 2025-11-26 |  |  |
| PRO-R11-SD-DL-120 |  | Material Delivery & Site Inspection of Main Line Pipes of Storm Drainage Network | 17d | 2025-09-09 | 2025-09-29 | PRO-SD-1DL-110, PRO-R09-SD-DL-120 | 49d |
| PRO-R11-SD-DL-100 |  | Material Delivery & Site Inspection of Manholes of Storm Drainage Network | 26d | 2025-10-27 | 2025-11-26 | PRO-SD-1DL-100, PRO-R09-SD-DL-100 | 248.25d |
|  | 2 | **Catch Basin Sections** |  | 2025-12-04 | 2026-01-03 |  |  |
| PRO-R11-SD-DL-110 |  | Material Delivery & Site Inspection of Catch Basin Pipes for Storm Drainage Network | 26d | 2025-12-04 | 2026-01-03 | PRO-SD-1DL-120, PRO-R09-SD-DL-110 | 164d |
| PRO-R11-SD-DL-130 |  | Material Delivery & Site Inspection of Catch Basins for Storm Drainage Network | 26d | 2025-12-04 | 2026-01-03 | PRO-SD-1DL-130, PRO-R09-SD-DL-130 | 158d |
|  | 3 | **Testing and Finishes** |  | 2026-02-24 | 2026-03-29 |  |  |
| PRO-R11-SD-DL-140 |  | Material Delivery & Site Inspection of Manholes Covers for Storm Drainage Network | 26d | 2026-02-24 | 2026-03-29 | PRO-SD-1DL-140, PRO-R09-SD-DL-140 | 134d |
| PRO-R11-SD-DL-150 |  | Material Delivery & Site Inspection of Catch Basin Covers for Storm Drainage Network | 26d | 2026-02-24 | 2026-03-29 | PRO-SD-1DL-150, PRO-R09-SD-DL-150 | 134d |
| PRO-R11-SD-DL-160 |  | Material Delivery & Site Inspection of Epoxy Insulation for Storm Drainage Network | 26d | 2026-02-24 | 2026-03-29 | PRO-SD-1DL-160, PRO-R09-SD-DL-160 | 146d |
|  | PW | **Potable Water Network** |  | 2025-02-09 | 2026-02-09 |  |  |
|  | PO | **Issuance of Purchase Orders** |  | 2025-02-09 | 2025-02-23 |  |  |
|  | 1 | **Main Line Sections** |  | 2025-02-11 | 2025-02-17 |  |  |
| PRO-PW-PO-100 |  | Issuance of Purchase Order for Main Line Pipes of Potable Water Network | 6d | 2025-02-11 | 2025-02-17 | ENG-MT-PW-ML-A-100, ENG-SH-PW-ML-A-110, ENG-MS-PW-ML-A-110, ENG-SH-PW-FH-A-110 | 28d |
| PRO-PW-PO-110 |  | Issuance of Purchase Order for Valves of Potable Water Network | 6d | 2025-02-11 | 2025-02-17 | ENG-MT-PW-ML-A-110, ENG-SH-PW-ML-A-110, ENG-MS-PW-ML-A-110, ENG-SH-PW-FH-A-110 | 28d |
|  | 3 | **Fire Hydrant** |  | 2025-02-11 | 2025-02-23 |  |  |
| PRO-PW-PO-120 |  | Issuance of Purchase Order for Fire Hydrants of Potable Water Network | 10d | 2025-02-11 | 2025-02-23 | ENG-MT-PW-FH-A-100, ENG-SH-PW-ML-A-110, ENG-MS-PW-ML-A-110, ENG-SH-PW-FH-A-110 | 34d |
|  | 4 | **Testing and Finishes** |  | 2025-02-09 | 2025-02-19 |  |  |
| PRO-PW-PO-130 |  | Issuance of Purchase Order for Surface Box of Potable Water Network | 10d | 2025-02-09 | 2025-02-19 | ENG-MT-PW-TF-A-100, ENG-SH-PW-ML-A-110, ENG-MS-PW-ML-A-110, ENG-SH-PW-FH-A-110 | 171d |
|  | MF | **Manufacturing of Material** |  | 2025-02-18 | 2025-05-29 |  |  |
|  | 1 | **Main Line Sections** |  | 2025-02-18 | 2025-05-04 |  |  |
| PRO-PW-MF-100 |  | Manufacturing of Main Line Pipes for Potable Water Network | 60d | 2025-02-18 | 2025-05-04 | PRO-PW-PO-100 | 28d |
| PRO-PW-MF-110 |  | Manufacturing of Valves for Potable Water Network | 60d | 2025-02-18 | 2025-05-04 | PRO-PW-PO-110 | 28d |
|  | 3 | **Fire Hydrant** |  | 2025-02-24 | 2025-05-08 |  |  |
| PRO-PW-MF-120 |  | Manufacturing of Fire Hydrants for Potable Water Network | 60d | 2025-02-24 | 2025-05-08 | PRO-PW-PO-120 | 34d |
|  | 4 | **Testing and Finishes** |  | 2025-02-20 | 2025-05-29 |  |  |
| PRO-PW-MF-130 |  | Manufacturing for Surface Box of Potable Water Network | 80d | 2025-02-20 | 2025-05-29 | PRO-PW-PO-130 | 171d |
|  | 1DL | **1st Material Delivery & Site Inspection** |  | 2025-05-05 | 2025-06-10 |  |  |
|  | 1 | **Main Line Sections** |  | 2025-05-05 | 2025-05-11 |  |  |
| PRO-PW-1DL-100 |  | 1ST Material Delivery for Main Line Pipes of Potable Water Network | 6d | 2025-05-05 | 2025-05-11 | PRO-PW-MF-100 | 28d |
| PRO-PW-1DL-110 |  | 1ST Material Delivery for Valves of Potable Water Network | 6d | 2025-05-05 | 2025-05-11 | PRO-PW-MF-110 | 28d |
|  | 3 | **Fire Hydrant** |  | 2025-05-10 | 2025-05-15 |  |  |
| PRO-PW-1DL-120 |  | 1ST Material Delivery for Fire Hydrants of Potable Water Network | 6d | 2025-05-10 | 2025-05-15 | PRO-PW-MF-120 | 34d |
|  | 4 | **Testing and Finishes** |  | 2025-05-31 | 2025-06-10 |  |  |
| PRO-PW-1DL-130 |  | 1ST Material Delivery for Finishes of Potable Water Network | 6d | 2025-05-31 | 2025-06-10 | PRO-PW-MF-130 | 171d |
|  | DL | **Material Delivery & Site Inspection** |  | 2025-05-12 | 2026-02-09 |  |  |
|  | 1 | **Road 18 Local 1 ( 479 LM )** |  | 2025-05-12 | 2025-07-10 |  |  |
|  | 1 | **Main Line Sections** |  | 2025-05-12 | 2025-06-15 |  |  |
| PRO-R18-PW-DL-140 |  | Material Delivery & Site Inspection of Main Line Pipes for Potable Water Network | 26d | 2025-05-12 | 2025-06-15 | PRO-PW-1DL-100 | 28d |
| PRO-R18-PW-DL-150 |  | Material Delivery & Site Inspection of Valves for Potable Water Network | 26d | 2025-05-12 | 2025-06-15 | PRO-PW-1DL-110 | 28d |
|  | 3 | **Fire Hydrant** |  | 2025-05-17 | 2025-06-19 |  |  |
| PRO-R18-PW-DL-160 |  | Material Delivery & Site Inspection of Fire Hydrants for Potable Water Network | 26d | 2025-05-17 | 2025-06-19 | PRO-PW-1DL-120 | 34d |
|  | 4 | **Testing and Finishes** |  | 2025-06-11 | 2025-07-10 |  |  |
| PRO-R18-PW-DL-170 |  | Material Delivery & Site Inspection for Finishes of Potable Water Network | 26d | 2025-06-11 | 2025-07-10 | PRO-PW-1DL-130 | 171d |
|  | 9 | **Road 17 Local 1 ( 500 LM )** |  | 2025-06-16 | 2025-08-10 |  |  |
|  | 1 | **Main Line Sections** |  | 2025-06-16 | 2025-07-15 |  |  |
| PRO-R17-PW-DL-100 |  | Material Delivery & Site Inspection of Main Line Pipes for Potable Water Network | 26d | 2025-06-16 | 2025-07-15 | PRO-PW-1DL-100, PRO-R18-PW-DL-140 | 28d |
| PRO-R17-PW-DL-110 |  | Material Delivery & Site Inspection of Valves for Potable Water Network | 26d | 2025-06-16 | 2025-07-15 | PRO-PW-1DL-110, PRO-R18-PW-DL-150 | 28d |
|  | 3 | **Fire Hydrant** |  | 2025-06-21 | 2025-07-20 |  |  |
| PRO-R17-PW-DL-120 |  | Material Delivery & Site Inspection of Fire Hydrants for Potable Water Network | 26d | 2025-06-21 | 2025-07-20 | PRO-PW-1DL-120, PRO-R18-PW-DL-160 | 34d |
|  | 4 | **Testing and Finishes** |  | 2025-07-12 | 2025-08-10 |  |  |
| PRO-R17-PW-DL-130 |  | Material Delivery & Site Inspection for Finishes of Potable Water Network | 26d | 2025-07-12 | 2025-08-10 | PRO-PW-1DL-130, PRO-R18-PW-DL-170 | 171d |
|  | 8 | **Road 16 Local 1 ( 527 LM )** |  | 2025-07-16 | 2025-09-09 |  |  |

| ID | WBS | Task | Duration | Start | Finish | Predecessors | Total float |
| --- | --- | --- | --- | --- | --- | --- | --- |
|  | 1 | **Main Line Sections** |  | 2025-07-16 | 2025-08-14 |  |  |
| PRO-R16-PW-DL-100 |  | Material Delivery & Site Inspection of Main Line Pipes for Potable Water Network | 26d | 2025-07-16 | 2025-08-14 | PRO-PW-1DL-100, PRO-R17-PW-DL-100 | 28d |
| PRO-R16-PW-DL-110 |  | Material Delivery & Site Inspection of Valves for Potable Water Network | 26d | 2025-07-16 | 2025-08-14 | PRO-PW-1DL-110, PRO-R17-PW-DL-110 | 28d |
|  | 3 | **Fire Hydrant** |  | 2025-07-21 | 2025-08-19 |  |  |
| PRO-R16-PW-DL-120 |  | Material Delivery & Site Inspection of Fire Hydrants for Potable Water Network | 26d | 2025-07-21 | 2025-08-19 | PRO-PW-1DL-120, PRO-R17-PW-DL-120 | 34d |
|  | 4 | **Testing and Finishes** |  | 2025-08-11 | 2025-09-09 |  |  |
| PRO-R16-PW-DL-130 |  | Material Delivery & Site Inspection for Finishes of Potable Water Network | 26d | 2025-08-11 | 2025-09-09 | PRO-PW-1DL-130, PRO-R17-PW-DL-130 | 171d |
|  | 7 | **Road 15 Local 1 ( 556 LM )** |  | 2025-08-16 | 2025-10-11 |  |  |
|  | 1 | **Main Line Sections** |  | 2025-08-16 | 2025-09-14 |  |  |
| PRO-R15-PW-DL-100 |  | Material Delivery & Site Inspection of Main Line Pipes for Potable Water Network | 26d | 2025-08-16 | 2025-09-14 | PRO-PW-1DL-100, PRO-R16-PW-DL-100 | 28d |
| PRO-R15-PW-DL-110 |  | Material Delivery & Site Inspection of Valves for Potable Water Network | 26d | 2025-08-16 | 2025-09-14 | PRO-PW-1DL-110, PRO-R16-PW-DL-110 | 28d |
|  | 3 | **Fire Hydrant** |  | 2025-08-20 | 2025-09-18 |  |  |
| PRO-R15-PW-DL-120 |  | Material Delivery & Site Inspection of Fire Hydrants for Potable Water Network | 26d | 2025-08-20 | 2025-09-18 | PRO-PW-1DL-120, PRO-R16-PW-DL-120 | 34d |
|  | 4 | **Testing and Finishes** |  | 2025-09-10 | 2025-10-11 |  |  |
| PRO-R15-PW-DL-130 |  | Material Delivery & Site Inspection for Finishes of Potable Water Network | 26d | 2025-09-10 | 2025-10-11 | PRO-PW-1DL-130, PRO-R16-PW-DL-130 | 171d |
|  | 4 | **Road 10 Local 2 ( 2352 LM )** |  | 2025-09-15 | 2025-11-10 |  |  |
|  | 1 | **Main Line Sections** |  | 2025-09-15 | 2025-10-15 |  |  |
| PRO-R10-PW-DL-100 |  | Material Delivery & Site Inspection of Main Line Pipes for Potable Water Network | 26d | 2025-09-15 | 2025-10-15 | PRO-PW-1DL-100, PRO-R15-PW-DL-100 | 28d |
| PRO-R10-PW-DL-110 |  | Material Delivery & Site Inspection of Valves for Potable Water Network | 26d | 2025-09-15 | 2025-10-15 | PRO-PW-1DL-110, PRO-R15-PW-DL-110 | 28d |
|  | 3 | **Fire Hydrant** |  | 2025-09-20 | 2025-10-20 |  |  |
| PRO-R10-PW-DL-120 |  | Material Delivery & Site Inspection of Fire Hydrants for Potable Water Network | 26d | 2025-09-20 | 2025-10-20 | PRO-PW-1DL-120, PRO-R15-PW-DL-120 | 34d |
|  | 4 | **Testing and Finishes** |  | 2025-10-12 | 2025-11-10 |  |  |
| PRO-R10-PW-DL-130 |  | Material Delivery & Site Inspection for Finishes of Potable Water Network | 26d | 2025-10-12 | 2025-11-10 | PRO-PW-1DL-130, PRO-R15-PW-DL-130 | 171d |
|  | 3 | **Road 14 Local 1 ( 584 LM )** |  | 2025-10-16 | 2025-12-10 |  |  |
|  | 1 | **Main Line Sections** |  | 2025-10-16 | 2025-11-15 |  |  |
| PRO-R14-PW-DL-100 |  | Material Delivery & Site Inspection of Main Line Pipes for Potable Water Network | 26d | 2025-10-16 | 2025-11-15 | PRO-PW-1DL-100, PRO-R10-PW-DL-100 | 28d |
| PRO-R14-PW-DL-110 |  | Material Delivery & Site Inspection of Valves for Potable Water Network | 26d | 2025-10-16 | 2025-11-15 | PRO-PW-1DL-110, PRO-R10-PW-DL-110 | 28d |
|  | 3 | **Fire Hydrant** |  | 2025-10-21 | 2025-11-19 |  |  |
| PRO-R14-PW-DL-120 |  | Material Delivery & Site Inspection of Fire Hydrants for Potable Water Network | 26d | 2025-10-21 | 2025-11-19 | PRO-PW-1DL-120, PRO-R10-PW-DL-120 | 34d |
|  | 4 | **Testing and Finishes** |  | 2025-11-11 | 2025-12-10 |  |  |
| PRO-R14-PW-DL-130 |  | Material Delivery & Site Inspection for Finishes of Potable Water Network | 26d | 2025-11-11 | 2025-12-10 | PRO-PW-1DL-130, PRO-R10-PW-DL-130 | 171d |
|  | 2 | **Road 09 Local 2 ( 2278 LM )** |  | 2025-11-16 | 2026-01-10 |  |  |
|  | 1 | **Main Line Sections** |  | 2025-11-16 | 2025-12-15 |  |  |
| PRO-R09-PW-DL-100 |  | Material Delivery & Site Inspection of Main Line Pipes for Potable Water Network | 26d | 2025-11-16 | 2025-12-15 | PRO-PW-1DL-100, PRO-R14-PW-DL-100 | 28d |
| PRO-R09-PW-DL-110 |  | Material Delivery & Site Inspection of Valves for Potable Water Network | 26d | 2025-11-16 | 2025-12-15 | PRO-PW-1DL-110, PRO-R14-PW-DL-110 | 28d |
|  | 3 | **Fire Hydrant** |  | 2025-11-20 | 2025-12-20 |  |  |
| PRO-R09-PW-DL-120 |  | Material Delivery & Site Inspection of Fire Hydrants for Potable Water Network | 26d | 2025-11-20 | 2025-12-20 | PRO-PW-1DL-120, PRO-R14-PW-DL-120 | 34d |
|  | 4 | **Testing and Finishes** |  | 2025-12-11 | 2026-01-10 |  |  |
| PRO-R09-PW-DL-130 |  | Material Delivery & Site Inspection for Finishes of Potable Water Network | 26d | 2025-12-11 | 2026-01-10 | PRO-PW-1DL-130, PRO-R14-PW-DL-130 | 171d |
|  | 5 | **Road 11 Local 1 ( 670 LM )** |  | 2025-12-16 | 2026-02-09 |  |  |
|  | 1 | **Main Line Sections** |  | 2025-12-16 | 2026-01-14 |  |  |
| PRO-R11-PW-DL-100 |  | Material Delivery & Site Inspection of Main Line Pipes for Potable Water Network | 26d | 2025-12-16 | 2026-01-14 | PRO-PW-1DL-100, PRO-R09-PW-DL-100 | 28d |
| PRO-R11-PW-DL-110 |  | Material Delivery & Site Inspection of Valves for Potable Water Network | 26d | 2025-12-16 | 2026-01-14 | PRO-PW-1DL-110, PRO-R09-PW-DL-110 | 28d |
|  | 3 | **Fire Hydrant** |  | 2025-12-21 | 2026-01-19 |  |  |
| PRO-R11-PW-DL-120 |  | Material Delivery & Site Inspection of Fire Hydrants for Potable Water Network | 26d | 2025-12-21 | 2026-01-19 | PRO-PW-1DL-120, PRO-R09-PW-DL-120 | 34d |
|  | 4 | **Testing and Finishes** |  | 2026-01-11 | 2026-02-09 |  |  |
| PRO-R11-PW-DL-130 |  | Material Delivery & Site Inspection for Finishes of Potable Water Network | 26d | 2026-01-11 | 2026-02-09 | PRO-PW-1DL-130, PRO-R09-PW-DL-130 | 171d |
|  | IR | **Irrigation Network** |  | 2025-02-11 | 2025-12-21 |  |  |
|  | PO | **Issuance of Purchase Orders** |  | 2025-02-11 | 2025-02-17 |  |  |
|  | 1 | **Main Line Pipes** |  | 2025-02-11 | 2025-02-17 |  |  |
| PRO-IR-PO-100 |  | Issuance of Purchase Order for Main Line Pipes of Irrigation Network | 6d | 2025-02-11 | 2025-02-17 | ENG-MT-IR-ML-A-100, ENG-SH-IR-ML-A-110, ENG-MS-IR-ML-A-110 | 53.5d |
| PRO-IR-PO-110 |  | Issuance of Purchase Order for Valves of Irrigation Network | 6d | 2025-02-11 | 2025-02-17 | ENG-MT-IR-ML-A-110, ENG-SH-IR-ML-A-110, ENG-MS-IR-ML-A-110 | 46.5d |
|  | MF | **Manufacturing of Material** |  | 2025-02-18 | 2025-07-16 |  |  |
|  | 1 | **Main Line Pipes** |  | 2025-02-18 | 2025-07-16 |  |  |
| PRO-IR-MF-100 |  | Manufacturing of Main Line Pipes for Irrigation Network | 105d | 2025-02-18 | 2025-06-30 | PRO-IR-PO-100 | 53.5d |
| PRO-IR-MF-110 |  | Manufacturing of Valves for Irrigation Network | 119d | 2025-02-18 | 2025-07-16 | PRO-IR-PO-110 | 46.5d |
|  | 1DL | **1st Material Delivery & Site Inspection** |  | 2025-07-01 | 2025-07-23 |  |  |
|  | 1 | **Main Line Pipes** |  | 2025-07-01 | 2025-07-23 |  |  |
| PRO-IR-1DL-100 |  | 1ST Material Delivery for Main Line Pipes of Irrigation Network | 6d | 2025-07-01 | 2025-07-07 | PRO-IR-MF-100 | 53.5d |
| PRO-IR-1DL-110 |  | 1ST Material Delivery for Valves of Irrigation Network | 6d | 2025-07-17 | 2025-07-23 | PRO-IR-MF-110 | 46.5d |
|  | DL | **Material Delivery & Site Inspection** |  | 2025-07-08 | 2025-12-21 |  |  |
|  | 1 | **Road 18 Local 1 ( 479 LM )** |  | 2025-07-08 | 2025-08-11 |  |  |
|  | 1 | **Main Line Pipes** |  | 2025-07-08 | 2025-08-11 |  |  |
| PRO-R18-IR-DL-120 |  | Material Delivery & Site Inspection of Main Line Pipes for Irrigation Network | 16d | 2025-07-08 | 2025-07-26 | PRO-IR-1DL-100 | 53.5d |
| PRO-R18-IR-DL-130 |  | Material Delivery & Site Inspection of Valves for Irrigation Network | 16d | 2025-07-24 | 2025-08-11 | PRO-IR-1DL-110 | 46.5d |
|  | 9 | **Road 17 Local 1 ( 500 LM )** |  | 2025-07-27 | 2025-08-30 |  |  |
|  | 1 | **Main Line Pipes** |  | 2025-07-27 | 2025-08-30 |  |  |
| PRO-R17-IR-DL-100 |  | Material Delivery & Site Inspection of Main Line Pipes for Irrigation Network | 16d | 2025-07-27 | 2025-08-13 | PRO-IR-1DL-100, PRO-R18-IR-DL-120 | 53.5d |
| PRO-R17-IR-DL-110 |  | Material Delivery & Site Inspection of Valves for Irrigation Network | 16d | 2025-08-12 | 2025-08-30 | PRO-IR-1DL-110, PRO-R18-IR-DL-130 | 46.5d |
|  | 8 | **Road 16 Local 1 ( 527 LM )** |  | 2025-08-14 | 2025-09-17 |  |  |

| ID | WBS | Task | Duration | Start | Finish | Predecessors | Total float |
| --- | --- | --- | --- | --- | --- | --- | --- |
|  | 1 | **Main Line Pipes** |  | 2025-08-14 | 2025-09-17 |  |  |
| PRO-R16-IR-DL-100 |  | Material Delivery & Site Inspection of Main Line Pipes for Irrigation Network | 16d | 2025-08-14 | 2025-09-01 | PRO-IR-1DL-100, PRO-R17-IR-DL-100 | 53.5d |
| PRO-R16-IR-DL-110 |  | Material Delivery & Site Inspection of Valves for Irrigation Network | 16d | 2025-08-31 | 2025-09-17 | PRO-IR-1DL-110, PRO-R17-IR-DL-110 | 46.5d |
|  | 7 | **Road 15 Local 1 ( 556 LM )** |  | 2025-09-02 | 2025-10-07 |  |  |
|  | 1 | **Main Line Pipes** |  | 2025-09-02 | 2025-10-07 |  |  |
| PRO-R15-IR-DL-100 |  | Material Delivery & Site Inspection of Main Line Pipes for Irrigation Network | 16d | 2025-09-02 | 2025-09-20 | PRO-IR-1DL-100, PRO-R16-IR-DL-100 | 53.5d |
| PRO-R15-IR-DL-110 |  | Material Delivery & Site Inspection of Valves for Irrigation Network | 16d | 2025-09-18 | 2025-10-07 | PRO-IR-1DL-110, PRO-R16-IR-DL-110 | 46.5d |
|  | 4 | **Road 10 Local 2 ( 2352 LM )** |  | 2025-09-21 | 2025-10-26 |  |  |
|  | 1 | **Main Line Pipes** |  | 2025-09-21 | 2025-10-26 |  |  |
| PRO-R19.2-IR-DL-100 |  | Material Delivery & Site Inspection of Main Line Pipes for Irrigation Network | 16d | 2025-09-21 | 2025-10-09 | PRO-IR-1DL-100, PRO-R15-IR-DL-100 | 53.5d |
| PRO-R19.2-IR-DL-110 |  | Material Delivery & Site Inspection of Valves for Irrigation Network | 16d | 2025-10-08 | 2025-10-26 | PRO-IR-1DL-110, PRO-R15-IR-DL-110 | 46.5d |
|  | 6 | **Road 14 Local 1 ( 584 LM )** |  | 2025-10-11 | 2025-11-13 |  |  |
|  | 1 | **Main Line Pipes** |  | 2025-10-11 | 2025-11-13 |  |  |
| PRO-R14-IR-DL-100 |  | Material Delivery & Site Inspection of Main Line Pipes for Irrigation Network | 16d | 2025-10-11 | 2025-10-28 | PRO-IR-1DL-100, PRO-R19.2-IR-DL-100 | 53.5d |
| PRO-R14-IR-DL-110 |  | Material Delivery & Site Inspection of Valves for Irrigation Network | 16d | 2025-10-27 | 2025-11-13 | PRO-IR-1DL-110, PRO-R19.2-IR-DL-110 | 46.5d |
|  | 2 | **Road 09 Local 2 ( 2278 LM )** |  | 2025-10-29 | 2025-12-02 |  |  |
|  | 1 | **Main Line Pipes** |  | 2025-10-29 | 2025-12-02 |  |  |
| PRO-R09-IR-DL-100 |  | Material Delivery & Site Inspection of Main Line Pipes for Irrigation Network | 16d | 2025-10-29 | 2025-11-16 | PRO-IR-1DL-100, PRO-R14-IR-DL-100 | 53.5d |
| PRO-R09-IR-DL-110 |  | Material Delivery & Site Inspection of Valves for Irrigation Network | 16d | 2025-11-15 | 2025-12-02 | PRO-IR-1DL-110, PRO-R14-IR-DL-110 | 46.5d |
|  | 5 | **Road 11 Local 1 ( 670 LM )** |  | 2025-11-17 | 2025-12-21 |  |  |
|  | 1 | **Main Line Pipes** |  | 2025-11-17 | 2025-12-21 |  |  |
| PRO-R11-IR-DL-140 |  | Material Delivery & Site Inspection of Main Line Pipes for Irrigation Network | 16d | 2025-11-17 | 2025-12-04 | PRO-IR-1DL-100, PRO-R09-IR-DL-100 | 53.5d |
| PRO-R11-IR-DL-150 |  | Material Delivery & Site Inspection of Valves for Irrigation Network | 16d | 2025-12-03 | 2025-12-21 | PRO-IR-1DL-110, PRO-R09-IR-DL-110 | 46.5d |
|  | MV | **Medium Voltage Network** |  | 2025-02-11 | 2026-03-04 |  |  |
|  | PO | **Issuance of Purchase Orders** |  | 2025-02-11 | 2025-02-25 |  |  |
|  | 1 | **Cabling Works** |  | 2025-02-11 | 2025-02-25 |  |  |
| PRO-MV-PO-100 |  | Issuance of Purchase Order for Medium Voltage Cables of Medium Voltage Network | 12d | 2025-02-11 | 2025-02-25 | ENG-MT-MV-ML-A-100, ENG-SH-MV-A-110, ENG-MS-MV-A-110 | 101d |
|  | 2 | **RMU Concrete Works** |  | 2025-02-11 | 2025-02-25 |  |  |
| PRO-MV-PO-110 |  | Issuance of Purchase Order for RMU Concrete Foundations of Medium Voltage Network | 12d | 2025-02-11 | 2025-02-25 | ENG-MT-MV-SS-A-100, ENG-SH-MV-A-110, ENG-MS-MV-A-110 | 182d |
|  | 3 | **Termination and Testing Works** |  | 2025-02-11 | 2025-02-25 |  |  |
| PRO-MV-PO-120 |  | Issuance of Purchase Order for Termination and Joints Kits of Medium Voltage Network | 12d | 2025-02-11 | 2025-02-25 | ENG-MT-MV-TF-A-100, ENG-SH-MV-A-110, ENG-MS-MV-A-110 | 189d |
|  | MF | **Manufacturing of Material** |  | 2025-02-26 | 2025-09-09 |  |  |
|  | 1 | **Cabling Works** |  | 2025-02-26 | 2025-05-01 |  |  |
| PRO-MV-MF-100 |  | Manufacturing of Medium Voltage Cables for Medium Voltage Network | 52d | 2025-02-26 | 2025-05-01 | PRO-MV-PO-100 | 101d |
|  | 2 | **RMU Concrete Works** |  | 2025-02-26 | 2025-09-09 |  |  |
| PRO-MV-MF-120 |  | Manufacturing of RMU Concrete Foundations for Medium Voltage Network | 160d | 2025-02-26 | 2025-09-09 | PRO-MV-PO-110 | 182d |
|  | 3 | **Termination and Testing Works** |  | 2025-02-26 | 2025-05-01 |  |  |
| PRO-MV-MF-110 |  | Manufacturing of Termination and Joints Kits for Medium Voltage Network | 52d | 2025-02-26 | 2025-05-01 | PRO-MV-PO-120 | 189d |
|  | 1DL | **1st Material Delivery & Site Inspection** |  | 2025-05-03 | 2025-11-10 |  |  |
|  | 1 | **Cabling Works** |  | 2025-05-03 | 2025-05-15 |  |  |
| PRO-MV-1DL-100 |  | 1ST Material Delivery for Medium Voltage Cables of Medium Voltage Network | 12d | 2025-05-03 | 2025-05-15 | PRO-MV-MF-100 | 101d |
|  | 2 | **RMU Concrete Works** |  | 2025-09-10 | 2025-11-10 |  |  |
| PRO-MV-1DL-110 |  | 1ST Material Delivery for RMU Concrete Foundations of Medium Voltage Network | 52d | 2025-09-10 | 2025-11-10 | PRO-MV-MF-120 | 182d |
|  | 3 | **Termination and Testing Works** |  | 2025-05-03 | 2025-06-01 |  |  |
| PRO-MV-1DL-120 |  | 1ST Material Delivery for Termination and Joints Kits of Medium Voltage Network | 26d | 2025-05-03 | 2025-06-01 | PRO-MV-MF-110, PRO-MV-1DL-100 FF | 189d |
|  | DL | **Material Delivery & Site Inspection** |  | 2025-05-17 | 2026-03-04 |  |  |
|  | 1 | **Road 18 Local 1 ( 479 LM )** |  | 2025-05-17 | 2025-07-20 |  |  |
|  | 1 | **Cabling Works** |  | 2025-05-17 | 2025-06-19 |  |  |
| PRO-R18-MV-DL-120 |  | Material Delivery & Site Inspection of Medium Voltage Cables for Medium Voltage Network | 26d | 2025-05-17 | 2025-06-19 | PRO-MV-1DL-100 | 101d |
|  | 3 | **Termination and Testing Works** |  | 2025-06-21 | 2025-07-20 |  |  |
| PRO-R18-MV-DL-130 |  | Material Delivery & Site Inspection of Termination and Joints Kits for Medium Voltage Network | 26d | 2025-06-21 | 2025-07-20 | PRO-MV-1DL-120, PRO-R18-MV-DL-120 | 177d |
|  | 9 | **Road 17 Local 1 ( 500 LM )** |  | 2025-06-21 | 2026-03-04 |  |  |
|  | 1 | **Cabling Works** |  | 2025-06-21 | 2025-07-20 |  |  |
| PRO-R17-MV-DL-100 |  | Material Delivery & Site Inspection of Medium Voltage Cables for Medium Voltage Network | 26d | 2025-06-21 | 2025-07-20 | PRO-MV-1DL-100, PRO-R18-MV-DL-120 | 101d |
|  | 2 | **RMU Concrete Works** |  | 2026-01-20 | 2026-03-04 |  |  |
| PRO-R17-MV-DL-120 |  | Material Delivery & Site Inspection of RMU Concrete Foundations for Medium Voltage Network | 38d | 2026-01-20 | 2026-03-04 | PRO-MV-1DL-110, PRO-R10-MV-DL-120 | 148d |
|  | 3 | **Termination and Testing Works** |  | 2025-07-21 | 2025-08-19 |  |  |
| PRO-R17-MV-DL-110 |  | Material Delivery & Site Inspection of Termination and Joints Kits for Medium Voltage Network | 26d | 2025-07-21 | 2025-08-19 | PRO-MV-1DL-120, PRO-R18-MV-DL-130 | 177d |
|  | 3 | **Road 16 Local 1 ( 527 LM )** |  | 2025-07-21 | 2025-09-18 |  |  |
|  | 1 | **Cabling Works** |  | 2025-07-21 | 2025-08-19 |  |  |
| PRO-R16-MV-DL-100 |  | Material Delivery & Site Inspection of Medium Voltage Cables for Medium Voltage Network | 26d | 2025-07-21 | 2025-08-19 | PRO-MV-1DL-100, PRO-R17-MV-DL-100 | 101d |
|  | 3 | **Termination and Testing Works** |  | 2025-08-20 | 2025-09-18 |  |  |
| PRO-R16-MV-DL-110 |  | Material Delivery & Site Inspection of Termination and Joints Kits for Medium Voltage Network | 26d | 2025-08-20 | 2025-09-18 | PRO-MV-1DL-120, PRO-R17-MV-DL-110 | 177d |
|  | 7 | **Road 15 Local 1 ( 556 LM )** |  | 2025-08-20 | 2025-10-20 |  |  |
|  | 1 | **Cabling Works** |  | 2025-08-20 | 2025-09-18 |  |  |
| PRO-R15-MV-DL-100 |  | Material Delivery & Site Inspection of Medium Voltage Cables for Medium Voltage Network | 26d | 2025-08-20 | 2025-09-18 | PRO-MV-1DL-100, PRO-R16-MV-DL-100 | 101d |
|  | 3 | **Termination and Testing Works** |  | 2025-09-20 | 2025-10-20 |  |  |
| PRO-R15-MV-DL-110 |  | Material Delivery & Site Inspection of Termination and Joints Kits for Medium Voltage Network | 26d | 2025-09-20 | 2025-10-20 | PRO-MV-1DL-120, PRO-R16-MV-DL-110 | 177d |
|  | 4 | **Road 10 Local 2 ( 2352 LM )** |  | 2025-09-20 | 2026-01-19 |  |  |
|  | 1 | **Cabling Works** |  | 2025-09-20 | 2025-10-20 |  |  |

| ID | WBS | Task | Duration | Start | Finish | Predecessors | Total float |
| --- | --- | --- | --- | --- | --- | --- | --- |
| PRO-R10-MV-DL-100 |  | Material Delivery & Site Inspection of Medium Voltage Cables for Medium Voltage Network | 26d | 2025-09-20 | 2025-10-20 | PRO-MV-1DL-100, PRO-R15-MV-DL-100 | 101d |
|  | 2 | **RMU Concrete Works** |  | 2025-12-21 | 2026-01-19 |  |  |
| PRO-R10-MV-DL-120 |  | Material Delivery & Site Inspection of RMU Concrete Foundations for Medium Voltage Network | 26d | 2025-12-21 | 2026-01-19 | PRO-MV-1DL-110, PRO-R11-MV-DL-100 FF | 148d |
|  | 3 | **Termination and Testing Works** |  | 2025-10-21 | 2025-11-19 |  |  |
| PRO-R10-MV-DL-110 |  | Material Delivery & Site Inspection of Termination and Joints Kits for Medium Voltage Network | 26d | 2025-10-21 | 2025-11-19 | PRO-MV-1DL-120, PRO-R15-MV-DL-110 | 177d |
|  | 6 | **Road 14 Local 1 ( 584 LM )** |  | 2025-10-21 | 2025-12-20 |  |  |
|  | 1 | **Cabling Works** |  | 2025-10-21 | 2025-11-19 |  |  |
| PRO-R14-MV-DL-100 |  | Material Delivery & Site Inspection of Medium Voltage Cables for Medium Voltage Network | 26d | 2025-10-21 | 2025-11-19 | PRO-MV-1DL-100, PRO-R10-MV-DL-100 | 101d |
|  | 3 | **Termination and Testing Works** |  | 2025-11-20 | 2025-12-20 |  |  |
| PRO-R14-MV-DL-110 |  | Material Delivery & Site Inspection of Termination and Joints Kits for Medium Voltage Network | 26d | 2025-11-20 | 2025-12-20 | PRO-MV-1DL-120, PRO-R10-MV-DL-110 | 177d |
|  | 2 | **Road 09 Local 2 ( 2278 LM )** |  | 2025-11-20 | 2026-01-19 |  |  |
|  | 1 | **Cabling Works** |  | 2025-11-20 | 2025-12-20 |  |  |
| PRO-R09-MV-DL-100 |  | Material Delivery & Site Inspection of Medium Voltage Cables for Medium Voltage Network | 26d | 2025-11-20 | 2025-12-20 | PRO-MV-1DL-100, PRO-R14-MV-DL-100 | 101d |
|  | 3 | **Termination and Testing Works** |  | 2025-12-21 | 2026-01-19 |  |  |
| PRO-R09-MV-DL-110 |  | Material Delivery & Site Inspection of Termination and Joints Kits for Medium Voltage Network | 26d | 2025-12-21 | 2026-01-19 | PRO-MV-1DL-120, PRO-R14-MV-DL-110 | 177d |
|  | 5 | **Road 11 Local 1 ( 670 LM )** |  | 2025-12-21 | 2026-02-18 |  |  |
|  | 1 | **Cabling Works** |  | 2025-12-21 | 2026-01-19 |  |  |
| PRO-R11-MV-DL-100 |  | Material Delivery & Site Inspection of Medium Voltage Cables for Medium Voltage Network | 26d | 2025-12-21 | 2026-01-19 | PRO-MV-1DL-100, PRO-R09-MV-DL-100 | 148d |
|  | 3 | **Termination and Testing Works** |  | 2026-01-20 | 2026-02-18 |  |  |
| PRO-R11-MV-DL-110 |  | Material Delivery & Site Inspection of Termination and Joints Kits for Medium Voltage Network | 26d | 2026-01-20 | 2026-02-18 | PRO-MV-1DL-120, PRO-R09-MV-DL-110 | 177d |
|  | SL | **Street Lighting Network** |  | 2025-02-11 | 2026-06-23 |  |  |
|  | PO | **Issuance of Purchase Orders** |  | 2025-02-11 | 2025-03-23 |  |  |
|  | 1 | **Cabling Works** |  | 2025-02-11 | 2025-02-17 |  |  |
| PRO-SL-PO-100 |  | Issuance of Purchase Order for Lighting Cables of Street Lighting Network | 6d | 2025-02-11 | 2025-02-17 | ENG-MT-SL-ML-A-100, ENG-SH-SL-A-110, ENG-MS-SL-A-110 | 36d |
|  | 2 | **Lighting Poles Works** |  | 2025-02-11 | 2025-03-11 |  |  |
| PRO-SL-PO-110 |  | Issuance of Purchase Order for Lighting Poles Foundations of Street Lighting Network | 12d | 2025-02-11 | 2025-02-25 | ENG-MT-SL-A-100, ENG-SH-SL-A-110, ENG-MS-SL-A-110 | 56d |
| PRO-SL-PO-120 |  | Issuance of Purchase Order for Lighting Poles of Street Lighting Network | 12d | 2025-02-11 | 2025-02-25 | ENG-MT-SL-A-110, ENG-SH-SL-A-110, ENG-MS-SL-A-110 | 54d |
| PRO-SL-PO-140 |  | Issuance of Purchase Order for Lighting Fixtures of Street Lighting Network | 12d | 2025-02-26 | 2025-03-11 | ENG-MT-SL-A-120, ENG-SH-SL-A-110, ENG-MS-SL-A-110, PRO-SL-PO-120 | 102d |
|  | 3 | **Distribution Panel Board** |  | 2025-03-12 | 2025-03-23 |  |  |
| PRO-SL-PO-160 |  | Issuance of Purchase Order for Distrubution Panel Boards of Street Lighting Network | 10d | 2025-03-12 | 2025-03-23 | ENG-MT-SL-DB-A-100, ENG-SH-SL-A-110, ENG-MS-SL-A-110, PRO-SL-PO-140 | 143d |
|  | 4 | **Earthing System Works** |  | 2025-03-12 | 2025-03-23 |  |  |
| PRO-SL-PO-150 |  | Issuance of Purchase Order for Lighting Earthing of Street Lighting Network | 10d | 2025-03-12 | 2025-03-23 | ENG-MT-SL-ES-A-100, ENG-SH-SL-A-110, ENG-MS-SL-A-110, PRO-SL-PO-170 SS | 315d |
|  | 5 | **Termination and Testing Works** |  | 2025-03-12 | 2025-03-23 |  |  |
| PRO-SL-PO-130 |  | Issuance of Purchase Order for Fuse Boxes of Street Lighting Network | 10d | 2025-03-12 | 2025-03-23 | ENG-MT-SL-TF-A-100, ENG-SH-SL-A-110, ENG-MS-SL-A-110, PRO-SL-PO-160 SS | 143d |
| PRO-SL-PO-170 |  | Issuance of Purchase Order for Cable Lugs of Street Lighting Network | 10d | 2025-03-12 | 2025-03-23 | ENG-MT-SL-TF-A-110, ENG-SH-SL-A-110, ENG-MS-SL-A-110, PRO-SL-PO-130 SS | 169d |
|  | MF | **Manufacturing of Material** |  | 2025-02-18 | 2025-07-24 |  |  |
|  | 1 | **Cabling Works** |  | 2025-02-18 | 2025-05-04 |  |  |
| PRO-SL-MF-100 |  | Manufacturing of Lighting Cables for Street Lighting Network | 60d | 2025-02-18 | 2025-05-04 | PRO-SL-PO-100 | 36d |
|  | 2 | **Lighting Poles Works** |  | 2025-02-26 | 2025-07-24 |  |  |
| PRO-SL-MF-110 |  | Manufacturing of Lighting Poles Foundations for Street Lighting Network | 60d | 2025-02-26 | 2025-05-11 | PRO-SL-PO-110 | 56d |
| PRO-SL-MF-120 |  | Manufacturing of Lighting Poles for Street Lighting Network | 60d | 2025-02-26 | 2025-05-11 | PRO-SL-PO-120 | 54d |
| PRO-SL-MF-140 |  | Manufacturing of Lighting Fixtures for Street Lighting Network | 60d | 2025-05-12 | 2025-07-24 | PRO-SL-PO-140, PRO-SL-MF-120 | 54d |
|  | 3 | **Distribution Panel Board** |  | 2025-06-25 | 2025-07-24 |  |  |
| PRO-SL-MF-160 |  | Manufacturing of Distrubution Panel Boards for Street Lighting Network | 26d | 2025-06-25 | 2025-07-24 | PRO-SL-PO-160, PRO-SL-MF-140 FF | 71d |
|  | 4 | **Earthing System Works** |  | 2025-06-25 | 2025-07-24 |  |  |
| PRO-SL-MF-150 |  | Manufacturing of Lighting Earthing for Street Lighting Network | 26d | 2025-06-25 | 2025-07-24 | PRO-SL-PO-150, PRO-SL-MF-170 FF | 243d |
|  | 5 | **Termination and Testing Works** |  | 2025-06-25 | 2025-07-24 |  |  |
| PRO-SL-MF-130 |  | Manufacturing of Fuse Boxes for Street Lighting Network | 26d | 2025-06-25 | 2025-07-24 | PRO-SL-PO-130, PRO-SL-MF-160 FF | 71d |
| PRO-SL-MF-170 |  | Manufacturing of Cable Lugs for Street Lighting Network | 26d | 2025-06-25 | 2025-07-24 | PRO-SL-PO-170, PRO-SL-MF-130 FF | 97d |
|  | 1DL | **1st Material Delivery & Site Inspection** |  | 2025-05-05 | 2025-08-11 |  |  |
|  | 1 | **Cabling Works** |  | 2025-05-05 | 2025-05-11 |  |  |
| PRO-SL-1DL-100 |  | 1ST Material Delivery for Lighting Cables of Street Lighting Network | 6d | 2025-05-05 | 2025-05-11 | PRO-SL-MF-100 | 36d |
|  | 2 | **Lighting Poles Works** |  | 2025-05-12 | 2025-07-31 |  |  |
| PRO-SL-1DL-110 |  | 1ST Material Delivery for Lighting Poles Foundations of Street Lighting Network | 6d | 2025-05-12 | 2025-05-18 | PRO-SL-MF-110 | 56d |
| PRO-SL-1DL-120 |  | 1ST Material Delivery for Lighting Poles of Street Lighting Network | 6d | 2025-05-12 | 2025-05-18 | PRO-SL-MF-120 | 82d |
| PRO-SL-1DL-140 |  | 1ST Material Delivery for Lighting Fixtures of Street Lighting Network | 6d | 2025-07-26 | 2025-07-31 | PRO-SL-MF-140 | 54d |
|  | 3 | **Distribution Panel Board** |  | 2025-07-26 | 2025-07-31 |  |  |
| PRO-SL-1DL-160 |  | 1ST Material Delivery for Distrubution Panel Boards of Street Lighting Network | 6d | 2025-07-26 | 2025-07-31 | PRO-SL-MF-160 | 258d |
|  | 5 | **Termination and Testing Works** |  | 2025-07-26 | 2025-08-11 |  |  |
| PRO-SL-1DL-130 |  | 1ST Material Delivery for Fuse Boxes of Street Lighting Network | 15d | 2025-07-26 | 2025-08-11 | PRO-SL-MF-130 | 71d |
| PRO-SL-1DL-170 |  | 1ST Material Delivery for Cable Lugs of Street Lighting Network | 15d | 2025-07-26 | 2025-08-11 | PRO-SL-MF-170 | 97d |
|  | 4 | **Earthing System Works** |  | 2025-07-26 | 2025-07-31 |  |  |
| PRO-SL-1DL-150 |  | 1ST Material Delivery for Lighting Earthing of Street Lighting Network | 6d | 2025-07-26 | 2025-07-31 | PRO-SL-MF-150 | 243d |
|  | DL | **Material Delivery & Site Inspection** |  | 2025-05-12 | 2026-06-23 |  |  |
|  | 1 | **Road 18 Local 1 ( 479 LM )** |  | 2025-05-12 | 2025-11-15 |  |  |
|  | 1 | **Cabling Works** |  | 2025-05-12 | 2025-06-15 |  |  |
| PRO-R18-SL-DL-180 |  | Material Delivery & Site Inspection of Lighting Cables for Street Lighting Network | 26d | 2025-05-12 | 2025-06-15 | PRO-SL-1DL-100 | 36d |
|  | 2 | **Lighting Poles Works** |  | 2025-06-16 | 2025-09-14 |  |  |
| PRO-R18-SL-DL-190 |  | Material Delivery & Site Inspection of Lighting Poles Foundations for Street Lighting Network | 26d | 2025-06-16 | 2025-07-15 | PRO-SL-1DL-110, PRO-R18-SL-DL-180 | 36d |
| PRO-R18-SL-DL-200 |  | Material Delivery & Site Inspection of Lighting Poles for Street Lighting Network | 26d | 2025-07-16 | 2025-08-14 | PRO-SL-1DL-120, PRO-R18-SL-DL-190 | 36d |

| ID | WBS | Task | Duration | Start | Finish | Predecessors | Total float |
| --- | --- | --- | --- | --- | --- | --- | --- |
| PRO-R18-SL-DL-220 |  | Material Delivery & Site Inspection of Lighting Fixtures for Street Lighting Network | 26d | 2025-08-16 | 2025-09-14 | PRO-SL-1DL-140, PRO-R18-SL-DL-200 | 42d |
|  | 3 | **Distribution Panel Board** |  |  |  |  |  |
|  | 4 | **Termination and Testing Works** |  | 2025-09-15 | 2025-11-15 |  |  |
| PRO-R18-SL-DL-210 |  | Material Delivery & Site Inspection of Fuse Boxes for Street Lighting Network | 26d | 2025-09-15 | 2025-10-15 | PRO-SL-1DL-130, PRO-R18-SL-DL-220 | 42d |
| PRO-R18-SL-DL-250 |  | Material Delivery & Site Inspection of Cable Lugs for Street Lighting Network | 26d | 2025-10-16 | 2025-11-15 | PRO-SL-1DL-170, PRO-R18-SL-DL-210 | 42d |
|  | 5 | **Earthing System Works** |  |  |  |  |  |
|  | 9 | **Road 17 Local 1 ( 500 LM )** |  | 2025-06-16 | 2025-12-15 |  |  |
|  | 1 | **Cabling Works** |  | 2025-06-16 | 2025-07-15 |  |  |
| PRO-R17-SL-DL-100 |  | Material Delivery & Site Inspection of Lighting Cables for Street Lighting Network | 26d | 2025-06-16 | 2025-07-15 | PRO-SL-1DL-100, PRO-R18-SL-DL-180 | 108d |
|  | 2 | **Lighting Poles Works** |  | 2025-07-16 | 2025-10-15 |  |  |
| PRO-R17-SL-DL-110 |  | Material Delivery & Site Inspection of Lighting Poles Foundations for Street Lighting Network | 26d | 2025-07-16 | 2025-08-14 | PRO-SL-1DL-110, PRO-R18-SL-DL-190 | 41d |
| PRO-R17-SL-DL-120 |  | Material Delivery & Site Inspection of Lighting Poles for Street Lighting Network | 26d | 2025-08-16 | 2025-09-14 | PRO-SL-1DL-120, PRO-R18-SL-DL-200 | 36d |
| PRO-R17-SL-DL-140 |  | Material Delivery & Site Inspection of Lighting Fixtures for Street Lighting Network | 26d | 2025-09-15 | 2025-10-15 | PRO-SL-1DL-140, PRO-R18-SL-DL-220 | 64.5d |
|  | 3 | **Distribution Panel Board** |  |  |  |  |  |
|  | 4 | **Termination and Testing Works** |  | 2025-10-16 | 2025-12-15 |  |  |
| PRO-R17-SL-DL-130 |  | Material Delivery & Site Inspection of Fuse Boxes for Street Lighting Network | 26d | 2025-10-16 | 2025-11-15 | PRO-SL-1DL-130, PRO-R18-SL-DL-210 | 50.5d |
| PRO-R17-SL-DL-170 |  | Material Delivery & Site Inspection of Cable Lugs for Street Lighting Network | 26d | 2025-11-16 | 2025-12-15 | PRO-SL-1DL-170, PRO-R18-SL-DL-250 | 42d |
|  | 5 | **Earthing System Works** |  |  |  |  |  |
|  | 8 | **Road 16 Local 1 ( 527 LM )** |  | 2025-07-16 | 2026-01-14 |  |  |
|  | 1 | **Cabling Works** |  | 2025-07-16 | 2025-08-14 |  |  |
| PRO-R16-SL-DL-100 |  | Material Delivery & Site Inspection of Lighting Cables for Street Lighting Network | 26d | 2025-07-16 | 2025-08-14 | PRO-SL-1DL-100, PRO-R17-SL-DL-100 | 108d |
|  | 2 | **Lighting Poles Works** |  | 2025-08-16 | 2025-11-15 |  |  |
| PRO-R16-SL-DL-110 |  | Material Delivery & Site Inspection of Lighting Poles Foundations for Street Lighting Network | 26d | 2025-08-16 | 2025-09-14 | PRO-SL-1DL-110, PRO-R17-SL-DL-110 | 41d |
| PRO-R16-SL-DL-120 |  | Material Delivery & Site Inspection of Lighting Poles for Street Lighting Network | 26d | 2025-09-15 | 2025-10-15 | PRO-SL-1DL-120, PRO-R17-SL-DL-120 | 36d |
| PRO-R16-SL-DL-140 |  | Material Delivery & Site Inspection of Lighting Fixtures for Street Lighting Network | 26d | 2025-10-16 | 2025-11-15 | PRO-SL-1DL-140, PRO-R17-SL-DL-140 | 64.5d |
|  | 3 | **Distribution Panel Board** |  |  |  |  |  |
|  | 4 | **Termination and Testing Works** |  | 2025-11-16 | 2026-01-14 |  |  |
| PRO-R16-SL-DL-130 |  | Material Delivery & Site Inspection of Fuse Boxes for Street Lighting Network | 26d | 2025-11-16 | 2025-12-15 | PRO-SL-1DL-130, PRO-R17-SL-DL-130 | 50.5d |
| PRO-R16-SL-DL-170 |  | Material Delivery & Site Inspection of Cable Lugs for Street Lighting Network | 26d | 2025-12-16 | 2026-01-14 | PRO-SL-1DL-170, PRO-R17-SL-DL-170 | 42d |
|  | 5 | **Earthing System Works** |  |  |  |  |  |
|  | 7 | **Road 15 Local 1 ( 556 LM )** |  | 2025-08-16 | 2026-02-14 |  |  |
|  | 1 | **Cabling Works** |  | 2025-08-16 | 2025-09-14 |  |  |
| PRO-R15-SL-DL-100 |  | Material Delivery & Site Inspection of Lighting Cables for Street Lighting Network | 26d | 2025-08-16 | 2025-09-14 | PRO-SL-1DL-100, PRO-R16-SL-DL-100 | 108d |
|  | 2 | **Lighting Poles Works** |  | 2025-09-15 | 2025-12-15 |  |  |
| PRO-R15-SL-DL-110 |  | Material Delivery & Site Inspection of Lighting Poles Foundations for Street Lighting Network | 26d | 2025-09-15 | 2025-10-15 | PRO-SL-1DL-110, PRO-R16-SL-DL-110 | 41d |
| PRO-R15-SL-DL-120 |  | Material Delivery & Site Inspection of Lighting Poles for Street Lighting Network | 26d | 2025-10-16 | 2025-11-15 | PRO-SL-1DL-120, PRO-R16-SL-DL-120 | 36d |
| PRO-R15-SL-DL-140 |  | Material Delivery & Site Inspection of Lighting Fixtures for Street Lighting Network | 26d | 2025-11-16 | 2025-12-15 | PRO-SL-1DL-140, PRO-R16-SL-DL-140 | 64.5d |
|  | 3 | **Distribution Panel Board** |  |  |  |  |  |
|  | 4 | **Termination and Testing Works** |  | 2025-12-16 | 2026-02-14 |  |  |
| PRO-R15-SL-DL-130 |  | Material Delivery & Site Inspection of Fuse Boxes for Street Lighting Network | 26d | 2025-12-16 | 2026-01-14 | PRO-SL-1DL-130, PRO-R16-SL-DL-130 | 50.5d |
| PRO-R15-SL-DL-170 |  | Material Delivery & Site Inspection of Cable Lugs for Street Lighting Network | 26d | 2026-01-15 | 2026-02-14 | PRO-SL-1DL-170, PRO-R16-SL-DL-170 | 42d |
|  | 5 | **Earthing System Works** |  |  |  |  |  |
|  | 4 | **Road 10 Local 2 ( 2352 LM )** |  | 2025-08-02 | 2026-03-16 |  |  |
|  | 1 | **Cabling Works** |  | 2025-09-15 | 2025-10-15 |  |  |
| PRO-R10-SL-DL-100 |  | Material Delivery & Site Inspection of Lighting Cables for Street Lighting Network | 26d | 2025-09-15 | 2025-10-15 | PRO-SL-1DL-100, PRO-R15-SL-DL-100 | 108d |
|  | 2 | **Lighting Poles Works** |  | 2025-10-16 | 2026-01-14 |  |  |
| PRO-R10-SL-DL-110 |  | Material Delivery & Site Inspection of Lighting Poles Foundations for Street Lighting Network | 26d | 2025-10-16 | 2025-11-15 | PRO-SL-1DL-110, PRO-R15-SL-DL-110 | 41d |
| PRO-R10-SL-DL-120 |  | Material Delivery & Site Inspection of Lighting Poles for Street Lighting Network | 26d | 2025-11-16 | 2025-12-15 | PRO-SL-1DL-120, PRO-R15-SL-DL-120 | 36d |
| PRO-R10-SL-DL-140 |  | Material Delivery & Site Inspection of Lighting Fixtures for Street Lighting Network | 26d | 2025-12-16 | 2026-01-14 | PRO-SL-1DL-140, PRO-R15-SL-DL-140 | 64.5d |
|  | 3 | **Distribution Panel Board** |  | 2025-08-02 | 2025-08-31 |  |  |
| PRO-R10-SL-DL-160 |  | Material Delivery & Site Inspection of Distrubution Panel Boards for Street Lighting Network | 26d | 2025-08-02 | 2025-08-31 | PRO-SL-1DL-160 | 258d |
|  | 4 | **Termination and Testing Works** |  | 2026-01-15 | 2026-03-16 |  |  |
| PRO-R10-SL-DL-130 |  | Material Delivery & Site Inspection of Fuse Boxes for Street Lighting Network | 26d | 2026-01-15 | 2026-02-14 | PRO-SL-1DL-130, PRO-R15-SL-DL-130 | 50.5d |
| PRO-R10-SL-DL-170 |  | Material Delivery & Site Inspection of Cable Lugs for Street Lighting Network | 26d | 2026-02-15 | 2026-03-16 | PRO-SL-1DL-170, PRO-R15-SL-DL-170 | 42d |
|  | 5 | **Earthing System Works** |  | 2025-08-02 | 2025-08-31 |  |  |
| PRO-R10-SL-DL-150 |  | Material Delivery & Site Inspection of Lighting Earthing for Street Lighting Network | 26d | 2025-08-02 | 2025-08-31 | PRO-SL-1DL-150 | 243d |
|  | 6 | **Road 14 Local 1 ( 584 LM )** |  | 2025-10-16 | 2026-04-19 |  |  |
|  | 1 | **Cabling Works** |  | 2025-10-16 | 2025-11-15 |  |  |
| PRO-R14-SL-DL-100 |  | Material Delivery & Site Inspection of Lighting Cables for Street Lighting Network | 26d | 2025-10-16 | 2025-11-15 | PRO-SL-1DL-100, PRO-R10-SL-DL-100 | 108d |
|  | 2 | **Lighting Poles Works** |  | 2025-11-16 | 2026-02-14 |  |  |
| PRO-R14-SL-DL-110 |  | Material Delivery & Site Inspection of Lighting Poles Foundations for Street Lighting Network | 26d | 2025-11-16 | 2025-12-15 | PRO-SL-1DL-110, PRO-R10-SL-DL-110 | 41d |
| PRO-R14-SL-DL-120 |  | Material Delivery & Site Inspection of Lighting Poles for Street Lighting Network | 26d | 2025-12-16 | 2026-01-14 | PRO-SL-1DL-120, PRO-R10-SL-DL-120 | 36d |
| PRO-R14-SL-DL-140 |  | Material Delivery & Site Inspection of Lighting Fixtures for Street Lighting Network | 26d | 2026-01-15 | 2026-02-14 | PRO-SL-1DL-140, PRO-R10-SL-DL-140 | 64.5d |
|  | 3 | **Distribution Panel Board** |  |  |  |  |  |
|  | 4 | **Termination and Testing Works** |  | 2026-02-15 | 2026-04-19 |  |  |
| PRO-R14-SL-DL-130 |  | Material Delivery & Site Inspection of Fuse Boxes for Street Lighting Network | 26d | 2026-02-15 | 2026-03-16 | PRO-SL-1DL-130, PRO-R10-SL-DL-130 | 50.5d |
| PRO-R14-SL-DL-170 |  | Material Delivery & Site Inspection of Cable Lugs for Street Lighting Network | 26d | 2026-03-17 | 2026-04-19 | PRO-SL-1DL-170, PRO-R10-SL-DL-170 | 42d |
|  | 5 | **Earthing System Works** |  |  |  |  |  |
|  | 2 | **Road 09 Local 2 ( 2278 LM )** |  | 2025-08-02 | 2026-05-19 |  |  |
|  | 1 | **Cabling Works** |  | 2025-11-16 | 2025-12-15 |  |  |

| ID | WBS | Task | Duration | Start | Finish | Predecessors | Total float |
| --- | --- | --- | --- | --- | --- | --- | --- |
| PRO-R09-SL-DL-100 |  | Material Delivery & Site Inspection of Lighting Cables for Street Lighting Network | 26d | 2025-11-16 | 2025-12-15 | PRO-SL-1DL-100, PRO-R14-SL-DL-100 | 108d |
|  | 2 | **Lighting Poles Works** |  | 2025-12-16 | 2026-03-16 |  |  |
| PRO-R09-SL-DL-110 |  | Material Delivery & Site Inspection of Lighting Poles Foundations for Street Lighting Network | 26d | 2025-12-16 | 2026-01-14 | PRO-SL-1DL-110, PRO-R14-SL-DL-110 | 41d |
| PRO-R09-SL-DL-120 |  | Material Delivery & Site Inspection of Lighting Poles for Street Lighting Network | 26d | 2026-01-15 | 2026-02-14 | PRO-SL-1DL-120, PRO-R14-SL-DL-120 | 36d |
| PRO-R09-SL-DL-140 |  | Material Delivery & Site Inspection of Lighting Fixtures for Street Lighting Network | 26d | 2026-02-15 | 2026-03-16 | PRO-SL-1DL-140, PRO-R14-SL-DL-140 | 64.5d |
|  | 3 | **Distribution Panel Board** |  | 2025-08-02 | 2025-08-31 |  |  |
| PRO-R09-SL-DL-160 |  | Material Delivery & Site Inspection of Distrubution Panel Boards for Street Lighting Network | 26d | 2025-08-02 | 2025-08-31 | PRO-SL-1DL-160 | 307.75d |
|  | 4 | **Termination and Testing Works** |  | 2026-03-17 | 2026-05-19 |  |  |
| PRO-R09-SL-DL-130 |  | Material Delivery & Site Inspection of Fuse Boxes for Street Lighting Network | 26d | 2026-03-17 | 2026-04-19 | PRO-SL-1DL-130, PRO-R14-SL-DL-130 | 50.5d |
| PRO-R09-SL-DL-170 |  | Material Delivery & Site Inspection of Cable Lugs for Street Lighting Network | 26d | 2026-04-20 | 2026-05-19 | PRO-SL-1DL-170, PRO-R14-SL-DL-170 | 42d |
|  | 5 | **Earthing System Works** |  | 2025-08-02 | 2025-08-31 |  |  |
| PRO-R09-SL-DL-150 |  | Material Delivery & Site Inspection of Lighting Earthing for Street Lighting Network | 26d | 2025-08-02 | 2025-08-31 | PRO-SL-1DL-150 | 256.5d |
|  | 5 | **Road 11 Local 1 ( 670 LM )** |  | 2025-12-16 | 2026-06-23 |  |  |
|  | 1 | **Cabling Works** |  | 2025-12-16 | 2026-01-14 |  |  |
| PRO-R11-SL-DL-100 |  | Material Delivery & Site Inspection of Lighting Cables for Street Lighting Network | 26d | 2025-12-16 | 2026-01-14 | PRO-SL-1DL-100, PRO-R09-SL-DL-100 | 108d |
|  | 2 | **Lighting Poles Works** |  | 2026-01-15 | 2026-04-19 |  |  |
| PRO-R11-SL-DL-110 |  | Material Delivery & Site Inspection of Lighting Poles Foundations for Street Lighting Network | 26d | 2026-01-15 | 2026-02-14 | PRO-SL-1DL-110, PRO-R09-SL-DL-110 | 41d |
| PRO-R11-SL-DL-120 |  | Material Delivery & Site Inspection of Lighting Poles for Street Lighting Network | 26d | 2026-02-15 | 2026-03-16 | PRO-SL-1DL-120, PRO-R09-SL-DL-120 | 36d |
| PRO-R11-SL-DL-140 |  | Material Delivery & Site Inspection of Lighting Fixtures for Street Lighting Network | 26d | 2026-03-17 | 2026-04-19 | PRO-SL-1DL-140, PRO-R09-SL-DL-140 | 128.5d |
|  | 3 | **Distribution Panel Board** |  |  |  |  |  |
|  | 4 | **Termination and Testing Works** |  | 2026-04-20 | 2026-06-23 |  |  |
| PRO-R11-SL-DL-130 |  | Material Delivery & Site Inspection of Fuse Boxes for Street Lighting Network | 26d | 2026-04-20 | 2026-05-19 | PRO-SL-1DL-130, PRO-R09-SL-DL-130 | 72d |
| PRO-R11-SL-DL-170 |  | Material Delivery & Site Inspection of Cable Lugs for Street Lighting Network | 26d | 2026-05-20 | 2026-06-23 | PRO-SL-1DL-170, PRO-R09-SL-DL-170 | 42d |
|  | 5 | **Earthing System Works** |  |  |  |  |  |
|  | TE | **Telecom Network** |  | 2025-02-11 | 2026-01-14 |  |  |
|  | PO | **Issuance of Purchase Orders** |  | 2025-02-11 | 2025-02-17 |  |  |
|  | 1 | **Ducts Works** |  | 2025-02-11 | 2025-02-17 |  |  |
| PRO-TE-PO-100 |  | Issuance of Purchase Order for Ducts forTelecom Network | 6d | 2025-02-11 | 2025-02-17 | ENG-MT-TE-A-100 | 145d |
|  | 3 | **Manholes Works** |  | 2025-02-11 | 2025-02-17 |  |  |
| PRO-TE-PO-110 |  | Issuance of Purchase Order for Manholes forTelecom Network | 6d | 2025-02-11 | 2025-02-17 | ENG-MT-TE-A-110 | 152d |
|  | MF | **Manufacturing of Material** |  | 2025-02-18 | 2025-05-04 |  |  |
|  | 1 | **Ducts Works** |  | 2025-02-18 | 2025-05-04 |  |  |
| PRO-TE-MF-100 |  | Manufacturing of Ducts for Telecom Network | 60d | 2025-02-18 | 2025-05-04 | PRO-TE-PO-100 | 145d |
|  | 3 | **Manholes Works** |  | 2025-02-18 | 2025-05-04 |  |  |
| PRO-TE-MF-110 |  | Manufacturing of Manholes for Telecom Network | 60d | 2025-02-18 | 2025-05-04 | PRO-TE-PO-110 | 152d |
|  | 1DL | **1st Material Delivery & Site Inspection** |  | 2025-05-05 | 2025-05-11 |  |  |
|  | 1 | **Ducts Works** |  | 2025-05-05 | 2025-05-11 |  |  |
| PRO-TE-1DL-100 |  | 1ST Material Delivery for Ducts of Telecom Network | 6d | 2025-05-05 | 2025-05-11 | PRO-TE-MF-100 | 145d |
|  | 3 | **Manholes Works** |  | 2025-05-05 | 2025-05-11 |  |  |
| PRO-TE-1DL-110 |  | 1ST Material Delivery for Manholes of Telecom Network | 6d | 2025-05-05 | 2025-05-11 | PRO-TE-MF-110 | 152d |
|  | DL | **Material Delivery & Site Inspection** |  | 2025-05-12 | 2026-01-14 |  |  |
|  | 1 | **Road 18 Local 1 ( 479 LM )** |  | 2025-05-12 | 2025-06-15 |  |  |
|  | 1 | **Ducts Works** |  | 2025-05-12 | 2025-06-15 |  |  |
| PRO-R18-TE-DL-120 |  | Material Delivery & Site Inspection for Ducts of Telecom Network | 26d | 2025-05-12 | 2025-06-15 | PRO-TE-1DL-100 | 145d |
|  | 3 | **Manholes Works** |  | 2025-05-12 | 2025-06-15 |  |  |
| PRO-R18-TE-DL-130 |  | Material Delivery & Site Inspection of Manholes for Telecom Network | 26d | 2025-05-12 | 2025-06-15 | PRO-TE-1DL-110 | 152d |
|  | 9 | **Road 17 Local 1 ( 500 LM )** |  | 2025-06-16 | 2025-07-15 |  |  |
|  | 1 | **Ducts Works** |  | 2025-06-16 | 2025-07-15 |  |  |
| PRO-R17-TE-DL-100 |  | Material Delivery & Site Inspection for Ducts of Telecom Network | 26d | 2025-06-16 | 2025-07-15 | PRO-TE-1DL-100, PRO-R18-TE-DL-120 | 145d |
|  | 3 | **Manholes Works** |  | 2025-06-16 | 2025-07-15 |  |  |
| PRO-R17-TE-DL-110 |  | Material Delivery & Site Inspection of Manholes for Telecom Network | 26d | 2025-06-16 | 2025-07-15 | PRO-TE-1DL-110, PRO-R18-TE-DL-130 | 152d |
|  | 8 | **Road 16 Local 1 ( 527 LM )** |  | 2025-07-16 | 2025-08-14 |  |  |
|  | 1 | **Ducts Works** |  | 2025-07-16 | 2025-08-14 |  |  |
| PRO-R16-TE-DL-100 |  | Material Delivery & Site Inspection for Ducts of Telecom Network | 26d | 2025-07-16 | 2025-08-14 | PRO-TE-1DL-100, PRO-R17-TE-DL-100 | 145d |
|  | 3 | **Manholes Works** |  | 2025-07-16 | 2025-08-14 |  |  |
| PRO-R16-TE-DL-110 |  | Material Delivery & Site Inspection of Manholes for Telecom Network | 26d | 2025-07-16 | 2025-08-14 | PRO-TE-1DL-110, PRO-R17-TE-DL-110 | 152d |
|  | 7 | **Road 15 Local 1 ( 556 LM )** |  | 2025-08-16 | 2025-09-14 |  |  |
|  | 1 | **Ducts Works** |  | 2025-08-16 | 2025-09-14 |  |  |
| PRO-R15-TE-DL-100 |  | Material Delivery & Site Inspection for Ducts of Telecom Network | 26d | 2025-08-16 | 2025-09-14 | PRO-TE-1DL-100, PRO-R16-TE-DL-100 | 145d |
|  | 3 | **Manholes Works** |  | 2025-08-16 | 2025-09-14 |  |  |
| PRO-R15-TE-DL-110 |  | Material Delivery & Site Inspection of Manholes for Telecom Network | 26d | 2025-08-16 | 2025-09-14 | PRO-TE-1DL-110, PRO-R16-TE-DL-110 | 152d |
|  | 4 | **Road 10 Local 2 ( 2352 LM )** |  | 2025-09-15 | 2025-10-15 |  |  |
|  | 1 | **Ducts Works** |  | 2025-09-15 | 2025-10-15 |  |  |
| PRO-R10-TE-DL-100 |  | Material Delivery & Site Inspection for Ducts of Telecom Network | 26d | 2025-09-15 | 2025-10-15 | PRO-TE-1DL-100, PRO-R15-TE-DL-100 | 145d |
|  | 3 | **Manholes Works** |  | 2025-09-15 | 2025-10-15 |  |  |
| PRO-R10-TE-DL-110 |  | Material Delivery & Site Inspection of Manholes for Telecom Network | 26d | 2025-09-15 | 2025-10-15 | PRO-TE-1DL-110, PRO-R15-TE-DL-110 | 152d |
|  | 6 | **Road 14 Local 1 ( 584 LM )** |  | 2025-10-16 | 2025-11-15 |  |  |
|  | 1 | **Ducts Works** |  | 2025-10-16 | 2025-11-15 |  |  |
| PRO-R14-TE-DL-100 |  | Material Delivery & Site Inspection for Ducts of Telecom Network | 26d | 2025-10-16 | 2025-11-15 | PRO-TE-1DL-100, PRO-R10-TE-DL-100 | 145d |
|  | 3 | **Manholes Works** |  | 2025-10-16 | 2025-11-15 |  |  |

| ID | WBS | Task | Duration | Start | Finish | Predecessors | Total float |
| --- | --- | --- | --- | --- | --- | --- | --- |
| PRO-R14-TE-DL-110 |  | Material Delivery & Site Inspection of Manholes for Telecom Network | 26d | 2025-10-16 | 2025-11-15 | PRO-TE-1DL-110, PRO-R10-TE-DL-110 | 152d |
|  | 2 | **Road 09 Local 2 ( 2278 LM )** |  | 2025-11-16 | 2025-12-15 |  |  |
|  | 1 | **Ducts Works** |  | 2025-11-16 | 2025-12-15 |  |  |
| PRO-R09-TE-DL-110 |  | Material Delivery & Site Inspection of Manholes for Telecom Network | 26d | 2025-11-16 | 2025-12-15 | PRO-TE-1DL-110, PRO-R14-TE-DL-110 | 152d |
|  | 3 | **Manholes Works** |  | 2025-11-16 | 2025-12-15 |  |  |
| PRO-R09-TE-DL-100 |  | Material Delivery & Site Inspection for Ducts of Telecom Network | 26d | 2025-11-16 | 2025-12-15 | PRO-TE-1DL-100, PRO-R14-TE-DL-100 | 145d |
|  | 5 | **Road 11 Local 1 ( 670 LM )** |  | 2025-12-16 | 2026-01-14 |  |  |
|  | 1 | **Ducts Works** |  | 2025-12-16 | 2026-01-14 |  |  |
| PRO-R11-TE-DL-100 |  | Material Delivery & Site Inspection for Ducts of Telecom Network | 26d | 2025-12-16 | 2026-01-14 | PRO-TE-1DL-100, PRO-R09-TE-DL-100 | 145d |
|  | 3 | **Manholes Works** |  | 2025-12-16 | 2026-01-14 |  |  |
| PRO-R11-TE-DL-110 |  | Material Delivery & Site Inspection of Manholes for Telecom Network | 26d | 2025-12-16 | 2026-01-14 | PRO-TE-1DL-110, PRO-R09-TE-DL-110 | 152d |
|  | 1 | **Superstructure Works** |  | 2025-02-18 | 2026-02-14 |  |  |
|  | 1 | **Issuance of Purchase Orders** |  | 2025-02-18 | 2025-03-18 |  |  |
|  | SL | **Sewage Pump Stations ( PS 06 )** |  | 2025-02-18 | 2025-03-04 |  |  |
| PRO-SPS-CV-PO-10 |  | Issuance of Purchase Order for Civil Works for Sewage Pump Stations | 12d | 2025-02-18 | 2025-03-04 | ENG-MT-SPS-CV-A-110, ENG-MS-SPS-A-110, ENG-SH-SPS-A-110, PRO-SW-PO-100, PRO-SW-PO-110 | 82d |
|  | TE | **Storm Drainage Ponds ( PO-J1 , PO-J2 )** |  | 2025-03-05 | 2025-03-18 |  |  |
| PRO-DPO-CV-PO-10 |  | Issuance of Purchase Order for Civil Works for Storm Drainage Ponds | 12d | 2025-03-05 | 2025-03-18 | ENG-SH-SPS-A-110, ENG-MT-DPO-CV-A-110, ENG-MS-DPO-A-110, ENG-SH-DPO-A-110, PRO-SD-PO-100, PRO-SD-PO-110, PRO-SD-PO-130, PRO-SD-PO-150, PRO-SD-PO-120, PRO-SD-PO-140, PRO-SD-PO-160, PRO-SPS-CV-PO-10 | 82d |
|  | 2 | **Manufacturing of Material** |  | 2025-03-05 | 2025-10-25 |  |  |
|  | SL | **Sewage Pump Stations ( PS 06 )** |  | 2025-03-05 | 2025-08-12 |  |  |
| PRO-SPS-CV-MF-10 |  | Manufacturing of Civil Works for Sewage Pump Stations ( PS06 ) | 130d | 2025-03-05 | 2025-08-12 | PRO-SPS-CV-PO-10 | 91d |
|  | TE | **Storm Drainage Ponds ( PO-J1 , PO-J2 )** |  | 2025-03-19 | 2025-10-25 |  |  |
| PRO-DPO-CV-MF-10 |  | Manufacturing of Civil Works for Storm Drainage Ponds ( PO-J1 ) | 120d | 2025-03-19 | 2025-08-14 | PRO-DPO-CV-PO-10 | 82d |
| PRO-DPO-CV-MF-20 |  | Manufacturing of Civil Works for Storm Drainage Ponds ( PO-J2 ) | 60d | 2025-08-16 | 2025-10-25 | PRO-DPO-CV-MF-10 | 82d |
|  | 3 | **1st Material Delivery & Site Inspection** |  | 2025-08-13 | 2025-11-24 |  |  |
|  | SL | **Sewage Pump Stations ( PS 06 )** |  | 2025-08-13 | 2025-09-29 |  |  |
| PRO-SPS-CV-1DL-10 |  | 1ST Material Delivery for Civil Works for Sewage Pump Stations ( PS 06 ) | 40d | 2025-08-13 | 2025-09-29 | PRO-SPS-CV-MF-10 | 91d |
|  | TE | **Storm Drainage Ponds ( PO-J1 , PO-J2 )** |  | 2025-08-16 | 2025-11-24 |  |  |
| PRO-DPO-CV-1DL-10 |  | 1ST Material Delivery for Civil Works for Storm Drainage Ponds ( PO-J1 ) | 26d | 2025-08-16 | 2025-09-14 | PRO-DPO-CV-MF-10 | 132d |
| PRO-DPO-CV-1DL-20 |  | 1ST Material Delivery for Civil Works for Storm Drainage Ponds ( PO-J2 ) | 26d | 2025-10-26 | 2025-11-24 | PRO-DPO-CV-MF-20 | 82d |
|  | 4 | **Material Delivery & Site Inspection** |  | 2025-09-15 | 2026-02-14 |  |  |
|  | SL | **Sewage Pump Stations ( PS 06 )** |  | 2025-09-30 | 2025-12-20 |  |  |
| PRO-SPS-CV-DL-10 |  | Material Delivery & Site Inspection for Civil Works for Sewage Pump Stations ( PS 06 ) | 70d | 2025-09-30 | 2025-12-20 | PRO-SPS-CV-1DL-10 | 91d |
|  | TE | **Storm Drainage Ponds ( PO-J1 , PO-J2 )** |  | 2025-09-15 | 2026-02-14 |  |  |
| PRO-DPO-CV-DL-10 |  | Material Delivery & Site Inspection for Civil Works for Storm Drainage Ponds ( PO-J1 ) | 70d | 2025-09-15 | 2025-12-06 | PRO-DPO-CV-1DL-10 | 132d |
| PRO-DPO-CV-DL-20 |  | Material Delivery & Site Inspection for Civil Works for Storm Drainage Ponds ( PO-J2 ) | 70d | 2025-11-25 | 2026-02-14 | PRO-DPO-CV-1DL-20 | 82d |
|  | LL | **Long Lead Time Items** |  | 2025-02-10 | 2026-08-31 |  |  |
|  | 2 | **Infrastructure Networks** |  | 2025-02-10 | 2026-02-05 |  |  |
|  | 1 | **RMU Works of Medium Voltage Network** |  | 2025-02-10 | 2026-02-05 |  |  |
|  | PO | **Issuance of Purchase Orders** |  | 2025-02-10 | 2025-03-17 |  |  |
| PRO-MV-LL-PO-10 |  | Issuance of Purchase Order for RMU of Medium Voltage Network | 30d | 2025-02-10 | 2025-03-17 | ENG-MT-MV-A-10, ENG-SH-MV-A-110, ENG-MS-MV-A-110 | 37d |
|  | MF | **Manufacturing of Material** |  | 2025-03-18 | 2025-09-17 |  |  |
| PRO-MV-LL-MF-10 |  | Manufacturing of RMU for Medium Voltage Network | 150d | 2025-03-18 | 2025-09-17 | PRO-MV-LL-PO-10 | 37d |
|  | 1DL | **Material Shipping/Custom Clearance/Delivery** |  | 2025-09-18 | 2026-01-01 |  |  |
| PRO-MV-LL-SH/DL-10 |  | Material Delivery for RMU of Medium Voltage Network | 90d | 2025-09-18 | 2026-01-01 | PRO-MV-LL-MF-10 | 161d |
|  | DL | **Material Site Inspection** |  | 2026-01-03 | 2026-02-05 |  |  |
|  | DL4 | **Road 10 Local 2 ( 2352 LM )** |  | 2026-01-03 | 2026-02-05 |  |  |
| PRO-R10-MV-LL-MSI-10 |  | Material Site Inspection of RMU for Medium Voltage Network | 30d | 2026-01-03 | 2026-02-05 | PRO-MV-LL-SH/DL-10 | 161d |
|  | DL9111 | **Road 17 Local 1 ( 500 LM )** |  | 2026-01-03 | 2026-02-05 |  |  |
| PRO-R17-MV-LL-MSI-40 |  | Material Site Inspection of RMU for Medium Voltage Network | 30d | 2026-01-03 | 2026-02-05 | PRO-MV-LL-SH/DL-10 | 179d |
|  | 1 | **Superstructure Works** |  | 2025-09-18 | 2026-08-31 |  |  |
|  | SL | **Sewage Pump Stations ( PS 06 )** |  | 2025-09-18 | 2026-08-31 |  |  |
|  | 1 | **Issuance of Purchase Orders** |  | 2025-09-18 | 2025-11-27 |  |  |
| PRO-SPS-LL-PO-10 |  | Issuance of Purchase Order for Electromechanical Works for Sewage Pump Stations | 60d | 2025-09-18 | 2025-11-27 | ENG-MS-SPS-A-110, ENG-SH-SPS-A-110, ENG-MT-SPS-MC-A-110, PRO-MV-LL-PO-10, PRO-MV-LL-MF-10 | 37d |
|  | 2 | **Manufacturing of Material** |  | 2025-11-29 | 2026-03-28 |  |  |
| PRO-SPS7-LL-MF-10 |  | Manufacturing of Electromechanical Works for Sewage Pump Stations ( PS 06 ) | 100d | 2025-11-29 | 2026-03-28 | PRO-SPS-LL-PO-10, PRO-MV-LL-MF-10 | 37d |
|  | 3 | **Material Shipping/Custom Clearance/Delivery** |  | 2026-03-29 | 2026-07-04 |  |  |
| PRO-SPS7-LL-SH/DL-10 |  | Material Delivery for Electromechanical Works for Sewage Pump Stations ( PS 06 ) | 80d | 2026-03-29 | 2026-07-04 | PRO-SPS7-LL-MF-10 | 37d |
|  | 4 | **Material Site Inspection** |  | 2026-07-05 | 2026-08-31 |  |  |
| PRO-SPS7-LL-MSI-10 |  | Material Site Inspection for Electromechanical Works for Sewage Pump Stations ( PS06 ) | 50d | 2026-07-05 | 2026-08-31 | PRO-SPS7-LL-SH/DL-10 | 37d |
|  | CON | **Construction Works** |  | 2025-02-09 | 2026-12-28 |  |  |
|  | INF | **Infrastructure Networks** |  | 2025-02-09 | 2026-12-28 |  |  |
|  | 1 | **Phase 2 Block "J"** |  | 2025-02-09 | 2026-12-01 |  |  |
|  | SW | **Rising Main Network** |  | 2025-09-01 | 2025-11-13 |  |  |
|  | ML | **Main Line Sections** |  | 2025-09-01 | 2025-11-13 |  |  |
| CO-RM-SW-290 |  | Trench Excavation and Bedding Works for Main Lines of Rising Main Network | 21d | 2025-09-01 | 2025-09-25 | CO-R09.S01-SW-130, CO-R09.S02-SW-130 | 355d |
| CO-RM-SW-300 |  | Pipes Laying Works for Main Lines of Rising Main Network | 21d | 2025-09-27 | 2025-10-20 | CO-RM-SW-290 | 355d |
| CO-RM-SW-310 |  | Trench Backfilling and Compaction Works for Main Lines of Rising Main Network | 21d | 2025-10-21 | 2025-11-13 | CO-RM-SW-300, CO-RM-SW-370, CO-RM-SW-440 FF | 355d |
|  | MH | **Manholes** |  | 2025-09-27 | 2025-10-18 |  |  |
| CO-RM-SW-320 |  | Excavation Works for Main Line Manholes of Rising Main Network | 1d | 2025-09-27 | 2025-09-27 | CO-RM-SW-290 SS, CO-RM-SW-300 SS | 357d |
| CO-RM-SW-330 |  | Installation RC Footing Works for Main Line Manholes of Rising Main Network | 3d | 2025-09-28 | 2025-09-30 | CO-RM-SW-320 | 357d |

| ID | WBS | Task | Duration | Start | Finish | Predecessors | Total float |
| --- | --- | --- | --- | --- | --- | --- | --- |
| CO-RM-SW-340 |  | Install Grp Liner Wall Works for Main Line Manholes of Rising Main Network | 6d | 2025-10-01 | 2025-10-07 | CO-RM-SW-330 | 357d |
| CO-RM-SW-350 |  | Pouring Grp Liner Wall Works for Main Line Manholes of Rising Main Network | 3d | 2025-10-08 | 2025-10-11 | CO-RM-SW-340 | 357d |
| CO-RM-SW-360 |  | Backfilling Works for Main Line Manholes of Rising Main Network | 5d | 2025-10-12 | 2025-10-16 | CO-RM-SW-350 | 357d |
| CO-RM-SW-370 |  | Testing Works for Main Line Manholes of Rising Main Network | 1d | 2025-10-18 | 2025-10-18 | CO-RM-SW-360 | 357d |
|  | VC | **Valves Chamber** |  | 2025-09-27 | 2025-11-01 |  |  |
| CO-RM-SW-380 |  | Excavation Works for Valve Chambers and Washout chamber of Rising Main Network | 1d | 2025-09-27 | 2025-09-27 | CO-RM-SW-300 SS | 366d |
| CO-RM-SW-390 |  | RC Footing Works for Valve Chambers and Washout chamber of Rising Main Network | 6d | 2025-09-28 | 2025-10-04 | CO-RM-SW-380 | 366d |
| CO-RM-SW-400 |  | RC Wall Works for Valve Chambers and Washout chamber of Rising Main Network | 7d | 2025-10-05 | 2025-10-12 | CO-RM-SW-390 | 366d |
| CO-RM-SW-410 |  | RC Slab Works for Valve Chambers and Washout chamber of Rising Main Network | 7d | 2025-10-13 | 2025-10-20 | CO-RM-SW-400 | 366d |
| CO-RM-SW-420 |  | Insulation Works for Valve Chambers and Washout chamber of Rising Main Network | 2d | 2025-10-21 | 2025-10-22 | CO-RM-SW-410 | 366d |
| CO-RM-SW-430 |  | Backfilling Works for Valve Chambers and Washout chamber of Rising Main Network | 5d | 2025-10-23 | 2025-10-28 | CO-RM-SW-420 | 366d |
| CO-RM-SW-440 |  | Testing and Covering Works for Valve Chambers and Washout chamber of Rising Main Network | 3d | 2025-10-29 | 2025-11-01 | CO-RM-SW-430 | 366d |
|  | 2 | **Road 09 Local 2 ( 2278 LM )** |  | 2025-06-16 | 2026-10-01 |  |  |
|  | SW_1 | **SW_1** |  | 2025-06-16 | 2026-09-24 |  |  |
|  | EW | **Earthworks** |  | 2025-06-16 | 2025-07-08 |  |  |
|  | EW | **Earthworks** |  | 2025-06-16 | 2025-07-08 |  |  |
| CO-R09.S01-EW-100 |  | Roadway Excavation Works Upto Design Level for Earthworks-[Road 09] -[SW-1] | 10d | 2025-06-16 | 2025-06-26 | MS-CF-MOB, MS-CF-EBL, MS-CF-ENG, ENG-MS-RD-A-10, ENG-SH-RD-A-100, CO-R10.S04-ES-EW-100 | 11d |
| CO-R09.S01-EW-110 |  | Embankments Works Upto Design Level for Earthworks-[Road 09] -[SW-1] | 10d | 2025-06-28 | 2025-07-08 | CO-R09.S01-EW-100, ENG-MS-RD-A-10, ENG-SH-RD-A-100 | 17d |
|  | SW | **Sewage Network** |  | 2025-07-09 | 2025-08-17 |  |  |
|  | ML | **Main Line Sections** |  | 2025-07-09 | 2025-08-17 |  |  |
| CO-R09.S01-SW-100 |  | Trench Excavation and Bedding Works for Main Lines of Sewage Network-[Road 09] -[SW-1] | 10d | 2025-07-09 | 2025-07-20 | CO-R09.S01-EW-110, ENG-MS-SW-ML-A-110, ENG-SH-SW-ML-A-110, CO-R10.S04-ES-SW-100 | 17d |
| CO-R09.S01-SW-120 |  | Pipes Laying Works for Main Lines of Sewage Network-[Road 09] -[SW-1] | 12d | 2025-07-21 | 2025-08-03 | PRO-SW-1DL-100, MS-CS-SW, CO-R09.S01-SW-100, PRO-R09-SW-DL-100 | 25d |
| CO-R09.S01-SW-130 |  | Trench Backfilling and Compaction Works for Main Lines of Sewage Network-[Road 09] -[SW-1] | 12d | 2025-08-04 | 2025-08-17 | ENG-SH-SW-ML-A-110 FF, ENG-MS-SW-ML-A-110 FF, CO-R09.S01-SW-120, CO-R09.S01-SW-210 FF | 25d |
|  | MH | **Manholes** |  | 2025-07-21 | 2025-08-11 |  |  |
| CO-R09.S01-SW-160 |  | Excavation Works for Main Line Manholes of Sewage Network-[Road 09] -[SW-1] | 1d | 2025-07-21 | 2025-07-21 | CO-R09.S01-SW-100 SS, CO-R09.S01-SW-120 SS, PRO-R09-SW-DL-110 | 30d |
| CO-R09.S01-SW-170 |  | Installation RC Footing Works for Main Line Manholes of Sewage Network-[Road 09] -[SW-1] | 3d | 2025-07-22 | 2025-07-24 | CO-R09.S01-SW-160 | 30d |
| CO-R09.S01-SW-180 |  | Install Grp Liner Wall Works for Main Line Manholes of Sewage Network-[Road 09] -[SW-1] | 6d | 2025-07-26 | 2025-07-31 | CO-R09.S01-SW-170 | 30d |
| CO-R09.S01-SW-190 |  | Pouring Grp Liner Wall Works for Main Line Manholes of Sewage Network-[Road 09] -[SW-1] | 3d | 2025-08-02 | 2025-08-04 | CO-R09.S01-SW-180 | 30d |
| CO-R09.S01-SW-200 |  | Backfilling Works for Main Line Manholes of Sewage Network-[Road 09] -[SW-1] | 5d | 2025-08-05 | 2025-08-10 | CO-R09.S01-SW-190 | 30d |
| CO-R09.S01-SW-210 |  | Testing Works for Main Line Manholes of Sewage Network-[Road 09] -[SW-1] | 1d | 2025-08-11 | 2025-08-11 | CO-R09.S01-SW-200 | 30d |
|  | SD | **Storm Drainage Network** |  | 2025-09-08 | 2025-11-18 |  |  |
|  | ML | **Main Line Sections** |  | 2025-09-08 | 2025-11-18 |  |  |
| CO-R09.S01-SD-100 |  | Trench Excavation and Bedding Works for Main Lines of Storm Drainage Network-[Road 09] -[SW-1] | 10d | 2025-09-08 | 2025-09-18 | ENG-SH-SD-ML-A-110, CO-R09.S01-EW-110, CO-R09.S01-EW-100, MS-CS-PS SS, ENG-MS-SD-ML-A-110, CO-R09.S01-SW-130 SS+3d, CO-R09.S01-SW-130 FF+3d, CO-R10.S04-ES-SD-100 | 0d |
| CO-R09.S01-SD-120 |  | Pipes Laying Works for Main Lines of Storm Drainage Network-[Road 09] -[SW-1] | 10d | 2025-09-20 | 2025-10-01 | PRO-SD-1DL-110, CO-R09.S01-SD-100, CO-R09.S01-SW-120 | 0d |
| CO-R09.S01-SD-130 |  | Trench Backfilling and Compaction Works for Main Lines of Storm Drainage Network-[Road 09] -[SW-1] | 20d | 2025-10-27 | 2025-11-18 | ENG-SH-SD-ML-A-110 FF, ENG-MS-SD-ML-A-110 FF, CO-R09.S01-SD-120, CO-R09.S01-SD-220 FF, CO-R09.S01-SD-170 FF, CO-R09.S01-SW-130, CO-R09.S02-SW-130 | 188d |
|  | MH | **Manholes** |  | 2025-09-20 | 2025-10-14 |  |  |
| CO-R09.S01-SD-180 |  | Trench Excavation and Bedding Works for Manholes of Storm Drainage Network-[Road 09] -[SW-1] | 2d | 2025-09-20 | 2025-09-21 | CO-R09.S01-SD-120 SS, PRO-SD-1DL-100, MS-CS-SD, CO-R09.S01-SD-100 | 34.5d |
| CO-R09.S01-SD-190 |  | Install RC Footing Works for Manholes of Storm Drainage Network-[Road 09] -[SW-1] | 3d | 2025-09-22 | 2025-09-25 | CO-R09.S01-SD-180 | 34.5d |
| CO-R09.S01-SD-200 |  | Install RC Wall Rings & Slab Works for Manholes of Storm Drainage Network-[Road 09] -[SW-1] | 7d | 2025-09-27 | 2025-10-04 | CO-R09.S01-SD-190 | 34.5d |
| CO-R09.S01-SD-210 |  | Testing Works for Manholes of Storm Drainage Network-[Road 09] -[SW-1] | 2d | 2025-10-05 | 2025-10-06 | CO-R09.S01-SD-200 | 34.5d |
| CO-R09.S01-SD-220 |  | Backfilling Works for Manholes of Storm Drainage Network-[Road 09] -[SW-1] | 7d | 2025-10-07 | 2025-10-14 | CO-R09.S01-SD-210 | 34.5d |
|  | CB | **Catch Basin Sections** |  | 2025-10-15 | 2025-11-18 |  |  |
| CO-R09.S01-SD-140 |  | Trench Excavation and Bedding Works for Catch Basins of Storm Drainage Network-[Road 09] -[SW-1] | 6d | 2025-10-15 | 2025-10-21 | CO-R09.S01-EW-110, ENG-SH-SD-CB-A-110, ENG-MS-SD-CB-A-110, CO-R09.S01-SD-220 | 43.5d |
| CO-R09.S01-SD-150 |  | Installation and Pipes Laying Connection Works for Catch Basins of Storm Drainage Network-[Road 09] -[SW-1] | 7d | 2025-10-22 | 2025-10-29 | CO-R09.S01-SD-140, PRO-SD-1DL-130 | 43.5d |
| CO-R09.S01-SD-160 |  | Testing Works for Catch Basins of Storm Drainage Network-[Road 09] -[SW-1] | 7d | 2025-10-30 | 2025-11-06 | CO-R09.S01-SD-150, CO-R09.S01-SD-120 SS+3d, CO-R09.S01-SD-120 FF+3d, PRO-SD-1DL-120 | 43.5d |
| CO-R09.S01-SD-170 |  | Trench Backfilling and Compaction Works for Catch Basins of Storm Drainage Network-[Road 09] -[SW-1] | 10d | 2025-11-08 | 2025-11-18 | CO-R09.S01-SD-160 | 43.5d |
|  | IR | **Irrigation Network** |  | 2025-11-19 | 2025-12-28 |  |  |
|  | ML | **Main Line Pipes** |  | 2025-11-19 | 2025-12-28 |  |  |
| CO-R09.S01-IR-100 |  | Trench Excavation and Bedding Works for Main Lines of Irrigation Network-[Road 09] -[SW-1] | 7d | 2025-11-19 | 2025-11-26 | ENG-SH-IR-ML-A-110, CO-R09.S01-EW-110, ENG-MS-IR-ML-A-110, CO-R09.S01-SD-170 | 43.5d |
| CO-R09.S01-IR-110 |  | Pipes Laying Works for Main Lines of Irrigation Network-[Road 09] -[SW-1] | 10d | 2025-11-27 | 2025-12-08 | CO-R09.S01-IR-100, PRO-IR-1DL-100, MS-CS-IR, CO-R09.S01-SD-120, PRO-R09-IR-DL-100 FF+3d | 43.5d |
| CO-R09.S01-IR-120 |  | Installation Works for Main Line Valves of Irrigation Network-[Road 09] -[SW-1] | 7d | 2025-12-09 | 2025-12-16 | CO-R09.S01-IR-110, PRO-IR-1DL-110, PRO-R09-IR-DL-110 FF+3d | 43.5d |
| CO-R09.S01-IR-140 |  | Trench Backfilling and Compaction Works for Main Lines of Irrigation Network-[Road 09] -[SW-1] | 10d | 2025-12-17 | 2025-12-28 | CO-R09.S01-IR-120, CO-R09.S01-IR-110 | 43.5d |
|  | SL | **Street Lighting Network** |  | 2025-12-29 | 2026-08-13 |  |  |
|  | LP | **Lighting Poles Works** |  | 2025-12-29 | 2026-04-30 |  |  |
| CO-R09.S01-SL-100 |  | Foundation Excavation Works for Lighting Poles of Street Lighting Network-[Road 09] -[SW-1] | 10d | 2025-12-29 | 2026-01-08 | CO-R09.S01-EW-110, ENG-SH-SL-A-110, CO-R09.S01-EW-100, PRO-SL-1DL-110, ENG-MS-SL-A-110, CO-R09.S01-IR-100 SS+3d, CO-R09.S01-IR-140 | 43.5d |
| CO-R09.S01-SL-110 |  | Installation Works for Lighting Poles Foundation of Street Lighting Network-[Road 09] -[SW-1] | 12d | 2026-01-10 | 2026-01-22 | PRO-SL-1DL-110, CO-R09.S01-SL-100, MS-CS-SL | 43.5d |
| CO-R09.S01-SL-120 |  | Installation Works for Lighting Poles of Street Lighting Network-[Road 09] -[SW-1] | 11d | 2026-02-14 | 2026-02-25 | PRO-SL-1DL-120, CO-R09.S01-SL-160, CO-R09.S01-SL-110 | 43.5d |
| CO-R09.S01-SL-210 |  | Backfilling Works for Lighting Poles of Street Lighting Network-[Road 09] -[SW-1] | 12d | 2026-04-12 | 2026-04-25 | CO-R09.S01-SL-120, CO-R09.S01-SL-120 FF, CO-R10.S04-ES-SL-210 | 8.5d |
| CO-R09.S01-SL-130 |  | Installation Works for Lighting Fixtures With Drop Wire of Street Lighting Network-[Road 09] -[SW-1] | 12d | 2026-04-18 | 2026-04-30 | PRO-SL-1DL-140, CO-R09.S01-SL-120, CO-R09.S01-SL-200 FF | 31.5d |
| CO-R09.S01-SL-200 |  | Testing Works for Lighting Poles of Street Lighting Network-[Road 09] -[SW-1] | 5d | 2026-04-26 | 2026-04-30 | CO-R09.S01-SL-210, CO-R09.S01-SL-120 | 31.5d |
|  | CW | **Cabling Works** |  | 2026-01-10 | 2026-02-12 |  |  |
| CO-R09.S01-SL-140 |  | Trench Excavation and Bedding Works for Street Lighting Network-[Road 09] -[SW-1] | 10d | 2026-01-10 | 2026-01-20 | ENG-SH-SL-A-110, CO-R09.S01-SL-110 SS, ENG-MS-SL-A-110 | 43.5d |
| CO-R09.S01-SL-150 |  | Cable Laying Works for Street Lighting Network-[Road 09] -[SW-1] | 10d | 2026-01-21 | 2026-02-01 | PRO-SL-1DL-100, CO-R09.S01-SL-140 | 43.5d |
| CO-R09.S01-SL-160 |  | Trench Backfilling and Compaction Works for Street Lighting Network-[Road 09] -[SW-1] | 10d | 2026-02-02 | 2026-02-12 | CO-R09.S01-SL-150, CO-R09.S01-IR-140 | 43.5d |
|  | DPB | **Distrubution Panel Boards** |  | 2026-06-30 | 2026-08-13 |  |  |
| CO-R09.S01-SL-170 |  | Foundation Excavation Works For Panel Boards of Street Lighting Network-[Road 09] -[SW-1] | 15d | 2026-06-30 | 2026-07-16 | CO-R09-SL-ES-100, CO-R09.S01-EW-110, ENG-SH-SL-A-110, ENG-MS-SL-A-110 | 8.5d |
| CO-R09.S01-SL-180 |  | Installation Works for Panel Board Concrete Foundations of Street Lighting Network-[Road 09] -[SW-1] | 12d | 2026-07-18 | 2026-07-30 | CO-R09.S01-SL-170 | 8.5d |
| CO-R09.S01-SL-190 |  | Installation Works for Lighting Panel Boards of Street Lighting Network-[Road 09] -[SW-1] | 12d | 2026-08-01 | 2026-08-13 | CO-R09.S01-SL-180, PRO-SL-1DL-160 | 8.5d |
| CO-R09.S01-SL-220 |  | A wall of concrete blocks to install the KWH meter of Street Lighting Network-[Road 09] -[SW-1] | 12d | 2026-08-01 | 2026-08-13 | CO-R09.S01-SL-180 | 8.5d |
|  | MV | **Medium Voltage Network** |  | 2026-02-14 | 2026-03-03 |  |  |

| ID | WBS | Task | Duration | Start | Finish | Predecessors | Total float |
| --- | --- | --- | --- | --- | --- | --- | --- |
|  | CW | **Cabling Works** |  | 2026-02-14 | 2026-03-03 |  |  |
| CO-R09.S01-MV-100 |  | Trench Excavation and Bedding Works for Medium Voltage Network-[Road 09] -[SW-1] | 4d | 2026-02-14 | 2026-02-17 | ENG-SH-MV-A-110, CO-R09.S01-SD-170 SS+3d, CO-R09.S01-SD-170 FF+3d, CO-R09.S01-EW-110, ENG-MS-MV-A-110, CO-R09.S01-SL-160 | 48d |
| CO-R09.S01-MV-110 |  | Cable Laying Works for Medium Voltage Network-[Road 09] -[SW-1] | 5d | 2026-02-18 | 2026-02-23 | PRO-MV-1DL-100, CO-R09.S01-MV-100, MS-CS-MV, PRO-R09-MV-DL-100 FF+3d | 48d |
| CO-R09.S01-MV-120 |  | Trench Backfilling and Compaction Works for Medium Voltage Network-[Road 09] -[SW-1] | 7d | 2026-02-24 | 2026-03-03 | CO-R09.S01-MV-110 | 48d |
|  | TE | **Telecom Network** |  | 2026-05-03 | 2026-06-20 |  |  |
|  | PD | **Ducts Works** |  | 2026-05-03 | 2026-05-16 |  |  |
| CO-R09.S01-TE-100 |  | Trench Excavation and Bedding Works for Ducts of Telecom Network-[Road 09] -[SW-1] | 2d | 2026-05-03 | 2026-05-04 | ENG-SH-TE-A-110, CO-R09.S01-IR-140 SS+3d, CO-R09.S01-IR-140 FF+3d, CO-R09.S01-SL-160 SS+5d, CO-R09.S01-SL-160 FF+5d, CO-R09.S01-EW-110, ENG-MS-TE-A-110, CO-R09.S01-MV-120, CO-R10.S04-ES-TE-100 | 0d |
| CO-R09.S01-TE-110 |  | Pipes Laying Works for Ducts of Telecom Network-[Road 09] -[SW-1] | 4d | 2026-05-05 | 2026-05-09 | PRO-TE-1DL-100, CO-R09.S01-TE-100, MS-CS-TE | 8d |
| CO-R09.S01-TE-120 |  | Pouring Plain Concrete Above Ducts of Telecom Network-[Road 09] -[SW-1] | 2d | 2026-05-10 | 2026-05-11 | CO-R09.S01-TE-110 | 8d |
| CO-R09.S01-TE-130 |  | Trench Backfilling and Compaction Works for Ducts of Telecom Network-[Road 09] -[SW-1] | 4d | 2026-05-12 | 2026-05-16 | CO-R09.S01-TE-120 | 8d |
|  | MH | **Manholes Works** |  | 2026-05-05 | 2026-06-20 |  |  |
| CO-R09.S01-TE-140 |  | Excavation Works for Manholes of Telecom Network-[Road 09] -[SW-1] | 12d | 2026-05-05 | 2026-05-18 | ENG-SH-TE-A-110, ENG-MS-TE-A-110, CO-R09.S01-TE-100 | 0d |
| CO-R09.S01-TE-150 |  | Installation Works for Manholes of Telecom Network-[Road 09] -[SW-1] | 12d | 2026-05-19 | 2026-06-06 | PRO-TE-1DL-110, CO-R09.S01-TE-140 | 0d |
| CO-R09.S01-TE-160 |  | Backfilling Works for Manholes of Telecom Network-[Road 09] -[SW-1] | 12d | 2026-06-07 | 2026-06-20 | CO-R09.S01-TE-150, CO-R09.S01-TE-130 | 0d |
|  | RD | **Road Works** |  | 2026-06-21 | 2026-09-24 |  |  |
|  | RD | **Pre-Bituminous Construction** |  | 2026-06-21 | 2026-07-18 |  |  |
| CO-R09.S01-RD-P-100 |  | Capping and Subgrade Layer for Road Works-[Road 09] -[SW-1] | 21d | 2026-06-21 | 2026-07-14 | ENG-SH-RD-A-100, PRO-RD-1DL-100, CO-R09.S01-SD-130, CO-R09.S01-SW-130, CO-R09.S01-SL-160 SS+3d, CO-R09.S01-SL-160 FF+3d, ENG-MS-RD-A-10, CO-R09.S01-MV-120 SS+3d, CO-R09.S01-MV-120 FF+3d, CO-R09.S01-TE-130, CO-R09.S01-TE-160, CO-R09.S02-SW-130 | 12d |
| CO-R09.S01-RD-P-110 |  | Aggregate Base Course Layer for Road Works-[Road 09] -[SW-1] | 21d | 2026-06-24 | 2026-07-18 | PRO-RD-1DL-110, CO-R09.S01-RD-P-100 SS+3d, CO-R09.S01-RD-P-100 FF+3d, CO-R09.S01-SD-170 SS+3d, CO-R09.S01-SD-170 FF+3d, MS-CS-RD | 36d |
|  | LS | **Pavement Works** |  | 2026-07-19 | 2026-09-24 |  |  |
| CO-R09.S01-RD-P-120 |  | Fixing of Curbstone for Sidewalks Pavement-[Road 09] -[SW-1] | 18d | 2026-07-19 | 2026-08-08 | PRO-RD-1DL-150, ENG-SH-HS-A-110, ENG-MS-HS-A-10, CO-R09.S01-RD-P-110, ENG-MT-RD-A-150 | 36d |
| CO-R09.S01-RD-P-130 |  | Fixing of Interlock Tiles for Sidewalks Pavement-[Road 09] -[SW-1] | 12d | 2026-09-09 | 2026-09-24 | PRO-RD-1DL-140, CO-R09.S01-RD-P-120, CO-R09-PW-TF-100, CO-R09-PW-TF-110, CO-R09-PW-TF-120, CO-R09-SW-TF-100, CO-R09-SW-TF-110, CO-R09-SW-TF-120, CO-R09-SD-TF-120, CO-R09-SD-TF-100, CO-R09-SL-TF-100, CO-R09-SL-TF-110, CO-R09-SL-ES-100, CO-R09-SL-ES-110, CO-R09-IR-TF-100, CO-R09-MV-TF-100 | 8.5d |
|  | SW_2 | **SW_2** |  | 2025-06-28 | 2026-10-01 |  |  |
|  | EW | **Earthworks** |  | 2025-06-28 | 2025-07-20 |  |  |
|  | EW | **Earthworks** |  | 2025-06-28 | 2025-07-20 |  |  |
| CO-R09.S02-EW-110 |  | Roadway Excavation Works Upto Design Level for Earthworks-[Road 09]-[SW-2] | 10d | 2025-06-28 | 2025-07-08 | CO-R09.S01-EW-100, ENG-MS-RD-A-10, ENG-SH-RD-A-100, CO-R09.S01-EW-100 FF | 11d |
| CO-R09.S02-EW-120 |  | Embankments Works Upto Design Level for Earthworks-[Road 09]-[SW-2] | 10d | 2025-07-09 | 2025-07-20 | CO-R09.S02-EW-110, ENG-MS-RD-A-10, ENG-SH-RD-A-100 | 17d |
|  | SW | **Sewage Network** |  | 2025-07-21 | 2025-08-31 |  |  |
|  | ML | **Main Line Sections** |  | 2025-07-21 | 2025-08-31 |  |  |
| CO-R09.S02-SW-100 |  | Trench Excavation and Bedding Works for Main Lines of Sewage Network-[Road 09]-[SW-2] | 12d | 2025-07-21 | 2025-08-03 | CO-R09.S02-EW-120, ENG-MS-SW-ML-A-110, ENG-SH-SW-ML-A-110, CO-R09.S01-SW-100 | 17d |
| CO-R09.S02-SW-120 |  | Pipes Laying Works for Main Lines of Sewage Network-[Road 09]-[SW-2] | 12d | 2025-08-04 | 2025-08-17 | CO-R09.S02-SW-100 | 23d |
| CO-R09.S02-SW-130 |  | Trench Backfilling and Compaction Works for Main Lines of Sewage Network-[Road 09]-[SW-2] | 12d | 2025-08-18 | 2025-08-31 | CO-R09.S02-SW-120, CO-R09.S02-SW-210 FF | 23d |
|  | MH | **Manholes** |  | 2025-08-04 | 2025-08-25 |  |  |
| CO-R09.S02-SW-160 |  | Excavation Works for Main Line Manholes of Sewage Network-[Road 09]-[SW-2] | 1d | 2025-08-04 | 2025-08-04 | CO-R09.S02-SW-100 SS, CO-R09.S02-SW-120 SS | 28d |
| CO-R09.S02-SW-170 |  | Installation RC Footing Works for Main Line Manholes of Sewage Network-[Road 09]-[SW-2] | 3d | 2025-08-05 | 2025-08-07 | CO-R09.S02-SW-160 | 28d |
| CO-R09.S02-SW-180 |  | Install Grp Liner Wall Works for Main Line Manholes of Sewage Network-[Road 09]-[SW-2] | 6d | 2025-08-09 | 2025-08-14 | CO-R09.S02-SW-170 | 28d |
| CO-R09.S02-SW-190 |  | Pouring Grp Liner Wall Works for Main Line Manholes of Sewage Network-[Road 09]-[SW-2] | 3d | 2025-08-16 | 2025-08-18 | CO-R09.S02-SW-180 | 28d |
| CO-R09.S02-SW-200 |  | Backfilling Works for Main Line Manholes of Sewage Network-[Road 09]-[SW-2] | 5d | 2025-08-19 | 2025-08-24 | CO-R09.S02-SW-190 | 28d |
| CO-R09.S02-SW-210 |  | Testing Works for Main Line Manholes of Sewage Network-[Road 09]-[SW-2] | 1d | 2025-08-25 | 2025-08-25 | CO-R09.S02-SW-200 | 28d |
|  | SD | **Storm Drainage Network** |  | 2025-09-20 | 2025-12-20 |  |  |
|  | ML | **Main Line Sections** |  | 2025-09-20 | 2025-11-02 |  |  |
| CO-R09.S02-SD-100 |  | Trench Excavation and Bedding Works for Main Lines of Storm Drainage Network-[Road 09]-[SW-2] | 10d | 2025-09-20 | 2025-10-01 | CO-R09.S02-EW-120, CO-R09.S02-EW-110, CO-R09.S02-SW-130 SS+3d, CO-R09.S02-SW-130 FF+3d, CO-R09.S01-SD-100 | 0d |
| CO-R09.S02-SD-120 |  | Pipes Laying Works for Main Lines of Storm Drainage Network-[Road 09]-[SW-2] | 10d | 2025-10-02 | 2025-10-13 | PRO-R09-SD-DL-120 FF+3d, CO-R09.S02-SD-100, CO-R09.S01-SD-120 | 0d |
| CO-R09.S02-SD-130 |  | Trench Backfilling and Compaction Works for Main Lines of Storm Drainage Network-[Road 09]-[SW-2] | 15d | 2025-10-16 | 2025-11-02 | CO-R09.S02-SD-120, CO-R09.S02-SD-220 FF | 104.5d |
|  | MH | **Manholes** |  | 2025-10-15 | 2025-11-02 |  |  |
| CO-R09.S02-SD-180 |  | Trench Excavation and Bedding Works for Manholes of Storm Drainage Network-[Road 09]-[SW-2] | 1d | 2025-10-15 | 2025-10-15 | CO-R09.S02-SD-120 SS, PRO-SD-1DL-100, CO-R09.S01-SD-220 | 34.5d |
| CO-R09.S02-SD-190 |  | Install RC Footing Works for Manholes of Storm Drainage Network-[Road 09]-[SW-2] | 2d | 2025-10-16 | 2025-10-18 | CO-R09.S02-SD-180 | 34.5d |
| CO-R09.S02-SD-200 |  | Install RC Wall Rings & Slab Works for Manholes of Storm Drainage Network-[Road 09]-[SW-2] | 4d | 2025-10-19 | 2025-10-22 | CO-R09.S02-SD-190 | 34.5d |
| CO-R09.S02-SD-210 |  | Testing Works for Manholes of Storm Drainage Network-[Road 09]-[SW-2] | 2d | 2025-10-23 | 2025-10-25 | CO-R09.S02-SD-200 | 34.5d |
| CO-R09.S02-SD-220 |  | Backfilling Works for Manholes of Storm Drainage Network-[Road 09]-[SW-2] | 7d | 2025-10-26 | 2025-11-02 | CO-R09.S02-SD-210 | 34.5d |
|  | CB | **Catch Basin Sections** |  | 2025-11-03 | 2025-12-20 |  |  |
| CO-R09.S02-SD-140 |  | Trench Excavation and Bedding Works for Catch Basins of Storm Drainage Network-[Road 09]-[SW-2] | 6d | 2025-11-03 | 2025-11-09 | CO-R09.S02-EW-120, CO-R09.S02-SD-220, CO-R09.S01-SD-140 | 34.5d |
| CO-R09.S02-SD-150 |  | Installation and Pipes Laying Connection Works for Catch Basins of Storm Drainage Network-[Road 09]-[SW-2] | 7d | 2025-11-30 | 2025-12-07 | CO-R09.S02-SD-140, PRO-R09-SD-DL-130 FF+3d | 226d |
| CO-R09.S02-SD-160 |  | Testing Works for Catch Basins of Storm Drainage Network-[Road 09]-[SW-2] | 4d | 2025-12-08 | 2025-12-11 | CO-R09.S02-SD-150, CO-R09.S02-SD-120, PRO-R09-SD-DL-110 FF+3d | 226d |
| CO-R09.S02-SD-170 |  | Trench Backfilling and Compaction Works for Catch Basins of Storm Drainage Network-[Road 09]-[SW-2] | 7d | 2025-12-13 | 2025-12-20 | CO-R09.S02-SD-160 | 226d |
|  | PW | **Potable Water Network** |  | 2025-11-03 | 2025-12-29 |  |  |
|  | ML | **Main Line Sections** |  | 2025-11-03 | 2025-12-29 |  |  |
| CO-R09.S02-PW-100 |  | Trench Excavation and Bedding Works for Main Lines of Potable Water Network-[Road 09]-[SW-2] | 7d | 2025-11-03 | 2025-11-10 | CO-R09.S02-EW-120, CO-R09.S02-EW-110, CO-R09.S02-SD-130 | 104.5d |
| CO-R09.S02-PW-110 |  | Pipes Laying and accessories for Main Lines of Potable Water Network-[Road 09]-[SW-2] | 8d | 2025-12-10 | 2025-12-18 | CO-R09.S02-PW-100, PRO-R09-PW-DL-100 FF+3d, PRO-R09-PW-DL-110 FF+3d, MS-CS-PW SS | 79.5d |
| CO-R09.S02-PW-130 |  | Trench Backfilling and Compaction Works for Main Lines of Potable Water Network-[Road 09]-[SW-2] | 8d | 2025-12-21 | 2025-12-29 | CO-R09.S02-PW-110, CO-R09.S02-PW-160 FF, CO-R09.S02-PW-210 FF | 78.5d |
|  | VC | **Valve Chamber** |  | 2025-11-11 | 2025-11-17 |  |  |
| CO-R09.S02-PW-210 |  | Installation Works for Main Line Valves and Valve Chambers of Potable Water Network-[Road 09]-[SW-2] | 6d | 2025-11-11 | 2025-11-17 | CO-R09.S02-PW-100 | 114.5d |
|  | FH | **Fire Hydrant** |  | 2025-11-11 | 2025-12-29 |  |  |
| CO-R09.S02-PW-140 |  | Excavation Works for Fire Hydrants of Potable Water Network-[Road 09]-[SW-2] | 5d | 2025-11-11 | 2025-11-16 | CO-R09.S02-EW-120, CO-R09.S02-PW-100 | 104.5d |
| CO-R09.S02-PW-150 |  | Installation Works for Fire Hydrant of Potable Water Network-[Road 09]-[SW-2] | 6d | 2025-12-17 | 2025-12-23 | CO-R09.S02-PW-140, PRO-R09-PW-DL-120 FF+3d | 78.5d |
| CO-R09.S02-PW-160 |  | Trench Backfilling and Compaction Works for Fire Hydrants of Potable Water Network-[Road 09]-[SW-2] | 5d | 2025-12-24 | 2025-12-29 | CO-R09.S02-PW-150 | 78.5d |
|  | SL | **Street Lighting Network** |  | 2025-12-30 | 2026-08-25 |  |  |
|  | LP | **Lighting Poles Works** |  | 2025-12-30 | 2026-06-01 |  |  |
| CO-R09.S02-SL-100 |  | Foundation Excavation Works for Lighting Poles of Street Lighting Network-[Road 09]-[SW-2] | 9d | 2025-12-30 | 2026-01-08 | CO-R09.S02-EW-120, CO-R09.S02-EW-110, CO-R09.S02-PW-130 | 78.5d |
| CO-R09.S02-SL-110 |  | Installation Works for Lighting Poles Foundation of Street Lighting Network-[Road 09]-[SW-2] | 9d | 2026-01-10 | 2026-01-19 | CO-R09.S02-SL-100, PRO-R09-SL-DL-110 FF+3d | 78.5d |
| CO-R09.S02-SL-120 |  | Installation Works for Lighting Poles of Street Lighting Network-[Road 09]-[SW-2] | 9d | 2026-02-08 | 2026-02-17 | CO-R09.S02-SL-110, PRO-R09-SL-DL-120 FF+3d | 62.5d |

| ID | WBS | Task | Duration | Start | Finish | Predecessors | Total float |
| --- | --- | --- | --- | --- | --- | --- | --- |
| CO-R09.S02-SL-210 |  | Backfilling Works for Lighting Poles of Street Lighting Network-[Road 09]-[SW-2] | 20d | 2026-04-26 | 2026-05-18 | CO-R09.S02-SL-120, CO-R09.S01-SL-210 | 8.5d |
| CO-R09.S02-SL-130 |  | Installation Works for Lighting Fixtures With Drop Wire of Street Lighting Network-[Road 09]-[SW-2] | 17d | 2026-05-09 | 2026-06-01 | CO-R09.S02-SL-120, PRO-R09-SL-DL-140 FF+3d, CO-R09.S02-SL-200 FF | 8.5d |
| CO-R09.S02-SL-200 |  | Testing Works for Lighting Poles of Street Lighting Network-[Road 09]-[SW-2] | 8d | 2026-05-19 | 2026-06-01 | CO-R09.S02-SL-210, CO-R09.S02-SL-120 | 8.5d |
|  | CW | **Cabling Works** |  | 2026-02-18 | 2026-03-28 |  |  |
| CO-R09.S02-SL-140 |  | Trench Excavation and Bedding Works for Street Lighting Network-[Road 09]-[SW-2] | 10d | 2026-02-18 | 2026-03-01 | CO-R09.S02-EW-120, CO-R09.S02-SL-120, CO-R09.S02-SL-110 | 96d |
| CO-R09.S02-SL-150 |  | Cable Laying Works for Street Lighting Network-[Road 09]-[SW-2] | 10d | 2026-03-02 | 2026-03-12 | CO-R09.S02-SL-140, PRO-R09-SL-DL-100 FF+3d | 96d |
| CO-R09.S02-SL-160 |  | Trench Backfilling and Compaction Works for Street Lighting Network-[Road 09]-[SW-2] | 10d | 2026-03-14 | 2026-03-28 | CO-R09.S02-SL-150 | 96d |
|  | DPB | **Distrubution Panel Boards** |  | 2026-06-30 | 2026-08-25 |  |  |
| CO-R09.S02-SL-170 |  | Foundation Excavation Works For Panel Boards of Street Lighting Network-[Road 09]-[SW-2] | 10d | 2026-06-30 | 2026-07-11 | CO-R09.S02-EW-120, CO-R09.S02-SL-160 SS, CO-R09-SL-ES-100 | 29.75d |
| CO-R09.S02-SL-180 |  | Installation Works for Panel Board Concrete Foundations of Street Lighting Network-[Road 09]-[SW-2] | 10d | 2026-07-12 | 2026-07-22 | CO-R09.S02-SL-170 | 29.75d |
| CO-R09.S02-SL-190 |  | Installation Works for Lighting Panel Boards of Street Lighting Network-[Road 09]-[SW-2] | 10d | 2026-07-23 | 2026-08-03 | CO-R09.S02-SL-180, PRO-R09-SL-DL-160 FF+3d | 29.75d |
| CO-R09.S02-SL-220 |  | A wall of concrete blocks to install the KWH meter of Street Lighting Network-[Road 09]-[SW-2] | 18.25d | 2026-08-04 | 2026-08-25 | CO-R09.S02-SL-180, CO-R09.S02-SL-190 | 29.75d |
|  | TE | **Telecom Network** |  | 2026-05-17 | 2026-07-14 |  |  |
|  | PD | **Ducts Works** |  | 2026-05-17 | 2026-06-17 |  |  |
| CO-R09.S02-TE-100 |  | Trench Excavation and Bedding Works for Ducts of Telecom Network-[Road 09]-[SW-2] | 3d | 2026-05-17 | 2026-05-19 | CO-R09.S01-TE-130, CO-R09.S01-TE-100 | 8d |
| CO-R09.S02-TE-110 |  | Pipes Laying Works for Ducts of Telecom Network-[Road 09]-[SW-2] | 7d | 2026-05-20 | 2026-06-01 | CO-R09.S02-TE-100, PRO-R09-TE-DL-100 FF+3d | 23d |
| CO-R09.S02-TE-120 |  | Pouring Plain Concrete Above Ducts of Telecom Network-[Road 09]-[SW-2] | 7d | 2026-06-02 | 2026-06-09 | CO-R09.S02-TE-110 | 23d |
| CO-R09.S02-TE-130 |  | Trench Backfilling and Compaction Works for Ducts of Telecom Network-[Road 09]-[SW-2] | 7d | 2026-06-10 | 2026-06-17 | CO-R09.S02-TE-120 | 23d |
|  | MH | **Manholes Works** |  | 2026-06-21 | 2026-07-14 |  |  |
| CO-R09.S02-TE-140 |  | Excavation Works for Manholes of Telecom Network-[Road 09]-[SW-2] | 7d | 2026-06-21 | 2026-06-28 | CO-R09.S02-TE-100, CO-R09.S01-TE-140, CO-R09.S01-TE-160 | 0d |
| CO-R09.S02-TE-150 |  | Installation Works for Manholes of Telecom Network-[Road 09]-[SW-2] | 7d | 2026-06-29 | 2026-07-06 | CO-R09.S02-TE-140, PRO-R09-TE-DL-110 FF+3d | 0d |
| CO-R09.S02-TE-160 |  | Backfilling Works for Manholes of Telecom Network-[Road 09]-[SW-2] | 7d | 2026-07-07 | 2026-07-14 | CO-R09.S02-TE-150 | 0d |
|  | RD | **Road Works** |  | 2026-07-15 | 2026-10-01 |  |  |
|  | RD | **Pre-Bituminous Construction** |  | 2026-07-15 | 2026-08-08 |  |  |
| CO-R09.S02-RD-P-100 |  | Capping and Subgrade Layer for Road Works-[Road 09]-[SW-2] | 12d | 2026-07-15 | 2026-07-28 | CO-R09.S02-SD-130, CO-R09.S02-PW-130, CO-R09.S02-PW-160, CO-R09.S02-SL-160 SS+3d, CO-R09.S02-SL-160 FF+3d, PRO-R09-RD-DL-100 FF+3d, CO-R09.S02-TE-130, CO-R09.S02-TE-160 | 0d |
| CO-R09.S02-RD-P-110 |  | Aggregate Base Course Layer for Road Works-[Road 09]-[SW-2] | 18d | 2026-07-19 | 2026-08-08 | CO-R09.S02-RD-P-100 SS+3d, CO-R09.S02-RD-P-100 FF+3d, CO-R09.S02-SD-170 SS+3d, CO-R09.S02-SD-170 FF+3d, PRO-R09-RD-DL-110 FF+3d | 49d |
|  | LS | **Pavement Works** |  | 2026-07-22 | 2026-10-01 |  |  |
| CO-R09.S02-RD-P-120 |  | Fixing of Curbstone for Sidewalks Pavement-[Road 09]-[SW-2] | 18d | 2026-07-22 | 2026-08-11 | PRO-R09-RD-DL-130 FF+3d, CO-R09.S02-RD-P-110 SS+3d, CO-R09.S02-RD-P-110 FF+3d | 49d |
| CO-R09.S02-RD-P-130 |  | Fixing of Interlock Tiles for Sidewalks Pavement-[Road 09]-[SW-2] | 18d | 2026-09-09 | 2026-10-01 | PRO-R09-RD-DL-120 FF+3d, CO-R09.S02-RD-P-120 SS+3d, CO-R09.S02-RD-P-120 FF+3d, CO-R09-PW-TF-110, CO-R09-PW-TF-120, CO-R09-SW-TF-100, CO-R09-SW-TF-110, CO-R09-SW-TF-120, CO-R09-SD-TF-100, CO-R09-SD-TF-120, CO-R09-SL-TF-100, CO-R09-SL-TF-110, CO-R09-SL-ES-100, CO-R09-SL-ES-110, CO-R09-IR-TF-100, CO-R09-MV-TF-100 | 9.5d |
|  | 4 | **Road 10 Local 2 ( 2352 LM )** |  | 2025-05-19 | 2026-10-01 |  |  |
|  | 1 | **SW-3** |  | 2025-05-19 | 2026-09-29 |  |  |
|  | SW_3 | **SW_3-East** |  | 2025-05-19 | 2026-09-29 |  |  |
|  | EW | **Earthworks** |  | 2025-05-19 | 2025-06-17 |  |  |
|  | EW | **Earthworks** |  | 2025-05-19 | 2025-06-17 |  |  |
| CO-R10.S03-ES-EW-100 |  | Roadway Excavation Works Upto Design Level for Earthworks-[Road 10]-[SW-3] | 10d | 2025-05-19 | 2025-05-29 | ENG-MS-RD-A-10, ENG-SH-RD-A-100, CO-R15.S10-EW-100 | 11d |
| CO-R10.S03-ES-EW-110 |  | Embankments Works Upto Design Level for Earthworks-[Road 10]-[SW-3] | 12d | 2025-05-31 | 2025-06-17 | CO-R10.S03-ES-EW-100, ENG-MS-RD-A-10, ENG-SH-RD-A-100 | 50d |
|  | SD | **Storm Drainage Network** |  | 2025-08-16 | 2025-10-23 |  |  |
|  | ML | **Main Line Sections** |  | 2025-08-16 | 2025-10-07 |  |  |
| CO-R10.S03-ES-SD-100 |  | Trench Excavation and Bedding Works for Main Lines of Storm Drainage Network-[Road 10]-[SW-3] | 10d | 2025-08-16 | 2025-08-26 | ENG-SH-SD-ML-A-110, CO-R10.S03-ES-EW-110, CO-R10.S03-ES-EW-100, ENG-MS-SD-ML-A-110, CO-R15.S10-SD-100 | 0d |
| CO-R10.S03-ES-SD-120 |  | Pipes Laying Works for Main Lines of Storm Drainage Network-[Road 10]-[SW-3] | 15d | 2025-09-02 | 2025-09-18 | CO-R10.S03-ES-SD-100, CO-R15.S10-SD-120 | 65d |
| CO-R10.S03-ES-SD-130 |  | Trench Backfilling and Compaction Works for Main Lines of Storm Drainage Network-[Road 10]-[SW-3] | 15d | 2025-09-20 | 2025-10-07 | ENG-SH-SD-ML-A-110 FF, ENG-MS-SD-ML-A-110 FF, CO-R10.S03-ES-SD-120, CO-R10.S03-ES-SD-220 FF | 65d |
|  | MH | **Manholes** |  | 2025-09-02 | 2025-09-17 |  |  |
| CO-R10.S03-ES-SD-180 |  | Trench Excavation and Bedding Works for Manholes of Storm Drainage Network-[Road 10]-[SW-3] | 1d | 2025-09-02 | 2025-09-02 | CO-R10.S03-ES-SD-120 SS, PRO-SD-1DL-100 | 75d |
| CO-R10.S03-ES-SD-190 |  | Install RC Footing Works for Manholes of Storm Drainage Network-[Road 10]-[SW-3] | 1d | 2025-09-03 | 2025-09-03 | CO-R10.S03-ES-SD-180 | 75d |
| CO-R10.S03-ES-SD-200 |  | Install RC Wall Rings & Slab Works for Manholes of Storm Drainage Network-[Road 10]-[SW-3] | 4d | 2025-09-04 | 2025-09-08 | CO-R10.S03-ES-SD-190 | 75d |
| CO-R10.S03-ES-SD-210 |  | Testing Works for Manholes of Storm Drainage Network-[Road 10]-[SW-3] | 1d | 2025-09-09 | 2025-09-09 | CO-R10.S03-ES-SD-200 | 75d |
| CO-R10.S03-ES-SD-220 |  | Backfilling Works for Manholes of Storm Drainage Network-[Road 10]-[SW-3] | 7d | 2025-09-10 | 2025-09-17 | CO-R10.S03-ES-SD-210 | 75d |
|  | CB | **Catch Basin Sections** |  | 2025-09-18 | 2025-10-23 |  |  |
| CO-R10.S03-ES-SD-140 |  | Trench Excavation and Bedding Works for Catch Basins of Storm Drainage Network-[Road 10]-[SW-3] | 6d | 2025-09-18 | 2025-09-25 | CO-R10.S03-ES-EW-110, ENG-SH-SD-CB-A-110, ENG-MS-SD-CB-A-110, CO-R10.S03-ES-SD-220, CO-R15.S10-SD-140 | 75d |
| CO-R10.S03-ES-SD-150 |  | Installation and Pipes Laying Connection Works for Catch Basins of Storm Drainage Network-[Road 10]-[SW-3] | 7d | 2025-09-27 | 2025-10-04 | CO-R10.S03-ES-SD-140, CO-R15.S10-SD-150 | 75d |
| CO-R10.S03-ES-SD-160 |  | Testing Works for Catch Basins of Storm Drainage Network-[Road 10]-[SW-3] | 10d | 2025-10-05 | 2025-10-15 | CO-R10.S03-ES-SD-150, CO-R10.S03-ES-SD-120 | 75d |
| CO-R10.S03-ES-SD-170 |  | Trench Backfilling and Compaction Works for Catch Basins of Storm Drainage Network-[Road 10]-[SW-3] | 7d | 2025-10-16 | 2025-10-23 | CO-R10.S03-ES-SD-160 | 75d |
|  | PW | **Potable Water Network** |  | 2025-10-08 | 2025-11-04 |  |  |
|  | ML | **Main Line Sections** |  | 2025-10-08 | 2025-11-04 |  |  |
| CO-R10.S03-ES-PW-100 |  | Trench Excavation and Bedding Works for Main Lines of Potable Water Network-[Road 10]-[SW-3] | 6d | 2025-10-08 | 2025-10-14 | ENG-SH-PW-ML-A-110, CO-R10.S03-ES-EW-110, CO-R10.S03-ES-EW-100, ENG-MS-PW-ML-A-110, ENG-SH-PW-FH-A-110, CO-R10.S03-ES-SD-130 | 65d |
| CO-R10.S03-ES-PW-110 |  | Pipes Laying and accessories for Main Lines of Potable Water Network-[Road 10]-[SW-3] | 6d | 2025-10-15 | 2025-10-21 | CO-R10.S03-ES-PW-100, PRO-R10-PW-DL-110 FF+3d | 65d |
| CO-R10.S03-ES-PW-130 |  | Trench Backfilling and Compaction Works for Main Lines of Potable Water Network-[Road 10]-[SW-3] | 6d | 2025-10-29 | 2025-11-04 | CO-R10.S03-ES-PW-110 SS+3d, CO-R10.S03-ES-PW-110 FF+3d, CO-R10.S03-ES-PW-220 FF, CO-R10.S03-ES-PW-160 FF | 65d |
|  | VC | **Valve Chamber** |  | 2025-10-15 | 2025-11-02 |  |  |
| CO-R10.S03-ES-PW-170 |  | Excavation Works for Main Line Valves and Valve Chambers of Potable Water Network-[Road 10]-[SW-3] | 1d | 2025-10-15 | 2025-10-15 | CO-R10.S03-ES-PW-100 | 67d |
| CO-R10.S03-ES-PW-180 |  | RC Footing Works for Main Line Valves and Valve Chambers of Potable Water Network-[Road 10]-[SW-3] | 3d | 2025-10-16 | 2025-10-19 | CO-R10.S03-ES-PW-170 | 67d |
| CO-R10.S03-ES-PW-190 |  | RC Wall Works for Main Line Valves and Valve Chambers of Potable Water Network-[Road 10]-[SW-3] | 6d | 2025-10-20 | 2025-10-26 | CO-R10.S03-ES-PW-180 | 67d |
| CO-R10.S03-ES-PW-200 |  | RC Slab Works for Main Line Valves and Valve Chambers of Potable Water Network-[Road 10]-[SW-3] | 2d | 2025-10-27 | 2025-10-28 | CO-R10.S03-ES-PW-190 | 67d |
| CO-R10.S03-ES-PW-210 |  | Insulation Works for Main Line Valves and Valve Chambers of Potable Water Network-[Road 10]-[SW-3] | 1d | 2025-10-29 | 2025-10-29 | CO-R10.S03-ES-PW-200 | 67d |
| CO-R10.S03-ES-PW-220 |  | Backfilling Works for Main Line Valves and Valve Chambers of Potable Water Network-[Road 10]-[SW-3] | 3d | 2025-10-30 | 2025-11-02 | CO-R10.S03-ES-PW-210 | 67d |
|  | FH | **Fire Hydrant** |  | 2025-10-19 | 2025-11-04 |  |  |
| CO-R10.S03-ES-PW-140 |  | Excavation Works for Fire Hydrants of Potable Water Network-[Road 10]-[SW-3] | 6d | 2025-10-19 | 2025-10-25 | CO-R10.S03-ES-PW-110 SS+3d, CO-R10.S03-ES-PW-110 FF+3d, CO-R10.S03-ES-EW-110 | 65d |
| CO-R10.S03-ES-PW-150 |  | Installation Works for Fire Hydrant of Potable Water Network-[Road 10]-[SW-3] | 6d | 2025-10-26 | 2025-11-01 | CO-R10.S03-ES-PW-140 | 65d |
| CO-R10.S03-ES-PW-160 |  | Trench Backfilling and Compaction Works for Fire Hydrants of Potable Water Network-[Road 10]-[SW-3] | 6d | 2025-10-29 | 2025-11-04 | CO-R10.S03-ES-PW-150 SS+3d, CO-R10.S03-ES-PW-150 FF+3d | 65d |
|  | IR | **Irrigation Network** |  | 2025-11-05 | 2025-12-01 |  |  |
|  | ML | **Main Line Pipes** |  | 2025-11-05 | 2025-12-01 |  |  |

| ID | WBS | Task | Duration | Start | Finish | Predecessors | Total float |
| --- | --- | --- | --- | --- | --- | --- | --- |
| CO-R10.S03-ES-IR-100 |  | Trench Excavation and Bedding Works for Main Lines of Irrigation Network-[Road 10]-[SW-3] | 7d | 2025-11-05 | 2025-11-12 | ENG-SH-IR-ML-A-110, CO-R10.S03-ES-EW-110, CO-R10.S03-ES-PW-130, CO-R10.S03-ES-SD-170, ENG-MS-IR-ML-A-110 | 65d |
| CO-R10.S03-ES-IR-110 |  | Pipes Laying Works for Main Lines of Irrigation Network-[Road 10]-[SW-3] | 7d | 2025-11-13 | 2025-11-20 | CO-R10.S03-ES-IR-100, PRO-R19.2-IR-DL-100 FF+3d | 65d |
| CO-R10.S03-ES-IR-120 |  | Installation Works for Main Line Valves of Irrigation Network-[Road 10]-[SW-3] | 2d | 2025-11-22 | 2025-11-23 | CO-R10.S03-ES-IR-110 | 65d |
| CO-R10.S03-ES-IR-130 |  | Trench Backfilling and Compaction Works for Main Lines of Irrigation Network-[Road 10]-[SW-3] | 7d | 2025-11-24 | 2025-12-01 | CO-R10.S03-ES-IR-120, CO-R10.S03-ES-IR-110 | 65d |
|  | SL | **Street Lighting Network** |  | 2025-12-02 | 2026-06-29 |  |  |
|  | LP | **Lighting Poles Works** |  | 2025-12-02 | 2026-02-16 |  |  |
| CO-R10.S03-ES-SL-100 |  | Foundation Excavation Works for Lighting Poles of Street Lighting Network-[Road 10]-[SW-3] | 12d | 2025-12-02 | 2025-12-15 | CO-R10.S03-ES-EW-110, ENG-SH-SL-A-110, CO-R10.S03-ES-EW-100, ENG-MS-SL-A-110, CO-R10.S03-ES-IR-130 | 65d |
| CO-R10.S03-ES-SL-110 |  | Installation Works for Lighting Poles Foundation of Street Lighting Network-[Road 10]-[SW-3] | 12d | 2025-12-08 | 2025-12-21 | CO-R10.S03-ES-SL-100 SS+5d, CO-R10.S03-ES-SL-100 FF+5d | 65d |
| CO-R10.S03-ES-SL-120 |  | Installation Works for Lighting Poles of Street Lighting Network-[Road 10]-[SW-3] | 18d | 2025-12-14 | 2026-01-03 | CO-R10.S03-ES-SL-110 SS+5d, CO-R10.S03-ES-SL-110 FF+5d | 65d |
| CO-R10.S03-ES-SL-130 |  | Installation Works for Lighting Fixtures With Drop Wire of Street Lighting Network-[Road 10]-[SW-3] | 18d | 2026-01-26 | 2026-02-16 | CO-R10.S03-ES-SL-120 SS+5d, CO-R10.S03-ES-SL-120 FF+5d, CO-R10.S03-ES-SL-200 FF | 78.5d |
| CO-R10.S03-ES-SL-210 |  | Backfilling Works for Lighting Poles of Street Lighting Network-[Road 10]-[SW-3] | 12d | 2026-01-27 | 2026-02-10 | CO-R10.S03-ES-SL-120 SS, CO-R10.S03-ES-SL-120 FF, CO-R15.S10-SL-210 | 42d |
| CO-R10.S03-ES-SL-200 |  | Testing Works for Lighting Poles of Street Lighting Network-[Road 10]-[SW-3] | 5d | 2026-02-10 | 2026-02-16 | CO-R10.S03-ES-SL-210, CO-R10.S03-ES-SL-120 | 78.5d |
|  | CW | **Cabling Works** |  | 2026-01-04 | 2026-02-07 |  |  |
| CO-R10.S03-ES-SL-140 |  | Trench Excavation and Bedding Works for Street Lighting Network-[Road 10]-[SW-3] | 10d | 2026-01-04 | 2026-01-14 | ENG-SH-SL-A-110, CO-R10.S03-ES-IR-130, CO-R10.S03-ES-EW-110, CO-R10.S03-ES-SL-120, CO-R10.S03-ES-SL-110, ENG-MS-SL-A-110 | 65d |
| CO-R10.S03-ES-SL-150 |  | Cable Laying Works for Street Lighting Network-[Road 10]-[SW-3] | 10d | 2026-01-15 | 2026-01-26 | CO-R10.S03-ES-SL-140 | 65d |
| CO-R10.S03-ES-SL-160 |  | Trench Backfilling and Compaction Works for Street Lighting Network-[Road 10]-[SW-3] | 10d | 2026-01-27 | 2026-02-07 | CO-R10.S03-ES-SL-150, CO-R10.S03-ES-IR-130 | 65d |
|  | DPB | **Distrubution Panel Boards** |  | 2026-06-06 | 2026-06-29 |  |  |
| CO-R10.S03-ES-SL-170 |  | Foundation Excavation Works For Panel Boards of Street Lighting Network-[Road 10]-[SW-3] | 12d | 2026-06-06 | 2026-06-18 | CO-R10-SL-ES-140, CO-R10.S03-ES-EW-110, ENG-SH-SL-A-110, ENG-MS-SL-A-110 | 16d |
| CO-R10.S03-ES-SL-180 |  | Installation Works for Panel Board Concrete Foundations of Street Lighting Network-[Road 10]-[SW-3] | 12d | 2026-06-13 | 2026-06-25 | CO-R10-SL-ES-150 SS+3d, CO-R10-SL-ES-150 FF+3d, CO-R10.S03-ES-SL-170 SS+3d, CO-R10.S03-ES-SL-170 FF+3d | 16d |
| CO-R10.S03-ES-SL-220 |  | A wall of concrete blocks to install the KWH meter of Street Lighting Network-[Road 10]-[SW-3] | 12d | 2026-06-13 | 2026-06-25 | CO-R10.S03-ES-SL-180 SS, CO-R10.S03-ES-SL-180 FF | 19d |
| CO-R10.S03-ES-SL-190 |  | Installation Works for Lighting Panel Boards of Street Lighting Network-[Road 10]-[SW-3] | 12d | 2026-06-16 | 2026-06-29 | CO-R10.S03-ES-SL-180 SS+3d, CO-R10.S03-ES-SL-180 FF+3d | 16d |
|  | TE | **Telecom Network** |  | 2026-01-27 | 2026-02-28 |  |  |
|  | PD | **Ducts Works** |  | 2026-01-27 | 2026-02-28 |  |  |
| CO-R10.S03-ES-TE-100 |  | Trench Excavation and Bedding Works for Ducts of Telecom Network-[Road 10]-[SW-3] | 7d | 2026-01-27 | 2026-02-03 | CO-R10.S03-ES-IR-130, CO-R10.S03-ES-SL-160 SS, CO-R15.S10-TE-100 | 65d |
| CO-R10.S03-ES-TE-110 |  | Pipes Laying Works for Ducts of Telecom Network-[Road 10]-[SW-3] | 7d | 2026-02-04 | 2026-02-11 | CO-R10.S03-ES-TE-100 | 92d |
| CO-R10.S03-ES-TE-120 |  | Pouring Plain Concrete Above Ducts of Telecom Network-[Road 10]-[SW-3] | 7d | 2026-02-12 | 2026-02-19 | CO-R10.S03-ES-TE-110 | 92d |
| CO-R10.S03-ES-TE-130 |  | Trench Backfilling and Compaction Works for Ducts of Telecom Network-[Road 10]-[SW-3] | 7d | 2026-02-21 | 2026-02-28 | CO-R10.S03-ES-TE-120 | 92d |
|  | MH | **Manholes Works** |  | 2026-02-04 | 2026-02-28 |  |  |
| CO-R10.S03-ES-TE-140 |  | Excavation Works for Manholes of Telecom Network-[Road 10]-[SW-3] | 7d | 2026-02-04 | 2026-02-11 | CO-R10.S03-ES-TE-100 | 110d |
| CO-R10.S03-ES-TE-150 |  | Installation Works for Manholes of Telecom Network-[Road 10]-[SW-3] | 7d | 2026-02-12 | 2026-02-19 | CO-R10.S03-ES-TE-140 | 112d |
| CO-R10.S03-ES-TE-160 |  | Backfilling Works for Manholes of Telecom Network-[Road 10]-[SW-3] | 7d | 2026-02-21 | 2026-02-28 | CO-R10.S03-ES-TE-150 | 112d |
|  | MV | **Medium Voltage Network** |  | 2026-02-24 | 2026-05-19 |  |  |
|  | CW | **Cabling Works** |  | 2026-02-24 | 2026-03-26 |  |  |
| CO-R10.S03-ES-MV-100 |  | Trench Excavation and Bedding Works for Medium Voltage Network-[Road 10]-[SW-3] | 18d | 2026-02-24 | 2026-03-16 | ENG-SH-MV-A-110, CO-R10.S03-ES-SD-170 SS+3d, CO-R10.S03-ES-SD-170 FF+3d, CO-R10.S03-ES-EW-110, CO-R10.S03-ES-TE-130 SS+3d, CO-R10.S03-ES-TE-130 FF+3d, ENG-MS-MV-A-110 | 92d |
| CO-R10.S03-ES-MV-110 |  | Cable Laying Works for Medium Voltage Network-[Road 10]-[SW-3] | 18d | 2026-02-28 | 2026-03-19 | CO-R10.S03-ES-MV-100 SS+3d, CO-R10.S03-ES-MV-100 FF+3d, PRO-R10-MV-DL-100 FF+3d | 92d |
| CO-R10.S03-ES-MV-120 |  | Trench Backfilling and Compaction Works for Medium Voltage Network-[Road 10]-[SW-3] | 18d | 2026-03-03 | 2026-03-26 | CO-R10.S03-ES-MV-110 SS+3d, CO-R10.S03-ES-MV-110 FF+3d, CO-R10.S03-ES-PW-130 FF+3d | 92d |
|  | SS | **RMU Works** |  | 2026-03-28 | 2026-05-19 |  |  |
| CO-R10.S03-ES-MV-130 |  | Foundation Excavation Works for RMU of Medium Voltage Network-[Road 10]-[SW-3] | 12d | 2026-03-28 | 2026-04-09 | ENG-SH-MV-A-110, ENG-MS-MV-A-110, CO-R10.S03-ES-EW-100, CO-R10.S03-ES-EW-110, CO-R10.S03-ES-MV-120 | 92d |
| CO-R10.S03-ES-MV-150 |  | Installation Works for RMU Concrete Foundations of Medium Voltage Network-[Road 10]-[SW-3] | 18d | 2026-04-11 | 2026-04-30 | CO-R10.S03-ES-MV-130, PRO-R10-MV-DL-120 | 92d |
| CO-R10.S03-ES-MV-170 |  | Installation Works for RMU of Medium Voltage Network-[Road 10]-[SW-3] | 6d | 2026-05-02 | 2026-05-07 | CO-R10.S03-ES-MV-150, ENG-SH-MV-A-110, ENG-MS-MV-A-110, PRO-MV-LL-SH/DL-10, PRO-R10-MV-LL-MSI-10 | 92d |
| CO-R10.S03-ES-MV-180 |  | Termination Works for RMU of Medium Voltage Network-[Road 10]-[SW-3] | 5d | 2026-05-09 | 2026-05-13 | CO-R10.S03-ES-MV-170 | 92d |
| CO-R10.S03-ES-MV-190 |  | Testing Works for RMU of Medium Voltage Network-[Road 10]-[SW-3] | 5d | 2026-05-14 | 2026-05-19 | CO-R10.S03-ES-MV-180 | 92d |
|  | RD | **Road Works** |  | 2026-03-07 | 2026-09-29 |  |  |
|  | RD | **Pre-Bituminous Construction** |  | 2026-03-07 | 2026-04-02 |  |  |
| CO-R10.S03-ES-RD-100 |  | Capping and Subgrade Layer for Road Works-[Road 10]-[SW-3] | 18d | 2026-03-07 | 2026-03-30 | ENG-SH-RD-A-100, CO-R10.S03-ES-SD-130, CO-R10.S03-ES-PW-130, CO-R10.S03-ES-PW-160, CO-R10.S03-ES-SL-160 SS+3d, CO-R10.S03-ES-SL-160 FF+3d, ENG-MS-RD-A-10, CO-R10.S03-ES-TE-130, CO-R10.S03-ES-TE-160, CO-R10.S03-ES-MV-120 SS+3d, CO-R10.S03-ES-MV-120 FF+3d | 107d |
| CO-R10.S03-ES-RD-110 |  | Aggregate Base Course Layer for Road Works-[Road 10]-[SW-3] | 18d | 2026-03-10 | 2026-04-02 | CO-R10.S03-ES-RD-100 SS+3d, CO-R10.S03-ES-RD-100 FF+3d, CO-R10.S03-ES-SD-170 SS+3d, CO-R10.S03-ES-SD-170 FF+3d | 113d |
|  | LS | **Pavement Works** |  | 2026-03-14 | 2026-09-29 |  |  |
| CO-R10.S03-ES-RD-120 |  | Fixing of Curbstone for Sidewalks Pavement-[Road 10]-[SW-3] | 18d | 2026-03-14 | 2026-04-06 | CO-R10.S03-ES-RD-110 FF+3d, CO-R10.S03-ES-RD-110 SS+3d | 113d |
| CO-R10.S03-ES-RD-130 |  | Fixing of Interlock Tiles for Sidewalks Pavement-[Road 10]-[SW-3] | 10d | 2026-09-17 | 2026-09-29 | CO-R10.S03-ES-RD-120 SS+3d, CO-R10.S03-ES-RD-120 FF+3d, CO-R10-PW-TF-100, CO-R10-PW-TF-110, CO-R10-PW-TF-120, CO-R10-SW-TF-100, CO-R10-SW-TF-110, CO-R10-SW-TF-130, CO-R10-SD-TF-100, CO-R10-SL-TF-140, CO-R10-SL-TF-150, CO-R10-SL-ES-140, CO-R10-SL-ES-150, CO-R10-IR-TF-120, CO-R10-MV-TF-140 | 0d |
|  | SW_31 | **SW_3-West** |  | 2025-09-01 | 2026-09-29 |  |  |
|  | EW | **Earthworks** |  | 2025-09-01 | 2025-09-29 |  |  |
|  | EW | **Earthworks** |  | 2025-09-01 | 2025-09-29 |  |  |
| CO-R10.S03-WE-EW-100 |  | Roadway Excavation Works Upto Design Level for Earthworks-[Road 10]-[SW-3] | 12d | 2025-09-01 | 2025-09-14 | CO-R09.S02-EW-110, ENG-MS-RD-A-10, ENG-SH-RD-A-100, CO-R11.S06-EW-100 | 11d |
| CO-R10.S03-WE-EW-110 |  | Embankments Works Upto Design Level for Earthworks-[Road 10]-[SW-3] | 12d | 2025-09-15 | 2025-09-29 | CO-R10.S03-WE-EW-100, ENG-MS-RD-A-10, ENG-SH-RD-A-100 | 42d |
|  | SD | **Storm Drainage Network** |  | 2025-11-18 | 2026-01-19 |  |  |
|  | ML | **Main Line Sections** |  | 2025-11-18 | 2025-12-28 |  |  |
| CO-R10.S03-WE-SD-100 |  | Trench Excavation and Bedding Works for Main Lines of Storm Drainage Network-[Road 10]-[SW-3] | 10d | 2025-11-18 | 2025-11-29 | ENG-SH-SD-ML-A-110, CO-R10.S03-WE-EW-110, CO-R10.S03-WE-EW-100, ENG-MS-SD-ML-A-110, CO-R11.S06-SD-100 | 0d |
| CO-R10.S03-WE-SD-120 |  | Pipes Laying Works for Main Lines of Storm Drainage Network-[Road 10]-[SW-3] | 10d | 2025-11-30 | 2025-12-10 | CO-R10.S03-WE-SD-100, CO-R11.S06-SD-120 | 0d |
| CO-R10.S03-WE-SD-130 |  | Trench Backfilling and Compaction Works for Main Lines of Storm Drainage Network-[Road 10]-[SW-3] | 15d | 2025-12-11 | 2025-12-28 | ENG-SH-SD-ML-A-110 FF, ENG-MS-SD-ML-A-110 FF, CO-R10.S03-WE-SD-120, CO-R10.S03-WE-SD-220 FF | 16d |
|  | MH | **Manholes** |  | 2025-11-30 | 2025-12-15 |  |  |
| CO-R10.S03-WE-SD-180 |  | Trench Excavation and Bedding Works for Manholes of Storm Drainage Network-[Road 10]-[SW-3] | 1d | 2025-11-30 | 2025-11-30 | CO-R10.S03-WE-SD-120 SS, PRO-SD-1DL-100 | 21d |
| CO-R10.S03-WE-SD-190 |  | Install RC Footing Works for Manholes of Storm Drainage Network-[Road 10]-[SW-3] | 1d | 2025-12-01 | 2025-12-01 | CO-R10.S03-WE-SD-180 | 21d |
| CO-R10.S03-WE-SD-200 |  | Install RC Wall Rings & Slab Works for Manholes of Storm Drainage Network-[Road 10]-[SW-3] | 4d | 2025-12-02 | 2025-12-06 | CO-R10.S03-WE-SD-190 | 21d |
| CO-R10.S03-WE-SD-210 |  | Testing Works for Manholes of Storm Drainage Network-[Road 10]-[SW-3] | 1d | 2025-12-07 | 2025-12-07 | CO-R10.S03-WE-SD-200 | 21d |
| CO-R10.S03-WE-SD-220 |  | Backfilling Works for Manholes of Storm Drainage Network-[Road 10]-[SW-3] | 7d | 2025-12-08 | 2025-12-15 | CO-R10.S03-WE-SD-210 | 21d |
|  | CB | **Catch Basin Sections** |  | 2025-12-16 | 2026-01-19 |  |  |
| CO-R10.S03-WE-SD-140 |  | Trench Excavation and Bedding Works for Catch Basins of Storm Drainage Network-[Road 10]-[SW-3] | 6d | 2025-12-16 | 2025-12-22 | CO-R10.S03-WE-EW-110, ENG-SH-SD-CB-A-110, ENG-MS-SD-CB-A-110, CO-R10.S03-WE-SD-220 | 21d |
| CO-R10.S03-WE-SD-150 |  | Installation and Pipes Laying Connection Works for Catch Basins of Storm Drainage Network-[Road 10]-[SW-3] | 7d | 2025-12-23 | 2025-12-30 | CO-R10.S03-WE-SD-140 | 21d |
| CO-R10.S03-WE-SD-160 |  | Testing Works for Catch Basins of Storm Drainage Network-[Road 10]-[SW-3] | 10d | 2025-12-31 | 2026-01-11 | CO-R10.S03-WE-SD-150, CO-R10.S03-WE-SD-120 | 21d |
| CO-R10.S03-WE-SD-170 |  | Trench Backfilling and Compaction Works for Catch Basins of Storm Drainage Network-[Road 10]-[SW-3] | 7d | 2026-01-12 | 2026-01-19 | CO-R10.S03-WE-SD-160 | 21d |

| ID | WBS | Task | Duration | Start | Finish | Predecessors | Total float |
| --- | --- | --- | --- | --- | --- | --- | --- |
|  | PW | **Potable Water Network** |  | 2025-12-29 | 2026-01-25 |  |  |
|  | ML | **Main Line Sections** |  | 2025-12-29 | 2026-01-25 |  |  |
| CO-R10.S03-WE-PW-100 |  | Trench Excavation and Bedding Works for Main Lines of Potable Water Network-[Road 10]-[SW-3] | 6d | 2025-12-29 | 2026-01-04 | ENG-SH-PW-ML-A-110, CO-R10.S03-WE-EW-110, CO-R10.S03-WE-EW-100, ENG-MS-PW-ML-A-110, ENG-SH-PW-FH-A-110, CO-R10.S03-WE-SD-130 | 16d |
| CO-R10.S03-WE-PW-110 |  | Pipes Laying and accessories for Main Lines of Potable Water Network-[Road 10]-[SW-3] | 6d | 2026-01-05 | 2026-01-11 | CO-R10.S03-WE-PW-100, PRO-R10-PW-DL-110 FF+3d | 16d |
| CO-R10.S03-WE-PW-130 |  | Trench Backfilling and Compaction Works for Main Lines of Potable Water Network-[Road 10]-[SW-3] | 6d | 2026-01-19 | 2026-01-25 | CO-R10.S03-WE-PW-110 SS+3d, CO-R10.S03-WE-PW-110 FF+3d, CO-R10.S03-WE-PW-220 FF, CO-R10.S03-WE-PW-160 FF | 16d |
|  | VC | **Valve Chamber** |  | 2026-01-05 | 2026-01-22 |  |  |
| CO-R10.S03-WE-PW-170 |  | Excavation Works for Main Line Valves and Valve Chambers of Potable Water Network-[Road 10]-[SW-3] | 1d | 2026-01-05 | 2026-01-05 | CO-R10.S03-WE-PW-100 | 18d |
| CO-R10.S03-WE-PW-180 |  | RC Footing Works for Main Line Valves and Valve Chambers of Potable Water Network-[Road 10]-[SW-3] | 3d | 2026-01-06 | 2026-01-08 | CO-R10.S03-WE-PW-170 | 18d |
| CO-R10.S03-WE-PW-190 |  | RC Wall Works for Main Line Valves and Valve Chambers of Potable Water Network-[Road 10]-[SW-3] | 6d | 2026-01-10 | 2026-01-15 | CO-R10.S03-WE-PW-180 | 18d |
| CO-R10.S03-WE-PW-200 |  | RC Slab Works for Main Line Valves and Valve Chambers of Potable Water Network-[Road 10]-[SW-3] | 2d | 2026-01-17 | 2026-01-18 | CO-R10.S03-WE-PW-190 | 18d |
| CO-R10.S03-WE-PW-210 |  | Insulation Works for Main Line Valves and Valve Chambers of Potable Water Network-[Road 10]-[SW-3] | 1d | 2026-01-19 | 2026-01-19 | CO-R10.S03-WE-PW-200 | 18d |
| CO-R10.S03-WE-PW-220 |  | Backfilling Works for Main Line Valves and Valve Chambers of Potable Water Network-[Road 10]-[SW-3] | 3d | 2026-01-20 | 2026-01-22 | CO-R10.S03-WE-PW-210 | 18d |
|  | FH | **Fire Hydrant** |  | 2026-01-08 | 2026-01-25 |  |  |
| CO-R10.S03-WE-PW-140 |  | Excavation Works for Fire Hydrants of Potable Water Network-[Road 10]-[SW-3] | 6d | 2026-01-08 | 2026-01-14 | CO-R10.S03-WE-PW-110 SS+3d, CO-R10.S03-WE-PW-110 FF+3d, CO-R10.S03-WE-EW-110 | 16d |
| CO-R10.S03-WE-PW-150 |  | Installation Works for Fire Hydrant of Potable Water Network-[Road 10]-[SW-3] | 6d | 2026-01-15 | 2026-01-21 | CO-R10.S03-WE-PW-140 | 16d |
| CO-R10.S03-WE-PW-160 |  | Trench Backfilling and Compaction Works for Fire Hydrants of Potable Water Network-[Road 10]-[SW-3] | 6d | 2026-01-19 | 2026-01-25 | CO-R10.S03-WE-PW-150 SS+3d, CO-R10.S03-WE-PW-150 FF+3d | 16d |
|  | IR | **Irrigation Network** |  | 2026-01-26 | 2026-02-21 |  |  |
|  | ML | **Main Line Pipes** |  | 2026-01-26 | 2026-02-21 |  |  |
| CO-R10.S03-WE-IR-100 |  | Trench Excavation and Bedding Works for Main Lines of Irrigation Network-[Road 10]-[SW-3] | 7d | 2026-01-26 | 2026-02-02 | ENG-SH-IR-ML-A-110, CO-R10.S03-WE-EW-110, CO-R10.S03-WE-PW-130, CO-R10.S03-WE-SD-170, ENG-MS-IR-ML-A-110 | 16d |
| CO-R10.S03-WE-IR-110 |  | Pipes Laying Works for Main Lines of Irrigation Network-[Road 10]-[SW-3] | 7d | 2026-02-03 | 2026-02-10 | CO-R10.S03-WE-IR-100, PRO-R19.2-IR-DL-100 FF+3d | 16d |
| CO-R10.S03-WE-IR-120 |  | Installation Works for Main Line Valves of Irrigation Network-[Road 10]-[SW-3] | 2d | 2026-02-11 | 2026-02-12 | CO-R10.S03-WE-IR-110 | 16d |
| CO-R10.S03-WE-IR-130 |  | Trench Backfilling and Compaction Works for Main Lines of Irrigation Network-[Road 10]-[SW-3] | 7d | 2026-02-14 | 2026-02-21 | CO-R10.S03-WE-IR-120, CO-R10.S03-WE-IR-110 | 16d |
|  | SL | **Street Lighting Network** |  | 2026-02-22 | 2026-06-29 |  |  |
|  | LP | **Lighting Poles Works** |  | 2026-02-22 | 2026-04-04 |  |  |
| CO-R10.S03-WE-SL-100 |  | Foundation Excavation Works for Lighting Poles of Street Lighting Network-[Road 10]-[SW-3] | 12d | 2026-02-22 | 2026-03-07 | CO-R10.S03-WE-EW-110, ENG-SH-SL-A-110, CO-R10.S03-WE-EW-100, ENG-MS-SL-A-110, CO-R10.S03-WE-IR-130 | 16d |
| CO-R10.S03-WE-SL-110 |  | Installation Works for Lighting Poles Foundation of Street Lighting Network-[Road 10]-[SW-3] | 12d | 2026-02-28 | 2026-03-12 | CO-R10.S03-WE-SL-100 SS+5d, CO-R10.S03-WE-SL-100 FF+5d | 16d |
| CO-R10.S03-WE-SL-120 |  | Installation Works for Lighting Poles of Street Lighting Network-[Road 10]-[SW-3] | 18d | 2026-03-05 | 2026-03-29 | CO-R10.S03-WE-SL-110 SS+5d, CO-R10.S03-WE-SL-110 FF+5d | 16d |
| CO-R10.S03-WE-SL-130 |  | Installation Works for Lighting Fixtures With Drop Wire of Street Lighting Network-[Road 10]-[SW-3] | 18d | 2026-03-11 | 2026-04-04 | CO-R10.S03-WE-SL-120 SS+5d, CO-R10.S03-WE-SL-120 FF+5d, CO-R10.S03-WE-SL-200 FF | 41d |
| CO-R10.S03-WE-SL-210 |  | Backfilling Works for Lighting Poles of Street Lighting Network-[Road 10]-[SW-3] | 12d | 2026-03-12 | 2026-03-29 | CO-R10.S03-WE-SL-120 SS, CO-R10.S03-WE-SL-120 FF | 41d |
| CO-R10.S03-WE-SL-200 |  | Testing Works for Lighting Poles of Street Lighting Network-[Road 10]-[SW-3] | 5d | 2026-03-30 | 2026-04-04 | CO-R10.S03-WE-SL-210, CO-R10.S03-WE-SL-120 | 41d |
|  | CW | **Cabling Works** |  | 2026-03-30 | 2026-05-03 |  |  |
| CO-R10.S03-WE-SL-140 |  | Trench Excavation and Bedding Works for Street Lighting Network-[Road 10]-[SW-3] | 10d | 2026-03-30 | 2026-04-09 | ENG-SH-SL-A-110, CO-R10.S03-WE-IR-130, CO-R10.S03-WE-EW-110, CO-R10.S03-WE-SL-120, CO-R10.S03-WE-SL-110, ENG-MS-SL-A-110 | 16d |
| CO-R10.S03-WE-SL-150 |  | Cable Laying Works for Street Lighting Network-[Road 10]-[SW-3] | 10d | 2026-04-11 | 2026-04-21 | CO-R10.S03-WE-SL-140 | 16d |
| CO-R10.S03-WE-SL-160 |  | Trench Backfilling and Compaction Works for Street Lighting Network-[Road 10]-[SW-3] | 10d | 2026-04-22 | 2026-05-03 | CO-R10.S03-WE-SL-150, CO-R10.S03-WE-IR-130 | 16d |
|  | DPB | **Distrubution Panel Boards** |  | 2026-06-06 | 2026-06-29 |  |  |
| CO-R10.S03-WE-SL-170 |  | Foundation Excavation Works For Panel Boards of Street Lighting Network-[Road 10]-[SW-3] | 12d | 2026-06-06 | 2026-06-18 | CO-R10-SL-ES-140, CO-R10.S03-WE-EW-110, ENG-SH-SL-A-110, ENG-MS-SL-A-110 | 16d |
| CO-R10.S03-WE-SL-180 |  | Installation Works for Panel Board Concrete Foundations of Street Lighting Network-[Road 10]-[SW-3] | 12d | 2026-06-13 | 2026-06-25 | CO-R10-SL-ES-150 SS+3d, CO-R10-SL-ES-150 FF+3d, CO-R10.S03-WE-SL-170 SS+3d, CO-R10.S03-WE-SL-170 FF+3d | 16d |
| CO-R10.S03-WE-SL-220 |  | A wall of concrete blocks to install the KWH meter of Street Lighting Network-[Road 10]-[SW-3] | 12d | 2026-06-13 | 2026-06-25 | CO-R10.S03-WE-SL-180 SS, CO-R10.S03-WE-SL-180 FF | 19d |
| CO-R10.S03-WE-SL-190 |  | Installation Works for Lighting Panel Boards of Street Lighting Network-[Road 10]-[SW-3] | 12d | 2026-06-16 | 2026-06-29 | CO-R10.S03-WE-SL-180 SS+3d, CO-R10.S03-WE-SL-180 FF+3d | 16d |
|  | TE | **Telecom Network** |  | 2026-06-17 | 2026-07-14 |  |  |
|  | PD | **Ducts Works** |  | 2026-06-17 | 2026-07-14 |  |  |
| CO-R10.S03-WE-TE-100 |  | Trench Excavation and Bedding Works for Ducts of Telecom Network-[Road 10]-[SW-3] | 3d | 2026-06-17 | 2026-06-20 | CO-R10.S03-WE-IR-130, CO-R10.S03-WE-SL-160 SS, CO-R11.S06-TE-100 | 0d |
| CO-R10.S03-WE-TE-110 |  | Pipes Laying Works for Ducts of Telecom Network-[Road 10]-[SW-3] | 7d | 2026-06-21 | 2026-06-28 | CO-R10.S03-WE-TE-100 | 0d |
| CO-R10.S03-WE-TE-120 |  | Pouring Plain Concrete Above Ducts of Telecom Network-[Road 10]-[SW-3] | 7d | 2026-06-29 | 2026-07-06 | CO-R10.S03-WE-TE-110 | 0d |
| CO-R10.S03-WE-TE-130 |  | Trench Backfilling and Compaction Works for Ducts of Telecom Network-[Road 10]-[SW-3] | 7d | 2026-07-07 | 2026-07-14 | CO-R10.S03-WE-TE-120 | 0d |
|  | MH | **Manholes Works** |  | 2026-06-21 | 2026-07-14 |  |  |
| CO-R10.S03-WE-TE-140 |  | Excavation Works for Manholes of Telecom Network-[Road 10]-[SW-3] | 7d | 2026-06-21 | 2026-06-28 | CO-R10.S03-WE-TE-100 | 0d |
| CO-R10.S03-WE-TE-150 |  | Installation Works for Manholes of Telecom Network-[Road 10]-[SW-3] | 7d | 2026-06-29 | 2026-07-06 | CO-R10.S03-WE-TE-140 | 7d |
| CO-R10.S03-WE-TE-160 |  | Backfilling Works for Manholes of Telecom Network-[Road 10]-[SW-3] | 7d | 2026-07-07 | 2026-07-14 | CO-R10.S03-WE-TE-150 | 7d |
|  | MV | **Medium Voltage Network** |  | 2026-07-11 | 2026-09-08 |  |  |
|  | CW | **Cabling Works** |  | 2026-07-11 | 2026-07-28 |  |  |
| CO-R10.S03-WE-MV-100 |  | Trench Excavation and Bedding Works for Medium Voltage Network-[Road 10]-[SW-3] | 10d | 2026-07-11 | 2026-07-21 | ENG-SH-MV-A-110, CO-R10.S03-WE-SD-170 SS+3d, CO-R10.S03-WE-SD-170 FF+3d, CO-R10.S03-WE-EW-110, CO-R10.S03-WE-TE-130 SS+3d, CO-R10.S03-WE-TE-130 FF+3d, ENG-MS-MV-A-110 | 0d |
| CO-R10.S03-WE-MV-110 |  | Cable Laying Works for Medium Voltage Network-[Road 10]-[SW-3] | 10d | 2026-07-14 | 2026-07-25 | CO-R10.S03-WE-MV-100 SS+3d, CO-R10.S03-WE-MV-100 FF+3d, PRO-R10-MV-DL-100 FF+3d | 0d |
| CO-R10.S03-WE-MV-120 |  | Trench Backfilling and Compaction Works for Medium Voltage Network-[Road 10]-[SW-3] | 10d | 2026-07-18 | 2026-07-28 | CO-R10.S03-WE-MV-110 SS+3d, CO-R10.S03-WE-MV-110 FF+3d, CO-R10.S03-WE-PW-130 FF+3d | 0d |
|  | SS | **RMU Works** |  | 2026-07-29 | 2026-09-08 |  |  |
| CO-R10.S03-WE-MV-130 |  | Foundation Excavation Works for RMU of Medium Voltage Network-[Road 10]-[SW-3] | 10d | 2026-07-29 | 2026-08-09 | ENG-SH-MV-A-110, ENG-MS-MV-A-110, CO-R10.S03-WE-EW-100, CO-R10.S03-WE-EW-110, CO-R10.S03-WE-MV-120 | 0d |
| CO-R10.S03-WE-MV-150 |  | Installation Works for RMU Concrete Foundations of Medium Voltage Network-[Road 10]-[SW-3] | 10d | 2026-08-10 | 2026-08-20 | CO-R10.S03-WE-MV-130, PRO-R10-MV-DL-120 | 0d |
| CO-R10.S03-WE-MV-170 |  | Installation Works for RMU of Medium Voltage Network-[Road 10]-[SW-3] | 6d | 2026-08-22 | 2026-08-27 | CO-R10.S03-WE-MV-150, ENG-SH-MV-A-110, ENG-MS-MV-A-110, PRO-MV-LL-SH/DL-10, PRO-R10-MV-LL-MSI-10 | 0d |
| CO-R10.S03-WE-MV-180 |  | Termination Works for RMU of Medium Voltage Network-[Road 10]-[SW-3] | 5d | 2026-08-29 | 2026-09-02 | CO-R10.S03-WE-MV-170 | 0d |
| CO-R10.S03-WE-MV-190 |  | Testing Works for RMU of Medium Voltage Network-[Road 10]-[SW-3] | 5d | 2026-09-03 | 2026-09-08 | CO-R10.S03-WE-MV-180 | 0d |
|  | RD | **Road Works** |  | 2026-07-21 | 2026-09-29 |  |  |
|  | RD | **Pre-Bituminous Construction** |  | 2026-07-21 | 2026-08-13 |  |  |
| CO-R10.S03-WE-RD-100 |  | Capping and Subgrade Layer for Road Works-[Road 10]-[SW-3] | 12d | 2026-07-21 | 2026-08-03 | ENG-SH-RD-A-100, CO-R10.S03-WE-SD-130, CO-R10.S03-WE-PW-130, CO-R10.S03-WE-PW-160, CO-R10.S03-WE-SL-160 SS+3d, CO-R10.S03-WE-SL-160 FF+3d, ENG-MS-RD-A-10, CO-R10.S03-WE-TE-130, CO-R10.S03-WE-TE-160, CO-R10.S03-WE-MV-120 SS+3d, CO-R10.S03-WE-MV-120 FF+3d | 3d |
| CO-R10.S03-WE-RD-110 |  | Aggregate Base Course Layer for Road Works-[Road 10]-[SW-3] | 18d | 2026-07-25 | 2026-08-13 | CO-R10.S03-WE-RD-100 SS+3d, CO-R10.S03-WE-RD-100 FF+3d, CO-R10.S03-WE-SD-170 SS+3d, CO-R10.S03-WE-SD-170 FF+3d | 3d |
|  | LS | **Pavement Works** |  | 2026-07-28 | 2026-09-29 |  |  |
| CO-R10.S03-WE-RD-120 |  | Fixing of Curbstone for Sidewalks Pavement-[Road 10]-[SW-3] | 18d | 2026-07-28 | 2026-08-17 | CO-R10.S03-WE-RD-110 FF+3d, CO-R10.S03-WE-RD-110 SS+3d | 3d |
| CO-R10.S03-WE-RD-130 |  | Fixing of Interlock Tiles for Sidewalks Pavement-[Road 10]-[SW-3] | 10d | 2026-09-17 | 2026-09-29 | CO-R10.S03-WE-RD-120 SS+3d, CO-R10.S03-WE-RD-120 FF+3d, CO-R10-PW-TF-100, CO-R10-PW-TF-110, CO-R10-PW-TF-120, CO-R10-SW-TF-100, CO-R10-SW-TF-110, CO-R10-SW-TF-130, CO-R10-SD-TF-100, CO-R10-SL-TF-140, CO-R10-SL-TF-150, CO-R10-SL-ES-140, CO-R10-SL-ES-150, CO-R10-IR-TF-120, CO-R10-MV-TF-140 | 0d |
|  | 2 | **SW-4** |  | 2025-05-31 | 2026-10-01 |  |  |
|  | SW_4 | **SW_4-East** |  | 2025-05-31 | 2026-09-29 |  |  |
|  | EW | **Earthworks** |  | 2025-05-31 | 2025-06-26 |  |  |

| ID | WBS | Task | Duration | Start | Finish | Predecessors | Total float |
| --- | --- | --- | --- | --- | --- | --- | --- |
|  | EW | **Earthworks** |  | 2025-05-31 | 2025-06-26 |  |  |
| CO-R10.S04-ES-EW-100 |  | Roadway Excavation Works Upto Design Level for Earthworks-[Road 10]-[SW-4] | 10d | 2025-05-31 | 2025-06-15 | ENG-MS-RD-A-10, ENG-SH-RD-A-100, CO-R10.S03-ES-EW-100 | 11d |
| CO-R10.S04-ES-EW-110 |  | Embankments Works Upto Design Level for Earthworks-[Road 10]-[SW-4] | 10d | 2025-06-16 | 2025-06-26 | CO-R10.S04-ES-EW-100, ENG-MS-RD-A-10, ENG-SH-RD-A-100 | 17d |
|  | SW | **Sewage Network** |  | 2025-06-28 | 2025-08-05 |  |  |
|  | ML | **Main Line Sections** |  | 2025-06-28 | 2025-08-05 |  |  |
| CO-R10.S04-ES-SW-100 |  | Trench Excavation and Bedding Works for Main Lines of Sewage Network-[Road 10]-[SW-4] | 10d | 2025-06-28 | 2025-07-08 | CO-R10.S04-ES-EW-110, ENG-MS-SW-ML-A-110, ENG-SH-SW-ML-A-110 | 17d |
| CO-R10.S04-ES-SW-120 |  | Pipes Laying Works for Main Lines of Sewage Network-[Road 10]-[SW-4] | 12d | 2025-07-09 | 2025-07-22 | PRO-R10-SW-DL-100 FF+3d, CO-R10.S04-ES-SW-100 | 25d |
| CO-R10.S04-ES-SW-130 |  | Trench Backfilling and Compaction Works for Main Lines of Sewage Network-[Road 10]-[SW-4] | 12d | 2025-07-23 | 2025-08-05 | CO-R10.S04-ES-SW-120, CO-R10.S04-ES-SW-210 FF | 25d |
|  | 1 | **Manholes** |  | 2025-07-09 | 2025-07-23 |  |  |
| CO-R10.S04-ES-SW-160 |  | Excavation Works for Main Line Manholes of Sewage Network-[Road 10]-[SW-4] | 1d | 2025-07-09 | 2025-07-09 | CO-R10.S04-ES-SW-120 SS | 36d |
| CO-R10.S04-ES-SW-170 |  | Installation RC Footing Works for Main Line Manholes of Sewage Network-[Road 10]-[SW-4] | 2d | 2025-07-10 | 2025-07-12 | CO-R10.S04-ES-SW-160, PRO-R10-SW-DL-110 FF+3d | 36d |
| CO-R10.S04-ES-SW-180 |  | Install Grp Liner Wall Works for Main Line Manholes of Sewage Network-[Road 10]-[SW-4] | 4d | 2025-07-13 | 2025-07-16 | CO-R10.S04-ES-SW-170 | 36d |
| CO-R10.S04-ES-SW-190 |  | Pouring Grp Liner Wall Works for Main Line Manholes of Sewage Network-[Road 10]-[SW-4] | 1d | 2025-07-17 | 2025-07-17 | CO-R10.S04-ES-SW-180 | 36d |
| CO-R10.S04-ES-SW-200 |  | Backfilling Works for Main Line Manholes of Sewage Network-[Road 10]-[SW-4] | 4d | 2025-07-19 | 2025-07-22 | CO-R10.S04-ES-SW-190 | 36d |
| CO-R10.S04-ES-SW-210 |  | Testing Works for Main Line Manholes of Sewage Network-[Road 10]-[SW-4] | 1d | 2025-07-23 | 2025-07-23 | CO-R10.S04-ES-SW-200 | 36d |
|  | SD | **Storm Drainage Network** |  | 2025-08-27 | 2026-01-26 |  |  |
|  | ML | **Main Line Sections** |  | 2025-08-27 | 2026-01-03 |  |  |
| CO-R10.S04-ES-SD-100 |  | Trench Excavation and Bedding Works for Main Lines of Storm Drainage Network-[Road 10]-[SW-4] | 10d | 2025-08-27 | 2025-09-07 | CO-R10.S04-ES-EW-110, CO-R10.S04-ES-EW-100, CO-R10.S04-ES-SW-130 SS+3d, CO-R10.S04-ES-SW-130 FF+3d, CO-R10.S03-ES-SD-100 | 0d |
| CO-R10.S04-ES-SD-120 |  | Pipes Laying Works for Main Lines of Storm Drainage Network-[Road 10]-[SW-4] | 10d | 2025-12-11 | 2025-12-22 | PRO-R10-SD-DL-120 FF+3d, CO-R10.S04-ES-SD-100, CO-R10.S03-ES-SD-120, CO-R10.S03-WE-SD-120 | 0d |
| CO-R10.S04-ES-SD-130 |  | Trench Backfilling and Compaction Works for Main Lines of Storm Drainage Network-[Road 10]-[SW-4] | 10d | 2025-12-23 | 2026-01-03 | CO-R10.S04-ES-SD-120 SS+3d, CO-R10.S04-ES-SD-120 FF+3d, CO-R10.S04-ES-SD-120, CO-R10.S04-ES-SD-220 FF | 0d |
|  | MH | **Manholes** |  | 2025-12-11 | 2025-12-27 |  |  |
| CO-R10.S04-ES-SD-180 |  | Trench Excavation and Bedding Works for Manholes of Storm Drainage Network-[Road 10]-[SW-4] | 1d | 2025-12-11 | 2025-12-11 | CO-R10.S04-ES-SD-120 SS, PRO-SD-1DL-100 | 6d |
| CO-R10.S04-ES-SD-190 |  | Install RC Footing Works for Manholes of Storm Drainage Network-[Road 10]-[SW-4] | 1d | 2025-12-13 | 2025-12-13 | CO-R10.S04-ES-SD-180 | 6d |
| CO-R10.S04-ES-SD-200 |  | Install RC Wall Rings & Slab Works for Manholes of Storm Drainage Network-[Road 10]-[SW-4] | 4d | 2025-12-14 | 2025-12-17 | CO-R10.S04-ES-SD-190 | 6d |
| CO-R10.S04-ES-SD-210 |  | Testing Works for Manholes of Storm Drainage Network-[Road 10]-[SW-4] | 1d | 2025-12-18 | 2025-12-18 | CO-R10.S04-ES-SD-200 | 6d |
| CO-R10.S04-ES-SD-220 |  | Backfilling Works for Manholes of Storm Drainage Network-[Road 10]-[SW-4] | 7d | 2025-12-20 | 2025-12-27 | CO-R10.S04-ES-SD-210 | 6d |
|  | CB | **Catch Basin Sections** |  | 2025-12-28 | 2026-01-26 |  |  |
| CO-R10.S04-ES-SD-140 |  | Trench Excavation and Bedding Works for Catch Basins of Storm Drainage Network-[Road 10]-[SW-4] | 6d | 2025-12-28 | 2026-01-03 | CO-R10.S04-ES-EW-110, CO-R10.S04-ES-SD-220 | 14d |
| CO-R10.S04-ES-SD-150 |  | Installation and Pipes Laying Connection Works for Catch Basins of Storm Drainage Network-[Road 10]-[SW-4] | 7d | 2026-01-04 | 2026-01-11 | CO-R10.S04-ES-SD-140, PRO-R10-SD-DL-130 FF+3d | 14d |
| CO-R10.S04-ES-SD-160 |  | Testing Works for Catch Basins of Storm Drainage Network-[Road 10]-[SW-4] | 10d | 2026-01-12 | 2026-01-22 | CO-R10.S04-ES-SD-150, CO-R10.S04-ES-SD-120, PRO-R10-SD-DL-110 FF+3d | 14d |
| CO-R10.S04-ES-SD-170 |  | Trench Backfilling and Compaction Works for Catch Basins of Storm Drainage Network-[Road 10]-[SW-4] | 7d | 2026-01-19 | 2026-01-26 | CO-R10.S04-ES-SD-160 SS+3d, CO-R10.S04-ES-SD-160 FF+3d | 14d |
|  | PW | **Potable Water Network** |  | 2026-01-04 | 2026-02-11 |  |  |
|  | ML | **Main Line Sections** |  | 2026-01-04 | 2026-02-11 |  |  |
| CO-R10.S04-ES-PW-100 |  | Trench Excavation and Bedding Works for Main Lines of Potable Water Network-[Road 10]-[SW-4] | 10d | 2026-01-04 | 2026-01-14 | CO-R10.S04-ES-EW-110, CO-R10.S04-ES-EW-100, CO-R10.S04-ES-SD-130 | 0d |
| CO-R10.S04-ES-PW-110 |  | Pipes Laying and accessories for Main Lines of Potable Water Network-[Road 10]-[SW-4] | 10d | 2026-01-15 | 2026-01-26 | CO-R10.S04-ES-PW-100, PRO-R10-PW-DL-100 FF+3d, PRO-R10-PW-DL-110 FF+3d | 0d |
| CO-R10.S04-ES-PW-130 |  | Trench Backfilling and Compaction Works for Main Lines of Potable Water Network-[Road 10]-[SW-4] | 7d | 2026-02-04 | 2026-02-11 | CO-R10.S04-ES-PW-110, CO-R10.S04-ES-PW-220 FF, CO-R10.S04-ES-PW-160 FF | 0d |
|  | VC | **Valve Chamber** |  | 2026-01-15 | 2026-02-02 |  |  |
| CO-R10.S04-ES-PW-170 |  | Excavation Works for Main Line Valves and Valve Chambers of Potable Water Network-[Road 10]-[SW-4] | 1d | 2026-01-15 | 2026-01-15 | CO-R10.S04-ES-PW-100 | 2d |
| CO-R10.S04-ES-PW-180 |  | RC Footing Works for Main Line Valves and Valve Chambers of Potable Water Network-[Road 10]-[SW-4] | 3d | 2026-01-17 | 2026-01-19 | CO-R10.S04-ES-PW-170 | 8d |
| CO-R10.S04-ES-PW-190 |  | RC Wall Works for Main Line Valves and Valve Chambers of Potable Water Network-[Road 10]-[SW-4] | 6d | 2026-01-20 | 2026-01-26 | CO-R10.S04-ES-PW-180 | 8d |
| CO-R10.S04-ES-PW-200 |  | RC Slab Works for Main Line Valves and Valve Chambers of Potable Water Network-[Road 10]-[SW-4] | 2d | 2026-01-27 | 2026-01-28 | CO-R10.S04-ES-PW-190 | 8d |
| CO-R10.S04-ES-PW-210 |  | Insulation Works for Main Line Valves and Valve Chambers of Potable Water Network-[Road 10]-[SW-4] | 1d | 2026-01-29 | 2026-01-29 | CO-R10.S04-ES-PW-200 | 8d |
| CO-R10.S04-ES-PW-220 |  | Backfilling Works for Main Line Valves and Valve Chambers of Potable Water Network-[Road 10]-[SW-4] | 3d | 2026-01-31 | 2026-02-02 | CO-R10.S04-ES-PW-210 | 8d |
|  | FH | **Fire Hydrant** |  | 2026-01-19 | 2026-02-11 |  |  |
| CO-R10.S04-ES-PW-140 |  | Excavation Works for Fire Hydrants of Potable Water Network-[Road 10]-[SW-4] | 7d | 2026-01-19 | 2026-01-26 | CO-R10.S04-ES-PW-110 SS+3d, CO-R10.S04-ES-EW-110, CO-R10.S04-ES-SW-130 SS+3d, CO-R10.S04-ES-SW-130 FF+3d, CO-R10.S04-ES-PW-170 | 0d |
| CO-R10.S04-ES-PW-150 |  | Installation Works for Fire Hydrant of Potable Water Network-[Road 10]-[SW-4] | 7d | 2026-01-27 | 2026-02-03 | CO-R10.S04-ES-PW-140, PRO-R10-PW-DL-120 FF+3d | 0d |
| CO-R10.S04-ES-PW-160 |  | Trench Backfilling and Compaction Works for Fire Hydrants of Potable Water Network-[Road 10]-[SW-4] | 7d | 2026-02-04 | 2026-02-11 | CO-R10.S04-ES-PW-150 | 0d |
|  | IR | **Irrigation Network** |  | 2026-02-12 | 2026-03-09 |  |  |
|  | ML | **Main Line Pipes** |  | 2026-02-12 | 2026-03-09 |  |  |
| CO-R10.S04-ES-IR-100 |  | Trench Excavation and Bedding Works for Main Lines of Irrigation Network-[Road 10]-[SW-4] | 6d | 2026-02-12 | 2026-02-18 | CO-R10.S04-ES-EW-110, CO-R10.S04-ES-PW-130, CO-R10.S04-ES-SD-170 | 0d |
| CO-R10.S04-ES-IR-110 |  | Pipes Laying Works for Main Lines of Irrigation Network-[Road 10]-[SW-4] | 7d | 2026-02-19 | 2026-02-26 | CO-R10.S04-ES-IR-100, PRO-R19.2-IR-DL-100 FF+3d | 0d |
| CO-R10.S04-ES-IR-120 |  | Installation Works for Main Line Valves of Irrigation Network-[Road 10]-[SW-4] | 4d | 2026-02-28 | 2026-03-03 | CO-R10.S04-ES-IR-110, PRO-R19.2-IR-DL-110 FF+3d | 0d |
| CO-R10.S04-ES-IR-130 |  | Trench Backfilling and Compaction Works for Main Lines of Irrigation Network-[Road 10]-[SW-4] | 5d | 2026-03-04 | 2026-03-09 | CO-R10.S04-ES-IR-120, CO-R10.S04-ES-IR-110 | 0d |
|  | SL | **Street Lighting Network** |  | 2026-03-10 | 2026-06-15 |  |  |
|  | LP | **Lighting Poles Works** |  | 2026-03-10 | 2026-04-20 |  |  |
| CO-R10.S04-ES-SL-100 |  | Foundation Excavation Works for Lighting Poles of Street Lighting Network-[Road 10]-[SW-4] | 7d | 2026-03-10 | 2026-03-17 | CO-R10.S04-ES-EW-110, CO-R10.S04-ES-EW-100, CO-R10.S04-ES-IR-130 | 0d |
| CO-R10.S04-ES-SL-110 |  | Installation Works for Lighting Poles Foundation of Street Lighting Network-[Road 10]-[SW-4] | 7d | 2026-03-16 | 2026-03-26 | CO-R10.S04-ES-SL-100 SS+5d, CO-R10.S04-ES-SL-100 FF+5d, PRO-R10-SL-DL-110 FF+3d | 0d |
| CO-R10.S04-ES-SL-120 |  | Installation Works for Lighting Poles of Street Lighting Network-[Road 10]-[SW-4] | 7d | 2026-03-25 | 2026-04-01 | CO-R10.S04-ES-SL-110 SS+5d, CO-R10.S04-ES-SL-110 FF+5d, PRO-R10-SL-DL-120 FF+3d | 0d |
| CO-R10.S04-ES-SL-210 |  | Backfilling Works for Lighting Poles of Street Lighting Network-[Road 10]-[SW-4] | 15d | 2026-03-25 | 2026-04-11 | CO-R10.S04-ES-SL-120 SS, CO-R10.S04-ES-SL-120 FF, CO-R10.S03-ES-SL-210 | 8.5d |
| CO-R10.S04-ES-SL-130 |  | Installation Works for Lighting Fixtures With Drop Wire of Street Lighting Network-[Road 10]-[SW-4] | 18d | 2026-03-31 | 2026-04-20 | CO-R10.S04-ES-SL-120 SS+5d, CO-R10.S04-ES-SL-120 FF+5d, PRO-R10-SL-DL-140 FF+3d, CO-R10.S04-ES-SL-200 FF | 112.5d |
| CO-R10.S04-ES-SL-200 |  | Testing Works for Lighting Poles of Street Lighting Network-[Road 10]-[SW-4] | 7d | 2026-04-12 | 2026-04-19 | CO-R10.S04-ES-SL-210, CO-R10.S04-ES-SL-120 | 113.5d |
|  | CW | **Cabling Works** |  | 2026-04-02 | 2026-04-26 |  |  |
| CO-R10.S04-ES-SL-140 |  | Trench Excavation and Bedding Works for Street Lighting Network-[Road 10]-[SW-4] | 7d | 2026-04-02 | 2026-04-09 | CO-R10.S04-ES-IR-130, CO-R10.S04-ES-EW-110, CO-R10.S04-ES-SL-120, CO-R10.S04-ES-SL-110 | 0d |
| CO-R10.S04-ES-SL-150 |  | Cable Laying Works for Street Lighting Network-[Road 10]-[SW-4] | 7d | 2026-04-11 | 2026-04-18 | CO-R10.S04-ES-SL-140, PRO-R10-SL-DL-100 FF+3d | 0d |
| CO-R10.S04-ES-SL-160 |  | Trench Backfilling and Compaction Works for Street Lighting Network-[Road 10]-[SW-4] | 7d | 2026-04-19 | 2026-04-26 | CO-R10.S04-ES-SL-150, CO-R10.S04-ES-IR-130 | 0d |
|  | DPB | **Distrubution Panel Boards** |  | 2026-04-27 | 2026-06-15 |  |  |
| CO-R10.S04-ES-SL-170 |  | Foundation Excavation Works For Panel Boards of Street Lighting Network-[Road 10]-[SW-4] | 18d | 2026-04-27 | 2026-05-17 | CO-R10.S04-ES-EW-110, CO-R10.S04-ES-SL-160 | 19d |
| CO-R10.S04-ES-SL-180 |  | Installation Works for Panel Board Concrete Foundations of Street Lighting Network-[Road 10]-[SW-4] | 12d | 2026-05-07 | 2026-05-20 | CO-R10.S04-ES-SL-170 SS+3d, CO-R10.S04-ES-SL-170 FF+3d | 28d |
| CO-R10.S04-ES-SL-190 |  | Installation Works for Lighting Panel Boards of Street Lighting Network-[Road 10]-[SW-4] | 12d | 2026-05-21 | 2026-06-08 | CO-R10.S04-ES-SL-180, PRO-R10-SL-DL-160 FF+3d | 28d |
| CO-R10.S04-ES-SL-220 |  | A wall of concrete blocks to install the KWH meter of Street Lighting Network-[Road 10]-[SW-4] | 18d | 2026-05-21 | 2026-06-15 | CO-R10.S04-ES-SL-180 | 28d |

| ID | WBS | Task | Duration | Start | Finish | Predecessors | Total float |
| --- | --- | --- | --- | --- | --- | --- | --- |
|  | TE | **Telecom Network** |  | 2026-04-25 | 2026-07-22 |  |  |
|  | PD | **Ducts Works** |  | 2026-04-25 | 2026-05-31 |  |  |
| CO-R10.S04-ES-TE-100 |  | Trench Excavation and Bedding Works for Ducts of Telecom Network-[Road 10]-[SW-4] | 7d | 2026-04-25 | 2026-05-02 | CO-R10.S04-ES-IR-130 SS+3d, CO-R10.S04-ES-IR-130 FF+3d, CO-R10.S04-ES-SL-160 SS+5d, CO-R10.S04-ES-SL-160 FF+5d, CO-R10.S04-ES-EW-110, CO-R10.S03-ES-TE-100 | 0d |
| CO-R10.S04-ES-TE-110 |  | Pipes Laying Works for Ducts of Telecom Network-[Road 10]-[SW-4] | 7d | 2026-05-03 | 2026-05-10 | CO-R10.S04-ES-TE-100, PRO-R10-TE-DL-100 FF+3d | 45d |
| CO-R10.S04-ES-TE-120 |  | Pouring Plain Concrete Above Ducts of Telecom Network-[Road 10]-[SW-4] | 7d | 2026-05-11 | 2026-05-18 | CO-R10.S04-ES-TE-110 | 45d |
| CO-R10.S04-ES-TE-130 |  | Trench Backfilling and Compaction Works for Ducts of Telecom Network-[Road 10]-[SW-4] | 7d | 2026-05-19 | 2026-05-31 | CO-R10.S04-ES-TE-120 | 45d |
|  | MH | **Manholes Works** |  | 2026-06-29 | 2026-07-22 |  |  |
| CO-R10.S04-ES-TE-140 |  | Excavation Works for Manholes of Telecom Network-[Road 10]-[SW-4] | 7d | 2026-06-29 | 2026-07-06 | CO-R10.S03-ES-TE-140, CO-R10.S04-ES-TE-100, CO-R10.S03-WE-TE-140 | 0d |
| CO-R10.S04-ES-TE-150 |  | Installation Works for Manholes of Telecom Network-[Road 10]-[SW-4] | 7d | 2026-07-07 | 2026-07-14 | CO-R10.S04-ES-TE-140, PRO-R10-TE-DL-110 FF+3d | 0d |
| CO-R10.S04-ES-TE-160 |  | Backfilling Works for Manholes of Telecom Network-[Road 10]-[SW-4] | 7d | 2026-07-15 | 2026-07-22 | CO-R10.S04-ES-TE-150 | 0d |
|  | RD | **Road Works** |  | 2026-07-23 | 2026-09-29 |  |  |
|  | RD | **Pre-Bituminous Construction** |  | 2026-07-23 | 2026-08-11 |  |  |
| CO-R10.S04-ES-RD-100 |  | Capping and Subgrade Layer for Road Works-[Road 10]-[SW-4] | 14d | 2026-07-23 | 2026-08-08 | CO-R10.S04-ES-SD-130, CO-R10.S04-ES-SW-130, CO-R10.S04-ES-PW-130, CO-R10.S04-ES-PW-160, CO-R10.S04-ES-SL-160 SS+3d, CO-R10.S04-ES-SL-160 FF+3d, PRO-R10-RD-DL-100 FF+3d, CO-R10.S04-ES-TE-130, CO-R10.S04-ES-TE-160 | 0d |
| CO-R10.S04-ES-RD-110 |  | Aggregate Base Course Layer for Road Works-[Road 10]-[SW-4] | 12d | 2026-07-29 | 2026-08-11 | CO-R10.S04-ES-RD-100 SS+3d, CO-R10.S04-ES-RD-100 FF+3d, CO-R10.S04-ES-SD-170 SS+3d, CO-R10.S04-ES-SD-170 FF+3d, PRO-R10-RD-DL-110 FF+3d | 5d |
|  | LS | **Pavement Works** |  | 2026-08-02 | 2026-09-29 |  |  |
| CO-R10.S04-ES-RD-120 |  | Fixing of Curbstone for Sidewalks Pavement-[Road 10]-[SW-4] | 12d | 2026-08-02 | 2026-08-15 | PRO-R10-RD-DL-130 FF+3d, CO-R10.S04-ES-RD-110 SS+3d, CO-R10.S04-ES-RD-110 FF+3d | 5d |
| CO-R10.S04-ES-RD-130 |  | Fixing of Interlock Tiles for Sidewalks Pavement-[Road 10]-[SW-4] | 10d | 2026-09-17 | 2026-09-29 | PRO-R10-RD-DL-120 FF+3d, CO-R10.S04-ES-RD-120 SS+3d, CO-R10.S04-ES-RD-120 FF+3d, CO-R10-PW-TF-100, CO-R10-PW-TF-110, CO-R10-PW-TF-120, CO-R10-SW-TF-100, CO-R10-SW-TF-110, CO-R10-SW-TF-130, CO-R10-SD-TF-100, CO-R10-SD-TF-120, CO-R10-SL-TF-140, CO-R10-SL-TF-150, CO-R10-SL-ES-140, CO-R10-SL-ES-150, CO-R10-IR-TF-120, CO-R10-MV-TF-140, CO-R10-SL-TF-380 | 2d |
|  | SW_41 | **SW_4-West** |  | 2025-09-15 | 2026-10-01 |  |  |
|  | EW | **Earthworks** |  | 2025-09-15 | 2025-10-13 |  |  |
|  | EW | **Earthworks** |  | 2025-09-15 | 2025-10-13 |  |  |
| CO-R10.S04-WE-EW-100 |  | Roadway Excavation Works Upto Design Level for Earthworks-[Road 10]-[SW-4] | 12d | 2025-09-15 | 2025-09-29 | ENG-MS-RD-A-10, ENG-SH-RD-A-100, CO-R10.S03-WE-EW-100 | 11d |
| CO-R10.S04-WE-EW-110 |  | Embankments Works Upto Design Level for Earthworks-[Road 10]-[SW-4] | 12d | 2025-09-30 | 2025-10-13 | CO-R10.S04-WE-EW-100, ENG-MS-RD-A-10, ENG-SH-RD-A-100 | 11d |
|  | SW | **Sewage Network** |  | 2025-10-14 | 2025-11-24 |  |  |
|  | ML | **Main Line Sections** |  | 2025-10-14 | 2025-11-24 |  |  |
| CO-R10.S04-WE-SW-100 |  | Trench Excavation and Bedding Works for Main Lines of Sewage Network-[Road 10]-[SW-4] | 12d | 2025-10-14 | 2025-10-27 | CO-R10.S04-WE-EW-110, ENG-MS-SW-ML-A-110, ENG-SH-SW-ML-A-110, CO-R11.S06-SW-100 | 11d |
| CO-R10.S04-WE-SW-120 |  | Pipes Laying Works for Main Lines of Sewage Network-[Road 10]-[SW-4] | 12d | 2025-10-28 | 2025-11-10 | PRO-R10-SW-DL-100 FF+3d, CO-R10.S04-WE-SW-100 | 11d |
| CO-R10.S04-WE-SW-130 |  | Trench Backfilling and Compaction Works for Main Lines of Sewage Network-[Road 10]-[SW-4] | 12d | 2025-11-11 | 2025-11-24 | CO-R10.S04-WE-SW-120, CO-R10.S04-WE-SW-210 FF | 11d |
|  | 1 | **Manholes** |  | 2025-10-28 | 2025-11-11 |  |  |
| CO-R10.S04-WE-SW-160 |  | Excavation Works for Main Line Manholes of Sewage Network-[Road 10]-[SW-4] | 1d | 2025-10-28 | 2025-10-28 | CO-R10.S04-WE-SW-120 SS | 22d |
| CO-R10.S04-WE-SW-170 |  | Installation RC Footing Works for Main Line Manholes of Sewage Network-[Road 10]-[SW-4] | 2d | 2025-10-29 | 2025-10-30 | CO-R10.S04-WE-SW-160, PRO-R10-SW-DL-110 FF+3d | 22d |
| CO-R10.S04-WE-SW-180 |  | Install Grp Liner Wall Works for Main Line Manholes of Sewage Network-[Road 10]-[SW-4] | 4d | 2025-11-01 | 2025-11-04 | CO-R10.S04-WE-SW-170 | 22d |
| CO-R10.S04-WE-SW-190 |  | Pouring Grp Liner Wall Works for Main Line Manholes of Sewage Network-[Road 10]-[SW-4] | 1d | 2025-11-05 | 2025-11-05 | CO-R10.S04-WE-SW-180 | 22d |
| CO-R10.S04-WE-SW-200 |  | Backfilling Works for Main Line Manholes of Sewage Network-[Road 10]-[SW-4] | 4d | 2025-11-06 | 2025-11-10 | CO-R10.S04-WE-SW-190 | 22d |
| CO-R10.S04-WE-SW-210 |  | Testing Works for Main Line Manholes of Sewage Network-[Road 10]-[SW-4] | 1d | 2025-11-11 | 2025-11-11 | CO-R10.S04-WE-SW-200 | 22d |
|  | SD | **Storm Drainage Network** |  | 2025-11-30 | 2026-01-26 |  |  |
|  | ML | **Main Line Sections** |  | 2025-11-30 | 2026-01-03 |  |  |
| CO-R10.S04-WE-SD-100 |  | Trench Excavation and Bedding Works for Main Lines of Storm Drainage Network-[Road 10]-[SW-4] | 10d | 2025-11-30 | 2025-12-10 | CO-R10.S04-WE-EW-110, CO-R10.S04-WE-EW-100, CO-R10.S04-WE-SW-130 SS+3d, CO-R10.S04-WE-SW-130 FF+3d, CO-R10.S03-WE-SD-100 | 0d |
| CO-R10.S04-WE-SD-120 |  | Pipes Laying Works for Main Lines of Storm Drainage Network-[Road 10]-[SW-4] | 10d | 2025-12-11 | 2025-12-22 | PRO-R10-SD-DL-120 FF+3d, CO-R10.S04-WE-SD-100 | 0d |
| CO-R10.S04-WE-SD-130 |  | Trench Backfilling and Compaction Works for Main Lines of Storm Drainage Network-[Road 10]-[SW-4] | 10d | 2025-12-23 | 2026-01-03 | CO-R10.S04-WE-SD-120 SS+3d, CO-R10.S04-WE-SD-120 FF+3d, CO-R10.S04-WE-SD-120, CO-R10.S04-WE-SD-220 FF | 0d |
|  | MH | **Manholes** |  | 2025-12-11 | 2025-12-27 |  |  |
| CO-R10.S04-WE-SD-180 |  | Trench Excavation and Bedding Works for Manholes of Storm Drainage Network-[Road 10]-[SW-4] | 1d | 2025-12-11 | 2025-12-11 | CO-R10.S04-WE-SD-120 SS, PRO-SD-1DL-100 | 6d |
| CO-R10.S04-WE-SD-190 |  | Install RC Footing Works for Manholes of Storm Drainage Network-[Road 10]-[SW-4] | 1d | 2025-12-13 | 2025-12-13 | CO-R10.S04-WE-SD-180 | 6d |
| CO-R10.S04-WE-SD-200 |  | Install RC Wall Rings & Slab Works for Manholes of Storm Drainage Network-[Road 10]-[SW-4] | 4d | 2025-12-14 | 2025-12-17 | CO-R10.S04-WE-SD-190 | 6d |
| CO-R10.S04-WE-SD-210 |  | Testing Works for Manholes of Storm Drainage Network-[Road 10]-[SW-4] | 1d | 2025-12-18 | 2025-12-18 | CO-R10.S04-WE-SD-200 | 6d |
| CO-R10.S04-WE-SD-220 |  | Backfilling Works for Manholes of Storm Drainage Network-[Road 10]-[SW-4] | 7d | 2025-12-20 | 2025-12-27 | CO-R10.S04-WE-SD-210 | 6d |
|  | CB | **Catch Basin Sections** |  | 2025-12-28 | 2026-01-26 |  |  |
| CO-R10.S04-WE-SD-140 |  | Trench Excavation and Bedding Works for Catch Basins of Storm Drainage Network-[Road 10]-[SW-4] | 6d | 2025-12-28 | 2026-01-03 | CO-R10.S04-WE-EW-110, CO-R10.S04-WE-SD-220, CO-R10.S03-ES-SD-140 | 14d |
| CO-R10.S04-WE-SD-150 |  | Installation and Pipes Laying Connection Works for Catch Basins of Storm Drainage Network-[Road 10]-[SW-4] | 7d | 2026-01-04 | 2026-01-11 | CO-R10.S04-WE-SD-140, PRO-R10-SD-DL-130 FF+3d | 14d |
| CO-R10.S04-WE-SD-160 |  | Testing Works for Catch Basins of Storm Drainage Network-[Road 10]-[SW-4] | 10d | 2026-01-12 | 2026-01-22 | CO-R10.S04-WE-SD-150, CO-R10.S04-WE-SD-120, PRO-R10-SD-DL-110 FF+3d | 14d |
| CO-R10.S04-WE-SD-170 |  | Trench Backfilling and Compaction Works for Catch Basins of Storm Drainage Network-[Road 10]-[SW-4] | 7d | 2026-01-19 | 2026-01-26 | CO-R10.S04-WE-SD-160 SS+3d, CO-R10.S04-WE-SD-160 FF+3d | 14d |
|  | PW | **Potable Water Network** |  | 2026-01-04 | 2026-02-11 |  |  |
|  | ML | **Main Line Sections** |  | 2026-01-04 | 2026-02-11 |  |  |
| CO-R10.S04-WE-PW-100 |  | Trench Excavation and Bedding Works for Main Lines of Potable Water Network-[Road 10]-[SW-4] | 10d | 2026-01-04 | 2026-01-14 | CO-R10.S04-WE-EW-110, CO-R10.S04-WE-EW-100, CO-R10.S04-WE-SD-130 | 0d |
| CO-R10.S04-WE-PW-110 |  | Pipes Laying and accessories for Main Lines of Potable Water Network-[Road 10]-[SW-4] | 10d | 2026-01-15 | 2026-01-26 | CO-R10.S04-WE-PW-100, PRO-R10-PW-DL-100 FF+3d, PRO-R10-PW-DL-110 FF+3d | 0d |
| CO-R10.S04-WE-PW-130 |  | Trench Backfilling and Compaction Works for Main Lines of Potable Water Network-[Road 10]-[SW-4] | 10d | 2026-02-01 | 2026-02-11 | CO-R10.S04-WE-PW-110, CO-R10.S04-WE-PW-220 FF, CO-R10.S04-WE-PW-160 FF | 0d |
|  | VC | **Valve Chamber** |  | 2026-01-15 | 2026-02-02 |  |  |
| CO-R10.S04-WE-PW-170 |  | Excavation Works for Main Line Valves and Valve Chambers of Potable Water Network-[Road 10]-[SW-4] | 1d | 2026-01-15 | 2026-01-15 | CO-R10.S04-WE-PW-100 | 2d |
| CO-R10.S04-WE-PW-180 |  | RC Footing Works for Main Line Valves and Valve Chambers of Potable Water Network-[Road 10]-[SW-4] | 3d | 2026-01-17 | 2026-01-19 | CO-R10.S04-WE-PW-170 | 8d |
| CO-R10.S04-WE-PW-190 |  | RC Wall Works for Main Line Valves and Valve Chambers of Potable Water Network-[Road 10]-[SW-4] | 6d | 2026-01-20 | 2026-01-26 | CO-R10.S04-WE-PW-180 | 8d |
| CO-R10.S04-WE-PW-200 |  | RC Slab Works for Main Line Valves and Valve Chambers of Potable Water Network-[Road 10]-[SW-4] | 2d | 2026-01-27 | 2026-01-28 | CO-R10.S04-WE-PW-190 | 8d |
| CO-R10.S04-WE-PW-210 |  | Insulation Works for Main Line Valves and Valve Chambers of Potable Water Network-[Road 10]-[SW-4] | 1d | 2026-01-29 | 2026-01-29 | CO-R10.S04-WE-PW-200 | 8d |
| CO-R10.S04-WE-PW-220 |  | Backfilling Works for Main Line Valves and Valve Chambers of Potable Water Network-[Road 10]-[SW-4] | 3d | 2026-01-31 | 2026-02-02 | CO-R10.S04-WE-PW-210 | 8d |
|  | FH | **Fire Hydrant** |  | 2026-01-19 | 2026-02-11 |  |  |
| CO-R10.S04-WE-PW-140 |  | Excavation Works for Fire Hydrants of Potable Water Network-[Road 10]-[SW-4] | 7d | 2026-01-19 | 2026-01-26 | CO-R10.S04-WE-PW-110 SS+3d, CO-R10.S04-WE-EW-110, CO-R10.S04-WE-SW-130 SS+3d, CO-R10.S04-WE-SW-130 FF+3d, CO-R10.S04-WE-PW-170 | 0d |
| CO-R10.S04-WE-PW-150 |  | Installation Works for Fire Hydrant of Potable Water Network-[Road 10]-[SW-4] | 7d | 2026-01-27 | 2026-02-03 | CO-R10.S04-WE-PW-140, PRO-R10-PW-DL-120 FF+3d | 0d |
| CO-R10.S04-WE-PW-160 |  | Trench Backfilling and Compaction Works for Fire Hydrants of Potable Water Network-[Road 10]-[SW-4] | 7d | 2026-02-04 | 2026-02-11 | CO-R10.S04-WE-PW-150 | 0d |
|  | IR | **Irrigation Network** |  | 2026-02-12 | 2026-03-08 |  |  |
|  | ML | **Main Line Pipes** |  | 2026-02-12 | 2026-03-08 |  |  |
| CO-R10.S04-WE-IR-100 |  | Trench Excavation and Bedding Works for Main Lines of Irrigation Network-[Road 10]-[SW-4] | 6d | 2026-02-12 | 2026-02-18 | CO-R10.S04-WE-EW-110, CO-R10.S04-WE-PW-130, CO-R10.S04-WE-SD-170 | 0d |
| CO-R10.S04-WE-IR-110 |  | Pipes Laying Works for Main Lines of Irrigation Network-[Road 10]-[SW-4] | 7d | 2026-02-19 | 2026-02-26 | CO-R10.S04-WE-IR-100, PRO-R19.2-IR-DL-100 FF+3d | 0d |

| ID | WBS | Task | Duration | Start | Finish | Predecessors | Total float |
| --- | --- | --- | --- | --- | --- | --- | --- |
| CO-R10.S04-WE-IR-120 |  | Installation Works for Main Line Valves of Irrigation Network-[Road 10]-[SW-4] | 3d | 2026-02-28 | 2026-03-02 | CO-R10.S04-WE-IR-110, PRO-R19.2-IR-DL-110 FF+3d | 0d |
| CO-R10.S04-WE-IR-130 |  | Trench Backfilling and Compaction Works for Main Lines of Irrigation Network-[Road 10]-[SW-4] | 5d | 2026-03-03 | 2026-03-08 | CO-R10.S04-WE-IR-120, CO-R10.S04-WE-IR-110 | 0d |
|  | SL | **Street Lighting Network** |  | 2026-03-09 | 2026-07-07 |  |  |
|  | LP | **Lighting Poles Works** |  | 2026-03-09 | 2026-04-23 |  |  |
| CO-R10.S04-WE-SL-100 |  | Foundation Excavation Works for Lighting Poles of Street Lighting Network-[Road 10]-[SW-4] | 10d | 2026-03-09 | 2026-03-19 | CO-R10.S04-WE-EW-110, CO-R10.S04-WE-EW-100, CO-R10.S04-WE-IR-130 | 0d |
| CO-R10.S04-WE-SL-110 |  | Installation Works for Lighting Poles Foundation of Street Lighting Network-[Road 10]-[SW-4] | 10d | 2026-03-15 | 2026-03-29 | CO-R10.S04-WE-SL-100 SS+5d, CO-R10.S04-WE-SL-100 FF+5d, PRO-R10-SL-DL-110 FF+3d | 0d |
| CO-R10.S04-WE-SL-120 |  | Installation Works for Lighting Poles of Street Lighting Network-[Road 10]-[SW-4] | 18d | 2026-03-24 | 2026-04-13 | CO-R10.S04-WE-SL-110 SS+5d, CO-R10.S04-WE-SL-110 FF+5d, PRO-R10-SL-DL-120 FF+3d | 0d |
| CO-R10.S04-WE-SL-210 |  | Backfilling Works for Lighting Poles of Street Lighting Network-[Road 10]-[SW-4] | 15d | 2026-03-30 | 2026-04-15 | CO-R10.S04-WE-SL-120 SS, CO-R10.S04-WE-SL-120 FF, CO-R10.S03-WE-SL-210 | 109.5d |
| CO-R10.S04-WE-SL-130 |  | Installation Works for Lighting Fixtures With Drop Wire of Street Lighting Network-[Road 10]-[SW-4] | 18d | 2026-04-04 | 2026-04-23 | CO-R10.S04-WE-SL-120 SS+5d, CO-R10.S04-WE-SL-120 FF+5d, PRO-R10-SL-DL-140 FF+3d, CO-R10.S04-WE-SL-200 FF | 109.5d |
| CO-R10.S04-WE-SL-200 |  | Testing Works for Lighting Poles of Street Lighting Network-[Road 10]-[SW-4] | 7d | 2026-04-16 | 2026-04-23 | CO-R10.S04-WE-SL-210, CO-R10.S04-WE-SL-120 | 109.5d |
|  | CW | **Cabling Works** |  | 2026-04-14 | 2026-05-18 |  |  |
| CO-R10.S04-WE-SL-140 |  | Trench Excavation and Bedding Works for Street Lighting Network-[Road 10]-[SW-4] | 10d | 2026-04-14 | 2026-04-25 | CO-R10.S04-WE-IR-130, CO-R10.S04-WE-EW-110, CO-R10.S04-WE-SL-120, CO-R10.S04-WE-SL-110 | 0d |
| CO-R10.S04-WE-SL-150 |  | Cable Laying Works for Street Lighting Network-[Road 10]-[SW-4] | 10d | 2026-04-26 | 2026-05-06 | CO-R10.S04-WE-SL-140, PRO-R10-SL-DL-100 FF+3d | 0d |
| CO-R10.S04-WE-SL-160 |  | Trench Backfilling and Compaction Works for Street Lighting Network-[Road 10]-[SW-4] | 10d | 2026-05-07 | 2026-05-18 | CO-R10.S04-WE-SL-150, CO-R10.S04-WE-IR-130 | 0d |
|  | DPB | **Distrubution Panel Boards** |  | 2026-05-19 | 2026-07-07 |  |  |
| CO-R10.S04-WE-SL-170 |  | Foundation Excavation Works For Panel Boards of Street Lighting Network-[Road 10]-[SW-4] | 18d | 2026-05-19 | 2026-06-13 | CO-R10.S04-WE-EW-110, CO-R10.S04-WE-SL-160 | 0d |
| CO-R10.S04-WE-SL-180 |  | Installation Works for Panel Board Concrete Foundations of Street Lighting Network-[Road 10]-[SW-4] | 12d | 2026-06-03 | 2026-06-16 | CO-R10.S04-WE-SL-170 SS+3d, CO-R10.S04-WE-SL-170 FF+3d | 9d |
| CO-R10.S04-WE-SL-190 |  | Installation Works for Lighting Panel Boards of Street Lighting Network-[Road 10]-[SW-4] | 12d | 2026-06-17 | 2026-06-30 | CO-R10.S04-WE-SL-180, PRO-R10-SL-DL-160 FF+3d | 9d |
| CO-R10.S04-WE-SL-220 |  | A wall of concrete blocks to install the KWH meter of Street Lighting Network-[Road 10]-[SW-4] | 18d | 2026-06-17 | 2026-07-07 | CO-R10.S04-WE-SL-180 | 9d |
|  | TE | **Telecom Network** |  | 2026-06-21 | 2026-07-22 |  |  |
|  | PD | **Ducts Works** |  | 2026-06-21 | 2026-07-22 |  |  |
| CO-R10.S04-WE-TE-100 |  | Trench Excavation and Bedding Works for Ducts of Telecom Network-[Road 10]-[SW-4] | 7d | 2026-06-21 | 2026-06-28 | CO-R10.S04-WE-IR-130 SS+3d, CO-R10.S04-WE-IR-130 FF+3d, CO-R10.S04-WE-SL-160 SS+5d, CO-R10.S04-WE-SL-160 FF+5d, CO-R10.S04-WE-EW-110, CO-R10.S03-WE-TE-100 | 0d |
| CO-R10.S04-WE-TE-110 |  | Pipes Laying Works for Ducts of Telecom Network-[Road 10]-[SW-4] | 7d | 2026-06-29 | 2026-07-06 | CO-R10.S04-WE-TE-100, PRO-R10-TE-DL-100 FF+3d | 0d |
| CO-R10.S04-WE-TE-120 |  | Pouring Plain Concrete Above Ducts of Telecom Network-[Road 10]-[SW-4] | 7d | 2026-07-07 | 2026-07-14 | CO-R10.S04-WE-TE-110 | 0d |
| CO-R10.S04-WE-TE-130 |  | Trench Backfilling and Compaction Works for Ducts of Telecom Network-[Road 10]-[SW-4] | 7d | 2026-07-15 | 2026-07-22 | CO-R10.S04-WE-TE-120 | 0d |
|  | MH | **Manholes Works** |  | 2026-06-29 | 2026-07-22 |  |  |
| CO-R10.S04-WE-TE-140 |  | Excavation Works for Manholes of Telecom Network-[Road 10]-[SW-4] | 7d | 2026-06-29 | 2026-07-06 | CO-R10.S03-ES-TE-140, CO-R10.S04-WE-TE-100, CO-R10.S03-WE-TE-140 | 0d |
| CO-R10.S04-WE-TE-150 |  | Installation Works for Manholes of Telecom Network-[Road 10]-[SW-4] | 7d | 2026-07-07 | 2026-07-14 | CO-R10.S04-WE-TE-140, PRO-R10-TE-DL-110 FF+3d | 0d |
| CO-R10.S04-WE-TE-160 |  | Backfilling Works for Manholes of Telecom Network-[Road 10]-[SW-4] | 7d | 2026-07-15 | 2026-07-22 | CO-R10.S04-WE-TE-150 | 0d |
|  | RD | **Road Works** |  | 2026-07-23 | 2026-10-01 |  |  |
|  | RD | **Pre-Bituminous Construction** |  | 2026-07-23 | 2026-08-09 |  |  |
| CO-R10.S04-WE-RD-100 |  | Capping and Subgrade Layer for Road Works-[Road 10]-[SW-4] | 12d | 2026-07-23 | 2026-08-05 | CO-R10.S04-WE-SD-130, CO-R10.S04-WE-SW-130, CO-R10.S04-WE-PW-130, CO-R10.S04-WE-PW-160, CO-R10.S04-WE-SL-160 SS+3d, CO-R10.S04-WE-SL-160 FF+3d, PRO-R10-RD-DL-100 FF+3d, CO-R10.S04-WE-TE-130, CO-R10.S04-WE-TE-160 | 2d |
| CO-R10.S04-WE-RD-110 |  | Aggregate Base Course Layer for Road Works-[Road 10]-[SW-4] | 12d | 2026-07-27 | 2026-08-09 | CO-R10.S04-WE-RD-100 SS+3d, CO-R10.S04-WE-RD-100 FF+3d, CO-R10.S04-WE-SD-170 SS+3d, CO-R10.S04-WE-SD-170 FF+3d, PRO-R10-RD-DL-110 FF+3d | 7d |
|  | LS | **Pavement Works** |  | 2026-07-30 | 2026-10-01 |  |  |
| CO-R10.S04-WE-RD-120 |  | Fixing of Curbstone for Sidewalks Pavement-[Road 10]-[SW-4] | 12d | 2026-07-30 | 2026-08-12 | PRO-R10-RD-DL-130 FF+3d, CO-R10.S04-WE-RD-110 SS+3d, CO-R10.S04-WE-RD-110 FF+3d | 7d |
| CO-R10.S04-WE-RD-130 |  | Fixing of Interlock Tiles for Sidewalks Pavement-[Road 10]-[SW-4] | 12d | 2026-09-17 | 2026-10-01 | PRO-R10-RD-DL-120 FF+3d, CO-R10.S04-WE-RD-120 SS+3d, CO-R10.S04-WE-RD-120 FF+3d, CO-R10-PW-TF-100, CO-R10-PW-TF-110, CO-R10-PW-TF-120, CO-R10-SW-TF-100, CO-R10-SW-TF-110, CO-R10-SW-TF-130, CO-R10-SD-TF-100, CO-R10-SD-TF-120, CO-R10-SL-TF-140, CO-R10-SL-TF-150, CO-R10-SL-ES-140, CO-R10-SL-ES-150, CO-R10-IR-TF-120, CO-R10-MV-TF-140, CO-R10-SL-TF-380 | 0d |
|  | 5 | **Road 11 Local 1 ( 670 LM )** |  | 2025-08-04 | 2026-10-13 |  |  |
|  | SW_5 | **SW_5** |  | 2025-08-04 | 2026-10-11 |  |  |
|  | EW | **Earthworks** |  | 2025-08-04 | 2025-08-31 |  |  |
|  | EW | **Earthworks** |  | 2025-08-04 | 2025-08-31 |  |  |
| CO-R11.S05-EW-100 |  | Roadway Excavation Works Upto Design Level for Earthworks-[Road 11]-[SW-5] | 12d | 2025-08-04 | 2025-08-17 | ENG-MS-RD-A-10, ENG-SH-RD-A-100, CO-R14.S08-EW-100 | 11d |
| CO-R11.S05-EW-110 |  | Embankments Works Upto Design Level for Earthworks-[Road 11]-[SW-5] | 12d | 2025-08-18 | 2025-08-31 | CO-R11.S05-EW-100, ENG-MS-RD-A-10, ENG-SH-RD-A-100 | 17d |
|  | SW | **Sewage Network** |  | 2025-09-01 | 2025-10-13 |  |  |
|  | ML | **Main Line Sections** |  | 2025-09-01 | 2025-10-13 |  |  |
| CO-R11.S05-SW-100 |  | Trench Excavation and Bedding Works for Main Lines of Sewage Network-[Road 11]-[SW-5] | 12d | 2025-09-01 | 2025-09-14 | CO-R11.S05-EW-110, ENG-MS-SW-ML-A-110, ENG-SH-SW-ML-A-110, CO-R14.S08-SW-100 | 17d |
| CO-R11.S05-SW-120 |  | Pipes Laying Works for Main Lines of Sewage Network-[Road 11]-[SW-5] | 12d | 2025-09-15 | 2025-09-29 | CO-R11.S05-SW-100, PRO-R11-SW-DL-100 FF+3d | 17d |
| CO-R11.S05-SW-130 |  | Trench Backfilling and Compaction Works for Main Lines of Sewage Network-[Road 11]-[SW-5] | 12d | 2025-09-30 | 2025-10-13 | ENG-SH-SW-ML-A-110 FF, ENG-MS-SW-ML-A-110 FF, CO-R11.S05-SW-120, CO-R11.S05-SW-210 FF | 17d |
|  | 1 | **Manholes** |  | 2025-09-15 | 2025-09-30 |  |  |
| CO-R11.S05-SW-160 |  | Excavation Works for Main Line Manholes of Sewage Network-[Road 11]-[SW-5] | 1d | 2025-09-15 | 2025-09-15 | CO-R11.S05-SW-120 SS | 28d |
| CO-R11.S05-SW-170 |  | Installation RC Footing Works for Main Line Manholes of Sewage Network-[Road 11]-[SW-5] | 2d | 2025-09-16 | 2025-09-17 | CO-R11.S05-SW-160, PRO-R11-SW-DL-110 FF+3d | 28d |
| CO-R11.S05-SW-180 |  | Install Grp Liner Wall Works for Main Line Manholes of Sewage Network-[Road 11]-[SW-5] | 4d | 2025-09-18 | 2025-09-22 | CO-R11.S05-SW-170 | 28d |
| CO-R11.S05-SW-190 |  | Pouring Grp Liner Wall Works for Main Line Manholes of Sewage Network-[Road 11]-[SW-5] | 1d | 2025-09-24 | 2025-09-24 | CO-R11.S05-SW-180 | 28d |
| CO-R11.S05-SW-200 |  | Backfilling Works for Main Line Manholes of Sewage Network-[Road 11]-[SW-5] | 4d | 2025-09-25 | 2025-09-29 | CO-R11.S05-SW-190 | 28d |
| CO-R11.S05-SW-210 |  | Testing Works for Main Line Manholes of Sewage Network-[Road 11]-[SW-5] | 1d | 2025-09-30 | 2025-09-30 | CO-R11.S05-SW-200 | 28d |
|  | SD | **Storm Drainage Network** |  | 2025-10-26 | 2026-01-14 |  |  |
|  | ML | **Main Line Sections** |  | 2025-10-26 | 2026-01-14 |  |  |
| CO-R11.S05-SD-100 |  | Trench Excavation and Bedding Works for Main Lines of Storm Drainage Network-[Road 11]-[SW-5] | 10d | 2025-10-26 | 2025-11-05 | ENG-SH-SD-ML-A-110, CO-R11.S05-EW-110, CO-R11.S05-EW-100, CO-R11.S05-SW-130 SS+3d, CO-R11.S05-SW-130 FF+3d, ENG-MS-SD-ML-A-110, CO-R14.S08-SD-100 | 0d |
| CO-R11.S05-SD-120 |  | Pipes Laying Works for Main Lines of Storm Drainage Network-[Road 11]-[SW-5] | 10d | 2025-11-06 | 2025-11-17 | CO-R11.S05-SD-100, CO-R14.S08-SD-120 | 0d |
| CO-R11.S05-SD-130 |  | Trench Backfilling and Compaction Works for Main Lines of Storm Drainage Network-[Road 11]-[SW-5] | 15d | 2025-12-29 | 2026-01-14 | CO-R11.S05-SD-120 SS+3d, CO-R11.S05-SD-120 FF+3d, ENG-SH-SD-ML-A-110 FF, CO-R10.S03-ES-SD-130, ENG-MS-SD-ML-A-110 FF, CO-R11.S05-SD-120, CO-R11.S05-SD-220 FF, CO-R10.S03-WE-SD-130 | 23d |
|  | MH | **Manholes** |  | 2025-11-06 | 2025-11-22 |  |  |
| CO-R11.S05-SD-180 |  | Trench Excavation and Bedding Works for Manholes of Storm Drainage Network-[Road 11]-[SW-5] | 1d | 2025-11-06 | 2025-11-06 | CO-R11.S05-SD-120 SS, PRO-SD-1DL-100 | 69d |
| CO-R11.S05-SD-190 |  | Install RC Footing Works for Manholes of Storm Drainage Network-[Road 11]-[SW-5] | 1d | 2025-11-08 | 2025-11-08 | CO-R11.S05-SD-180 | 69d |
| CO-R11.S05-SD-200 |  | Install RC Wall Rings & Slab Works for Manholes of Storm Drainage Network-[Road 11]-[SW-5] | 4d | 2025-11-09 | 2025-11-12 | CO-R11.S05-SD-190 | 69d |
| CO-R11.S05-SD-210 |  | Testing Works for Manholes of Storm Drainage Network-[Road 11]-[SW-5] | 1d | 2025-11-13 | 2025-11-13 | CO-R11.S05-SD-200 | 69d |
| CO-R11.S05-SD-220 |  | Backfilling Works for Manholes of Storm Drainage Network-[Road 11]-[SW-5] | 7d | 2025-11-15 | 2025-11-22 | CO-R11.S05-SD-210 | 69d |
|  | CB | **Catch Basin Sections** |  | 2025-11-24 | 2025-12-28 |  |  |
| CO-R11.S05-SD-140 |  | Trench Excavation and Bedding Works for Catch Basins of Storm Drainage Network-[Road 11]-[SW-5] | 6d | 2025-11-24 | 2025-11-30 | CO-R11.S05-EW-110, ENG-SH-SD-CB-A-110, ENG-MS-SD-CB-A-110, CO-R11.S05-SD-220, CO-R14.S08-SD-140 | 112d |
| CO-R11.S05-SD-150 |  | Installation and Pipes Laying Connection Works for Catch Basins of Storm Drainage Network-[Road 11]-[SW-5] | 7d | 2025-12-01 | 2025-12-08 | CO-R11.S05-SD-140 | 112d |
| CO-R11.S05-SD-160 |  | Testing Works for Catch Basins of Storm Drainage Network-[Road 11]-[SW-5] | 10d | 2025-12-09 | 2025-12-20 | CO-R11.S05-SD-150, CO-R11.S05-SD-120 | 112d |
| CO-R11.S05-SD-170 |  | Trench Backfilling and Compaction Works for Catch Basins of Storm Drainage Network-[Road 11]-[SW-5] | 7d | 2025-12-21 | 2025-12-28 | CO-R11.S05-SD-160 | 112d |

| ID | WBS | Task | Duration | Start | Finish | Predecessors | Total float |
| --- | --- | --- | --- | --- | --- | --- | --- |
|  | IR | **Irrigation Network** |  | 2025-12-29 | 2026-01-21 |  |  |
|  | ML | **Main Line Pipes** |  | 2025-12-29 | 2026-01-21 |  |  |
| CO-R11.S05-IR-100 |  | Trench Excavation and Bedding Works for Main Lines of Irrigation Network-[Road 11]-[SW-5] | 4d | 2025-12-29 | 2026-01-01 | ENG-SH-IR-ML-A-110, CO-R11.S05-EW-110, CO-R11.S05-SD-170, ENG-MS-IR-ML-A-110 | 112d |
| CO-R11.S05-IR-110 |  | Pipes Laying Works for Main Lines of Irrigation Network-[Road 11]-[SW-5] | 7d | 2026-01-03 | 2026-01-10 | CO-R11.S05-IR-100, PRO-R11-IR-DL-140 FF+3d | 112d |
| CO-R11.S05-IR-120 |  | Installation Works for Main Line Valves of Irrigation Network-[Road 11]-[SW-5] | 3d | 2026-01-11 | 2026-01-13 | CO-R11.S05-IR-110, PRO-R11-IR-DL-150 FF+3d | 112d |
| CO-R11.S05-IR-130 |  | Trench Backfilling and Compaction Works for Main Lines of Irrigation Network-[Road 11]-[SW-5] | 7d | 2026-01-14 | 2026-01-21 | CO-R11.S05-IR-120, CO-R11.S05-IR-110 | 112d |
|  | TE | **Telecom Network** |  | 2026-06-10 | 2026-07-22 |  |  |
|  | PD | **Ducts Works** |  | 2026-06-10 | 2026-07-22 |  |  |
| CO-R11.S05-TE-100 |  | Trench Excavation and Bedding Works for Ducts of Telecom Network-[Road 11]-[SW-5] | 3d | 2026-06-10 | 2026-06-13 | CO-R11.S05-IR-130, CO-R11.S05-EW-110, CO-R14.S08-TE-100 | 0d |
| CO-R11.S05-TE-110 |  | Pipes Laying Works for Ducts of Telecom Network-[Road 11]-[SW-5] | 7d | 2026-06-29 | 2026-07-06 | CO-R11.S05-TE-100, CO-R10.S03-ES-TE-110, CO-R10.S03-WE-TE-110 | 0d |
| CO-R11.S05-TE-120 |  | Pouring Plain Concrete Above Ducts of Telecom Network-[Road 11]-[SW-5] | 7d | 2026-07-07 | 2026-07-14 | CO-R11.S05-TE-110, CO-R10.S03-ES-TE-120, CO-R10.S03-WE-TE-120 | 0d |
| CO-R11.S05-TE-130 |  | Trench Backfilling and Compaction Works for Ducts of Telecom Network-[Road 11]-[SW-5] | 7d | 2026-07-15 | 2026-07-22 | CO-R11.S05-TE-120, CO-R11.S05-TE-120 FF+3d, CO-R10.S03-ES-TE-130, CO-R10.S03-WE-TE-130 | 0d |
|  | MH | **Manholes Works** |  | 2026-06-29 | 2026-07-22 |  |  |
| CO-R11.S05-TE-140 |  | Excavation Works for Manholes of Telecom Network-[Road 11]-[SW-5] | 7d | 2026-06-29 | 2026-07-06 | CO-R10.S03-ES-TE-140, CO-R11.S05-TE-100, CO-R10.S03-WE-TE-140 | 0d |
| CO-R11.S05-TE-150 |  | Installation Works for Manholes of Telecom Network-[Road 11]-[SW-5] | 7d | 2026-07-07 | 2026-07-14 | CO-R11.S05-TE-140, CO-R10.S03-ES-TE-150, CO-R10.S03-WE-TE-150 | 7d |
| CO-R11.S05-TE-160 |  | Backfilling Works for Manholes of Telecom Network-[Road 11]-[SW-5] | 7d | 2026-07-15 | 2026-07-22 | CO-R11.S05-TE-150, CO-R10.S03-ES-TE-160, CO-R10.S03-WE-TE-160 | 7d |
|  | MV | **Medium Voltage Network** |  | 2026-07-22 | 2026-08-18 |  |  |
|  | CW | **Cabling Works** |  | 2026-07-22 | 2026-08-18 |  |  |
| CO-R11.S05-MV-100 |  | Trench Excavation and Bedding Works for Medium Voltage Network-[Road 11]-[SW-5] | 18d | 2026-07-22 | 2026-08-11 | ENG-SH-MV-A-110, CO-R11.S05-SD-170 SS+3d, CO-R11.S05-SD-170 FF+3d, CO-R10.S03-ES-MV-100, ENG-MS-MV-A-110, CO-R10.S03-WE-MV-100 | 0d |
| CO-R11.S05-MV-110 |  | Cable Laying Works for Medium Voltage Network-[Road 11]-[SW-5] | 18d | 2026-07-26 | 2026-08-15 | CO-R11.S05-MV-100 SS+3d, CO-R11.S05-MV-100 FF+3d, CO-R10.S03-ES-MV-110, CO-R10.S03-WE-MV-110 | 0d |
| CO-R11.S05-MV-120 |  | Trench Backfilling and Compaction Works for Medium Voltage Network-[Road 11]-[SW-5] | 18d | 2026-07-29 | 2026-08-18 | CO-R11.S05-MV-110 SS+3d, CO-R11.S05-MV-110 FF+3d, CO-R10.S03-ES-MV-120, CO-R10.S03-WE-MV-120 | 0d |
|  | RD | **Road Works** |  | 2026-08-02 | 2026-10-11 |  |  |
|  | RD | **Pre-Bituminous Construction** |  | 2026-08-02 | 2026-09-03 |  |  |
| CO-R11.S05-RD-P-100 |  | Capping and Subgrade Layer for Road Works-[Road 11]-[SW-5] | 18d | 2026-08-02 | 2026-08-22 | ENG-SH-RD-A-100, CO-R11.S05-SD-130, CO-R11.S05-SW-130, ENG-MS-RD-A-10, CO-R11.S05-TE-130, CO-R11.S05-TE-160, CO-R11.S05-MV-120 SS+3d, CO-R11.S05-MV-120 FF+3d | 0d |
| CO-R11.S05-RD-P-110 |  | Aggregate Base Course Layer for Road Works-[Road 11]-[SW-5] | 18d | 2026-08-15 | 2026-09-03 | CO-R11.S05-RD-P-100 SS+3d, CO-R11.S05-RD-P-100 FF+3d, CO-R11.S05-SD-170 SS+3d, CO-R11.S05-SD-170 FF+3d, CO-R10.S03-ES-RD-110, CO-R10.S03-WE-RD-110 | 3d |
|  | LS | **Pavement Works** |  | 2026-08-18 | 2026-10-11 |  |  |
| CO-R11.S05-RD-P-120 |  | Fixing of Curbstone for Sidewalks Pavement-[Road 11]-[SW-5] | 18d | 2026-08-18 | 2026-09-07 | CO-R10.S03-ES-RD-120, CO-R11.S05-RD-P-110 SS+3d, CO-R11.S05-RD-P-110 FF+3d, CO-R10.S03-WE-RD-120 | 3d |
| CO-R11.S05-RD-P-130 |  | Fixing of Interlock Tiles for Sidewalks Pavement-[Road 11]-[SW-5] | 10d | 2026-09-30 | 2026-10-11 | CO-R11.S05-RD-P-120 SS+3d, CO-R11.S05-RD-P-120 FF+3d, CO-R10.S03-ES-RD-130, CO-R11-PW-TF-100, CO-R11-PW-TF-110, CO-R11-PW-TF-120, CO-R11-SW-TF-100, CO-R11-SW-TF-110, CO-R11-SW-TF-130, CO-R11-SD-TF-100, CO-R11-SL-TF-160, CO-R11-SL-TF-170, CO-R11-IR-TF-130, CO-R11-MV-TF-160, CO-R10.S03-WE-RD-130 | 0d |
|  | SW_6 | **SW_6** |  | 2025-08-18 | 2026-10-13 |  |  |
|  | EW | **Earthworks** |  | 2025-08-18 | 2025-09-14 |  |  |
|  | EW | **Earthworks** |  | 2025-08-18 | 2025-09-14 |  |  |
| CO-R11.S06-EW-100 |  | Roadway Excavation Works Upto Design Level for Earthworks-[Road 11]-[SW-6] | 12d | 2025-08-18 | 2025-08-31 | ENG-MS-RD-A-10, ENG-SH-RD-A-100, CO-R11.S05-EW-100 | 11d |
| CO-R11.S06-EW-110 |  | Embankments Works Upto Design Level for Earthworks-[Road 11]-[SW-6] | 12d | 2025-09-01 | 2025-09-14 | CO-R11.S06-EW-100, ENG-MS-RD-A-10, ENG-SH-RD-A-100 | 17d |
|  | SW | **Sewage Network** |  | 2025-09-15 | 2025-10-25 |  |  |
|  | ML | **Main Line Sections** |  | 2025-09-15 | 2025-10-25 |  |  |
| CO-R11.S06-SW-100 |  | Trench Excavation and Bedding Works for Main Lines of Sewage Network-[Road 11]-[SW-6] | 12d | 2025-09-15 | 2025-09-29 | CO-R11.S06-EW-110, ENG-MS-SW-ML-A-110, ENG-SH-SW-ML-A-110, CO-R11.S05-SW-100 | 17d |
| CO-R11.S06-SW-120 |  | Pipes Laying Works for Main Lines of Sewage Network-[Road 11]-[SW-6] | 12d | 2025-09-30 | 2025-10-13 | CO-R11.S06-SW-100, PRO-R11-SW-DL-100 FF+3d | 17d |
| CO-R11.S06-SW-130 |  | Trench Backfilling and Compaction Works for Main Lines of Sewage Network-[Road 11]-[SW-6] | 10d | 2025-10-14 | 2025-10-25 | CO-R11.S06-SW-120, CO-R11.S06-SW-210 FF | 17d |
|  | 1 | **Manholes** |  | 2025-09-30 | 2025-10-14 |  |  |
| CO-R11.S06-SW-160 |  | Excavation Works for Main Line Manholes of Sewage Network-[Road 11]-[SW-6] | 1d | 2025-09-30 | 2025-09-30 | CO-R11.S06-SW-120 SS | 26d |
| CO-R11.S06-SW-170 |  | Installation RC Footing Works for Main Line Manholes of Sewage Network-[Road 11]-[SW-6] | 2d | 2025-10-01 | 2025-10-02 | CO-R11.S06-SW-160, PRO-R11-SW-DL-110 FF+3d | 26d |
| CO-R11.S06-SW-180 |  | Install Grp Liner Wall Works for Main Line Manholes of Sewage Network-[Road 11]-[SW-6] | 4d | 2025-10-04 | 2025-10-07 | CO-R11.S06-SW-170 | 26d |
| CO-R11.S06-SW-190 |  | Pouring Grp Liner Wall Works for Main Line Manholes of Sewage Network-[Road 11]-[SW-6] | 1d | 2025-10-08 | 2025-10-08 | CO-R11.S06-SW-180 | 26d |
| CO-R11.S06-SW-200 |  | Backfilling Works for Main Line Manholes of Sewage Network-[Road 11]-[SW-6] | 4d | 2025-10-09 | 2025-10-13 | CO-R11.S06-SW-190 | 26d |
| CO-R11.S06-SW-210 |  | Testing Works for Main Line Manholes of Sewage Network-[Road 11]-[SW-6] | 1d | 2025-10-14 | 2025-10-14 | CO-R11.S06-SW-200 | 26d |
|  | SD | **Storm Drainage Network** |  | 2025-11-06 | 2026-01-21 |  |  |
|  | ML | **Main Line Sections** |  | 2025-11-06 | 2026-01-20 |  |  |
| CO-R11.S06-SD-100 |  | Trench Excavation and Bedding Works for Main Lines of Storm Drainage Network-[Road 11]-[SW-6] | 10d | 2025-11-06 | 2025-11-17 | CO-R11.S06-EW-110, CO-R11.S06-EW-100, CO-R11.S06-SW-130 SS+3d, CO-R11.S06-SW-130 FF+3d, CO-R11.S05-SD-100 | 0d |
| CO-R11.S06-SD-120 |  | Pipes Laying Works for Main Lines of Storm Drainage Network-[Road 11]-[SW-6] | 10d | 2025-11-18 | 2025-11-29 | PRO-R11-SD-DL-120 FF+3d, CO-R11.S06-SD-100, CO-R11.S05-SD-120 | 0d |
| CO-R11.S06-SD-130 |  | Trench Backfilling and Compaction Works for Main Lines of Storm Drainage Network-[Road 11]-[SW-6] | 15d | 2026-01-04 | 2026-01-20 | CO-R11.S06-SD-120 SS+3d, CO-R11.S06-SD-120 FF+3d, CO-R10.S04-ES-SD-130, CO-R11.S06-SD-120, CO-R11.S06-SD-220 FF, CO-R10.S04-WE-SD-130 | 4d |
|  | MH | **Manholes** |  | 2025-11-18 | 2025-12-03 |  |  |
| CO-R11.S06-SD-180 |  | Trench Excavation and Bedding Works for Manholes of Storm Drainage Network-[Road 11]-[SW-6] | 1d | 2025-11-18 | 2025-11-18 | CO-R11.S06-SD-120 SS, PRO-SD-1DL-100 | 45d |
| CO-R11.S06-SD-190 |  | Install RC Footing Works for Manholes of Storm Drainage Network-[Road 11]-[SW-6] | 1d | 2025-11-19 | 2025-11-19 | CO-R11.S06-SD-180 | 45d |
| CO-R11.S06-SD-200 |  | Install RC Wall Rings & Slab Works for Manholes of Storm Drainage Network-[Road 11]-[SW-6] | 4d | 2025-11-20 | 2025-11-24 | CO-R11.S06-SD-190 | 45d |
| CO-R11.S06-SD-210 |  | Testing Works for Manholes of Storm Drainage Network-[Road 11]-[SW-6] | 1d | 2025-11-25 | 2025-11-25 | CO-R11.S06-SD-200 | 45d |
| CO-R11.S06-SD-220 |  | Backfilling Works for Manholes of Storm Drainage Network-[Road 11]-[SW-6] | 7d | 2025-11-26 | 2025-12-03 | CO-R11.S06-SD-210 | 45d |
|  | CB | **Catch Basin Sections** |  | 2025-12-04 | 2026-01-21 |  |  |
| CO-R11.S06-SD-140 |  | Trench Excavation and Bedding Works for Catch Basins of Storm Drainage Network-[Road 11]-[SW-6] | 7d | 2025-12-04 | 2025-12-11 | CO-R11.S06-EW-110, CO-R11.S06-SD-220, CO-R11.S05-SD-140 | 173d |
| CO-R11.S06-SD-150 |  | Installation and Pipes Laying Connection Works for Catch Basins of Storm Drainage Network-[Road 11]-[SW-6] | 7d | 2025-12-30 | 2026-01-06 | CO-R11.S06-SD-140, PRO-R11-SD-DL-130 FF+3d | 158d |
| CO-R11.S06-SD-160 |  | Testing Works for Catch Basins of Storm Drainage Network-[Road 11]-[SW-6] | 6d | 2026-01-07 | 2026-01-13 | CO-R11.S06-SD-150, CO-R11.S06-SD-120, PRO-R11-SD-DL-110 FF+3d | 158d |
| CO-R11.S06-SD-170 |  | Trench Backfilling and Compaction Works for Catch Basins of Storm Drainage Network-[Road 11]-[SW-6] | 7d | 2026-01-14 | 2026-01-21 | CO-R11.S06-SD-160 | 158d |
|  | PW | **Potable Water Network** |  | 2026-01-21 | 2026-02-28 |  |  |
|  | ML | **Main Line Sections** |  | 2026-01-21 | 2026-02-28 |  |  |
| CO-R11.S06-PW-100 |  | Trench Excavation and Bedding Works for Main Lines of Potable Water Network-[Road 11]-[SW-6] | 6d | 2026-01-21 | 2026-01-27 | CO-R11.S06-EW-110, CO-R11.S06-EW-100, CO-R11.S06-SD-130 | 10d |
| CO-R11.S06-PW-110 |  | Pipes Laying and accessories for Main Lines of Potable Water Network-[Road 11]-[SW-6] | 10d | 2026-01-28 | 2026-02-08 | CO-R11.S06-PW-100, CO-R10.S04-ES-PW-110 SS, PRO-R11-PW-DL-100 FF+3d, PRO-R11-PW-DL-110 FF+3d, CO-R10.S04-WE-PW-110 SS | 10d |
| CO-R11.S06-PW-130 |  | Trench Backfilling and Compaction Works for Main Lines of Potable Water Network-[Road 11]-[SW-6] | 10d | 2026-02-17 | 2026-02-28 | CO-R11.S06-PW-110, CO-R10.S04-ES-PW-130, CO-R11.S06-PW-160 FF, CO-R10.S04-WE-PW-130, CO-R11.S06-PW-210 FF | 10d |
|  | VC | **Valve Chamber** |  | 2026-01-28 | 2026-02-03 |  |  |
| CO-R11.S06-PW-210 |  | Installation Works for Main Line Valves and Valve Chambers of Potable Water Network-[Road 11]-[SW-6] | 6d | 2026-01-28 | 2026-02-03 | CO-R11.S06-PW-100 | 31d |
|  | FH | **Fire Hydrant** |  | 2026-02-04 | 2026-02-28 |  |  |
| CO-R11.S06-PW-140 |  | Excavation Works for Fire Hydrants of Potable Water Network-[Road 11]-[SW-6] | 7d | 2026-02-04 | 2026-02-11 | CO-R11.S06-PW-110 SS+3d, CO-R11.S06-PW-110 FF+3d, CO-R11.S06-EW-110 | 10d |

| ID | WBS | Task | Duration | Start | Finish | Predecessors | Total float |
| --- | --- | --- | --- | --- | --- | --- | --- |
| CO-R11.S06-PW-150 |  | Installation Works for Fire Hydrant of Potable Water Network-[Road 11]-[SW-6] | 7d | 2026-02-12 | 2026-02-19 | CO-R11.S06-PW-140, PRO-R11-PW-DL-120 FF+3d | 10d |
| CO-R11.S06-PW-160 |  | Trench Backfilling and Compaction Works for Fire Hydrants of Potable Water Network-[Road 11]-[SW-6] | 7d | 2026-02-21 | 2026-02-28 | CO-R11.S06-PW-150 | 10d |
|  | SL | **Street Lighting Network** |  | 2026-03-01 | 2026-07-25 |  |  |
|  | LP | **Lighting Poles Works** |  | 2026-03-01 | 2026-07-19 |  |  |
| CO-R11.S06-SL-100 |  | Foundation Excavation Works for Lighting Poles of Street Lighting Network-[Road 11]-[SW-6] | 12d | 2026-03-01 | 2026-03-14 | CO-R11.S06-EW-110, CO-R11.S06-EW-100, CO-R11.S06-PW-130 | 10d |
| CO-R11.S06-SL-110 |  | Installation Works for Lighting Poles Foundation of Street Lighting Network-[Road 11]-[SW-6] | 10d | 2026-03-30 | 2026-04-09 | CO-R11.S06-SL-100, CO-R10.S04-ES-SL-110, PRO-R11-SL-DL-110 FF+3d, CO-R10.S04-WE-SL-110 | 0d |
| CO-R11.S06-SL-120 |  | Installation Works for Lighting Poles of Street Lighting Network-[Road 11]-[SW-6] | 18d | 2026-04-05 | 2026-04-25 | CO-R11.S06-SL-110 SS+5d, CO-R11.S06-SL-110 FF+5d, PRO-R11-SL-DL-120 FF+3d | 8d |
| CO-R11.S06-SL-210 |  | Backfilling Works for Lighting Poles of Street Lighting Network-[Road 11]-[SW-6] | 15d | 2026-06-24 | 2026-07-11 | CO-R11.S06-SL-120 SS, CO-R11.S06-SL-120 FF, CO-R14.S08-SL-210 | 57.5d |
| CO-R11.S06-SL-130 |  | Installation Works for Lighting Fixtures With Drop Wire of Street Lighting Network-[Road 11]-[SW-6] | 18d | 2026-06-29 | 2026-07-19 | CO-R11.S06-SL-120, CO-R10.S04-ES-SL-130, PRO-R11-SL-DL-140 FF+3d, CO-R11.S06-SL-200 FF, CO-R10.S04-WE-SL-130 | 57.5d |
| CO-R11.S06-SL-200 |  | Testing Works for Lighting Poles of Street Lighting Network-[Road 11]-[SW-6] | 7d | 2026-07-12 | 2026-07-19 | CO-R11.S06-SL-210, CO-R11.S06-SL-120 | 57.5d |
|  | CW | **Cabling Works** |  | 2026-04-26 | 2026-06-03 |  |  |
| CO-R11.S06-SL-140 |  | Trench Excavation and Bedding Works for Street Lighting Network-[Road 11]-[SW-6] | 10d | 2026-04-26 | 2026-05-06 | CO-R11.S06-EW-110, CO-R11.S06-SL-120, CO-R11.S06-SL-110 | 8d |
| CO-R11.S06-SL-150 |  | Cable Laying Works for Street Lighting Network-[Road 11]-[SW-6] | 10d | 2026-05-07 | 2026-05-18 | CO-R11.S06-SL-140, PRO-R11-SL-DL-100 FF+3d | 8d |
| CO-R11.S06-SL-160 |  | Trench Backfilling and Compaction Works for Street Lighting Network-[Road 11]-[SW-6] | 10d | 2026-05-19 | 2026-06-03 | CO-R11.S06-SL-150 | 8d |
|  | DPB | **Distrubution Panel Boards** |  | 2026-06-14 | 2026-07-25 |  |  |
| CO-R11.S06-SL-170 |  | Foundation Excavation Works For Panel Boards of Street Lighting Network-[Road 11]-[SW-6] | 12d | 2026-06-14 | 2026-06-27 | CO-R11.S06-EW-110, CO-R10.S04-ES-SL-170, CO-R10.S04-WE-SL-170 | 0d |
| CO-R11.S06-SL-180 |  | Installation Works for Panel Board Concrete Foundations of Street Lighting Network-[Road 11]-[SW-6] | 12d | 2026-06-28 | 2026-07-11 | CO-R11.S06-SL-170, CO-R10.S04-ES-SL-180, CO-R10.S04-WE-SL-180 | 0d |
| CO-R11.S06-SL-190 |  | Installation Works for Lighting Panel Boards of Street Lighting Network-[Road 11]-[SW-6] | 12d | 2026-07-12 | 2026-07-25 | CO-R11.S06-SL-180, CO-R10.S04-ES-SL-190, CO-R10.S04-WE-SL-190 | 0d |
| CO-R11.S06-SL-220 |  | A wall of concrete blocks to install the KWH meter of Street Lighting Network-[Road 11]-[SW-6] | 12d | 2026-07-12 | 2026-07-25 | CO-R11.S06-SL-180 | 6d |
|  | TE | **Telecom Network** |  | 2026-06-14 | 2026-07-30 |  |  |
|  | PD | **Ducts Works** |  | 2026-06-14 | 2026-07-30 |  |  |
| CO-R11.S06-TE-100 |  | Trench Excavation and Bedding Works for Ducts of Telecom Network-[Road 11]-[SW-6] | 3d | 2026-06-14 | 2026-06-16 | CO-R11.S06-SL-160, CO-R11.S06-EW-110, CO-R11.S05-TE-100 | 0d |
| CO-R11.S06-TE-110 |  | Pipes Laying Works for Ducts of Telecom Network-[Road 11]-[SW-6] | 7d | 2026-07-07 | 2026-07-14 | CO-R11.S06-TE-100, CO-R10.S04-ES-TE-110, PRO-R11-TE-DL-100 FF+3d, CO-R10.S04-WE-TE-110 | 0d |
| CO-R11.S06-TE-120 |  | Pouring Plain Concrete Above Ducts of Telecom Network-[Road 11]-[SW-6] | 7d | 2026-07-15 | 2026-07-22 | CO-R11.S06-TE-110, CO-R10.S04-ES-TE-120, CO-R10.S04-WE-TE-120 | 0d |
| CO-R11.S06-TE-130 |  | Trench Backfilling and Compaction Works for Ducts of Telecom Network-[Road 11]-[SW-6] | 7d | 2026-07-23 | 2026-07-30 | CO-R11.S06-TE-120, CO-R10.S04-ES-TE-130, CO-R10.S04-WE-TE-130 | 0d |
|  | MH | **Manholes Works** |  | 2026-07-07 | 2026-07-30 |  |  |
| CO-R11.S06-TE-140 |  | Excavation Works for Manholes of Telecom Network-[Road 11]-[SW-6] | 7d | 2026-07-07 | 2026-07-14 | CO-R10.S04-ES-TE-140, CO-R11.S05-TE-140 SS, CO-R11.S06-TE-100 SS+6d, CO-R11.S06-TE-100 FF+6d, CO-R10.S04-WE-TE-140 | 0d |
| CO-R11.S06-TE-150 |  | Installation Works for Manholes of Telecom Network-[Road 11]-[SW-6] | 7d | 2026-07-15 | 2026-07-22 | CO-R11.S06-TE-140, CO-R10.S04-ES-TE-150, PRO-R11-TE-DL-110 FF+3d, CO-R10.S04-WE-TE-150 | 0d |
| CO-R11.S06-TE-160 |  | Backfilling Works for Manholes of Telecom Network-[Road 11]-[SW-6] | 7d | 2026-07-23 | 2026-07-30 | CO-R11.S06-TE-150, CO-R10.S04-ES-TE-160, CO-R10.S04-WE-TE-160 | 0d |
|  | MV | **Medium Voltage Network** |  | 2026-07-27 | 2026-08-16 |  |  |
|  | CW | **Cabling Works** |  | 2026-07-27 | 2026-08-16 |  |  |
| CO-R11.S06-MV-100 |  | Trench Excavation and Bedding Works for Medium Voltage Network-[Road 11]-[SW-6] | 12d | 2026-07-27 | 2026-08-09 | CO-R11.S06-SD-170 SS+3d, CO-R11.S06-SD-170 FF+3d, CO-R11.S06-EW-110, CO-R11.S06-TE-130 SS+3d, CO-R11.S06-TE-130 FF+3d, CO-R11.S05-MV-100 SS | 2d |
| CO-R11.S06-MV-110 |  | Cable Laying Works for Medium Voltage Network-[Road 11]-[SW-6] | 12d | 2026-07-30 | 2026-08-12 | CO-R11.S06-MV-100 SS+3d, CO-R11.S06-MV-100 FF+3d, PRO-R11-MV-DL-100 FF+3d | 2d |
| CO-R11.S06-MV-120 |  | Trench Backfilling and Compaction Works for Medium Voltage Network-[Road 11]-[SW-6] | 12d | 2026-08-03 | 2026-08-16 | CO-R11.S06-MV-110 SS+3d, CO-R11.S06-MV-110 FF+3d, CO-R11.S06-PW-130 FF+3d | 2d |
|  | RD | **Road Works** |  | 2026-08-06 | 2026-10-13 |  |  |
|  | RD | **Pre-Bituminous Construction** |  | 2026-08-06 | 2026-09-01 |  |  |
| CO-R11.S06-RD-P-100 |  | Capping and Subgrade Layer for Road Works-[Road 11]-[SW-6] | 12d | 2026-08-06 | 2026-08-19 | CO-R11.S06-SD-130, CO-R11.S06-PW-130, CO-R11.S06-PW-160, CO-R11.S06-SL-160 SS+3d, CO-R11.S06-SL-160 FF+3d, PRO-R11-RD-DL-100 FF+3d, CO-R11.S06-TE-130, CO-R11.S06-TE-160, CO-R11.S06-MV-120 SS+3d, CO-R11.S06-MV-120 FF+3d, CO-R11.S06-SW-130 | 2d |
| CO-R11.S06-RD-P-110 |  | Aggregate Base Course Layer for Road Works-[Road 11]-[SW-6] | 18d | 2026-08-12 | 2026-09-01 | CO-R11.S06-RD-P-100 SS+3d, CO-R11.S06-RD-P-100 FF+3d, CO-R11.S06-SD-170 SS+3d, CO-R11.S06-SD-170 FF+3d, CO-R10.S04-ES-RD-110, PRO-R11-RD-DL-110 FF+3d, CO-R10.S04-WE-RD-110 | 5d |
|  | LS | **Pavement Works** |  | 2026-08-16 | 2026-10-13 |  |  |
| CO-R11.S06-RD-P-120 |  | Fixing of Curbstone for Sidewalks Pavement-[Road 11]-[SW-6] | 18d | 2026-08-16 | 2026-09-05 | PRO-R11-RD-DL-130 FF+3d, CO-R10.S04-ES-RD-120, CO-R11.S06-RD-P-110 SS+3d, CO-R11.S06-RD-P-110 FF+3d, CO-R10.S04-WE-RD-120 | 5d |
| CO-R11.S06-RD-P-130 |  | Fixing of Interlock Tiles for Sidewalks Pavement-[Road 11]-[SW-6] | 10d | 2026-10-03 | 2026-10-13 | PRO-R11-RD-DL-120 FF+3d, CO-R11.S06-RD-P-120 SS+3d, CO-R11.S06-RD-P-120 FF+3d, CO-R10.S04-ES-RD-130, CO-R11-PW-TF-100, CO-R11-PW-TF-110, CO-R11-PW-TF-120, CO-R11-SW-TF-100, CO-R11-SW-TF-110, CO-R11-SW-TF-130, CO-R11-SD-TF-100, CO-R11-SD-TF-120, CO-R11-SL-TF-160, CO-R11-SL-TF-170, CO-R11-IR-TF-130, CO-R11-MV-TF-160, CO-R10.S04-WE-RD-130 | 0d |
|  | 6 | **Road 14 Local 1 ( 584 LM )** |  | 2025-07-09 | 2026-10-27 |  |  |
|  | SW_7 | **SW_7** |  | 2025-07-09 | 2026-10-25 |  |  |
|  | EW | **Earthworks** |  | 2025-07-09 | 2025-07-31 |  |  |
|  | EW | **Earthworks** |  | 2025-07-09 | 2025-07-31 |  |  |
| CO-R14.S07-EW-100 |  | Roadway Excavation Works Upto Design Level for Earthworks-[Road 14]-[SW-7] | 10d | 2025-07-09 | 2025-07-20 | ENG-MS-RD-A-10, ENG-SH-RD-A-100, CO-R09.S02-EW-110 | 11d |
| CO-R14.S07-EW-110 |  | Embankments Works Upto Design Level for Earthworks-[Road 14]-[SW-7] | 10d | 2025-07-21 | 2025-07-31 | CO-R14.S07-EW-100 SS+2d, CO-R14.S07-EW-100 FF+2d, CO-R14.S07-EW-100, ENG-MS-RD-A-10, ENG-SH-RD-A-100 | 19d |
|  | SW | **Sewage Network** |  | 2025-08-04 | 2025-09-14 |  |  |
|  | ML | **Main Line Sections** |  | 2025-08-04 | 2025-09-14 |  |  |
| CO-R14.S07-SW-100 |  | Trench Excavation and Bedding Works for Main Lines of Sewage Network-[Road 14]-[SW-7] | 12d | 2025-08-04 | 2025-08-17 | CO-R14.S07-EW-110, ENG-MS-SW-ML-A-110, ENG-SH-SW-ML-A-110, CO-R09.S02-SW-100 | 17d |
| CO-R14.S07-SW-120 |  | Pipes Laying Works for Main Lines of Sewage Network-[Road 14]-[SW-7] | 12d | 2025-08-18 | 2025-08-31 | CO-R14.S07-SW-100, PRO-R14-SW-DL-100 FF+3d | 21d |
| CO-R14.S07-SW-130 |  | Trench Backfilling and Compaction Works for Main Lines of Sewage Network-[Road 14]-[SW-7] | 12d | 2025-09-01 | 2025-09-14 | ENG-SH-SW-ML-A-110 FF, ENG-MS-SW-ML-A-110 FF, CO-R14.S07-SW-120, CO-R14.S07-SW-210 FF | 21d |
|  | 1 | **Manholes** |  | 2025-08-18 | 2025-09-01 |  |  |
| CO-R14.S07-SW-160 |  | Excavation Works for Main Line Manholes of Sewage Network-[Road 14]-[SW-7] | 1d | 2025-08-18 | 2025-08-18 | CO-R14.S07-SW-120 SS | 32d |
| CO-R14.S07-SW-170 |  | Installation RC Footing Works for Main Line Manholes of Sewage Network-[Road 14]-[SW-7] | 2d | 2025-08-19 | 2025-08-20 | CO-R14.S07-SW-160, PRO-R14-SW-DL-110 FF+3d | 32d |
| CO-R14.S07-SW-180 |  | Install Grp Liner Wall Works for Main Line Manholes of Sewage Network-[Road 14]-[SW-7] | 4d | 2025-08-21 | 2025-08-25 | CO-R14.S07-SW-170 | 32d |
| CO-R14.S07-SW-190 |  | Pouring Grp Liner Wall Works for Main Line Manholes of Sewage Network-[Road 14]-[SW-7] | 1d | 2025-08-26 | 2025-08-26 | CO-R14.S07-SW-180 | 32d |
| CO-R14.S07-SW-200 |  | Backfilling Works for Main Line Manholes of Sewage Network-[Road 14]-[SW-7] | 4d | 2025-08-27 | 2025-08-31 | CO-R14.S07-SW-190 | 32d |
| CO-R14.S07-SW-210 |  | Testing Works for Main Line Manholes of Sewage Network-[Road 14]-[SW-7] | 1d | 2025-09-01 | 2025-09-01 | CO-R14.S07-SW-200 | 32d |
|  | SD | **Storm Drainage Network** |  | 2025-10-02 | 2026-02-01 |  |  |
|  | ML | **Main Line Sections** |  | 2025-10-02 | 2026-02-01 |  |  |
| CO-R14.S07-SD-100 |  | Trench Excavation and Bedding Works for Main Lines of Storm Drainage Network-[Road 14]-[SW-7] | 10d | 2025-10-02 | 2025-10-13 | ENG-SH-SD-ML-A-110, CO-R14.S07-EW-110, CO-R14.S07-EW-100, CO-R14.S07-SW-130 SS+3d, CO-R14.S07-SW-130 FF+3d, ENG-MS-SD-ML-A-110, CO-R09.S02-SD-100 | 0d |
| CO-R14.S07-SD-120 |  | Pipes Laying Works for Main Lines of Storm Drainage Network-[Road 14]-[SW-7] | 10d | 2025-10-14 | 2025-10-25 | CO-R14.S07-SD-100, CO-R09.S02-SD-120 | 0d |
| CO-R14.S07-SD-130 |  | Trench Backfilling and Compaction Works for Main Lines of Storm Drainage Network-[Road 14]-[SW-7] | 15d | 2026-01-15 | 2026-02-01 | CO-R14.S07-SD-120 SS+3d, CO-R14.S07-SD-120 FF+3d, ENG-SH-SD-ML-A-110 FF, CO-R11.S05-SD-130, ENG-MS-SD-ML-A-110 FF, CO-R14.S07-SD-120, CO-R14.S07-SD-220 FF | 23d |
|  | MH | **Manholes** |  | 2025-10-14 | 2025-10-29 |  |  |
| CO-R14.S07-SD-180 |  | Trench Excavation and Bedding Works for Manholes of Storm Drainage Network-[Road 14]-[SW-7] | 1d | 2025-10-14 | 2025-10-14 | PRO-SD-1DL-100, CO-R14.S07-SD-100 | 43.5d |
| CO-R14.S07-SD-190 |  | Install RC Footing Works for Manholes of Storm Drainage Network-[Road 14]-[SW-7] | 1d | 2025-10-15 | 2025-10-15 | CO-R14.S07-SD-180 | 43.5d |
| CO-R14.S07-SD-200 |  | Install RC Wall Rings & Slab Works for Manholes of Storm Drainage Network-[Road 14]-[SW-7] | 4d | 2025-10-16 | 2025-10-20 | CO-R14.S07-SD-190 | 43.5d |
| CO-R14.S07-SD-210 |  | Testing Works for Manholes of Storm Drainage Network-[Road 14]-[SW-7] | 1d | 2025-10-21 | 2025-10-21 | CO-R14.S07-SD-200 | 43.5d |
| CO-R14.S07-SD-220 |  | Backfilling Works for Manholes of Storm Drainage Network-[Road 14]-[SW-7] | 7d | 2025-10-22 | 2025-10-29 | CO-R14.S07-SD-210 | 43.5d |

| ID | WBS | Task | Duration | Start | Finish | Predecessors | Total float |
| --- | --- | --- | --- | --- | --- | --- | --- |
|  | CB | **Catch Basin Sections** |  | 2025-11-10 | 2025-12-10 |  |  |
| CO-R14.S07-SD-140 |  | Trench Excavation and Bedding Works for Catch Basins of Storm Drainage Network-[Road 14]-[SW-7] | 6d | 2025-11-10 | 2025-11-16 | CO-R14.S07-EW-110, ENG-SH-SD-CB-A-110, ENG-MS-SD-CB-A-110, CO-R14.S07-SD-220, CO-R09.S02-SD-140 | 34.5d |
| CO-R14.S07-SD-150 |  | Installation and Pipes Laying Connection Works for Catch Basins of Storm Drainage Network-[Road 14]-[SW-7] | 7d | 2025-11-17 | 2025-11-24 | CO-R14.S07-SD-140 | 34.5d |
| CO-R14.S07-SD-160 |  | Testing Works for Catch Basins of Storm Drainage Network-[Road 14]-[SW-7] | 4d | 2025-11-29 | 2025-12-02 | CO-R14.S07-SD-150 FS+3d, CO-R14.S07-SD-120 | 34.5d |
| CO-R14.S07-SD-170 |  | Trench Backfilling and Compaction Works for Catch Basins of Storm Drainage Network-[Road 14]-[SW-7] | 7d | 2025-12-03 | 2025-12-10 | CO-R14.S07-SD-160 | 34.5d |
|  | IR | **Irrigation Network** |  | 2025-12-11 | 2026-01-19 |  |  |
|  | ML | **Main Line Pipes** |  | 2025-12-11 | 2026-01-19 |  |  |
| CO-R14.S07-IR-100 |  | Trench Excavation and Bedding Works for Main Lines of Irrigation Network-[Road 14]-[SW-7] | 7d | 2025-12-11 | 2025-12-18 | ENG-SH-IR-ML-A-110, CO-R14.S07-EW-110, CO-R14.S07-SD-170, ENG-MS-IR-ML-A-110 | 34.5d |
| CO-R14.S07-IR-110 |  | Pipes Laying Works for Main Lines of Irrigation Network-[Road 14]-[SW-7] | 10d | 2025-12-20 | 2025-12-30 | CO-R14.S07-IR-100, CO-R14.S07-IR-100 FF+3d, PRO-R11-IR-DL-140 FF+3d, PRO-R14-IR-DL-100 FS+3d | 34.5d |
| CO-R14.S07-IR-120 |  | Installation Works for Main Line Valves of Irrigation Network-[Road 14]-[SW-7] | 7d | 2025-12-31 | 2026-01-07 | CO-R14.S07-IR-110, PRO-R11-IR-DL-150 FF+3d, PRO-R14-IR-DL-110 | 34.5d |
| CO-R14.S07-IR-130 |  | Trench Backfilling and Compaction Works for Main Lines of Irrigation Network-[Road 14]-[SW-7] | 10d | 2026-01-08 | 2026-01-19 | CO-R14.S07-IR-120, CO-R14.S07-IR-110 | 34.5d |
|  | SL | **Street Lighting Network** |  | 2025-08-02 | 2026-06-11 |  |  |
|  | LP | **Lighting Poles Works** |  | 2026-01-20 | 2026-06-11 |  |  |
| CO-R14.S07-SL-100 |  | Foundation Excavation Works for Lighting Poles of Street Lighting Network-[Road 14]-[SW-7] | 12d | 2026-01-20 | 2026-02-02 | CO-R14.S07-EW-110, ENG-SH-SL-A-110, CO-R14.S07-EW-100, ENG-MS-SL-A-110, CO-R14.S07-IR-130 | 34.5d |
| CO-R14.S07-SL-110 |  | Installation Works for Lighting Poles Foundation of Street Lighting Network-[Road 14]-[SW-7] | 12d | 2026-02-03 | 2026-02-16 | CO-R14.S07-SL-100 | 34.5d |
| CO-R14.S07-SL-120 |  | Installation Works for Lighting Poles of Street Lighting Network-[Road 14]-[SW-7] | 17.5d | 2026-02-17 | 2026-03-09 | CO-R14.S07-SL-110 | 34.5d |
| CO-R14.S07-SL-130 |  | Installation Works for Lighting Fixtures With Drop Wire of Street Lighting Network-[Road 14]-[SW-7] | 18d | 2026-05-18 | 2026-06-11 | CO-R14.S07-SL-120 SS+5d, CO-R14.S07-SL-120 FF+5d, CO-R14.S07-SL-200 FF | 59d |
| CO-R14.S07-SL-210 |  | Backfilling Works for Lighting Poles of Street Lighting Network-[Road 14]-[SW-7] | 12d | 2026-05-19 | 2026-06-06 | CO-R14.S07-SL-120 SS, CO-R14.S07-SL-120 FF, CO-R09.S02-SL-210 | 57.5d |
| CO-R14.S07-SL-200 |  | Testing Works for Lighting Poles of Street Lighting Network-[Road 14]-[SW-7] | 5d | 2026-06-07 | 2026-06-11 | CO-R14.S07-SL-210, CO-R14.S07-SL-120 | 59d |
|  | CW | **Cabling Works** |  | 2026-03-09 | 2026-04-16 |  |  |
| CO-R14.S07-SL-140 |  | Trench Excavation and Bedding Works for Street Lighting Network-[Road 14]-[SW-7] | 10d | 2026-03-09 | 2026-03-24 | ENG-SH-SL-A-110, CO-R14.S07-IR-130, CO-R14.S07-EW-110, CO-R14.S07-SL-120, CO-R14.S07-SL-110, ENG-MS-SL-A-110 | 34.5d |
| CO-R14.S07-SL-150 |  | Cable Laying Works for Street Lighting Network-[Road 14]-[SW-7] | 10d | 2026-03-24 | 2026-04-05 | CO-R14.S07-SL-140 | 34.5d |
| CO-R14.S07-SL-160 |  | Trench Backfilling and Compaction Works for Street Lighting Network-[Road 14]-[SW-7] | 10d | 2026-04-05 | 2026-04-16 | CO-R14.S07-SL-150, CO-R14.S07-IR-130 | 34.5d |
|  | DPB | **Distrubution Panel Boards** |  | 2025-08-02 | 2025-08-28 |  |  |
| CO-R14.S07-SL-170 |  | Foundation Excavation Works For Panel Boards of Street Lighting Network-[Road 14]-[SW-7] | 18d | 2025-08-02 | 2025-08-21 | CO-R14.S07-EW-110, ENG-SH-SL-A-110, ENG-MS-SL-A-110 | 293d |
| CO-R14.S07-SL-180 |  | Installation Works for Panel Board Concrete Foundations of Street Lighting Network-[Road 14]-[SW-7] | 18d | 2025-08-05 | 2025-08-25 | CO-R14.S07-SL-170 SS+3d, CO-R14.S07-SL-170 FF+3d | 293d |
| CO-R14.S07-SL-220 |  | A wall of concrete blocks to install the KWH meter of Street Lighting Network-[Road 14]-[SW-7] | 18d | 2025-08-05 | 2025-08-25 | CO-R14.S07-SL-180 SS, CO-R14.S07-SL-180 FF | 296d |
| CO-R14.S07-SL-190 |  | Installation Works for Lighting Panel Boards of Street Lighting Network-[Road 14]-[SW-7] | 18d | 2025-08-09 | 2025-08-28 | CO-R14.S07-SL-180 SS+3d, CO-R14.S07-SL-180 FF+3d | 293d |
|  | TE | **Telecom Network** |  | 2026-05-20 | 2026-07-30 |  |  |
|  | PD | **Ducts Works** |  | 2026-05-20 | 2026-07-30 |  |  |
| CO-R14.S07-TE-100 |  | Trench Excavation and Bedding Works for Ducts of Telecom Network-[Road 14]-[SW-7] | 3d | 2026-05-20 | 2026-05-23 | CO-R14.S07-IR-130 SS+3d, CO-R14.S07-IR-130 FF+3d, CO-R14.S07-SL-160 SS+5d, CO-R14.S07-SL-160 FF+5d, CO-R14.S07-EW-110, CO-R09.S02-TE-100 | 8d |
| CO-R14.S07-TE-110 |  | Pipes Laying Works for Ducts of Telecom Network-[Road 14]-[SW-7] | 7d | 2026-07-07 | 2026-07-14 | CO-R14.S07-TE-100, CO-R11.S05-TE-110 | 0d |
| CO-R14.S07-TE-120 |  | Pouring Plain Concrete Above Ducts of Telecom Network-[Road 14]-[SW-7] | 7d | 2026-07-15 | 2026-07-22 | CO-R14.S07-TE-110, CO-R11.S05-TE-120 | 0d |
| CO-R14.S07-TE-130 |  | Trench Backfilling and Compaction Works for Ducts of Telecom Network-[Road 14]-[SW-7] | 7d | 2026-07-23 | 2026-07-30 | CO-R14.S07-TE-120, CO-R11.S05-TE-130 | 0d |
|  | MH | **Manholes Works** |  | 2026-07-07 | 2026-07-30 |  |  |
| CO-R14.S07-TE-140 |  | Excavation Works for Manholes of Telecom Network-[Road 14]-[SW-7] | 7d | 2026-07-07 | 2026-07-14 | CO-R11.S05-TE-140, CO-R14.S07-TE-100 | 0d |
| CO-R14.S07-TE-150 |  | Installation Works for Manholes of Telecom Network-[Road 14]-[SW-7] | 7d | 2026-07-15 | 2026-07-22 | CO-R14.S07-TE-140, CO-R11.S05-TE-150 | 7d |
| CO-R14.S07-TE-160 |  | Backfilling Works for Manholes of Telecom Network-[Road 14]-[SW-7] | 7d | 2026-07-23 | 2026-07-30 | CO-R14.S07-TE-150, CO-R11.S05-TE-160 | 7d |
|  | RD | **Road Works** |  | 2026-08-01 | 2026-10-25 |  |  |
|  | RD | **Pre-Bituminous Construction** |  | 2026-08-01 | 2026-09-26 |  |  |
| CO-R14.S07-RD-P-100 |  | Capping and Subgrade Layer for Road Works-[Road 14]-[SW-7] | 18d | 2026-08-01 | 2026-08-20 | ENG-SH-RD-A-100, CO-R14.S07-SD-130, CO-R14.S07-SW-130, CO-R14.S07-SL-160 SS+3d, CO-R14.S07-SL-160 FF+3d, ENG-MS-RD-A-10, CO-R14.S07-TE-130, CO-R14.S07-TE-160 | 13d |
| CO-R14.S07-RD-P-110 |  | Aggregate Base Course Layer for Road Works-[Road 14]-[SW-7] | 18d | 2026-09-05 | 2026-09-26 | CO-R14.S07-RD-P-100 SS+3d, CO-R14.S07-RD-P-100 FF+3d, CO-R14.S07-SD-170 SS+3d, CO-R14.S07-SD-170 FF+3d, CO-R11.S05-RD-P-110 | 3d |
|  | LS | **Pavement Works** |  | 2026-09-08 | 2026-10-25 |  |  |
| CO-R14.S07-RD-P-120 |  | Fixing of Curbstone for Sidewalks Pavement-[Road 14]-[SW-7] | 18d | 2026-09-08 | 2026-09-29 | CO-R11.S05-RD-P-120, CO-R14.S07-RD-P-110 SS+3d, CO-R14.S07-RD-P-110 FF+3d | 3d |
| CO-R14.S07-RD-P-130 |  | Fixing of Interlock Tiles for Sidewalks Pavement-[Road 14]-[SW-7] | 12d | 2026-10-12 | 2026-10-25 | CO-R14.S07-RD-P-120 SS+3d, CO-R14.S07-RD-P-120 FF+3d, CO-R11.S05-RD-P-130, CO-R14-PW-TF-100, CO-R14-PW-TF-110, CO-R14-PW-TF-120, CO-R14-SW-TF-100, CO-R14-SW-TF-110, CO-R14-SW-TF-130, CO-R11-SL-TF-180, CO-R11-SL-TF-190, CO-R11-IR-TF-140, CO-R11-MV-TF-180 | 0d |
|  | SW_8 | **SW_8** |  | 2025-07-21 | 2026-10-27 |  |  |
|  | EW | **Earthworks** |  | 2025-07-21 | 2025-08-17 |  |  |
|  | EW | **Earthworks** |  | 2025-07-21 | 2025-08-17 |  |  |
| CO-R14.S08-EW-100 |  | Roadway Excavation Works Upto Design Level for Earthworks-[Road 14]-[SW-8] | 12d | 2025-07-21 | 2025-08-03 | ENG-MS-RD-A-10, ENG-SH-RD-A-100, CO-R14.S07-EW-100 | 11d |
| CO-R14.S08-EW-110 |  | Embankments Works Upto Design Level for Earthworks-[Road 14]-[SW-8] | 12d | 2025-08-04 | 2025-08-17 | CO-R14.S08-EW-100, ENG-MS-RD-A-10, ENG-SH-RD-A-100 | 17d |
|  | SW | **Sewage Network** |  | 2025-08-18 | 2025-09-29 |  |  |
|  | ML | **Main Line Sections** |  | 2025-08-18 | 2025-09-29 |  |  |
| CO-R14.S08-SW-100 |  | Trench Excavation and Bedding Works for Main Lines of Sewage Network-[Road 14]-[SW-8] | 12d | 2025-08-18 | 2025-08-31 | CO-R14.S08-EW-110, ENG-MS-SW-ML-A-110, ENG-SH-SW-ML-A-110, CO-R14.S07-SW-100 | 17d |
| CO-R14.S08-SW-120 |  | Pipes Laying Works for Main Lines of Sewage Network-[Road 14]-[SW-8] | 12d | 2025-09-01 | 2025-09-14 | CO-R14.S08-SW-100, PRO-R14-SW-DL-100 FF+3d | 19d |
| CO-R14.S08-SW-130 |  | Trench Backfilling and Compaction Works for Main Lines of Sewage Network-[Road 14]-[SW-8] | 12d | 2025-09-15 | 2025-09-29 | CO-R14.S08-SW-120, CO-R14.S08-SW-210 FF | 19d |
|  | 1 | **Manholes** |  | 2025-09-01 | 2025-09-15 |  |  |
| CO-R14.S08-SW-160 |  | Excavation Works for Main Line Manholes of Sewage Network-[Road 14]-[SW-8] | 1d | 2025-09-01 | 2025-09-01 | CO-R14.S08-SW-120 SS | 30d |
| CO-R14.S08-SW-170 |  | Installation RC Footing Works for Main Line Manholes of Sewage Network-[Road 14]-[SW-8] | 2d | 2025-09-02 | 2025-09-03 | CO-R14.S08-SW-160, PRO-R14-SW-DL-110 FF+3d | 30d |
| CO-R14.S08-SW-180 |  | Install Grp Liner Wall Works for Main Line Manholes of Sewage Network-[Road 14]-[SW-8] | 4d | 2025-09-04 | 2025-09-08 | CO-R14.S08-SW-170 | 30d |
| CO-R14.S08-SW-190 |  | Pouring Grp Liner Wall Works for Main Line Manholes of Sewage Network-[Road 14]-[SW-8] | 1d | 2025-09-09 | 2025-09-09 | CO-R14.S08-SW-180 | 30d |
| CO-R14.S08-SW-200 |  | Backfilling Works for Main Line Manholes of Sewage Network-[Road 14]-[SW-8] | 4d | 2025-09-10 | 2025-09-14 | CO-R14.S08-SW-190 | 30d |
| CO-R14.S08-SW-210 |  | Testing Works for Main Line Manholes of Sewage Network-[Road 14]-[SW-8] | 1d | 2025-09-15 | 2025-09-15 | CO-R14.S08-SW-200 | 30d |
|  | SD | **Storm Drainage Network** |  | 2025-10-14 | 2026-02-07 |  |  |
|  | ML | **Main Line Sections** |  | 2025-10-14 | 2026-02-07 |  |  |
| CO-R14.S08-SD-100 |  | Trench Excavation and Bedding Works for Main Lines of Storm Drainage Network-[Road 14]-[SW-8] | 10d | 2025-10-14 | 2025-10-25 | CO-R14.S08-EW-110, CO-R14.S08-EW-100, CO-R14.S08-SW-130 SS+3d, CO-R14.S08-SW-130 FF+3d, CO-R14.S07-SD-100 | 0d |
| CO-R14.S08-SD-120 |  | Pipes Laying Works for Main Lines of Storm Drainage Network-[Road 14]-[SW-8] | 10d | 2025-10-26 | 2025-11-05 | PRO-R14-SD-DL-120 FF+3d, CO-R14.S08-SD-100, CO-R14.S07-SD-120 | 0d |
| CO-R14.S08-SD-130 |  | Trench Backfilling and Compaction Works for Main Lines of Storm Drainage Network-[Road 14]-[SW-8] | 15d | 2026-01-21 | 2026-02-07 | CO-R14.S08-SD-120 SS+3d, CO-R14.S08-SD-120 FF+3d, CO-R11.S06-SD-130, CO-R14.S08-SD-120, CO-R14.S08-SD-220 FF | 4d |
|  | MH | **Manholes** |  | 2025-10-26 | 2025-11-10 |  |  |
| CO-R14.S08-SD-180 |  | Trench Excavation and Bedding Works for Manholes of Storm Drainage Network-[Road 14]-[SW-8] | 1d | 2025-10-26 | 2025-10-26 | CO-R14.S08-SD-120 SS, PRO-SD-1DL-100 | 80d |
| CO-R14.S08-SD-190 |  | Install RC Footing Works for Manholes of Storm Drainage Network-[Road 14]-[SW-8] | 1d | 2025-10-27 | 2025-10-27 | CO-R14.S08-SD-180 | 80d |

| ID | WBS | Task | Duration | Start | Finish | Predecessors | Total float |
| --- | --- | --- | --- | --- | --- | --- | --- |
| CO-R14.S08-SD-200 |  | Install RC Wall Rings & Slab Works for Manholes of Storm Drainage Network-[Road 14]-[SW-8] | 4d | 2025-10-28 | 2025-11-01 | CO-R14.S08-SD-190 | 80d |
| CO-R14.S08-SD-210 |  | Testing Works for Manholes of Storm Drainage Network-[Road 14]-[SW-8] | 1d | 2025-11-02 | 2025-11-02 | CO-R14.S08-SD-200 | 80d |
| CO-R14.S08-SD-220 |  | Backfilling Works for Manholes of Storm Drainage Network-[Road 14]-[SW-8] | 7d | 2025-11-03 | 2025-11-10 | CO-R14.S08-SD-210 | 80d |
|  | CB | **Catch Basin Sections** |  | 2025-11-17 | 2025-12-14 |  |  |
| CO-R14.S08-SD-140 |  | Trench Excavation and Bedding Works for Catch Basins of Storm Drainage Network-[Road 14]-[SW-8] | 6d | 2025-11-17 | 2025-11-23 | CO-R14.S08-EW-110, CO-R14.S08-SD-220, CO-R14.S07-SD-140 | 112d |
| CO-R14.S08-SD-150 |  | Installation and Pipes Laying Connection Works for Catch Basins of Storm Drainage Network-[Road 14]-[SW-8] | 7d | 2025-11-24 | 2025-12-01 | CO-R14.S08-SD-140, PRO-R14-SD-DL-130 FF+3d | 203d |
| CO-R14.S08-SD-160 |  | Testing Works for Catch Basins of Storm Drainage Network-[Road 14]-[SW-8] | 4d | 2025-12-02 | 2025-12-06 | CO-R14.S08-SD-150, CO-R14.S08-SD-120, PRO-R14-SD-DL-110 FF+3d | 203d |
| CO-R14.S08-SD-170 |  | Trench Backfilling and Compaction Works for Catch Basins of Storm Drainage Network-[Road 14]-[SW-8] | 7d | 2025-12-07 | 2025-12-14 | CO-R14.S08-SD-160 | 203d |
|  | PW | **Potable Water Network** |  | 2026-02-08 | 2026-03-25 |  |  |
|  | ML | **Main Line Sections** |  | 2026-02-08 | 2026-03-25 |  |  |
| CO-R14.S08-PW-100 |  | Trench Excavation and Bedding Works for Main Lines of Potable Water Network-[Road 14]-[SW-8] | 10d | 2026-02-08 | 2026-02-18 | CO-R14.S08-EW-110, CO-R14.S08-EW-100, CO-R14.S08-SD-130 | 6d |
| CO-R14.S08-PW-110 |  | Pipes Laying and accessories for Main Lines of Potable Water Network-[Road 14]-[SW-8] | 10d | 2026-02-19 | 2026-03-02 | CO-R14.S08-PW-100, CO-R11.S06-PW-110, PRO-R14-PW-DL-100 FF+3d, PRO-R14-PW-DL-110 FF+3d | 6d |
| CO-R14.S08-PW-130 |  | Trench Backfilling and Compaction Works for Main Lines of Potable Water Network-[Road 14]-[SW-8] | 10d | 2026-03-11 | 2026-03-25 | CO-R14.S08-PW-110, CO-R11.S06-PW-130, CO-R14.S08-PW-220 FF, CO-R14.S08-PW-160 FF | 6d |
|  | VC | **Valve Chamber** |  | 2026-03-03 | 2026-03-24 |  |  |
| CO-R14.S08-PW-170 |  | Excavation Works for Main Line Valves and Valve Chambers of Potable Water Network-[Road 14]-[SW-8] | 1d | 2026-03-03 | 2026-03-03 | CO-R14.S08-PW-110 | 7d |
| CO-R14.S08-PW-180 |  | RC Footing Works for Main Line Valves and Valve Chambers of Potable Water Network-[Road 14]-[SW-8] | 3d | 2026-03-04 | 2026-03-07 | CO-R14.S08-PW-170 | 7d |
| CO-R14.S08-PW-190 |  | RC Wall Works for Main Line Valves and Valve Chambers of Potable Water Network-[Road 14]-[SW-8] | 6d | 2026-03-08 | 2026-03-14 | CO-R14.S08-PW-180 | 7d |
| CO-R14.S08-PW-200 |  | RC Slab Works for Main Line Valves and Valve Chambers of Potable Water Network-[Road 14]-[SW-8] | 2d | 2026-03-15 | 2026-03-16 | CO-R14.S08-PW-190 | 7d |
| CO-R14.S08-PW-210 |  | Insulation Works for Main Line Valves and Valve Chambers of Potable Water Network-[Road 14]-[SW-8] | 1d | 2026-03-17 | 2026-03-17 | CO-R14.S08-PW-200 | 7d |
| CO-R14.S08-PW-220 |  | Backfilling Works for Main Line Valves and Valve Chambers of Potable Water Network-[Road 14]-[SW-8] | 3d | 2026-03-18 | 2026-03-24 | CO-R14.S08-PW-210 | 7d |
|  | FH | **Fire Hydrant** |  | 2026-02-26 | 2026-03-25 |  |  |
| CO-R14.S08-PW-140 |  | Excavation Works for Fire Hydrants of Potable Water Network-[Road 14]-[SW-8] | 7d | 2026-02-26 | 2026-03-05 | CO-R14.S08-PW-110 SS+3d, CO-R14.S08-PW-110 FF+3d, CO-R14.S08-EW-110 | 6d |
| CO-R14.S08-PW-150 |  | Installation Works for Fire Hydrant of Potable Water Network-[Road 14]-[SW-8] | 7d | 2026-03-07 | 2026-03-14 | CO-R14.S08-PW-140, PRO-R14-PW-DL-120 FF+3d | 6d |
| CO-R14.S08-PW-160 |  | Trench Backfilling and Compaction Works for Fire Hydrants of Potable Water Network-[Road 14]-[SW-8] | 7d | 2026-03-15 | 2026-03-25 | CO-R14.S08-PW-150 | 6d |
|  | SL | **Street Lighting Network** |  | 2026-03-26 | 2026-08-15 |  |  |
|  | LP | **Lighting Poles Works** |  | 2026-03-26 | 2026-08-09 |  |  |
| CO-R14.S08-SL-820 |  | Foundation Excavation Works for Lighting Poles of Street Lighting Network-[Road 14]-[SW-8] | 12d | 2026-03-26 | 2026-04-08 | CO-R14.S08-EW-110, CO-R14.S08-EW-100, CO-R14.S08-PW-130 | 6d |
| CO-R14.S08-SL-830 |  | Installation Works for Lighting Poles Foundation of Street Lighting Network-[Road 14]-[SW-8] | 10d | 2026-04-11 | 2026-04-21 | CO-R14.S08-SL-820 SS+5d, CO-R14.S08-SL-820 FF+5d, CO-R11.S06-SL-110, PRO-R14-SL-DL-110 FF+3d | 0d |
| CO-R14.S08-SL-840 |  | Installation Works for Lighting Poles of Street Lighting Network-[Road 14]-[SW-8] | 10d | 2026-04-16 | 2026-04-27 | CO-R14.S08-SL-830 SS+5d, CO-R14.S08-SL-830 FF+5d, PRO-R14-SL-DL-120 FF+3d | 0d |
| CO-R14.S08-SL-210 |  | Backfilling Works for Lighting Poles of Street Lighting Network-[Road 14]-[SW-8] | 15d | 2026-06-07 | 2026-06-23 | CO-R14.S08-SL-840 SS, CO-R14.S08-SL-840 FF, CO-R14.S07-SL-210 | 57.5d |
| CO-R14.S08-SL-200 |  | Testing Works for Lighting Poles of Street Lighting Network-[Road 14]-[SW-8] | 7d | 2026-06-24 | 2026-07-01 | CO-R14.S08-SL-210, CO-R14.S08-SL-840 | 90d |
| CO-R14.S08-SL-850 |  | Installation Works for Lighting Fixtures With Drop Wire of Street Lighting Network-[Road 14]-[SW-8] | 17.5d | 2026-07-20 | 2026-08-09 | CO-R14.S08-SL-840 SS+5d, CO-R14.S08-SL-840 FF+5d, CO-R11.S06-SL-130, PRO-R14-SL-DL-140 FF+3d, CO-R14.S08-SL-200 FF | 57.5d |
|  | CW | **Cabling Works** |  | 2026-04-28 | 2026-06-06 |  |  |
| CO-R14.S08-SL-640 |  | Trench Excavation and Bedding Works for Street Lighting Network-[Road 14]-[SW-8] | 10d | 2026-04-28 | 2026-05-09 | CO-R14.S08-EW-110, CO-R14.S08-SL-840, CO-R14.S08-SL-830 | 0d |
| CO-R14.S08-SL-650 |  | Cable Laying Works for Street Lighting Network-[Road 14]-[SW-8] | 10d | 2026-05-10 | 2026-05-20 | CO-R14.S08-SL-640, PRO-R14-SL-DL-100 FF+3d | 0d |
| CO-R14.S08-SL-660 |  | Trench Backfilling and Compaction Works for Street Lighting Network-[Road 14]-[SW-8] | 10d | 2026-05-21 | 2026-06-06 | CO-R14.S08-SL-650 | 0d |
|  | DPB | **Distrubution Panel Boards** |  | 2026-06-28 | 2026-08-15 |  |  |
| CO-R14.S08-SL-DB-640 |  | Foundation Excavation Works For Panel Boards of Street Lighting Network-[Road 14]-[SW-8] | 18d | 2026-06-28 | 2026-07-18 | CO-R14.S08-EW-110, CO-R11.S06-SL-170 | 14d |
| CO-R14.S08-SL-220 |  | A wall of concrete blocks to install the KWH meter of Street Lighting Network-[Road 14]-[SW-8] | 25d | 2026-07-12 | 2026-08-09 | CO-R14.S08-SL-DB-650 SS, CO-R14.S08-SL-DB-650 FF | 5d |
| CO-R14.S08-SL-DB-650 |  | Installation Works for Panel Board Concrete Foundations of Street Lighting Network-[Road 14]-[SW-8] | 18d | 2026-07-12 | 2026-08-01 | CO-R14.S08-SL-DB-640 SS+3d, CO-R14.S08-SL-DB-640 FF+3d, CO-R11.S06-SL-180 | 5d |
| CO-R14.S08-SL-DB-660 |  | Installation Works for Lighting Panel Boards of Street Lighting Network-[Road 14]-[SW-8] | 18d | 2026-07-26 | 2026-08-15 | CO-R14.S08-SL-DB-650 SS+3d, CO-R14.S08-SL-DB-650 FF+3d, CO-R11.S06-SL-190 | 0d |
|  | TE | **Telecom Network** |  | 2026-06-07 | 2026-08-08 |  |  |
|  | PD | **Ducts Works** |  | 2026-06-07 | 2026-08-08 |  |  |
| CO-R14.S08-TE-100 |  | Trench Excavation and Bedding Works for Ducts of Telecom Network-[Road 14]-[SW-8] | 3d | 2026-06-07 | 2026-06-09 | CO-R14.S08-SL-660, CO-R14.S07-TE-100 | 0d |
| CO-R14.S08-TE-110 |  | Pipes Laying Works for Ducts of Telecom Network-[Road 14]-[SW-8] | 7d | 2026-07-15 | 2026-07-22 | CO-R14.S08-TE-100, CO-R11.S06-TE-110, PRO-R14-TE-DL-100 FF+3d | 0d |
| CO-R14.S08-TE-120 |  | Pouring Plain Concrete Above Ducts of Telecom Network-[Road 14]-[SW-8] | 7d | 2026-07-23 | 2026-07-30 | CO-R14.S08-TE-110, CO-R11.S06-TE-120 | 0d |
| CO-R14.S08-TE-130 |  | Trench Backfilling and Compaction Works for Ducts of Telecom Network-[Road 14]-[SW-8] | 7d | 2026-08-01 | 2026-08-08 | CO-R14.S08-TE-120, CO-R11.S06-TE-130 | 0d |
|  | MH | **Manholes Works** |  | 2026-07-15 | 2026-08-08 |  |  |
| CO-R14.S08-TE-140 |  | Excavation Works for Manholes of Telecom Network-[Road 14]-[SW-8] | 7d | 2026-07-15 | 2026-07-22 | CO-R11.S06-TE-140, CO-R14.S08-TE-100, CO-R14.S07-TE-140 | 0d |
| CO-R14.S08-TE-150 |  | Installation Works for Manholes of Telecom Network-[Road 14]-[SW-8] | 7d | 2026-07-23 | 2026-07-30 | CO-R14.S08-TE-140, CO-R11.S06-TE-150, PRO-R14-TE-DL-110 FF+3d | 0d |
| CO-R14.S08-TE-160 |  | Backfilling Works for Manholes of Telecom Network-[Road 14]-[SW-8] | 7d | 2026-08-01 | 2026-08-08 | CO-R14.S08-TE-150, CO-R11.S06-TE-160 | 0d |
|  | MV | **Medium Voltage Network** |  | 2026-08-10 | 2026-08-27 |  |  |
|  | CW | **Cabling Works** |  | 2026-08-10 | 2026-08-27 |  |  |
| CO-R14.S08-MV-ML-640 |  | Trench Excavation and Bedding Works for Medium Voltage Network-[Road 14]-[SW-8] | 10d | 2026-08-10 | 2026-08-20 | CO-R14.S08-SD-170 SS+3d, CO-R14.S08-SD-170 FF+3d, CO-R14.S08-EW-110, CO-R14.S08-TE-130 SS+3d, CO-R14.S08-TE-130 FF+3d, CO-R11.S06-MV-100 | 2d |
| CO-R14.S08-MV-ML-650 |  | Cable Laying Works for Medium Voltage Network-[Road 14]-[SW-8] | 10d | 2026-08-13 | 2026-08-24 | CO-R14.S08-MV-ML-640 SS+3d, CO-R14.S08-MV-ML-640 FF+3d, CO-R11.S06-MV-110, PRO-R14-MV-DL-100 FF+3d | 2d |
| CO-R14.S08-MV-ML-660 |  | Trench Backfilling and Compaction Works for Medium Voltage Network-[Road 14]-[SW-8] | 10d | 2026-08-17 | 2026-08-27 | CO-R14.S08-MV-ML-650 SS+3d, CO-R14.S08-MV-ML-650 FF+3d, CO-R14.S08-PW-130 FF+3d, CO-R11.S06-MV-120 | 2d |
|  | RD | **Road Works** |  | 2026-08-20 | 2026-10-27 |  |  |
|  | RD | **Pre-Bituminous Construction** |  | 2026-08-20 | 2026-09-22 |  |  |
| CO-R14.S08-RD-P-100 |  | Capping and Subgrade Layer for Road Works-[Road 14]-[SW-8] | 10d | 2026-08-20 | 2026-08-31 | CO-R14.S08-SD-130, CO-R14.S08-PW-130, CO-R14.S08-PW-160, CO-R14.S08-SL-660 SS+3d, CO-R14.S08-SL-660 FF+3d, PRO-R14-RD-DL-100 FF+3d, CO-R14.S08-TE-130, CO-R14.S08-TE-160, CO-R14.S08-MV-ML-660 SS+3d, CO-R14.S08-MV-ML-660 FF+3d, CO-R14.S08-SW-130 | 2d |
| CO-R14.S08-RD-P-110 |  | Aggregate Base Course Layer for Road Works-[Road 14]-[SW-8] | 18d | 2026-09-02 | 2026-09-22 | CO-R14.S08-RD-P-100 SS+3d, CO-R14.S08-RD-P-100 FF+3d, CO-R14.S08-SD-170 SS+3d, CO-R14.S08-SD-170 FF+3d, CO-R11.S06-RD-P-110, PRO-R14-RD-DL-110 FF+3d | 5d |
|  | LS | **Pavement Works** |  | 2026-09-06 | 2026-10-27 |  |  |
| CO-R14.S08-RD-P-120 |  | Fixing of Curbstone for Sidewalks Pavement-[Road 14]-[SW-8] | 18d | 2026-09-06 | 2026-09-27 | PRO-R14-RD-DL-130 FF+3d, CO-R11.S06-RD-P-120, CO-R14.S08-RD-P-110 SS+3d, CO-R14.S08-RD-P-110 FF+3d | 5d |
| CO-R14.S08-RD-P-130 |  | Fixing of Interlock Tiles for Sidewalks Pavement-[Road 14]-[SW-8] | 12d | 2026-10-14 | 2026-10-27 | PRO-R14-RD-DL-120 FF+3d, CO-R14.S08-RD-P-120 SS+3d, CO-R14.S08-RD-P-120 FF+3d, CO-R11.S06-RD-P-130, CO-R14-PW-TF-100, CO-R14-PW-TF-110, CO-R14-PW-TF-120, CO-R14-SW-TF-100, CO-R14-SW-TF-110, CO-R14-SW-TF-130, CO-R14-SD-TF-120, CO-R11-SL-TF-180, CO-R11-SL-TF-190, CO-R11-IR-TF-140, CO-R11-MV-TF-180 | 0d |
|  | 7 | **Road 15 Local 1 ( 556 LM )** |  | 2025-04-26 | 2026-11-08 |  |  |
|  | SW_9 | **SW_9** |  | 2025-04-26 | 2026-11-08 |  |  |
|  | EW | **Earthworks** |  | 2025-04-26 | 2025-05-20 |  |  |
|  | EW | **Earthworks** |  | 2025-04-26 | 2025-05-20 |  |  |
| CO-R15.S09-EW-200 |  | Roadway Excavation Works Upto Design Level for Earthworks-[Road 15]-[SW-9] | 10d | 2025-04-26 | 2025-05-06 | ENG-MS-RD-A-10, ENG-SH-RD-A-100, CO-R16.S12-EW-100 | 11d |
| CO-R15.S09-EW-110 |  | Embankments Works Upto Design Level for Earthworks-[Road 15]-[SW-9] | 12d | 2025-05-07 | 2025-05-20 | CO-R15.S09-EW-200, ENG-MS-RD-A-10, ENG-SH-RD-A-100 | 23d |
|  | SW | **Sewage Network** |  | 2025-05-21 | 2025-07-30 |  |  |

| ID | WBS | Task | Duration | Start | Finish | Predecessors | Total float |
| --- | --- | --- | --- | --- | --- | --- | --- |
|  | ML | **Main Line Sections** |  | 2025-05-21 | 2025-07-30 |  |  |
| CO-R15.S09-SW-100 |  | Trench Excavation and Bedding Works for Main Lines of Sewage Network-[Road 15]-[SW-9] | 12d | 2025-05-21 | 2025-06-03 | CO-R15.S09-EW-110, ENG-MS-SW-ML-A-110, ENG-SH-SW-ML-A-110 | 23d |
| CO-R15.S09-SW-120 |  | Pipes Laying Works for Main Lines of Sewage Network-[Road 15]-[SW-9] | 12d | 2025-06-04 | 2025-06-22 | CO-R15.S09-SW-100, PRO-R15-SW-DL-100 FF+3d | 23d |
| CO-R15.S09-SW-130 |  | Trench Backfilling and Compaction Works for Main Lines of Sewage Network-[Road 15]-[SW-9] | 10d | 2025-07-20 | 2025-07-30 | ENG-SH-SW-ML-A-110 FF, ENG-MS-SW-ML-A-110 FF, CO-R15.S09-SW-120, CO-R15.S09-SW-210 FF, CO-R16.S12-SW-130 | 0d |
|  | 1 | **Manholes** |  | 2025-06-04 | 2025-06-23 |  |  |
| CO-R15.S09-SW-160 |  | Excavation Works for Main Line Manholes of Sewage Network-[Road 15]-[SW-9] | 1d | 2025-06-04 | 2025-06-04 | CO-R15.S09-SW-120 SS | 32d |
| CO-R15.S09-SW-170 |  | Installation RC Footing Works for Main Line Manholes of Sewage Network-[Road 15]-[SW-9] | 2d | 2025-06-10 | 2025-06-11 | CO-R15.S09-SW-160, PRO-R15-SW-DL-110 FF+3d | 32d |
| CO-R15.S09-SW-180 |  | Install Grp Liner Wall Works for Main Line Manholes of Sewage Network-[Road 15]-[SW-9] | 4d | 2025-06-12 | 2025-06-16 | CO-R15.S09-SW-170 | 32d |
| CO-R15.S09-SW-190 |  | Pouring Grp Liner Wall Works for Main Line Manholes of Sewage Network-[Road 15]-[SW-9] | 1d | 2025-06-17 | 2025-06-17 | CO-R15.S09-SW-180 | 32d |
| CO-R15.S09-SW-200 |  | Backfilling Works for Main Line Manholes of Sewage Network-[Road 15]-[SW-9] | 4d | 2025-06-18 | 2025-06-22 | CO-R15.S09-SW-190 | 32d |
| CO-R15.S09-SW-210 |  | Testing Works for Main Line Manholes of Sewage Network-[Road 15]-[SW-9] | 1d | 2025-06-23 | 2025-06-23 | CO-R15.S09-SW-200 | 32d |
|  | SD | **Storm Drainage Network** |  | 2025-07-23 | 2026-02-19 |  |  |
|  | ML | **Main Line Sections** |  | 2025-07-23 | 2026-02-19 |  |  |
| CO-R15.S09-SD-100 |  | Trench Excavation and Bedding Works for Main Lines of Storm Drainage Network-[Road 15]-[SW-9] | 10d | 2025-07-23 | 2025-08-03 | ENG-SH-SD-ML-A-110, CO-R15.S09-EW-110, CO-R15.S09-EW-200, CO-R15.S09-SW-130 SS+3d, CO-R15.S09-SW-130 FF+3d, ENG-MS-SD-ML-A-110 | 42d |
| CO-R15.S09-SD-120 |  | Pipes Laying Works for Main Lines of Storm Drainage Network-[Road 15]-[SW-9] | 15d | 2025-08-04 | 2025-08-20 | CO-R15.S09-SD-100 | 42d |
| CO-R15.S09-SD-130 |  | Trench Backfilling and Compaction Works for Main Lines of Storm Drainage Network-[Road 15]-[SW-9] | 16d | 2026-02-02 | 2026-02-19 | CO-R15.S09-SD-120 SS+3d, CO-R15.S09-SD-120 FF+3d, ENG-SH-SD-ML-A-110 FF, CO-R14.S07-SD-130, ENG-MS-SD-ML-A-110 FF, CO-R15.S09-SD-120, CO-R15.S09-SD-220 FF | 23d |
|  | MH | **Manholes** |  | 2025-08-04 | 2025-08-19 |  |  |
| CO-R15.S09-SD-180 |  | Trench Excavation and Bedding Works for Manholes of Storm Drainage Network-[Road 15]-[SW-9] | 1d | 2025-08-04 | 2025-08-04 | CO-R15.S09-SD-120 SS, PRO-SD-1DL-100 | 42d |
| CO-R15.S09-SD-190 |  | Install RC Footing Works for Manholes of Storm Drainage Network-[Road 15]-[SW-9] | 1d | 2025-08-05 | 2025-08-05 | CO-R15.S09-SD-180 | 42d |
| CO-R15.S09-SD-200 |  | Install RC Wall Rings & Slab Works for Manholes of Storm Drainage Network-[Road 15]-[SW-9] | 4d | 2025-08-06 | 2025-08-10 | CO-R15.S09-SD-190 | 42d |
| CO-R15.S09-SD-210 |  | Testing Works for Manholes of Storm Drainage Network-[Road 15]-[SW-9] | 1d | 2025-08-11 | 2025-08-11 | CO-R15.S09-SD-200 | 42d |
| CO-R15.S09-SD-220 |  | Backfilling Works for Manholes of Storm Drainage Network-[Road 15]-[SW-9] | 7d | 2025-08-12 | 2025-08-19 | CO-R15.S09-SD-210 | 42d |
|  | CB | **Catch Basin Sections** |  | 2025-08-20 | 2025-09-25 |  |  |
| CO-R15.S09-SD-140 |  | Trench Excavation and Bedding Works for Catch Basins of Storm Drainage Network-[Road 15]-[SW-9] | 7d | 2025-08-20 | 2025-08-27 | CO-R15.S09-EW-110, ENG-SH-SD-CB-A-110, ENG-MS-SD-CB-A-110, CO-R15.S09-SD-220 | 42d |
| CO-R15.S09-SD-150 |  | Installation and Pipes Laying Connection Works for Catch Basins of Storm Drainage Network-[Road 15]-[SW-9] | 7d | 2025-08-28 | 2025-09-04 | CO-R15.S09-SD-140 | 42d |
| CO-R15.S09-SD-160 |  | Testing Works for Catch Basins of Storm Drainage Network-[Road 15]-[SW-9] | 7d | 2025-09-06 | 2025-09-13 | CO-R15.S09-SD-150, CO-R15.S09-SD-120 | 42d |
| CO-R15.S09-SD-170 |  | Trench Backfilling and Compaction Works for Catch Basins of Storm Drainage Network-[Road 15]-[SW-9] | 10d | 2025-09-14 | 2025-09-25 | CO-R15.S09-SD-160 | 42d |
|  | IR | **Irrigation Network** |  | 2025-09-27 | 2025-11-04 |  |  |
|  | ML | **Main Line Pipes** |  | 2025-09-27 | 2025-11-04 |  |  |
| CO-R15.S09-IR-100 |  | Trench Excavation and Bedding Works for Main Lines of Irrigation Network-[Road 15]-[SW-9] | 7d | 2025-09-27 | 2025-10-04 | ENG-SH-IR-ML-A-110, CO-R15.S09-EW-110, CO-R15.S09-SD-170, ENG-MS-IR-ML-A-110 | 42d |
| CO-R15.S09-IR-110 |  | Pipes Laying Works for Main Lines of Irrigation Network-[Road 15]-[SW-9] | 10d | 2025-10-05 | 2025-10-15 | CO-R15.S09-IR-100, PRO-R15-IR-DL-100 FF+3d | 42d |
| CO-R15.S09-IR-120 |  | Installation Works for Main Line Valves of Irrigation Network-[Road 15]-[SW-9] | 7d | 2025-10-16 | 2025-10-23 | CO-R15.S09-IR-110, PRO-R15-IR-DL-110 FF+3d | 42d |
| CO-R15.S09-IR-130 |  | Trench Backfilling and Compaction Works for Main Lines of Irrigation Network-[Road 15]-[SW-9] | 10d | 2025-10-25 | 2025-11-04 | CO-R15.S09-IR-120, CO-R15.S09-IR-110 | 42d |
|  | TE | **Telecom Network** |  | 2025-12-16 | 2026-08-08 |  |  |
|  | PD | **Ducts Works** |  | 2025-12-16 | 2026-08-08 |  |  |
| CO-R15.S09-TE-100 |  | Trench Excavation and Bedding Works for Ducts of Telecom Network-[Road 15]-[SW-9] | 7d | 2025-12-16 | 2025-12-23 | CO-R15.S09-IR-130, CO-R16.S12-TE-100 | 167d |
| CO-R15.S09-TE-110 |  | Pipes Laying Works for Ducts of Telecom Network-[Road 15]-[SW-9] | 7d | 2026-07-15 | 2026-07-22 | CO-R15.S09-TE-100, CO-R14.S07-TE-110 | 0d |
| CO-R15.S09-TE-120 |  | Pouring Plain Concrete Above Ducts of Telecom Network-[Road 15]-[SW-9] | 7d | 2026-07-23 | 2026-07-30 | CO-R15.S09-TE-110, CO-R14.S07-TE-120 | 0d |
| CO-R15.S09-TE-130 |  | Trench Backfilling and Compaction Works for Ducts of Telecom Network-[Road 15]-[SW-9] | 7d | 2026-08-01 | 2026-08-08 | CO-R15.S09-TE-120, CO-R14.S07-TE-130 | 0d |
|  | MH | **Manholes Works** |  | 2026-07-15 | 2026-08-08 |  |  |
| CO-R15.S09-TE-140 |  | Excavation Works for Manholes of Telecom Network-[Road 15]-[SW-9] | 7d | 2026-07-15 | 2026-07-22 | CO-R14.S07-TE-140, CO-R15.S09-TE-100 | 0d |
| CO-R15.S09-TE-150 |  | Installation Works for Manholes of Telecom Network-[Road 15]-[SW-9] | 7d | 2026-07-23 | 2026-07-30 | CO-R15.S09-TE-140, CO-R14.S07-TE-150 | 7d |
| CO-R15.S09-TE-160 |  | Backfilling Works for Manholes of Telecom Network-[Road 15]-[SW-9] | 7d | 2026-08-01 | 2026-08-08 | CO-R15.S09-TE-150, CO-R14.S07-TE-160 | 7d |
|  | MV | **Medium Voltage Network** |  | 2026-08-04 | 2026-08-31 |  |  |
|  | CW | **Cabling Works** |  | 2026-08-04 | 2026-08-31 |  |  |
| CO-R15.S09-MV-ML-250 |  | Trench Excavation and Bedding Works for Medium Voltage Network-[Road 15]-[SW-9] | 18d | 2026-08-04 | 2026-08-24 | ENG-SH-MV-A-110, CO-R15.S09-SD-170 SS+3d, CO-R15.S09-SD-170 FF+3d, CO-R15.S09-EW-110, CO-R15.S09-TE-130 SS+3d, CO-R15.S09-TE-130 FF+3d, ENG-MS-MV-A-110, CO-R15.S10-SL-160 | 0d |
| CO-R15.S09-MV-ML-260 |  | Cable Laying Works for Medium Voltage Network-[Road 15]-[SW-9] | 18d | 2026-08-08 | 2026-08-27 | CO-R15.S09-MV-ML-250 SS+3d, CO-R15.S09-MV-ML-250 FF+3d, PRO-R15-MV-DL-100 FF+3d | 0d |
| CO-R15.S09-MV-ML-270 |  | Trench Backfilling and Compaction Works for Medium Voltage Network-[Road 15]-[SW-9] | 18d | 2026-08-11 | 2026-08-31 | CO-R15.S09-MV-ML-260 SS+3d, CO-R15.S09-MV-ML-260 FF+3d | 0d |
|  | RD | **Road Works** |  | 2026-08-15 | 2026-11-08 |  |  |
|  | RD | **Pre-Bituminous Construction** |  | 2026-08-15 | 2026-10-17 |  |  |
| CO-R15.S09-RD-P-100 |  | Capping and Subgrade Layer for Road Works-[Road 15]-[SW-9] | 18d | 2026-08-15 | 2026-09-03 | ENG-SH-RD-A-100, CO-R15.S09-SD-130, CO-R15.S09-SW-130, ENG-MS-RD-A-10, CO-R15.S09-TE-130, CO-R15.S09-TE-160, CO-R15.S09-MV-ML-270 SS+3d, CO-R15.S09-MV-ML-270 FF+3d | 13d |
| CO-R15.S09-RD-P-110 |  | Aggregate Base Course Layer for Road Works-[Road 15]-[SW-9] | 18d | 2026-09-27 | 2026-10-17 | CO-R15.S09-RD-P-100 SS+3d, CO-R15.S09-RD-P-100 FF+3d, CO-R15.S09-SD-170 SS+3d, CO-R15.S09-SD-170 FF+3d, CO-R14.S07-RD-P-110 | 3d |
|  | LS | **Pavement Works** |  | 2026-09-30 | 2026-11-08 |  |  |
| CO-R15.S09-RD-P-120 |  | Fixing of Curbstone for Sidewalks Pavement-[Road 15]-[SW-9] | 18d | 2026-09-30 | 2026-10-20 | CO-R14.S07-RD-P-120, CO-R15.S09-RD-P-110 SS+3d, CO-R15.S09-RD-P-110 FF+3d | 3d |
| CO-R15.S09-RD-P-130 |  | Fixing of Interlock Tiles for Sidewalks Pavement-[Road 15]-[SW-9] | 12d | 2026-10-26 | 2026-11-08 | CO-R15.S09-RD-P-120 SS+3d, CO-R15.S09-RD-P-120 FF+3d, CO-R14.S07-RD-P-130, CO-R15-PW-TF-100, CO-R15-PW-TF-110, CO-R15-PW-TF-120, CO-R15-SW-TF-100, CO-R15-SW-TF-110, CO-R15-SW-TF-130, CO-R15-SD-TF-100, CO-R15-SL-TF-200, CO-R15-SL-TF-210, CO-R15-IR-TF-150, CO-R15-MV-TF-200 | 0d |
|  | SW_10 | **SW_10** |  | 2025-05-07 | 2026-11-08 |  |  |
|  | EW | **Earthworks** |  | 2025-05-07 | 2025-06-01 |  |  |
|  | EW | **Earthworks** |  | 2025-05-07 | 2025-06-01 |  |  |
| CO-R15.S10-EW-100 |  | Roadway Excavation Works Upto Design Level for Earthworks-[Road 15]-[SW-10] | 10d | 2025-05-07 | 2025-05-18 | ENG-MS-RD-A-10, ENG-SH-RD-A-100, CO-R15.S09-EW-200 | 11d |
| CO-R15.S10-EW-110 |  | Embankments Works Upto Design Level for Earthworks-[Road 15]-[SW-10] | 12d | 2025-05-19 | 2025-06-01 | CO-R15.S10-EW-100, ENG-MS-RD-A-10, ENG-SH-RD-A-100 | 23d |
|  | SW | **Sewage Network** |  | 2025-06-02 | 2025-08-11 |  |  |
|  | ML | **Main Line Sections** |  | 2025-06-02 | 2025-08-11 |  |  |
| CO-R15.S10-SW-100 |  | Trench Excavation and Bedding Works for Main Lines of Sewage Network-[Road 15]-[SW-10] | 12d | 2025-06-02 | 2025-06-19 | CO-R15.S10-EW-110, ENG-MS-SW-ML-A-110, ENG-SH-SW-ML-A-110 | 23d |
| CO-R15.S10-SW-120 |  | Pipes Laying Works for Main Lines of Sewage Network-[Road 15]-[SW-10] | 12d | 2025-06-21 | 2025-07-03 | PRO-R15-SW-DL-100 FF+3d, CO-R15.S10-SW-100 | 23d |
| CO-R15.S10-SW-130 |  | Trench Backfilling and Compaction Works for Main Lines of Sewage Network-[Road 15]-[SW-10] | 10d | 2025-07-31 | 2025-08-11 | CO-R15.S10-SW-120, CO-R15.S10-SW-210 FF, CO-R15.S09-SW-130 | 0d |
|  | 1 | **Manholes** |  | 2025-06-21 | 2025-07-06 |  |  |
| CO-R15.S10-SW-160 |  | Excavation Works for Main Line Manholes of Sewage Network-[Road 15]-[SW-10] | 1d | 2025-06-21 | 2025-06-21 | CO-R15.S10-SW-120 SS | 31.75d |
| CO-R15.S10-SW-170 |  | Installation RC Footing Works for Main Line Manholes of Sewage Network-[Road 15]-[SW-10] | 2.25d | 2025-06-22 | 2025-06-24 | CO-R15.S10-SW-160, PRO-R15-SW-DL-110 FF+3d | 31.75d |
| CO-R15.S10-SW-180 |  | Install Grp Liner Wall Works for Main Line Manholes of Sewage Network-[Road 15]-[SW-10] | 4d | 2025-06-24 | 2025-06-29 | CO-R15.S10-SW-170 | 31.75d |
| CO-R15.S10-SW-190 |  | Pouring Grp Liner Wall Works for Main Line Manholes of Sewage Network-[Road 15]-[SW-10] | 1d | 2025-06-29 | 2025-06-30 | CO-R15.S10-SW-180 | 31.75d |

| ID | WBS | Task | Duration | Start | Finish | Predecessors | Total float |
| --- | --- | --- | --- | --- | --- | --- | --- |
| CO-R15.S10-SW-200 |  | Backfilling Works for Main Line Manholes of Sewage Network-[Road 15]-[SW-10] | 4d | 2025-06-30 | 2025-07-05 | CO-R15.S10-SW-190 | 31.75d |
| CO-R15.S10-SW-210 |  | Testing Works for Main Line Manholes of Sewage Network-[Road 15]-[SW-10] | 1d | 2025-07-05 | 2025-07-06 | CO-R15.S10-SW-200 | 31.75d |
|  | SD | **Storm Drainage Network** |  | 2025-08-04 | 2026-02-24 |  |  |
|  | ML | **Main Line Sections** |  | 2025-08-04 | 2026-02-24 |  |  |
| CO-R15.S10-SD-100 |  | Trench Excavation and Bedding Works for Main Lines of Storm Drainage Network-[Road 15]-[SW-10] | 10d | 2025-08-04 | 2025-08-14 | CO-R15.S10-EW-110, CO-R15.S10-EW-100, CO-R15.S10-SW-130 SS+3d, CO-R15.S10-SW-130 FF+3d | 0d |
| CO-R15.S10-SD-120 |  | Pipes Laying Works for Main Lines of Storm Drainage Network-[Road 15]-[SW-10] | 15d | 2025-08-16 | 2025-09-01 | PRO-R15-SD-DL-120 FF+3d, CO-R15.S10-SD-100 | 65d |
| CO-R15.S10-SD-130 |  | Trench Backfilling and Compaction Works for Main Lines of Storm Drainage Network-[Road 15]-[SW-10] | 15d | 2026-02-08 | 2026-02-24 | CO-R15.S10-SD-120 SS+3d, CO-R15.S10-SD-120 FF+3d, CO-R14.S08-SD-130, CO-R15.S10-SD-120, CO-R15.S10-SD-220 FF | 4d |
|  | MH | **Manholes** |  | 2025-08-16 | 2025-08-31 |  |  |
| CO-R15.S10-SD-180 |  | Trench Excavation and Bedding Works for Manholes of Storm Drainage Network-[Road 15]-[SW-10] | 1d | 2025-08-16 | 2025-08-16 | CO-R15.S10-SD-120 SS, PRO-SD-1DL-100 | 82d |
| CO-R15.S10-SD-190 |  | Install RC Footing Works for Manholes of Storm Drainage Network-[Road 15]-[SW-10] | 1d | 2025-08-17 | 2025-08-17 | CO-R15.S10-SD-180 | 82d |
| CO-R15.S10-SD-200 |  | Install RC Wall Rings & Slab Works for Manholes of Storm Drainage Network-[Road 15]-[SW-10] | 4d | 2025-08-18 | 2025-08-21 | CO-R15.S10-SD-190 | 82d |
| CO-R15.S10-SD-210 |  | Testing Works for Manholes of Storm Drainage Network-[Road 15]-[SW-10] | 1d | 2025-08-23 | 2025-08-23 | CO-R15.S10-SD-200 | 82d |
| CO-R15.S10-SD-220 |  | Backfilling Works for Manholes of Storm Drainage Network-[Road 15]-[SW-10] | 7d | 2025-08-24 | 2025-08-31 | CO-R15.S10-SD-210 | 82d |
|  | CB | **Catch Basin Sections** |  | 2025-09-01 | 2025-10-02 |  |  |
| CO-R15.S10-SD-140 |  | Trench Excavation and Bedding Works for Catch Basins of Storm Drainage Network-[Road 15]-[SW-10] | 7d | 2025-09-01 | 2025-09-08 | CO-R15.S10-EW-110, CO-R15.S10-SD-220 | 82d |
| CO-R15.S10-SD-150 |  | Installation and Pipes Laying Connection Works for Catch Basins of Storm Drainage Network-[Road 15]-[SW-10] | 7d | 2025-09-09 | 2025-09-16 | CO-R15.S10-SD-140, PRO-R15-SD-DL-130 FF+3d | 82d |
| CO-R15.S10-SD-160 |  | Testing Works for Catch Basins of Storm Drainage Network-[Road 15]-[SW-10] | 4d | 2025-09-17 | 2025-09-21 | CO-R15.S10-SD-150, CO-R15.S10-SD-120, PRO-R15-SD-DL-110 FF+3d | 309d |
| CO-R15.S10-SD-170 |  | Trench Backfilling and Compaction Works for Catch Basins of Storm Drainage Network-[Road 15]-[SW-10] | 10d | 2025-09-21 | 2025-10-02 | CO-R15.S10-SD-160 SS+3d, CO-R15.S10-SD-160 FF+3d | 309d |
|  | SL | **Street Lighting Network** |  | 2025-06-02 | 2026-02-02 |  |  |
|  | LP | **Lighting Poles Works** |  | 2025-11-05 | 2026-02-02 |  |  |
| CO-R15.S10-SL-100 |  | Foundation Excavation Works for Lighting Poles of Street Lighting Network-[Road 15]-[SW-10] | 12d | 2025-11-05 | 2025-11-18 | CO-R15.S10-EW-100, CO-R15.S10-EW-110, CO-R15.S09-IR-100 SS+3d, CO-R15.S09-IR-130, ENG-MS-SL-A-110, ENG-SH-SL-A-110, PRO-SL-1DL-110 | 42d |
| CO-R15.S10-SL-110 |  | Installation Works for Lighting Poles Foundation of Street Lighting Network-[Road 15]-[SW-10] | 12d | 2025-11-19 | 2025-12-02 | CO-R15.S10-SL-100, PRO-R15-SL-DL-110 FF+3d | 42d |
| CO-R15.S10-SL-120 |  | Installation Works for Lighting Poles of Street Lighting Network-[Road 15]-[SW-10] | 17.5d | 2026-01-07 | 2026-01-27 | CO-R15.S10-SL-110, CO-R15.S10-SL-160, PRO-R15-SL-DL-120 FF+3d | 42d |
| CO-R15.S10-SL-130 |  | Installation Works for Lighting Fixtures With Drop Wire of Street Lighting Network-[Road 15]-[SW-10] | 18d | 2026-01-13 | 2026-02-02 | CO-R15.S10-SL-120 SS+5d, CO-R15.S10-SL-120 FF+5d, CO-R15.S10-SL-200 FF, PRO-R15-SL-DL-140 FF+3d | 90d |
| CO-R15.S10-SL-210 |  | Backfilling Works for Lighting Poles of Street Lighting Network-[Road 15]-[SW-10] | 12d | 2026-01-13 | 2026-01-27 | CO-R15.S10-SL-120 SS, CO-R15.S10-SL-120 FF, CO-R17.S14-SL-210 | 42d |
| CO-R15.S10-SL-200 |  | Testing Works for Lighting Poles of Street Lighting Network-[Road 15]-[SW-10] | 5d | 2026-01-27 | 2026-02-02 | CO-R15.S10-SL-210, CO-R15.S10-SL-120 | 90.5d |
|  | CW | **Cabling Works** |  | 2025-12-03 | 2026-01-06 |  |  |
| CO-R15.S10-SL-140 |  | Trench Excavation and Bedding Works for Street Lighting Network-[Road 15]-[SW-10] | 10d | 2025-12-03 | 2025-12-14 | CO-R15.S10-SL-110 | 42d |
| CO-R15.S10-SL-150 |  | Cable Laying Works for Street Lighting Network-[Road 15]-[SW-10] | 10d | 2025-12-15 | 2025-12-25 | CO-R15.S10-SL-140, PRO-R15-SL-DL-100 FF+3d | 42d |
| CO-R15.S10-SL-160 |  | Trench Backfilling and Compaction Works for Street Lighting Network-[Road 15]-[SW-10] | 10d | 2025-12-27 | 2026-01-06 | CO-R15.S10-SL-150 | 42d |
|  | DPB | **Distrubution Panel Boards** |  | 2025-06-02 | 2025-07-03 |  |  |
| CO-R15.S10-SL-170 |  | Foundation Excavation Works For Panel Boards of Street Lighting Network-[Road 15]-[SW-10] | 18d | 2025-06-02 | 2025-06-26 | CO-R15.S10-EW-110, ENG-MS-SL-A-110, ENG-SH-SL-A-110 | 355d |
| CO-R15.S10-SL-180 |  | Installation Works for Panel Board Concrete Foundations of Street Lighting Network-[Road 15]-[SW-10] | 18d | 2025-06-10 | 2025-06-30 | CO-R15.S10-SL-170 SS+3d, CO-R15.S10-SL-170 FF+3d | 355d |
| CO-R15.S10-SL-220 |  | A wall of concrete blocks to install the KWH meter of Street Lighting Network-[Road 15]-[SW-10] | 18d | 2025-06-10 | 2025-06-30 | CO-R15.S10-SL-180 SS, CO-R15.S10-SL-180 FF | 358d |
| CO-R15.S10-SL-190 |  | Installation Works for Lighting Panel Boards of Street Lighting Network-[Road 15]-[SW-10] | 18d | 2025-06-14 | 2025-07-03 | CO-R15.S10-SL-180 SS+3d, CO-R15.S10-SL-180 FF+3d | 355d |
|  | PW | **Potable Water Network** |  | 2026-02-25 | 2026-03-31 |  |  |
|  | ML | **Main Line Sections** |  | 2026-02-25 | 2026-03-31 |  |  |
| CO-R15.S10-PW-100 |  | Trench Excavation and Bedding Works for Main Lines of Potable Water Network-[Road 15]-[SW-10] | 6d | 2026-02-25 | 2026-03-03 | CO-R15.S10-EW-110, CO-R15.S10-EW-100, CO-R15.S10-SW-130, CO-R15.S10-SD-130 | 125d |
| CO-R15.S10-PW-110 |  | Pipes Laying and accessories for Main Lines of Potable Water Network-[Road 15]-[SW-10] | 6d | 2026-03-04 | 2026-03-10 | CO-R15.S10-PW-100, CO-R14.S08-PW-110 SS, PRO-R15-PW-DL-100 FF+3d, PRO-R15-PW-DL-110 FF+3d | 125d |
| CO-R15.S10-PW-130 |  | Trench Backfilling and Compaction Works for Main Lines of Potable Water Network-[Road 15]-[SW-10] | 6d | 2026-03-25 | 2026-03-31 | CO-R15.S10-PW-110, CO-R14.S08-PW-130 SS, CO-R15.S10-PW-160 FF, CO-R15.S10-PW-210 FF | 125d |
|  | VC | **Valve Chamber** |  | 2026-03-11 | 2026-03-17 |  |  |
| CO-R15.S10-PW-210 |  | Installation Works for Main Line Valves and Valve Chambers of Potable Water Network-[Road 15]-[SW-10] | 6d | 2026-03-11 | 2026-03-17 | CO-R15.S10-PW-110 | 134d |
|  | FH | **Fire Hydrant** |  | 2026-03-08 | 2026-03-31 |  |  |
| CO-R15.S10-PW-140 |  | Excavation Works for Fire Hydrants of Potable Water Network-[Road 15]-[SW-10] | 6d | 2026-03-08 | 2026-03-14 | CO-R15.S10-PW-110 SS+3d, CO-R15.S10-PW-110 FF+3d, CO-R15.S10-EW-110, CO-R15.S10-SW-130 SS+3d, CO-R15.S10-SW-130 FF+3d | 125d |
| CO-R15.S10-PW-150 |  | Installation Works for Fire Hydrant of Potable Water Network-[Road 15]-[SW-10] | 6d | 2026-03-15 | 2026-03-24 | CO-R15.S10-PW-140, PRO-R15-PW-DL-120 FF+3d | 125d |
| CO-R15.S10-PW-160 |  | Trench Backfilling and Compaction Works for Fire Hydrants of Potable Water Network-[Road 15]-[SW-10] | 6d | 2026-03-25 | 2026-03-31 | CO-R15.S10-PW-150 | 125d |
|  | TE | **Telecom Network** |  | 2026-01-05 | 2026-08-16 |  |  |
|  | PD | **Ducts Works** |  | 2026-01-05 | 2026-08-16 |  |  |
| CO-R15.S10-TE-100 |  | Trench Excavation and Bedding Works for Ducts of Telecom Network-[Road 15]-[SW-10] | 7d | 2026-01-05 | 2026-01-12 | CO-R15.S10-SL-160 SS+5d, CO-R15.S10-SL-160 FF+5d | 77d |
| CO-R15.S10-TE-110 |  | Pipes Laying Works for Ducts of Telecom Network-[Road 15]-[SW-10] | 7d | 2026-07-23 | 2026-07-30 | CO-R15.S10-TE-100, CO-R14.S08-TE-110, PRO-R15-TE-DL-100 FF+3d | 0d |
| CO-R15.S10-TE-120 |  | Pouring Plain Concrete Above Ducts of Telecom Network-[Road 15]-[SW-10] | 7d | 2026-08-01 | 2026-08-08 | CO-R15.S10-TE-110, CO-R14.S08-TE-120 | 0d |
| CO-R15.S10-TE-130 |  | Trench Backfilling and Compaction Works for Ducts of Telecom Network-[Road 15]-[SW-10] | 7d | 2026-08-09 | 2026-08-16 | CO-R15.S10-TE-120, CO-R14.S08-TE-130 | 0d |
|  | MH | **Manholes Works** |  | 2026-07-23 | 2026-08-16 |  |  |
| CO-R15.S10-TE-140 |  | Excavation Works for Manholes of Telecom Network-[Road 15]-[SW-10] | 7d | 2026-07-23 | 2026-07-30 | CO-R14.S08-TE-140, CO-R15.S09-TE-140 SS, CO-R15.S10-TE-100 SS+6d, CO-R15.S10-TE-100 FF+6d | 0d |
| CO-R15.S10-TE-150 |  | Installation Works for Manholes of Telecom Network-[Road 15]-[SW-10] | 7d | 2026-08-01 | 2026-08-08 | CO-R15.S10-TE-140, CO-R14.S08-TE-150, PRO-R15-TE-DL-110 FF+3d | 0d |
| CO-R15.S10-TE-160 |  | Backfilling Works for Manholes of Telecom Network-[Road 15]-[SW-10] | 7d | 2026-08-09 | 2026-08-16 | CO-R15.S10-TE-150, CO-R14.S08-TE-160 | 0d |
|  | RD | **Road Works** |  | 2026-08-17 | 2026-11-08 |  |  |
|  | RD | **Pre-Bituminous Construction** |  | 2026-08-17 | 2026-10-14 |  |  |
| CO-R15.S10-RD-P-100 |  | Capping and Subgrade Layer for Road Works-[Road 15]-[SW-10] | 18d | 2026-08-17 | 2026-09-06 | CO-R15.S10-SD-130, CO-R15.S10-SW-130, CO-R15.S10-PW-130, CO-R15.S10-PW-160, PRO-R15-RD-DL-100 FF+3d, CO-R15.S10-TE-130, CO-R15.S10-TE-160, CO-R15.S10-SL-160 SS+3d, CO-R15.S10-SL-160 FF+3d | 11d |
| CO-R15.S10-RD-P-110 |  | Aggregate Base Course Layer for Road Works-[Road 15]-[SW-10] | 18d | 2026-09-24 | 2026-10-14 | CO-R15.S10-RD-P-100 SS+3d, CO-R15.S10-RD-P-100 FF+3d, CO-R15.S10-SD-170 SS+3d, CO-R15.S10-SD-170 FF+3d, CO-R14.S08-RD-P-110, PRO-R15-RD-DL-110 FF+3d | 5d |
|  | LS | **Pavement Works** |  | 2026-09-28 | 2026-11-08 |  |  |
| CO-R15.S10-RD-P-120 |  | Fixing of Curbstone for Sidewalks Pavement-[Road 15]-[SW-10] | 18d | 2026-09-28 | 2026-10-18 | CO-R14.S08-RD-P-120, PRO-R15-RD-DL-130 FF+3d, CO-R15.S10-RD-P-110 SS+3d, CO-R15.S10-RD-P-110 FF+3d | 5d |
| CO-R15.S10-RD-P-130 |  | Fixing of Interlock Tiles for Sidewalks Pavement-[Road 15]-[SW-10] | 10d | 2026-10-28 | 2026-11-08 | CO-R15.S10-RD-P-120 SS+3d, CO-R15.S10-RD-P-120 FF+3d, CO-R14.S08-RD-P-130, PRO-R15-RD-DL-120 FF+3d, CO-R15-PW-TF-100, CO-R15-PW-TF-110, CO-R15-PW-TF-120, CO-R15-SW-TF-100, CO-R15-SW-TF-110, CO-R15-SW-TF-130, CO-R15-SD-TF-100, CO-R15-SD-TF-120, CO-R15-SL-TF-200, CO-R15-SL-TF-210, CO-R15-IR-TF-150, CO-R15-MV-TF-200 | 0d |
|  | 8 | **Road 16 Local 1 ( 527 LM )** |  | 2025-03-29 | 2026-11-19 |  |  |
|  | SW_13 | **SW_11** |  | 2025-03-29 | 2026-11-16 |  |  |
|  | EW | **Earthworks** |  | 2025-03-29 | 2025-04-29 |  |  |
|  | EW | **Earthworks** |  | 2025-03-29 | 2025-04-29 |  |  |
| CO-R16.S11-EW-100 |  | Roadway Excavation Works Upto Design Level for Earthworks-[Road 16]-[SW-11] | 10d | 2025-03-29 | 2025-04-13 | ENG-MS-RD-A-10, ENG-SH-RD-A-100, CO-R17.S14-EW-100 | 11d |
| CO-R16.S11-EW-110 |  | Embankments Works Upto Design Level for Earthworks-[Road 16]-[SW-11] | 12d | 2025-04-16 | 2025-04-29 | CO-R16.S11-EW-100, ENG-MS-RD-A-10, ENG-SH-RD-A-100, CO-R17.S14-EW-110 | 19d |
|  | SW | **Sewage Network** |  | 2025-05-07 | 2025-07-07 |  |  |

| ID | WBS | Task | Duration | Start | Finish | Predecessors | Total float |
| --- | --- | --- | --- | --- | --- | --- | --- |
|  | ML | **Main Line Sections** |  | 2025-05-07 | 2025-07-07 |  |  |
| CO-R16.S11-SW-100 |  | Trench Excavation and Bedding Works for Main Lines of Sewage Network-[Road 16]-[SW-11] | 12d | 2025-05-07 | 2025-05-20 | CO-R16.S11-EW-110, ENG-MS-SW-ML-A-110, ENG-SH-SW-ML-A-110, CO-R17.S14-SW-100 | 13d |
| CO-R16.S11-SW-120 |  | Pipes Laying Works for Main Lines of Sewage Network-[Road 16]-[SW-11] | 12d | 2025-05-21 | 2025-06-03 | CO-R16.S11-SW-100, PRO-R16-SW-DL-100 FF+3d | 15d |
| CO-R16.S11-SW-130 |  | Trench Backfilling and Compaction Works for Main Lines of Sewage Network-[Road 16]-[SW-11] | 10d | 2025-06-26 | 2025-07-07 | CO-R16.S11-SW-120 SS+3d, CO-R16.S11-SW-120 FF+3d, ENG-SH-SW-ML-A-110 FF, ENG-MS-SW-ML-A-110 FF, CO-R16.S11-SW-120, CO-R16.S11-SW-210 FF, CO-R17.S14-SW-130 | 0d |
|  | 1 | **Manholes** |  | 2025-05-21 | 2025-06-04 |  |  |
| CO-R16.S11-SW-160 |  | Excavation Works for Main Line Manholes of Sewage Network-[Road 16]-[SW-11] | 1d | 2025-05-21 | 2025-05-21 | CO-R16.S11-SW-120 SS, CO-R17.S14-SW-160 | 24d |
| CO-R16.S11-SW-170 |  | Installation RC Footing Works for Main Line Manholes of Sewage Network-[Road 16]-[SW-11] | 2d | 2025-05-22 | 2025-05-24 | CO-R16.S11-SW-160, PRO-R16-SW-DL-110 FF+3d | 24d |
| CO-R16.S11-SW-180 |  | Install Grp Liner Wall Works for Main Line Manholes of Sewage Network-[Road 16]-[SW-11] | 4d | 2025-05-25 | 2025-05-28 | CO-R16.S11-SW-170 | 24d |
| CO-R16.S11-SW-190 |  | Pouring Grp Liner Wall Works for Main Line Manholes of Sewage Network-[Road 16]-[SW-11] | 1d | 2025-05-29 | 2025-05-29 | CO-R16.S11-SW-180 | 24d |
| CO-R16.S11-SW-200 |  | Backfilling Works for Main Line Manholes of Sewage Network-[Road 16]-[SW-11] | 4d | 2025-05-31 | 2025-06-03 | CO-R16.S11-SW-190 | 24d |
| CO-R16.S11-SW-210 |  | Testing Works for Main Line Manholes of Sewage Network-[Road 16]-[SW-11] | 1d | 2025-06-04 | 2025-06-04 | CO-R16.S11-SW-200 | 24d |
|  | SD | **Storm Drainage Network** |  | 2025-06-30 | 2026-03-09 |  |  |
|  | ML | **Main Line Sections** |  | 2025-06-30 | 2026-03-09 |  |  |
| CO-R16.S11-SD-100 |  | Trench Excavation and Bedding Works for Main Lines of Storm Drainage Network-[Road 16]-[SW-11] | 10d | 2025-06-30 | 2025-07-10 | ENG-SH-SD-ML-A-110, CO-R16.S11-EW-110, CO-R16.S11-EW-100, CO-R16.S11-SW-130 SS+3d, CO-R16.S11-SW-130 FF+3d, ENG-MS-SD-ML-A-110 | 213d |
| CO-R16.S11-SD-120 |  | Pipes Laying Works for Main Lines of Storm Drainage Network-[Road 16]-[SW-11] | 15d | 2025-07-12 | 2025-07-28 | CO-R16.S11-SD-100 | 213d |
| CO-R16.S11-SD-130 |  | Trench Backfilling and Compaction Works for Main Lines of Storm Drainage Network-[Road 16]-[SW-11] | 15d | 2026-02-21 | 2026-03-09 | CO-R16.S11-SD-120 SS+3d, CO-R16.S11-SD-120 FF+3d, ENG-SH-SD-ML-A-110 FF, CO-R15.S09-SD-130, ENG-MS-SD-ML-A-110 FF, CO-R16.S11-SD-120, CO-R16.S11-SD-220 FF | 147d |
|  | MH | **Manholes** |  | 2025-07-12 | 2025-07-27 |  |  |
| CO-R16.S11-SD-180 |  | Trench Excavation and Bedding Works for Manholes of Storm Drainage Network-[Road 16]-[SW-11] | 1d | 2025-07-12 | 2025-07-12 | CO-R16.S11-SD-120 SS, PRO-SD-1DL-100 | 213d |
| CO-R16.S11-SD-190 |  | Install RC Footing Works for Manholes of Storm Drainage Network-[Road 16]-[SW-11] | 1d | 2025-07-13 | 2025-07-13 | CO-R16.S11-SD-180 | 213d |
| CO-R16.S11-SD-200 |  | Install RC Wall Rings & Slab Works for Manholes of Storm Drainage Network-[Road 16]-[SW-11] | 4d | 2025-07-14 | 2025-07-17 | CO-R16.S11-SD-190 | 213d |
| CO-R16.S11-SD-210 |  | Testing Works for Manholes of Storm Drainage Network-[Road 16]-[SW-11] | 1d | 2025-07-19 | 2025-07-19 | CO-R16.S11-SD-200 | 213d |
| CO-R16.S11-SD-220 |  | Backfilling Works for Manholes of Storm Drainage Network-[Road 16]-[SW-11] | 7d | 2025-07-20 | 2025-07-27 | CO-R16.S11-SD-210 | 213d |
|  | CB | **Catch Basin Sections** |  | 2025-07-28 | 2025-08-28 |  |  |
| CO-R16.S11-SD-140 |  | Trench Excavation and Bedding Works for Catch Basins of Storm Drainage Network-[Road 16]-[SW-11] | 7d | 2025-07-28 | 2025-08-04 | CO-R16.S11-EW-110, ENG-SH-SD-CB-A-110, ENG-MS-SD-CB-A-110, CO-R16.S11-SD-220 | 213d |
| CO-R16.S11-SD-150 |  | Installation and Pipes Laying Connection Works for Catch Basins of Storm Drainage Network-[Road 16]-[SW-11] | 7d | 2025-08-05 | 2025-08-12 | CO-R16.S11-SD-140, CO-R17.S14-SD-150 | 213d |
| CO-R16.S11-SD-160 |  | Testing Works for Catch Basins of Storm Drainage Network-[Road 16]-[SW-11] | 4d | 2025-08-13 | 2025-08-17 | CO-R16.S11-SD-150, CO-R16.S11-SD-120 | 213d |
| CO-R16.S11-SD-170 |  | Trench Backfilling and Compaction Works for Catch Basins of Storm Drainage Network-[Road 16]-[SW-11] | 10d | 2025-08-18 | 2025-08-28 | CO-R16.S11-SD-160 | 213d |
|  | IR | **Irrigation Network** |  | 2025-08-30 | 2025-10-08 |  |  |
|  | ML | **Main Line Pipes** |  | 2025-08-30 | 2025-10-08 |  |  |
| CO-R16.S11-IR-100 |  | Trench Excavation and Bedding Works for Main Lines of Irrigation Network-[Road 16]-[SW-11] | 7d | 2025-08-30 | 2025-09-06 | ENG-SH-IR-ML-A-110, CO-R16.S11-EW-110, CO-R16.S11-SD-170, ENG-MS-IR-ML-A-110 | 213d |
| CO-R16.S11-IR-110 |  | Pipes Laying Works for Main Lines of Irrigation Network-[Road 16]-[SW-11] | 10d | 2025-09-07 | 2025-09-17 | CO-R16.S11-IR-100, PRO-R16-IR-DL-100 FF+3d | 213d |
| CO-R16.S11-IR-120 |  | Installation Works for Main Line Valves of Irrigation Network-[Road 16]-[SW-11] | 7d | 2025-09-18 | 2025-09-27 | CO-R16.S11-IR-110, PRO-R16-IR-DL-110 FF+3d | 213d |
| CO-R16.S11-IR-130 |  | Trench Backfilling and Compaction Works for Main Lines of Irrigation Network-[Road 16]-[SW-11] | 10d | 2025-09-28 | 2025-10-08 | CO-R16.S11-IR-120, CO-R16.S11-IR-110 | 213d |
|  | TE | **Telecom Network** |  | 2025-11-24 | 2026-08-16 |  |  |
|  | PD | **Ducts Works** |  | 2025-11-24 | 2026-08-16 |  |  |
| CO-R16.S11-TE-100 |  | Trench Excavation and Bedding Works for Ducts of Telecom Network-[Road 16]-[SW-11] | 12d | 2025-11-24 | 2025-12-07 | CO-R16.S11-IR-130 SS+3d, CO-R16.S11-IR-130 FF+3d, CO-R17.S14-TE-100 | 167d |
| CO-R16.S11-TE-110 |  | Pipes Laying Works for Ducts of Telecom Network-[Road 16]-[SW-11] | 7d | 2026-07-23 | 2026-07-30 | CO-R16.S11-TE-100, CO-R15.S09-TE-110 | 7d |
| CO-R16.S11-TE-120 |  | Pouring Plain Concrete Above Ducts of Telecom Network-[Road 16]-[SW-11] | 7d | 2026-08-01 | 2026-08-08 | CO-R16.S11-TE-110, CO-R15.S09-TE-120 | 7d |
| CO-R16.S11-TE-130 |  | Trench Backfilling and Compaction Works for Ducts of Telecom Network-[Road 16]-[SW-11] | 7d | 2026-08-09 | 2026-08-16 | CO-R16.S11-TE-120, CO-R15.S09-TE-130 | 7d |
|  | MH | **Manholes Works** |  | 2026-07-23 | 2026-08-16 |  |  |
| CO-R16.S11-TE-140 |  | Excavation Works for Manholes of Telecom Network-[Road 16]-[SW-11] | 7d | 2026-07-23 | 2026-07-30 | CO-R15.S09-TE-140, CO-R16.S11-TE-100 | 0d |
| CO-R16.S11-TE-150 |  | Installation Works for Manholes of Telecom Network-[Road 16]-[SW-11] | 7d | 2026-08-01 | 2026-08-08 | CO-R16.S11-TE-140, CO-R15.S09-TE-150 | 7d |
| CO-R16.S11-TE-160 |  | Backfilling Works for Manholes of Telecom Network-[Road 16]-[SW-11] | 7d | 2026-08-09 | 2026-08-16 | CO-R16.S11-TE-150, CO-R15.S09-TE-160 | 7d |
|  | MV | **Medium Voltage Network** |  | 2026-08-25 | 2026-09-21 |  |  |
|  | CW | **Cabling Works** |  | 2026-08-25 | 2026-09-21 |  |  |
| CO-R16.S11-MV-ML-280 |  | Trench Excavation and Bedding Works for Medium Voltage Network-[Road 16]-[SW-11] | 18d | 2026-08-25 | 2026-09-14 | ENG-SH-MV-A-110, CO-R16.S11-SD-170 SS+3d, CO-R16.S11-SD-170 FF+3d, CO-R16.S11-EW-110, CO-R16.S11-TE-130 SS+3d, CO-R16.S11-TE-130 FF+3d, CO-R15.S09-MV-ML-250, ENG-MS-MV-A-110 | 0d |
| CO-R16.S11-MV-ML-290 |  | Cable Laying Works for Medium Voltage Network-[Road 16]-[SW-11] | 18d | 2026-08-29 | 2026-09-17 | CO-R16.S11-MV-ML-280 SS+3d, CO-R16.S11-MV-ML-280 FF+3d, CO-R15.S09-MV-ML-260, PRO-R16-MV-DL-100 FF+3d | 0d |
| CO-R16.S11-MV-ML-300 |  | Trench Backfilling and Compaction Works for Medium Voltage Network-[Road 16]-[SW-11] | 18d | 2026-09-01 | 2026-09-21 | CO-R16.S11-MV-ML-290 SS+3d, CO-R16.S11-MV-ML-290 FF+3d, CO-R15.S09-MV-ML-270 | 0d |
|  | RD | **Road Works** |  | 2026-09-05 | 2026-11-16 |  |  |
|  | RD | **Pre-Bituminous Construction** |  | 2026-09-05 | 2026-11-07 |  |  |
| CO-R16.S11-RD-P-100 |  | Capping and Subgrade Layer for Road Works-[Road 16]-[SW-11] | 18d | 2026-09-05 | 2026-09-26 | ENG-SH-RD-A-100, CO-R16.S11-SD-130, CO-R16.S11-SW-130, ENG-MS-RD-A-10, CO-R16.S11-TE-130, CO-R16.S11-TE-160, CO-R16.S11-MV-ML-300 SS+3d, CO-R16.S11-MV-ML-300 FF+3d | 7d |
| CO-R16.S11-RD-P-110 |  | Aggregate Base Course Layer for Road Works-[Road 16]-[SW-11] | 18d | 2026-10-18 | 2026-11-07 | CO-R16.S11-RD-P-100 SS+3d, CO-R16.S11-RD-P-100 FF+3d, CO-R16.S11-SD-170 SS+3d, CO-R16.S11-SD-170 FF+3d, CO-R15.S09-RD-P-110 | 3d |
|  | LS | **Pavement Works** |  | 2026-10-21 | 2026-11-16 |  |  |
| CO-R16.S11-RD-P-120 |  | Fixing of Curbstone for Sidewalks Pavement-[Road 16]-[SW-11] | 18d | 2026-10-21 | 2026-11-10 | CO-R15.S09-RD-P-120, CO-R16.S11-RD-P-110 SS+3d, CO-R16.S11-RD-P-110 FF+3d | 3d |
| CO-R16.S11-RD-P-130 |  | Fixing of Interlock Tiles for Sidewalks Pavement-[Road 16]-[SW-11] | 10d | 2026-11-05 | 2026-11-16 | CO-R16.S11-RD-P-120 SS+3d, CO-R16.S11-RD-P-120 FF+3d, CO-R15.S09-RD-P-130 SS, CO-R16-PW-TF-100, CO-R16-PW-TF-110, CO-R16-PW-TF-120, CO-R16-SW-TF-100, CO-R16-SW-TF-110, CO-R16-SW-TF-130, CO-R16-SD-TF-100, CO-R16-SL-TF-220, CO-R16-SL-TF-230 SS, CO-R16-IR-TF-160, CO-R16-MV-TF-220 | 3d |
|  | SW_14 | **SW_12** |  | 2025-04-14 | 2026-11-19 |  |  |
|  | EW | **Earthworks** |  | 2025-04-14 | 2025-05-08 |  |  |
|  | EW | **Earthworks** |  | 2025-04-14 | 2025-05-08 |  |  |
| CO-R16.S12-EW-100 |  | Roadway Excavation Works Upto Design Level for Earthworks-[Road 16]-[SW-12] | 10d | 2025-04-14 | 2025-04-24 | ENG-MS-RD-A-10, ENG-SH-RD-A-100, CO-R16.S11-EW-100 | 11d |
| CO-R16.S12-EW-110 |  | Embankments Works Upto Design Level for Earthworks-[Road 16]-[SW-12] | 12d | 2025-04-26 | 2025-05-08 | CO-R16.S12-EW-100, ENG-MS-RD-A-10, ENG-SH-RD-A-100 | 23d |
|  | SW | **Sewage Network** |  | 2025-05-21 | 2025-07-19 |  |  |
|  | ML | **Main Line Sections** |  | 2025-05-21 | 2025-07-19 |  |  |
| CO-R16.S12-SW-100 |  | Trench Excavation and Bedding Works for Main Lines of Sewage Network-[Road 16]-[SW-12] | 12d | 2025-05-21 | 2025-06-03 | CO-R16.S12-EW-110, ENG-MS-SW-ML-A-110, ENG-SH-SW-ML-A-110, CO-R16.S11-SW-100 | 13d |
| CO-R16.S12-SW-120 |  | Pipes Laying Works for Main Lines of Sewage Network-[Road 16]-[SW-12] | 12d | 2025-06-04 | 2025-06-22 | PRO-R16-SW-DL-100 FF+3d, CO-R16.S12-SW-100 | 13d |
| CO-R16.S12-SW-130 |  | Trench Backfilling and Compaction Works for Main Lines of Sewage Network-[Road 16]-[SW-12] | 10d | 2025-07-08 | 2025-07-19 | CO-R16.S12-SW-120, CO-R16.S12-SW-210 FF, CO-R16.S11-SW-130 | 0d |
|  | 1 | **Manholes** |  | 2025-06-04 | 2025-06-23 |  |  |
| CO-R16.S12-SW-160 |  | Excavation Works for Main Line Manholes of Sewage Network-[Road 16]-[SW-12] | 1d | 2025-06-04 | 2025-06-04 | CO-R16.S12-SW-120 SS | 22d |
| CO-R16.S12-SW-170 |  | Installation RC Footing Works for Main Line Manholes of Sewage Network-[Road 16]-[SW-12] | 2d | 2025-06-10 | 2025-06-11 | CO-R16.S12-SW-160, PRO-R16-SW-DL-110 FF+3d | 22d |
| CO-R16.S12-SW-180 |  | Install Grp Liner Wall Works for Main Line Manholes of Sewage Network-[Road 16]-[SW-12] | 4d | 2025-06-12 | 2025-06-16 | CO-R16.S12-SW-170 | 22d |
| CO-R16.S12-SW-190 |  | Pouring Grp Liner Wall Works for Main Line Manholes of Sewage Network-[Road 16]-[SW-12] | 1d | 2025-06-17 | 2025-06-17 | CO-R16.S12-SW-180 | 22d |

| ID | WBS | Task | Duration | Start | Finish | Predecessors | Total float |
| --- | --- | --- | --- | --- | --- | --- | --- |
| CO-R16.S12-SW-200 |  | Backfilling Works for Main Line Manholes of Sewage Network-[Road 16]-[SW-12] | 4d | 2025-06-18 | 2025-06-22 | CO-R16.S12-SW-190 | 22d |
| CO-R16.S12-SW-210 |  | Testing Works for Main Line Manholes of Sewage Network-[Road 16]-[SW-12] | 1d | 2025-06-23 | 2025-06-23 | CO-R16.S12-SW-200 | 22d |
|  | SD | **Storm Drainage Network** |  | 2025-07-12 | 2026-03-14 |  |  |
|  | ML | **Main Line Sections** |  | 2025-07-12 | 2026-03-14 |  |  |
| CO-R16.S12-SD-100 |  | Trench Excavation and Bedding Works for Main Lines of Storm Drainage Network-[Road 16]-[SW-12] | 10d | 2025-07-12 | 2025-07-22 | CO-R16.S12-EW-110, CO-R16.S12-EW-100, CO-R16.S12-SW-130 SS+3d, CO-R16.S12-SW-130 FF+3d | 174d |
| CO-R16.S12-SD-120 |  | Pipes Laying Works for Main Lines of Storm Drainage Network-[Road 16]-[SW-12] | 15d | 2025-07-23 | 2025-08-09 | PRO-R16-SD-DL-120 FF+3d, CO-R16.S12-SD-100 | 174d |
| CO-R16.S12-SD-130 |  | Trench Backfilling and Compaction Works for Main Lines of Storm Drainage Network-[Road 16]-[SW-12] | 15d | 2026-02-25 | 2026-03-14 | CO-R16.S12-SD-120 SS+3d, CO-R16.S12-SD-120 FF+3d, CO-R15.S10-SD-130, CO-R16.S12-SD-120, CO-R16.S12-SD-220 FF | 4d |
|  | MH | **Manholes** |  | 2025-07-23 | 2025-08-07 |  |  |
| CO-R16.S12-SD-180 |  | Trench Excavation and Bedding Works for Manholes of Storm Drainage Network-[Road 16]-[SW-12] | 1d | 2025-07-23 | 2025-07-23 | CO-R16.S12-SD-120 SS, PRO-SD-1DL-100 | 190d |
| CO-R16.S12-SD-190 |  | Install RC Footing Works for Manholes of Storm Drainage Network-[Road 16]-[SW-12] | 1d | 2025-07-24 | 2025-07-24 | CO-R16.S12-SD-180 | 190d |
| CO-R16.S12-SD-200 |  | Install RC Wall Rings & Slab Works for Manholes of Storm Drainage Network-[Road 16]-[SW-12] | 4d | 2025-07-26 | 2025-07-29 | CO-R16.S12-SD-190 | 190d |
| CO-R16.S12-SD-210 |  | Testing Works for Manholes of Storm Drainage Network-[Road 16]-[SW-12] | 1d | 2025-07-30 | 2025-07-30 | CO-R16.S12-SD-200 | 190d |
| CO-R16.S12-SD-220 |  | Backfilling Works for Manholes of Storm Drainage Network-[Road 16]-[SW-12] | 7d | 2025-07-31 | 2025-08-07 | CO-R16.S12-SD-210 | 190d |
|  | CB | **Catch Basin Sections** |  | 2025-08-09 | 2025-09-09 |  |  |
| CO-R16.S12-SD-140 |  | Trench Excavation and Bedding Works for Catch Basins of Storm Drainage Network-[Road 16]-[SW-12] | 7d | 2025-08-09 | 2025-08-16 | CO-R16.S12-EW-110, CO-R16.S12-SD-220 | 346d |
| CO-R16.S12-SD-150 |  | Installation and Pipes Laying Connection Works for Catch Basins of Storm Drainage Network-[Road 16]-[SW-12] | 7d | 2025-08-17 | 2025-08-24 | CO-R16.S12-SD-140, PRO-R16-SD-DL-130 FF+3d | 346d |
| CO-R16.S12-SD-160 |  | Testing Works for Catch Basins of Storm Drainage Network-[Road 16]-[SW-12] | 4d | 2025-08-25 | 2025-08-28 | CO-R16.S12-SD-150, CO-R16.S12-SD-120, PRO-R16-SD-DL-110 FF+3d | 346d |
| CO-R16.S12-SD-170 |  | Trench Backfilling and Compaction Works for Catch Basins of Storm Drainage Network-[Road 16]-[SW-12] | 10d | 2025-08-30 | 2025-09-09 | CO-R16.S12-SD-160 | 346d |
|  | PW | **Potable Water Network** |  | 2026-03-15 | 2026-04-18 |  |  |
|  | ML | **Main Line Sections** |  | 2026-03-15 | 2026-04-07 |  |  |
| CO-R16.S12-PW-100 |  | Trench Excavation and Bedding Works for Main Lines of Potable Water Network-[Road 16]-[SW-12] | 6d | 2026-03-15 | 2026-03-24 | CO-R16.S12-EW-110, CO-R16.S12-EW-100, CO-R16.S12-SW-130, CO-R16.S12-SD-130 | 122d |
| CO-R16.S12-PW-110 |  | Pipes Laying and accessories for Main Lines of Potable Water Network-[Road 16]-[SW-12] | 6d | 2026-03-25 | 2026-03-31 | CO-R16.S12-PW-100, CO-R15.S10-PW-110, PRO-R16-PW-DL-100 FF+3d, PRO-R16-PW-DL-110 FF+3d | 122d |
| CO-R16.S12-PW-130 |  | Trench Backfilling and Compaction Works for Main Lines of Potable Water Network-[Road 16]-[SW-12] | 5.75d | 2026-04-01 | 2026-04-07 | CO-R16.S12-PW-110, CO-R15.S10-PW-130, CO-R16.S12-PW-210 FF | 131d |
|  | VC | **Valve Chamber** |  | 2026-04-01 | 2026-04-07 |  |  |
| CO-R16.S12-PW-210 |  | Installation Works for Main Line Valves and Valve Chambers of Potable Water Network-[Road 16]-[SW-12] | 6d | 2026-04-01 | 2026-04-07 | CO-R16.S12-PW-110 | 131d |
|  | FH | **Fire Hydrant** |  | 2026-03-29 | 2026-04-18 |  |  |
| CO-R16.S12-PW-140 |  | Excavation Works for Fire Hydrants of Potable Water Network-[Road 16]-[SW-12] | 6d | 2026-03-29 | 2026-04-04 | CO-R16.S12-PW-110 SS+3d, CO-R16.S12-PW-110 FF+3d, CO-R16.S12-EW-110, CO-R16.S12-SW-130 SS+3d, CO-R16.S12-SW-130 FF+3d | 122d |
| CO-R16.S12-PW-150 |  | Installation Works for Fire Hydrant of Potable Water Network-[Road 16]-[SW-12] | 6d | 2026-04-05 | 2026-04-11 | CO-R16.S12-PW-140, CO-R15.S10-PW-150, PRO-R16-PW-DL-120 FF+3d | 122d |
| CO-R16.S12-PW-160 |  | Trench Backfilling and Compaction Works for Fire Hydrants of Potable Water Network-[Road 16]-[SW-12] | 6d | 2026-04-12 | 2026-04-18 | CO-R16.S12-PW-150, CO-R15.S10-PW-160 | 122d |
|  | TE | **Telecom Network** |  | 2025-12-08 | 2026-08-24 |  |  |
|  | PD | **Ducts Works** |  | 2025-12-08 | 2026-08-24 |  |  |
| CO-R16.S12-TE-100 |  | Trench Excavation and Bedding Works for Ducts of Telecom Network-[Road 16]-[SW-12] | 7d | 2025-12-08 | 2025-12-15 | CO-R16.S11-TE-100 | 167d |
| CO-R16.S12-TE-110 |  | Pipes Laying Works for Ducts of Telecom Network-[Road 16]-[SW-12] | 7d | 2026-08-01 | 2026-08-08 | CO-R16.S12-TE-100, CO-R15.S10-TE-110, PRO-R16-TE-DL-100 FF+3d | 0d |
| CO-R16.S12-TE-120 |  | Pouring Plain Concrete Above Ducts of Telecom Network-[Road 16]-[SW-12] | 7d | 2026-08-09 | 2026-08-16 | CO-R16.S12-TE-110, CO-R15.S10-TE-120 | 0d |
| CO-R16.S12-TE-130 |  | Trench Backfilling and Compaction Works for Ducts of Telecom Network-[Road 16]-[SW-12] | 7d | 2026-08-17 | 2026-08-24 | CO-R16.S12-TE-120, CO-R15.S10-TE-130 | 0d |
|  | MH | **Manholes Works** |  | 2026-08-01 | 2026-08-24 |  |  |
| CO-R16.S12-TE-140 |  | Excavation Works for Manholes of Telecom Network-[Road 16]-[SW-12] | 7d | 2026-08-01 | 2026-08-08 | CO-R15.S10-TE-140, CO-R16.S11-TE-140, CO-R16.S12-TE-100 | 0d |
| CO-R16.S12-TE-150 |  | Installation Works for Manholes of Telecom Network-[Road 16]-[SW-12] | 7d | 2026-08-09 | 2026-08-16 | CO-R16.S12-TE-140, CO-R15.S10-TE-150, PRO-R16-TE-DL-110 FF+3d | 0d |
| CO-R16.S12-TE-160 |  | Backfilling Works for Manholes of Telecom Network-[Road 16]-[SW-12] | 7d | 2026-08-17 | 2026-08-24 | CO-R16.S12-TE-150, CO-R15.S10-TE-160 | 0d |
|  | RD | **Road Works** |  | 2026-08-25 | 2026-11-19 |  |  |
|  | RD | **Pre-Bituminous Construction** |  | 2026-08-25 | 2026-11-04 |  |  |
| CO-R16.S12-RD-P-100 |  | Capping and Subgrade Layer for Road Works-[Road 16]-[SW-12] | 18d | 2026-08-25 | 2026-09-14 | CO-R16.S12-SD-130, CO-R16.S12-SW-130, CO-R16.S12-PW-130, CO-R16.S12-PW-160, PRO-R16-RD-DL-100 FF+3d, CO-R16.S12-TE-130, CO-R16.S12-TE-160 | 16d |
| CO-R16.S12-RD-P-110 |  | Aggregate Base Course Layer for Road Works-[Road 16]-[SW-12] | 18d | 2026-10-15 | 2026-11-04 | CO-R16.S12-RD-P-100 SS+3d, CO-R16.S12-RD-P-100 FF+3d, CO-R16.S12-SD-170 SS+3d, CO-R16.S12-SD-170 FF+3d, CO-R15.S10-RD-P-110, PRO-R16-RD-DL-110 FF+3d | 5d |
|  | LS | **Pavement Works** |  | 2026-10-19 | 2026-11-19 |  |  |
| CO-R16.S12-RD-P-120 |  | Fixing of Curbstone for Sidewalks Pavement-[Road 16]-[SW-12] | 18d | 2026-10-19 | 2026-11-08 | CO-R15.S10-RD-P-120, PRO-R16-RD-DL-130 FF+3d, CO-R16.S12-RD-P-110 SS+3d, CO-R16.S12-RD-P-110 FF+3d | 5d |
| CO-R16.S12-RD-P-130 |  | Fixing of Interlock Tiles for Sidewalks Pavement-[Road 16]-[SW-12] | 10d | 2026-11-09 | 2026-11-19 | CO-R16.S12-RD-P-120 SS+3d, CO-R16.S12-RD-P-120 FF+3d, CO-R15.S10-RD-P-130, PRO-R16-RD-DL-120 FF+3d, CO-R16-PW-TF-100, CO-R16-PW-TF-110, CO-R16-PW-TF-120, CO-R16-SW-TF-100, CO-R16-SW-TF-110, CO-R16-SW-TF-130, CO-R16-SD-TF-100, CO-R16-SD-TF-120, CO-R16-SL-TF-220, CO-R16-SL-TF-230, CO-R16-IR-TF-160, CO-R16-MV-TF-220 | 0d |
|  | 9 | **Road 17 Local 1 ( 500 LM )** |  | 2025-03-05 | 2026-12-01 |  |  |
|  | SW_15 | **SW_13** |  | 2025-03-05 | 2026-11-30 |  |  |
|  | EW | **Earthworks** |  | 2025-03-05 | 2025-04-03 |  |  |
|  | EW | **Earthworks** |  | 2025-03-05 | 2025-04-03 |  |  |
| CO-R17.S13-EW-100 |  | Roadway Excavation Works Upto Design Level for Earthworks-[Road 17]-[SW-13] | 10d | 2025-03-05 | 2025-03-16 | ENG-MS-RD-A-10, ENG-SH-RD-A-100, CO-R18.S16-EW-120 | 11d |
| CO-R17.S13-EW-110 |  | Embankments Works Upto Design Level for Earthworks-[Road 17]-[SW-13] | 12d | 2025-03-17 | 2025-04-03 | CO-R17.S13-EW-100, ENG-MS-RD-A-10, ENG-SH-RD-A-100 | 17d |
|  | SW | **Sewage Network** |  | 2025-04-09 | 2025-06-14 |  |  |
|  | ML | **Main Line Sections** |  | 2025-04-09 | 2025-06-14 |  |  |
| CO-R17.S13-SW-100 |  | Trench Excavation and Bedding Works for Main Lines of Sewage Network-[Road 17]-[SW-13] | 12d | 2025-04-09 | 2025-04-22 | CO-R17.S13-EW-110, ENG-MS-SW-ML-A-110, ENG-SH-SW-ML-A-110, CO-R18.S16-SW-220 | 13d |
| CO-R17.S13-SW-120 |  | Pipes Laying Works for Main Lines of Sewage Network-[Road 17]-[SW-13] | 12d | 2025-04-30 | 2025-05-13 | CO-R17.S13-SW-100, PRO-R17-SW-DL-100 FF+3d | 13d |
| CO-R17.S13-SW-130 |  | Trench Backfilling and Compaction Works for Main Lines of Sewage Network-[Road 17]-[SW-13] | 10d | 2025-05-29 | 2025-06-14 | ENG-SH-SW-ML-A-110 FF, ENG-MS-SW-ML-A-110 FF, CO-R17.S13-SW-120, CO-R17.S13-SW-210 FF, CO-R18.S16-SW-240 | 0d |
|  | 1 | **Manholes** |  | 2025-04-30 | 2025-05-15 |  |  |
| CO-R17.S13-SW-160 |  | Excavation Works for Main Line Manholes of Sewage Network-[Road 17]-[SW-13] | 1d | 2025-04-30 | 2025-04-30 | CO-R17.S13-SW-120 SS | 21.75d |
| CO-R17.S13-SW-170 |  | Installation RC Footing Works for Main Line Manholes of Sewage Network-[Road 17]-[SW-13] | 2.25d | 2025-05-01 | 2025-05-04 | CO-R17.S13-SW-160, PRO-R17-SW-DL-110 FF+3d | 21.75d |
| CO-R17.S13-SW-180 |  | Install Grp Liner Wall Works for Main Line Manholes of Sewage Network-[Road 17]-[SW-13] | 4d | 2025-05-04 | 2025-05-08 | CO-R17.S13-SW-170 | 21.75d |
| CO-R17.S13-SW-190 |  | Pouring Grp Liner Wall Works for Main Line Manholes of Sewage Network-[Road 17]-[SW-13] | 1d | 2025-05-08 | 2025-05-10 | CO-R17.S13-SW-180 | 21.75d |
| CO-R17.S13-SW-200 |  | Backfilling Works for Main Line Manholes of Sewage Network-[Road 17]-[SW-13] | 4d | 2025-05-10 | 2025-05-14 | CO-R17.S13-SW-190 | 21.75d |
| CO-R17.S13-SW-210 |  | Testing Works for Main Line Manholes of Sewage Network-[Road 17]-[SW-13] | 1d | 2025-05-14 | 2025-05-15 | CO-R17.S13-SW-200 | 21.75d |
|  | SD | **Storm Drainage Network** |  | 2025-06-02 | 2026-04-05 |  |  |
|  | ML | **Main Line Sections** |  | 2025-06-02 | 2026-04-05 |  |  |
| CO-R17.S13-SD-100 |  | Trench Excavation and Bedding Works for Main Lines of Storm Drainage Network-[Road 17]-[SW-13] | 10d | 2025-06-02 | 2025-06-17 | ENG-SH-SD-ML-A-110, CO-R17.S13-EW-110, CO-R17.S13-EW-100, CO-R17.S13-SW-130 SS+3d, CO-R17.S13-SW-130 FF+3d, ENG-MS-SD-ML-A-110 | 74d |
| CO-R17.S13-SD-120 |  | Pipes Laying Works for Main Lines of Storm Drainage Network-[Road 17]-[SW-13] | 20d | 2025-06-18 | 2025-07-10 | CO-R17.S13-SD-100 | 74d |
| CO-R17.S13-SD-130 |  | Trench Backfilling and Compaction Works for Main Lines of Storm Drainage Network-[Road 17]-[SW-13] | 20d | 2026-03-10 | 2026-04-05 | CO-R17.S13-SD-120 SS+3d, CO-R17.S13-SD-120 FF+3d, ENG-SH-SD-ML-A-110 FF, CO-R16.S11-SD-130, ENG-MS-SD-ML-A-110 FF, CO-R17.S13-SD-120, CO-R17.S13-SD-220 FF | 147d |
|  | MH | **Manholes** |  | 2025-06-18 | 2025-07-03 |  |  |

| ID | WBS | Task | Duration | Start | Finish | Predecessors | Total float |
| --- | --- | --- | --- | --- | --- | --- | --- |
| CO-R17.S13-SD-180 |  | Trench Excavation and Bedding Works for Manholes of Storm Drainage Network-[Road 17]-[SW-13] | 1d | 2025-06-18 | 2025-06-18 | CO-R17.S13-SD-120 SS, PRO-SD-1DL-100 | 74d |
| CO-R17.S13-SD-190 |  | Install RC Footing Works for Manholes of Storm Drainage Network-[Road 17]-[SW-13] | 1d | 2025-06-19 | 2025-06-19 | CO-R17.S13-SD-180 | 74d |
| CO-R17.S13-SD-200 |  | Install RC Wall Rings & Slab Works for Manholes of Storm Drainage Network-[Road 17]-[SW-13] | 4d | 2025-06-21 | 2025-06-24 | CO-R17.S13-SD-190 | 74d |
| CO-R17.S13-SD-210 |  | Testing Works for Manholes of Storm Drainage Network-[Road 17]-[SW-13] | 1d | 2025-06-25 | 2025-06-25 | CO-R17.S13-SD-200 | 74d |
| CO-R17.S13-SD-220 |  | Backfilling Works for Manholes of Storm Drainage Network-[Road 17]-[SW-13] | 7d | 2025-06-26 | 2025-07-03 | CO-R17.S13-SD-210 | 74d |
|  | CB | **Catch Basin Sections** |  | 2025-07-05 | 2025-08-06 |  |  |
| CO-R17.S13-SD-140 |  | Trench Excavation and Bedding Works for Catch Basins of Storm Drainage Network-[Road 17]-[SW-13] | 7d | 2025-07-05 | 2025-07-12 | CO-R17.S13-EW-110, ENG-SH-SD-CB-A-110, ENG-MS-SD-CB-A-110, CO-R17.S13-SD-220 | 74d |
| CO-R17.S13-SD-150 |  | Installation and Pipes Laying Connection Works for Catch Basins of Storm Drainage Network-[Road 17]-[SW-13] | 7d | 2025-07-14 | 2025-07-21 | CO-R17.S13-SD-140, CO-R18.S16-SD-270 | 73d |
| CO-R17.S13-SD-160 |  | Testing Works for Catch Basins of Storm Drainage Network-[Road 17]-[SW-13] | 7d | 2025-07-22 | 2025-07-29 | CO-R17.S13-SD-150, CO-R17.S13-SD-120 | 73d |
| CO-R17.S13-SD-170 |  | Trench Backfilling and Compaction Works for Catch Basins of Storm Drainage Network-[Road 17]-[SW-13] | 7d | 2025-07-30 | 2025-08-06 | CO-R17.S13-SD-160 | 73d |
|  | IR | **Irrigation Network** |  | 2025-08-07 | 2025-09-14 |  |  |
|  | ML | **Main Line Pipes** |  | 2025-08-07 | 2025-09-14 |  |  |
| CO-R17.S13-IR-100 |  | Trench Excavation and Bedding Works for Main Lines of Irrigation Network-[Road 17]-[SW-13] | 7d | 2025-08-07 | 2025-08-14 | ENG-SH-IR-ML-A-110, CO-R17.S13-EW-110, CO-R17.S13-SD-170, ENG-MS-IR-ML-A-110 | 73d |
| CO-R17.S13-IR-110 |  | Pipes Laying Works for Main Lines of Irrigation Network-[Road 17]-[SW-13] | 10d | 2025-08-16 | 2025-08-26 | CO-R17.S13-IR-100, PRO-R17-IR-DL-100 FF+3d | 73d |
| CO-R17.S13-IR-120 |  | Installation Works for Main Line Valves of Irrigation Network-[Road 17]-[SW-13] | 7d | 2025-08-27 | 2025-09-03 | CO-R17.S13-IR-110, PRO-R17-IR-DL-110 FF+3d | 73d |
| CO-R17.S13-IR-130 |  | Trench Backfilling and Compaction Works for Main Lines of Irrigation Network-[Road 17]-[SW-13] | 9d | 2025-09-04 | 2025-09-14 | CO-R17.S13-IR-120, CO-R17.S13-IR-110 | 73d |
|  | TE | **Telecom Network** |  | 2025-11-08 | 2026-08-24 |  |  |
|  | PD | **Ducts Works** |  | 2025-11-08 | 2026-08-24 |  |  |
| CO-R17.S13-TE-100 |  | Trench Excavation and Bedding Works for Ducts of Telecom Network-[Road 17]-[SW-13] | 7d | 2025-11-08 | 2025-11-15 | CO-R17.S13-IR-130, CO-R17.S13-EW-110, CO-R18.S16-TE-170 | 167d |
| CO-R17.S13-TE-110 |  | Pipes Laying Works for Ducts of Telecom Network-[Road 17]-[SW-13] | 7d | 2026-08-01 | 2026-08-08 | CO-R17.S13-TE-100, CO-R16.S11-TE-110 | 7d |
| CO-R17.S13-TE-120 |  | Pouring Plain Concrete Above Ducts of Telecom Network-[Road 17]-[SW-13] | 7d | 2026-08-09 | 2026-08-16 | CO-R17.S13-TE-110, CO-R16.S11-TE-120 | 7d |
| CO-R17.S13-TE-130 |  | Trench Backfilling and Compaction Works for Ducts of Telecom Network-[Road 17]-[SW-13] | 7d | 2026-08-17 | 2026-08-24 | CO-R17.S13-TE-120, CO-R16.S11-TE-130 | 7d |
|  | MH | **Manholes Works** |  | 2026-08-01 | 2026-08-24 |  |  |
| CO-R17.S13-TE-140 |  | Excavation Works for Manholes of Telecom Network-[Road 17]-[SW-13] | 7d | 2026-08-01 | 2026-08-08 | CO-R16.S11-TE-140, CO-R17.S13-TE-100 | 0d |
| CO-R17.S13-TE-150 |  | Installation Works for Manholes of Telecom Network-[Road 17]-[SW-13] | 7d | 2026-08-09 | 2026-08-16 | CO-R17.S13-TE-140, CO-R16.S11-TE-150 | 7d |
| CO-R17.S13-TE-160 |  | Backfilling Works for Manholes of Telecom Network-[Road 17]-[SW-13] | 7d | 2026-08-17 | 2026-08-24 | CO-R17.S13-TE-150, CO-R16.S11-TE-160 | 7d |
|  | MV | **Medium Voltage Network** |  | 2025-04-05 | 2026-10-13 |  |  |
|  | CW | **Cabling Works** |  | 2026-09-15 | 2026-10-13 |  |  |
| CO-R17.S13-MV-ML-310 |  | Trench Excavation and Bedding Works for Medium Voltage Network-[Road 17]-[SW-13] | 18d | 2026-09-15 | 2026-10-06 | ENG-SH-MV-A-110, CO-R17.S13-SD-170 SS+3d, CO-R17.S13-SD-170 FF+3d, CO-R17.S13-EW-110, CO-R17.S13-TE-130 SS+3d, CO-R17.S13-TE-130 FF+3d, CO-R16.S11-MV-ML-280, ENG-MS-MV-A-110, CO-R17.S14-SL-160 | 0d |
| CO-R17.S13-MV-ML-320 |  | Cable Laying Works for Medium Voltage Network-[Road 17]-[SW-13] | 18d | 2026-09-19 | 2026-10-10 | CO-R17.S13-MV-ML-310 SS+3d, CO-R17.S13-MV-ML-310 FF+3d, CO-R16.S11-MV-ML-290, PRO-R17-MV-DL-100 FF+3d | 0d |
| CO-R17.S13-MV-ML-330 |  | Trench Backfilling and Compaction Works for Medium Voltage Network-[Road 17]-[SW-13] | 18d | 2026-09-22 | 2026-10-13 | CO-R17.S13-MV-ML-320 SS+3d, CO-R17.S13-MV-ML-320 FF+3d, CO-R16.S11-MV-ML-300 | 0d |
|  | SS | **RMU Works** |  | 2025-04-05 | 2026-09-16 |  |  |
| CO-R17.S13-MV-130 |  | Foundation Excavation Works for RMU of Medium Voltage Network-[Road 17]-[SW-13] | 6d | 2025-04-05 | 2025-04-10 | ENG-SH-MV-A-110, ENG-MS-MV-A-110, CO-R17.S13-EW-100, CO-R17.S13-EW-110 | 424d |
| CO-R17.S13-MV-150 |  | Installation Works for RMU Concrete Foundations of Medium Voltage Network-[Road 17]-[SW-13] | 8d | 2026-08-22 | 2026-08-30 | CO-R17.S13-MV-130, CO-R10.S03-ES-MV-150, PRO-R17-MV-DL-120, CO-R10.S03-WE-MV-150 | 10d |
| CO-R17.S13-MV-170 |  | Installation Works for RMU of Medium Voltage Network-[Road 17]-[SW-13] | 5d | 2026-08-31 | 2026-09-05 | CO-R17.S13-MV-150, ENG-SH-MV-A-110, ENG-MS-MV-A-110, PRO-MV-LL-SH/DL-10, CO-R10.S03-ES-MV-170, PRO-R17-MV-LL-MSI-40, CO-R10.S03-WE-MV-170 | 10d |
| CO-R17.S13-MV-SS-150 |  | Termination Works for RMU of Medium Voltage Network-[Road 17]-[SW-13] | 5d | 2026-09-06 | 2026-09-10 | CO-R17.S13-MV-170 | 28d |
| CO-R17.S13-MV-SS-160 |  | Testing Works for RMU of Medium Voltage Network-[Road 17]-[SW-13] | 5d | 2026-09-12 | 2026-09-16 | CO-R17.S13-MV-SS-150 | 28d |
|  | RD | **Road Works** |  | 2026-09-30 | 2026-11-30 |  |  |
|  | RD | **Pre-Bituminous Construction** |  | 2026-09-30 | 2026-11-21 |  |  |
| CO-R17.S13-RD-P-100 |  | Capping and Subgrade Layer for Road Works-[Road 17]-[SW-13] | 15d | 2026-09-30 | 2026-10-17 | ENG-SH-RD-A-100, CO-R17.S13-SD-130, CO-R17.S13-SW-130, ENG-MS-RD-A-10, CO-R17.S13-TE-130, CO-R17.S13-TE-160, CO-R17.S13-MV-ML-330 SS+3d, CO-R17.S13-MV-ML-330 FF+3d | 0d |
| CO-R17.S13-RD-P-110 |  | Aggregate Base Course Layer for Road Works-[Road 17]-[SW-13] | 12d | 2026-11-08 | 2026-11-21 | CO-R17.S13-RD-P-100 SS+3d, CO-R17.S13-RD-P-100 FF+3d, CO-R17.S13-SD-170 SS+3d, CO-R17.S13-SD-170 FF+3d, CO-R16.S11-RD-P-110 | 3d |
|  | LS | **Pavement Works** |  | 2026-11-11 | 2026-11-30 |  |  |
| CO-R17.S13-RD-P-120 |  | Fixing of Curbstone for Sidewalks Pavement-[Road 17]-[SW-13] | 12d | 2026-11-11 | 2026-11-24 | CO-R16.S11-RD-P-120, CO-R17.S13-RD-P-110 SS+3d, CO-R17.S13-RD-P-110 FF+3d | 3d |
| CO-R17.S13-RD-P-130 |  | Fixing of Interlock Tiles for Sidewalks Pavement-[Road 17]-[SW-13] | 10d | 2026-11-19 | 2026-11-30 | CO-R17.S13-RD-P-120 SS+3d, CO-R17.S13-RD-P-120 FF+3d, CO-R16.S11-RD-P-130, CO-R17-PW-TF-100, CO-R17-PW-TF-110, CO-R17-PW-TF-120, CO-R17-SW-TF-100, CO-R17-SW-TF-110, CO-R17-SW-TF-130, CO-R17-SD-TF-100, CO-R17-SL-TF-240, CO-R17-SL-TF-250, CO-R17-IR-TF-170, CO-R17-MV-TF-240 | 1d |
|  | SW_16 | **SW_14** |  | 2025-03-17 | 2026-12-01 |  |  |
|  | EW | **Earthworks** |  | 2025-03-17 | 2025-04-15 |  |  |
|  | EW | **Earthworks** |  | 2025-03-17 | 2025-04-15 |  |  |
| CO-R17.S14-EW-100 |  | Roadway Excavation Works Upto Design Level for Earthworks-[Road 17]-[SW-14] | 10d | 2025-03-17 | 2025-03-27 | ENG-MS-RD-A-10, ENG-SH-RD-A-100, CO-R17.S13-EW-100 | 11d |
| CO-R17.S14-EW-110 |  | Embankments Works Upto Design Level for Earthworks-[Road 17]-[SW-14] | 12d | 2025-03-29 | 2025-04-15 | ENG-MS-RD-A-10, ENG-SH-RD-A-100, CO-R17.S14-EW-100 | 19d |
|  | SW | **Sewage Network** |  | 2025-04-23 | 2025-06-25 |  |  |
|  | ML | **Main Line Sections** |  | 2025-04-23 | 2025-06-25 |  |  |
| CO-R17.S14-SW-100 |  | Trench Excavation and Bedding Works for Main Lines of Sewage Network-[Road 17]-[SW-14] | 12d | 2025-04-23 | 2025-05-06 | CO-R17.S14-EW-110, ENG-MS-SW-ML-A-110, ENG-SH-SW-ML-A-110, CO-R17.S13-SW-100 | 13d |
| CO-R17.S14-SW-120 |  | Pipes Laying Works for Main Lines of Sewage Network-[Road 17]-[SW-14] | 12d | 2025-05-07 | 2025-05-20 | PRO-R17-SW-DL-100 FF+3d, CO-R17.S14-SW-100 | 17d |
| CO-R17.S14-SW-130 |  | Trench Backfilling and Compaction Works for Main Lines of Sewage Network-[Road 17]-[SW-14] | 10d | 2025-06-15 | 2025-06-25 | CO-R17.S14-SW-120, CO-R17.S14-SW-210 FF, CO-R17.S13-SW-130 | 0d |
|  | 1 | **Manholes** |  | 2025-05-07 | 2025-05-21 |  |  |
| CO-R17.S14-SW-160 |  | Excavation Works for Main Line Manholes of Sewage Network-[Road 17]-[SW-14] | 1d | 2025-05-07 | 2025-05-07 | CO-R17.S14-SW-120 SS | 26d |
| CO-R17.S14-SW-170 |  | Installation RC Footing Works for Main Line Manholes of Sewage Network-[Road 17]-[SW-14] | 2d | 2025-05-08 | 2025-05-10 | CO-R17.S14-SW-160, PRO-R17-SW-DL-110 FF+3d | 26d |
| CO-R17.S14-SW-180 |  | Install Grp Liner Wall Works for Main Line Manholes of Sewage Network-[Road 17]-[SW-14] | 4d | 2025-05-11 | 2025-05-14 | CO-R17.S14-SW-170 | 26d |
| CO-R17.S14-SW-190 |  | Pouring Grp Liner Wall Works for Main Line Manholes of Sewage Network-[Road 17]-[SW-14] | 1d | 2025-05-15 | 2025-05-15 | CO-R17.S14-SW-180 | 26d |
| CO-R17.S14-SW-200 |  | Backfilling Works for Main Line Manholes of Sewage Network-[Road 17]-[SW-14] | 4d | 2025-05-17 | 2025-05-20 | CO-R17.S14-SW-190 | 26d |
| CO-R17.S14-SW-210 |  | Testing Works for Main Line Manholes of Sewage Network-[Road 17]-[SW-14] | 1d | 2025-05-21 | 2025-05-21 | CO-R17.S14-SW-200 | 26d |
|  | SD | **Storm Drainage Network** |  | 2025-06-18 | 2026-04-09 |  |  |
|  | ML | **Main Line Sections** |  | 2025-06-18 | 2026-04-09 |  |  |
| CO-R17.S14-SD-100 |  | Trench Excavation and Bedding Works for Main Lines of Storm Drainage Network-[Road 17]-[SW-14] | 10d | 2025-06-18 | 2025-06-29 | CO-R17.S14-EW-110, CO-R17.S14-EW-100, CO-R17.S14-SW-130 SS+3d, CO-R17.S14-SW-130 FF+3d | 217d |
| CO-R17.S14-SD-120 |  | Pipes Laying Works for Main Lines of Storm Drainage Network-[Road 17]-[SW-14] | 20d | 2025-06-30 | 2025-07-22 | PRO-R17-SD-DL-120 FF+3d, CO-R17.S14-SD-100 | 217d |
| CO-R17.S14-SD-130 |  | Trench Backfilling and Compaction Works for Main Lines of Storm Drainage Network-[Road 17]-[SW-14] | 20d | 2026-03-15 | 2026-04-09 | CO-R17.S14-SD-120 SS+3d, CO-R17.S14-SD-120 FF+3d, CO-R16.S12-SD-130, CO-R17.S14-SD-120, CO-R17.S14-SD-220 FF | 113d |
|  | MH | **Manholes** |  | 2025-06-30 | 2025-07-15 |  |  |
| CO-R17.S14-SD-180 |  | Trench Excavation and Bedding Works for Manholes of Storm Drainage Network-[Road 17]-[SW-14] | 1d | 2025-06-30 | 2025-06-30 | CO-R17.S14-SD-120 SS, PRO-SD-1DL-100 | 217d |
| CO-R17.S14-SD-190 |  | Install RC Footing Works for Manholes of Storm Drainage Network-[Road 17]-[SW-14] | 1d | 2025-07-01 | 2025-07-01 | CO-R17.S14-SD-180 | 217d |
| CO-R17.S14-SD-200 |  | Install RC Wall Rings & Slab Works for Manholes of Storm Drainage Network-[Road 17]-[SW-14] | 4d | 2025-07-02 | 2025-07-06 | CO-R17.S14-SD-190 | 217d |

| ID | WBS | Task | Duration | Start | Finish | Predecessors | Total float |
| --- | --- | --- | --- | --- | --- | --- | --- |
| CO-R17.S14-SD-210 |  | Testing Works for Manholes of Storm Drainage Network-[Road 17]-[SW-14] | 1d | 2025-07-07 | 2025-07-07 | CO-R17.S14-SD-200 | 217d |
| CO-R17.S14-SD-220 |  | Backfilling Works for Manholes of Storm Drainage Network-[Road 17]-[SW-14] | 7d | 2025-07-08 | 2025-07-15 | CO-R17.S14-SD-210 | 217d |
|  | CB | **Catch Basin Sections** |  | 2025-07-16 | 2025-08-12 |  |  |
| CO-R17.S14-SD-140 |  | Trench Excavation and Bedding Works for Catch Basins of Storm Drainage Network-[Road 17]-[SW-14] | 6d | 2025-07-16 | 2025-07-22 | CO-R17.S14-EW-110, CO-R17.S14-SD-220 | 217d |
| CO-R17.S14-SD-150 |  | Installation and Pipes Laying Connection Works for Catch Basins of Storm Drainage Network-[Road 17]-[SW-14] | 7d | 2025-07-23 | 2025-07-30 | CO-R17.S14-SD-140, PRO-R17-SD-DL-130 FF+3d, CO-R17.S13-SD-150 | 217d |
| CO-R17.S14-SD-160 |  | Testing Works for Catch Basins of Storm Drainage Network-[Road 17]-[SW-14] | 4d | 2025-07-31 | 2025-08-04 | CO-R17.S14-SD-150, CO-R17.S14-SD-120, PRO-R17-SD-DL-110 FF+3d | 385d |
| CO-R17.S14-SD-170 |  | Trench Backfilling and Compaction Works for Catch Basins of Storm Drainage Network-[Road 17]-[SW-14] | 7d | 2025-08-05 | 2025-08-12 | CO-R17.S14-SD-160 | 385d |
|  | SL | **Street Lighting Network** |  | 2025-04-16 | 2025-12-14 |  |  |
|  | LP | **Lighting Poles Works** |  | 2025-09-15 | 2025-12-14 |  |  |
| CO-R17.S14-SL-100 |  | Foundation Excavation Works for Lighting Poles of Street Lighting Network-[Road 17]-[SW-14] | 12d | 2025-09-15 | 2025-09-29 | CO-R17.S13-IR-100 SS+3d, CO-R17.S13-IR-130, CO-R17.S14-EW-100, CO-R17.S14-EW-110, ENG-MS-SL-A-110, ENG-SH-SL-A-110, PRO-SL-1DL-110 | 73d |
| CO-R17.S14-SL-110 |  | Installation Works for Lighting Poles Foundation of Street Lighting Network-[Road 17]-[SW-14] | 12d | 2025-09-30 | 2025-10-13 | CO-R17.S14-SL-100, PRO-R17-SL-DL-110 FF+3d | 73d |
| CO-R17.S14-SL-120 |  | Installation Works for Lighting Poles of Street Lighting Network-[Road 17]-[SW-14] | 17.5d | 2025-11-18 | 2025-12-08 | CO-R17.S14-SL-110, CO-R17.S14-SL-160, PRO-R17-SL-DL-120 FF+3d | 73d |
| CO-R17.S14-SL-130 |  | Installation Works for Lighting Fixtures With Drop Wire of Street Lighting Network-[Road 17]-[SW-14] | 18d | 2025-11-24 | 2025-12-14 | CO-R17.S14-SL-120 SS+5d, CO-R17.S14-SL-120 FF+5d, CO-R17.S14-SL-200 FF, PRO-R17-SL-DL-140 FF+3d | 218d |
| CO-R17.S14-SL-210 |  | Backfilling Works for Lighting Poles of Street Lighting Network-[Road 17]-[SW-14] | 12d | 2025-11-24 | 2025-12-08 | CO-R17.S14-SL-120 SS, CO-R17.S14-SL-120 FF, CO-R18.S16-SL-210 | 73d |
| CO-R17.S14-SL-200 |  | Testing Works for Lighting Poles of Street Lighting Network-[Road 17]-[SW-14] | 5d | 2025-12-08 | 2025-12-14 | CO-R17.S14-SL-210, CO-R17.S14-SL-120 | 218.5d |
|  | CW | **Cabling Works** |  | 2025-10-14 | 2025-11-17 |  |  |
| CO-R17.S14-SL-140 |  | Trench Excavation and Bedding Works for Street Lighting Network-[Road 17]-[SW-14] | 10d | 2025-10-14 | 2025-10-25 | CO-R17.S14-SL-110 | 73d |
| CO-R17.S14-SL-150 |  | Cable Laying Works for Street Lighting Network-[Road 17]-[SW-14] | 10d | 2025-10-26 | 2025-11-05 | CO-R17.S14-SL-140, PRO-R17-SL-DL-100 FF+3d | 73d |
| CO-R17.S14-SL-160 |  | Trench Backfilling and Compaction Works for Street Lighting Network-[Road 17]-[SW-14] | 10d | 2025-11-06 | 2025-11-17 | CO-R17.S14-SL-150 | 73d |
|  | DPB | **Distrubution Panel Boards** |  | 2025-04-16 | 2025-05-13 |  |  |
| CO-R17.S14-SL-170 |  | Foundation Excavation Works For Panel Boards of Street Lighting Network-[Road 17]-[SW-14] | 18d | 2025-04-16 | 2025-05-06 | CO-R17.S14-EW-110, ENG-MS-SL-A-110, ENG-SH-SL-A-110 | 419d |
| CO-R17.S14-SL-180 |  | Installation Works for Panel Board Concrete Foundations of Street Lighting Network-[Road 17]-[SW-14] | 18d | 2025-04-20 | 2025-05-10 | CO-R17.S14-SL-170 SS+3d, CO-R17.S14-SL-170 FF+3d | 419d |
| CO-R17.S14-SL-220 |  | A wall of concrete blocks to install the KWH meter of Street Lighting Network-[Road 17]-[SW-14] | 18d | 2025-04-20 | 2025-05-10 | CO-R17.S14-SL-180 SS, CO-R17.S14-SL-180 FF | 422d |
| CO-R17.S14-SL-190 |  | Installation Works for Lighting Panel Boards of Street Lighting Network-[Road 17]-[SW-14] | 18d | 2025-04-23 | 2025-05-13 | CO-R17.S14-SL-180 SS+3d, CO-R17.S14-SL-180 FF+3d | 419d |
|  | PW | **Potable Water Network** |  | 2026-04-11 | 2026-05-11 |  |  |
|  | ML | **Main Line Sections** |  | 2026-04-11 | 2026-04-30 |  |  |
| CO-R17.S14-PW-100 |  | Trench Excavation and Bedding Works for Main Lines of Potable Water Network-[Road 17]-[SW-14] | 6d | 2026-04-11 | 2026-04-16 | CO-R17.S14-EW-110, CO-R17.S14-EW-100, CO-R17.S14-SW-130, CO-R17.S14-SD-130 | 113d |
| CO-R17.S14-PW-110 |  | Pipes Laying and accessories for Main Lines of Potable Water Network-[Road 17]-[SW-14] | 5.75d | 2026-04-18 | 2026-04-23 | CO-R17.S14-PW-100, CO-R16.S12-PW-110, PRO-R17-PW-DL-100 FF+3d, PRO-R17-PW-DL-110 FF+3d | 113d |
| CO-R17.S14-PW-130 |  | Trench Backfilling and Compaction Works for Main Lines of Potable Water Network-[Road 17]-[SW-14] | 6d | 2026-04-23 | 2026-04-30 | CO-R17.S14-PW-110 SS+3d, CO-R17.S14-PW-110 FF+3d, CO-R16.S12-PW-130, CO-R17.S14-PW-210 FF | 122.25d |
|  | VC | **Valve Chamber** |  | 2026-04-23 | 2026-04-30 |  |  |
| CO-R17.S14-PW-210 |  | Installation Works for Main Line Valves and Valve Chambers of Potable Water Network-[Road 17]-[SW-14] | 6d | 2026-04-23 | 2026-04-30 | CO-R17.S14-PW-110 | 122.25d |
|  | FH | **Fire Hydrant** |  | 2026-04-21 | 2026-05-11 |  |  |
| CO-R17.S14-PW-140 |  | Excavation Works for Fire Hydrants of Potable Water Network-[Road 17]-[SW-14] | 6d | 2026-04-21 | 2026-04-27 | CO-R17.S14-PW-110 SS+3d, CO-R17.S14-PW-110 FF+3d, CO-R17.S14-EW-110, CO-R17.S14-SW-130 SS+3d, CO-R17.S14-SW-130 FF+3d | 113d |
| CO-R17.S14-PW-150 |  | Installation Works for Fire Hydrant of Potable Water Network-[Road 17]-[SW-14] | 6d | 2026-04-28 | 2026-05-04 | CO-R17.S14-PW-140, CO-R16.S12-PW-150, PRO-R17-PW-DL-120 FF+3d | 113d |
| CO-R17.S14-PW-160 |  | Trench Backfilling and Compaction Works for Fire Hydrants of Potable Water Network-[Road 17]-[SW-14] | 6d | 2026-05-05 | 2026-05-11 | CO-R17.S14-PW-150, CO-R16.S12-PW-160 | 113d |
|  | TE | **Telecom Network** |  | 2025-11-16 | 2026-09-01 |  |  |
|  | PD | **Ducts Works** |  | 2025-11-16 | 2026-09-01 |  |  |
| CO-R17.S14-TE-100 |  | Trench Excavation and Bedding Works for Ducts of Telecom Network-[Road 17]-[SW-14] | 7d | 2025-11-16 | 2025-11-23 | CO-R17.S14-EW-110, CO-R17.S14-SL-160 SS+5d, CO-R17.S14-SL-160 FF+5d, CO-R17.S13-TE-100 | 167d |
| CO-R17.S14-TE-110 |  | Pipes Laying Works for Ducts of Telecom Network-[Road 17]-[SW-14] | 7d | 2026-08-09 | 2026-08-16 | CO-R17.S14-TE-100, CO-R16.S12-TE-110, PRO-R17-TE-DL-100 FF+3d | 0d |
| CO-R17.S14-TE-120 |  | Pouring Plain Concrete Above Ducts of Telecom Network-[Road 17]-[SW-14] | 7d | 2026-08-17 | 2026-08-24 | CO-R17.S14-TE-110, CO-R16.S12-TE-120 | 0d |
| CO-R17.S14-TE-130 |  | Trench Backfilling and Compaction Works for Ducts of Telecom Network-[Road 17]-[SW-14] | 7d | 2026-08-25 | 2026-09-01 | CO-R17.S14-TE-120, CO-R16.S12-TE-130 | 0d |
|  | MH | **Manholes Works** |  | 2026-08-09 | 2026-09-01 |  |  |
| CO-R17.S14-TE-140 |  | Excavation Works for Manholes of Telecom Network-[Road 17]-[SW-14] | 7d | 2026-08-09 | 2026-08-16 | CO-R16.S12-TE-140, CO-R17.S13-TE-140, CO-R17.S14-TE-100 | 0d |
| CO-R17.S14-TE-150 |  | Installation Works for Manholes of Telecom Network-[Road 17]-[SW-14] | 7d | 2026-08-17 | 2026-08-24 | CO-R17.S14-TE-140, CO-R16.S12-TE-150, PRO-R17-TE-DL-110 FF+3d | 0d |
| CO-R17.S14-TE-160 |  | Backfilling Works for Manholes of Telecom Network-[Road 17]-[SW-14] | 7d | 2026-08-25 | 2026-09-01 | CO-R17.S14-TE-150, CO-R16.S12-TE-160 | 0d |
|  | RD | **Road Works** |  | 2026-09-02 | 2026-12-01 |  |  |
|  | RD | **Pre-Bituminous Construction** |  | 2026-09-02 | 2026-11-18 |  |  |
| CO-R17.S14-RD-P-100 |  | Capping and Subgrade Layer for Road Works-[Road 17]-[SW-14] | 18d | 2026-09-02 | 2026-09-22 | CO-R17.S14-SD-130, CO-R17.S14-SW-130, CO-R17.S14-PW-130, CO-R17.S14-PW-160, PRO-R17-RD-DL-120 FF+3d, CO-R17.S14-TE-130, CO-R17.S14-TE-160, CO-R17.S14-SL-160 SS+3d, CO-R17.S14-SL-160 FF+3d | 20d |
| CO-R17.S14-RD-P-110 |  | Aggregate Base Course Layer for Road Works-[Road 17]-[SW-14] | 12d | 2026-11-05 | 2026-11-18 | CO-R17.S14-RD-P-100 SS+3d, CO-R17.S14-RD-P-100 FF+3d, CO-R17.S14-SD-170 SS+3d, CO-R17.S14-SD-170 FF+3d, CO-R16.S12-RD-P-110, PRO-R17-RD-DL-130 FF+3d | 5d |
|  | LS | **Pavement Works** |  | 2026-11-09 | 2026-12-01 |  |  |
| CO-R17.S14-RD-P-120 |  | Fixing of Curbstone for Sidewalks Pavement-[Road 17]-[SW-14] | 12d | 2026-11-09 | 2026-11-22 | CO-R16.S12-RD-P-120, PRO-R17-RD-DL-110 FF+3d, CO-R17.S14-RD-P-110 SS+3d, CO-R17.S14-RD-P-110 FF+3d | 5d |
| CO-R17.S14-RD-P-130 |  | Fixing of Interlock Tiles for Sidewalks Pavement-[Road 17]-[SW-14] | 10d | 2026-11-21 | 2026-12-01 | CO-R17.S14-RD-P-120 SS+3d, CO-R17.S14-RD-P-120 FF+3d, CO-R16.S12-RD-P-130, PRO-R17-RD-DL-100 FF+3d, CO-R17-PW-TF-100, CO-R17-PW-TF-110, CO-R17-PW-TF-120, CO-R17-SW-TF-100, CO-R17-SW-TF-110, CO-R17-SW-TF-130, CO-R17-SD-TF-100, CO-R17-SD-TF-120, CO-R17-SL-TF-240, CO-R17-SL-TF-250, CO-R17-IR-TF-170, CO-R17-MV-TF-240 | 0d |
|  | 1 | **Road 18 Local 1 ( 479 LM )** |  | 2025-02-09 | 2026-01-01 |  |  |
|  | SW_15 | **SW_15** |  | 2025-02-09 | 2025-12-16 |  |  |
|  | EW | **Earthworks** |  | 2025-02-09 | 2025-03-06 |  |  |
|  | EW | **Earthworks** |  | 2025-02-09 | 2025-03-06 |  |  |
| CO-R18.S15-EW-120 |  | Roadway Excavation Works Upto Design Level for Earthworks-[Road 18]-[SW-15] | 10d | 2025-02-09 | 2025-02-19 | ENG-MS-RD-A-10, ENG-SH-RD-A-100 | 11d |
| CO-R18.S15-EW-130 |  | Embankments Works Upto Design Level for Earthworks-[Road 18]-[SW-15] | 12d | 2025-02-20 | 2025-03-06 | CO-R18.S15-EW-120, ENG-MS-RD-A-10, ENG-SH-RD-A-100 | 13d |
|  | SW | **Sewage Network** |  | 2025-03-08 | 2025-05-17 |  |  |
|  | ML | **Main Line Sections** |  | 2025-03-08 | 2025-05-17 |  |  |
| CO-R18.S15-SW-220 |  | Trench Excavation and Bedding Works for Main Lines of Sewage Network-[Road 18]-[SW-15] | 12d | 2025-03-08 | 2025-03-20 | CO-R18.S15-EW-130, ENG-MS-SW-ML-A-110, ENG-SH-SW-ML-A-110 | 13d |
| CO-R18.S15-SW-230 |  | Pipes Laying Works for Main Lines of Sewage Network-[Road 18]-[SW-15] | 10d | 2025-04-24 | 2025-05-05 | CO-R18.S15-SW-220, PRO-R18-SW-DL-150 | 0d |
| CO-R18.S15-SW-240 |  | Trench Backfilling and Compaction Works for Main Lines of Sewage Network-[Road 18]-[SW-15] | 10d | 2025-05-06 | 2025-05-17 | CO-R18.S15-SW-230, CO-R18.S15-SW-300 FF | 0d |
|  | 1 | **Manholes** |  | 2025-04-24 | 2025-05-10 |  |  |
| CO-R18.S15-SW-250 |  | Excavation Works for Main Line Manholes of Sewage Network-[Road 18]-[SW-15] | 1d | 2025-04-24 | 2025-04-24 | CO-R18.S15-SW-230 SS | 6.75d |
| CO-R18.S15-SW-260 |  | Installation RC Footing Works for Main Line Manholes of Sewage Network-[Road 18]-[SW-15] | 2.25d | 2025-04-26 | 2025-04-28 | CO-R18.S15-SW-250, PRO-R18-SW-DL-160 | 6.75d |
| CO-R18.S15-SW-270 |  | Install Grp Liner Wall Works for Main Line Manholes of Sewage Network-[Road 18]-[SW-15] | 4d | 2025-04-28 | 2025-05-03 | CO-R18.S15-SW-260 | 6.75d |
| CO-R18.S15-SW-280 |  | Pouring Grp Liner Wall Works for Main Line Manholes of Sewage Network-[Road 18]-[SW-15] | 1d | 2025-05-03 | 2025-05-04 | CO-R18.S15-SW-270 | 6.75d |
| CO-R18.S15-SW-290 |  | Backfilling Works for Main Line Manholes of Sewage Network-[Road 18]-[SW-15] | 4d | 2025-05-04 | 2025-05-08 | CO-R18.S15-SW-280 | 6.75d |
| CO-R18.S15-SW-300 |  | Testing Works for Main Line Manholes of Sewage Network-[Road 18]-[SW-15] | 1d | 2025-05-08 | 2025-05-10 | CO-R18.S15-SW-290 | 6.75d |

| ID | WBS | Task | Duration | Start | Finish | Predecessors | Total float |
| --- | --- | --- | --- | --- | --- | --- | --- |
|  | SD | **Storm Drainage Network** |  | 2025-05-18 | 2025-07-21 |  |  |
|  | ML | **Main Line Sections** |  | 2025-05-18 | 2025-07-19 |  |  |
| CO-R18.S15-SD-230 |  | Trench Excavation and Bedding Works for Main Lines of Storm Drainage Network-[Road 18]-[SW-15] | 10d | 2025-05-18 | 2025-05-28 | CO-R18.S15-EW-130, CO-R18.S15-EW-120, CO-R18.S15-SW-240, CO-R18.S15-SW-240 FF+3d | 73d |
| CO-R18.S15-SD-240 |  | Pipes Laying Works for Main Lines of Storm Drainage Network-[Road 18]-[SW-15] | 20d | 2025-05-29 | 2025-06-25 | CO-R18.S15-SD-230, PRO-R18-SD-DL-180 | 73d |
| CO-R18.S15-SD-250 |  | Trench Backfilling and Compaction Works for Main Lines of Storm Drainage Network-[Road 18]-[SW-15] | 20d | 2025-06-26 | 2025-07-19 | CO-R18.S15-SD-240 SS+3d, CO-R18.S15-SD-240 FF+3d, CO-R18.S15-SD-240, CO-R18.S15-SD-340 FF | 364d |
|  | MH | **Manholes** |  | 2025-05-29 | 2025-06-18 |  |  |
| CO-R18.S15-SD-300 |  | Trench Excavation and Bedding Works for Manholes of Storm Drainage Network-[Road 18]-[SW-15] | 1d | 2025-05-29 | 2025-05-29 | CO-R18.S15-SD-240 SS | 73d |
| CO-R18.S15-SD-310 |  | Install RC Footing Works for Manholes of Storm Drainage Network-[Road 18]-[SW-15] | 1d | 2025-05-31 | 2025-05-31 | CO-R18.S15-SD-300, PRO-R18-SD-DL-170 | 73d |
| CO-R18.S15-SD-320 |  | Install RC Wall Rings & Slab Works for Manholes of Storm Drainage Network-[Road 18]-[SW-15] | 4d | 2025-06-01 | 2025-06-04 | CO-R18.S15-SD-310 | 73d |
| CO-R18.S15-SD-330 |  | Testing Works for Manholes of Storm Drainage Network-[Road 18]-[SW-15] | 1d | 2025-06-10 | 2025-06-10 | CO-R18.S15-SD-320 | 73d |
| CO-R18.S15-SD-340 |  | Backfilling Works for Manholes of Storm Drainage Network-[Road 18]-[SW-15] | 7d | 2025-06-11 | 2025-06-18 | CO-R18.S15-SD-330 | 73d |
|  | CB | **Catch Basin Sections** |  | 2025-06-19 | 2025-07-21 |  |  |
| CO-R18.S15-SD-260 |  | Trench Excavation and Bedding Works for Catch Basins of Storm Drainage Network-[Road 18]-[SW-15] | 7d | 2025-06-19 | 2025-06-26 | CO-R18.S15-EW-130, CO-R18.S15-SD-340 | 73d |
| CO-R18.S15-SD-270 |  | Installation and Pipes Laying Connection Works for Catch Basins of Storm Drainage Network-[Road 18]-[SW-15] | 7d | 2025-06-28 | 2025-07-05 | CO-R18.S15-SD-260, PRO-R18-SD-DL-200, PRO-R18-SD-DL-220 | 73d |
| CO-R18.S15-SD-280 |  | Testing Works for Catch Basins of Storm Drainage Network-[Road 18]-[SW-15] | 7d | 2025-07-06 | 2025-07-13 | CO-R18.S15-SD-270, CO-R18.S15-SD-240 | 75d |
| CO-R18.S15-SD-290 |  | Trench Backfilling and Compaction Works for Catch Basins of Storm Drainage Network-[Road 18]-[SW-15] | 7d | 2025-07-14 | 2025-07-21 | CO-R18.S15-SD-280 | 75d |
|  | IR | **Irrigation Network** |  | 2025-07-22 | 2025-08-28 |  |  |
|  | ML | **Main Line Pipes** |  | 2025-07-22 | 2025-08-28 |  |  |
| CO-R18.S15-IR-140 |  | Trench Excavation and Bedding Works for Main Lines of Irrigation Network-[Road 18]-[SW-15] | 7d | 2025-07-22 | 2025-07-29 | CO-R18.S15-EW-130, CO-R18.S15-SD-290 | 75d |
| CO-R18.S15-IR-150 |  | Pipes Laying Works for Main Lines of Irrigation Network-[Road 18]-[SW-15] | 10d | 2025-07-30 | 2025-08-10 | CO-R18.S15-IR-140, PRO-R18-IR-DL-120 FF+3d | 75d |
| CO-R18.S15-IR-160 |  | Installation Works for Main Line Valves of Irrigation Network-[Road 18]-[SW-15] | 7d | 2025-08-11 | 2025-08-18 | CO-R18.S15-IR-150, PRO-R18-IR-DL-130 FF+3d | 75d |
| CO-R18.S15-IR-170 |  | Trench Backfilling and Compaction Works for Main Lines of Irrigation Network-[Road 18]-[SW-15] | 9d | 2025-08-19 | 2025-08-28 | CO-R18.S15-IR-160, CO-R18.S15-IR-150 | 75d |
|  | TE | **Telecom Network** |  | 2025-08-30 | 2025-10-01 |  |  |
|  | PD | **Ducts Works** |  | 2025-08-30 | 2025-10-01 |  |  |
| CO-R18.S15-TE-170 |  | Trench Excavation and Bedding Works for Ducts of Telecom Network-[Road 18]-[SW-15] | 7d | 2025-08-30 | 2025-09-06 | CO-R18.S15-IR-170, CO-R18.S15-EW-130 | 212d |
| CO-R18.S15-TE-180 |  | Pipes Laying Works for Ducts of Telecom Network-[Road 18]-[SW-15] | 7d | 2025-09-07 | 2025-09-14 | CO-R18.S15-TE-170, PRO-R18-TE-DL-120 | 292d |
| CO-R18.S15-TE-230 |  | Pouring Plain Concrete Above Ducts of Telecom Network-[Road 18]-[SW-15] | 7d | 2025-09-15 | 2025-09-22 | CO-R18.S15-TE-180 | 292d |
| CO-R18.S15-TE-190 |  | Trench Backfilling and Compaction Works for Ducts of Telecom Network-[Road 18]-[SW-15] | 7d | 2025-09-24 | 2025-10-01 | CO-R18.S15-TE-230 | 292d |
|  | MH | **Manholes Works** |  | 2025-09-07 | 2025-10-01 |  |  |
| CO-R18.S15-TE-200 |  | Excavation Works for Manholes of Telecom Network-[Road 18]-[SW-15] | 7d | 2025-09-07 | 2025-09-14 | CO-R18.S15-TE-170 | 301d |
| CO-R18.S15-TE-210 |  | Installation Works for Manholes of Telecom Network-[Road 18]-[SW-15] | 7d | 2025-09-15 | 2025-09-22 | CO-R18.S15-TE-200, PRO-R18-TE-DL-130 | 301d |
| CO-R18.S15-TE-220 |  | Backfilling Works for Manholes of Telecom Network-[Road 18]-[SW-15] | 7d | 2025-09-24 | 2025-10-01 | CO-R18.S15-TE-210 | 301d |
|  | MV | **Medium Voltage Network** |  | 2025-11-02 | 2025-11-29 |  |  |
|  | CW | **Cabling Works** |  | 2025-11-02 | 2025-11-29 |  |  |
| CO-R18.S15-MV-ML-340 |  | Trench Excavation and Bedding Works for Medium Voltage Network-[Road 18]-[SW-15] | 18d | 2025-11-02 | 2025-11-22 | CO-R18.S15-SD-290 SS+3d, CO-R18.S15-SD-290 FF+3d, CO-R18.S15-EW-130, CO-R18.S15-TE-190 SS+3d, CO-R18.S15-TE-190 FF+3d, CO-R18.S16-SL-160 | 262d |
| CO-R18.S15-MV-ML-350 |  | Cable Laying Works for Medium Voltage Network-[Road 18]-[SW-15] | 18d | 2025-11-05 | 2025-11-25 | CO-R18.S15-MV-ML-340 SS+3d, CO-R18.S15-MV-ML-340 FF+3d, PRO-R18-MV-DL-120 FF+3d | 262d |
| CO-R18.S15-MV-ML-360 |  | Trench Backfilling and Compaction Works for Medium Voltage Network-[Road 18]-[SW-15] | 18d | 2025-11-09 | 2025-11-29 | CO-R18.S15-MV-ML-350 SS+3d, CO-R18.S15-MV-ML-350 FF+3d | 262d |
|  | RD | **Road Works** |  | 2025-11-16 | 2025-12-16 |  |  |
|  | RD | **Pre-Bituminous Construction** |  | 2025-11-16 | 2025-12-09 |  |  |
| CO-R18.S15-RD-P-160 |  | Capping and Subgrade Layer for Road Works-[Road 18]-[SW-15] | 15d | 2025-11-16 | 2025-12-02 | CO-R18.S15-SD-250, CO-R18.S15-SW-240, CO-R18.S15-TE-190, CO-R18.S15-TE-220, CO-R18.S15-MV-ML-360 SS+3d, CO-R18.S15-MV-ML-360 FF+3d, PRO-R18-RD-DL-220 | 263d |
| CO-R18.S15-RD-P-170 |  | Aggregate Base Course Layer for Road Works-[Road 18]-[SW-15] | 18d | 2025-11-19 | 2025-12-09 | CO-R18.S15-RD-P-160 SS+3d, CO-R18.S15-RD-P-160 FF+3d, CO-R18.S15-SD-290 SS+3d, CO-R18.S15-SD-290 FF+3d, PRO-R18-RD-DL-230 | 263d |
|  | LS | **Pavement Works** |  | 2025-11-23 | 2025-12-16 |  |  |
| CO-R18.S15-RD-P-140 |  | Fixing of Curbstone for Sidewalks Pavement-[Road 18]-[SW-15] | 18d | 2025-11-23 | 2025-12-13 | CO-R18.S15-RD-P-170 SS+3d, CO-R18.S15-RD-P-170 FF+3d, PRO-R18-RD-DL-190 | 263d |
| CO-R18.S15-RD-P-150 |  | Fixing of Interlock Tiles for Sidewalks Pavement-[Road 18]-[SW-15] | 18d | 2025-11-26 | 2025-12-16 | CO-R18.S15-RD-P-140 SS+3d, CO-R18.S15-RD-P-140 FF+3d, PRO-R18-RD-DL-180 | 315d |
|  | SW_16 | **SW_16** |  | 2025-02-20 | 2026-01-01 |  |  |
|  | EW | **Earthworks** |  | 2025-02-20 | 2025-03-18 |  |  |
|  | EW | **Earthworks** |  | 2025-02-20 | 2025-03-18 |  |  |
| CO-R18.S16-EW-120 |  | Roadway Excavation Works Upto Design Level for Earthworks-[Road 18]-[SW-16] | 10d | 2025-02-20 | 2025-03-04 | ENG-MS-RD-A-10, ENG-SH-RD-A-100, CO-R18.S15-EW-120 | 11d |
| CO-R18.S16-EW-130 |  | Embankments Works Upto Design Level for Earthworks-[Road 18]-[SW-16] | 12d | 2025-03-05 | 2025-03-18 | CO-R18.S16-EW-120, ENG-MS-RD-A-10, ENG-SH-RD-A-100 | 15d |
|  | SW | **Sewage Network** |  | 2025-03-22 | 2025-05-28 |  |  |
|  | ML | **Main Line Sections** |  | 2025-03-22 | 2025-05-28 |  |  |
| CO-R18.S16-SW-220 |  | Trench Excavation and Bedding Works for Main Lines of Sewage Network-[Road 18]-[SW-16] | 12d | 2025-03-22 | 2025-04-08 | CO-R18.S16-EW-130, ENG-MS-SW-ML-A-110, ENG-SH-SW-ML-A-110, CO-R18.S15-SW-220 | 13d |
| CO-R18.S16-SW-230 |  | Pipes Laying Works for Main Lines of Sewage Network-[Road 18]-[SW-16] | 12d | 2025-04-24 | 2025-05-07 | CO-R18.S16-SW-220, PRO-R18-SW-DL-150 | 8d |
| CO-R18.S16-SW-240 |  | Trench Backfilling and Compaction Works for Main Lines of Sewage Network-[Road 18]-[SW-16] | 10d | 2025-05-18 | 2025-05-28 | CO-R18.S16-SW-230, CO-R18.S16-SW-300 FF, CO-R18.S15-SW-240 | 0d |
|  | 1 | **Manholes** |  | 2025-04-24 | 2025-05-08 |  |  |
| CO-R18.S16-SW-250 |  | Excavation Works for Main Line Manholes of Sewage Network-[Road 18]-[SW-16] | 1d | 2025-04-24 | 2025-04-24 | CO-R18.S16-SW-230 SS | 17d |
| CO-R18.S16-SW-260 |  | Installation RC Footing Works for Main Line Manholes of Sewage Network-[Road 18]-[SW-16] | 2d | 2025-04-26 | 2025-04-27 | CO-R18.S16-SW-250, PRO-R18-SW-DL-160 | 17d |
| CO-R18.S16-SW-270 |  | Install Grp Liner Wall Works for Main Line Manholes of Sewage Network-[Road 18]-[SW-16] | 4d | 2025-04-28 | 2025-05-01 | CO-R18.S16-SW-260 | 17d |
| CO-R18.S16-SW-280 |  | Pouring Grp Liner Wall Works for Main Line Manholes of Sewage Network-[Road 18]-[SW-16] | 1d | 2025-05-03 | 2025-05-03 | CO-R18.S16-SW-270 | 17d |
| CO-R18.S16-SW-290 |  | Backfilling Works for Main Line Manholes of Sewage Network-[Road 18]-[SW-16] | 4d | 2025-05-04 | 2025-05-07 | CO-R18.S16-SW-280 | 17d |
| CO-R18.S16-SW-300 |  | Testing Works for Main Line Manholes of Sewage Network-[Road 18]-[SW-16] | 1d | 2025-05-08 | 2025-05-08 | CO-R18.S16-SW-290 | 17d |
|  | SD | **Storm Drainage Network** |  | 2025-05-21 | 2025-08-11 |  |  |
|  | ML | **Main Line Sections** |  | 2025-05-21 | 2025-08-11 |  |  |
| CO-R18.S16-SD-230 |  | Trench Excavation and Bedding Works for Main Lines of Storm Drainage Network-[Road 18]-[SW-16] | 10d | 2025-05-21 | 2025-06-01 | CO-R18.S16-EW-130, CO-R18.S16-EW-120, CO-R18.S16-SW-240 SS+3d, CO-R18.S16-SW-240 FF+3d | 78d |
| CO-R18.S16-SD-240 |  | Pipes Laying Works for Main Lines of Storm Drainage Network-[Road 18]-[SW-16] | 20d | 2025-06-02 | 2025-06-29 | CO-R18.S16-SD-230 | 78d |
| CO-R18.S16-SD-250 |  | Trench Backfilling and Compaction Works for Main Lines of Storm Drainage Network-[Road 18]-[SW-16] | 20d | 2025-07-20 | 2025-08-11 | CO-R18.S16-SD-240 SS+3d, CO-R18.S16-SD-240 FF+3d, CO-R18.S16-SD-240, CO-R18.S16-SD-340 FF, CO-R18.S15-SD-250 | 369d |
|  | MH | **Manholes** |  | 2025-06-02 | 2025-06-22 |  |  |
| CO-R18.S16-SD-300 |  | Trench Excavation and Bedding Works for Manholes of Storm Drainage Network-[Road 18]-[SW-16] | 1d | 2025-06-02 | 2025-06-02 | CO-R18.S16-SD-240 SS | 78d |
| CO-R18.S16-SD-310 |  | Install RC Footing Works for Manholes of Storm Drainage Network-[Road 18]-[SW-16] | 1d | 2025-06-03 | 2025-06-03 | CO-R18.S16-SD-300 | 78d |
| CO-R18.S16-SD-320 |  | Install RC Wall Rings & Slab Works for Manholes of Storm Drainage Network-[Road 18]-[SW-16] | 4d | 2025-06-04 | 2025-06-12 | CO-R18.S16-SD-310 | 78d |

| ID | WBS | Task | Duration | Start | Finish | Predecessors | Total float |
| --- | --- | --- | --- | --- | --- | --- | --- |
| CO-R18.S16-SD-330 |  | Testing Works for Manholes of Storm Drainage Network-[Road 18]-[SW-16] | 1d | 2025-06-14 | 2025-06-14 | CO-R18.S16-SD-320 | 78d |
| CO-R18.S16-SD-340 |  | Backfilling Works for Manholes of Storm Drainage Network-[Road 18]-[SW-16] | 7d | 2025-06-15 | 2025-06-22 | CO-R18.S16-SD-330 | 78d |
|  | CB | **Catch Basin Sections** |  | 2025-06-23 | 2025-07-26 |  |  |
| CO-R18.S16-SD-260 |  | Trench Excavation and Bedding Works for Catch Basins of Storm Drainage Network-[Road 18]-[SW-16] | 6d | 2025-06-23 | 2025-06-29 | CO-R18.S16-EW-130, CO-R18.S16-SD-340 | 78d |
| CO-R18.S16-SD-270 |  | Installation and Pipes Laying Connection Works for Catch Basins of Storm Drainage Network-[Road 18]-[SW-16] | 7d | 2025-07-06 | 2025-07-13 | CO-R18.S16-SD-260, CO-R18.S15-SD-270 | 73d |
| CO-R18.S16-SD-280 |  | Testing Works for Catch Basins of Storm Drainage Network-[Road 18]-[SW-16] | 4d | 2025-07-14 | 2025-07-17 | CO-R18.S16-SD-270, CO-R18.S16-SD-240 | 417d |
| CO-R18.S16-SD-290 |  | Trench Backfilling and Compaction Works for Catch Basins of Storm Drainage Network-[Road 18]-[SW-16] | 7d | 2025-07-19 | 2025-07-26 | CO-R18.S16-SD-280 | 417d |
|  | SL | **Street Lighting Network** |  | 2025-03-19 | 2025-11-27 |  |  |
|  | LP | **Lighting Poles Works** |  | 2025-08-30 | 2025-11-27 |  |  |
| CO-R18.S16-SL-100 |  | Foundation Excavation Works for Lighting Poles of Street Lighting Network-[Road 18]-[SW-16] | 12d | 2025-08-30 | 2025-09-11 | CO-R18.S15-IR-140 SS+3d, CO-R18.S15-IR-170, CO-R18.S16-EW-120, CO-R18.S16-EW-130, ENG-MS-SL-A-110, ENG-SH-SL-A-110, PRO-SL-1DL-110 | 75d |
| CO-R18.S16-SL-110 |  | Installation Works for Lighting Poles Foundation of Street Lighting Network-[Road 18]-[SW-16] | 12d | 2025-09-13 | 2025-09-27 | CO-R18.S16-SL-100, PRO-R18-SL-DL-190 FF+3d | 75d |
| CO-R18.S16-SL-120 |  | Installation Works for Lighting Poles of Street Lighting Network-[Road 18]-[SW-16] | 17.5d | 2025-11-02 | 2025-11-22 | CO-R18.S16-SL-110, CO-R18.S16-SL-160, PRO-R18-SL-DL-200 FF+3d | 75d |
| CO-R18.S16-SL-130 |  | Installation Works for Lighting Fixtures With Drop Wire of Street Lighting Network-[Road 18]-[SW-16] | 18d | 2025-11-08 | 2025-11-27 | CO-R18.S16-SL-120 SS+5d, CO-R18.S16-SL-120 FF+5d, CO-R18.S16-SL-200 FF, PRO-R18-SL-DL-220 FF+3d | 255.75d |
| CO-R18.S16-SL-210 |  | Backfilling Works for Lighting Poles of Street Lighting Network-[Road 18]-[SW-16] | 12d | 2025-11-08 | 2025-11-22 | CO-R18.S16-SL-120 SS, CO-R18.S16-SL-120 FF | 75d |
| CO-R18.S16-SL-200 |  | Testing Works for Lighting Poles of Street Lighting Network-[Road 18]-[SW-16] | 5d | 2025-11-22 | 2025-11-27 | CO-R18.S16-SL-210, CO-R18.S16-SL-120 | 256.25d |
|  | CW | **Cabling Works** |  | 2025-09-28 | 2025-11-01 |  |  |
| CO-R18.S16-SL-140 |  | Trench Excavation and Bedding Works for Street Lighting Network-[Road 18]-[SW-16] | 10d | 2025-09-28 | 2025-10-08 | CO-R18.S16-SL-110 | 75d |
| CO-R18.S16-SL-150 |  | Cable Laying Works for Street Lighting Network-[Road 18]-[SW-16] | 10d | 2025-10-09 | 2025-10-20 | CO-R18.S16-SL-140, PRO-R18-SL-DL-180 FF+3d | 75d |
| CO-R18.S16-SL-160 |  | Trench Backfilling and Compaction Works for Street Lighting Network-[Road 18]-[SW-16] | 10d | 2025-10-21 | 2025-11-01 | CO-R18.S16-SL-150 | 75d |
|  | DPB | **Distrubution Panel Boards** |  | 2025-03-19 | 2025-04-20 |  |  |
| CO-R18.S16-SL-170 |  | Foundation Excavation Works For Panel Boards of Street Lighting Network-[Road 18]-[SW-16] | 18d | 2025-03-19 | 2025-04-13 | CO-R18.S16-EW-130, ENG-MS-SL-A-110, ENG-SH-SL-A-110 | 439d |
| CO-R18.S16-SL-180 |  | Installation Works for Panel Board Concrete Foundations of Street Lighting Network-[Road 18]-[SW-16] | 18d | 2025-03-23 | 2025-04-16 | CO-R18.S16-SL-170 SS+3d, CO-R18.S16-SL-170 FF+3d | 439d |
| CO-R18.S16-SL-220 |  | A wall of concrete blocks to install the KWH meter of Street Lighting Network-[Road 18]-[SW-16] | 18d | 2025-03-23 | 2025-04-16 | CO-R18.S16-SL-180 SS, CO-R18.S16-SL-180 FF | 442d |
| CO-R18.S16-SL-190 |  | Installation Works for Lighting Panel Boards of Street Lighting Network-[Road 18]-[SW-16] | 18d | 2025-03-26 | 2025-04-20 | CO-R18.S16-SL-180 SS+3d, CO-R18.S16-SL-180 FF+3d | 439d |
|  | PW | **Potable Water Network** |  | 2025-08-12 | 2025-09-11 |  |  |
|  | ML | **Main Line Sections** |  | 2025-08-12 | 2025-09-01 |  |  |
| CO-R18.S16-PW-230 |  | Trench Excavation and Bedding Works for Main Lines of Potable Water Network-[Road 18]-[SW-16] | 6d | 2025-08-12 | 2025-08-18 | CO-R18.S16-EW-130, CO-R18.S16-EW-120, CO-R18.S16-SW-240, CO-R18.S16-SD-250 | 369d |
| CO-R18.S16-PW-240 |  | Pipes Laying and accessories for Main Lines of Potable Water Network-[Road 18]-[SW-16] | 5.75d | 2025-08-19 | 2025-08-25 | CO-R18.S16-PW-230, PRO-R18-PW-DL-150 FF+3d, PRO-R18-PW-DL-140 FF+3d | 369d |
| CO-R18.S16-PW-280 |  | Trench Backfilling and Compaction Works for Main Lines of Potable Water Network-[Road 18]-[SW-16] | 6d | 2025-08-25 | 2025-09-01 | CO-R18.S16-PW-240 SS+3d, CO-R18.S16-PW-240 FF+3d, CO-R18.S16-PW-330 FF | 378.25d |
|  | VC | **Valve Chamber** |  | 2025-08-25 | 2025-09-01 |  |  |
| CO-R18.S16-PW-330 |  | Installation Works for Main Line Valves and Valve Chambers of Potable Water Network-[Road 18]-[SW-16] | 6d | 2025-08-25 | 2025-09-01 | CO-R18.S16-PW-240 | 378.25d |
|  | FH | **Fire Hydrant** |  | 2025-08-23 | 2025-09-11 |  |  |
| CO-R18.S16-PW-250 |  | Excavation Works for Fire Hydrants of Potable Water Network-[Road 18]-[SW-16] | 6d | 2025-08-23 | 2025-08-28 | CO-R18.S16-PW-240 SS+3d, CO-R18.S16-PW-240 FF+3d, CO-R18.S16-EW-130, CO-R18.S16-SW-240 SS+3d, CO-R18.S16-SW-240 FF+3d | 369d |
| CO-R18.S16-PW-260 |  | Installation Works for Fire Hydrant of Potable Water Network-[Road 18]-[SW-16] | 6d | 2025-08-30 | 2025-09-04 | CO-R18.S16-PW-250, PRO-R18-PW-DL-160 FF+3d | 369d |
| CO-R18.S16-PW-270 |  | Trench Backfilling and Compaction Works for Fire Hydrants of Potable Water Network-[Road 18]-[SW-16] | 6d | 2025-09-06 | 2025-09-11 | CO-R18.S16-PW-260 | 369d |
|  | TE | **Telecom Network** |  | 2025-10-30 | 2025-12-01 |  |  |
|  | PD | **Ducts Works** |  | 2025-10-30 | 2025-12-01 |  |  |
| CO-R18.S16-TE-170 |  | Trench Excavation and Bedding Works for Ducts of Telecom Network-[Road 18]-[SW-16] | 7d | 2025-10-30 | 2025-11-06 | CO-R18.S16-EW-130, CO-R18.S16-SL-160 SS+5d, CO-R18.S16-SL-160 FF+5d, CO-R18.S15-TE-170 | 167d |
| CO-R18.S16-TE-180 |  | Pipes Laying Works for Ducts of Telecom Network-[Road 18]-[SW-16] | 7d | 2025-11-08 | 2025-11-15 | CO-R18.S16-TE-170 | 301d |
| CO-R18.S16-TE-230 |  | Pouring Plain Concrete Above Ducts of Telecom Network-[Road 18]-[SW-16] | 7d | 2025-11-16 | 2025-11-23 | CO-R18.S16-TE-180 | 301d |
| CO-R18.S16-TE-190 |  | Trench Backfilling and Compaction Works for Ducts of Telecom Network-[Road 18]-[SW-16] | 7d | 2025-11-24 | 2025-12-01 | CO-R18.S16-TE-230 | 301d |
|  | MH | **Manholes Works** |  | 2025-11-08 | 2025-12-01 |  |  |
| CO-R18.S16-TE-200 |  | Excavation Works for Manholes of Telecom Network-[Road 18]-[SW-16] | 7d | 2025-11-08 | 2025-11-15 | CO-R18.S15-TE-200, CO-R18.S16-TE-170 | 301d |
| CO-R18.S16-TE-210 |  | Installation Works for Manholes of Telecom Network-[Road 18]-[SW-16] | 7d | 2025-11-16 | 2025-11-23 | CO-R18.S16-TE-200 | 301d |
| CO-R18.S16-TE-220 |  | Backfilling Works for Manholes of Telecom Network-[Road 18]-[SW-16] | 7d | 2025-11-24 | 2025-12-01 | CO-R18.S16-TE-210 | 301d |
|  | RD | **Road Works** |  | 2025-12-02 | 2026-01-01 |  |  |
|  | RD | **Pre-Bituminous Construction** |  | 2025-12-02 | 2025-12-25 |  |  |
| CO-R18.S16-RD-P-160 |  | Capping and Subgrade Layer for Road Works-[Road 18]-[SW-16] | 18d | 2025-12-02 | 2025-12-22 | CO-R18.S16-SD-250, CO-R18.S16-SW-240, CO-R18.S16-PW-280, CO-R18.S16-PW-270, CO-R18.S16-TE-190, CO-R18.S16-TE-220, CO-R18.S16-SL-160 SS+3d, CO-R18.S16-SL-160 FF+3d | 301d |
| CO-R18.S16-RD-P-170 |  | Aggregate Base Course Layer for Road Works-[Road 18]-[SW-16] | 18d | 2025-12-06 | 2025-12-25 | CO-R18.S16-RD-P-160 SS+3d, CO-R18.S16-RD-P-160 FF+3d, CO-R18.S16-SD-290 SS+3d, CO-R18.S16-SD-290 FF+3d | 301d |
|  | LS | **Pavement Works** |  | 2025-12-09 | 2026-01-01 |  |  |
| CO-R18.S16-RD-P-140 |  | Fixing of Curbstone for Sidewalks Pavement-[Road 18]-[SW-16] | 18d | 2025-12-09 | 2025-12-29 | CO-R18.S16-RD-P-170 SS+3d, CO-R18.S16-RD-P-170 FF+3d | 301d |
| CO-R18.S16-RD-P-150 |  | Fixing of Interlock Tiles for Sidewalks Pavement-[Road 18]-[SW-16] | 18d | 2025-12-13 | 2026-01-01 | CO-R18.S16-RD-P-140 SS+3d, CO-R18.S16-RD-P-140 FF+3d | 301d |
|  | 3 | **Finishes for Infrastructure Networks** |  | 2026-05-04 | 2026-12-28 |  |  |
|  | 1 | **Phase 2 Block "J"** |  | 2026-05-04 | 2026-12-28 |  |  |
|  | 2 | **Road 09 Local 2 ( 2278 LM )** |  | 2026-06-02 | 2026-11-30 |  |  |
|  | 10 | **Sewage Network** |  | 2026-07-19 | 2026-08-18 |  |  |
|  | TF | **Testing and Finishes** |  | 2026-07-19 | 2026-08-18 |  |  |
| CO-R09-SW-TF-100 |  | Final Testing For Main Line of Sewage Network-[Road 09] | 12d | 2026-07-19 | 2026-08-01 | CO-R09.S01-SW-130, CO-R09.S01-RD-P-100 SS+3d, CO-R09.S01-RD-P-100 FF+3d, CO-R09.S02-RD-P-100 SS+3d, CO-R09.S02-RD-P-100 FF+3d | 0d |
| CO-R09-SW-TF-110 |  | Install Manhole Cover Works for External Finishes of Sewage Network-[Road 09] | 12d | 2026-08-02 | 2026-08-15 | PRO-SW-1DL-120, PRO-R09-SW-DL-120 FF+3d, CO-R09-SW-TF-100, CO-R09.S01-RD-P-100, CO-R09.S01-SW-120, ENG-SH-SW-ML-A-110, ENG-SH-SW-ML-A-110 FF, ENG-MS-SW-ML-A-110, ENG-MS-SW-ML-A-110 FF | 14d |
| CO-R09-SW-TF-120 |  | Main Manhole Internal Finishes (Benching + Insulation) of Sewage Network-[Road 09] | 12d | 2026-08-05 | 2026-08-18 | CO-R09-SW-TF-110 SS+3d, CO-R09-SW-TF-110 FF+3d, PRO-SW-1DL-140, PRO-R09-SW-DL-130 FF+3d | 27d |
|  | 11 | **Storm Drainage Network** |  | 2026-07-15 | 2026-09-02 |  |  |
|  | TF | **Testing and Finishes** |  | 2026-07-15 | 2026-09-02 |  |  |
| CO-R09-SD-TF-110 |  | Install Catch Basin Cover Works for External Finishes of Storm Drainage Network-[Road 09] | 16d | 2026-07-15 | 2026-08-02 | CO-R09.S01-SD-170 SS+3d, PRO-SD-1DL-150, PRO-R09-SD-DL-150 FF+3d, CO-R09.S01-RD-P-100 FF+3d, CO-R09.S01-RD-P-100, CO-R09.S01-SD-170 FF+3d | 25d |
| CO-R09-SD-TF-100 |  | Testing Work for Pipes of Storm Drainage Network-[Road 09] | 12d | 2026-07-19 | 2026-08-01 | CO-R09.S01-SD-130 SS+3d, PRO-SD-1DL-140, PRO-R09-SD-DL-140 FF+3d, CO-R09.S01-RD-P-100 SS+3d, CO-R09.S01-RD-P-100 FF+3d, CO-R09.S01-SD-130 FF+3d, CO-R09.S01-SD-120 SS, CO-R09.S01-SD-120, ENG-SH-SD-ML-A-110, ENG-MS-SD-ML-A-110, CO-R09.S02-RD-P-100 SS+3d, CO-R09.S02-RD-P-100 FF+3d | 0d |
| CO-R09-SD-TF-120 |  | Main Manhole Internal Finishes (Benching + Insulation ) for Storm Drainage Network-[Road 09] | 16d | 2026-08-16 | 2026-09-02 | CO-R09-SD-TF-100 SS+3d, CO-R09-SD-TF-100 FF+3d, PRO-R09-SD-DL-160 FF+3d, PRO-SD-1DL-160, CO-R09-SD-TF-100, CO-R09-SD-TF-110 SS, CO-R09-SD-TF-110, CO-R09-SD-TF-110 FF, CO-R09-SW-TF-110 SS, CO-R09-SW-TF-110, CO-R09-SW-TF-110 FF, ENG-SH-RD-A-100, ENG-SH-RD-A-100 FF, ENG-MS-RD-A-10, ENG-MS-RD-A-10 FF, PRO-R09-SD-DL-100 | 14d |
| CO-R09-SD-TF-130 |  | Catch Basin Internal Finishes (Benching + Insulation ) for Storm Drainage Network-[Road 09] | 16d | 2026-08-16 | 2026-09-02 | CO-R09-SD-TF-110 SS+3d, CO-R09-SD-TF-110 FF+3d, PRO-R09-SD-DL-160 FF+3d, PRO-SD-1DL-160, CO-R09-SD-TF-100 SS, CO-R09-SD-TF-100, CO-R09-SD-TF-100 FF, CO-R09-SD-TF-110, CO-R09-SW-TF-110 SS, CO-R09-SW-TF-110, CO-R09-SW-TF-110 FF, ENG-SH-RD-A-100, ENG-SH-RD-A-100 FF, ENG-MS-RD-A-10, ENG-MS-RD-A-10 FF | 69d |
|  | 9 | **Potable Water Network** |  | 2026-08-02 | 2026-09-08 |  |  |
|  | TF | **Testing and Finishes** |  | 2026-08-02 | 2026-09-08 |  |  |
| CO-R09-PW-TF-110 |  | Testing Work for Main Line of Potable Water Network-[Road 09] | 9d | 2026-08-02 | 2026-08-11 | CO-R09.S02-PW-130, CO-R09-SL-TF-100, CO-R09-SW-TF-100, CO-R09-SD-TF-100 | 0d |
| CO-R09-PW-TF-100 |  | Final Finishes works and Covers for Valves and Valve Chambers of Potable Water Network-[Road 09] | 12d | 2026-08-12 | 2026-08-25 | CO-R09.S01-RD-P-100 FS+3d, PRO-PW-1DL-130, PRO-R09-PW-DL-130 FF+3d, CO-R09.S02-PW-130, CO-R09-PW-TF-110 | 9d |

| ID | WBS | Task | Duration | Start | Finish | Predecessors | Total float |
| --- | --- | --- | --- | --- | --- | --- | --- |
| CO-R09-PW-TF-120 |  | Fire Hydrant Finishies (S.Box + Safety + Marker Post ) of Potable Water Network-[Road 09] | 12d | 2026-08-26 | 2026-09-08 | CO-R09-PW-TF-100, PRO-PW-1DL-130, PRO-R09-PW-DL-130 FF+3d, CO-R09.S02-PW-160 | 9d |
|  | 13 | **Irrigation Network** |  | 2026-07-29 | 2026-08-16 |  |  |
|  | TF | **Testing and Finishes** |  | 2026-07-29 | 2026-08-16 |  |  |
| CO-R09-IR-TF-100 |  | Final Testing (pressure tests) of Irrigation Network-[Road 09] | 16d | 2026-07-29 | 2026-08-16 | CO-R09.S01-IR-140, CO-R09.S01-RD-P-100, CO-R09.S02-RD-P-100 | 29d |
|  | 12 | **Street Lighting Network** |  | 2026-06-02 | 2026-09-09 |  |  |
|  | TR | **Termination and Testing Works** |  | 2026-06-02 | 2026-09-07 |  |  |
| CO-R09-SL-TF-100 |  | Termination Works For Lighting Poles Cables of Street Lighting Network-[Road 09] | 12d | 2026-06-02 | 2026-06-15 | CO-R09.S01-SL-130, PRO-SL-1DL-130, PRO-R09-SL-DL-130 FF+3d, CO-R09.S02-SL-130 | 8.5d |
| CO-R09-SL-TF-110 |  | Termination Works For Panel Board Cables of Street Lighting Network-[Road 09] | 10.5d | 2026-08-15 | 2026-08-26 | CO-R09.S01-SL-190, PRO-SL-1DL-170, PRO-R09-SL-DL-170 FF+3d, CO-R09.S01-SL-160, CO-R09.S01-SL-220 | 8.5d |
| CO-R09-SL-TF-380 |  | Testing Works For Panel Board Cables of Street Lighting Network-[Road 09] | 10d | 2026-08-26 | 2026-09-07 | CO-R09-SL-TF-110 | 30.5d |
|  | ES | **Earthing System Works** |  | 2026-06-16 | 2026-09-09 |  |  |
| CO-R09-SL-ES-100 |  | Install Earthing System Works for Lighting Poles of Street Lighting Network-[Road 09] | 12d | 2026-06-16 | 2026-06-29 | PRO-SL-1DL-150, PRO-R09-SL-DL-150 FF+3d, CO-R09-SL-TF-100 | 8.5d |
| CO-R09-SL-ES-110 |  | Install Earthing System Works for Lighting Panel Boards of Street Lighting Network-[Road 09] | 12d | 2026-08-26 | 2026-09-09 | PRO-SL-1DL-150, PRO-R09-SL-DL-150 FF+3d, CO-R09-SL-TF-110 | 8.5d |
|  | 14 | **Medium Voltage Network** |  | 2026-06-21 | 2026-07-08 |  |  |
|  | TT | **Termination and Testing Works** |  | 2026-06-21 | 2026-07-08 |  |  |
| CO-R09-MV-TF-100 |  | Termination Works of Medium Voltage Network-[Road 09] | 16d | 2026-06-21 | 2026-07-08 | PRO-MV-1DL-120, CO-R09.S01-MV-120, PRO-R09-MV-DL-110 FF+3d, CO-R09.S01-TE-160 | 62d |
|  | 1 | **Road Works** |  | 2026-09-24 | 2026-11-30 |  |  |
|  | 1 | **Bituminous Construction** |  | 2026-09-24 | 2026-10-26 |  |  |
| CO-R09-S1-RD-F-100 |  | Application of Prime Coat Layer for Road Works - S.W 01-[Road 09] | 12d | 2026-09-24 | 2026-10-08 | PRO-RD-1DL-120, CO-R09.S01-RD-P-130 | 8.5d |
| CO-R09-S1-RD-F-120 |  | Bituminous Base & Wearing Courses Layers for Road Works- S.W 01-[Road 09] | 12d | 2026-09-28 | 2026-10-12 | PRO-RD-1DL-130, CO-R09-S1-RD-F-100 SS+3d, CO-R09-S1-RD-F-100 FF+3d | 8.5d |
| CO-R09-S2-RD-F-110 |  | Application of Prime Coat Layer for Road Works- S.W 02-[Road 09] | 18d | 2026-10-01 | 2026-10-22 | PRO-R09-RD-DL-160 FF+3d, CO-R09.S02-RD-P-130, CO-R09-S1-RD-F-100 SS | 9.5d |
| CO-R09-S2-RD-F-130 |  | Bituminous Base & Wearing Courses Layers for Road Works- S.W 02-[Road 09] | 18d | 2026-10-05 | 2026-10-26 | CO-R09-S2-RD-F-110 SS+3d, CO-R09-S2-RD-F-110 FF+3d, PRO-R09-RD-DL-170 FF+3d, CO-R09-S1-RD-F-120 SS | 9.5d |
|  | TS | **Traffic Signs Boards and Roads Marking** |  | 2026-10-12 | 2026-11-30 |  |  |
| CO-R09-S1-RD-F-140 |  | Application of Road Marking Works For Road Works- S.W 01-[Road 09] | 12d | 2026-10-12 | 2026-10-26 | PRO-RD-1DL-170, ENG-SH-MRK-A-110, CO-R09-S1-RD-F-120, ENG-SH-RD-A-100, ENG-MS-MRK-A-10, ENG-MS-RD-A-10 | 8.5d |
| CO-R09-S1-RD-F-150 |  | Installation Works of Traffic Signs Boards For Road Works- S.W 01-[Road 09] | 12d | 2026-10-26 | 2026-11-09 | PRO-RD-1DL-160, ENG-SH-TSB-A-100, CO-R09.S01-RD-P-130, ENG-SH-RD-A-100, ENG-MS-TSB-A-10, ENG-MS-RD-A-10, PRO-R09-RD-DL-140 SS+6d, CO-R09-S1-RD-F-140 | 8.5d |
| CO-R09-S2-RD-F-160 |  | Application of Road Marking Works For Road Works- S.W 02-[Road 09] | 15d | 2026-10-26 | 2026-11-12 | PRO-R09-RD-DL-150 FF+3d, CO-R09-S2-RD-F-130 | 9.5d |
| CO-R09-S2-RD-F-170 |  | Installation Works of Traffic Signs Boards For Road Works- S.W 02-[Road 09] | 15d | 2026-11-12 | 2026-11-30 | PRO-R09-RD-DL-140 FF+6d, CO-R09.S02-RD-P-130, CO-R09-S2-RD-F-160 | 9.5d |
|  | 4 | **Road 10 Local 2 ( 2352 LM )** |  | 2026-05-04 | 2026-10-31 |  |  |
|  | 10 | **Sewage Network** |  | 2026-07-29 | 2026-08-29 |  |  |
|  | TF | **Testing and Finishes** |  | 2026-07-29 | 2026-08-29 |  |  |
| CO-R10-SW-TF-100 |  | Final Testing For Main Line of Sewage Network-[Road 10] | 12d | 2026-07-29 | 2026-08-11 | CO-R10.S03-ES-RD-100 SS+3d, CO-R10.S03-ES-RD-100 FF+3d, CO-R10.S04-ES-RD-100 SS+3d, CO-R10.S04-ES-RD-100 FF+3d, CO-R09.S02-SW-130, CO-R10.S03-WE-RD-100 SS+3d, CO-R10.S03-WE-RD-100 FF+3d, CO-R10.S04-WE-RD-100 SS+3d, CO-R10.S04-WE-RD-100 FF+3d | 0d |
| CO-R10-SW-TF-110 |  | Install Manhole Cover Works for External Finishes of Sewage Network-[Road 10] | 12d | 2026-08-12 | 2026-08-25 | PRO-R10-SW-DL-120 FF+3d, CO-R10-SW-TF-100, CO-R10.S03-ES-RD-100 SS+3d, CO-R10.S03-ES-RD-100 FF+3d, ENG-SH-SW-ML-A-110, ENG-SH-SW-ML-A-110 FF, ENG-MS-SW-ML-A-110, ENG-MS-SW-ML-A-110 FF, CO-R10.S04-ES-RD-100 SS+3d, CO-R10.S04-ES-RD-100 FS+3d, CO-R10.S03-WE-RD-100 SS+3d, CO-R10.S03-WE-RD-100 FF+3d, CO-R10.S04-WE-RD-100 SS+3d, CO-R10.S04-WE-RD-100 FS+3d | 0d |
| CO-R10-SW-TF-130 |  | Main Manhole Internal Finishes (Benching + Insulation) of Sewage Network-[Road 10] | 12d | 2026-08-16 | 2026-08-29 | CO-R10-SW-TF-110 SS+3d, CO-R10-SW-TF-110 FF+3d, PRO-R10-SW-DL-130 FF+3d | 0d |
|  | 11 | **Storm Drainage Network** |  | 2026-07-27 | 2026-09-13 |  |  |
|  | TF | **Testing and Finishes** |  | 2026-07-27 | 2026-09-13 |  |  |
| CO-R10-SD-TF-100 |  | Testing Work for Pipes of Storm Drainage Network-[Road 10] | 16d | 2026-07-27 | 2026-08-13 | CO-R10.S03-ES-SD-130 SS+3d, CO-R10.S03-ES-RD-100 SS+3d, CO-R10.S03-ES-RD-100 FF+3d, CO-R10.S03-ES-SD-130 FF+3d, CO-R10.S03-ES-SD-120 SS, CO-R10.S03-ES-SD-120, ENG-SH-SD-ML-A-110, ENG-MS-SD-ML-A-110, PRO-R10-SD-DL-140 FF+3d, CO-R10.S04-ES-RD-100 SS+3d, CO-R10.S04-ES-RD-100 FF+3d, CO-R10.S03-WE-SD-130 SS+3d, CO-R10.S03-WE-RD-100 SS+3d, CO-R10.S03-WE-RD-100 FF+3d, CO-R10.S03-WE-SD-130 FF+3d, CO-R10.S03-WE-SD-120 SS, CO-R10.S03-WE-SD-120, CO-R10.S04-WE-RD-100 SS+3d, CO-R10.S04-WE-RD-100 FF+3d | 7d |
| CO-R10-SD-TF-110 |  | Install Catch Basin Cover Works for External Finishes of Storm Drainage Network-[Road 10] | 16d | 2026-08-04 | 2026-08-22 | CO-R10.S03-ES-SD-170 SS+3d, PRO-R10-SD-DL-150 FF+3d, CO-R10.S03-ES-RD-100 SS+3d, CO-R10.S03-ES-RD-100 FF+3d, CO-R10.S03-ES-RD-100, CO-R10.S03-ES-SD-170 FF+3d, CO-R10.S04-ES-RD-100 SS+3d, CO-R10.S04-ES-RD-100 FF+3d, CO-R10.S03-WE-SD-170 SS+3d, CO-R10.S03-WE-RD-100 SS+3d, CO-R10.S03-WE-RD-100 FF+3d, CO-R10.S03-WE-RD-100, CO-R10.S03-WE-SD-170 FF+3d, CO-R10.S04-WE-RD-100 SS+3d, CO-R10.S04-WE-RD-100 FF+3d | 3d |
| CO-R10-SD-TF-120 |  | Main Manhole Internal Finishes (Benching + Insulation ) for Storm Drainage Network-[Road 10] | 12d | 2026-08-26 | 2026-09-08 | CO-R10-SD-TF-100 SS+3d, CO-R10-SD-TF-100 FF+3d, PRO-R10-SD-DL-160 FF+3d, CO-R10-SD-TF-100, CO-R10-SD-TF-110 SS, CO-R10-SD-TF-110, CO-R10-SD-TF-110 FF, CO-R10-SW-TF-110 SS, CO-R10-SW-TF-110, CO-R10-SW-TF-110 FF, ENG-SH-RD-A-100, ENG-SH-RD-A-100 FF, ENG-MS-RD-A-10, ENG-MS-RD-A-10 FF, PRO-R10-SD-DL-100 FF+3d | 1d |
| CO-R10-SD-TF-130 |  | Catch Basin Internal Finishes (Benching + Insulation ) for Storm Drainage Network-[Road 10] | 16d | 2026-08-26 | 2026-09-13 | CO-R10-SD-TF-110 SS+3d, CO-R10-SD-TF-110 FF+3d, PRO-R10-SD-DL-160 FF+3d, CO-R10-SD-TF-100 SS, CO-R10-SD-TF-100, CO-R10-SD-TF-100 FF, CO-R10-SD-TF-110, CO-R10-SW-TF-110 SS, CO-R10-SW-TF-110, CO-R10-SW-TF-110 FF, ENG-SH-RD-A-100, ENG-SH-RD-A-100 FF, ENG-MS-RD-A-10, ENG-MS-RD-A-10 FF | 0d |
|  | 9 | **Potable Water Network** |  | 2026-08-08 | 2026-09-03 |  |  |
|  | TF | **Testing and Finishes** |  | 2026-08-08 | 2026-09-03 |  |  |
| CO-R10-PW-TF-100 |  | Final Finishes works and Covers for Valves and Valve Chambers of Potable Water Network-[Road 10] | 12d | 2026-08-08 | 2026-08-20 | CO-R10.S03-ES-RD-100 FS+3d, PRO-R10-PW-DL-130 FF+3d, CO-R10.S03-WE-RD-100 FS+3d | 4d |
| CO-R10-PW-TF-110 |  | Testing Work for Main Line of Potable Water Network-[Road 10] | 12d | 2026-08-12 | 2026-08-25 | CO-R10.S03-ES-PW-130, CO-R09-PW-TF-110, CO-R10.S03-WE-PW-130 | 0d |
| CO-R10-PW-TF-120 |  | Fire Hydrant Finishies (S.Box + Safety + Marker Post ) of Potable Water Network-[Road 10] | 12d | 2026-08-22 | 2026-09-03 | CO-R10.S03-ES-PW-160, CO-R10-PW-TF-100, PRO-R10-PW-DL-130 FF+3d, CO-R10.S03-WE-PW-160 | 4d |
|  | 13 | **Irrigation Network** |  | 2026-08-09 | 2026-08-19 |  |  |
|  | TF | **Testing and Finishes** |  | 2026-08-09 | 2026-08-19 |  |  |
| CO-R10-IR-TF-120 |  | Final Testing (pressure tests) of Irrigation Network-[Road 10] | 10d | 2026-08-09 | 2026-08-19 | CO-R10.S03-ES-IR-130, CO-R10.S03-ES-RD-100, CO-R10.S04-ES-RD-100, CO-R10.S03-WE-IR-130, CO-R10.S03-WE-RD-100, CO-R10.S04-WE-RD-100 | 9d |
|  | 12 | **Street Lighting Network** |  | 2026-05-04 | 2026-07-23 |  |  |
|  | TR | **Termination and Testing Works** |  | 2026-05-04 | 2026-07-23 |  |  |
| CO-R10-SL-TF-140 |  | Termination Works For Lighting Poles Cables of Street Lighting Network-[Road 10] | 12d | 2026-05-04 | 2026-05-17 | CO-R10.S03-ES-SL-160, CO-R10.S03-ES-SL-130, PRO-R10-SL-DL-130 FF+3d, CO-R15.S10-SL-130, CO-R10.S03-WE-SL-160, CO-R10.S03-WE-SL-130 | 16d |
| CO-R10-SL-TF-150 |  | Termination Works For Panel Board Cables of Street Lighting Network-[Road 10] | 12d | 2026-07-08 | 2026-07-21 | CO-R10.S03-ES-SL-190, PRO-R10-SL-DL-170 FF+3d, CO-R10.S03-ES-SL-160, CO-R10.S03-ES-SL-220, CO-R10.S04-ES-SL-220, CO-R10.S03-WE-SL-190, CO-R10.S03-WE-SL-160, CO-R10.S03-WE-SL-220, CO-R10.S04-WE-SL-220 | 9d |
| CO-R10-SL-TF-380 |  | Testing Works For Panel Board Cables of Street Lighting Network-[Road 10] | 2d | 2026-07-22 | 2026-07-23 | CO-R10-SL-TF-150 | 29d |
|  | ES | **Earthing System Works** |  | 2026-05-18 | 2026-06-22 |  |  |
| CO-R10-SL-ES-140 |  | Install Earthing System Works for Lighting Poles of Street Lighting Network-[Road 10] | 12d | 2026-05-18 | 2026-06-04 | PRO-R10-SL-DL-150 FF+3d, CO-R10.S03-ES-SL-100 SS+5d, CO-R10.S03-ES-SL-100 FF+5d, CO-R10-SL-TF-140, CO-R10-SL-TF-140 SS+3d, CO-R10.S03-WE-SL-100 SS+5d, CO-R10.S03-WE-SL-100 FF+5d | 16d |
| CO-R10-SL-ES-150 |  | Install Earthing System Works for Lighting Panel Boards of Street Lighting Network-[Road 10] | 12d | 2026-06-09 | 2026-06-22 | CO-R10.S03-ES-SL-170 SS+3d, CO-R10.S03-ES-SL-170 FF+3d, PRO-R10-SL-DL-150 FF+3d, CO-R10.S03-WE-SL-170 SS+3d, CO-R10.S03-WE-SL-170 FF+3d | 16d |
|  | 14 | **Medium Voltage Network** |  | 2026-09-09 | 2026-09-16 |  |  |
|  | TT | **Termination and Testing Works** |  | 2026-09-09 | 2026-09-16 |  |  |
| CO-R10-MV-TF-140 |  | Termination Works of Medium Voltage Network-[Road 10] | 7d | 2026-09-09 | 2026-09-16 | CO-R10.S03-ES-MV-120, PRO-R10-MV-DL-110 FF+3d, CO-R10.S03-ES-MV-190, CO-R10.S03-WE-MV-120, CO-R10.S03-WE-MV-190 | 0d |
|  | 1 | **Road Works** |  | 2026-09-30 | 2026-10-31 |  |  |
|  | 1 | **Bituminous Construction** |  | 2026-09-30 | 2026-10-17 |  |  |
| CO-R10-S03-RD-F-110 |  | Application of Prime Coat Layer for Road Works- S.W 05-[Road 10] | 10d | 2026-09-30 | 2026-10-11 | CO-R10.S03-ES-RD-130, CO-SD-PO-K1-130, CO-R10.S03-WE-RD-130 | 0d |
| CO-R10-S04-RD-F-140 |  | Application of Prime Coat Layer for Road Works- S.W 06-[Road 10] | 10d | 2026-10-03 | 2026-10-13 | PRO-R10-RD-DL-160 FF+3d, CO-R10.S04-ES-RD-130, CO-R10-S03-RD-F-110 SS, CO-SD-PO-K1-130, CO-R10.S04-WE-RD-130 | 0d |
| CO-R10-S03-RD-F-120 |  | Bituminous Base & Wearing Courses Layers for Road Works- S.W 05-[Road 10] | 10d | 2026-10-04 | 2026-10-14 | CO-R10-S03-RD-F-110 SS+3d, CO-R10-S03-RD-F-110 FF+3d | 0d |
| CO-R10-S04-RD-F-150 |  | Bituminous Base & Wearing Courses Layers for Road Works- S.W 06-[Road 10] | 10d | 2026-10-06 | 2026-10-17 | CO-R10-S04-RD-F-140 SS+3d, CO-R10-S04-RD-F-140 FF+3d, PRO-R10-RD-DL-170 FF+3d, CO-R10-S03-RD-F-120 SS | 0d |
|  | TS | **Traffic Signs Boards and Roads Marking** |  | 2026-10-15 | 2026-10-31 |  |  |
| CO-R10-S03-RD-F-100 |  | Installation Works of Traffic Signs Boards For Road Works- S.W 05-[Road 10] | 12d | 2026-10-15 | 2026-10-28 | CO-R10.S03-ES-RD-130, CO-R10-S03-RD-F-160 FF, CO-R10.S03-WE-RD-130 | 0d |
| CO-R10-S03-RD-F-160 |  | Application of Road Marking Works For Road Works- S.W 05-[Road 10] | 12d | 2026-10-15 | 2026-10-28 | CO-R10-S03-RD-F-120 | 0d |
| CO-R10-S04-RD-F-170 |  | Application of Road Marking Works For Road Works- S.W 06-[Road 10] | 12d | 2026-10-18 | 2026-10-31 | PRO-R10-RD-DL-150 FF+3d, CO-R10-S04-RD-F-150 | 0d |
| CO-R10-S04-RD-F-130 |  | Installation Works of Traffic Signs Boards For Road Works- S.W 06-[Road 10] | 10d | 2026-10-20 | 2026-10-31 | PRO-R10-RD-DL-140 FF+3d, CO-R10.S04-ES-RD-130, CO-R10-S04-RD-F-170 FF, CO-R10.S04-WE-RD-130 | 1d |
|  | 5 | **Road 11 Local 1 ( 670 LM )** |  | 2026-05-18 | 2026-11-11 |  |  |
|  | 10 | **Sewage Network** |  | 2026-08-12 | 2026-09-12 |  |  |

| ID | WBS | Task | Duration | Start | Finish | Predecessors | Total float |
| --- | --- | --- | --- | --- | --- | --- | --- |
|  | TF | **Testing and Finishes** |  | 2026-08-12 | 2026-09-12 |  |  |
| CO-R11-SW-TF-100 |  | Final Testing For Main Line of Sewage Network-[Road 11] | 12d | 2026-08-12 | 2026-08-25 | CO-R11.S05-SW-130, CO-R11.S05-RD-P-100 SS+3d, CO-R11.S05-RD-P-100 FF+3d, CO-R10-SW-TF-100, CO-R11.S06-RD-P-100 SS+3d, CO-R11.S06-RD-P-100 FF+3d, CO-R11.S06-SW-130 | 0d |
| CO-R11-SW-TF-110 |  | Install Manhole Cover Works for External Finishes of Sewage Network-[Road 11] | 12d | 2026-08-26 | 2026-09-08 | CO-R11.S05-SW-130 SS+3d, PRO-R11-SW-DL-120 FF+3d, CO-R11-SW-TF-100, CO-R11.S05-SW-130 FF+3d, CO-R11.S05-RD-P-100 SS+3d, CO-R11.S05-RD-P-100 FF+3d, CO-R11.S05-SW-120 SS, CO-R11.S05-SW-120, CO-R11.S05-SW-120 FF, ENG-SH-SW-ML-A-110, ENG-SH-SW-ML-A-110 FF, CO-R10-SW-TF-110, ENG-MS-SW-ML-A-110, ENG-MS-SW-ML-A-110 FF, CO-R11.S06-RD-P-100 SS+3d, CO-R11.S06-RD-P-100 FF+3d, CO-R11.S06-SW-130 SS+3d, CO-R11.S06-SW-130 FF+3d | 0d |
| CO-R11-SW-TF-130 |  | Main Manhole Internal Finishes (Benching + Insulation) of Sewage Network-[Road 11] | 12d | 2026-08-30 | 2026-09-12 | CO-R11-SW-TF-110 SS+3d, CO-R11-SW-TF-110 FF+3d, PRO-R11-SW-DL-130 FF+3d, CO-R10-SW-TF-130 | 0d |
|  | 11 | **Storm Drainage Network** |  | 2026-08-15 | 2026-10-03 |  |  |
|  | TF | **Testing and Finishes** |  | 2026-08-15 | 2026-10-03 |  |  |
| CO-R11-SD-TF-100 |  | Testing Work for Pipes of Storm Drainage Network-[Road 11] | 16d | 2026-08-15 | 2026-09-01 | CO-R11.S05-SD-130 SS+3d, PRO-R11-SD-DL-140 FF+3d, CO-R11.S05-RD-P-100 SS+3d, CO-R11.S05-RD-P-100 FF+3d, CO-R11.S05-SD-130 FF+3d, CO-R11.S05-SD-120 SS, CO-R11.S05-SD-120, ENG-SH-SD-ML-A-110, CO-R10-SD-TF-100, ENG-MS-SD-ML-A-110, CO-R11.S06-RD-P-100 SS+3d, CO-R11.S06-RD-P-100 FF | 7d |
| CO-R11-SD-TF-110 |  | Install Catch Basin Cover Works for External Finishes of Storm Drainage Network-[Road 11] | 12d | 2026-08-23 | 2026-09-05 | CO-R11.S05-SD-170 SS+3d, PRO-R11-SD-DL-150 FF+3d, CO-R11.S05-RD-P-100 SS+3d, CO-R11.S05-RD-P-100 FF+3d, CO-R11.S05-RD-P-100, CO-R11.S05-SD-170 FF+3d, CO-R10-SD-TF-110, CO-R11.S06-RD-P-100 SS+3d, CO-R11.S06-RD-P-100 FF+3d | 4d |
| CO-R11-SD-TF-120 |  | Main Manhole Internal Finishes (Benching + Insulation ) for Storm Drainage Network-[Road 11] | 12d | 2026-09-09 | 2026-09-22 | CO-R11-SD-TF-100 SS+3d, CO-R11-SD-TF-100 FF+3d, PRO-R11-SD-DL-160 FF+3d, CO-R11-SD-TF-100, CO-R11-SD-TF-110 SS, CO-R11-SD-TF-110, CO-R11-SD-TF-110 FF, CO-R11-SW-TF-110 SS, CO-R11-SW-TF-110, CO-R11-SW-TF-110 FF, ENG-SH-RD-A-100, ENG-SH-RD-A-100 FF, CO-R10-SD-TF-120, ENG-MS-RD-A-10, ENG-MS-RD-A-10 FF, PRO-R11-SD-DL-100 FF+3d | 1d |
| CO-R11-SD-TF-130 |  | Catch Basin Internal Finishes (Benching + Insulation ) for Storm Drainage Network-[Road 11] | 16d | 2026-09-14 | 2026-10-03 | CO-R11-SD-TF-110 SS+3d, CO-R11-SD-TF-110 FF+3d, PRO-R11-SD-DL-160 FF+3d, CO-R11-SD-TF-100 SS, CO-R11-SD-TF-100, CO-R11-SD-TF-100 FF, CO-R11-SD-TF-110, CO-R11-SW-TF-110 SS, CO-R11-SW-TF-110, CO-R11-SW-TF-110 FF, ENG-SH-RD-A-100, ENG-SH-RD-A-100 FF, CO-R10-SD-TF-130, ENG-MS-RD-A-10, ENG-MS-RD-A-10 FF | 0d |
|  | 9 | **Potable Water Network** |  | 2026-08-26 | 2026-09-22 |  |  |
|  | TF | **Testing and Finishes** |  | 2026-08-26 | 2026-09-22 |  |  |
| CO-R11-PW-TF-100 |  | Final Finishes works and Covers for Valves and Valve Chambers of Potable Water Network-[Road 11] | 12d | 2026-08-26 | 2026-09-08 | CO-R11.S05-RD-P-100 FS+3d, CO-R10-PW-TF-100, PRO-R11-PW-DL-130 FF+3d | 0d |
| CO-R11-PW-TF-110 |  | Testing Work for Main Line of Potable Water Network-[Road 11] | 12d | 2026-08-26 | 2026-09-08 | CO-R10-PW-TF-110 | 0d |
| CO-R11-PW-TF-120 |  | Fire Hydrant Finishies (S.Box + Safety + Marker Post ) of Potable Water Network-[Road 11] | 12d | 2026-09-09 | 2026-09-22 | CO-R11-PW-TF-100, CO-R10-PW-TF-120, PRO-R11-PW-DL-130 FF+3d | 0d |
|  | 13 | **Irrigation Network** |  | 2026-08-23 | 2026-09-02 |  |  |
|  | TF | **Testing and Finishes** |  | 2026-08-23 | 2026-09-02 |  |  |
| CO-R11-IR-TF-130 |  | Final Testing (pressure tests) of Irrigation Network-[Road 11] | 10d | 2026-08-23 | 2026-09-02 | CO-R11.S05-IR-130, CO-R11.S05-RD-P-100, CO-R10-IR-TF-120, CO-R11.S06-RD-P-100 | 7d |
|  | 12 | **Street Lighting Network** |  | 2026-05-18 | 2026-08-10 |  |  |
|  | TR | **Termination and Testing Works** |  | 2026-05-18 | 2026-08-10 |  |  |
| CO-R11-SL-TF-160 |  | Termination Works For Lighting Poles Cables of Street Lighting Network-[Road 11] | 12d | 2026-05-18 | 2026-06-04 | PRO-R11-SL-DL-130 FF+3d, CO-R10-SL-TF-140 | 65d |
| CO-R11-SL-TF-170 |  | Termination Works For Panel Board Cables of Street Lighting Network-[Road 11] | 12d | 2026-07-26 | 2026-08-08 | PRO-R11-SL-DL-170 FF+3d, CO-R10-SL-TF-150, CO-R11.S06-SL-220 | 6d |
| CO-R11-SL-TF-380 |  | Testing Works For Panel Board Cables of Street Lighting Network-[Road 11] | 2d | 2026-08-09 | 2026-08-10 | CO-R11-SL-TF-170, CO-R10-SL-TF-380 | 16d |
|  | ES | **Earthing System Works** |  |  |  |  |  |
|  | 14 | **Medium Voltage Network** |  | 2026-09-17 | 2026-09-26 |  |  |
|  | TT | **Termination and Testing Works** |  | 2026-09-17 | 2026-09-26 |  |  |
| CO-R11-MV-TF-160 |  | Termination Works of Medium Voltage Network-[Road 11] | 7d | 2026-09-17 | 2026-09-26 | CO-R10.S03-ES-MV-170, CO-R11.S05-MV-120, CO-R10-MV-TF-140, PRO-R11-MV-DL-110 FF+3d, CO-R17.S13-MV-170, CO-R10.S03-WE-MV-170 | 0d |
|  | 1 | **Road Works** |  | 2026-10-12 | 2026-11-11 |  |  |
|  | 1 | **Bituminous Construction** |  | 2026-10-12 | 2026-10-31 |  |  |
| CO-R11-S05-RD-F-110 |  | Application of Prime Coat Layer for Road Works- S.W 07-[Road 11] | 10d | 2026-10-12 | 2026-10-22 | CO-R10-S03-RD-F-110, CO-R11.S05-RD-P-130, CO-SD-PO-K2-130 | 0d |
| CO-R11-S06-RD-F-140 |  | Application of Prime Coat Layer for Road Works- S.W 08-[Road 11] | 12d | 2026-10-14 | 2026-10-27 | CO-R10-S04-RD-F-140, PRO-R11-RD-DL-160 FF+3d, CO-R11.S06-RD-P-130, CO-R11-S05-RD-F-110 SS, CO-SD-PO-K2-130 | 0d |
| CO-R11-S05-RD-F-120 |  | Bituminous Base & Wearing Courses Layers for Road Works- S.W 07-[Road 11] | 12d | 2026-10-15 | 2026-10-28 | CO-R11-S05-RD-F-110 SS+3d, CO-R11-S05-RD-F-110 FF+3d, CO-R10-S03-RD-F-120 | 0d |
| CO-R11-S06-RD-F-150 |  | Bituminous Base & Wearing Courses Layers for Road Works- S.W 08-[Road 11] | 12d | 2026-10-18 | 2026-10-31 | CO-R11-S06-RD-F-140 SS+3d, CO-R11-S06-RD-F-140 FF+3d, CO-R10-S04-RD-F-150, PRO-R11-RD-DL-170 FF+3d, CO-R11-S05-RD-F-120 SS | 0d |
|  | TS | **Traffic Signs Boards and Roads Marking** |  | 2026-10-29 | 2026-11-11 |  |  |
| CO-R11-S05-RD-F-100 |  | Installation Works of Traffic Signs Boards For Road Works- S.W 07-[Road 11] | 10d | 2026-10-29 | 2026-11-09 | CO-R11.S05-RD-P-130, CO-R10-S03-RD-F-100, CO-R11-S05-RD-F-160 FF | 0d |
| CO-R11-S05-RD-F-160 |  | Application of Road Marking Works For Road Works- S.W 07-[Road 11] | 10d | 2026-10-29 | 2026-11-09 | CO-R11-S05-RD-F-120, CO-R10-S03-RD-F-160 | 0d |
| CO-R11-S06-RD-F-130 |  | Installation Works of Traffic Signs Boards For Road Works- S.W 08-[Road 11] | 10d | 2026-11-01 | 2026-11-11 | PRO-R11-RD-DL-140 FF+3d, CO-R11.S06-RD-P-130, CO-R10-S04-RD-F-130, CO-R11-S06-RD-F-170 FF | 1d |
| CO-R11-S06-RD-F-170 |  | Application of Road Marking Works For Road Works- S.W 08-[Road 11] | 10d | 2026-11-01 | 2026-11-11 | PRO-R11-RD-DL-150 FF+3d, CO-R11-S06-RD-F-150, CO-R10-S04-RD-F-170 | 0d |
|  | 6 | **Road 14 Local 1 ( 584 LM )** |  | 2026-06-13 | 2026-11-23 |  |  |
|  | 10 | **Sewage Network** |  | 2026-08-26 | 2026-09-27 |  |  |
|  | TF | **Testing and Finishes** |  | 2026-08-26 | 2026-09-27 |  |  |
| CO-R14-SW-TF-100 |  | Final Testing For Main Line of Sewage Network-[Road 14] | 12d | 2026-08-26 | 2026-09-08 | CO-R14.S07-SW-130, CO-R14.S07-RD-P-100 SS+3d, CO-R14.S07-RD-P-100 FF+3d, CO-R11-SW-TF-100, CO-R14.S08-RD-P-100 SS+3d, CO-R14.S08-RD-P-100 FF+3d, CO-R14.S08-SW-130 | 0d |
| CO-R14-SW-TF-110 |  | Install Manhole Cover Works for External Finishes of Sewage Network-[Road 14] | 12d | 2026-09-09 | 2026-09-22 | CO-R14.S07-SW-130 SS+3d, PRO-R14-SW-DL-120 FF+3d, CO-R14-SW-TF-100, CO-R14.S07-SW-130 FF+3d, CO-R14.S07-RD-P-100 SS+3d, CO-R14.S07-RD-P-100 FF+3d, CO-R14.S07-SW-120 SS, CO-R14.S07-SW-120, CO-R14.S07-SW-120 FF, ENG-SH-SW-ML-A-110, ENG-SH-SW-ML-A-110 FF, CO-R11-SW-TF-110, ENG-MS-SW-ML-A-110, ENG-MS-SW-ML-A-110 FF, CO-R14.S08-RD-P-100 SS+3d, CO-R14.S08-RD-P-100 FF+3d, CO-R14.S08-SW-130 SS+3d, CO-R14.S08-SW-130 FF+3d | 0d |
| CO-R14-SW-TF-130 |  | Main Manhole Internal Finishes (Benching + Insulation) of Sewage Network-[Road 14] | 12d | 2026-09-13 | 2026-09-27 | CO-R14-SW-TF-110 SS+3d, CO-R14-SW-TF-110 FF+3d, PRO-R14-SW-DL-130 FF+3d, CO-R11-SW-TF-130 | 0d |
|  | 11 | **Storm Drainage Network** |  | 2026-08-10 | 2026-10-21 |  |  |
|  | TF | **Testing and Finishes** |  | 2026-08-10 | 2026-10-21 |  |  |
| CO-R14-SD-TF-100 |  | Testing Work for Pipes of Storm Drainage Network-[Road 14] | 10d | 2026-08-10 | 2026-08-20 | CO-R14.S07-SD-120 SS+2d, CO-R14.S08-SD-120 SS+2d, CO-R14.S07-SD-130, CO-R14.S07-RD-P-100 SS, CO-R14.S07-RD-P-100 FF | 17d |
| CO-R14-SD-TF-110 |  | Install Catch Basin Cover Works for External Finishes of Storm Drainage Network-[Road 14] | 12d | 2026-09-06 | 2026-09-19 | CO-R14.S07-SD-170 SS+3d, PRO-R14-SD-DL-150 FF+3d, CO-R14.S07-RD-P-100 SS+3d, CO-R14.S07-RD-P-100 FF+3d, CO-R14.S07-RD-P-100, CO-R14.S07-SD-170 FF+3d, CO-R11-SD-TF-110, CO-R14.S08-RD-P-100 SS+3d, CO-R14.S08-RD-P-100 FF+3d, CO-R14-SD-TF-100, CO-R14.S07-SD-170 | 4d |
| CO-R14-SD-TF-120 |  | Main Manhole Internal Finishes (Benching + Insulation ) for Storm Drainage Network-[Road 14] | 12d | 2026-09-24 | 2026-10-07 | PRO-R14-SD-DL-160 FF+3d, CO-R14-SD-TF-110 SS, CO-R14-SD-TF-110, CO-R14-SD-TF-110 FF, CO-R14-SW-TF-110 SS, CO-R14-SW-TF-110, CO-R14-SW-TF-110 FF, ENG-SH-RD-A-100, ENG-SH-RD-A-100 FF, CO-R11-SD-TF-120, ENG-MS-RD-A-10, ENG-MS-RD-A-10 FF, CO-R14.S07-SD-220, PRO-R14-SD-DL-100 FF+3d | 1d |
| CO-R14-SD-TF-130 |  | Catch Basin Internal Finishes (Benching + Insulation ) for Storm Drainage Network-[Road 14] | 16d | 2026-10-04 | 2026-10-21 | CO-R14-SD-TF-110 SS+3d, CO-R14-SD-TF-110 FF+3d, PRO-R14-SD-DL-160 FF+3d, CO-R14-SD-TF-110, CO-R14-SW-TF-110 SS, CO-R14-SW-TF-110, CO-R14-SW-TF-110 FF, ENG-SH-RD-A-100, ENG-SH-RD-A-100 FF, CO-R11-SD-TF-130, ENG-MS-RD-A-10, ENG-MS-RD-A-10 FF, CO-R14.S07-SD-150 | 0d |
|  | 9 | **Potable Water Network** |  | 2026-09-09 | 2026-10-07 |  |  |
|  | TF | **Testing and Finishes** |  | 2026-09-09 | 2026-10-07 |  |  |
| CO-R14-PW-TF-100 |  | Final Finishes works and Covers for Valves and Valve Chambers of Potable Water Network-[Road 14] | 12d | 2026-09-09 | 2026-09-22 | CO-R14.S07-RD-P-100 FS+3d, CO-R11-PW-TF-100, PRO-R14-PW-DL-130 FF+3d | 0d |
| CO-R14-PW-TF-110 |  | Testing Work for Main Line of Potable Water Network-[Road 14] | 12d | 2026-09-09 | 2026-09-22 | CO-R11-PW-TF-110 | 0d |
| CO-R14-PW-TF-120 |  | Fire Hydrant Finishies (S.Box + Safety + Marker Post ) of Potable Water Network-[Road 14] | 12d | 2026-09-24 | 2026-10-07 | CO-R14-PW-TF-100, CO-R11-PW-TF-120, PRO-R14-PW-DL-130 FF+3d | 0d |
|  | 13 | **Irrigation Network** |  | 2026-09-03 | 2026-09-14 |  |  |
|  | TF | **Testing and Finishes** |  | 2026-09-03 | 2026-09-14 |  |  |
| CO-R11-IR-TF-140 |  | Final Testing (pressure tests) of Irrigation Network-[Road 14] | 10d | 2026-09-03 | 2026-09-14 | CO-R14.S07-IR-130, CO-R14.S07-RD-P-100, CO-R11-IR-TF-130, CO-R14.S08-RD-P-100 | 7d |
|  | 12 | **Street Lighting Network** |  | 2026-06-13 | 2026-08-31 |  |  |
|  | TR | **Termination and Testing Works** |  | 2026-06-13 | 2026-08-31 |  |  |
| CO-R11-SL-TF-180 |  | Termination Works For Lighting Poles Cables of Street Lighting Network-[Road 14] | 12d | 2026-06-13 | 2026-06-25 | CO-R14.S07-SL-160, CO-R14.S07-SL-130, PRO-R14-SL-DL-130 FF+3d, CO-R11-SL-TF-160, CO-R14.S08-SL-660 | 59d |
| CO-R11-SL-TF-190 |  | Termination Works For Panel Board Cables of Street Lighting Network-[Road 14] | 12d | 2026-08-16 | 2026-08-29 | CO-R14.S07-SL-190, PRO-R14-SL-DL-170 FF+3d, CO-R14.S07-SL-160, CO-R11-SL-TF-170, CO-R14.S08-SL-DB-660, CO-R14.S07-SL-220, CO-R14.S08-SL-220 | 0d |
| CO-R14-SL-TF-380 |  | Testing Works For Panel Board Cables of Street Lighting Network-[Road 14] | 2d | 2026-08-30 | 2026-08-31 | CO-R11-SL-TF-190, CO-R11-SL-TF-380 | 0d |
|  | ES | **Earthing System Works** |  |  |  |  |  |
|  | 14 | **Medium Voltage Network** |  | 2026-09-27 | 2026-10-04 |  |  |
|  | TT | **Termination and Testing Works** |  | 2026-09-27 | 2026-10-04 |  |  |
| CO-R11-MV-TF-180 |  | Termination Works of Medium Voltage Network-[Road 14] | 7d | 2026-09-27 | 2026-10-04 | CO-R11-MV-TF-160, PRO-R14-MV-DL-110 FF+3d | 0d |
|  | 1 | **Road Works** |  | 2026-10-26 | 2026-11-23 |  |  |
|  | 1 | **Bituminous Construction** |  | 2026-10-26 | 2026-11-11 |  |  |
| CO-R11-S07-RD-F-110 |  | Application of Prime Coat Layer for Road Works- S.W 09-[Road 14] | 12d | 2026-10-26 | 2026-11-08 | CO-R11-S05-RD-F-110, CO-R14.S07-RD-P-130 | 0d |

| ID | WBS | Task | Duration | Start | Finish | Predecessors | Total float |
| --- | --- | --- | --- | --- | --- | --- | --- |
| CO-R11-S08-RD-F-140 |  | Application of Prime Coat Layer for Road Works- S.W 10-[Road 14] | 10d | 2026-10-28 | 2026-11-08 | PRO-R14-RD-DL-160 FF+3d, CO-R14.S08-RD-P-130, CO-R11-S07-RD-F-110 SS | 0d |
| CO-R11-S07-RD-F-120 |  | Bituminous Base & Wearing Courses Layers for Road Works- S.W 09-[Road 14] | 10d | 2026-11-01 | 2026-11-11 | CO-R11-S07-RD-F-110 SS+3d, CO-R11-S07-RD-F-110 FF+3d, CO-R11-S05-RD-F-120 | 0d |
| CO-R11-S08-RD-F-150 |  | Bituminous Base & Wearing Courses Layers for Road Works- S.W 10-[Road 14] | 10d | 2026-11-01 | 2026-11-11 | CO-R11-S08-RD-F-140 SS+3d, CO-R11-S08-RD-F-140 FF+3d, PRO-R14-RD-DL-170 FF+3d, CO-R11-S07-RD-F-120 SS | 0d |
|  | TS | **Traffic Signs Boards and Roads Marking** |  | 2026-11-10 | 2026-11-23 |  |  |
| CO-R11-S07-RD-F-100 |  | Installation Works of Traffic Signs Boards For Road Works- S.W 09-[Road 14] | 12d | 2026-11-10 | 2026-11-23 | CO-R14.S07-RD-P-130, CO-R11-S05-RD-F-100, CO-R11-S07-RD-F-160 FF | 0d |
| CO-R11-S07-RD-F-160 |  | Application of Road Marking Works For Road Works- S.W 09-[Road 14] | 10d | 2026-11-12 | 2026-11-23 | CO-R11-S07-RD-F-120, CO-R11-S05-RD-F-160 | 0d |
| CO-R11-S08-RD-F-130 |  | Installation Works of Traffic Signs Boards For Road Works- S.W 10-[Road 14] | 10d | 2026-11-12 | 2026-11-23 | PRO-R14-RD-DL-140 FF+3d, CO-R14.S08-RD-P-130, CO-R11-S06-RD-F-130, CO-R11-S08-RD-F-170 FF | 1d |
| CO-R11-S08-RD-F-170 |  | Application of Road Marking Works For Road Works- S.W 10-[Road 14] | 10d | 2026-11-12 | 2026-11-23 | PRO-R14-RD-DL-150 FF+3d, CO-R11-S08-RD-F-150, CO-R11-S06-RD-F-170 | 0d |
|  | 7 | **Road 15 Local 1 ( 556 LM )** |  | 2026-06-27 | 2026-12-07 |  |  |
|  | 10 | **Sewage Network** |  | 2026-09-09 | 2026-10-11 |  |  |
|  | TF | **Testing and Finishes** |  | 2026-09-09 | 2026-10-11 |  |  |
| CO-R15-SW-TF-100 |  | Final Testing For Main Line of Sewage Network-[Road 15] | 12d | 2026-09-09 | 2026-09-22 | CO-R15.S09-SW-130, CO-R15.S09-RD-P-100 SS+3d, CO-R15.S09-RD-P-100 FF+3d, CO-R14-SW-TF-100, CO-R15.S10-RD-P-100 SS+3d, CO-R15.S10-RD-P-100 FF+3d | 0d |
| CO-R15-SW-TF-110 |  | Install Manhole Cover Works for External Finishes of Sewage Network-[Road 15] | 12d | 2026-09-24 | 2026-10-07 | CO-R15.S09-SW-130 SS+3d, PRO-R15-SW-DL-120 FF+3d, CO-R15-SW-TF-100, CO-R15.S09-SW-130 FF+3d, CO-R15.S09-RD-P-100 SS+3d, CO-R15.S09-RD-P-100 FF+3d, CO-R15.S09-SW-120 SS, CO-R15.S09-SW-120, CO-R15.S09-SW-120 FF, ENG-SH-SW-ML-A-110, ENG-SH-SW-ML-A-110 FF, CO-R14-SW-TF-110, ENG-MS-SW-ML-A-110, ENG-MS-SW-ML-A-110 FF, CO-R15.S10-RD-P-100 SS+3d, CO-R15.S10-RD-P-100 FF+3d | 0d |
| CO-R15-SW-TF-130 |  | Main Manhole Internal Finishes (Benching + Insulation) of Sewage Network-[Road 15] | 12d | 2026-09-28 | 2026-10-11 | CO-R15-SW-TF-110 SS+3d, CO-R15-SW-TF-110 FF+3d, PRO-R15-SW-DL-130 FF+3d, CO-R14-SW-TF-130 | 0d |
|  | 11 | **Storm Drainage Network** |  | 2026-08-23 | 2026-11-09 |  |  |
|  | TF | **Testing and Finishes** |  | 2026-08-23 | 2026-11-09 |  |  |
| CO-R15-SD-TF-100 |  | Testing Work for Pipes of Storm Drainage Network-[Road 15] | 16d | 2026-08-23 | 2026-09-09 | CO-R15.S09-SD-130 SS+3d, PRO-R15-SD-DL-140 FF+3d, CO-R15.S09-RD-P-100 SS+3d, CO-R15.S09-RD-P-100 FF+3d, CO-R15.S09-SD-130 FF+3d, CO-R15.S09-SD-120 SS, CO-R15.S09-SD-120, ENG-SH-SD-ML-A-110, ENG-MS-SD-ML-A-110, CO-R15.S10-RD-P-100 SS+3d, CO-R15.S10-RD-P-100 FF+3d | 16d |
| CO-R15-SD-TF-110 |  | Install Catch Basin Cover Works for External Finishes of Storm Drainage Network-[Road 15] | 12d | 2026-09-20 | 2026-10-04 | CO-R15.S09-SD-170 SS+3d, PRO-R15-SD-DL-150 FF+3d, CO-R15.S09-RD-P-100 SS+3d, CO-R15.S09-RD-P-100 FF+3d, CO-R15.S09-RD-P-100, CO-R15.S09-SD-170 FF+3d, CO-R14-SD-TF-110, CO-R15.S10-RD-P-100 SS+3d, CO-R15.S10-RD-P-100 FF+3d | 4d |
| CO-R15-SD-TF-120 |  | Main Manhole Internal Finishes (Benching + Insulation ) for Storm Drainage Network-[Road 15] | 12d | 2026-10-08 | 2026-10-21 | CO-R15-SD-TF-100 SS+3d, CO-R15-SD-TF-100 FF+3d, PRO-R15-SD-DL-160 FF+3d, CO-R15-SD-TF-100, CO-R15-SD-TF-110 SS, CO-R15-SD-TF-110, CO-R15-SD-TF-110 FF, CO-R15-SW-TF-110 SS, CO-R15-SW-TF-110, CO-R15-SW-TF-110 FF, ENG-SH-RD-A-100, ENG-SH-RD-A-100 FF, CO-R14-SD-TF-120, ENG-MS-RD-A-10, ENG-MS-RD-A-10 FF, PRO-R15-SD-DL-100 FF+3d | 1d |
| CO-R15-SD-TF-130 |  | Catch Basin Internal Finishes (Benching + Insulation ) for Storm Drainage Network-[Road 15] | 16d | 2026-10-22 | 2026-11-09 | CO-R15-SD-TF-110 SS+3d, CO-R15-SD-TF-110 FF+3d, PRO-R15-SD-DL-160 FF+3d, CO-R15-SD-TF-100 SS, CO-R15-SD-TF-100, CO-R15-SD-TF-100 FF, CO-R15-SD-TF-110, CO-R15-SW-TF-110 SS, CO-R15-SW-TF-110, CO-R15-SW-TF-110 FF, ENG-SH-RD-A-100, ENG-SH-RD-A-100 FF, CO-R14-SD-TF-130, ENG-MS-RD-A-10, ENG-MS-RD-A-10 FF | 0d |
|  | 9 | **Potable Water Network** |  | 2026-09-24 | 2026-10-21 |  |  |
|  | TF | **Testing and Finishes** |  | 2026-09-24 | 2026-10-21 |  |  |
| CO-R15-PW-TF-100 |  | Final Finishes works and Covers for Valves and Valve Chambers of Potable Water Network-[Road 15] | 12d | 2026-09-24 | 2026-10-07 | CO-R15.S09-RD-P-100 FS+3d, CO-R14-PW-TF-100, PRO-R15-PW-DL-130 FF+3d | 0d |
| CO-R15-PW-TF-110 |  | Testing Work for Main Line of Potable Water Network-[Road 15] | 12d | 2026-09-24 | 2026-10-07 | CO-R14-PW-TF-110 | 0d |
| CO-R15-PW-TF-120 |  | Fire Hydrant Finishies (S.Box + Safety + Marker Post ) of Potable Water Network-[Road 15] | 12d | 2026-10-08 | 2026-10-21 | CO-R15-PW-TF-100, CO-R14-PW-TF-120, PRO-R15-PW-DL-130 FF+3d | 0d |
|  | 13 | **Irrigation Network** |  | 2026-09-15 | 2026-09-27 |  |  |
|  | TF | **Testing and Finishes** |  | 2026-09-15 | 2026-09-27 |  |  |
| CO-R15-IR-TF-150 |  | Final Testing (pressure tests) of Irrigation Network-[Road 15] | 10d | 2026-09-15 | 2026-09-27 | CO-R15.S09-IR-130, CO-R15.S09-RD-P-100, CO-R11-IR-TF-140, CO-R15.S10-RD-P-100 | 7d |
|  | 12 | **Street Lighting Network** |  | 2026-06-27 | 2026-10-04 |  |  |
|  | TR | **Termination and Testing Works** |  | 2026-06-27 | 2026-10-04 |  |  |
| CO-R15-SL-TF-200 |  | Termination Works For Lighting Poles Cables of Street Lighting Network-[Road 15] | 12d | 2026-06-27 | 2026-07-09 | PRO-R15-SL-DL-130 FF+3d, CO-R11-SL-TF-180, CO-R17.S14-SL-130 | 59d |
| CO-R15-SL-TF-210 |  | Termination Works For Panel Board Cables of Street Lighting Network-[Road 15] | 12d | 2026-09-01 | 2026-09-14 | PRO-R15-SL-DL-170 FF+3d, CO-R11-SL-TF-190, CO-R14-SL-TF-380, CO-R15.S10-SL-160, CO-R15.S10-SL-190, CO-R15.S10-SL-220 | 0d |
| CO-R15-SL-TF-380 |  | Testing Works For Panel Board Cables of Street Lighting Network-[Road 15] | 16d | 2026-09-15 | 2026-10-04 | CO-R15-SL-TF-210, CO-R14-SL-TF-380 | 6d |
|  | ES | **Earthing System Works** |  |  |  |  |  |
|  | 14 | **Medium Voltage Network** |  | 2026-10-05 | 2026-10-12 |  |  |
|  | TT | **Termination and Testing Works** |  | 2026-10-05 | 2026-10-12 |  |  |
| CO-R15-MV-TF-200 |  | Termination Works of Medium Voltage Network-[Road 15] | 7d | 2026-10-05 | 2026-10-12 | CO-R15.S09-MV-ML-270, CO-R11-MV-TF-180, PRO-R15-MV-DL-110 FF+3d | 0d |
|  | 1 | **Road Works** |  | 2026-11-09 | 2026-12-07 |  |  |
|  | 1 | **Bituminous Construction** |  | 2026-11-09 | 2026-11-23 |  |  |
| CO-R15-S09-RD-F-110 |  | Application of Prime Coat Layer for Road Works- S.W 11-[Road 15] | 10d | 2026-11-09 | 2026-11-19 | CO-R11-S07-RD-F-110, CO-R15.S09-RD-P-130 | 0d |
| CO-R15-S10-RD-F-140 |  | Application of Prime Coat Layer for Road Works- S.W 12-[Road 15] | 10d | 2026-11-09 | 2026-11-19 | CO-R11-S08-RD-F-140, PRO-R15-RD-DL-160 FF+3d, CO-R15.S10-RD-P-130, CO-R15-S09-RD-F-110 SS | 0d |
| CO-R15-S09-RD-F-120 |  | Bituminous Base & Wearing Courses Layers for Road Works- S.W 11-[Road 15] | 10d | 2026-11-12 | 2026-11-23 | CO-R15-S09-RD-F-110 SS+3d, CO-R15-S09-RD-F-110 FF+3d, CO-R11-S07-RD-F-120 | 0d |
| CO-R15-S10-RD-F-150 |  | Bituminous Base & Wearing Courses Layers for Road Works- S.W 12-[Road 15] | 10d | 2026-11-12 | 2026-11-23 | CO-R15-S10-RD-F-140 SS+3d, CO-R15-S10-RD-F-140 FF+3d, CO-R11-S08-RD-F-150, PRO-R15-RD-DL-170 FF+3d, CO-R15-S09-RD-F-120 SS | 0d |
|  | TS | **Traffic Signs Boards and Roads Marking** |  | 2026-11-24 | 2026-12-07 |  |  |
| CO-R15-S09-RD-F-100 |  | Installation Works of Traffic Signs Boards For Road Works- S.W 11-[Road 15] | 10d | 2026-11-24 | 2026-12-05 | CO-R15.S09-RD-P-130, CO-R11-S07-RD-F-100, CO-R15-S09-RD-F-160 FF | 0d |
| CO-R15-S09-RD-F-160 |  | Application of Road Marking Works For Road Works- S.W 11-[Road 15] | 10d | 2026-11-24 | 2026-12-05 | CO-R15-S09-RD-F-120, CO-R11-S07-RD-F-160 | 0d |
| CO-R15-S10-RD-F-130 |  | Installation Works of Traffic Signs Boards For Road Works- S.W 12-[Road 15] | 12d | 2026-11-24 | 2026-12-07 | CO-R15.S10-RD-P-130, CO-R11-S08-RD-F-130, PRO-R15-RD-DL-140 FF+3d, CO-R15-S10-RD-F-170 FF | 1d |
| CO-R15-S10-RD-F-170 |  | Application of Road Marking Works For Road Works- S.W 12-[Road 15] | 10d | 2026-11-24 | 2026-12-05 | CO-R15-S10-RD-F-150, CO-R11-S08-RD-F-170, PRO-R15-RD-DL-150 FF+3d | 0d |
|  | 8 | **Road 16 Local 1 ( 527 LM )** |  | 2026-07-11 | 2026-12-19 |  |  |
|  | 10 | **Sewage Network** |  | 2026-09-24 | 2026-10-25 |  |  |
|  | TF | **Testing and Finishes** |  | 2026-09-24 | 2026-10-25 |  |  |
| CO-R16-SW-TF-100 |  | Final Testing For Main Line of Sewage Network-[Road 16] | 12d | 2026-09-24 | 2026-10-07 | CO-R16.S11-SW-130, CO-R16.S11-RD-P-100 SS+3d, CO-R16.S11-RD-P-100 FF+3d, CO-R15-SW-TF-100, CO-R16.S12-RD-P-100 SS+3d, CO-R16.S12-RD-P-100 FF+3d | 0d |
| CO-R16-SW-TF-110 |  | Install Manhole Cover Works for External Finishes of Sewage Network-[Road 16] | 12d | 2026-10-08 | 2026-10-21 | CO-R16.S11-SW-130 SS+3d, PRO-R16-SW-DL-120 FF+3d, CO-R16-SW-TF-100, CO-R16.S11-SW-130 FF+3d, CO-R16.S11-RD-P-100 SS+3d, CO-R16.S11-RD-P-100 FF+3d, CO-R16.S11-SW-120 SS, CO-R16.S11-SW-120, CO-R16.S11-SW-120 FF, ENG-SH-SW-ML-A-110, ENG-SH-SW-ML-A-110 FF, CO-R15-SW-TF-110, ENG-MS-SW-ML-A-110, ENG-MS-SW-ML-A-110 FF, CO-R16.S12-RD-P-100 SS+3d, CO-R16.S12-RD-P-100 FF+3d | 0d |
| CO-R16-SW-TF-130 |  | Main Manhole Internal Finishes (Benching + Insulation) of Sewage Network-[Road 16] | 12d | 2026-10-12 | 2026-10-25 | CO-R16-SW-TF-110 SS+3d, CO-R16-SW-TF-110 FF+3d, PRO-R16-SW-DL-130 FF+3d, CO-R15-SW-TF-130 | 0d |
|  | 11 | **Storm Drainage Network** |  | 2026-09-10 | 2026-11-28 |  |  |
|  | TF | **Testing and Finishes** |  | 2026-09-10 | 2026-11-28 |  |  |
| CO-R16-SD-TF-100 |  | Testing Work for Pipes of Storm Drainage Network-[Road 16] | 16d | 2026-09-10 | 2026-09-29 | CO-R16.S11-SD-130 SS+3d, PRO-R16-SD-DL-140 FF+3d, CO-R16.S11-RD-P-100 SS+3d, CO-R16.S11-RD-P-100 FF+3d, CO-R16.S11-SD-130 FF+3d, CO-R16.S11-SD-120 SS, CO-R16.S11-SD-120, ENG-SH-SD-ML-A-110, CO-R15-SD-TF-100, ENG-MS-SD-ML-A-110, CO-R16.S12-RD-P-100 SS+3d, CO-R16.S12-RD-P-100 FF+3d | 16d |
| CO-R16-SD-TF-110 |  | Install Catch Basin Cover Works for External Finishes of Storm Drainage Network-[Road 16] | 12d | 2026-10-05 | 2026-10-18 | CO-R16.S11-SD-170 SS+3d, PRO-R16-SD-DL-150 FF+3d, CO-R16.S11-RD-P-100 SS+3d, CO-R16.S11-RD-P-100 FF+3d, CO-R16.S11-RD-P-100, CO-R16.S11-SD-170 FF+3d, CO-R15-SD-TF-110, CO-R16.S12-RD-P-100 SS+3d, CO-R16.S12-RD-P-100 FF+3d | 4d |
| CO-R16-SD-TF-120 |  | Main Manhole Internal Finishes (Benching + Insulation ) for Storm Drainage Network-[Road 16] | 12d | 2026-10-22 | 2026-11-04 | CO-R16-SD-TF-100 SS+3d, CO-R16-SD-TF-100 FF+3d, PRO-R16-SD-DL-160 FF+3d, CO-R16-SD-TF-100, CO-R16-SD-TF-110 SS, CO-R16-SD-TF-110, CO-R16-SD-TF-110 FF, CO-R16-SW-TF-110 SS, CO-R16-SW-TF-110, CO-R16-SW-TF-110 FF, ENG-SH-RD-A-100, ENG-SH-RD-A-100 FF, CO-R15-SD-TF-120, ENG-MS-RD-A-10, ENG-MS-RD-A-10 FF, PRO-R16-SD-DL-100 FF+3d | 1d |
| CO-R16-SD-TF-130 |  | Catch Basin Internal Finishes (Benching + Insulation ) for Storm Drainage Network-[Road 16] | 16d | 2026-11-10 | 2026-11-28 | CO-R16-SD-TF-110 SS+3d, CO-R16-SD-TF-110 FF+3d, PRO-R16-SD-DL-160 FF+3d, CO-R16-SD-TF-100 SS, CO-R16-SD-TF-100, CO-R16-SD-TF-100 FF, CO-R16-SD-TF-110, CO-R16-SW-TF-110 SS, CO-R16-SW-TF-110, CO-R16-SW-TF-110 FF, ENG-SH-RD-A-100, ENG-SH-RD-A-100 FF, CO-R15-SD-TF-130, ENG-MS-RD-A-10, ENG-MS-RD-A-10 FF | 0d |
|  | 9 | **Potable Water Network** |  | 2026-10-08 | 2026-11-04 |  |  |
|  | TF | **Testing and Finishes** |  | 2026-10-08 | 2026-11-04 |  |  |
| CO-R16-PW-TF-100 |  | Final Finishes works and Covers for Valves and Valve Chambers of Potable Water Network-[Road 16] | 12d | 2026-10-08 | 2026-10-21 | CO-R16.S11-RD-P-100 FS+3d, CO-R15-PW-TF-100, PRO-R16-PW-DL-130 FF+3d, CO-R16.S12-RD-P-100 FS+3d | 0d |
| CO-R16-PW-TF-110 |  | Testing Work for Main Line of Potable Water Network-[Road 16] | 12d | 2026-10-08 | 2026-10-21 | CO-R15-PW-TF-110 | 0d |
| CO-R16-PW-TF-120 |  | Fire Hydrant Finishies (S.Box + Safety + Marker Post ) of Potable Water Network-[Road 16] | 12d | 2026-10-22 | 2026-11-04 | CO-R16-PW-TF-100, CO-R15-PW-TF-120, PRO-R16-PW-DL-130 FF+3d | 0d |
|  | 13 | **Irrigation Network** |  | 2026-09-28 | 2026-10-08 |  |  |
|  | TF | **Testing and Finishes** |  | 2026-09-28 | 2026-10-08 |  |  |
| CO-R16-IR-TF-160 |  | Final Testing (pressure tests) of Irrigation Network-[Road 16] | 10d | 2026-09-28 | 2026-10-08 | CO-R16.S11-IR-130, CO-R16.S11-RD-P-100, CO-R15-IR-TF-150, CO-R16.S12-RD-P-100 | 7d |
|  | 12 | **Street Lighting Network** |  | 2026-07-11 | 2026-10-06 |  |  |
|  | TR | **Termination and Testing Works** |  | 2026-07-11 | 2026-10-06 |  |  |

| ID | WBS | Task | Duration | Start | Finish | Predecessors | Total float |
| --- | --- | --- | --- | --- | --- | --- | --- |
| CO-R16-SL-TF-220 |  | Termination Works For Lighting Poles Cables of Street Lighting Network-[Road 16] | 12d | 2026-07-11 | 2026-07-23 | PRO-R16-SL-DL-130 FF+3d, CO-R15-SL-TF-200 | 59d |
| CO-R16-SL-TF-230 |  | Termination Works For Panel Board Cables of Street Lighting Network-[Road 16] | 12d | 2026-09-15 | 2026-09-29 | PRO-R16-SL-DL-170 FF+3d, CO-R15-SL-TF-210 | 0d |
| CO-R16-SL-TF-380 |  | Testing Works For Panel Board Cables of Street Lighting Network-[Road 16] | 2d | 2026-10-05 | 2026-10-06 | CO-R16-SL-TF-230, CO-R15-SL-TF-380 | 6d |
|  | ES | **Earthing System Works** |  |  |  |  |  |
|  | 14 | **Medium Voltage Network** |  | 2026-10-13 | 2026-10-20 |  |  |
|  | TT | **Termination and Testing Works** |  | 2026-10-13 | 2026-10-20 |  |  |
| CO-R16-MV-TF-220 |  | Termination Works of Medium Voltage Network-[Road 16] | 7d | 2026-10-13 | 2026-10-20 | CO-R16.S11-MV-ML-300, CO-R15-MV-TF-200, PRO-R16-MV-DL-110 FF+3d | 0d |
|  | 1 | **Road Works** |  | 2026-11-21 | 2026-12-19 |  |  |
|  | 1 | **Bituminous Construction** |  | 2026-11-21 | 2026-12-05 |  |  |
| CO-R16-S11-RD-F-110 |  | Application of Prime Coat Layer for Road Works - S.W 13-[Road 16] | 10d | 2026-11-21 | 2026-12-01 | CO-R15-S09-RD-F-110, CO-R16.S11-RD-P-130 | 0d |
| CO-R16-S12-RD-F-140 |  | Application of Prime Coat Layer for Road Works- S.W 14-[Road 16] | 10d | 2026-11-21 | 2026-12-01 | CO-R15-S10-RD-F-140, PRO-R16-RD-DL-160 FF+3d, CO-R16.S12-RD-P-130, CO-R16-S11-RD-F-110 SS | 0d |
| CO-R16-S11-RD-F-120 |  | Bituminous Base & Wearing Courses Layers for Road Works- S.W 13-[Road 16] | 10d | 2026-11-24 | 2026-12-05 | CO-R16-S11-RD-F-110 SS+3d, CO-R16-S11-RD-F-110 FF+3d, CO-R15-S09-RD-F-120 | 0d |
| CO-R16-S12-RD-F-150 |  | Bituminous Base & Wearing Courses Layers for Road Works- S.W 14-[Road 16] | 10d | 2026-11-24 | 2026-12-05 | CO-R16-S12-RD-F-140 SS+3d, CO-R16-S12-RD-F-140 FF+3d, CO-R15-S10-RD-F-150, PRO-R16-RD-DL-170 FF+3d, CO-R16-S11-RD-F-120 FF | 0d |
|  | TS | **Traffic Signs Boards and Roads Marking** |  | 2026-12-06 | 2026-12-19 |  |  |
| CO-R16-S11-RD-F-100 |  | Installation Works of Traffic Signs Boards For Road Works- S.W 13-[Road 16] | 10d | 2026-12-06 | 2026-12-16 | CO-R16.S11-RD-P-130, CO-R15-S09-RD-F-100, CO-R16-S11-RD-F-160 FF | 0d |
| CO-R16-S11-RD-F-160 |  | Application of Road Marking Works For Road Works- S.W 13-[Road 16] | 10d | 2026-12-06 | 2026-12-16 | CO-R16-S11-RD-F-120, CO-R15-S09-RD-F-160 | 0d |
| CO-R16-S12-RD-F-170 |  | Application of Road Marking Works For Road Works- S.W 14-[Road 16] | 10d | 2026-12-06 | 2026-12-16 | CO-R16-S12-RD-F-150, CO-R15-S10-RD-F-170, PRO-R16-RD-DL-150 FF+3d | 0d |
| CO-R16-S12-RD-F-130 |  | Installation Works of Traffic Signs Boards For Road Works- S.W 14-[Road 16] | 10d | 2026-12-08 | 2026-12-19 | CO-R16.S12-RD-P-130, CO-R15-S10-RD-F-130, PRO-R16-RD-DL-140 FF+3d, CO-R16-S12-RD-F-170 FF | 1d |
|  | 9 | **Road 17 Local 1 ( 500 LM )** |  | 2026-07-25 | 2026-12-28 |  |  |
|  | 10 | **Sewage Network** |  | 2026-10-08 | 2026-11-08 |  |  |
|  | TF | **Testing and Finishes** |  | 2026-10-08 | 2026-11-08 |  |  |
| CO-R17-SW-TF-100 |  | Final Testing For Main Line of Sewage Network-[Road 17] | 12d | 2026-10-08 | 2026-10-21 | CO-R17.S13-SW-130, CO-R17.S13-RD-P-100 SS+3d, CO-R17.S13-RD-P-100 FF+3d, CO-R16-SW-TF-100, CO-R17.S14-RD-P-100 SS+3d, CO-R17.S14-RD-P-100 FF+3d | 0d |
| CO-R17-SW-TF-110 |  | Install Manhole Cover Works for External Finishes of Sewage Network-[Road 17] | 12d | 2026-10-22 | 2026-11-04 | CO-R17.S13-SW-130 SS+3d, PRO-R17-SW-DL-120 FF+3d, CO-R17-SW-TF-100, CO-R17.S13-SW-130 FF+3d, CO-R17.S13-RD-P-100 SS+3d, CO-R17.S13-RD-P-100 FF+3d, CO-R17.S13-SW-120 SS, CO-R17.S13-SW-120, CO-R17.S13-SW-120 FF, ENG-SH-SW-ML-A-110, ENG-SH-SW-ML-A-110 FF, CO-R16-SW-TF-110, ENG-MS-SW-ML-A-110, ENG-MS-SW-ML-A-110 FF, CO-R17.S14-RD-P-100 SS+3d, CO-R17.S14-RD-P-100 FF+3d | 0d |
| CO-R17-SW-TF-130 |  | Main Manhole Internal Finishes (Benching + Insulation) of Sewage Network-[Road 17] | 12d | 2026-10-26 | 2026-11-08 | CO-R17-SW-TF-110 SS+3d, CO-R17-SW-TF-110 FF+3d, PRO-R17-SW-DL-130 FF+3d, CO-R16-SW-TF-130 | 0d |
|  | 11 | **Storm Drainage Network** |  | 2026-10-04 | 2026-12-12 |  |  |
|  | TF | **Testing and Finishes** |  | 2026-10-04 | 2026-12-12 |  |  |
| CO-R17-SD-TF-100 |  | Testing Work for Pipes of Storm Drainage Network-[Road 17] | 16d | 2026-10-04 | 2026-10-21 | CO-R17.S13-SD-130 SS+3d, PRO-R17-SD-DL-140 FF+3d, CO-R17.S13-RD-P-100 SS+3d, CO-R17.S13-RD-P-100 FF+3d, CO-R17.S13-SD-130 FF+3d, CO-R17.S13-SD-120 SS, CO-R17.S13-SD-120, ENG-SH-SD-ML-A-110, CO-R16-SD-TF-100, ENG-MS-SD-ML-A-110, CO-R17.S14-RD-P-100 SS+3d, CO-R17.S14-RD-P-100 FF+3d | 13d |
| CO-R17-SD-TF-110 |  | Install Catch Basin Cover Works for External Finishes of Storm Drainage Network-[Road 17] | 12d | 2026-10-19 | 2026-11-01 | CO-R17.S13-SD-170 SS+3d, PRO-R17-SD-DL-150 FF+3d, CO-R17.S13-RD-P-100 SS+3d, CO-R17.S13-RD-P-100 FF+3d, CO-R17.S13-RD-P-100, CO-R17.S13-SD-170 FF+3d, CO-R16-SD-TF-110, CO-R17.S14-RD-P-100 SS+3d, CO-R17.S14-RD-P-100 FF+3d | 4d |
| CO-R17-SD-TF-120 |  | Main Manhole Internal Finishes (Benching + Insulation ) for Storm Drainage Network-[Road 17] | 12d | 2026-11-05 | 2026-11-18 | CO-R17-SD-TF-100 SS+3d, CO-R17-SD-TF-100 FF+3d, PRO-R17-SD-DL-160 FF+3d, CO-R17-SD-TF-100, CO-R17-SD-TF-110 SS, CO-R17-SD-TF-110, CO-R17-SD-TF-110 FF, CO-R17-SW-TF-110 SS, CO-R17-SW-TF-110, CO-R17-SW-TF-110 FF, ENG-SH-RD-A-100, ENG-SH-RD-A-100 FF, CO-R16-SD-TF-120, ENG-MS-RD-A-10, ENG-MS-RD-A-10 FF, PRO-R17-SD-DL-100 FF+3d | 1d |
| CO-R17-SD-TF-130 |  | Catch Basin Internal Finishes (Benching + Insulation ) for Storm Drainage Network-[Road 17] | 12d | 2026-11-29 | 2026-12-12 | CO-R17-SD-TF-110 SS+3d, CO-R17-SD-TF-110 FF+3d, PRO-R17-SD-DL-160 FF+3d, CO-R17-SD-TF-100 SS, CO-R17-SD-TF-100, CO-R17-SD-TF-100 FF, CO-R17-SD-TF-110, CO-R17-SW-TF-110 SS, CO-R17-SW-TF-110, CO-R17-SW-TF-110 FF, ENG-SH-RD-A-100, ENG-SH-RD-A-100 FF, CO-R16-SD-TF-130, ENG-MS-RD-A-10, ENG-MS-RD-A-10 FF | 0d |
|  | 9 | **Potable Water Network** |  | 2026-10-22 | 2026-11-18 |  |  |
|  | TF | **Testing and Finishes** |  | 2026-10-22 | 2026-11-18 |  |  |
| CO-R17-PW-TF-100 |  | Final Finishes works and Covers for Valves and Valve Chambers of Potable Water Network-[Road 17] | 12d | 2026-10-22 | 2026-11-04 | CO-R17.S13-RD-P-100 FS+3d, CO-R16-PW-TF-100, PRO-R17-PW-DL-130 FF+3d, CO-R17.S14-RD-P-100 FS+3d | 0d |
| CO-R17-PW-TF-110 |  | Testing Work for Main Line of Potable Water Network-[Road 17] | 12d | 2026-10-22 | 2026-11-04 | CO-R16-PW-TF-110 | 0d |
| CO-R17-PW-TF-120 |  | Fire Hydrant Finishies (S.Box + Safety + Marker Post ) of Potable Water Network-[Road 17] | 12d | 2026-11-05 | 2026-11-18 | CO-R17-PW-TF-100, CO-R16-PW-TF-120, PRO-R17-PW-DL-130 FF+3d | 0d |
|  | 13 | **Irrigation Network** |  | 2026-10-18 | 2026-10-28 |  |  |
|  | TF | **Testing and Finishes** |  | 2026-10-18 | 2026-10-28 |  |  |
| CO-R17-IR-TF-170 |  | Final Testing (pressure tests) of Irrigation Network-[Road 17] | 10d | 2026-10-18 | 2026-10-28 | CO-R17.S13-IR-130, CO-R17.S13-RD-P-100, CO-R16-IR-TF-160, CO-R17.S14-RD-P-100 | 0d |
|  | 12 | **Street Lighting Network** |  | 2026-07-25 | 2026-10-15 |  |  |
|  | TR | **Termination and Testing Works** |  | 2026-07-25 | 2026-10-15 |  |  |
| CO-R17-SL-TF-240 |  | Termination Works For Lighting Poles Cables of Street Lighting Network-[Road 17] | 12d | 2026-07-25 | 2026-08-06 | PRO-R17-SL-DL-130 FF+3d, CO-R16-SL-TF-220 | 59d |
| CO-R17-SL-TF-250 |  | Termination Works For Panel Board Cables of Street Lighting Network-[Road 17] | 12d | 2026-09-30 | 2026-10-13 | PRO-R17-SL-DL-170 FF+3d, CO-R16-SL-TF-230, CO-R17.S14-SL-160, CO-R17.S14-SL-190, CO-R17.S14-SL-220 | 0d |
| CO-R17-SL-TF-380 |  | Testing Works For Panel Board Cables of Street Lighting Network-[Road 17] | 2d | 2026-10-14 | 2026-10-15 | CO-R17-SL-TF-250, CO-R16-SL-TF-380 | 0d |
|  | ES | **Earthing System Works** |  |  |  |  |  |
|  | 14 | **Medium Voltage Network** |  | 2026-10-21 | 2026-10-28 |  |  |
|  | TT | **Termination and Testing Works** |  | 2026-10-21 | 2026-10-28 |  |  |
| CO-R17-MV-TF-240 |  | Termination Works of Medium Voltage Network-[Road 17] | 7d | 2026-10-21 | 2026-10-28 | CO-R17.S13-MV-ML-330, CO-R16-MV-TF-220, PRO-R17-MV-DL-110 FF+3d, CO-R17.S13-MV-SS-160 | 0d |
|  | 1 | **Road Works** |  | 2026-12-02 | 2026-12-28 |  |  |
|  | 1 | **Bituminous Construction** |  | 2026-12-02 | 2026-12-16 |  |  |
| CO-R17-S13-RD-F-110 |  | Application of Prime Coat Layer for Road Works- S.W 15-[Road 17] | 10d | 2026-12-02 | 2026-12-13 | CO-R16-S11-RD-F-110, CO-R17.S13-RD-P-130 | 0d |
| CO-R17-S14-RD-F-140 |  | Application of Prime Coat Layer for Road Works- S.W 16-[Road 17] | 10d | 2026-12-02 | 2026-12-13 | CO-R16-S12-RD-F-140, PRO-R17-RD-DL-160 FF+3d, CO-R17.S14-RD-P-130, CO-R17-S13-RD-F-110 SS | 0d |
| CO-R17-S13-RD-F-120 |  | Bituminous Base & Wearing Courses Layers for Road Works- S.W 15-[Road 17] | 10d | 2026-12-06 | 2026-12-16 | CO-R17-S13-RD-F-110 SS+3d, CO-R17-S13-RD-F-110 FF+3d, CO-R16-S11-RD-F-120 | 0d |
| CO-R17-S14-RD-F-150 |  | Bituminous Base & Wearing Courses Layers for Road Works- S.W 16-[Road 17] | 10d | 2026-12-06 | 2026-12-16 | CO-R17-S14-RD-F-140 SS+3d, CO-R17-S14-RD-F-140 FF+3d, CO-R16-S12-RD-F-150, PRO-R17-RD-DL-170 FF+3d, CO-R17-S13-RD-F-120 SS | 0d |
|  | TS | **Traffic Signs Boards and Roads Marking** |  | 2026-12-17 | 2026-12-28 |  |  |
| CO-R17-S13-RD-F-100 |  | Installation Works of Traffic Signs Boards For Road Works- S.W 15-[Road 17] | 10d | 2026-12-17 | 2026-12-28 | CO-R17.S13-RD-P-130, CO-R16-S11-RD-F-100, CO-R17-S13-RD-F-160 FF | 0d |
| CO-R17-S13-RD-F-160 |  | Application of Road Marking Works For Road Works- S.W 15-[Road 17] | 10d | 2026-12-17 | 2026-12-28 | CO-R17-S13-RD-F-120, CO-R16-S11-RD-F-160 | 0d |
| CO-R17-S14-RD-F-170 |  | Application of Road Marking Works For Road Works- S.W 16-[Road 17] | 10d | 2026-12-17 | 2026-12-28 | CO-R17-S14-RD-F-150, CO-R16-S12-RD-F-170, PRO-R17-RD-DL-150 FF+3d | 0d |
| CO-R17-S14-RD-F-130 |  | Installation Works of Traffic Signs Boards For Road Works- S.W 16-[Road 17] | 7d | 2026-12-21 | 2026-12-28 | CO-R17.S14-RD-P-130, CO-R16-S12-RD-F-130, PRO-R17-RD-DL-140 FF+3d, CO-R17-S14-RD-F-170 FF | 0d |
|  | 3 | **Road 18 Local 1 ( 479 LM )** |  | 2026-06-16 | 2026-12-19 |  |  |
|  | 10 | **Sewage Network** |  | 2026-08-20 | 2026-09-16 |  |  |
|  | TF | **Testing and Finishes** |  | 2026-08-20 | 2026-09-16 |  |  |
| CO-R18-SW-TF-100 |  | Final Testing For Main Line of Sewage Network-[Road 18] | 12d | 2026-08-20 | 2026-09-02 | CO-R09-SW-TF-100, CO-R11.S06-RD-P-100, CO-R18.S15-RD-P-160 SS, CO-R18.S15-RD-P-160 FF | 44d |
| CO-R18-SW-TF-110 |  | Install Manhole Cover Works for External Finishes of Sewage Network-[Road 18] | 12d | 2026-09-03 | 2026-09-16 | CO-R18-SW-TF-100, ENG-SH-SW-ML-A-110, ENG-SH-SW-ML-A-110 FF, CO-R09-SW-TF-110, ENG-MS-SW-ML-A-110, ENG-MS-SW-ML-A-110 FF, PRO-R18-SW-DL-170 | 44d |
| CO-R18-SW-TF-130 |  | Main Manhole Internal Finishes (Benching + Insulation) of Sewage Network-[Road 18] | 12d | 2026-09-03 | 2026-09-16 | CO-R09-SW-TF-120, CO-R18-SW-TF-110 SS, CO-R18-SW-TF-110 FF, PRO-R18-SW-DL-190 | 44d |
|  | 11 | **Storm Drainage Network** |  | 2026-08-03 | 2026-11-09 |  |  |
|  | TF | **Testing and Finishes** |  | 2026-08-03 | 2026-11-09 |  |  |
| CO-R18-SD-TF-110 |  | Install Catch Basin Cover Works for External Finishes of Storm Drainage Network-[Road 18] | 16d | 2026-08-03 | 2026-08-20 | CO-R09-SD-TF-110, CO-R18.S15-RD-P-160 SS, CO-R18.S15-RD-P-160 FF, PRO-R18-SD-DL-210 | 80d |
| CO-R18-SD-TF-100 |  | Testing Work for Pipes of Storm Drainage Network-[Road 18] | 16d | 2026-10-04 | 2026-10-21 | ENG-SH-SD-ML-A-110, CO-R09-SD-TF-100, ENG-MS-SD-ML-A-110, CO-R17.S13-RD-P-100 SS+3d, CO-R17.S13-RD-P-100 FF+3d | 28d |
| CO-R18-SD-TF-120 |  | Main Manhole Internal Finishes (Benching + Insulation ) for Storm Drainage Network-[Road 18] | 16d | 2026-10-22 | 2026-11-09 | CO-R18-SD-TF-100 SS+3d, CO-R18-SD-TF-100 FF+3d, CO-R18-SD-TF-100, CO-R18-SD-TF-110 SS, CO-R18-SD-TF-110, CO-R18-SD-TF-110 FF, CO-R18-SW-TF-110 SS, CO-R18-SW-TF-110 FF, ENG-SH-RD-A-100, ENG-SH-RD-A-100 FF, CO-R09-SD-TF-120, ENG-MS-RD-A-10, ENG-MS-RD-A-10 FF, PRO-R18-SD-DL-190, PRO-R18-SD-DL-170 FF+3d | 28d |
| CO-R18-SD-TF-130 |  | Catch Basin Internal Finishes (Benching + Insulation ) for Storm Drainage Network-[Road 18] | 16d | 2026-10-22 | 2026-11-09 | CO-R18-SD-TF-110 SS+3d, CO-R18-SD-TF-110 FF+3d, CO-R18-SD-TF-100 SS, CO-R18-SD-TF-100, CO-R18-SD-TF-100 FF, CO-R18-SD-TF-110, CO-R18-SW-TF-110 SS, CO-R18-SW-TF-110 FF, ENG-SH-RD-A-100, ENG-SH-RD-A-100 FF, CO-R09-SD-TF-130, ENG-MS-RD-A-10, ENG-MS-RD-A-10 FF, PRO-R18-SD-DL-230 | 28d |

| ID | WBS | Task | Duration | Start | Finish | Predecessors | Total float |
| --- | --- | --- | --- | --- | --- | --- | --- |
|  | 9 | **Potable Water Network** |  | 2026-08-26 | 2026-11-18 |  |  |
|  | TF | **Testing and Finishes** |  | 2026-08-26 | 2026-11-18 |  |  |
| CO-R18-PW-TF-100 |  | Final Finishes works and Covers for Valves and Valve Chambers of Potable Water Network-[Road 18] | 12d | 2026-08-26 | 2026-09-08 | CO-R09-PW-TF-100, CO-R18.S15-RD-P-160 SS, CO-R18.S15-RD-P-160 FF | 48d |
| CO-R18-PW-TF-120 |  | Fire Hydrant Finishies (S.Box + Safety + Marker Post ) of Potable Water Network-[Road 18] | 12d | 2026-09-09 | 2026-09-22 | CO-R18-PW-TF-100, CO-R09-PW-TF-120 | 48d |
| CO-R18-PW-TF-110 |  | Testing Work for Main Line of Potable Water Network-[Road 18] | 12d | 2026-11-05 | 2026-11-18 | CO-R09-PW-TF-110, CO-R17-PW-TF-110, PRO-R18-PW-DL-170 | 0d |
|  | 13 | **Irrigation Network** |  | 2026-08-17 | 2026-09-03 |  |  |
|  | TF | **Testing and Finishes** |  | 2026-08-17 | 2026-09-03 |  |  |
| CO-R18-IR-TF-110 |  | Final Testing (pressure tests) of Irrigation Network-[Road 18] | 16d | 2026-08-17 | 2026-09-03 | CO-R09-IR-TF-100, CO-R18.S15-RD-P-160 SS, CO-R18.S15-RD-P-160 FF | 46d |
|  | 12 | **Street Lighting Network** |  | 2026-06-16 | 2026-09-12 |  |  |
|  | TR | **Termination and Testing Works** |  | 2026-06-16 | 2026-09-12 |  |  |
| CO-R18-SL-TF-120 |  | Termination Works For Lighting Poles Cables of Street Lighting Network-[Road 18] | 12.25d | 2026-06-16 | 2026-06-30 | CO-R09-SL-TF-100, PRO-R18-SL-DL-210, PRO-R18-SL-DL-250, CO-R18.S16-SL-130 | 91.75d |
| CO-R18-SL-TF-130 |  | Termination Works For Panel Board Cables of Street Lighting Network-[Road 18] | 12d | 2026-08-26 | 2026-09-09 | CO-R09-SL-TF-110, CO-R09.S02-SL-220, CO-R18.S16-SL-160, CO-R18.S16-SL-190, CO-R18.S16-SL-220 | 28.5d |
| CO-R18-SL-TF-380 |  | Testing Works For Panel Board Cables of Street Lighting Network-[Road 18] | 2d | 2026-09-09 | 2026-09-12 | CO-R18-SL-TF-130, CO-R09-SL-TF-380 | 28.5d |
|  | ES | **Earthing System Works** |  |  |  |  |  |
|  | 14 | **Medium Voltage Network** |  | 2026-07-09 | 2026-07-27 |  |  |
|  | TT | **Termination and Testing Works** |  | 2026-07-09 | 2026-07-27 |  |  |
| CO-R18-MV-TF-120 |  | Termination Works of Medium Voltage Network-[Road 18] | 16d | 2026-07-09 | 2026-07-27 | CO-R09-MV-TF-100, CO-R18.S15-MV-ML-360, PRO-R18-MV-DL-130 | 79d |
|  | 1 | **Road Works** |  | 2026-10-08 | 2026-12-19 |  |  |
|  | 1 | **Bituminous Construction** |  | 2026-10-08 | 2026-11-16 |  |  |
| CO-R18-S15-RD-F-100 |  | Application of Prime Coat Layer for Road Works- S.W 03-[Road 18] | 18d | 2026-10-08 | 2026-10-29 | CO-R09-S1-RD-F-100, CO-R18.S15-RD-P-140, PRO-R18-RD-DL-240 | 14.5d |
| CO-R18-S15-RD-F-110 |  | Bituminous Base & Wearing Courses Layers for Road Works- S.W 03-[Road 18] | 18d | 2026-10-12 | 2026-11-02 | CO-R18-S15-RD-F-100 SS+3d, CO-R18-S15-RD-F-100 FF+3d, CO-R09-S1-RD-F-120, PRO-R18-RD-DL-250 FF+3d | 14.5d |
| CO-R18-S16-RD-F-150 |  | Application of Prime Coat Layer for Road Works- S.W 04-[Road 18] | 18d | 2026-10-22 | 2026-11-12 | CO-R09-S2-RD-F-110, CO-R18-S15-RD-F-100 SS, PRO-R18-RD-DL-240 | 21.5d |
| CO-R18-S16-RD-F-170 |  | Bituminous Base & Wearing Courses Layers for Road Works- S.W 04-[Road 18] | 18d | 2026-10-26 | 2026-11-16 | CO-R18-S16-RD-F-150 SS+3d, CO-R18-S16-RD-F-150 FF+3d, CO-R09-S2-RD-F-130, CO-R18-S15-RD-F-110 SS, PRO-R18-RD-DL-250 FF+3d | 21.5d |
|  | TS | **Traffic Signs Boards and Roads Marking** |  | 2026-11-09 | 2026-12-19 |  |  |
| CO-R18-S15-RD-F-120 |  | Application of Road Marking Works For Road Works- S.W 03-[Road 18] | 12d | 2026-11-09 | 2026-11-23 | CO-R09-S1-RD-F-140, CO-R18-S15-RD-F-110, CO-R09-S1-RD-F-150, PRO-R18-RD-DL-210 | 8.5d |
| CO-R18-S15-RD-F-130 |  | Installation Works of Traffic Signs Boards For Road Works- S.W 03-[Road 18] | 12d | 2026-11-23 | 2026-12-07 | CO-R09-S1-RD-F-150, CO-R18-S15-RD-F-120, PRO-R18-RD-DL-200 FF+3d | 8.5d |
| CO-R18-S16-RD-F-140 |  | Application of Road Marking Works For Road Works- S.W 04-[Road 18] | 15d | 2026-11-30 | 2026-12-17 | CO-R09-S2-RD-F-160, CO-R18-S16-RD-F-170, CO-R09-S1-RD-F-150, CO-R09-S2-RD-F-170, PRO-R18-RD-DL-210 | 9.5d |
| CO-R18-S16-RD-F-160 |  | Installation Works of Traffic Signs Boards For Road Works- S.W 04-[Road 18] | 10d | 2026-12-07 | 2026-12-19 | CO-R18-S16-RD-F-140 FF, CO-R09-S2-RD-F-170, CO-R18-S15-RD-F-130, PRO-R18-RD-DL-200 FF+3d | 8.5d |
|  | GEN | **Independent Works** |  | 2026-01-21 | 2026-12-28 |  |  |
|  | CON | **Tie In To Existing Networks** |  | 2026-09-02 | 2026-12-28 |  |  |
|  | 1 | **Phase 2 Block "J"** |  | 2026-09-02 | 2026-12-28 |  |  |
|  | 2 | **Road 09 Local 2 ( 2278 LM )** |  | 2026-10-17 | 2026-12-20 |  |  |
|  | 15 | **Storm Drainage Network** |  | 2026-12-13 | 2026-12-20 |  |  |
| TIE-SD-R09 |  | TIE IN Existing Network For Storm Drainage Network | 7d | 2026-12-13 | 2026-12-20 | MS-CF-SD | 4d |
|  | 16 | **Sewage Network** |  | 2026-11-09 | 2026-11-22 |  |  |
| TIE-SW-R09 |  | TIE IN Existing Network For Sewage Network | 12d | 2026-11-09 | 2026-11-22 | MS-CF-SW | 26d |
|  | 17 | **Potable Water Network** |  | 2026-11-19 | 2026-12-02 |  |  |
| TIE-PW-R09 |  | TIE IN Existing Network For Potable Water Network | 12d | 2026-11-19 | 2026-12-02 | MS-CF-PW | 17d |
|  | 1 | **Irrigation Network** |  | 2026-10-29 | 2026-11-11 |  |  |
| TIE-IR-R09 |  | TIE IN Existing Network For Irrigation Network | 12d | 2026-10-29 | 2026-11-11 | MS-CF-IR | 35d |
|  | 18 | **Meduim Voltage Network** |  | 2026-10-29 | 2026-11-18 |  |  |
| TIE-R09-MV |  | TIE IN Existing Network For Medium Voltage Network | 18d | 2026-10-29 | 2026-11-18 | MS-CF-MV | 26d |
|  | 2 | **Street Lighting Network** |  | 2026-10-17 | 2026-11-05 |  |  |
| TIE-R09-SL |  | TIE IN Existing Network For Street Lighting Network | 18d | 2026-10-17 | 2026-11-05 | MS-CF-SL | 34d |
|  | 3 | **Telecom Network** |  | 2026-10-29 | 2026-11-09 |  |  |
| TIE-R09-TE |  | TIE IN Existing Network For Telecom Network | 10d | 2026-10-29 | 2026-11-09 | MS-CF-TE, MS-CF-MV | 24d |
|  | 4 | **Road 10 Local 2 ( 2352 LM )** |  | 2026-10-17 | 2026-12-28 |  |  |
|  | 15 | **Storm Drainage Network** |  | 2026-12-13 | 2026-12-20 |  |  |
| TIE-SD-R10 |  | TIE IN Existing Network For Storm Drainage Network | 7d | 2026-12-13 | 2026-12-20 | MS-CF-SD | 4d |
|  | 16 | **Sewage Network** |  | 2026-11-09 | 2026-11-22 |  |  |
| TIE-SW-R10 |  | TIE IN Existing Network For Sewage Network | 12d | 2026-11-09 | 2026-11-22 | MS-CF-SW | 26d |
|  | 17 | **Potable Water Network** |  | 2026-11-19 | 2026-12-02 |  |  |
| TIE-PW-R10 |  | TIE IN Existing Network For Potable Water Network | 12d | 2026-11-19 | 2026-12-02 | MS-CF-PW | 17d |
|  | 1 | **Irrigation Network** |  | 2026-10-29 | 2026-11-11 |  |  |
| TIE-IR-R10 |  | TIE IN Existing Network For Irrigation Network | 12d | 2026-10-29 | 2026-11-11 | MS-CF-IR | 35d |
|  | 18 | **Meduim Voltage Network** |  | 2026-10-29 | 2026-11-18 |  |  |
| TIE-R10-MV |  | TIE IN Existing Network For Medium Voltage Network | 18d | 2026-10-29 | 2026-11-18 | MS-CF-MV | 26d |
|  | 2 | **Street Lighting Network** |  | 2026-10-17 | 2026-11-05 |  |  |
| TIE-R10-SL |  | TIE IN Existing Network For Street Lighting Network | 18d | 2026-10-17 | 2026-11-05 | MS-CF-SL | 34d |
|  | 4 | **Telecom Network** |  | 2026-10-29 | 2026-11-09 |  |  |
| TIE-R10-TE |  | TIE IN Existing Network For Telecom Network | 10d | 2026-10-29 | 2026-11-09 | MS-CF-TE, MS-CF-MV | 24d |
|  | 3 | **Road Works** |  | 2026-12-23 | 2026-12-28 |  |  |
| TIE-R10-RD |  | TIE IN Existing Network For Road Works | 5d | 2026-12-23 | 2026-12-28 | MS-CF-RD FF, TIE-R10-TE | 2d |
|  | 5 | **Road 11 Local 1 ( 670 LM )** |  | 2026-10-17 | 2026-12-28 |  |  |
|  | 15 | **Storm Drainage Network** |  | 2026-12-13 | 2026-12-20 |  |  |
| TIE-SD-R11 |  | TIE IN Existing Network For Storm Drainage Network | 7d | 2026-12-13 | 2026-12-20 | MS-CF-SD | 4d |
|  | 16 | **Sewage Network** |  | 2026-11-09 | 2026-11-22 |  |  |
| TIE-SW-R11 |  | TIE IN Existing Network For Sewage Network | 12d | 2026-11-09 | 2026-11-22 | MS-CF-SW | 26d |
|  | 17 | **Potable Water Network** |  | 2026-11-19 | 2026-12-02 |  |  |
| TIE-PW-R11 |  | TIE IN Existing Network For Potable Water Network | 12d | 2026-11-19 | 2026-12-02 | MS-CF-PW | 17d |

| ID | WBS | Task | Duration | Start | Finish | Predecessors | Total float |
| --- | --- | --- | --- | --- | --- | --- | --- |
|  | 1 | **Irrigation Network** |  | 2026-10-29 | 2026-11-11 |  |  |
| TIE-IR-R11 |  | TIE IN Existing Network For Irrigation Network | 12d | 2026-10-29 | 2026-11-11 | MS-CF-IR | 35d |
|  | 18 | **Meduim Voltage Network** |  | 2026-10-29 | 2026-11-18 |  |  |
| TIE-R11-MV |  | TIE IN Existing Network For Medium Voltage Network | 18d | 2026-10-29 | 2026-11-18 | MS-CF-MV | 26d |
|  | 2 | **Street Lighting Network** |  | 2026-10-17 | 2026-11-05 |  |  |
| TIE-R11-SL |  | TIE IN Existing Network For Street Lighting Network | 18d | 2026-10-17 | 2026-11-05 | MS-CF-SL | 34d |
|  | 4 | **Telecom Network** |  | 2026-10-29 | 2026-11-09 |  |  |
| TIE-R11-TE |  | TIE IN Existing Network For Telecom Network | 10d | 2026-10-29 | 2026-11-09 | MS-CF-TE, MS-CF-MV | 24d |
|  | 3 | **Road Works** |  | 2026-12-23 | 2026-12-28 |  |  |
| TIE-R11-RD |  | TIE IN Existing Network For Road Works | 5d | 2026-12-23 | 2026-12-28 | MS-CF-RD FF, TIE-R11-TE | 2d |
|  | 6 | **Road 14 Local 1 ( 584 LM )** |  | 2026-10-17 | 2026-12-28 |  |  |
|  | 15 | **Storm Drainage Network** |  | 2026-12-13 | 2026-12-20 |  |  |
| TIE-SD-R14 |  | TIE IN Existing Network For Storm Drainage Network | 7d | 2026-12-13 | 2026-12-20 | MS-CF-SD | 4d |
|  | 16 | **Sewage Network** |  | 2026-11-09 | 2026-11-22 |  |  |
| TIE-SW-R14 |  | TIE IN Existing Network For Sewage Network | 12d | 2026-11-09 | 2026-11-22 | MS-CF-SW | 26d |
|  | 17 | **Potable Water Network** |  | 2026-11-19 | 2026-12-02 |  |  |
| TIE-PW-R14 |  | TIE IN Existing Network For Potable Water Network | 12d | 2026-11-19 | 2026-12-02 | MS-CF-PW | 17d |
|  | 1 | **Irrigation Network** |  | 2026-10-29 | 2026-11-11 |  |  |
| TIE-IR-R14 |  | TIE IN Existing Network For Irrigation Network | 12d | 2026-10-29 | 2026-11-11 | MS-CF-IR | 35d |
|  | 18 | **Meduim Voltage Network** |  | 2026-10-29 | 2026-11-18 |  |  |
| TIE-R14-MV |  | TIE IN Existing Network For Medium Voltage Network | 18d | 2026-10-29 | 2026-11-18 | MS-CF-MV | 26d |
|  | 2 | **Street Lighting Network** |  | 2026-10-17 | 2026-11-05 |  |  |
| TIE-R14-SL |  | TIE IN Existing Network For Street Lighting Network | 18d | 2026-10-17 | 2026-11-05 | MS-CF-SL | 34d |
|  | 4 | **Telecom Network** |  | 2026-10-29 | 2026-11-09 |  |  |
| TIE-R14-TE |  | TIE IN Existing Network For Telecom Network | 10d | 2026-10-29 | 2026-11-09 | MS-CF-TE, MS-CF-MV | 24d |
|  | 3 | **Road Works** |  | 2026-12-23 | 2026-12-28 |  |  |
| TIE-R14-RD |  | TIE IN Existing Network For Road Works | 5d | 2026-12-23 | 2026-12-28 | MS-CF-RD FF, TIE-R10-TE | 2d |
|  | 7 | **Road 15 Local 1 ( 556 LM )** |  | 2026-10-17 | 2026-12-20 |  |  |
|  | 15 | **Storm Drainage Network** |  | 2026-12-13 | 2026-12-20 |  |  |
| TIE-SD-R15 |  | TIE IN Existing Network For Storm Drainage Network | 7d | 2026-12-13 | 2026-12-20 | MS-CF-SD | 4d |
|  | 16 | **Sewage Network** |  | 2026-11-09 | 2026-11-22 |  |  |
| TIE-SW-R15 |  | TIE IN Existing Network For Sewage Network | 12d | 2026-11-09 | 2026-11-22 | MS-CF-SW | 26d |
|  | 17 | **Potable Water Network** |  | 2026-11-19 | 2026-12-02 |  |  |
| TIE-PW-R15 |  | TIE IN Existing Network For Potable Water Network | 12d | 2026-11-19 | 2026-12-02 | MS-CF-PW | 17d |
|  | 1 | **Irrigation Network** |  | 2026-10-29 | 2026-11-11 |  |  |
| TIE-IR-R15 |  | TIE IN Existing Network For Irrigation Network | 12d | 2026-10-29 | 2026-11-11 | MS-CF-IR | 35d |
|  | 18 | **Meduim Voltage Network** |  | 2026-10-29 | 2026-11-18 |  |  |
| TIE-R15-MV |  | TIE IN Existing Network For Medium Voltage Network | 18d | 2026-10-29 | 2026-11-18 | MS-CF-MV | 26d |
|  | 2 | **Street Lighting Network** |  | 2026-10-17 | 2026-11-05 |  |  |
| TIE-R15-SL |  | TIE IN Existing Network For Street Lighting Network | 18d | 2026-10-17 | 2026-11-05 | MS-CF-SL | 34d |
|  | 3 | **Telecom Network** |  | 2026-10-29 | 2026-11-09 |  |  |
| TIE-R15-TE |  | TIE IN Existing Network For Telecom Network | 10d | 2026-10-29 | 2026-11-09 | MS-CF-TE, MS-CF-MV | 24d |
|  | 8 | **Road 16 Local 1 ( 527 LM )** |  | 2026-10-17 | 2026-12-20 |  |  |
|  | 15 | **Storm Drainage Network** |  | 2026-12-13 | 2026-12-20 |  |  |
| TIE-SD-R16 |  | TIE IN Existing Network For Storm Drainage Network | 7d | 2026-12-13 | 2026-12-20 | MS-CF-SD | 4d |
|  | 16 | **Sewage Network** |  | 2026-11-09 | 2026-11-22 |  |  |
| TIE-SW-R16 |  | TIE IN Existing Network For Sewage Network | 12d | 2026-11-09 | 2026-11-22 | MS-CF-SW | 26d |
|  | 17 | **Potable Water Network** |  | 2026-11-19 | 2026-12-02 |  |  |
| TIE-PW-R16 |  | TIE IN Existing Network For Potable Water Network | 12d | 2026-11-19 | 2026-12-02 | MS-CF-PW | 17d |
|  | 1 | **Irrigation Network** |  | 2026-10-29 | 2026-11-11 |  |  |
| TIE-IR-R16 |  | TIE IN Existing Network For Irrigation Network | 12d | 2026-10-29 | 2026-11-11 | MS-CF-IR | 35d |
|  | 18 | **Meduim Voltage Network** |  | 2026-10-29 | 2026-11-18 |  |  |
| TIE-R16-MV |  | TIE IN Existing Network For Medium Voltage Network | 18d | 2026-10-29 | 2026-11-18 | MS-CF-MV | 26d |
|  | 2 | **Street Lighting Network** |  | 2026-10-17 | 2026-11-05 |  |  |
| TIE-R16-SL |  | TIE IN Existing Network For Street Lighting Network | 18d | 2026-10-17 | 2026-11-05 | MS-CF-SL | 34d |
|  | 3 | **Telecom Network** |  | 2026-10-29 | 2026-11-09 |  |  |
| TIE-R16-TE |  | TIE IN Existing Network For Telecom Network | 10d | 2026-10-29 | 2026-11-09 | MS-CF-TE, MS-CF-MV | 24d |
|  | 9 | **Road 17 Local 1 ( 500 LM )** |  | 2026-10-17 | 2026-12-20 |  |  |
|  | 15 | **Storm Drainage Network** |  | 2026-12-13 | 2026-12-20 |  |  |
| TIE-SD-R17 |  | TIE IN Existing Network For Storm Drainage Network | 7d | 2026-12-13 | 2026-12-20 | MS-CF-SD | 4d |
|  | 16 | **Sewage Network** |  | 2026-11-09 | 2026-11-22 |  |  |
| TIE-SW-R17 |  | TIE IN Existing Network For Sewage Network | 12d | 2026-11-09 | 2026-11-22 | MS-CF-SW | 26d |
|  | 17 | **Potable Water Network** |  | 2026-11-19 | 2026-12-02 |  |  |
| TIE-PW-R17 |  | TIE IN Existing Network For Potable Water Network | 12d | 2026-11-19 | 2026-12-02 | MS-CF-PW | 17d |
|  | 1 | **Irrigation Network** |  | 2026-10-29 | 2026-11-11 |  |  |
| TIE-IR-R17 |  | TIE IN Existing Network For Irrigation Network | 12d | 2026-10-29 | 2026-11-11 | MS-CF-IR | 35d |
|  | 18 | **Meduim Voltage Network** |  | 2026-10-29 | 2026-11-18 |  |  |
| TIE-R17-MV |  | TIE IN Existing Network For Medium Voltage Network | 18d | 2026-10-29 | 2026-11-18 | MS-CF-MV | 26d |
|  | 2 | **Street Lighting Network** |  | 2026-10-17 | 2026-11-05 |  |  |
| TIE-R17-SL |  | TIE IN Existing Network For Street Lighting Network | 18d | 2026-10-17 | 2026-11-05 | MS-CF-SL | 34d |

| ID | WBS | Task | Duration | Start | Finish | Predecessors | Total float |
| --- | --- | --- | --- | --- | --- | --- | --- |
|  | 3 | **Telecom Network** |  | 2026-10-29 | 2026-11-09 |  |  |
| TIE-R17-TE |  | TIE IN Existing Network For Telecom Network | 10d | 2026-10-29 | 2026-11-09 | MS-CF-TE, MS-CF-MV | 24d |
|  | 1 | **Road 18 Local 1 ( 479 LM )** |  | 2026-09-02 | 2026-12-20 |  |  |
|  | 15 | **Storm Drainage Network** |  | 2026-12-13 | 2026-12-20 |  |  |
| TIE-SD-R18 |  | TIE IN Existing Network For Storm Drainage Network | 7d | 2026-12-13 | 2026-12-20 | MS-CF-SD | 4d |
|  | 16 | **Sewage Network** |  | 2026-11-09 | 2026-11-22 |  |  |
| TIE-SW-R18 |  | TIE IN Existing Network For Sewage Network | 12d | 2026-11-09 | 2026-11-22 | MS-CF-SW | 26d |
|  | 17 | **Potable Water Network** |  | 2026-11-19 | 2026-12-02 |  |  |
| TIE-PW-R18 |  | TIE IN Existing Network For Potable Water Network | 12d | 2026-11-19 | 2026-12-02 | MS-CF-PW | 17d |
|  | 1 | **Irrigation Network** |  | 2026-10-29 | 2026-11-11 |  |  |
| TIE-IR-R18 |  | TIE IN Existing Network For Irrigation Network | 12d | 2026-10-29 | 2026-11-11 | MS-CF-IR | 35d |
|  | 18 | **Meduim Voltage Network** |  | 2026-10-29 | 2026-11-18 |  |  |
| TIE-R18-MV10 |  | TIE IN Existing Network For Medium Voltage Network | 18d | 2026-10-29 | 2026-11-18 | MS-CF-MV | 26d |
|  | 2 | **Street Lighting Network** |  | 2026-10-17 | 2026-11-05 |  |  |
| TIE-R18-SL10 |  | TIE IN Existing Network For Street Lighting Network | 18d | 2026-10-17 | 2026-11-05 | MS-CF-SL | 34d |
|  | 3 | **Telecom Network** |  | 2026-09-02 | 2026-09-15 |  |  |
| TIE-R18-TE10 |  | TIE IN Existing Network For Telecom Network | 12d | 2026-09-02 | 2026-09-15 | MS-CF-TE | 70d |
|  | 2 | **Sewage Pump Stations** |  | 2026-03-15 | 2026-12-01 |  |  |
|  | 1 | **Sewage Pump Station ( PS 06 )** |  | 2026-03-15 | 2026-12-01 |  |  |
|  | 1 | **Pump Station Main Building** |  | 2026-03-15 | 2026-10-06 |  |  |
| CO-SW-PS7-MB-100 |  | Excavation Main Bulding | 15d | 2026-03-15 | 2026-04-04 | ENG-SH-SPS-A-110, ENG-MS-SPS-A-110, ENG-MT-SPS-CV-A-110, ENG-MT-SPS-MC-A-110, PRO-SPS-CV-1DL-10, CO-R14.S07-SD-130, CO-R15.S09-SD-130, CO-R16.S12-SD-130 | 4d |
| CO-SW-PS7-MB-110 |  | Concrete Works of Superstrucure | 30d | 2026-04-05 | 2026-05-09 | CO-SW-PS7-MB-100, PRO-SPS-CV-DL-10 | 4d |
| CO-SW-PS7-MB-120 |  | Internal Finishes Works of Superstrucure | 30d | 2026-05-10 | 2026-06-17 | CO-SW-PS7-MB-110 | 4d |
| CO-SW-PS7-MB-130 |  | Internal Electrical Works | 30d | 2026-06-18 | 2026-07-22 | CO-SW-PS7-MB-120 | 41d |
| CO-SW-PS7-MB-140 |  | Internal Mechanical Works | 30d | 2026-07-23 | 2026-08-26 | CO-SW-PS7-MB-130 | 41d |
| CO-SW-PS7-MB-150 |  | Electromechanical Main Works | 30d | 2026-09-01 | 2026-10-06 | CO-SW-PS7-MB-140, PRO-SPS7-LL-SH/DL-10, PRO-SPS7-LL-MSI-10 | 37d |
|  | 2 | **Generator With Umbrella Tank** |  | 2026-06-18 | 2026-09-13 |  |  |
| CO-SW-PS7-GN-100 |  | Concrete Works of Base | 12d | 2026-06-18 | 2026-07-01 | CO-SW-PS7-MB-110, CO-SW-PS7-MB-120 | 4d |
| CO-SW-PS7-GN-110 |  | Install Manually Operated Fuel Pump | 21d | 2026-07-02 | 2026-07-26 | CO-SW-PS7-GN-100 | 4d |
| CO-SW-PS7-GN-120 |  | Install Ground Fuel Tank | 21d | 2026-07-27 | 2026-08-19 | CO-SW-PS7-GN-110 | 4d |
| CO-SW-PS7-GN-130 |  | Fix Steel Structure for Umbrella | 21d | 2026-08-20 | 2026-09-13 | CO-SW-PS7-GN-110, CO-SW-PS7-GN-120 | 4d |
|  | 5 | **Motor Control Centre Building** |  | 2026-05-10 | 2026-10-03 |  |  |
| CO-SW-PS7-MCC-100 |  | Excavation Main Bulding | 16d | 2026-05-10 | 2026-06-01 | CO-SW-PS7-MB-100, CO-SW-PS7-MB-110 | 40d |
| CO-SW-PS7-MCC-110 |  | Concrete Works of Superstrucure | 21d | 2026-06-02 | 2026-06-25 | CO-SW-PS7-MCC-100 | 40d |
| CO-SW-PS7-MCC-120 |  | Internal Finishes Works of Superstrucure | 21d | 2026-06-27 | 2026-07-20 | CO-SW-PS7-MCC-110 | 40d |
| CO-SW-PS7-MCC-130 |  | Internal Electrical Works | 21d | 2026-07-21 | 2026-08-13 | CO-SW-PS7-MCC-120 | 40d |
| CO-SW-PS7-MCC-140 |  | Internal Mechanical Works | 21d | 2026-08-15 | 2026-09-07 | CO-SW-PS7-MCC-130 | 40d |
| CO-SW-PS7-MCC-150 |  | Electromechanical Main Works | 21d | 2026-09-08 | 2026-10-03 | CO-SW-PS7-MCC-140, PRO-SPS7-LL-MSI-10 | 40d |
|  | 6 | **Simple Building Works** |  | 2026-09-14 | 2026-11-11 |  |  |
| CO-SW-PS7-SBL-100 |  | Perimeter Fencing | 23d | 2026-09-14 | 2026-10-11 | CO-SW-PS7-MCC-120, CO-SW-PS7-MB-120, CO-SW-PS7-GN-130, CO-SW-PS7-GN-120 | 4d |
| CO-SW-PS7-SBL-110 |  | Outside Lighting | 27d | 2026-10-12 | 2026-11-11 | CO-SW-PS7-SBL-100 | 6d |
| CO-SW-PS7-SBL-120 |  | Outside Duct Works | 23d | 2026-10-12 | 2026-11-07 | CO-SW-PS7-SBL-100 | 4d |
| CO-SW-PS7-SBL-130 |  | Rectangular Wet Wells | 27d | 2026-10-12 | 2026-11-11 | CO-SW-PS7-SBL-100 | 6d |
| CO-SW-PS7-SBL-140 |  | Round Wet Well Structure for basket screen | 27d | 2026-10-12 | 2026-11-11 | CO-SW-PS7-SBL-100 | 6d |
| CO-SW-PS7-SBL-150 |  | Motorized basket screen | 27d | 2026-10-12 | 2026-11-11 | CO-SW-PS7-SBL-100 | 6d |
|  | 7 | **Site Work and Service Road** |  | 2026-11-08 | 2026-12-01 |  |  |
| CO-SW-PS7-SWS-100 |  | Outside Strom Drainage System | 6d | 2026-11-08 | 2026-11-14 | CO-SW-PS7-SBL-120 | 4d |
| CO-SW-PS7-SWS-110 |  | Bituminous Works | 15d | 2026-11-15 | 2026-12-01 | CO-SW-PS7-MCC-150, CO-SW-PS7-SWS-100, CO-SW-PS7-SBL-120, CO-SW-PS7-SBL-110, CO-SW-PS7-SBL-100, CO-SW-PS7-GN-130, CO-SW-PS7-GN-120, CO-SW-PS7-MB-150, CO-SW-PS7-SBL-130, CO-SW-PS7-SBL-140, CO-SW-PS7-SBL-150, PRO-SPS-CV-DL-10 FF+3d | 4d |
|  | 1 | **Storm Drainage Ponds** |  | 2026-01-21 | 2026-08-24 |  |  |
|  | 1 | **Storm Drainage Pond ( PO-J1)** |  | 2026-01-21 | 2026-07-30 |  |  |
| CO-SD-PO-K1-100-P1 |  | Excavation & Filling Works - PART 1 | 21d | 2026-01-21 | 2026-02-14 | CO-R10.S04-ES-SD-130, PRO-DPO-CV-1DL-10, ENG-SH-DPO-A-110, ENG-MS-DPO-A-110, ENG-MT-DPO-CV-A-110, CO-R11.S06-SD-130, CO-R10.S04-WE-SD-130 | 40d |
| CO-SD-PO-K1-100-P2 |  | Excavation & Filling Works - PART 2 | 21d | 2026-02-15 | 2026-03-10 | CO-SD-PO-K1-100-P1 | 51d |
| CO-SD-PO-K1-110-P1 |  | Finished Grouted Riprap - PART 1 | 21d | 2026-02-15 | 2026-03-10 | CO-SD-PO-K1-100-P1 | 51d |
| CO-SD-PO-K1-100-P3 |  | Excavation & Filling Works - PART 3 | 21d | 2026-03-11 | 2026-04-07 | CO-SD-PO-K1-100-P2, PRO-DPO-CV-DL-10 | 51d |
| CO-SD-PO-K1-110-P2 |  | Finished Grouted Riprap - PART 2 | 21d | 2026-03-11 | 2026-04-07 | CO-SD-PO-K1-110-P1, CO-SD-PO-K1-100-P2 | 51d |
| CO-SD-PO-K1-100-P4 |  | Excavation & Filling Works - PART 4 | 21d | 2026-04-08 | 2026-05-02 | CO-SD-PO-K1-100-P3 | 51d |
| CO-SD-PO-K1-110-P3 |  | Finished Grouted Riprap - PART 3 | 21d | 2026-04-08 | 2026-05-02 | CO-SD-PO-K1-110-P2, CO-SD-PO-K1-100-P3 | 51d |
| CO-SD-PO-K1-110-P4 |  | Finished Grouted Riprap - PART 4 | 21d | 2026-05-03 | 2026-05-31 | CO-SD-PO-K1-110-P3, CO-SD-PO-K1-100-P4 | 51d |
| CO-SD-PO-K1-120 |  | Outfall structure | 26d | 2026-06-01 | 2026-06-30 | CO-SD-PO-K1-110-P4 | 51d |
| CO-SD-PO-K1-130 |  | Acess Entrace Ramp | 26d | 2026-07-01 | 2026-07-30 | CO-SD-PO-K1-120, PRO-DPO-CV-DL-10 FF+3d | 51d |
|  | 2 | **Storm Drainage Pond ( PO-J2)** |  | 2026-02-15 | 2026-08-24 |  |  |
| CO-SD-PO-K2-100-P1 |  | Excavation & Filling Works - PART 1 | 21d | 2026-02-15 | 2026-03-10 | CO-SD-PO-K1-100-P1, CO-R11.S06-SD-130, PRO-DPO-CV-1DL-20, ENG-SH-DPO-A-110, ENG-MS-DPO-A-110, ENG-MT-DPO-CV-A-110 | 40d |
| CO-SD-PO-K2-100-P2 |  | Excavation & Filling Works - PART 2 | 21d | 2026-03-11 | 2026-04-07 | CO-SD-PO-K2-100-P1 | 40d |
| CO-SD-PO-K2-110-P1 |  | Finished Grouted Riprap - PART 1 | 21d | 2026-03-11 | 2026-04-07 | CO-SD-PO-K2-100-P1 | 40d |
| CO-SD-PO-K2-100-P3 |  | Excavation & Filling Works - PART 3 | 21d | 2026-04-08 | 2026-05-02 | CO-SD-PO-K2-100-P2, PRO-DPO-CV-DL-20 | 40d |
| CO-SD-PO-K2-110-P2 |  | Finished Grouted Riprap - PART 2 | 21d | 2026-04-08 | 2026-05-02 | CO-SD-PO-K2-100-P2, CO-SD-PO-K2-110-P1 | 40d |
| CO-SD-PO-K2-100-P4 |  | Excavation & Filling Works - PART 4 | 21d | 2026-05-03 | 2026-05-31 | CO-SD-PO-K2-100-P3 | 40d |
| CO-SD-PO-K2-110-P3 |  | Finished Grouted Riprap - PART 3 | 21d | 2026-05-03 | 2026-05-31 | CO-SD-PO-K2-100-P3, CO-SD-PO-K2-110-P2 | 40d |
| CO-SD-PO-K2-110-P4 |  | Finished Grouted Riprap - PART 4 | 21d | 2026-06-01 | 2026-06-24 | CO-SD-PO-K2-100-P4, CO-SD-PO-K2-110-P3 | 40d |
| CO-SD-PO-K2-120 |  | Outfall structure | 26d | 2026-06-25 | 2026-07-25 | CO-SD-PO-K2-110-P4 | 40d |

| ID | WBS | Task | Duration | Start | Finish | Predecessors | Total float |
| --- | --- | --- | --- | --- | --- | --- | --- |
| CO-SD-PO-K2-130 |  | Acess Entrace Ramp | 26d | 2026-07-26 | 2026-08-24 | CO-SD-PO-K2-120, PRO-DPO-CV-DL-20 FF+3d | 40d |
|  | TC | **Testing and Comissioning** |  | 2026-08-25 | 2027-01-03 |  |  |
|  | INF | **Infrastructure Networks** |  | 2026-11-07 | 2027-01-03 |  |  |
|  | PW1 | **Irrigation Network** |  | 2026-11-12 | 2026-11-25 |  |  |
| T/C-IR |  | Testing and Commissioning of Irrigation Network | 12d | 2026-11-12 | 2026-11-25 | TIE-IR-R09, TIE-IR-R10, TIE-IR-R11, TIE-IR-R14, TIE-IR-R15, TIE-IR-R16, TIE-IR-R17, TIE-IR-R18 | 35d |
|  | PW | **Potable Water Network** |  | 2026-12-03 | 2026-12-16 |  |  |
| T/C-PW |  | Testing and Commissioning of Potable Water Network | 12d | 2026-12-03 | 2026-12-16 | TIE-PW-R09, TIE-PW-R10, TIE-PW-R11, TIE-PW-R14, TIE-PW-R15, TIE-PW-R16, TIE-PW-R17, TIE-PW-R18 | 17d |
|  | SW | **Sewage Network** |  | 2026-12-19 | 2026-12-31 |  |  |
| T/C-SW |  | Testing and Commissioning of Sewage Network | 12d | 2026-12-19 | 2026-12-31 | TIE-SW-R09, TIE-SW-R10, TIE-SW-R11, TIE-SW-R14, TIE-SW-R15, TIE-SW-R16, TIE-SW-R17, T/C-SPS FF, TIE-SW-R18 | 4d |
|  | SD | **Storm Drainage Network** |  | 2026-12-21 | 2026-12-31 |  |  |
| T/C-SD |  | Testing and Commissioning of Storm Drainage Network | 10d | 2026-12-21 | 2026-12-31 | TIE-SD-R09, TIE-SD-R10, TIE-SD-R11, TIE-SD-R14, TIE-SD-R15, TIE-SD-R16, TIE-SD-R17, T/C-DPO FF, TIE-SD-R18 | 4d |
|  | SL | **Street Lighting Network** |  | 2026-11-07 | 2026-11-26 |  |  |
| T/C-SL |  | Testing and Commissioning of Street Lighting Network | 18d | 2026-11-07 | 2026-11-26 | TIE-R09-SL, TIE-R10-SL, TIE-R11-SL, TIE-R14-SL, TIE-R15-SL, TIE-R16-SL, TIE-R17-SL, TIE-R18-SL10 | 34d |
|  | TE | **Telecom Network** |  | 2026-11-10 | 2026-11-21 |  |  |
| T/C-TE |  | Testing and Commissioning of Telecom Network | 10d | 2026-11-10 | 2026-11-21 | TIE-R09-TE, TIE-R10-TE, TIE-R11-TE, TIE-R14-TE, TIE-R15-TE, TIE-R16-TE, TIE-R17-TE, T/C-DPO, TIE-R18-TE10 | 24d |
|  | MV | **Medium Voltage Network** |  | 2026-11-22 | 2026-12-02 |  |  |
| T/C-MV |  | Testing and Commissioning of Medium Voltage Network | 10d | 2026-11-22 | 2026-12-02 | TIE-R09-MV, TIE-R10-MV, TIE-R11-MV, TIE-R14-MV, TIE-R15-MV, TIE-R16-MV, TIE-R17-MV, T/C-TE, TIE-R18-MV10 | 24d |
|  | RD | **Road Works** |  | 2026-12-29 | 2027-01-03 |  |  |
| T/C-RD |  | Testing and Commissioning of Road Works | 5d | 2026-12-29 | 2027-01-03 | TIE-R10-RD, TIE-R11-RD, TIE-R14-RD, T/C-MV | 2d |
|  | 1 | **Independent Works** |  | 2026-08-25 | 2026-12-31 |  |  |
| T/C-DPO |  | Testing and Commissioning of Storm Drainage Ponds | 30d | 2026-08-25 | 2026-09-29 | CO-SD-PO-K1-130, CO-SD-PO-K2-130 | 58d |
| T/C-SPS |  | Testing and Commissioning of Sewage Pump Stations | 26d | 2026-12-02 | 2026-12-31 | CO-SW-PS7-SWS-110, T/C-DPO | 4d |
|  | 1 | **Handing over and close out** |  | 2026-10-17 | 2027-01-11 |  |  |
|  | 2 | **As-Built** |  | 2026-10-17 | 2027-01-05 |  |  |
| HO-150 |  | Submission As-Built Drawing For Street Lighting Network | 12d | 2026-10-17 | 2026-10-29 | MS-CF-SL | 56d |
| HO-180 |  | Submission As-Built Drawing For Irrigation Network | 12d | 2026-10-29 | 2026-11-11 | MS-CF-IR | 33d |
| HO-130 |  | Submission As-Built Drawing For Pond | 12d | 2026-11-12 | 2026-11-25 | MS-MO-20, HO-180 | 33d |
| HO-160 |  | Submission As-Built Drawing For Telecom Network | 12d | 2026-11-12 | 2026-11-25 | MS-CF-TE, HO-180 | 33d |
| HO-170 |  | Submission As-Built Drawing For Medium Voltage Network | 12d | 2026-11-12 | 2026-11-25 | MS-CF-MV, HO-180 | 33d |
| HO-190 |  | As-Built Drawing For Potable Water Network | 12d | 2026-11-19 | 2026-12-02 | MS-CF-PW | 27d |
| HO-210 |  | Submission As-Built Drawing For Pump station | 12d | 2026-12-02 | 2026-12-15 | MS-MO-10 | 16d |
| HO-200 |  | Submission As-Built Drawing For Storm Network | 12d | 2026-12-13 | 2026-12-26 | MS-CF-SD | 7d |
| HO-100 |  | Submission As-Built Drawing For Sewage Network | 7d | 2026-12-29 | 2027-01-05 | MS-CF-IR, MS-CF-SL, MS-CF-TE, MS-CF-RD, MS-CF-MV, MS-CF-SD, MS-CF-SW, MS-CF-PW, MS-MO-10, MS-MO-20, MS-MO-30 | 3d |
| HO-140 |  | Submission As-Built Drawing For Roads Network | 5d | 2026-12-29 | 2027-01-03 | MS-CF-RD | 0d |
|  | 1 | **De-Mobilization Works** |  | 2027-01-04 | 2027-01-09 |  |  |
| HO-120 |  | Remove material stock & Storage area | 5d | 2027-01-04 | 2027-01-09 | HO-110 FF, HO-110 SS | 2d |
| HO-220 |  | Removing Portable Caravan | 5d | 2027-01-04 | 2027-01-09 | HO-110 SS, HO-110 FF | 2d |
| HO-230 |  | Remove Temporary Car Shades | 5d | 2027-01-04 | 2027-01-09 | HO-110 SS, HO-110 FF | 2d |
|  | 3 | **Handing Over** |  | 2027-01-04 | 2027-01-11 |  |  |
| HO-110 |  | Final Testing Work | 5d | 2027-01-04 | 2027-01-09 | HO-100 FF, T/C-PW, T/C-SW, T/C-SD, T/C-SL, T/C-TE, T/C-MV, T/C-RD, T/C-SPS, T/C-DPO, T/C-IR, HO-210 FF, HO-200 FF, HO-190 FF, HO-150 FF, HO-180 FF, HO-170 FF, HO-130 FF, HO-160 FF, HO-140 FF | 2d |
| HO-250 |  | Review B.O.Q Qty. to ensure compliance with the actual status | 5d | 2027-01-04 | 2027-01-09 | HO-260 SS | 0d |
| HO-260 |  | Review FIR Approval to ensure compliance with the actual status | 5d | 2027-01-04 | 2027-01-09 | MS-CF-TE, MS-CF-MV, MS-CF-IR, MS-CF-SL, MS-CF-SW, MS-CF-PW, MS-CF-SD, MS-CF-RD, HO-270 SS | 0d |
| HO-270 |  | Review the sample drawing to ensure compliance with the actual status | 5d | 2027-01-04 | 2027-01-09 | HO-180, HO-150, HO-190, HO-130, HO-160, HO-170, HO-200, HO-210, HO-100 FF, HO-140 | 0d |
| HO-240 |  | Final Walkthrough and Inspection | 2d | 2027-01-10 | 2027-01-11 | HO-250, HO-260, HO-270 | 0d |
| HO-280 |  | Punch List Completion | 2d | 2027-01-10 | 2027-01-11 | HO-250, HO-260, HO-270, HO-110 FF, HO-240 FF | 0d |

## Version 3 (data date 2026-10-06, saved 2026-10-06, file 03.DAM3-02-007-UPS Level 5 -06-10-2026.xer)

Note of the change: Weekly folders named by the Thursday the week ends on: a report dated after one Thursday up to the next goes in the next Thursday's folder (26-Oct → W05 - 29-Oct-2026); all weeks moved accordingly, W00 removed

Last finish 2027-01-11 → 2027-11-08 (+301d). Complete tasks 0 → 1147.

Changed:

| ID | Task | Start | Finish | Complete | Total float | Predecessors | Other |
| --- | --- | --- | --- | --- | --- | --- | --- |
| MS | **Key Milestones** |  | 2027-01-11 → 2027-11-08 (+301d) |  |  |  |  |
| CM | **Contractual Milestones** |  | 2027-01-11 → 2027-11-08 (+301d) |  |  |  |  |
| MS-CS-PS | Project Commencement Date ( Site Handover ) | 2025-01-12 A | 2025-01-12 A | 0% → 100% | 0d → none |  |  |
| MS-CF-MOB | Completion of Mobilization Works | 2025-03-09 A | 2025-03-09 A | 0% → 100% | 0d → none |  |  |
| MS-CF-EBL | Completion of Work Plan and Baseline Schedule | 2025-02-10 → 2025-03-10 A (+28d) | 2025-02-10 → 2025-03-10 A (+28d) | 0% → 100% | 0d → none |  |  |
| MS-CF-ENG | Completion of Submitting and Approval of Shopdrwing and Material | 2025-02-10 → 2025-05-24 A (+103d) | 2025-02-10 → 2025-05-24 A (+103d) | 0% → 100% | 0d → none |  |  |
| MS-CF-TE | Completion of Construction Works for Telecom Network | 2026-09-01 → 2027-04-28 (+239d) | 2026-09-01 → 2027-04-28 (+239d) |  | 0d → -200d |  |  |
| MS-CF-IR | Completion of Construction Works for Irrigation Network | 2026-10-28 → 2027-07-13 (+258d) | 2026-10-28 → 2027-07-13 (+258d) |  | 0d → -212d |  |  |
| MS-CF-SW | Completion of Construction Works for Sewage Network | 2026-11-08 → 2027-08-03 (+268d) | 2026-11-08 → 2027-08-03 (+268d) |  | 0d → -221d |  |  |
| MS-CF-MV | Completion of Construction Works for Medium Voltage Network | 2026-10-28 → 2027-08-21 (+297d) | 2026-10-28 → 2027-08-21 (+297d) |  | 0d → -245d |  |  |
| MS-CF-SD | Completion of Construction Works for Storm Drainage Network | 2026-12-12 → 2027-08-23 (+254d) | 2026-12-12 → 2027-08-23 (+254d) |  | 0d → -205d |  | constraint finish on or before 2026-12-12 → finish on or before 2027-01-12 |
| MS-CF-PW | Completion of Construction Works for Potable Water Network | 2026-11-18 → 2027-08-30 (+285d) | 2026-11-18 → 2027-08-30 (+285d) |  | 0d → -235d |  |  |
| MS-CF-SL | Completion of Construction Works for Street Lighting Network | 2026-10-15 → 2027-09-11 (+331d) | 2026-10-15 → 2027-09-11 (+331d) |  | 0d → -274d |  |  |
| MS-CF-RD | Completion of Construction Works for Road Works | 2026-12-28 → 2027-10-25 (+301d) | 2026-12-28 → 2027-10-25 (+301d) |  | 0d → -247.5d |  |  |
| MS-CF-PF | Project Completion Date | 2027-01-11 → 2027-11-08 (+301d) | 2027-01-11 → 2027-11-08 (+301d) |  | 0d → -247.5d |  |  |
| CM1 | **Control Milestones** | 2025-07-09 → 2025-04-29 (-71d) | 2026-06-21 → 2026-10-06 (+107d) |  |  |  |  |
| MS-CS-SW | The Employer Approval NOC for Sewage Network | 2025-07-09 → 2025-04-29 A (-71d) | 2025-07-09 → 2025-04-29 A (-71d) | 0% → 100% | 35d → none | CO-R09.S01-SW-100 SS → CO-R18.S15-SW-220 SS |  |
| MS-CS-SD | The Employer Approval NOC for Storm Drainage Network | 2025-09-08 → 2025-04-30 A (-131d) | 2025-09-08 → 2025-04-30 A (-131d) | 0% → 100% | 44.5d → none | CO-R09.S01-SD-100 SS → CO-R18.S15-SD-230 SS |  |
| MS-CS-IR | The Employer Approval NOC for Irrigation Network | 2025-11-19 → 2025-06-16 A (-156d) | 2025-11-19 → 2025-06-16 A (-156d) | 0% → 100% | 50.5d → none | CO-R09.S01-IR-100 SS → CO-R18.S15-IR-140 SS |  |
| MS-CS-PW | The Employer Approval NOC for Potable Water Network | 2025-11-03 → 2025-06-19 A (-137d) | 2025-11-03 → 2025-06-19 A (-137d) | 0% → 100% | 111.5d → none | CO-R09.S02-PW-100 SS → CO-R18.S16-PW-230 SS |  |
| MS-CS-SL | The Employer Approval NOC for Street Lighting Network | 2025-12-29 → 2025-07-08 A (-174d) | 2025-12-29 → 2025-07-08 A (-174d) | 0% → 100% | 53.5d → none | CO-R09.S01-SL-100 SS → CO-R18.S16-SL-100 SS |  |
| MS-CS-TE | The Employer Approval NOC for Telecom Network | 2026-05-03 → 2025-07-08 A (-299d) | 2026-05-03 → 2025-07-08 A (-299d) | 0% → 100% | 10d → none | CO-R09.S01-TE-100 SS → CO-R18.S15-TE-170 SS |  |
| MS-CS-RD | The Employer Approval NOC for Roads Works | 2026-06-21 → 2025-07-10 A (-346d) | 2026-06-21 → 2025-07-10 A (-346d) | 0% → 100% | 39d → none | CO-R09.S01-RD-P-100 SS → CO-R18.S15-RD-P-160 SS |  |
| MS-CS-MV | The Employer Approval NOC for Medium Voltage Network | 2026-02-14 → 2026-10-06 (+234d) | 2026-02-14 → 2026-10-06 (+234d) |  | 52d → -141d | CO-R09.S01-MV-100 SS → CO-R18.S15-MV-ML-340 SS |  |
| MM | **Intermediate Milestones** | 2026-08-24 → 2027-07-25 (+335d) | 2026-12-28 → 2027-10-25 (+301d) |  |  |  |  |
| MS-MO-10 | Completion of Sewage Pump Stations | 2026-12-01 → 2027-07-25 (+236d) | 2026-12-01 → 2027-07-25 (+236d) |  | 16d → -177d |  |  |
| MS-MO-20 | Completion of Storm Drainage Ponds | 2026-08-24 → 2027-08-04 (+345d) | 2026-08-24 → 2027-08-04 (+345d) |  | 100d → -186d |  |  |
| MS-MO-30 | Completion of Tie In To Existing Networks | 2026-12-28 → 2027-10-25 (+301d) | 2026-12-28 → 2027-10-25 (+301d) |  | 3d → -244.5d |  |  |
| MOB | **Preliminaries and Mobilization Works** |  | 2025-03-09 → 2025-03-12 (+3d) |  |  |  |  |
| MOB | **Mobilization Works** |  | 2025-03-09 → 2025-03-12 (+3d) |  |  |  |  |
| MOB-10 | Clear and Grub for Offices and Access Roads | 2025-01-12 A | 2025-02-08 → 2025-03-12 A (+32d) | 0% → 100% | 0d → none |  |  |
| MOB-20 | Project Site Layout Plan Approval | 2025-01-12 A | 2025-02-08 → 2025-03-12 A (+32d) | 0% → 100% | 0d → none |  |  |
| MOB-30 | Supply & Install of Project Supervision Offices | 2025-02-09 A | 2025-03-09 → 2025-03-12 A (+3d) | 0% → 100% | 0d → none |  |  |
| MOB-40 | Construction Project Store & Temporary Fence | 2025-02-09 A | 2025-03-09 → 2025-03-12 A (+3d) | 0% → 100% | 0d → none |  |  |
| MOB-50 | Mobilization of Major Manpower | 2025-02-09 A | 2025-03-09 → 2025-03-12 A (+3d) | 0% → 100% | 0d → none |  |  |
| MOB-60 | Mobilization of Major Equipments | 2025-02-09 A | 2025-03-09 → 2025-03-12 A (+3d) | 0% → 100% | 0d → none |  |  |
| MOB-70 | Installation Project Sign Board | 2025-02-09 A | 2025-03-09 → 2025-03-12 A (+3d) | 0% → 100% | 0d → none |  |  |
| MOB-80 | Construction Site Access Roads | 2025-02-09 A | 2025-03-09 → 2025-03-12 A (+3d) | 0% → 100% | 0d → none |  |  |
| 2 | **Project Documents Provision From The Employer** |  | 2025-01-12 → 2025-02-12 (+31d) |  |  |  |  |
| PRE-EMP-MDC-10 | Receive of Approved Project Master Plans of works (IFC) From The Employer | 2025-01-12 A | 2025-01-12 A | 0% → 100% | 0d → none |  |  |
| PRE-EMP-MDC-20 | Receive of Site Benchmark Coordinates (Original Point) From The Employer | 2025-01-12 → 2025-02-12 A (+31d) | 2025-01-12 → 2025-02-12 A (+31d) | 0% → 100% | 0d → none |  |  |
| PRE-EMP-MDC-30 | Receive of Site Surveying Details From The Employer | 2025-01-12 → 2025-02-12 A (+31d) | 2025-01-12 → 2025-02-12 A (+31d) | 0% → 100% | 0d → none |  |  |
| 1 | **Project Main Documents From The Contractor** |  | 2025-02-10 → 2025-03-02 (+20d) |  |  |  |  |
| PRE-CON-MDC-20 | Submission Project Baseline Schedule | 2025-01-12 A | 2025-02-10 → 2025-03-01 A (+19d) | 0% → 100% | 0d → none |  |  |
| PRE-CON-MDC-30 | Submission Project Health & Safety Plan | 2025-01-12 A | 2025-02-10 → 2025-03-02 A (+20d) | 0% → 100% | 0d → none |  |  |
| PRE-CON-MDC-40 | Submission Project Quality Control Plan | 2025-01-12 A | 2025-02-10 → 2025-03-02 A (+20d) | 0% → 100% | 0d → none |  |  |
| PRE-CON-MDC-50 | Submission Project Surveying Report | 2025-01-12 A | 2025-02-10 → 2025-03-02 A (+20d) | 0% → 100% | 0d → none |  |  |
| PRE-CON-MDC-60 | Submission Project Geotechnical Soil Report | 2025-01-12 A | 2025-02-10 → 2025-03-02 A (+20d) | 0% → 100% | 0d → none |  |  |
| PRE-CON-MDC-70 | Submission Project Environmental Plan | 2025-01-12 A | 2025-02-10 → 2025-03-02 A (+20d) | 0% → 100% | 0d → none |  |  |
| PRE-CON-MDC-80 | Submission Project Organization Chart and Communications Plan | 2025-01-12 A | 2025-02-10 → 2025-03-02 A (+20d) | 0% → 100% | 0d → none |  |  |
| ENG | **Engineering Works** |  | 2025-02-16 → 2025-06-02 (+106d) |  |  |  |  |
| ENG-DS-RD-S-100 | Receive of Design Drawing Package for Road Works from Modon | 2025-01-12 A | 2025-01-18 A | 0% → 100% | 0d → none |  | resources Engineering [86.27 h] → none |
| ENG-DS-RD-A-110 | Review and Comment of Design Drawings for Road Works by Contractor | 2025-01-15 A | 2025-01-21 A | 0% → 100% | 0d → none |  | resources Engineering [86.27 h] → none |
| ENG-DS-SW-S-100 | Receive of Design Drawing Package for Sewage Network from Modon | 2025-01-12 A | 2025-01-18 A | 0% → 100% | 0d → none |  | resources Engineering [86.27 h] → none |
| ENG-DS-SW-A-110 | Review and Comment of Design Drawings for Sewage Network by Contractor | 2025-01-15 A | 2025-01-21 A | 0% → 100% | 0d → none |  | resources Engineering [86.27 h] → none |
| ENG-DS-SD-S-100 | Receive of Design Drawing Package for Storm Drainage Network from Modon | 2025-01-12 A | 2025-01-18 A | 0% → 100% | 0d → none |  | resources Engineering [86.27 h] → none |
| ENG-DS-SD-A-110 | Review and Comment of Design Drawings for Storm Drainage Network by Contractor | 2025-01-15 A | 2025-01-21 A | 0% → 100% | 0d → none |  | resources Engineering [86.27 h] → none |
| ENG-DS-PW-S-100 | Receive of Design Drawing Package for Potable Water Network from Modon | 2025-01-12 A | 2025-01-18 A | 0% → 100% | 0d → none |  | resources Engineering [86.27 h] → none |
| ENG-DS-PW-A-110 | Review and Comment of Design Drawings for Potable Water Network by Contractor | 2025-01-15 A | 2025-01-21 A | 0% → 100% | 0d → none |  | resources Engineering [86.27 h] → none |
| ENG-DS-IR-S-100 | Receive of Design Drawing Package for Irrigation Network from Modon | 2025-01-12 A | 2025-01-18 A | 0% → 100% | 0d → none |  | resources Engineering [86.27 h] → none |
| ENG-DS-IR-A-110 | Review and Comment of Design Drawings for Irrigation Network by Contractor | 2025-01-15 A | 2025-01-21 A | 0% → 100% | 0d → none |  | resources Engineering [86.27 h] → none |
| ENG-DS-MV-S-100 | Receive of Design Drawing Package for Medium Voltage Network from Modon | 2025-01-12 A | 2025-01-18 A | 0% → 100% | 0d → none |  | resources Engineering [86.27 h] → none |
| ENG-DS-MV-A-110 | Review and Comment of Design Drawings for Medium Voltage Network by Contractor | 2025-01-15 A | 2025-01-21 A | 0% → 100% | 0d → none |  | resources Engineering [86.27 h] → none |
| ENG-DS-SL-S-100 | Receive of Design Drawing Package for Street Lighting Network from Modon | 2025-01-12 A | 2025-01-18 A | 0% → 100% | 0d → none |  | resources Engineering [86.27 h] → none |
| ENG-DS-SL-A-110 | Review and Comment of Design Drawings for Street Lighting Network by Contractor | 2025-01-15 A | 2025-01-21 A | 0% → 100% | 0d → none |  | resources Engineering [86.27 h] → none |
| ENG-DS-TE-S-100 | Receive of Design Drawing Package for Telecom Network from Modon | 2025-01-12 A | 2025-01-18 A | 0% → 100% | 0d → none |  | resources Engineering [86.27 h] → none |
| ENG-DS-TE-A-110 | Review and Comment of Design Drawings for Telecom Network by Contractor | 2025-01-15 A | 2025-01-21 A | 0% → 100% | 0d → none |  | resources Engineering [86.27 h] → none |
| ENG-DS-SPS-S-100 | Receive of Design Drawing Package for Sewage Pump Stations from Modon | 2025-01-12 A | 2025-01-18 A | 0% → 100% | 88d → none |  | resources Engineering [86.27 h] → none |
| ENG-DS-SPS-A-110 | Review and Comment of Design Drawings for Sewage Pump Stations by Contractor | 2025-01-15 A | 2025-01-21 A | 0% → 100% | 88d → none |  | resources Engineering [86.27 h] → none |
| ENG-DS-DPO-S-100 | Receive of Design Drawing Package for Storm Drainage Ponds from Modon | 2025-01-12 A | 2025-01-18 A | 0% → 100% | 100d → none |  | resources Engineering [86.27 h] → none |

| ID | Task | Start | Finish | Complete | Total float | Other |
| --- | --- | --- | --- | --- | --- | --- |
| ENG-DS-DPO-A-110 | Review and Comment of Design Drawings for Storm Drainage Ponds by Contractor | 2025-01-15 A | 2025-01-21 A | 0% → 100% | 100d → none | resources Engineering [86.27 h] → none |
| SD | **Shop Drawings** |  | 2025-02-10 → 2025-05-19 (+98d) |  |  |  |
| INF | **Infrastructure Networks** |  | 2025-02-10 → 2025-05-19 (+98d) |  |  |  |
| 10 | **Road Works** |  | 2025-02-10 → 2025-05-19 (+98d) |  |  |  |
| 1 | **Road Pavement Works** |  | 2025-02-10 → 2025-05-19 (+98d) |  |  |  |
| ENG-SH-RD-S-100 | Submission Shop Drawings for Plan and Profile of Road Works | 2025-01-22 A | 2025-01-29 A | 0% → 100% | 2d → none | resources Engineering [86.27 h] → none |
| ENG-SH-RD-S-110 | Submission Shop Drawings for Roads Typical Sections and Pavement Details | 2025-01-22 A | 2025-01-29 A | 0% → 100% | 0d → none | resources Engineering [86.27 h] → none |
| ENG-SH-RD-S-120 | Submission Shop Drawings of Extraover for Pedestrian ramps | 2025-01-22 A | 2025-01-29 A | 0% → 100% | 0d → none | resources Engineering [86.27 h] → none |
| ENG-SH-RD-S-130 | Submission Shop Drawings for Intersections of Road Works | 2025-01-22 A | 2025-01-29 A | 0% → 100% | 0d → none | resources Engineering [86.27 h] → none |
| ENG-SH-RD-A-100 | Approval Shop Drawings for Plan and Profile of Road Works | 2025-01-30 → 2025-01-29 A (-1d) | 2025-02-08 → 2025-02-09 A (+1d) | 0% → 100% | 2d → none | resources Engineering [86.27 h] → none |
| ENG-SH-RD-A-110 | Approval Shop Drawings for Roads Typical Sections and Pavement Details | 2025-01-30 A | 2025-02-10 → 2025-03-19 A (+37d) | 0% → 100% | 0d → none | resources Engineering [86.27 h] → none |
| ENG-SH-RD-A-120 | Approval Shop Drawings of Extraover for Pedestrian ramps | 2025-01-30 A | 2025-02-10 → 2025-03-19 A (+37d) | 0% → 100% | 0d → none | resources Engineering [86.27 h] → none |
| ENG-SH-RD-A-130 | Approval Shop Drawings for Intersections of Road Works | 2025-01-30 A | 2025-02-10 → 2025-05-19 A (+98d) | 0% → 100% | 0d → none | resources Engineering [86.27 h] → none |
| 10 | **Pavement Works** |  | 2025-02-09 → 2025-03-19 (+38d) |  |  |  |
| ENG-SH-HS-S-100 | Submission Shop Drawings for Hardscaping Works | 2025-01-22 A | 2025-01-28 A | 0% → 100% | 1d → none | resources Engineering [86.27 h] → none |
| ENG-SH-HS-A-110 | Approval Shop Drawings for Hardscaping Works | 2025-01-29 A | 2025-02-09 → 2025-03-19 A (+38d) | 0% → 100% | 1d → none | resources Engineering [86.27 h] → none |
| 11 | **Traffic Sign Boards and Road Marking** |  | 2025-02-09 → 2025-03-19 (+38d) |  |  |  |
| ENG-SH-MRK-S-110 | Submission Shop Drawings for Roads Markings | 2025-01-22 A | 2025-01-28 A | 0% → 100% | 1d → none | resources Engineering [86.27 h] → none |
| ENG-SH-TSB-S-100 | Submission Shop Drawings for Traffic Signs Boards | 2025-01-22 A | 2025-01-28 → 2025-01-29 A (+1d) | 0% → 100% | 1d → none | resources Engineering [86.27 h] → none |
| ENG-SH-MRK-A-110 | Approval Shop Drawings for Roads Markings | 2025-01-29 A | 2025-02-09 → 2025-03-19 A (+38d) | 0% → 100% | 1d → none | resources Engineering [86.27 h] → none |
| ENG-SH-TSB-A-100 | Approval Shop Drawings for Traffic Signs Boards | 2025-01-29 A | 2025-02-09 → 2025-03-19 A (+38d) | 0% → 100% | 1d → none | resources Engineering [86.27 h] → none |
| 2 | **Sewage Network** |  | 2025-02-04 → 2025-04-28 (+83d) |  |  |  |
| 1 | **Main Line Sections** |  | 2025-02-04 → 2025-04-28 (+83d) |  |  |  |
| ENG-SH-SW-ML-S-100 | Submission Shop Drawings for Main Line of Sewage Network | 2025-01-22 A | 2025-01-27 A | 0% → 100% | 0d → none | resources Engineering [86.27 h] → none |
| ENG-SH-SW-ML-A-110 | Approval Shop Drawings for Main Line of Sewage Network | 2025-01-28 A | 2025-02-04 → 2025-04-28 A (+83d) | 0% → 100% | 0d → none | resources Engineering [86.27 h] → none |
| ENG-SH-SD-ML-S-100 | Submission Shop Drawings for Main Line of Storm Drainage Network | 2025-01-22 A | 2025-01-28 A | 0% → 100% | 1d → none | resources Engineering [86.27 h] → none |
| ENG-SH-SD-ML-A-110 | Approval Shop Drawings for Main Line of Storm Drainage Network | 2025-01-29 A | 2025-02-09 A | 0% → 100% | 1d → none | resources Engineering [86.27 h] → none |
| ENG-SH-SD-CB-S-100 | Submission Shop Drawings for Catch Basin of Storm Drainage Network | 2025-01-22 A | 2025-01-28 A | 0% → 100% | 1d → none | resources Engineering [86.27 h] → none |
| ENG-SH-SD-CB-A-110 | Approval Shop Drawings for Catch Basin of Storm Drainage Network | 2025-01-29 A | 2025-02-09 A | 0% → 100% | 1d → none | resources Engineering [86.27 h] → none |
| 3 | **Potable Water Network** |  | 2025-02-08 → 2025-05-13 (+94d) |  |  |  |
| 1 | **Main Line Sections** |  | 2025-02-08 → 2025-05-13 (+94d) |  |  |  |
| ENG-SH-PW-ML-S-100 | Submission Shop Drawings for Main Line of Potable Water Network | 2025-01-22 A | 2025-01-27 A | 0% → 100% | 2d → none | resources Engineering [86.27 h] → none |
| ENG-SH-PW-ML-A-110 | Approval Shop Drawings for Main Line of Potable Water Network | 2025-01-28 A | 2025-02-08 → 2025-05-13 A (+94d) | 0% → 100% | 2d → none | resources Engineering [86.27 h] → none |
| 2 | **Fire Hydrant** |  | 2025-02-08 → 2025-04-02 (+53d) |  |  |  |
| ENG-SH-PW-FH-S-100 | Submission Shop Drawings for Fire Hydrant Network | 2025-01-22 A | 2025-01-27 A | 0% → 100% | 2d → none | resources Engineering [86.27 h] → none |
| ENG-SH-PW-FH-A-110 | Approval Shop Drawings for Fire Hydrant Network | 2025-01-28 A | 2025-02-08 → 2025-04-02 A (+53d) | 0% → 100% | 2d → none | resources Engineering [86.27 h] → none |
| 4 | **Irrigation Network** |  | 2025-02-09 → 2025-04-28 (+78d) |  |  |  |
| 1 | **Main Line Sections** |  | 2025-02-09 → 2025-04-27 (+77d) |  |  |  |
| ENG-SH-IR-ML-S-100 | Submission Shop Drawings for Main Line of Irrigation Network | 2025-01-22 A | 2025-01-28 A | 0% → 100% | 1d → none | resources Engineering [86.27 h] → none |
| ENG-SH-IR-ML-A-110 | Approval Shop Drawings for Main Line of Irrigation Network | 2025-01-29 A | 2025-02-09 → 2025-04-27 A (+77d) | 0% → 100% | 1d → none | resources Engineering [86.27 h] → none |
| 2 | **Lateral Line Sections** |  | 2025-02-09 → 2025-04-28 (+78d) |  |  |  |
| ENG-SH-IR-LL-S-100 | Submission Shop Drawings for Lateral Line of Irrigation Network | 2025-01-22 A | 2025-01-28 A | 0% → 100% | 1d → none | resources Engineering [86.27 h] → none |
| ENG-SH-IR-LL-A-110 | Approval Shop Drawings for Lateral Line of Irrigation Network | 2025-01-29 A | 2025-02-09 → 2025-04-28 A (+78d) | 0% → 100% | 1d → none | resources Engineering [86.27 h] → none |
| ENG-SH-MV-S-100 | Submission Shop Drawings for Medium Voltage Network | 2025-01-22 A | 2025-01-28 A | 0% → 100% | 1d → none | resources Engineering [86.27 h] → none |
| ENG-SH-MV-A-110 | Approval Shop Drawings for Medium Voltage Network | 2025-01-29 A | 2025-02-09 A | 0% → 100% | 1d → none | resources Engineering [86.27 h] → none |
| ENG-SH-SL-S-100 | Submission Shop Drawings for Street Lighting Network | 2025-01-22 A | 2025-01-28 A | 0% → 100% | 1d → none | resources Engineering [86.27 h] → none |
| ENG-SH-SL-A-110 | Approval Shop Drawings for Street Lighting Network | 2025-01-29 A | 2025-02-09 A | 0% → 100% | 1d → none | resources Engineering [86.27 h] → none |
| ENG-SH-CTV-S-100 | Submission Shop Drawings for CCTV Complete System | 2025-01-22 A | 2025-01-28 A | 0% → 100% | 1d → none | resources Engineering [86.27 h] → none |
| ENG-SH-TE-S-100 | Submission Shop Drawings for Telecom Network | 2025-01-22 A | 2025-01-28 A | 0% → 100% | 1d → none | resources Engineering [86.27 h] → none |
| ENG-SH-CTV-A-110 | Approval Shop Drawings for CCTV Complete System | 2025-01-29 A | 2025-02-09 A | 0% → 100% | 1d → none | resources Engineering [86.27 h] → none |
| ENG-SH-TE-A-110 | Approval Shop Drawings for Telecom Network | 2025-01-29 A | 2025-02-09 A | 0% → 100% | 1d → none | resources Engineering [86.27 h] → none |
| ENG-SH-SPS-S-110 | Submission Shop Drawings Package for Sewage Pump Stations | 2025-01-22 A | 2025-01-29 A | 0% → 100% | 88d → none | resources Engineering [86.27 h] → none |
| ENG-SH-SPS-A-110 | Approval Shop Drawings Package for Sewage Pump Stations | 2025-01-30 A | 2025-02-10 A | 0% → 100% | 88d → none | resources Engineering [86.27 h] → none |
| ENG-SH-DPO-S-100 | Submission Shop Drawings Package for Storm Drainage Ponds | 2025-01-22 A | 2025-01-29 A | 0% → 100% | 100d → none | resources Engineering [86.27 h] → none |
| ENG-SH-DPO-A-110 | Approval Shop Drawings Package for Storm Drainage Ponds | 2025-01-30 A | 2025-02-10 A | 0% → 100% | 100d → none | resources Engineering [86.27 h] → none |
| ENG-MS-RD-S-10 | Submission Method Statement for Plan and Profile of Road Works | 2025-01-22 A | 2025-01-29 A | 0% → 100% | 2d → none | resources Engineering [86.27 h] → none |
| ENG-MS-RD-S-20 | Submission Method Statement for Roads Typical Sections and Pavement Details | 2025-01-22 A | 2025-01-29 A | 0% → 100% | 0d → none | resources Engineering [86.27 h] → none |
| ENG-MS-RD-S-30 | Submission Method Statement of Extraover for Pedestrian ramps | 2025-01-22 A | 2025-01-29 A | 0% → 100% | 0d → none | resources Engineering [86.27 h] → none |
| ENG-MS-RD-S-40 | Submission Method Statement for Intersections of Road Works | 2025-01-22 A | 2025-01-29 A | 0% → 100% | 0d → none | resources Engineering [86.27 h] → none |
| ENG-MS-RD-A-10 | Approval Method Statement for Plan and Profile of Road Works | 2025-01-30 A | 2025-02-08 → 2025-02-10 A (+2d) | 0% → 100% | 2d → none | resources Engineering [86.27 h] → none |
| ENG-MS-RD-A-20 | Approval Method Statement for Roads Typical Sections and Pavement Details | 2025-01-30 A | 2025-02-10 A | 0% → 100% | 0d → none | resources Engineering [86.27 h] → none |
| ENG-MS-RD-A-30 | Approval Method Statement of Extraover for Pedestrian ramps | 2025-01-30 A | 2025-02-10 A | 0% → 100% | 0d → none | resources Engineering [86.27 h] → none |
| ENG-MS-RD-A-40 | Approval Method Statement for Intersections of Road Works | 2025-01-30 A | 2025-02-10 A | 0% → 100% | 0d → none | resources Engineering [86.27 h] → none |
| ENG-MS-HS-S-10 | Submission Method Statement for Hardscaping Works | 2025-01-22 A | 2025-01-29 A | 0% → 100% | 0d → none | resources Engineering [86.27 h] → none |
| ENG-MS-HS-A-10 | Approval Method Statement for Hardscaping Works | 2025-01-30 A | 2025-02-10 A | 0% → 100% | 0d → none | resources Engineering [86.27 h] → none |
| ENG-MS-MRK-S-10 | Submission Method Statement for Roads Markings | 2025-01-22 A | 2025-01-29 A | 0% → 100% | 0d → none | resources Engineering [86.27 h] → none |
| ENG-MS-TSB-S-10 | Submission Method Statement for Traffic Signs Boards | 2025-01-22 A | 2025-01-29 A | 0% → 100% | 0d → none | resources Engineering [86.27 h] → none |
| ENG-MS-MRK-A-10 | Approval Method Statement for Roads Markings | 2025-01-30 A | 2025-02-10 A | 0% → 100% | 0d → none | resources Engineering [86.27 h] → none |
| ENG-MS-TSB-A-10 | Approval Method Statement for Traffic Signs Boards | 2025-01-30 A | 2025-02-10 A | 0% → 100% | 0d → none | resources Engineering [86.27 h] → none |
| 2 | **Sewage Network** |  | 2025-02-04 → 2025-02-08 (+4d) |  |  |  |

| ID | Task | Start | Finish | Complete | Total float | Other |
| --- | --- | --- | --- | --- | --- | --- |
| 1 | **Main Line Sections** |  | 2025-02-04 → 2025-02-08 (+4d) |  |  |  |
| ENG-MS-SW-ML-S-100 | Submission Method Statement for Main Line of Sewage Network | 2025-01-22 A | 2025-01-27 A | 0% → 100% | 0d → none | resources Engineering [86.27 h] → none |
| ENG-MS-SW-ML-A-110 | Approval Method Statement for Main Line of Sewage Network | 2025-01-28 A | 2025-02-04 → 2025-02-08 A (+4d) | 0% → 100% | 0d → none | resources Engineering [86.27 h] → none |
| ENG-MS-SD-ML-S-100 | Submission Method Statement for Main Line of Storm Drainage Network | 2025-01-22 A | 2025-01-28 A | 0% → 100% | 1d → none | resources Engineering [86.27 h] → none |
| ENG-MS-SD-ML-A-110 | Approval Method Statement for Main Line of Storm Drainage Network | 2025-01-29 A | 2025-02-09 A | 0% → 100% | 1d → none | resources Engineering [86.27 h] → none |
| ENG-MS-SD-CB-S-100 | Submission Method Statement for Catch Basin of Storm Drainage Network | 2025-01-22 A | 2025-01-28 A | 0% → 100% | 1d → none | resources Engineering [86.27 h] → none |
| ENG-MS-SD-CB-A-110 | Approval Method Statement for Catch Basin of Storm Drainage Network | 2025-01-29 A | 2025-02-09 A | 0% → 100% | 1d → none | resources Engineering [86.27 h] → none |
| ENG-MS-PW-ML-S-100 | Submission Method Statement for Main Line of Potable Water Network | 2025-01-22 A | 2025-01-27 A | 0% → 100% | 2d → none | resources Engineering [86.27 h] → none |
| ENG-MS-PW-ML-A-110 | Approval Method Statement for Main Line of Potable Water Network | 2025-01-28 A | 2025-02-08 A | 0% → 100% | 2d → none | resources Engineering [86.27 h] → none |
| ENG-MS-IR-ML-S-100 | Submission Method Statement for Main Line of Irrigation Network | 2025-01-22 A | 2025-01-28 A | 0% → 100% | 1d → none | resources Engineering [86.27 h] → none |
| ENG-MS-IR-ML-A-110 | Approval Method Statement for Main Line of Irrigation Network | 2025-01-29 A | 2025-02-09 A | 0% → 100% | 1d → none | resources Engineering [86.27 h] → none |
| ENG-MS-IR-LL-S-100 | Submission Method Statement for Lateral Line of Irrigation Network | 2025-01-22 A | 2025-01-28 A | 0% → 100% | 1d → none | resources Engineering [86.27 h] → none |
| ENG-MS-IR-LL-A-110 | Approval Method Statement for Lateral Line of Irrigation Network | 2025-01-29 A | 2025-02-09 A | 0% → 100% | 1d → none | resources Engineering [86.27 h] → none |
| ENG-MS-MV-S-100 | Submission Method Statement for Medium Voltage Network | 2025-01-22 A | 2025-01-28 A | 0% → 100% | 1d → none | resources Engineering [86.27 h] → none |
| ENG-MS-MV-A-110 | Approval Method Statement for Medium Voltage Network | 2025-01-29 A | 2025-02-09 A | 0% → 100% | 1d → none | resources Engineering [86.27 h] → none |
| ENG-MS-SL-S-100 | Submission Method Statement for Street Lighting Network | 2025-01-22 A | 2025-01-28 A | 0% → 100% | 1d → none | resources Engineering [86.27 h] → none |
| ENG-MS-SL-A-110 | Approval Method Statement for Street Lighting Network | 2025-01-29 A | 2025-02-09 A | 0% → 100% | 1d → none | resources Engineering [86.27 h] → none |
| ENG-MS-CTV-S-100 | Submission Method Statement for CCTV Complete System | 2025-01-22 A | 2025-01-28 A | 0% → 100% | 1d → none | resources Engineering [86.27 h] → none |
| ENG-MS-TE-S-100 | Submission Method Statement for Telecom Network | 2025-01-22 A | 2025-01-28 A | 0% → 100% | 1d → none | resources Engineering [86.27 h] → none |
| ENG-MS-CTV-A-110 | Approval Method Statement for CCTV Complete System | 2025-01-29 A | 2025-02-09 A | 0% → 100% | 1d → none | resources Engineering [86.27 h] → none |
| ENG-MS-TE-A-110 | Approval Method Statement for Telecom Network | 2025-01-29 A | 2025-02-09 A | 0% → 100% | 1d → none | resources Engineering [86.27 h] → none |
| ENG-MS-SPS-S-100 | Submission Method Statement Package for Sewage Pump Stations | 2025-01-22 A | 2025-01-29 A | 0% → 100% | 88d → none | resources Engineering [86.27 h] → none |
| ENG-MS-SPS-A-110 | Approval Method Statement Package for Sewage Pump Stations | 2025-01-30 A | 2025-02-10 A | 0% → 100% | 88d → none | resources Engineering [86.27 h] → none |
| ENG-MS-DPO-S-100 | Submission Method Statement Package for Storm Drainage Ponds | 2025-01-22 A | 2025-01-29 A | 0% → 100% | 100d → none | resources Engineering [86.27 h] → none |
| ENG-MS-DPO-A-110 | Approval Method Statement Package for Storm Drainage Ponds | 2025-01-30 A | 2025-02-10 A | 0% → 100% | 100d → none | resources Engineering [86.27 h] → none |
| SD11 | **Material Submittals** |  | 2025-02-16 → 2025-06-02 (+106d) |  |  |  |
| 2 | **Short Lead Time Items** |  | 2025-02-16 → 2025-06-01 (+105d) |  |  |  |
| INF | **Infrastructure Networks** |  | 2025-02-16 → 2025-06-01 (+105d) |  |  |  |
| 10 | **Road Works** |  | 2025-02-16 → 2025-06-01 (+105d) |  |  |  |
| MS | **Submission of Material** |  | 2025-02-04 → 2025-05-27 (+112d) |  |  |  |
| 1 | **Roads Works** |  | 2025-02-04 → 2025-05-26 (+111d) |  |  |  |
| ENG-MT-RD-S-100 | Material Submittal for Subgrade of Road Works | 2025-01-22 A | 2025-02-04 A | 0% → 100% | 29d → none | resources Engineering [86.27 h] → none |
| ENG-MT-RD-S-110 | Material Submittal for Aggregate Base Course of Road Works | 2025-01-22 A | 2025-02-04 A | 0% → 100% | 35d → none | resources Engineering [86.27 h] → none |
| ENG-MT-RD-S-120 | Material Submittal for Prime Coat of Road Works | 2025-01-22 → 2025-05-13 A (+111d) | 2025-02-04 → 2025-05-26 A (+111d) | 0% → 100% | 113d → none | resources Engineering [86.27 h] → none |
| ENG-MT-RD-S-130 | Material Submittal for Bituminous Base & Wearing Courses of Road Works | 2025-01-22 → 2025-05-13 A (+111d) | 2025-02-04 → 2025-05-26 A (+111d) | 0% → 100% | 139d → none | resources Engineering [86.27 h] → none |
| 10 | **Pavement Works** | 2025-01-22 → 2025-01-27 (+5d) | 2025-02-04 → 2025-05-27 (+112d) |  |  |  |
| ENG-MT-RD-S-140 | Material Submittal for Interlock Tiles of Landscaping | 2025-01-22 → 2025-01-27 A (+5d) | 2025-02-04 → 2025-03-15 A (+39d) | 0% → 100% | 56d → none | resources Engineering [86.27 h] → none |
| ENG-MT-RD-S-150 | Material Submittal for Curbstones of Landscaping | 2025-01-22 → 2025-04-26 A (+94d) | 2025-02-04 → 2025-05-27 A (+112d) | 0% → 100% | 82d → none | resources Engineering [86.27 h] → none |
| 11 | **Traffic Signs Boards and Roads Marking** | 2025-01-22 → 2025-05-13 (+111d) | 2025-02-04 → 2025-05-26 (+111d) |  |  |  |
| ENG-MT-TS-S-100 | Material Submittal for Traffic Signs Boards of Road Works | 2025-01-22 → 2025-05-13 A (+111d) | 2025-02-04 → 2025-05-26 A (+111d) | 0% → 100% | 140d → none | resources Engineering [86.27 h] → none |
| ENG-MT-TS-S-110 | Material Submittal for Road Markings of Road Works | 2025-01-22 → 2025-05-13 A (+111d) | 2025-02-04 → 2025-05-25 A (+110d) | 0% → 100% | 166d → none | resources Engineering [86.27 h] → none |
| NA | **Approval of Material** | 2025-02-05 → 2025-01-27 (-9d) | 2025-02-16 → 2025-06-01 (+105d) |  |  |  |
| 1 | **Road Works** |  | 2025-02-10 → 2025-06-01 (+111d) |  |  |  |
| ENG-MT-RD-A-100 | Material Approval for Subgrade of Road Works | 2025-02-05 A | 2025-02-10 → 2025-03-13 A (+31d) | 0% → 100% | 29d → none | resources Engineering [86.27 h]; 300mm thick Subgrade, including subgrade preparation, CBR?25% → 300mm thick Subgrade, including subgrade preparation, CBR?25% [49330] |
| ENG-MT-RD-A-110 | Material Approval for Aggregate Base Course of Road Works | 2025-02-05 A | 2025-02-10 → 2025-03-13 A (+31d) | 0% → 100% | 35d → none | resources Engineering [86.27 h]; Aggregate base course 200mm thick after compaction in two layers(Grading 1); CBR?80%; including watering, compaction and testing → Aggregate base course 200mm thick after compaction in two layers(Grading 1); CBR?80%; including watering, compaction and testing [23023] |
| ENG-MT-RD-A-120 | Material Approval for Prime Coat of Road Works | 2025-02-05 → 2025-05-27 A (+111d) | 2025-02-10 → 2025-06-01 A (+111d) | 0% → 100% | 113d → none | resources Engineering [86.27 h]; Aggregate base course 200mm thick after compaction in two layers(Grading 1); CBR?80%; including watering, compaction and testing → Aggregate base course 200mm thick after compaction in two layers(Grading 1); CBR?80%; including watering, compaction and testing [9867] |
| ENG-MT-RD-A-130 | Material Approval for Bituminous Base & Wearing Courses of Road Works | 2025-02-05 → 2025-05-27 A (+111d) | 2025-02-10 → 2025-06-01 A (+111d) | 0% → 100% | 139d → none | resources Engineering [86.27 h]; Bituminous base course(Grading I - Class A), 70mm thick after compaction including Prime Coat (MC1); Bituminous concrete wearing course, 50 mm thick, after compaction(Grading I - Class A), including tack coat (RC) → Bituminous base course(Grading I - Class A), 70mm thick after compaction including Prime Coat (MC1) [11510]; Bituminous concrete wearing course, 50 mm thick, after compaction(Grading I - Class A), including tack coat (RC) [8222] |
| 2 | **Pavement Works** | 2025-02-05 → 2025-01-27 (-9d) | 2025-02-16 → 2025-04-27 (+70d) |  |  |  |
| ENG-MT-RD-A-140 | Material Approval of Interlock Tiles for Landscaping | 2025-02-05 → 2025-01-27 A (-9d) | 2025-02-16 → 2025-03-15 A (+27d) | 0% → 100% | 56d → none | resources Engineering [86.27 h]; Interlocking block pavers for sidewalk/footpath 60mm thick on and including 30mm Sand Bedding, 200mm Aggregate subbase, all in accordance with authority standards and complete as per specifications; Extraover for Pedestrian ramps → Interlocking block pavers for sidewalk/footpath 60mm thick on and including 30mm Sand Bedding, 200mm Aggregate subbase, all in accordance with authority standards and complete as per specifications [32500]; Extraover for Pedestrian ramps [82] |
| ENG-MT-RD-A-150 | Material Approval of Curbstones for Landscaping | 2025-02-05 → 2025-04-26 A (+80d) | 2025-02-16 → 2025-04-27 A (+70d) | 0% → 100% | 82d → none | resources Engineering [86.27 h]; Precast Concrete Kerb, Type K1; Precast Concrete Kerb, Type L1 → Precast Concrete Kerb, Type K1 [18200]; Precast Concrete Kerb, Type L1 [36111] |
| 3 | **Traffic Signs Boards and Roads Marking** | 2025-02-05 → 2025-05-26 (+110d) | 2025-02-16 → 2025-05-31 (+104d) |  |  |  |
| ENG-MT-TS-A-110 | Material Approval for Road Markings of Road Works | 2025-02-05 → 2025-05-26 A (+110d) | 2025-02-16 → 2025-05-31 A (+104d) | 0% → 100% | 166d → none | resources Engineering [86.27 h]; Retroreflective Thermoplastic White, Traffic lines; Retroreflective Thermoplastic Yellow, Traffic lines; Retroreflective raised pavement markers(Type A) → Retroreflective Thermoplastic White, Traffic lines [6200]; Retroreflective Thermoplastic Yellow, Traffic lines [950]; Retroreflective raised pavement markers(Type A) [1212] |
| ENG-MT-TS-A-100 | Material Approval for Traffic Signs Boards of Road Works | 2025-02-05 → 2025-05-27 A (+111d) | 2025-02-16 → 2025-05-31 A (+104d) | 0% → 100% | 140d → none | resources Engineering [86.27 h]; Traffic signs, ground mounted, Sheet Alumenium, (breakaway) Single post, with all accessories; Straight Arrow; Right or Left Arrow; Straight-Right Arrow; Straight-Left Arrow → Traffic signs, ground mounted, Sheet Alumenium, (breakaway) Single post, with all accessories [83]; Straight Arrow [186.84]; Right or Left Arrow [10]; Straight-Right Arrow [12]; Straight-Left Arrow [14] |
| 2 | **Sewage Network** |  | 2025-02-10 → 2025-05-15 (+94d) |  |  |  |
| ENG-MT-SW-ML-S-100 | Material Submittal for Manholes of Sewage Network | 2025-01-22 A | 2025-01-27 → 2025-01-29 A (+2d) | 0% → 100% | 1d → none | resources Engineering [86.27 h] → none |
| ENG-MT-SW-ML-S-110 | Material Submittal for Main Line Pipes of Sewage Network | 2025-01-22 A | 2025-01-29 A | 0% → 100% | 0d → none | resources Engineering [86.27 h] → none |
| ENG-MT-SW-TF-S-100 | Material Submittal for Manhole Covers of Sewage Network | 2025-01-22 A | 2025-01-29 A | 0% → 100% | 0d → none | resources Engineering [86.27 h] → none |
| ENG-MT-SW-TF-S-120 | Material Submittal for Membrane Insulation of Sewage Network | 2025-01-22 A | 2025-01-29 A | 0% → 100% | 0d → none | resources Engineering [86.27 h] → none |
| MA | **Approval of Material** | 2025-01-28 → 2025-01-30 (+2d) | 2025-02-10 → 2025-05-15 (+94d) |  |  |  |
| 1 | **Main Line Sections** | 2025-01-28 → 2025-01-30 (+2d) | 2025-02-10 → 2025-04-20 (+69d) |  |  |  |
| ENG-MT-SW-ML-A-100 | Material Approval for Manholes of Sewage Network | 2025-01-28 → 2025-01-30 A (+2d) | 2025-02-03 → 2025-04-20 A (+76d) | 0% → 100% | 1d → none | resources Engineering [86.27 h]; Washout valve chamber; Air release valve chamber; Depth: not exceeding 1.5m; Depth: 1.5 - 2.5m; Depth: 2.5 - 3.5m; Depth: 3.5 - 4.5m; Depth: 4.5 - 5.5m; Depth: 5.5 - 6.5m; Depth:6.5 - 7.5m; Depth: more than 7.5m → Washout valve chamber [2]; Air release valve chamber [3]; Depth: not exceeding 1.5m [13]; Depth: 1.5 - 2.5m [45]; Depth: 2.5 - 3.5m [10]; Depth: 3.5 - 4.5m [4]; Depth: 4.5 - 5.5m [5]; Depth: 5.5 - 6.5m [10]; Depth:6.5 - 7.5m [15]; Depth: more than 7.5m [1]; Depth: 2.5 - 3.5m [5]; Depth: 3.5 - 4.5m [3]; Depth: 4.5 - 5.5m [2]; Depth: 5.5 - 6.5m [2]; Depth:6.5 - 7.5m [7] |
| ENG-MT-SW-ML-A-110 | Material Approval for Main Line Pipes of Sewage Network | 2025-01-30 A | 2025-02-10 A | 0% → 100% | 0d → none | resources Engineering [86.27 h]; Nominal bore : 160mm; Depth : 0.0m - 1.5m; Nominal bore : 160mm; Depth : 1.5m - 2.5m; Nominal bore : 200mm; Depth : 0.0m - 1.5m; Nominal bore : 200mm; Depth : 1.5m - 2.5m; Nominal bore : 200mm; Depth : 2.5m - 3.5m; Nominal bore : 200mm; Depth : 3.5m - 4.5m; Nominal bore : 200mm; Depth : 4.5m -5.5m; Nominal bore : 200mm; Depth : 5.5m - 6.5m; Nominal bore : 250mm; Depth : 4.5m -5.5m; Nominal bore : 250mm; Depth : 5.5m - 6.5m; Nominal bore : 315mm; Depth : 4.5m -5.5m; Nominal bore : 315mm; Depth : 6.5m - 7.5m; Depth : 1.5 - 2.5m; Depth : 2.5 - 3.5m; Depth : 3.5 - 4.5m; Depth : 4.5 - 5.5m; Depth : 5.5 - 6.5m; Depth : 6.5 -7.5m; Depth :more than 7.5m; HDPE force main DN 800mm diameter, in trenches depth: 0- 1.5m; HDPE force main DN 800mm diameter, in trenches depth: 1.51- 2.5m; Washout valve 200mm, on 800mm dia. pipe; Air release valve 110 mm dia, on 800mm dia. pipe → Nominal bore : 160mm; Depth : 0.0m - 1.5m [250]; Nominal bore : 160mm; Depth : 1.5m - 2.5m [650]; Nominal bore : 200mm; Depth : 0.0m - 1.5m [400]; Nominal bore : 200mm; Depth : 1.5m - 2.5m [750]; Nominal bore : 200mm; Depth : 2.5m - 3.5m [1200]; Nominal bore : 200mm; Depth : 3.5m - 4.5m [1350]; Nominal bore : 200mm; Depth : 4.5m -5.5m [700]; Nominal bore : 200mm; Depth : 5.5m - 6.5m [900]; Nominal bore : 250mm; Depth : 4.5m -5.5m [220]; Nominal bore : 250mm; Depth : 5.5m - 6.5m [180]; Nominal bore : 315mm; Depth : 4.5m -5.5m [180]; Nominal bore : 315mm; Depth : 6.5m - 7.5m [200]; Depth : 1.5 - 2.5m [200]; Depth : 2.5 - 3.5m [150]; Depth : 3.5 - 4.5m [150]; Depth : 4.5 - 5.5m [100]; Depth : 5.5 - 6.5m [600]; Depth : 6.5 -7.5m [700]; Depth : 6.5 -7.5m [500]; Depth :more than 7.5m [800]; Depth : 6.5 -7.5m [250]; Depth :more than 7.5m [600]; HDPE force main DN 800mm diameter, in trenches depth: 0- 1.5m [100]; HDPE force main DN 800mm diameter, in trenches depth: 1.51- 2.5m [2237]; Washout valve 200mm, on 800mm dia. pipe [2]; Air release valve 110 mm dia, on 800mm dia. pipe [3] |
| 3 | **Testing and Finishes** | 2025-01-30 → 2025-03-05 (+34d) | 2025-02-10 → 2025-05-15 (+94d) |  |  |  |
| ENG-MT-SW-TF-A-100 | Material Approval for Manhole Covers of Sewage Network | 2025-01-30 → 2025-03-05 A (+34d) | 2025-02-10 → 2025-05-15 A (+94d) | 0% → 100% | 0d → none | resources Engineering [86.27 h]; Depth: not exceeding 1.5m; Depth: 1.5 - 2.5m; Depth: 2.5 - 3.5m; Depth: 3.5 - 4.5m; Depth: 4.5 - 5.5m; Depth: 5.5 - 6.5m; Depth:6.5 - 7.5m; Depth: more than 7.5m → Depth: not exceeding 1.5m [1]; Depth: 1.5 - 2.5m [3]; Depth: 2.5 - 3.5m [5]; Depth: 3.5 - 4.5m [1]; Depth: 4.5 - 5.5m [1]; Depth: 5.5 - 6.5m [3]; Depth:6.5 - 7.5m [3]; Depth: more than 7.5m [1] |
| ENG-MT-SW-TF-A-120 | Material Approval for Membrane Insulation of Sewage Network | 2025-01-30 → 2025-03-06 A (+35d) | 2025-02-10 → 2025-03-15 A (+33d) | 0% → 100% | 0d → none | resources Engineering [86.27 h]; Depth: not exceeding 1.5m; Depth: 1.5 - 2.5m; Depth: 2.5 - 3.5m; Depth: 3.5 - 4.5m; Depth: 4.5 - 5.5m; Depth: 5.5 - 6.5m; Depth:6.5 - 7.5m; Depth: more than 7.5m → Depth: not exceeding 1.5m [1]; Depth: 1.5 - 2.5m [3]; Depth: 2.5 - 3.5m [4]; Depth: 3.5 - 4.5m [1]; Depth: 4.5 - 5.5m [1]; Depth: 5.5 - 6.5m [3]; Depth:6.5 - 7.5m [3]; Depth: more than 7.5m [1] |
| 9 | **Storm Drainage Network** |  | 2025-02-10 → 2025-02-20 (+10d) |  |  |  |
| ENG-MT-SD-ML-S-100 | Material Submittal for Manholes of Storm Drainage Network | 2025-01-22 A | 2025-01-29 A | 0% → 100% | 0d → none | resources Engineering [86.27 h] → none |
| ENG-MT-SD-ML-S-110 | Material Submittal for Main Line Pipes of Storm Drainage Network | 2025-01-22 A | 2025-01-29 A | 0% → 100% | 0d → none | resources Engineering [86.27 h] → none |
| ENG-MT-SD-CB-S-100 | Material Submittal for Catch Basins of Storm Drainage Network | 2025-01-22 A | 2025-01-29 A | 0% → 100% | 0d → none | resources Engineering [86.27 h] → none |
| ENG-MT-SD-CB-S-110 | Material Submittal for Catch Basin Pipes of Storm Drainage Network | 2025-01-22 A | 2025-01-29 A | 0% → 100% | 0d → none | resources Engineering [86.27 h] → none |

| ID | Task | Start | Finish | Duration | Complete | Total float | Other |
| --- | --- | --- | --- | --- | --- | --- | --- |
| ENG-MT-SD-TF-S-100 | Material Submittal for Manhole Covers of Storm Drainage Network | 2025-01-22 A | 2025-01-29 A |  | 0% → 100% | 0d → none | resources Engineering [86.27 h] → none |
| ENG-MT-SD-TF-S-110 | Material Submittal for Catch Basin Covers of Storm Drainage Network | 2025-01-22 A | 2025-01-29 A |  | 0% → 100% | 0d → none | resources Engineering [86.27 h] → none |
| ENG-MT-SD-TF-S-120 | Material Submittal for Epoxy Insulation of Storm Drainage Network | 2025-01-22 A | 2025-01-29 A |  | 0% → 100% | 0d → none | resources Engineering [86.27 h] → none |
| MA | **Approval of Material** |  | 2025-02-10 → 2025-02-20 (+10d) |  |  |  |  |
| ENG-MT-SD-ML-A-100 | Material Approval for Manholes of Storm Drainage Network | 2025-01-30 A | 2025-02-10 A |  | 0% → 100% | 0d → none | resources Engineering [86.27 h]; MH ; depth: 0.0m - 1.5m; MH ; depth: 1.51m - 2.5m; MH ; depth: 2.51 - 3.5m; MH ; depth: 1.51m - 2.5m with back drop less than 1.0 m; MH ; depth: 2.51 - 3.5m with back drop less than 1.0 m; MH ; depth: 3.51 - 4.5m → MH ; depth: 0.0m - 1.5m [20.8]; MH ; depth: 1.51m - 2.5m [49.6]; MH ; depth: 2.51 - 3.5m [4]; MH ; depth: 0.0m - 1.5m [8]; MH ; depth: 1.51m - 2.5m [51.2]; MH ; depth: 1.51m - 2.5m with back drop less than 1.0 m [0.8]; MH ; depth: 2.51 - 3.5m [6.4]; MH ; depth: 2.51 - 3.5m with back drop less than 1.0 m [0.8]; MH ; depth: 1.51m - 2.5m [21.6]; MH ; depth: 2.51 - 3.5m [24]; MH ; depth: 2.51 - 3.5m [3.2]; MH ; depth: 3.51 - 4.5m [4] |
| ENG-MT-SD-ML-A-110 | Material Approval for Main Line Pipes of Storm Drainage Network | 2025-01-30 A | 2025-02-10 A |  | 0% → 100% | 0d → none | resources Engineering [86.27 h]; Pipe with diameter 400mm ; depth: 0.0m - 1.5m; Pipe with diameter 400mm ; depth: 1.51m - 2.5m; Pipe with diameter 400mm ; depth: 2.51m - 3.5m; Pipe with diameter 500mm ; depth: 0.0m - 1.5m; Pipe with diameter 500mm ; depth: 1.51m - 2.5m; Pipe with diameter 600mm ; depth: 0.0m - 1.5m; Pipe with diameter 600mm ; depth: 1.51m - 2.5m; Pipe with diameter 600mm ; depth: 2.51m - 3.5m; Pipe with diameter 700mm ; depth: 0.0m - 1.5m; Pipe with diameter 700mm ; depth: 1.51m - 2.5m; Pipe with diameter 700mm ; depth: 2.51m - 3.5m; Pipe with diameter 800mm ; depth: 0.0m - 1.5m; Pipe with diameter 800mm ; depth: 1.51m - 2.5m; Pipe with diameter 800mm ; depth: 2.51m - 3.5m; Pipe with diameter 900mm ; depth: 0.0m - 1.5m; Pipe with diameter 900mm ; depth: 1.51m - 2.5m; Pipe with diameter 900mm ; depth: 2.51 - 3.5m; Pipe with diameter 1000mm ; depth: 0.0m - 1.5m; Pipe with diameter 1000mm ; depth: 1.51m - 2.5m; Pipe with diameter 1000mm ; depth: 2.51 - 3.5m; Pipe with diameter 1100mm ; depth: 0.0m - 1.5m; Pipe with diameter 1100mm ; depth: 1.51m - 2.5m; Pipe with diameter 1100mm ; depth: 2.51 - 3.5m; Pipe with diameter 1200mm ; depth: 1.51m - 2.5m; Pipe with diameter 1200mm ; depth: 2.51 - 3.5m; Access opening with dimensions 1000*1000 mm → Pipe with diameter 400mm ; depth: 0.0m - 1.5m [1593]; Pipe with diameter 400mm ; depth: 1.51m - 2.5m [2033]; Pipe with diameter 400mm ; depth: 2.51m - 3.5m [50]; Pipe with diameter 500mm ; depth: 0.0m - 1.5m [50]; Pipe with diameter 500mm ; depth: 1.51m - 2.5m [2990]; Pipe with diameter 600mm ; depth: 0.0m - 1.5m [50]; Pipe with diameter 600mm ; depth: 1.51m - 2.5m [1429]; Pipe with diameter 600mm ; depth: 2.51m - 3.5m [173]; Pipe with diameter 700mm ; depth: 0.0m - 1.5m [50]; Pipe with diameter 700mm ; depth: 1.51m - 2.5m [2623]; Pipe with diameter 700mm ; depth: 2.51m - 3.5m [50]; Pipe with diameter 800mm ; depth: 0.0m - 1.5m [50]; Pipe with diameter 800mm ; depth: 1.51m - 2.5m [1310]; Pipe with diameter 800mm ; depth: 2.51m - 3.5m [70]; Pipe with diameter 900mm ; depth: 0.0m - 1.5m [50]; Pipe with diameter 900mm ; depth: 1.51m - 2.5m [854]; Pipe with diameter 900mm ; depth: 2.51 - 3.5m [57]; Pipe with diameter 1000mm ; depth: 0.0m - 1.5m [50]; Pipe with diameter 1000mm ; depth: 1.51m - 2.5m [427]; Pipe with diameter 1000mm ; depth: 2.51 - 3.5m [507]; Pipe with diameter 1100mm ; depth: 0.0m - 1.5m [50]; Pipe with diameter 1100mm ; depth: 1.51m - 2.5m [667]; Pipe with diameter 1100mm ; depth: 2.51 - 3.5m [174]; Pipe with diameter 1200mm ; depth: 1.51m - 2.5m [155]; Pipe with diameter 1200mm ; depth: 2.51 - 3.5m [483]; Access opening with dimensions 1000*1000 mm [13] |
| 2 | **Catch Basin Sections** |  | 2025-02-10 → 2025-02-13 (+3d) |  |  |  |  |
| ENG-MT-SD-CB-A-100 | Material Approval for Catch Basins of Storm Drainage Network | 2025-01-30 A | 2025-02-10 → 2025-02-12 A (+2d) |  | 0% → 100% | 0d → none | resources Engineering [86.27 h]; Single Catch basin; Double Catch basin → Single Catch basin [232]; Double Catch basin [100] |
| ENG-MT-SD-CB-A-110 | Material Approval for Catch Basin Pipes of Storm Drainage Network | 2025-01-30 A | 2025-02-10 → 2025-02-13 A (+3d) |  | 0% → 100% | 0d → none | resources Engineering [86.27 h]; Pipe with diameter 300mm ; depth: 0 - 1.5m; Pipe with diameter 400mm ; depth: 0 - 1.5m → Pipe with diameter 300mm ; depth: 0 - 1.5m [8200]; Pipe with diameter 400mm ; depth: 0 - 1.5m [500] |
| 3 | **Testing and Finishes** |  | 2025-02-10 → 2025-02-20 (+10d) |  |  |  |  |
| ENG-MT-SD-TF-A-100 | Material Approval for Manhole Covers of Storm Drainage Network | 2025-01-30 A | 2025-02-10 → 2025-02-20 A (+10d) |  | 0% → 100% | 0d → none | resources Engineering [86.27 h]; MH ; depth: 0.0m - 1.5m; MH ; depth: 1.51m - 2.5m; MH ; depth: 2.51 - 3.5m; MH ; depth: 1.51m - 2.5m with back drop less than 1.0 m [0.1]; MH ; depth: 2.51 - 3.5m with back drop less than 1.0 m [0.1]; MH ; depth: 2.51 - 3.5m [0.4]; MH ; depth: 3.51 - 4.5m → MH ; depth: 0.0m - 1.5m [2.6]; MH ; depth: 1.51m - 2.5m [6.2]; MH ; depth: 2.51 - 3.5m [0.5]; MH ; depth: 0.0m - 1.5m [1]; MH ; depth: 1.51m - 2.5m [6.4]; MH ; depth: 1.51m - 2.5m with back drop less than 1.0 m [0.1]; MH ; depth: 2.51 - 3.5m [0.8]; MH ; depth: 2.51 - 3.5m with back drop less than 1.0 m [0.1]; MH ; depth: 1.51m - 2.5m [2.7]; MH ; depth: 2.51 - 3.5m [3]; MH ; depth: 2.51 - 3.5m [0.4]; MH ; depth: 3.51 - 4.5m [0.5] |
| ENG-MT-SD-TF-A-110 | Material Approval for Catch Basin Covers of Storm Drainage Network | 2025-01-30 A | 2025-02-10 → 2025-02-20 A (+10d) |  | 0% → 100% | 0d → none | resources Engineering [86.27 h]; Single Catch basin; Double Catch basin → Single Catch basin [29]; Double Catch basin [12.5] |
| ENG-MT-SD-TF-A-120 | Material Approval for Epoxy Insulation of Storm Drainage Network | 2025-01-30 A | 2025-02-10 → 2025-02-20 A (+10d) |  | 0% → 100% | 0d → none | resources Engineering [86.27 h]; MH ; depth: 0.0m - 1.5m; MH ; depth: 1.51m - 2.5m; MH ; depth: 2.51 - 3.5m; MH ; depth: 1.51m - 2.5m with back drop less than 1.0 m [0.1]; MH ; depth: 2.51 - 3.5m with back drop less than 1.0 m [0.1]; MH ; depth: 2.51 - 3.5m [0.4]; MH ; depth: 3.51 - 4.5m; Single Catch basin; Double Catch basin → MH ; depth: 0.0m - 1.5m [2.6]; MH ; depth: 1.51m - 2.5m [6.2]; MH ; depth: 2.51 - 3.5m [0.5]; MH ; depth: 0.0m - 1.5m [1]; MH ; depth: 1.51m - 2.5m [6.4]; MH ; depth: 1.51m - 2.5m with back drop less than 1.0 m [0.1]; MH ; depth: 2.51 - 3.5m [0.8]; MH ; depth: 2.51 - 3.5m with back drop less than 1.0 m [0.1]; MH ; depth: 1.51m - 2.5m [2.7]; MH ; depth: 2.51 - 3.5m [3]; MH ; depth: 2.51 - 3.5m [0.4]; MH ; depth: 3.51 - 4.5m [0.5]; Single Catch basin [29]; Double Catch basin [12.5] |
| 3 | **Potable Water Network** |  | 2025-02-10 → 2025-05-14 (+93d) |  |  |  |  |
| MS | **Submission of Material** |  | 2025-01-29 → 2025-05-13 (+104d) |  |  |  |  |
| 1 | **Main Line Sections** |  | 2025-01-29 → 2025-05-13 (+104d) |  |  |  |  |
| ENG-MT-PW-ML-S-100 | Material Submittal for Main Line Pipes of Potable Water Network | 2025-01-22 A | 2025-01-29 A |  | 0% → 100% | 0d → none | resources Engineering [86.27 h] → none |
| ENG-MT-PW-ML-S-110 | Material Submittal for Main Line Valves of Potable Water Network | 2025-01-22 A | 2025-01-29 → 2025-05-13 A (+104d) |  | 0% → 100% | 0d → none | resources Engineering [86.27 h] → none |
| 3 | **Fire Hydrant** |  | 2025-01-29 → 2025-02-15 (+17d) |  |  |  |  |
| ENG-MT-PW-FH-S-100 | Material Submittal for Fire Hydrant of Potable Water Network | 2025-01-22 A | 2025-01-29 → 2025-02-15 A (+17d) |  | 0% → 100% | 0d → none | resources Engineering [86.27 h] → none |
| 4 | **Testing and Finishes** |  | 2025-01-29 → 2025-02-10 (+12d) |  |  |  |  |
| ENG-MT-PW-TF-S-100 | Material Submittal for Surface Box of Potable Water Network | 2025-01-22 A | 2025-01-29 → 2025-02-10 A (+12d) |  | 0% → 100% | 9.37d → none | resources Engineering [86.27 h] → none |
| MA | **Approval of Material** |  | 2025-02-10 → 2025-05-14 (+93d) |  |  |  |  |
| 1 | **Main Line Sections** |  | 2025-02-10 → 2025-05-14 (+93d) |  |  |  |  |
| ENG-MT-PW-ML-A-100 | Material Approval for Main Line Pipes of Potable Water Network | 2025-01-30 A | 2025-02-10 A |  | 0% → 100% | 0d → none | resources Engineering [86.27 h]; Pipe with diameter 160 mm; in depth 1.5m - 3.0m; Pipe with diameter 200mm; in depth 0.0m - 1.5m; Pipe with diameter 200mm; in depth 1.5m - 3.0m; Pipe with diameter 355mm; in depth 0.0m - 1.5m; Pipe with diameter 355mm; in depth 1.5m - 3.0m; Pipe with diameter 560mm; in depth 1.5m - 3.0m; Pipe with diameter 630mm; in depth 1.5m - 3.0m → Pipe with diameter 160 mm; in depth 1.5m - 3.0m [50]; Pipe with diameter 200mm; in depth 0.0m - 1.5m [8552]; Pipe with diameter 200mm; in depth 1.5m - 3.0m [100]; Pipe with diameter 355mm; in depth 0.0m - 1.5m [1400]; Pipe with diameter 355mm; in depth 1.5m - 3.0m [100]; Pipe with diameter 560mm; in depth 1.5m - 3.0m [1200]; Pipe with diameter 630mm; in depth 1.5m - 3.0m [2090] |
| ENG-MT-PW-ML-A-110 | Material Approval for Valves of Potable Water Network | 2025-01-30 A | 2025-02-10 → 2025-05-14 A (+93d) |  | 0% → 100% | 0d → none | resources Engineering [86.27 h]; Butterfly valves with dia (355)mm on pipes with dia (355)mm.; Butterfly valves with dia (560)mm on pipes with dia (560)mm.; Butterfly valves with dia (630)mm on pipes with dia (630)mm.; Wash out valve with dia (100)mm on pipes with dia (200) mm; Wash out valve with dia (150)mm on pipes with dia (560) mm; Wash out valve with dia (150)mm on pipes with dia (630) mm; Air valves with dia (50mm) mm on pipes with dia(200)mm.; Air valves with dia (65mm) mm on pipes with dia(355)mm.; Air valves with dia (65mm) mm on pipes with dia(560)mm.; Air valves with dia (65mm) mm on pipes with dia(630)mm. → Butterfly valves with dia (355)mm on pipes with dia (355)mm. [18]; Butterfly valves with dia (560)mm on pipes with dia (560)mm. [2]; Butterfly valves with dia (630)mm on pipes with dia (630)mm. [5]; Wash out valve with dia (100)mm on pipes with dia (200) mm [2]; Wash out valve with dia (150)mm on pipes with dia (560) mm [1]; Wash out valve with dia (150)mm on pipes with dia (630) mm [3]; Air valves with dia (50mm) mm on pipes with dia(200)mm. [3]; Air valves with dia (65mm) mm on pipes with dia(355)mm. [1]; Air valves with dia (65mm) mm on pipes with dia(560)mm. [2]; Air valves with dia (65mm) mm on pipes with dia(630)mm. [4] |
| 3 | **Fire Hydrant** | 2025-01-30 → 2025-02-16 (+17d) | 2025-02-10 → 2025-03-14 (+32d) |  |  |  |  |
| ENG-MT-PW-FH-A-100 | Material Approval for Fire Hydrants of Potable Water Network | 2025-01-30 → 2025-02-16 A (+17d) | 2025-02-10 → 2025-03-14 A (+32d) |  | 0% → 100% | 0d → none | resources Engineering [86.27 h]; 3-outlet fire hydrant (2 x 2.5 inch and 1 x 4 inch) in the form of a separate dry vacuum cylinder → 3-outlet fire hydrant (2 x 2.5 inch and 1 x 4 inch) in the form of a separate dry vacuum cylinder [55] |
| 4 | **Testing and Finishes** | 2025-01-30 → 2025-02-11 (+12d) | 2025-01-30 → 2025-03-14 (+43d) |  |  |  |  |
| ENG-MT-PW-TF-A-100 | Material Approval for Surface Box of Potable Water Network | 2025-01-30 → 2025-02-11 A (+12d) | 2025-01-30 → 2025-03-14 A (+43d) | 0.63d → 0d | 0% → 100% | 9.37d → none | resources Engineering [86.27 h]; Gate valves dia(200)mm on pipes with dia (200) mm. → Gate valves dia(200)mm on pipes with dia (200) mm. [75] |
| 4 | **Irrigation Network** |  | 2025-02-10 → 2025-05-14 (+93d) |  |  |  |  |
| ENG-MT-IR-ML-S-100 | Material Submittal for Main Line Pipes of Irrigation Network | 2025-01-22 A | 2025-01-29 A |  | 0% → 100% | 0d → none | resources Engineering [86.27 h] → none |
| ENG-MT-IR-ML-S-110 | Material Submittal for Main Line Valves of Irrigation Network | 2025-01-22 A | 2025-01-29 A |  | 0% → 100% | 0d → none | resources Engineering [86.27 h] → none |
| MA | **Approval of Material** |  | 2025-02-10 → 2025-05-14 (+93d) |  |  |  |  |
| 1 | **Main Line Pipes** |  | 2025-02-10 → 2025-05-14 (+93d) |  |  |  |  |
| ENG-MT-IR-ML-A-100 | Material Approval for Main Line Pipes of Irrigation Network | 2025-01-30 A | 2025-02-10 A |  | 0% → 100% | 0d → none | resources Engineering [86.27 h]; 125 mm pipe; depth 0.0m - 1.5m; 280 mm pipe; depth 0.0m - 1.5m; 280 mm pipe; depth 1.5m - 3.0m; 355 mm pipe; depth 1.5m - 3.0m; 400 mm pipe; depth 1.5m - 3.0m; 500. mm pipe; depth 1.5m - 3.0m → 125 mm pipe; depth 0.0m - 1.5m [10450]; 280 mm pipe; depth 0.0m - 1.5m [475]; 280 mm pipe; depth 1.5m - 3.0m [50]; 355 mm pipe; depth 1.5m - 3.0m [1000]; 400 mm pipe; depth 1.5m - 3.0m [1000]; 500. mm pipe; depth 1.5m - 3.0m [2800] |
| ENG-MT-IR-ML-A-110 | Material Approval for Valves of Irrigation Network | 2025-01-30 A | 2025-02-10 → 2025-05-14 A (+93d) |  | 0% → 100% | 0d → none | resources Engineering [86.27 h]; Gate valves dia (90)mm on pipes with dia (125) mm.; Gate valves dia (200)mm on pipes with dia (280) mm.; Butterfly valves with dia (355)mm on pipes with dia (355)mm.; Butterfly valves with dia (400)mm on pipes with dia (400)mm.; Butterfly valves with dia (500)mm on pipes with dia (500)mm.; Wash out valve with dia (100)mm on pipes with dia (125) mm; Wash out valve with dia (100)mm on pipes with dia (355) mm; Wash out valve with dia (150)mm on pipes with dia (400) mm; Wash out valve with dia (150)mm on pipes with dia (500) mm; Air valves with dia (50mm) mm on pipes with dia(125)mm.; Air valves with dia (65mm) mm on pipes with dia(280)mm.; Air valves with dia (65mm) mm on pipes with dia(400)mm.; Air valves with dia (65mm) mm on pipes with dia(500)mm. → Gate valves dia (90)mm on pipes with dia (125) mm. [82]; Gate valves dia (200)mm on pipes with dia (280) mm. [8]; Butterfly valves with dia (355)mm on pipes with dia (355)mm. [2]; Butterfly valves with dia (400)mm on pipes with dia (400)mm. [2]; Butterfly valves with dia (500)mm on pipes with dia (500)mm. [6]; Wash out valve with dia (100)mm on pipes with dia (125) mm [3]; Wash out valve with dia (100)mm on pipes with dia (355) mm [1]; Wash out valve with dia (150)mm on pipes with dia (400) mm [2]; Wash out valve with dia (150)mm on pipes with dia (500) mm [5]; Air valves with dia (50mm) mm on pipes with dia(125)mm. [4]; Air valves with dia (65mm) mm on pipes with dia(280)mm. [1]; Air valves with dia (65mm) mm on pipes with dia(400)mm. [1]; Air valves with dia (65mm) mm on pipes with dia(500)mm. [6] |
| 5 | **Medium Voltage Network** |  | 2025-02-10 → 2025-05-13 (+92d) |  |  |  |  |
| ENG-MT-MV-ML-S-100 | Material Submittal for Medium Voltage Cables of Medium Voltage Network | 2025-01-22 A | 2025-01-29 A |  | 0% → 100% | 0d → none | resources Engineering [86.27 h] → none |
| ENG-MT-MV-SS-S-100 | Material Submittal for RMU Concrete Foundations of Medium Voltage Network | 2025-01-22 A | 2025-01-29 A |  | 0% → 100% | 0d → none | resources Engineering [86.27 h] → none |
| ENG-MT-MV-TF-S-100 | Material Submittal for Termination Kits of Medium Voltage Network | 2025-01-22 A | 2025-01-29 A |  | 0% → 100% | 0d → none | resources Engineering [86.27 h] → none |
| MA | **Approval of Material** |  | 2025-02-10 → 2025-05-13 (+92d) |  |  |  |  |
| 1 | **Cabling Works** |  | 2025-02-10 → 2025-05-13 (+92d) |  |  |  |  |
| ENG-MT-MV-ML-A-100 | Material Approval for Medium Voltage Cables of Medium Voltage Network | 2025-01-30 A | 2025-02-10 → 2025-05-13 A (+92d) |  | 0% → 100% | 0d → none | resources Engineering [86.27 h]; Excavation for Trench size 40cm wide and 80cm deep ( Maximum 1 cable 33kv); Excavation for Trench size 60cm wide and 80cm deep ( for Max two cables 33 kv); Excavation for Trench size 90cm wide and 80cm deep ( Maximum 3 cable 33kv); Excavation for Trench size 120cm wide and 80cm deep ( Maximum 4cable 33kv); Excavation for Trench size 150cm wide and 80cm deep ( Maximum 4cable 33kv); Duct bank for (2) 33 kv cables; Duct bank for (4) 33 kv cables; Duct bank for (6) 33 kv cables; 33kv 3Cx400 mmï¿½ Al XLPE / LLDPE /PVC Cable; 33kv 3Cx400 mmï¿½ Al XLPE /LLDPE/PVC → Excavation for Trench size 40cm wide and 80cm deep ( Maximum 1 cable 33kv) [2610]; Excavation for Trench size 60cm wide and 80cm deep ( for Max two cables 33 kv) [148.5]; Excavation for Trench size 90cm wide and 80cm deep ( Maximum 3 cable 33kv) [661.5]; Excavation for Trench size 120cm wide and 80cm deep ( Maximum 4cable 33kv) [225]; Excavation for Trench size 150cm wide and 80cm deep ( Maximum 4cable 33kv) [832.5]; Duct bank for (2) 33 kv cables [90]; Duct bank for (4) 33 kv cables [594]; Duct bank for (6) 33 kv cables [270]; 33kv 3Cx400 mm² Al XLPE / LLDPE /PVC Cable [25771.5]; 33kv 3Cx400 mm² Al XLPE /LLDPE/PVC [60] |
| 2 | **RMU Concrete Works** |  | 2025-02-10 → 2025-02-20 (+10d) |  |  |  |  |
| ENG-MT-MV-SS-A-100 | Material Approval for RMU Concrete Foundations of Medium Voltage Network | 2025-01-30 A | 2025-02-10 → 2025-02-20 A (+10d) |  | 0% → 100% | 0d → none | resources Engineering [86.27 h]; 33kv 3Cx400 mmï¿½ Al XLPE/LLDPE Cable Termination → 33kv 3Cx400 mm² Al XLPE/LLDPE Cable Termination [20] |
| ENG-MT-MV-TF-A-100 | Material Approval for Termination and Joints Kits of Medium Voltage Network | 2025-01-30 A | 2025-02-10 A |  | 0% → 100% | 0d → none | resources Engineering [86.27 h]; Excavation for Trench size 40cm wide and 80cm deep ( Maximum 1 cable 33kv); Excavation for Trench size 60cm wide and 80cm deep ( for Max two cables 33 kv); Excavation for Trench size 90cm wide and 80cm deep ( Maximum 3 cable 33kv); Excavation for Trench size 120cm wide and 80cm deep ( Maximum 4cable 33kv); Excavation for Trench size 150cm wide and 80cm deep ( Maximum 4cable 33kv); Duct bank for (2) 33 kv cables; Duct bank for (4) 33 kv cables; Duct bank for (6) 33 kv cables → Excavation for Trench size 40cm wide and 80cm deep ( Maximum 1 cable 33kv) [290]; Excavation for Trench size 60cm wide and 80cm deep ( for Max two cables 33 kv) [16.5]; Excavation for Trench size 90cm wide and 80cm deep ( Maximum 3 cable 33kv) [73.5]; Excavation for Trench size 120cm wide and 80cm deep ( Maximum 4cable 33kv) [25]; Excavation for Trench size 150cm wide and 80cm deep ( Maximum 4cable 33kv) [92.5]; Duct bank for (2) 33 kv cables [10]; Duct bank for (4) 33 kv cables [66]; Duct bank for (6) 33 kv cables [30] |
| 7 | **Street Lighting Network** |  | 2025-02-10 → 2025-05-24 (+103d) |  |  |  |  |
| ENG-MT-SL-ML-S-100 | Material Submittal for Lighting Cables of Street Lighting Network | 2025-01-22 A | 2025-01-29 A |  | 0% → 100% | 0d → none | resources Engineering [86.27 h] → none |
| ENG-MT-SL-S-100 | Material Submittal for Lighting Poles Concrete Foundations of Street Lighting Network | 2025-01-22 A | 2025-01-29 A |  | 0% → 100% | 0d → none | resources Engineering [86.27 h] → none |
| ENG-MT-SL-S-110 | Material Submittal for Lighting Poles of Street Lighting Network | 2025-01-22 A | 2025-01-29 A |  | 0% → 100% | 0d → none | resources Engineering [86.27 h] → none |
| ENG-MT-SL-S-120 | Material Submittal for Lighting Fixtures of Street Lighting Network | 2025-01-22 A | 2025-01-29 A |  | 0% → 100% | 0d → none | resources Engineering [86.27 h] → none |
| ENG-MT-SL-DB-S-100 | Material Submittal for Lighting Distrubution Panel Boards of Street Lighting Network | 2025-01-22 A | 2025-01-29 A |  | 0% → 100% | 0d → none | resources Engineering [86.27 h] → none |
| ENG-MT-SL-TF-S-100 | Material Submittal for Fuse Boxes of Street Lighting Network | 2025-01-22 A | 2025-01-29 A |  | 0% → 100% | 0d → none | resources Engineering [86.27 h] → none |
| ENG-MT-SL-TF-S-110 | Material Submittal for Cable Lugs of Street Lighting Network | 2025-01-22 A | 2025-01-29 A |  | 0% → 100% | 0d → none | resources Engineering [86.27 h] → none |
| ENG-MT-SL-ES-S-100 | Material Submittal for Lighting Earthing of Street Lighting Network | 2025-01-22 A | 2025-01-29 A |  | 0% → 100% | 0d → none | resources Engineering [86.27 h] → none |
| MA | **Approval of Material** |  | 2025-02-10 → 2025-05-24 (+103d) |  |  |  |  |
| 1 | **Cabling Works** |  | 2025-02-10 → 2025-05-14 (+93d) |  |  |  |  |
| ENG-MT-SL-ML-A-100 | Material Approval for Lighting Cables of Street Lighting Network | 2025-01-30 A | 2025-02-10 → 2025-05-14 A (+93d) |  | 0% → 100% | 0d → none | resources Engineering [86.27 h]; Supply, installation , test and operation of cables, Copper, (4Cx25mmï¿½,Cu/XLPE/SWA/PVC +1x16mmï¿½ PVC/PVC); Street Lighting Feeder pillars , Includes foundation and draw pits → Supply, installation , test and operation of cables, Copper, (4Cx25mm²,Cu/XLPE/SWA/PVC +1x16mm² PVC/PVC) [21000]; Street Lighting Feeder pillars , Includes foundation and draw pits [6] |
| 2 | **Lighting Poles Works** |  | 2025-02-10 → 2025-05-24 (+103d) |  |  |  |  |
| ENG-MT-SL-A-100 | Material Approval for Lighting Poles Concrete Foundations of Street Lighting Network | 2025-01-30 A | 2025-02-10 → 2025-05-21 A (+100d) |  | 0% → 100% | 0d → none | resources Engineering [86.27 h]; Reinforced concrete foundation, for 12m high lighting columns With Drawpits; Reinforced concrete base With fence for Distribution substation in accordance with SEC Specifications → Reinforced concrete foundation, for 12m high lighting columns With Drawpits [359]; Reinforced concrete base With fence for Distribution substation in accordance with SEC Specifications [6] |
| ENG-MT-SL-A-110 | Material Approval for Lighting Poles of Street Lighting Network | 2025-01-30 → 2025-05-13 A (+103d) | 2025-02-10 → 2025-05-24 A (+103d) |  | 0% → 100% | 0d → none | resources Engineering [86.27 h]; Lighting poles with one arm, including the power distribution box, screws, cables, 12 meters in height.; Lighting poles complete with two arms, including the power distribution box, screws, cables, 12 meters in height. → Lighting poles with one arm, including the power distribution box, screws, cables, 12 meters in height. [355]; Lighting poles complete with two arms, including the power distribution box, screws, cables, 12 meters in height. [4] |
| ENG-MT-SL-A-120 | Material Approval for Lighting Fixtures of Street Lighting Network | 2025-01-30 → 2025-05-13 A (+103d) | 2025-02-10 → 2025-05-24 A (+103d) |  | 0% → 100% | 0d → none | resources Engineering [86.27 h]; Street Lighting( LED) Luminaire,(Type C) complete with control gear and lamp, ?.17000 Lumen; Street Lighting( LED) Luminaire,(Type B) complete with control gear and lamp, ?.40600 Lumen → Street Lighting( LED) Luminaire,(Type C) complete with control gear and lamp, ?.17000 Lumen [355]; Street Lighting( LED) Luminaire,(Type B) complete with control gear and lamp, ?.40600 Lumen [8] |
| ENG-MT-SL-DB-A-100 | Material Approval for Distrubution Panel Boards of Street Lighting Network | 2025-01-30 A | 2025-02-10 A |  | 0% → 100% | 0d → none | resources Engineering [86.27 h]; Package Substation 33000/400V, 500kVA with RMU → Package Substation 33000/400V, 500kVA with RMU [6] |
| ENG-MT-SL-ES-A-100 | Material Approval for Lighting Earthing of Street Lighting Network | 2025-01-30 A | 2025-02-10 A |  | 0% → 100% | 0d → none | resources Engineering [86.27 h]; Earthing installation, lighting plants.; Earthing installation, for Street lighting circuits, including earth rod in plastic chamber; Earthing installation Lighting Panales → Earthing installation, lighting plants. [6]; Earthing installation, for Street lighting circuits, including earth rod in plastic chamber [50]; Earthing installation Lighting Panales [6] |
| ENG-MT-SL-TF-A-100 | Material Approval for Fuse Boxes of Street Lighting Network | 2025-01-30 A | 2025-02-10 A |  | 0% → 100% | 0d → none | resources Engineering [86.27 h]; Road crossing ducts, 4 way (4 x 100mm PVC) → Road crossing ducts, 4 way (4 x 100mm PVC) [780] |
| ENG-MT-SL-TF-A-110 | Material Approval for Cable Lugs of Street Lighting Network | 2025-01-30 A | 2025-02-10 A |  | 0% → 100% | 0d → none | resources Engineering [86.27 h]; Drawpit with medium duty steel cover, size 600x600x1000mm, Type 18; Drawpit with medium duty steel cover, size 900x900x1200mm, Type 4 → Drawpit with medium duty steel cover, size 600x600x1000mm, Type 18 [6]; Drawpit with medium duty steel cover, size 900x900x1200mm, Type 4 [64] |
| 8 | **Telecom Network** |  | 2025-02-10 → 2025-05-14 (+93d) |  |  |  |  |
| ENG-MT-TE-S-100 | Material Submittal for Ducts of Telecom Network | 2025-01-22 A | 2025-01-29 A |  | 0% → 100% | 0d → none | resources Engineering [86.27 h] → none |
| ENG-MT-TE-S-110 | Material Submittal for Manholes of Telecom Network | 2025-01-22 A | 2025-01-29 A |  | 0% → 100% | 0d → none | resources Engineering [86.27 h] → none |

| ID | Task | Start | Finish | Duration | Complete | Total float | Other |
| --- | --- | --- | --- | --- | --- | --- | --- |
| MA | **Approval of Material** |  | 2025-02-10 → 2025-05-14 (+93d) |  |  |  |  |
| ENG-MT-TE-A-100 | Material Approval for Ducts of Telecom Network | 2025-01-30 A | 2025-02-10 A |  | 0% → 100% | 0d → none | resources Engineering [86.27 h]; 6-way ducts, 50mm dia. HDPE; Road crossing ducts (6-way) → 6-way ducts, 50mm dia. HDPE [8342.95]; Road crossing ducts (6-way) [550] |
| 3 | **Manholes Works** |  | 2025-02-10 → 2025-05-14 (+93d) |  |  |  |  |
| ENG-MT-TE-A-110 | Material Approval for Manholes of Telecom Network | 2025-01-30 A | 2025-02-10 → 2025-05-14 A (+93d) |  | 0% → 100% | 0d → none | resources Engineering [86.27 h]; Manhole Type 1 (2000x1000x1000); Manhole Type 2 (2000x1000x1000); Manhole Type 3 (2000x1000x1000) → Manhole Type 1 (2000x1000x1000) [25]; Manhole Type 2 (2000x1000x1000) [52]; Manhole Type 3 (2000x1000x1000) [4] |
| 1 | **Superstructure Works** |  | 2025-02-10 → 2025-05-11 (+90d) |  |  |  |  |
| SL | **Sewage Pump Stations ( PS 06 )** |  | 2025-02-10 → 2025-05-11 (+90d) |  |  |  |  |
| 1 | **Submission of Material** |  | 2025-01-29 → 2025-05-11 (+102d) |  |  |  |  |
| ENG-MT-SPS-CV-S-100 | Material Submittal for Civil Works for Sewage Pump Stations | 2025-01-22 A | 2025-01-29 → 2025-05-11 A (+102d) |  | 0% → 100% | 0d → none | resources Engineering [86.27 h] → none |
| 2 | **Approval of Material** |  | 2025-02-10 → 2025-05-11 (+90d) |  |  |  |  |
| ENG-MT-SPS-CV-A-110 | Material Approval for Civil Works for Sewage Pump Stations | 2025-01-30 A | 2025-02-10 → 2025-05-11 A (+90d) |  | 0% → 100% | 0d → none | resources Engineering [86.27 h]; Wet well structure internal size (5.5*4.0m) at 11.0m depth; Valve chamber; for the pump station; basket screen; CMU walls with thickness 200mm; Waterproofing for foundation; Roof Insulation; Acrylic paint on elevations including plastering; Acrylic paint on internal wallsand ceiling including plastering; Epoxy paint on floors; Supply and install 2000*3000 mm double leaf manufacturer label shall pass the test requirements complete with accessories as per door schedule and material as approved by the Client. → Wet well structure internal size (5.5*4.0m) at 11.0m depth [1]; Valve chamber [1]; for the pump station [1]; basket screen [1]; CMU walls with thickness 200mm [150]; Waterproofing for foundation [60]; Roof Insulation [45]; Acrylic paint on elevations including plastering [150]; Acrylic paint on internal wallsand ceiling including plastering [190]; Epoxy paint on floors [40]; Supply and install 2000*3000 mm double leaf manufacturer label shall pass the test requirements complete with accessories as per door schedule and material as approved by the Client. [1] |
| TE | **Storm Drainage Ponds ( PO-J1 , PO-J2 )** |  | 2025-02-10 → 2025-03-18 (+36d) |  |  |  |  |
| ENG-MT-DPO-CV-S-100 | Material Submittal for Civil Works for Storm Drainage Ponds | 2025-01-22 A | 2025-01-29 A |  | 0% → 100% | 0d → none | resources Engineering [86.27 h] → none |
| 2 | **Approval of Material** |  | 2025-02-10 → 2025-03-18 (+36d) |  |  |  |  |
| ENG-MT-DPO-CV-A-110 | Material Approval for Civil Works for Storm Drainage Ponds | 2025-01-30 A | 2025-02-10 → 2025-03-18 A (+36d) |  | 0% → 100% | 0d → none | resources Engineering [86.27 h]; Excavation in all type of soil for any depth including levelling, compaction and disposal of surplus material; Reinforced Concrete lining including blinding concrete, construction, isolation layers and expansion joints as shown in drawings.; Excavation in all type of soil to increase the depth of the existing pond for any depth including levelling, compaction and disposal of surplus material → Excavation in all type of soil for any depth including levelling, compaction and disposal of surplus material [49955]; Reinforced Concrete lining including blinding concrete, construction, isolation layers and expansion joints as shown in drawings. [40]; Excavation in all type of soil to increase the depth of the existing pond for any depth including levelling, compaction and disposal of surplus material [20425]; Reinforced Concrete lining including blinding concrete, construction, isolation layers and expansion joints as shown in drawings. [18] |
| 1 | **Long Lead Time Items** | 2025-01-22 → 2025-02-01 (+10d) | 2025-02-10 → 2025-06-02 (+112d) |  |  |  |  |
| 1 | **Infrastructure Networks** | 2025-01-22 → 2025-02-01 (+10d) | 2025-02-01 → 2025-05-23 (+111d) |  |  |  |  |
| 1 | **RMU Works of Medium Voltage Network** | 2025-01-22 → 2025-02-01 (+10d) | 2025-02-01 → 2025-05-23 (+111d) |  |  |  |  |
| MS | **Submission of Material** | 2025-01-22 → 2025-02-01 (+10d) | 2025-01-29 → 2025-02-12 (+14d) |  |  |  |  |
| ENG-MT-MV-S-10 | Material Submittal for RMU of Medium Voltage Network | 2025-01-22 → 2025-02-01 A (+10d) | 2025-01-29 → 2025-02-12 A (+14d) |  | 0% → 100% | 8d → none | resources Engineering [86.27 h] → none |
| MA | **Approval of Material** | 2025-01-30 → 2025-05-01 (+91d) | 2025-02-01 → 2025-05-23 (+111d) |  |  |  |  |
| ENG-MT-MV-A-10 | Material Approval for RMU of Medium Voltage Network | 2025-01-30 → 2025-05-01 A (+91d) | 2025-02-01 → 2025-05-23 A (+111d) | 2d → 0d | 0% → 100% | 8d → none | resources Engineering [86.27 h]; Supply & installation of (33) kv MV Switch (RMU) for Normally-open Points (NOP) according to the Saudi Electric Company specification → Supply & installation of (33) kv MV Switch (RMU) for Normally-open Points (NOP) according to the Saudi Electric Company specification [3] |
| 2 | **Superstructure Works** | 2025-01-22 → 2025-05-11 (+109d) | 2025-02-10 → 2025-06-02 (+112d) |  |  |  |  |
| SL | **Sewage Pump Stations ( PS 06 )** | 2025-01-22 → 2025-05-11 (+109d) | 2025-02-10 → 2025-06-02 (+112d) |  |  |  |  |
| 1 | **Submission of Material** | 2025-01-22 → 2025-05-11 (+109d) | 2025-01-29 → 2025-05-19 (+110d) |  |  |  |  |
| ENG-MT-SPS-MC-S-100 | Material Submittal for Electromechanical Works for Sewage Pump Stations | 2025-01-22 → 2025-05-11 A (+109d) | 2025-01-29 → 2025-05-19 A (+110d) |  | 0% → 100% | 0d → none | resources Engineering [86.27 h] → none |
| 2 | **Approval of Material** | 2025-01-30 → 2025-05-20 (+110d) | 2025-02-10 → 2025-06-02 (+112d) |  |  |  |  |
| ENG-MT-SPS-MC-A-110 | Material Approval for Electromechanical Works for Sewage Pump Stations | 2025-01-30 → 2025-05-20 A (+110d) | 2025-02-10 → 2025-06-02 A (+112d) |  | 0% → 100% | 0d → none | resources Engineering [86.27 h]; Constant speed drive, sewage pumps, centrifugal submersible type; 2 duty / 1 standby capable of delivering a flow rate of flow 424 l/s against a total head of 22m, rate includes provision of MCC; Odour control system; Gate valves for the pump station; Non return valves for the pump station; Penstok for the pump station; Standby Diesel Generator Set 400/230KVA, 3P, 60Hz in Sound Attenuated Enclosure KVA rating by contractor as per total load onsite after pumps selection; Supply, install, test and commission of manually operated fuel pump, The pump should be supplied with all accessories as specified.; Supply, install, test and commission of Fuel pump with capacity of not less than 1 hour to fill the daily tank of generator at required head.; supply, install, test & commission Automatic Transfer Switch ATS panel including all accessories & works required.; Supply, install, test and commission under ground fuel tank for 3 days of continuous operation of the standby generator at full load. The tank should be supplied with all accessories such as black steel pipes, float switches with two contactors ï¿½etc. as; 4Cx 185mm2 Cu/XLPE//PVC from nearest power supply (SEC) and generator to the ATS and from ATS to MCC-SPS; 4Cx 95mm2 Cu/XLPE//PVC from nearest power supply (SEC) and generator to the ATS and from ATS to MCC-SPS; 4Cx 10mm2 Cu/XLPE/SWA/PVC from MCC-SPS to ELP; 4Cx 150mm2 + 1Cx25mm2 SUBMERGED RUBBER INSULATED FLEXIBLE CABLE from MCC to PUMP1& PUMP2.; 4Cx 10mm2 + 1Cx10mm2 Cu/XLPE/PVC FROM MCC-SPS to DB-SPS; 4Cx 10mm2 + 1Cx10mm2 Cu/XLPE/PVC FROM MCC-SPS to Penstok; 4Cx 10mm2 + 1Cx10mm2 Cu/XLPE/PVC FROM MCC-SPS to Odor Control Unit; 4Cx 6mm2 + 1Cx6mm2 Cu/XLPE/PVC FROM MCC-SPS to the mechanical bar screen; 3Cx 6mm2 Cu/XLPE/PVC FROM MCC-SPS to the two fuel pumps.; 3Cx 4mm2 Cu/XLPE/PVC to the AC.; MCC; Surge protection system study; Surge protection system; Local Control Panel, IP 65; Isolator/disconnect switches IP65; DB-SPS Panel; ELP Panel: phtocell , timer,40 Ampere, 3P, IP66,60Hz incomer MCCB & 5ways outgoing MCCB; Electrical Hand Hole 600mm x 600mm x 800mm concrete hand hole with hot dip galvanized heavy duty steel cover; Electrical Hand Hole 400mm x 400mm x 600mm concrete hand hole with hot dip galvanized heavy duty steel cover; Surfaced Mounted Light; 13A DOUBLE SWITCH SOCKET OUTLET (WEATHER PROOF); 20A SWITCH SOCKET OUTLET (FOR SPLIT UNIT), (WEATHER PROOF); Supply, install and test the following grounding and lightning system including ground wires, ground rods, inspection pits, terminations, bonding/clamping, civil works and all materials and accessories required to complete the work according to specificat; Supply and install telephone and fire alarm system including smoke detector, cabinet, control panel, cables, conduits, switches, and other accessories to complete as per drawings and specifications.; "Supply, installation, testing and commissioning of PLC system, serving the pumping station and all related utilities. The PLC shall consists but limited to the following:; Supply, installation, testing and commissioning of all control, instrumentation( as shown on the P & ID drawings cable schedule) including all installation accessories such as termination kits, lugs, glands, cable containments, junction boxes , conduits,; Supply, installation, testing and commissioning of all field instruments such as hydrostatic level meter, level switches, flow switch, and all necessary instruments including all installation accessories, etc. all as per specifications and design drawings; DX wall mounted Split/AC; CO2 fire extinguishers; Powder fire extinguishers; Flood lights shall be high pole with 250 watt HPS luminaire; 1 - way duct - not exceeding 1.5m deep; 2 - way duct - not exceeding 1.5m deep; 8 - way duct - not exceeding 1.5m deep; Earth pits; Cable draw pit, 600x600mm → Constant speed drive, sewage pumps, centrifugal submersible type; 2 duty / 1 standby capable of delivering a flow rate of flow 424 l/s against a total head of 22m, rate includes provision of MCC [1]; Odour control system [1]; Gate valves for the pump station [3]; Non return valves for the pump station [3]; Penstok for the pump station [1]; Standby Diesel Generator Set 400/230KVA, 3P, 60Hz in Sound Attenuated Enclosure KVA rating by contractor as per total load onsite after pumps selection [1]; Supply, install, test and commission of manually operated fuel pump, The pump should be supplied with all accessories as specified. [1]; Supply, install, test and commission of Fuel pump with capacity of not less than 1 hour to fill the daily tank of generator at required head. [1]; supply, install, test & commission Automatic Transfer Switch ATS panel including all accessories & works required. [1]; Supply, install, test and commission under ground fuel tank for 3 days of continuous operation of the standby generator at full load. The tank should be supplied with all accessories such as black steel pipes, float switches with two contactors …etc. as s [1]; 4Cx 185mm2 Cu/XLPE//PVC from nearest power supply (SEC) and generator to the ATS and from ATS to MCC-SPS [600]; 4Cx 95mm2 Cu/XLPE//PVC from nearest power supply (SEC) and generator to the ATS and from ATS to MCC-SPS [400]; 4Cx 10mm2 Cu/XLPE/SWA/PVC from MCC-SPS to ELP [50]; 4Cx 150mm2 + 1Cx25mm2 SUBMERGED RUBBER INSULATED FLEXIBLE CABLE from MCC to PUMP1& PUMP2. [210]; 4Cx 10mm2 + 1Cx10mm2 Cu/XLPE/PVC FROM MCC-SPS to DB-SPS [50]; 4Cx 10mm2 + 1Cx10mm2 Cu/XLPE/PVC FROM MCC-SPS to Penstok [100]; 4Cx 10mm2 + 1Cx10mm2 Cu/XLPE/PVC FROM MCC-SPS to Odor Control Unit [100]; 4Cx 6mm2 + 1Cx6mm2 Cu/XLPE/PVC FROM MCC-SPS to the mechanical bar screen [80]; 3Cx 6mm2 Cu/XLPE/PVC FROM MCC-SPS to the two fuel pumps. [100]; 3Cx 4mm2 Cu/XLPE/PVC to the AC. [80]; MCC [1]; Surge protection system study [1]; Surge protection system [1]; Local Control Panel, IP 65 [4]; Isolator/disconnect switches IP65 [16]; DB-SPS Panel [4]; ELP Panel: phtocell , timer,40 Ampere, 3P, IP66,60Hz incomer MCCB & 5ways outgoing MCCB [4]; Electrical Hand Hole 600mm x 600mm x 800mm concrete hand hole with hot dip galvanized heavy duty steel cover [10]; Electrical Hand Hole 400mm x 400mm x 600mm concrete hand hole with hot dip galvanized heavy duty steel cover [10]; Surfaced Mounted Light [8]; 13A DOUBLE SWITCH SOCKET OUTLET (WEATHER PROOF) [8]; 20A SWITCH SOCKET OUTLET (FOR SPLIT UNIT), (WEATHER PROOF) [8]; Supply, install and test the following grounding and lightning system including ground wires, ground rods, inspection pits, terminations, bonding/clamping, civil works and all materials and accessories required to complete the work according to specificat [2]; Supply and install telephone and fire alarm system including smoke detector, cabinet, control panel, cables, conduits, switches, and other accessories to complete as per drawings and specifications. [1]; "Supply, installation, testing and commissioning of PLC system, serving the pumping station and all related utilities. The PLC shall consists but limited to the following: [2]; Supply, installation, testing and commissioning of all control, instrumentation( as shown on the P & ID drawings cable schedule) including all installation accessories such as termination kits, lugs, glands, cable containments, junction boxes , conduits, [2]; Supply, installation, testing and commissioning of all field instruments such as hydrostatic level meter, level switches, flow switch, and all necessary instruments including all installation accessories, etc. all as per specifications and design drawings [2]; DX wall mounted Split/AC [2]; CO2 fire extinguishers [2]; Powder fire extinguishers [2]; Flood lights shall be high pole with 250 watt HPS luminaire [4]; 1 - way duct - not exceeding 1.5m deep [1]; 2 - way duct - not exceeding 1.5m deep [1]; 8 - way duct - not exceeding 1.5m deep [1]; Earth pits [1]; Cable draw pit, 600x600mm [1] |
| PROC | **Procurement Cycle** | 2025-02-05 → 2025-02-11 (+6d) | 2026-10-05 → 2027-07-22 (+290d) |  |  |  |  |
| NLL | **Short Lead Time Items** | 2025-02-05 → 2025-02-11 (+6d) | 2026-10-05 → 2027-07-22 (+290d) |  |  |  |  |
| INF | **Infrastructure Networks** | 2025-02-05 → 2025-02-11 (+6d) | 2026-10-05 → 2027-07-22 (+290d) |  |  |  |  |
| RD | **Road Works** |  | 2026-10-05 → 2027-07-22 (+290d) |  |  |  |  |
| PO | **Issuance of Purchase Orders** |  | 2025-03-03 → 2025-06-12 (+101d) |  |  |  |  |
| PRO-RD-PO-100 | Issuance of Purchase Order for Subgrade of Road Works | 2025-02-11 A | 2025-02-25 A |  | 0% → 100% | 29d → none | resources Pro Engineer [312.12 h] → none |
| PRO-RD-PO-110 | Issuance of Purchase Order for Aggregate Base Course of Road Works | 2025-02-11 A | 2025-02-25 A |  | 0% → 100% | 35d → none | resources Pro Engineer [312.12 h] → none |
| PRO-RD-PO-120 | Issuance of Purchase Order for Prime Coat of Road Works | 2025-02-11 A | 2025-02-25 A |  | 0% → 100% | 113d → none | resources Pro Engineer [312.12 h] → none |
| PRO-RD-PO-130 | Issuance of Purchase Order for Bituminous Base & Wearing Courses of Road Works | 2025-02-11 A | 2025-02-25 A |  | 0% → 100% | 139d → none | resources Pro Engineer [312.12 h] → none |
| 2 | **Pavement Works** |  | 2025-03-03 → 2025-03-04 (+1d) |  |  |  |  |
| PRO-RD-PO-140 | Issuance of Purchase Order for Interlock Tiles of Landscaping | 2025-02-17 A | 2025-03-03 → 2025-03-04 A (+1d) |  | 0% → 100% | 56d → none | resources Pro Engineer [312.12 h] → none |
| PRO-RD-PO-150 | Issuance of Purchase Order for Curbstones of Landscaping | 2025-02-17 A | 2025-03-03 → 2025-03-04 A (+1d) |  | 0% → 100% | 82d → none | resources Pro Engineer [312.12 h] → none |
| 3 | **Traffic Signs Boards and Roads Marking** | 2025-02-17 → 2025-06-01 (+104d) | 2025-03-03 → 2025-06-12 (+101d) |  |  |  |  |
| PRO-RD-PO-160 | Issuance of Purchase Order for Traffic Signs Boards of Road Works | 2025-02-17 → 2025-06-01 A (+104d) | 2025-03-03 → 2025-06-12 A (+101d) |  | 0% → 100% | 140d → none | resources Pro Engineer [312.12 h] → none |
| PRO-RD-PO-170 | Issuance of Purchase Order for Road Markings of Road Works | 2025-02-17 → 2025-06-01 A (+104d) | 2025-03-03 → 2025-06-12 A (+101d) |  | 0% → 100% | 166d → none | resources Pro Engineer [312.12 h] → none |
| MF | **Manufacturing of Material** | 2025-02-26 → 2025-04-01 (+34d) | 2025-08-11 → 2025-06-01 (-71d) |  |  |  |  |
| 1 | **Road Works** | 2025-02-26 → 2025-04-01 (+34d) | 2025-07-13 → 2025-06-01 (-42d) |  |  |  |  |
| PRO-RD-MF-100 | Manufacturing of Subgrade for Road Works | 2025-02-26 → 2025-04-01 A (+34d) | 2025-06-19 → 2025-05-29 A (-21d) |  | 0% → 100% | 29d → none | resources Pro Engineer [312.12 h] → none |
| PRO-RD-MF-110 | Manufacturing of Aggregate Base Course for Road Works | 2025-02-26 → 2025-05-11 A (+74d) | 2025-07-13 → 2025-06-01 A (-42d) | 110d → 90d | 0% → 100% | 35d → none | resources Pro Engineer [312.12 h] → none |
| PRO-RD-MF-120 | Manufacturing of Prime Coat for Road Works | 2025-02-26 → 2025-05-12 A (+75d) | 2025-07-13 → 2025-05-22 A (-52d) |  | 0% → 100% | 113d → none | resources Pro Engineer [312.12 h] → none |
| PRO-RD-MF-130 | Manufacturing of Bituminous Base & Wearing Courses for Road Works | 2025-02-26 → 2025-05-28 A (+91d) | 2025-07-13 → 2025-06-01 A (-42d) |  | 0% → 100% | 139d → none | resources Pro Engineer [312.12 h] → none |
| 2 | **Pavement Works** | 2025-03-04 → 2025-05-04 (+61d) | 2025-07-19 → 2025-06-01 (-48d) |  |  |  |  |
| PRO-RD-MF-140 | Manufacturing of Interlock Tiles for Landscaping | 2025-03-04 → 2025-05-04 A (+61d) | 2025-07-19 → 2025-05-26 A (-54d) |  | 0% → 100% | 56d → none | resources Pro Engineer [312.12 h] → none |
| PRO-RD-MF-150 | Manufacturing of Curbstones for Landscaping | 2025-03-04 → 2025-05-20 A (+77d) | 2025-07-19 → 2025-06-01 A (-48d) |  | 0% → 100% | 82d → none | resources Pro Engineer [312.12 h] → none |
| 3 | **Traffic Signs Boards and Roads Marking** | 2025-03-04 → 2025-05-12 (+69d) | 2025-08-11 → 2025-05-29 (-74d) |  |  |  |  |
| PRO-RD-MF-170 | Manufacturing of Road Markings for Road Works | 2025-03-04 → 2025-05-12 A (+69d) | 2025-08-11 → 2025-05-29 A (-74d) |  | 0% → 100% | 166d → none | resources Pro Engineer [312.12 h] → none |
| PRO-RD-MF-160 | Manufacturing of Traffic Signs Boards for Road Works | 2025-03-04 → 2025-05-14 A (+71d) | 2025-08-11 → 2025-05-29 A (-74d) |  | 0% → 100% | 140d → none | resources Pro Engineer [312.12 h] → none |
| 1DL | **1st Material Delivery & Site Inspection** | 2025-06-21 → 2025-05-22 (-30d) | 2025-08-18 → 2026-10-12 (+420d) |  |  |  |  |
| 1 | **Road Works** | 2025-06-21 → 2025-05-22 (-30d) | 2025-07-20 → 2025-07-05 (-15d) |  |  |  |  |
| PRO-RD-1DL-120 | 1ST Material Delivery for Prime Coat of Road Works | 2025-07-14 → 2025-05-22 A (-53d) | 2025-07-20 → 2025-05-30 A (-51d) |  | 0% → 100% | 113d → none | resources Pro Engineer [312.12 h] → none |
| PRO-RD-1DL-100 | 1ST Material Delivery for Subgrade of Road Works | 2025-06-21 → 2025-05-30 A (-22d) | 2025-06-26 → 2025-06-08 A (-18d) |  | 0% → 100% | 29d → none | resources Pro Engineer [312.12 h] → none |
| PRO-RD-1DL-130 | 1ST Material Delivery for Bituminous Base & Wearing Courses of Road Works | 2025-07-14 → 2025-06-01 A (-43d) | 2025-07-20 → 2025-06-15 A (-35d) |  | 0% → 100% | 139d → none | resources Pro Engineer [312.12 h] → none |
| PRO-RD-1DL-110 | 1ST Material Delivery for Aggregate Base Course of Road Works | 2025-07-14 → 2025-06-02 A (-42d) | 2025-07-20 → 2025-07-05 A (-15d) |  | 0% → 100% | 35d → none | resources Pro Engineer [312.12 h] → none |
| 2 | **Pavement Works** | 2025-07-20 → 2026-10-06 (+443d) | 2025-07-26 → 2026-10-12 (+443d) |  |  |  |  |
| PRO-RD-1DL-140 | 1ST Material Delivery for Interlock Tiles of Landscaping | 2025-07-20 → 2026-10-06 (+443d) | 2025-07-26 → 2026-10-12 (+443d) |  |  | 56d → -211d | resources Pro Engineer [312.12 h] → none |
| PRO-RD-1DL-150 | 1ST Material Delivery for Curbstones of Landscaping | 2025-07-20 → 2026-10-06 (+443d) | 2025-07-26 → 2026-10-12 (+443d) |  |  | 82d → -211d | resources Pro Engineer [312.12 h] → none |
| 3 | **Traffic Signs Boards and Roads Marking** | 2025-08-12 → 2026-10-06 (+420d) | 2025-08-18 → 2026-10-12 (+420d) |  |  |  |  |
| PRO-RD-1DL-160 | 1ST Material Delivery for Traffic Signs Boards of Road Works | 2025-08-12 → 2026-10-06 (+420d) | 2025-08-18 → 2026-10-12 (+420d) |  |  | 140d → -211d | resources Pro Engineer [44.04 h] → none |
| PRO-RD-1DL-170 | 1ST Material Delivery for Road Markings of Road Works | 2025-08-12 → 2026-10-06 (+420d) | 2025-08-18 → 2026-10-12 (+420d) |  |  | 166d → -185d | resources Pro Engineer [44.04 h] → none |
| DL | **Material Delivery & Site Inspection** | 2025-06-28 → 2025-06-09 (-19d) | 2026-10-05 → 2027-07-22 (+290d) |  |  |  |  |
| 1 | **Road 18 Local 1 ( 479 LM )** | 2025-06-28 → 2025-06-10 (-18d) | 2026-02-25 → 2026-12-12 (+290d) |  |  |  |  |
| 1 | **Pre-Bituminous Construction** | 2025-06-28 → 2025-06-10 (-18d) | 2025-08-26 → 2025-08-11 (-15d) |  |  |  |  |
| PRO-R18-RD-DL-220 | Material Delivery & Site Inspection for Subgrade of Road Works | 2025-06-28 → 2025-06-10 A (-18d) | 2025-07-27 → 2025-07-07 A (-20d) |  | 0% → 100% | 29d → none | resources Pro Engineer [312.12 h]; 300mm thick Subgrade, including subgrade preparation, CBR?25% → 300mm thick Subgrade, including subgrade preparation, CBR?25% [2919.16] |

| ID | Task | Start | Finish | Duration | Complete | Total float | Predecessors | Other |
| --- | --- | --- | --- | --- | --- | --- | --- | --- |
| PRO-R18-RD-DL-230 | Material Delivery & Site Inspection for Aggregate Base Course of Road Works | 2025-07-28 → 2025-08-01 A (+4d) | 2025-08-26 → 2025-08-11 A (-15d) |  | 0% → 100% | 29d → none |  | resources Pro Engineer [312.12 h]; Aggregate base course 200mm thick after compaction in two layers(Grading 1); CBR?80%; including watering, compaction and testing → Aggregate base course 200mm thick after compaction in two layers(Grading 1); CBR?80%; including watering, compaction and testing [1946.32] |
| 2 | **Pavement Works** | 2025-08-27 → 2026-08-03 (+341d) | 2025-10-27 → 2026-08-20 (+297d) |  |  |  |  |  |
| PRO-R18-RD-DL-180 | Material Delivery & Site Inspection of Interlock Tiles for Landscaping | 2025-08-27 → 2026-08-03 A (+341d) | 2025-09-27 → 2026-08-20 A (+327d) | 26d → 16d | 0% → 100% | 29d → none |  | resources Pro Engineer [312.12 h]; Interlocking block pavers for sidewalk/footpath 60mm thick on and including 30mm Sand Bedding, 200mm Aggregate subbase, all in accordance with authority standards and complete as per specifications; Extraover for Pedestrian ramps → Interlocking block pavers for sidewalk/footpath 60mm thick on and including 30mm Sand Bedding, 200mm Aggregate subbase, all in accordance with authority standards and complete as per specifications [1923.24]; Extraover for Pedestrian ramps [6] |
| PRO-R18-RD-DL-190 | Material Delivery & Site Inspection of Curbstones for Landscaping | 2025-09-28 → 2026-08-03 A (+309d) | 2025-10-27 → 2026-08-20 A (+297d) |  | 0% → 100% | 29d → none |  | resources Pro Engineer [312.12 h]; Precast Concrete Kerb, Type K1; Precast Concrete Kerb, Type L1 → Precast Concrete Kerb, Type K1 [1077]; Precast Concrete Kerb, Type L1 [2136.92] |
| 4 | **Bituminous Construction** | 2025-10-28 → 2025-09-20 (-38d) | 2025-12-27 → 2025-10-11 (-77d) |  |  |  |  |  |
| PRO-R18-RD-DL-240 | Material Delivery & Site Inspection for Prime Coat of Road Works | 2025-10-28 → 2025-09-20 A (-38d) | 2025-11-26 → 2025-09-21 A (-66d) |  | 0% → 100% | 29d → none |  | resources Pro Engineer [312.12 h]; Bituminous base course(Grading I - Class A), 70mm thick after compaction including Prime Coat (MC1); Bituminous concrete wearing course, 50 mm thick, after compaction(Grading I - Class A), including tack coat (RC) → Bituminous base course(Grading I - Class A), 70mm thick after compaction including Prime Coat (MC1) [136.22]; Bituminous concrete wearing course, 50 mm thick, after compaction(Grading I - Class A), including tack coat (RC) [97.31] |
| PRO-R18-RD-DL-250 | Material Delivery & Site Inspection for Bituminous Base & Wearing Courses of Road Works | 2025-11-27 → 2025-10-09 A (-49d) | 2025-12-27 → 2025-10-11 A (-77d) |  | 0% → 100% | 29d → none |  | resources Pro Engineer [312.12 h]; Bituminous base course(Grading I - Class A), 70mm thick after compaction including Prime Coat (MC1); Bituminous concrete wearing course, 50 mm thick, after compaction(Grading I - Class A), including tack coat (RC) → Bituminous base course(Grading I - Class A), 70mm thick after compaction including Prime Coat (MC1) [544.9]; Bituminous concrete wearing course, 50 mm thick, after compaction(Grading I - Class A), including tack coat (RC) [389.23] |
| 3 | **Traffic Signs Boards and Roads Marking** | 2025-12-28 → 2026-10-13 (+289d) | 2026-02-25 → 2026-12-12 (+290d) |  |  |  |  |  |
| PRO-R18-RD-DL-200 | Material Delivery & Site Inspection of Traffic Signs Boards For Road Works | 2025-12-28 → 2026-10-13 (+289d) | 2026-01-26 → 2026-11-11 (+289d) |  |  | 29d → -211d |  | resources Pro Engineer [44.04 h]; Traffic signs, ground mounted, Sheet Alumenium, (breakaway) Single post, with all accessories; Straight Arrow; Straight-Right Arrow → Traffic signs, ground mounted, Sheet Alumenium, (breakaway) Single post, with all accessories [6]; Straight Arrow [12]; Straight-Right Arrow [2] |
| PRO-R18-RD-DL-210 | Material Delivery & Site Inspection of Road Markings For Road Works | 2026-01-27 → 2026-11-12 (+289d) | 2026-02-25 → 2026-12-12 (+290d) |  |  | 29d → -211d |  | resources Pro Engineer [44.04 h]; Retroreflective Thermoplastic White, Traffic lines; Retroreflective Thermoplastic Yellow, Traffic lines; Retroreflective raised pavement markers(Type A) → Retroreflective Thermoplastic White, Traffic lines [366.9]; Retroreflective Thermoplastic Yellow, Traffic lines [56.22]; Retroreflective raised pavement markers(Type A) [71.72] |
| 9 | **Road 17 Local 1 ( 500 LM )** | 2025-07-28 → 2025-07-08 (-20d) | 2026-03-31 → 2027-01-11 (+286d) |  |  |  |  |  |
| 1 | **Pre-Bituminous Construction** | 2025-07-28 → 2025-07-08 (-20d) | 2025-09-27 → 2025-09-04 (-23d) |  |  |  |  |  |
| PRO-R17-RD-DL-120 | Material Delivery & Site Inspection for Subgrade of Road Works | 2025-07-28 → 2025-07-08 A (-20d) | 2025-08-26 → 2025-07-13 A (-44d) |  | 0% → 100% | 29d → none |  | resources Pro Engineer [312.12 h]; 300mm thick Subgrade, including subgrade preparation, CBR?25% → 300mm thick Subgrade, including subgrade preparation, CBR?25% [3018.74] |
| PRO-R17-RD-DL-130 | Material Delivery & Site Inspection for Aggregate Base Course of Road Works | 2025-08-27 → 2025-09-01 A (+5d) | 2025-09-27 → 2025-09-04 A (-23d) |  | 0% → 100% | 29d → none |  | resources Pro Engineer [312.12 h]; Aggregate base course 200mm thick after compaction in two layers(Grading 1); CBR?80%; including watering, compaction and testing → Aggregate base course 200mm thick after compaction in two layers(Grading 1); CBR?80%; including watering, compaction and testing [2012.68] |
| 2 | **Pavement Works** | 2025-09-28 → 2026-08-22 (+328d) | 2025-11-26 → 2026-08-29 (+276d) |  |  |  |  |  |
| PRO-R17-RD-DL-100 | Material Delivery & Site Inspection of Interlock Tiles for Landscaping | 2025-09-28 → 2026-08-22 A (+328d) | 2025-10-27 → 2026-08-29 A (+306d) |  | 0% → 100% | 29d → none |  | resources Pro Engineer [312.12 h]; Interlocking block pavers for sidewalk/footpath 60mm thick on and including 30mm Sand Bedding, 200mm Aggregate subbase, all in accordance with authority standards and complete as per specifications; Extraover for Pedestrian ramps → Interlocking block pavers for sidewalk/footpath 60mm thick on and including 30mm Sand Bedding, 200mm Aggregate subbase, all in accordance with authority standards and complete as per specifications [1988.82]; Extraover for Pedestrian ramps [4] |
| PRO-R17-RD-DL-110 | Material Delivery & Site Inspection of Curbstones for Landscaping | 2025-10-28 → 2026-08-22 A (+298d) | 2025-11-26 → 2026-08-29 A (+276d) |  | 0% → 100% | 29d → none |  | resources Pro Engineer [312.12 h]; Precast Concrete Kerb, Type K1; Precast Concrete Kerb, Type L1 → Precast Concrete Kerb, Type K1 [1113.76]; Precast Concrete Kerb, Type L1 [2209.78] |
| 4 | **Bituminous Construction** | 2025-11-27 → 2025-09-23 (-65d) | 2026-01-26 → 2025-10-11 (-107d) |  |  |  |  |  |
| PRO-R17-RD-DL-160 | Material Delivery & Site Inspection for Prime Coat of Road Works | 2025-11-27 → 2025-09-23 A (-65d) | 2025-12-27 → 2025-09-25 A (-93d) |  | 0% → 100% | 29d → none |  | resources Pro Engineer [312.12 h]; Bituminous base course(Grading I - Class A), 70mm thick after compaction including Prime Coat (MC1); Bituminous concrete wearing course, 50 mm thick, after compaction(Grading I - Class A), including tack coat (RC) → Bituminous base course(Grading I - Class A), 70mm thick after compaction including Prime Coat (MC1) [140.88]; Bituminous concrete wearing course, 50 mm thick, after compaction(Grading I - Class A), including tack coat (RC) [100.63] |
| PRO-R17-RD-DL-170 | Material Delivery & Site Inspection for Bituminous Base & Wearing Courses of Road Works | 2025-12-28 → 2025-10-09 A (-80d) | 2026-01-26 → 2025-10-11 A (-107d) |  | 0% → 100% | 29d → none |  | resources Pro Engineer [312.12 h]; Bituminous base course(Grading I - Class A), 70mm thick after compaction including Prime Coat (MC1); Bituminous concrete wearing course, 50 mm thick, after compaction(Grading I - Class A), including tack coat (RC) → Bituminous base course(Grading I - Class A), 70mm thick after compaction including Prime Coat (MC1) [563.5]; Bituminous concrete wearing course, 50 mm thick, after compaction(Grading I - Class A), including tack coat (RC) [402.51] |
| 3 | **Traffic Signs Boards and Roads Marking** | 2026-01-27 → 2026-11-12 (+289d) | 2026-03-31 → 2027-01-11 (+286d) |  |  |  |  |  |
| PRO-R17-RD-DL-140 | Material Delivery & Site Inspection of Traffic Signs Boards For Road Works | 2026-01-27 → 2026-11-12 (+289d) | 2026-02-25 → 2026-12-12 (+290d) |  |  | 29d → -211d |  | resources Pro Engineer [44.04 h]; Traffic signs, ground mounted, Sheet Alumenium, (breakaway) Single post, with all accessories; Straight Arrow; Straight-Right Arrow; Straight-Left Arrow → Traffic signs, ground mounted, Sheet Alumenium, (breakaway) Single post, with all accessories [4]; Straight Arrow [12]; Straight-Right Arrow [2]; Straight-Left Arrow [2] |
| PRO-R17-RD-DL-150 | Material Delivery & Site Inspection of Road Markings For Road Works | 2026-02-26 → 2026-12-13 (+290d) | 2026-03-31 → 2027-01-11 (+286d) |  |  | 29d → -211d |  | resources Pro Engineer [44.04 h]; Retroreflective Thermoplastic White, Traffic lines; Retroreflective Thermoplastic Yellow, Traffic lines; Retroreflective raised pavement markers(Type A) → Retroreflective Thermoplastic White, Traffic lines [379.4]; Retroreflective Thermoplastic Yellow, Traffic lines [58.12]; Retroreflective raised pavement markers(Type A) [74.18] |
| 8 | **Road 16 Local 1 ( 527 LM )** | 2025-08-27 → 2025-07-28 (-30d) | 2026-04-30 → 2027-02-10 (+286d) |  |  |  |  |  |
| 1 | **Pre-Bituminous Construction** | 2025-08-27 → 2025-07-28 (-30d) | 2025-10-27 → 2025-10-12 (-15d) |  |  |  |  |  |
| PRO-R16-RD-DL-100 | Material Delivery & Site Inspection for Subgrade of Road Works | 2025-08-27 → 2025-07-28 A (-30d) | 2025-09-27 → 2025-08-02 A (-56d) |  | 0% → 100% | 142d → none |  | resources Pro Engineer [312.12 h]; 300mm thick Subgrade, including subgrade preparation, CBR?25% → 300mm thick Subgrade, including subgrade preparation, CBR?25% [3174.94] |
| PRO-R16-RD-DL-110 | Material Delivery & Site Inspection for Aggregate Base Course of Road Works | 2025-09-28 → 2025-10-11 A (+13d) | 2025-10-27 → 2025-10-12 A (-15d) |  | 0% → 100% | 130d → none |  | resources Pro Engineer [312.12 h]; Aggregate base course 200mm thick after compaction in two layers(Grading 1); CBR?80%; including watering, compaction and testing → Aggregate base course 200mm thick after compaction in two layers(Grading 1); CBR?80%; including watering, compaction and testing [2116.82] |
| 2 | **Pavement Works** | 2025-10-28 → 2026-08-24 (+300d) | 2025-12-27 → 2026-08-27 (+243d) |  |  |  |  |  |
| PRO-R16-RD-DL-120 | Material Delivery & Site Inspection of Interlock Tiles for Landscaping | 2025-10-28 → 2026-08-24 A (+300d) | 2025-11-26 → 2026-08-27 A (+274d) |  | 0% → 100% | 107d → none |  | resources Pro Engineer [312.12 h]; Interlocking block pavers for sidewalk/footpath 60mm thick on and including 30mm Sand Bedding, 200mm Aggregate subbase, all in accordance with authority standards and complete as per specifications; Extraover for Pedestrian ramps → Interlocking block pavers for sidewalk/footpath 60mm thick on and including 30mm Sand Bedding, 200mm Aggregate subbase, all in accordance with authority standards and complete as per specifications [2091.74]; Extraover for Pedestrian ramps [6] |
| PRO-R16-RD-DL-130 | Material Delivery & Site Inspection of Curbstones for Landscaping | 2025-11-27 → 2026-08-24 A (+270d) | 2025-12-27 → 2026-08-27 A (+243d) | 26d → 4d | 0% → 100% | 81d → none |  | resources Pro Engineer [312.12 h]; Precast Concrete Kerb, Type K1; Precast Concrete Kerb, Type L1 → Precast Concrete Kerb, Type K1 [1171.38]; Precast Concrete Kerb, Type L1 [2324.14] |
| 4 | **Bituminous Construction** | 2025-12-28 → 2025-10-12 (-77d) | 2026-02-25 → 2025-12-15 (-72d) |  |  |  |  |  |
| PRO-R16-RD-DL-160 | Material Delivery & Site Inspection for Prime Coat of Road Works | 2025-12-28 → 2025-10-12 A (-77d) | 2026-01-26 → 2025-10-12 A (-106d) |  | 0% → 100% | 94d → none |  | resources Pro Engineer [312.12 h]; Bituminous base course(Grading I - Class A), 70mm thick after compaction including Prime Coat (MC1); Bituminous concrete wearing course, 50 mm thick, after compaction(Grading I - Class A), including tack coat (RC) → Bituminous base course(Grading I - Class A), 70mm thick after compaction including Prime Coat (MC1) [148.16]; Bituminous concrete wearing course, 50 mm thick, after compaction(Grading I - Class A), including tack coat (RC) [105.83] |
| PRO-R16-RD-DL-170 | Material Delivery & Site Inspection for Bituminous Base & Wearing Courses of Road Works | 2026-01-27 → 2025-12-13 A (-45d) | 2026-02-25 → 2025-12-15 A (-72d) |  | 0% → 100% | 55d → none |  | resources Pro Engineer [312.12 h]; Bituminous base course(Grading I - Class A), 70mm thick after compaction including Prime Coat (MC1); Bituminous concrete wearing course, 50 mm thick, after compaction(Grading I - Class A), including tack coat (RC) → Bituminous base course(Grading I - Class A), 70mm thick after compaction including Prime Coat (MC1) [592.64]; Bituminous concrete wearing course, 50 mm thick, after compaction(Grading I - Class A), including tack coat (RC) [423.33] |
| 3 | **Traffic Signs Boards and Roads Marking** | 2026-02-26 → 2026-12-13 (+290d) | 2026-04-30 → 2027-02-10 (+286d) |  |  |  |  |  |
| PRO-R16-RD-DL-140 | Material Delivery & Site Inspection of Traffic Signs Boards For Road Works | 2026-02-26 → 2026-12-13 (+290d) | 2026-03-31 → 2027-01-11 (+286d) |  |  | 55d → -185d |  | resources Pro Engineer [44.04 h]; Traffic signs, ground mounted, Sheet Alumenium, (breakaway) Single post, with all accessories; Straight Arrow; Right or Left Arrow; Straight-Right Arrow → Traffic signs, ground mounted, Sheet Alumenium, (breakaway) Single post, with all accessories [6]; Straight Arrow [12]; Right or Left Arrow [2]; Straight-Right Arrow [2] |
| PRO-R16-RD-DL-150 | Material Delivery & Site Inspection of Road Markings For Road Works | 2026-04-01 → 2027-01-12 (+286d) | 2026-04-30 → 2027-02-10 (+286d) |  |  | 29d → -211d |  | resources Pro Engineer [44.04 h]; Retroreflective Thermoplastic White, Traffic lines; Retroreflective Thermoplastic Yellow, Traffic lines; Retroreflective raised pavement markers(Type A) → Retroreflective Thermoplastic White, Traffic lines [399.04]; Retroreflective Thermoplastic Yellow, Traffic lines [61.14]; Retroreflective raised pavement markers(Type A) [78] |
| 7 | **Road 15 Local 1 ( 556 LM )** | 2025-09-28 → 2025-06-09 (-111d) | 2026-06-04 → 2027-03-17 (+286d) |  |  |  |  |  |
| 1 | **Pre-Bituminous Construction** | 2025-09-28 → 2025-06-09 (-111d) | 2025-11-26 → 2025-10-13 (-44d) |  |  |  |  |  |
| PRO-R15-RD-DL-100 | Material Delivery & Site Inspection for Subgrade of Road Works | 2025-09-28 → 2025-06-09 A (-111d) | 2025-10-27 → 2025-07-13 A (-106d) |  | 0% → 100% | 142d → none | PRO-RD-1DL-100, PRO-R16-RD-DL-100 → PRO-RD-1DL-100 | resources Pro Engineer [312.12 h]; 300mm thick Subgrade, including subgrade preparation, CBR?25% → 300mm thick Subgrade, including subgrade preparation, CBR?25% [3331.16] |
| PRO-R15-RD-DL-110 | Material Delivery & Site Inspection for Aggregate Base Course of Road Works | 2025-10-28 → 2025-10-12 A (-16d) | 2025-11-26 → 2025-10-13 A (-44d) |  | 0% → 100% | 130d → none |  | resources Pro Engineer [312.12 h]; Aggregate base course 200mm thick after compaction in two layers(Grading 1); CBR?80%; including watering, compaction and testing → Aggregate base course 200mm thick after compaction in two layers(Grading 1); CBR?80%; including watering, compaction and testing [2221] |
| 2 | **Pavement Works** | 2025-11-27 → 2026-05-16 (+170d) | 2026-01-26 → 2026-06-01 (+126d) |  |  |  |  |  |
| PRO-R15-RD-DL-130 | Material Delivery & Site Inspection of Curbstones for Landscaping | 2025-12-28 → 2026-05-16 A (+139d) | 2026-01-26 → 2026-06-01 A (+126d) |  | 0% → 100% | 81d → none |  | resources Pro Engineer [312.12 h]; Precast Concrete Kerb, Type K1; Precast Concrete Kerb, Type L1 → Precast Concrete Kerb, Type K1 [1229.02]; Precast Concrete Kerb, Type L1 [2438.52] |
| PRO-R15-RD-DL-120 | Material Delivery & Site Inspection of Interlock Tiles for Landscaping | 2025-11-27 → 2026-05-20 A (+174d) | 2025-12-27 → 2026-06-01 A (+156d) |  | 0% → 100% | 107d → none |  | resources Pro Engineer [312.12 h]; Interlocking block pavers for sidewalk/footpath 60mm thick on and including 30mm Sand Bedding, 200mm Aggregate subbase, all in accordance with authority standards and complete as per specifications; Extraover for Pedestrian ramps → Interlocking block pavers for sidewalk/footpath 60mm thick on and including 30mm Sand Bedding, 200mm Aggregate subbase, all in accordance with authority standards and complete as per specifications [2194.66]; Extraover for Pedestrian ramps [6] |
| 4 | **Bituminous Construction** | 2026-01-27 → 2026-03-01 (+33d) | 2026-03-31 → 2026-03-08 (-23d) |  |  |  |  |  |
| PRO-R15-RD-DL-160 | Material Delivery & Site Inspection for Prime Coat of Road Works | 2026-01-27 → 2026-03-01 A (+33d) | 2026-02-25 → 2026-03-08 A (+11d) |  | 0% → 100% | 94d → none |  | resources Pro Engineer [312.12 h]; Bituminous base course(Grading I - Class A), 70mm thick after compaction including Prime Coat (MC1); Bituminous concrete wearing course, 50 mm thick, after compaction(Grading I - Class A), including tack coat (RC) → Bituminous base course(Grading I - Class A), 70mm thick after compaction including Prime Coat (MC1) [155.45]; Bituminous concrete wearing course, 50 mm thick, after compaction(Grading I - Class A), including tack coat (RC) [111.04] |
| PRO-R15-RD-DL-170 | Material Delivery & Site Inspection for Bituminous Base & Wearing Courses of Road Works | 2026-02-26 → 2026-03-01 A (+3d) | 2026-03-31 → 2026-03-08 A (-23d) |  | 0% → 100% | 55d → none |  | resources Pro Engineer [312.12 h]; Bituminous base course(Grading I - Class A), 70mm thick after compaction including Prime Coat (MC1); Bituminous concrete wearing course, 50 mm thick, after compaction(Grading I - Class A), including tack coat (RC) → Bituminous base course(Grading I - Class A), 70mm thick after compaction including Prime Coat (MC1) [621.79]; Bituminous concrete wearing course, 50 mm thick, after compaction(Grading I - Class A), including tack coat (RC) [444.18] |
| 3 | **Traffic Signs Boards and Roads Marking** | 2026-04-01 → 2027-01-12 (+286d) | 2026-06-04 → 2027-03-17 (+286d) |  |  |  |  |  |
| PRO-R15-RD-DL-140 | Material Delivery & Site Inspection of Traffic Signs Boards For Road Works | 2026-04-01 → 2027-01-12 (+286d) | 2026-04-30 → 2027-02-10 (+286d) |  |  | 55d → -185d |  | resources Pro Engineer [44.04 h]; Traffic signs, ground mounted, Sheet Alumenium, (breakaway) Single post, with all accessories; Straight Arrow; Straight-Right Arrow → Traffic signs, ground mounted, Sheet Alumenium, (breakaway) Single post, with all accessories [7]; Straight Arrow [12]; Straight-Right Arrow [2] |
| PRO-R15-RD-DL-150 | Material Delivery & Site Inspection of Road Markings For Road Works | 2026-05-02 → 2027-02-11 (+285d) | 2026-06-04 → 2027-03-17 (+286d) |  |  | 29d → -211d |  | resources Pro Engineer [44.04 h]; Retroreflective Thermoplastic White, Traffic lines; Retroreflective Thermoplastic Yellow, Traffic lines; Retroreflective raised pavement markers(Type A) → Retroreflective Thermoplastic White, Traffic lines [418.68]; Retroreflective Thermoplastic Yellow, Traffic lines [64.16]; Retroreflective raised pavement markers(Type A) [81.84] |
| 4 | **Road 10 Local 2 ( 2352 LM )** | 2025-10-28 → 2025-09-20 (-38d) | 2026-07-05 → 2027-04-17 (+286d) |  |  |  |  |  |
| 1 | **Pre-Bituminous Construction** | 2025-10-28 → 2025-09-20 (-38d) | 2025-12-27 → 2025-09-27 (-91d) |  |  |  |  |  |
| PRO-R10-RD-DL-110 | Material Delivery & Site Inspection for Aggregate Base Course of Road Works | 2025-11-27 → 2025-09-20 A (-68d) | 2025-12-27 → 2025-09-24 A (-94d) |  | 0% → 100% | 130d → none |  | resources Pro Engineer [312.12 h]; Aggregate base course 200mm thick after compaction in two layers(Grading 1); CBR?80%; including watering, compaction and testing → Aggregate base course 200mm thick after compaction in two layers(Grading 1); CBR?80%; including watering, compaction and testing [9042.86] |
| PRO-R10-RD-DL-100 | Material Delivery & Site Inspection for Subgrade of Road Works | 2025-10-28 → 2025-09-24 A (-34d) | 2025-11-26 → 2025-09-27 A (-60d) |  | 0% → 100% | 142d → none |  | resources Pro Engineer [312.12 h]; 300mm thick Subgrade, including subgrade preparation, CBR?25% → 300mm thick Subgrade, including subgrade preparation, CBR?25% [13562.9] |
| 2 | **Pavement Works** | 2025-12-28 → 2026-02-17 (+51d) | 2026-02-25 → 2026-03-11 (+14d) |  |  |  |  |  |
| PRO-R10-RD-DL-120 | Material Delivery & Site Inspection of Interlock Tiles for Landscaping | 2025-12-28 → 2026-02-17 A (+51d) | 2026-01-26 → 2026-03-11 A (+44d) |  | 0% → 100% | 107d → none |  | resources Pro Engineer [312.12 h]; Interlocking block pavers for sidewalk/footpath 60mm thick on and including 30mm Sand Bedding, 200mm Aggregate subbase, all in accordance with authority standards and complete as per specifications; Extraover for Pedestrian ramps → Interlocking block pavers for sidewalk/footpath 60mm thick on and including 30mm Sand Bedding, 200mm Aggregate subbase, all in accordance with authority standards and complete as per specifications [8935.62]; Extraover for Pedestrian ramps [22] |
| PRO-R10-RD-DL-130 | Material Delivery & Site Inspection of Curbstones for Landscaping | 2026-01-27 → 2026-02-17 A (+21d) | 2026-02-25 → 2026-03-11 A (+14d) |  | 0% → 100% | 81d → none |  | resources Pro Engineer [312.12 h]; Precast Concrete Kerb, Type K1; Precast Concrete Kerb, Type L1 → Precast Concrete Kerb, Type K1 [5003.94]; Precast Concrete Kerb, Type L1 [9928.44] |
| 4 | **Bituminous Construction** | 2026-02-26 → 2026-10-13 (+229d) | 2026-04-30 → 2026-11-11 (+195d) |  |  |  |  |  |
| PRO-R10-RD-DL-160 | Material Delivery & Site Inspection for Prime Coat of Road Works | 2026-02-26 → 2026-10-13 (+229d) | 2026-03-31 → 2026-11-11 (+225d) |  |  | 94d → -48d |  | resources Pro Engineer [44.04 h]; Bituminous base course(Grading I - Class A), 70mm thick after compaction including Prime Coat (MC1); Bituminous concrete wearing course, 50 mm thick, after compaction(Grading I - Class A), including tack coat (RC) → Bituminous base course(Grading I - Class A), 70mm thick after compaction including Prime Coat (MC1) [632.92]; Bituminous concrete wearing course, 50 mm thick, after compaction(Grading I - Class A), including tack coat (RC) [452.12] |
| PRO-R10-RD-DL-170 | Material Delivery & Site Inspection for Bituminous Base & Wearing Courses of Road Works | 2026-04-01 → 2026-10-13 (+195d) | 2026-04-30 → 2026-11-11 (+195d) |  |  | 55d → -81d |  | resources Pro Engineer [44.04 h]; Bituminous base course(Grading I - Class A), 70mm thick after compaction including Prime Coat (MC1); Bituminous concrete wearing course, 50 mm thick, after compaction(Grading I - Class A), including tack coat (RC) → Bituminous base course(Grading I - Class A), 70mm thick after compaction including Prime Coat (MC1) [2531.66]; Bituminous concrete wearing course, 50 mm thick, after compaction(Grading I - Class A), including tack coat (RC) [1808.46] |
| 3 | **Traffic Signs Boards and Roads Marking** | 2026-05-02 → 2027-02-11 (+285d) | 2026-07-05 → 2027-04-17 (+286d) |  |  |  |  |  |
| PRO-R10-RD-DL-140 | Material Delivery & Site Inspection of Traffic Signs Boards For Road Works | 2026-05-02 → 2027-02-11 (+285d) | 2026-06-04 → 2027-03-17 (+286d) |  |  | 55d → -185d |  | resources Pro Engineer [44.04 h]; Traffic signs, ground mounted, Sheet Alumenium, (breakaway) Single post, with all accessories; Straight Arrow; Right or Left Arrow; Straight-Right Arrow; Straight-Left Arrow → Traffic signs, ground mounted, Sheet Alumenium, (breakaway) Single post, with all accessories [22]; Straight Arrow [52]; Right or Left Arrow [4]; Straight-Right Arrow [2]; Straight-Left Arrow [4] |
| PRO-R10-RD-DL-150 | Material Delivery & Site Inspection of Road Markings For Road Works | 2026-06-06 → 2027-03-18 (+285d) | 2026-07-05 → 2027-04-17 (+286d) |  |  | 29d → -211d |  | resources Pro Engineer [44.04 h]; Retroreflective Thermoplastic White, Traffic lines; Retroreflective Thermoplastic Yellow, Traffic lines; Retroreflective raised pavement markers(Type A) → Retroreflective Thermoplastic White, Traffic lines [1704.64]; Retroreflective Thermoplastic Yellow, Traffic lines [261.2]; Retroreflective raised pavement markers(Type A) [333.22] |
| 6 | **Road 14 Local 1 ( 584 LM )** | 2025-11-27 → 2025-09-25 (-63d) | 2026-08-04 → 2027-05-23 (+292d) |  |  |  |  |  |
| 1 | **Pre-Bituminous Construction** | 2025-11-27 → 2025-09-25 (-63d) | 2026-01-26 → 2025-09-29 (-119d) |  |  |  |  |  |
| PRO-R14-RD-DL-100 | Material Delivery & Site Inspection for Subgrade of Road Works | 2025-11-27 → 2025-09-25 A (-63d) | 2025-12-27 → 2025-09-29 A (-89d) |  | 0% → 100% | 142d → none |  | resources Pro Engineer [312.12 h]; 300mm thick Subgrade, including subgrade preparation, CBR?25% → 300mm thick Subgrade, including subgrade preparation, CBR?25% [5840.52] |
| PRO-R14-RD-DL-110 | Material Delivery & Site Inspection for Aggregate Base Course of Road Works | 2025-12-28 → 2025-09-25 A (-94d) | 2026-01-26 → 2025-09-28 A (-120d) |  | 0% → 100% | 130d → none |  | resources Pro Engineer [312.12 h]; Aggregate base course 200mm thick after compaction in two layers(Grading 1); CBR?80%; including watering, compaction and testing → Aggregate base course 200mm thick after compaction in two layers(Grading 1); CBR?80%; including watering, compaction and testing [3894.08] |
| 2 | **Pavement Works** | 2026-01-27 → 2026-08-23 (+208d) | 2026-03-31 → 2026-08-29 (+151d) |  |  |  |  |  |
| PRO-R14-RD-DL-120 | Material Delivery & Site Inspection of Interlock Tiles for Landscaping | 2026-01-27 → 2026-08-23 A (+208d) | 2026-02-25 → 2026-08-29 A (+185d) |  | 0% → 100% | 107d → none |  | resources Pro Engineer [312.12 h]; Interlocking block pavers for sidewalk/footpath 60mm thick on and including 30mm Sand Bedding, 200mm Aggregate subbase, all in accordance with authority standards and complete as per specifications; Extraover for Pedestrian ramps → Interlocking block pavers for sidewalk/footpath 60mm thick on and including 30mm Sand Bedding, 200mm Aggregate subbase, all in accordance with authority standards and complete as per specifications [3847.9]; Extraover for Pedestrian ramps [10] |
| PRO-R14-RD-DL-130 | Material Delivery & Site Inspection of Curbstones for Landscaping | 2026-02-26 → 2026-08-23 A (+178d) | 2026-03-31 → 2026-08-29 A (+151d) |  | 0% → 100% | 81d → none |  | resources Pro Engineer [312.12 h]; Precast Concrete Kerb, Type K1; Precast Concrete Kerb, Type L1 → Precast Concrete Kerb, Type K1 [2154.82]; Precast Concrete Kerb, Type L1 [4275.44] |
| 4 | **Bituminous Construction** | 2026-04-01 → 2026-08-23 (+144d) | 2026-06-04 → 2026-08-29 (+86d) |  |  |  |  |  |

| ID | Task | Start | Finish | Duration | Complete | Total float | Predecessors | Other |
| --- | --- | --- | --- | --- | --- | --- | --- | --- |
| PRO-R14-RD-DL-160 | Material Delivery & Site Inspection for Prime Coat of Road Works | 2026-04-01 → 2026-08-23 A (+144d) | 2026-04-30 → 2026-08-29 A (+121d) |  | 0% → 100% | 94d → none |  | resources Pro Engineer [312.12 h]; Bituminous base course(Grading I - Class A), 70mm thick after compaction including Prime Coat (MC1); Bituminous concrete wearing course, 50 mm thick, after compaction(Grading I - Class A), including tack coat (RC) → Bituminous base course(Grading I - Class A), 70mm thick after compaction including Prime Coat (MC1) [272.55]; Bituminous concrete wearing course, 50 mm thick, after compaction(Grading I - Class A), including tack coat (RC) [194.69] |
| PRO-R14-RD-DL-170 | Material Delivery & Site Inspection for Bituminous Base & Wearing Courses of Road Works | 2026-05-02 → 2026-08-23 A (+113d) | 2026-06-04 → 2026-08-29 A (+86d) |  | 0% → 100% | 55d → none |  | resources Pro Engineer [312.12 h]; Bituminous base course(Grading I - Class A), 70mm thick after compaction including Prime Coat (MC1); Bituminous concrete wearing course, 50 mm thick, after compaction(Grading I - Class A), including tack coat (RC) → Bituminous base course(Grading I - Class A), 70mm thick after compaction including Prime Coat (MC1) [1090.19]; Bituminous concrete wearing course, 50 mm thick, after compaction(Grading I - Class A), including tack coat (RC) [778.77] |
| 3 | **Traffic Signs Boards and Roads Marking** | 2026-06-06 → 2027-03-18 (+285d) | 2026-08-04 → 2027-05-23 (+292d) |  |  |  |  |  |
| PRO-R14-RD-DL-140 | Material Delivery & Site Inspection of Traffic Signs Boards For Road Works | 2026-06-06 → 2027-03-18 (+285d) | 2026-07-05 → 2027-04-17 (+286d) |  |  | 55d → -185d |  | resources Pro Engineer [44.04 h]; Traffic signs, ground mounted, Sheet Alumenium, (breakaway) Single post, with all accessories; Straight Arrow; Straight-Right Arrow; Straight-Left Arrow → Traffic signs, ground mounted, Sheet Alumenium, (breakaway) Single post, with all accessories [10]; Straight Arrow [22]; Straight-Right Arrow [2]; Straight-Left Arrow [2] |
| PRO-R14-RD-DL-150 | Material Delivery & Site Inspection of Road Markings For Road Works | 2026-07-06 → 2027-04-18 (+286d) | 2026-08-04 → 2027-05-23 (+292d) |  |  | 29d → -211d |  | resources Pro Engineer [44.04 h]; Retroreflective Thermoplastic White, Traffic lines; Retroreflective Thermoplastic Yellow, Traffic lines; Retroreflective raised pavement markers(Type A) → Retroreflective Thermoplastic White, Traffic lines [734.06]; Retroreflective Thermoplastic Yellow, Traffic lines [112.48]; Retroreflective raised pavement markers(Type A) [143.5] |
| 2 | **Road 09 Local 2 ( 2278 LM )** | 2025-12-28 → 2025-09-25 (-94d) | 2026-09-03 → 2027-06-22 (+292d) |  |  |  |  |  |
| 1 | **Pre-Bituminous Construction** | 2025-12-28 → 2025-09-25 (-94d) | 2026-02-25 → 2026-03-15 (+18d) |  |  |  |  |  |
| PRO-R09-RD-DL-100 | Material Delivery & Site Inspection for Subgrade of Road Works | 2025-12-28 → 2025-09-25 A (-94d) | 2026-01-26 → 2026-03-12 A (+45d) |  | 0% → 100% | 142d → none |  | resources Pro Engineer [312.12 h]; 300mm thick Subgrade, including subgrade preparation, CBR?25% → 300mm thick Subgrade, including subgrade preparation, CBR?25% [13524.8] |
| PRO-R09-RD-DL-110 | Material Delivery & Site Inspection for Aggregate Base Course of Road Works | 2026-01-27 → 2026-03-10 A (+42d) | 2026-02-25 → 2026-03-15 A (+18d) |  | 0% → 100% | 130d → none |  | resources Pro Engineer [312.12 h]; Aggregate base course 200mm thick after compaction in two layers(Grading 1); CBR?80%; including watering, compaction and testing → Aggregate base course 200mm thick after compaction in two layers(Grading 1); CBR?80%; including watering, compaction and testing [9017.48] |
| 2 | **Pavement Works** | 2026-02-26 → 2026-03-10 (+12d) | 2026-04-30 → 2026-03-15 (-46d) |  |  |  |  |  |
| PRO-R09-RD-DL-120 | Material Delivery & Site Inspection of Interlock Tiles for Landscaping | 2026-02-26 → 2026-03-10 A (+12d) | 2026-03-31 → 2026-03-15 A (-16d) |  | 0% → 100% | 107d → none |  | resources Pro Engineer [312.12 h]; Interlocking block pavers for sidewalk/footpath 60mm thick on and including 30mm Sand Bedding, 200mm Aggregate subbase, all in accordance with authority standards and complete as per specifications; Extraover for Pedestrian ramps → Interlocking block pavers for sidewalk/footpath 60mm thick on and including 30mm Sand Bedding, 200mm Aggregate subbase, all in accordance with authority standards and complete as per specifications [8910.54]; Extraover for Pedestrian ramps [22] |
| PRO-R09-RD-DL-130 | Material Delivery & Site Inspection of Curbstones for Landscaping | 2026-04-01 → 2026-03-10 A (-22d) | 2026-04-30 → 2026-03-15 A (-46d) |  | 0% → 100% | 81d → none |  | resources Pro Engineer [312.12 h]; Precast Concrete Kerb, Type K1; Precast Concrete Kerb, Type L1 → Precast Concrete Kerb, Type K1 [4989.9]; Precast Concrete Kerb, Type L1 [9900.58] |
| 4 | **Bituminous Construction** | 2026-05-02 → 2026-11-12 (+194d) | 2026-07-05 → 2026-12-12 (+160d) |  |  |  |  |  |
| PRO-R09-RD-DL-160 | Material Delivery & Site Inspection for Prime Coat of Road Works | 2026-05-02 → 2026-11-12 (+194d) | 2026-06-04 → 2026-12-12 (+191d) |  |  | 94d → -48d |  | resources Pro Engineer [44.04 h]; Bituminous base course(Grading I - Class A), 70mm thick after compaction including Prime Coat (MC1); Bituminous concrete wearing course, 50 mm thick, after compaction(Grading I - Class A), including tack coat (RC) → Bituminous base course(Grading I - Class A), 70mm thick after compaction including Prime Coat (MC1) [631.14]; Bituminous concrete wearing course, 50 mm thick, after compaction(Grading I - Class A), including tack coat (RC) [450.85] |
| PRO-R09-RD-DL-170 | Material Delivery & Site Inspection for Bituminous Base & Wearing Courses of Road Works | 2026-06-06 → 2026-11-12 (+159d) | 2026-07-05 → 2026-12-12 (+160d) |  |  | 55d → -81d |  | resources Pro Engineer [44.04 h]; Bituminous base course(Grading I - Class A), 70mm thick after compaction including Prime Coat (MC1); Bituminous concrete wearing course, 50 mm thick, after compaction(Grading I - Class A), including tack coat (RC) → Bituminous base course(Grading I - Class A), 70mm thick after compaction including Prime Coat (MC1) [2524.56]; Bituminous concrete wearing course, 50 mm thick, after compaction(Grading I - Class A), including tack coat (RC) [1803.39] |
| 3 | **Traffic Signs Boards and Roads Marking** | 2026-07-06 → 2027-04-18 (+286d) | 2026-09-03 → 2027-06-22 (+292d) |  |  |  |  |  |
| PRO-R09-RD-DL-140 | Material Delivery & Site Inspection of Traffic Signs Boards For Road Works | 2026-07-06 → 2027-04-18 (+286d) | 2026-08-04 → 2027-05-23 (+292d) |  |  | 55d → -185d |  | resources Pro Engineer [44.04 h]; Traffic signs, ground mounted, Sheet Alumenium, (breakaway) Single post, with all accessories; Straight Arrow; Right or Left Arrow; Straight-Left Arrow → Traffic signs, ground mounted, Sheet Alumenium, (breakaway) Single post, with all accessories [22]; Straight Arrow [52]; Right or Left Arrow [4]; Straight-Left Arrow [4] |
| PRO-R09-RD-DL-150 | Material Delivery & Site Inspection of Road Markings For Road Works | 2026-08-05 → 2027-05-24 (+292d) | 2026-09-03 → 2027-06-22 (+292d) |  |  | 29d → -211d |  | resources Pro Engineer [44.04 h]; Retroreflective Thermoplastic White, Traffic lines; Retroreflective Thermoplastic Yellow, Traffic lines; Retroreflective raised pavement markers(Type A) → Retroreflective Thermoplastic White, Traffic lines [1699.86]; Retroreflective Thermoplastic Yellow, Traffic lines [260.46]; Retroreflective raised pavement markers(Type A) [332.3] |
| 5 | **Road 11 Local 1 ( 670 LM )** | 2026-01-27 → 2026-02-19 (+23d) | 2026-10-05 → 2027-07-22 (+290d) |  |  |  |  |  |
| 1 | **Pre-Bituminous Construction** | 2026-01-27 → 2026-02-19 (+23d) | 2026-03-31 → 2026-02-23 (-36d) |  |  |  |  |  |
| PRO-R11-RD-DL-100 | Material Delivery & Site Inspection for Subgrade of Road Works | 2026-01-27 → 2026-02-19 A (+23d) | 2026-02-25 → 2026-02-23 A (-2d) |  | 0% → 100% | 142d → none |  | resources Pro Engineer [312.12 h]; 300mm thick Subgrade, including subgrade preparation, CBR?25% → 300mm thick Subgrade, including subgrade preparation, CBR?25% [3957.74] |
| PRO-R11-RD-DL-110 | Material Delivery & Site Inspection for Aggregate Base Course of Road Works | 2026-02-26 → 2026-02-19 A (-7d) | 2026-03-31 → 2026-02-23 A (-36d) |  | 0% → 100% | 130d → none |  | resources Pro Engineer [312.12 h]; Aggregate base course 200mm thick after compaction in two layers(Grading 1); CBR?80%; including watering, compaction and testing → Aggregate base course 200mm thick after compaction in two layers(Grading 1); CBR?80%; including watering, compaction and testing [2638.76] |
| 2 | **Pavement Works** | 2026-04-01 → 2026-08-23 (+144d) | 2026-06-04 → 2026-08-27 (+84d) |  |  |  |  |  |
| PRO-R11-RD-DL-120 | Material Delivery & Site Inspection of Interlock Tiles for Landscaping | 2026-04-01 → 2026-08-23 A (+144d) | 2026-04-30 → 2026-08-27 A (+119d) |  | 0% → 100% | 123d → none |  | resources Pro Engineer [312.12 h]; Interlocking block pavers for sidewalk/footpath 60mm thick on and including 30mm Sand Bedding, 200mm Aggregate subbase, all in accordance with authority standards and complete as per specifications; Extraover for Pedestrian ramps → Interlocking block pavers for sidewalk/footpath 60mm thick on and including 30mm Sand Bedding, 200mm Aggregate subbase, all in accordance with authority standards and complete as per specifications [2607.48]; Extraover for Pedestrian ramps [6] |
| PRO-R11-RD-DL-130 | Material Delivery & Site Inspection of Curbstones for Landscaping | 2026-05-02 → 2026-08-23 A (+113d) | 2026-06-04 → 2026-08-27 A (+84d) |  | 0% → 100% | 81d → none |  | resources Pro Engineer [312.12 h]; Precast Concrete Kerb, Type K1; Precast Concrete Kerb, Type L1 → Precast Concrete Kerb, Type K1 [1460.18]; Precast Concrete Kerb, Type L1 [2897.18] |
| 4 | **Bituminous Construction** | 2026-06-06 → 2026-08-23 (+78d) | 2026-08-04 → 2026-08-27 (+23d) |  |  |  |  |  |
| PRO-R11-RD-DL-160 | Material Delivery & Site Inspection for Prime Coat of Road Works | 2026-06-06 → 2026-08-23 A (+78d) | 2026-07-05 → 2026-08-27 A (+53d) |  | 0% → 100% | 94d → none |  | resources Pro Engineer [312.12 h]; Bituminous base course(Grading I - Class A), 70mm thick after compaction including Prime Coat (MC1); Bituminous concrete wearing course, 50 mm thick, after compaction(Grading I - Class A), including tack coat (RC) → Bituminous base course(Grading I - Class A), 70mm thick after compaction including Prime Coat (MC1) [184.69]; Bituminous concrete wearing course, 50 mm thick, after compaction(Grading I - Class A), including tack coat (RC) [131.93] |
| PRO-R11-RD-DL-170 | Material Delivery & Site Inspection for Bituminous Base & Wearing Courses of Road Works | 2026-07-06 → 2026-08-23 A (+48d) | 2026-08-04 → 2026-08-27 A (+23d) |  | 0% → 100% | 71d → none |  | resources Pro Engineer [312.12 h]; Bituminous base course(Grading I - Class A), 70mm thick after compaction including Prime Coat (MC1); Bituminous concrete wearing course, 50 mm thick, after compaction(Grading I - Class A), including tack coat (RC) → Bituminous base course(Grading I - Class A), 70mm thick after compaction including Prime Coat (MC1) [738.75]; Bituminous concrete wearing course, 50 mm thick, after compaction(Grading I - Class A), including tack coat (RC) [527.73] |
| 3 | **Traffic Signs Boards and Roads Marking** | 2026-08-05 → 2027-05-24 (+292d) | 2026-10-05 → 2027-07-22 (+290d) |  |  |  |  |  |
| PRO-R11-RD-DL-140 | Material Delivery & Site Inspection of Traffic Signs Boards For Road Works | 2026-08-05 → 2027-05-24 (+292d) | 2026-09-03 → 2027-06-22 (+292d) |  |  | 55d → -185d |  | resources Pro Engineer [44.04 h]; Traffic signs, ground mounted, Sheet Alumenium, (breakaway) Single post, with all accessories; Straight Arrow; Straight-Left Arrow → Traffic signs, ground mounted, Sheet Alumenium, (breakaway) Single post, with all accessories [6]; Straight Arrow [16]; Straight-Left Arrow [2] |
| PRO-R11-RD-DL-150 | Material Delivery & Site Inspection of Road Markings For Road Works | 2026-09-05 → 2027-06-23 (+291d) | 2026-10-05 → 2027-07-22 (+290d) |  |  | 29d → -211d |  | resources Pro Engineer [44.04 h]; Retroreflective Thermoplastic White, Traffic lines; Retroreflective Thermoplastic Yellow, Traffic lines; Retroreflective raised pavement markers(Type A) → Retroreflective Thermoplastic White, Traffic lines [497.42]; Retroreflective Thermoplastic Yellow, Traffic lines [76.22]; Retroreflective raised pavement markers(Type A) [97.24] |
| SW | **Sewage Network** | 2025-02-05 → 2025-02-11 (+6d) | 2026-03-29 → 2027-04-10 (+377d) |  |  |  |  |  |
| PO | **Issuance of Purchase Orders** | 2025-02-05 → 2025-02-11 (+6d) |  |  |  |  |  |  |
| 1 | **Main Line Sections** | 2025-02-05 → 2025-02-11 (+6d) |  |  |  |  |  |  |
| PRO-SW-PO-100 | Issuance of Purchase Order for Main Line Pipes of Sewage Network | 2025-02-11 A | 2025-02-17 A |  | 0% → 100% | 11d → none |  | resources Pro Engineer [312.12 h] → none |
| PRO-SW-PO-110 | Issuance of Purchase Order for Manhole of Sewage Network | 2025-02-05 → 2025-02-11 A (+6d) | 2025-02-11 → 2025-02-17 A (+6d) |  | 0% → 100% | 0d → none |  | resources Pro Engineer [312.12 h] → none |
| PRO-SW-PO-120 | Issuance of Purchase Order for Manhole Covers of Sewage Network | 2025-02-11 A | 2025-02-17 A |  | 0% → 100% | 136d → none |  | resources Pro Engineer [312.12 h] → none |
| PRO-SW-PO-140 | Issuance of Purchase Order for Membrane Insulation of Sewage Network | 2025-02-11 A | 2025-02-17 A |  | 0% → 100% | 162d → none |  | resources Pro Engineer [312.12 h] → none |
| MF | **Manufacturing of Material** |  | 2025-07-17 → 2025-05-29 (-49d) |  |  |  |  |  |
| 1 | **Main Line Sections** |  | 2025-03-25 → 2025-05-13 (+49d) |  |  |  |  |  |
| PRO-SW-MF-110 | Manufacturing of Manholes for Sewage Network | 2025-02-12 A | 2025-03-19 → 2025-05-13 A (+55d) |  | 0% → 100% | 0d → none |  | resources Pro Engineer [312.12 h] → none |
| PRO-SW-MF-100 | Manufacturing of Main Line Pipes for Sewage Network | 2025-02-18 → 2025-02-15 A (-3d) | 2025-03-25 → 2025-04-24 A (+30d) |  | 0% → 100% | 11d → none |  | resources Pro Engineer [312.12 h] → none |
| 3 | **Testing and Finishes** | 2025-02-18 → 2025-05-04 (+75d) | 2025-07-17 → 2025-05-29 (-49d) |  |  |  |  |  |
| PRO-SW-MF-140 | Manufacturing of Membrane Insulation for Sewage Network | 2025-02-18 → 2025-05-04 A (+75d) | 2025-07-17 → 2025-05-26 A (-52d) |  | 0% → 100% | 162d → none |  | resources Pro Engineer [312.12 h] → none |
| PRO-SW-MF-120 | Manufacturing of Manhole Covers for Sewage Network | 2025-02-18 → 2025-05-12 A (+83d) | 2025-07-17 → 2025-05-29 A (-49d) |  | 0% → 100% | 136d → none |  | resources Pro Engineer [312.12 h] → none |
| 1DL | **1st Material Delivery & Site Inspection** |  | 2025-07-24 → 2025-06-10 (-44d) |  |  |  |  |  |
| 1 | **Main Line Sections** |  | 2025-03-26 → 2025-05-25 (+60d) |  |  |  |  |  |
| PRO-SW-1DL-100 | 1ST Material Delivery for Main Line Pipes of Sewage Network | 2025-03-19 A | 2025-03-25 → 2025-04-26 A (+32d) |  | 0% → 100% | 11d → none | PRO-SW-MF-100 FF, PRO-SW-MF-100 SS+24d → PRO-SW-MF-100 FF | resources Pro Engineer [312.12 h] → none |
| PRO-SW-1DL-110 | 1ST Material Delivery for Manholes of Sewage Network | 2025-03-20 → 2025-04-10 A (+21d) | 2025-03-26 → 2025-05-25 A (+60d) |  | 0% → 100% | 0d → none |  | resources Pro Engineer [312.12 h] → none |
| 3 | **Testing and Finishes** | 2025-07-19 → 2025-05-27 (-53d) | 2025-07-24 → 2025-06-10 (-44d) |  |  |  |  |  |
| PRO-SW-1DL-140 | 1ST Material Delivery for Membrane Insulation of Sewage Network | 2025-07-19 → 2025-05-27 A (-53d) | 2025-07-24 → 2025-06-05 A (-49d) |  | 0% → 100% | 162d → none |  | resources Pro Engineer [312.12 h] → none |
| PRO-SW-1DL-120 | 1ST Material Delivery for Manholes Covers of Sewage Network | 2025-07-19 → 2025-05-30 A (-50d) | 2025-07-24 → 2025-06-10 A (-44d) |  | 0% → 100% | 136d → none |  | resources Pro Engineer [312.12 h] → none |
| DL | **Material Delivery & Site Inspection** | 2025-03-26 → 2025-04-13 (+18d) | 2026-03-29 → 2027-04-10 (+377d) |  |  |  |  |  |
| 1 | **Road 18 Local 1 ( 479 LM )** | 2025-03-27 → 2025-04-13 (+17d) | 2025-09-24 → 2025-06-01 (-115d) |  |  |  |  |  |
| 1 | **Main Line Sections** | 2025-03-27 → 2025-04-13 (+17d) | 2025-04-23 → 2025-05-27 (+34d) |  |  |  |  |  |
| PRO-R18-SW-DL-150 | Material Delivery & Site Inspection of Main Line Pipes for Sewage Network | 2025-04-13 A | 2025-04-23 → 2025-04-28 A (+5d) |  | 0% → 100% | 0d → none |  | resources Pro Engineer [312.12 h]; Nominal bore : 160mm; Depth : 1.5m - 2.5m; Nominal bore : 200mm; Depth : 0.0m - 1.5m; Nominal bore : 200mm; Depth : 1.5m - 2.5m; Nominal bore : 200mm; Depth : 2.5m - 3.5m; Nominal bore : 200mm; Depth : 3.5m - 4.5m; Nominal bore : 200mm; Depth : 4.5m -5.5m; Nominal bore : 200mm; Depth : 5.5m - 6.5m → Nominal bore : 160mm; Depth : 1.5m - 2.5m [88]; Nominal bore : 200mm; Depth : 0.0m - 1.5m [23.68]; Nominal bore : 200mm; Depth : 1.5m - 2.5m [44.38]; Nominal bore : 200mm; Depth : 2.5m - 3.5m [111.06]; Nominal bore : 200mm; Depth : 3.5m - 4.5m [81.88]; Nominal bore : 200mm; Depth : 4.5m -5.5m [41.88]; Nominal bore : 200mm; Depth : 5.5m - 6.5m [53.69] |
| PRO-R18-SW-DL-160 | Material Delivery & Site Inspection of Manholes for Sewage Network | 2025-03-27 → 2025-04-22 A (+26d) | 2025-04-12 → 2025-05-27 A (+45d) | 10d → 5d | 0% → 100% | 0d → none |  | resources Pro Engineer [312.12 h]; Depth: not exceeding 1.5m; Depth: 1.5 - 2.5m; Depth: 2.5 - 3.5m; Depth: 5.5 - 6.5m; Depth:6.5 - 7.5m → Depth: not exceeding 1.5m [1]; Depth: 1.5 - 2.5m [10]; Depth: 2.5 - 3.5m [1]; Depth: 5.5 - 6.5m [2]; Depth:6.5 - 7.5m [1] |
| 3 | **Testing and Finishes** | 2025-07-26 → 2025-05-14 (-73d) | 2025-09-24 → 2025-06-01 (-115d) |  |  |  |  |  |
| PRO-R18-SW-DL-170 | Material Delivery & Site Inspection of Manholes Covers for Sewage Network | 2025-07-26 → 2025-05-14 A (-73d) | 2025-08-24 → 2025-06-01 A (-84d) |  | 0% → 100% | 136d → none |  | resources Pro Engineer [312.12 h] → none |
| PRO-R18-SW-DL-190 | Material Delivery & Site Inspection of Membrane Insulation for Sewage Network | 2025-08-25 → 2025-05-29 A (-88d) | 2025-09-24 → 2025-06-01 A (-115d) |  | 0% → 100% | 136d → none |  | resources Pro Engineer [312.12 h] → none |
| 9 | **Road 17 Local 1 ( 500 LM )** | 2025-04-13 → 2025-06-01 (+49d) | 2025-10-25 → 2026-11-04 (+375d) |  |  |  |  |  |
| 1 | **Main Line Sections** | 2025-04-13 → 2025-06-01 (+49d) | 2025-05-10 → 2025-07-03 (+54d) |  |  |  |  |  |
| PRO-R17-SW-DL-100 | Material Delivery & Site Inspection of Main Line Pipes for Sewage Network | 2025-04-24 → 2025-06-01 A (+38d) | 2025-05-10 → 2025-06-12 A (+33d) |  | 0% → 100% | 13d → none |  | resources Pro Engineer [312.12 h]; Nominal bore : 160mm; Depth : 0.0m - 1.5m; Nominal bore : 160mm; Depth : 1.5m - 2.5m; Nominal bore : 200mm; Depth : 0.0m - 1.5m; Nominal bore : 200mm; Depth : 1.5m - 2.5m; Nominal bore : 200mm; Depth : 2.5m - 3.5m; Nominal bore : 200mm; Depth : 3.5m - 4.5m; Nominal bore : 200mm; Depth : 4.5m -5.5m; Nominal bore : 200mm; Depth : 5.5m - 6.5m → Nominal bore : 160mm; Depth : 0.0m - 1.5m [19]; Nominal bore : 160mm; Depth : 1.5m - 2.5m [212]; Nominal bore : 200mm; Depth : 0.0m - 1.5m [24.88]; Nominal bore : 200mm; Depth : 1.5m - 2.5m [45.9]; Nominal bore : 200mm; Depth : 2.5m - 3.5m [113.44]; Nominal bore : 200mm; Depth : 3.5m - 4.5m [84.79]; Nominal bore : 200mm; Depth : 4.5m -5.5m [42.84]; Nominal bore : 200mm; Depth : 5.5m - 6.5m [55.08] |
| PRO-R17-SW-DL-110 | Material Delivery & Site Inspection of Manholes for Sewage Network | 2025-04-13 → 2025-06-10 A (+58d) | 2025-04-29 → 2025-07-03 A (+65d) |  | 0% → 100% | 22d → none |  | resources Pro Engineer [312.12 h]; Depth: not exceeding 1.5m; Depth: 1.5 - 2.5m; Depth: 2.5 - 3.5m; Depth: 5.5 - 6.5m; Depth:6.5 - 7.5m → Depth: not exceeding 1.5m [2]; Depth: 1.5 - 2.5m [5]; Depth: 2.5 - 3.5m [3]; Depth: 5.5 - 6.5m [1]; Depth:6.5 - 7.5m [1] |
| 3 | **Testing and Finishes** | 2025-08-25 → 2026-10-06 (+407d) | 2025-10-25 → 2026-11-04 (+375d) |  |  |  |  |  |
| PRO-R17-SW-DL-120 | Material Delivery & Site Inspection of Manholes Covers for Sewage Network | 2025-08-25 → 2026-10-06 (+407d) | 2025-09-24 → 2026-11-04 (+406d) |  |  | 159d → -181d |  | resources Pro Engineer [44.04 h] → none |
| PRO-R17-SW-DL-130 | Material Delivery & Site Inspection of Membrane Insulation for Sewage Network | 2025-09-25 → 2026-10-06 (+376d) | 2025-10-25 → 2026-11-04 (+375d) |  |  | 136d → -178d |  | resources Pro Engineer [44.04 h] → none |
| 8 | **Road 16 Local 1 ( 527 LM )** | 2025-04-30 → 2025-05-27 (+27d) | 2025-11-24 → 2026-12-05 (+376d) |  |  |  |  |  |
| 1 | **Main Line Sections** | 2025-04-30 → 2025-05-27 (+27d) | 2025-05-26 → 2025-06-04 (+9d) |  |  |  |  |  |
| PRO-R16-SW-DL-100 | Material Delivery & Site Inspection of Main Line Pipes for Sewage Network | 2025-05-11 → 2025-05-27 A (+16d) | 2025-05-26 → 2025-06-04 A (+9d) |  | 0% → 100% | 19d → none |  | resources Pro Engineer [312.12 h]; Nominal bore : 160mm; Depth : 0.0m - 1.5m; Nominal bore : 200mm; Depth : 0.0m - 1.5m; Nominal bore : 200mm; Depth : 1.5m - 2.5m; Nominal bore : 200mm; Depth : 2.5m - 3.5m; Nominal bore : 200mm; Depth : 3.5m - 4.5m; Nominal bore : 200mm; Depth : 4.5m -5.5m; Nominal bore : 200mm; Depth : 5.5m - 6.5m → Nominal bore : 160mm; Depth : 0.0m - 1.5m [65]; Nominal bore : 200mm; Depth : 0.0m - 1.5m [29.74]; Nominal bore : 200mm; Depth : 1.5m - 2.5m [68.49]; Nominal bore : 200mm; Depth : 2.5m - 3.5m [97.24]; Nominal bore : 200mm; Depth : 3.5m - 4.5m [126.88]; Nominal bore : 200mm; Depth : 4.5m -5.5m [55.06]; Nominal bore : 200mm; Depth : 5.5m - 6.5m [61.92] |

| ID | Task | Start | Finish | Complete | Total float | Other |
| --- | --- | --- | --- | --- | --- | --- |
| PRO-R16-SW-DL-110 | Material Delivery & Site Inspection of Manholes for Sewage Network | 2025-04-30 → 2025-05-27 A (+27d) | 2025-05-17 → 2025-06-04 A (+18d) | 0% → 100% | 27d → none | resources Pro Engineer [312.12 h]; Depth: not exceeding 1.5m; Depth: 1.5 - 2.5m; Depth: 2.5 - 3.5m; Depth: 5.5 - 6.5m; Depth:6.5 - 7.5m → Depth: not exceeding 1.5m [2]; Depth: 1.5 - 2.5m [5]; Depth: 2.5 - 3.5m [1]; Depth: 5.5 - 6.5m [1]; Depth:6.5 - 7.5m [2] |
| 3 | **Testing and Finishes** | 2025-09-25 → 2026-11-05 (+406d) | 2025-11-24 → 2026-12-05 (+376d) |  |  |  |
| PRO-R16-SW-DL-120 | Material Delivery & Site Inspection of Manholes Covers for Sewage Network | 2025-09-25 → 2026-11-05 (+406d) | 2025-10-25 → 2026-12-05 (+406d) |  | 159d → -181d | resources Pro Engineer [44.04 h] → none |
| PRO-R16-SW-DL-130 | Material Delivery & Site Inspection of Membrane Insulation for Sewage Network | 2025-10-26 → 2026-11-05 (+375d) | 2025-11-24 → 2026-12-05 (+376d) |  | 136d → -178d | resources Pro Engineer [44.04 h] → none |
| 7 | **Road 15 Local 1 ( 556 LM )** | 2025-05-18 → 2025-05-20 (+2d) | 2025-12-24 → 2027-01-04 (+376d) |  |  |  |
| 1 | **Main Line Sections** | 2025-05-18 → 2025-05-20 (+2d) | 2025-06-16 → 2025-06-29 (+13d) |  |  |  |
| PRO-R15-SW-DL-100 | Material Delivery & Site Inspection of Main Line Pipes for Sewage Network | 2025-05-27 → 2025-05-20 A (-7d) | 2025-06-16 → 2025-05-29 A (-18d) | 0% → 100% | 25d → none | resources Pro Engineer [312.12 h]; Nominal bore : 160mm; Depth : 0.0m - 1.5m; Nominal bore : 200mm; Depth : 0.0m - 1.5m; Nominal bore : 200mm; Depth : 1.5m - 2.5m; Nominal bore : 200mm; Depth : 2.5m - 3.5m; Nominal bore : 200mm; Depth : 3.5m - 4.5m; Nominal bore : 200mm; Depth : 4.5m -5.5m; Nominal bore : 200mm; Depth : 5.5m - 6.5m → Nominal bore : 160mm; Depth : 0.0m - 1.5m [94]; Nominal bore : 200mm; Depth : 0.0m - 1.5m [27.42]; Nominal bore : 200mm; Depth : 1.5m - 2.5m [70.64]; Nominal bore : 200mm; Depth : 2.5m - 3.5m [161.04]; Nominal bore : 200mm; Depth : 3.5m - 4.5m [151.16]; Nominal bore : 200mm; Depth : 4.5m -5.5m [111.26]; Nominal bore : 200mm; Depth : 5.5m - 6.5m [80.78] |
| PRO-R15-SW-DL-110 | Material Delivery & Site Inspection of Manholes for Sewage Network | 2025-05-18 → 2025-06-05 A (+18d) | 2025-06-03 → 2025-06-29 A (+26d) | 0% → 100% | 32d → none | resources Pro Engineer [312.12 h]; Depth: not exceeding 1.5m; Depth: 1.5 - 2.5m; Depth: 2.5 - 3.5m; Depth: 3.5 - 4.5m; Depth: 5.5 - 6.5m; Depth:6.5 - 7.5m → Depth: not exceeding 1.5m [4]; Depth: 1.5 - 2.5m [7]; Depth: 2.5 - 3.5m [2]; Depth: 3.5 - 4.5m [1]; Depth: 5.5 - 6.5m [3]; Depth:6.5 - 7.5m [2] |
| 3 | **Testing and Finishes** | 2025-10-26 → 2026-12-06 (+406d) | 2025-12-24 → 2027-01-04 (+376d) |  |  |  |
| PRO-R15-SW-DL-120 | Material Delivery & Site Inspection of Manholes Covers for Sewage Network | 2025-10-26 → 2026-12-06 (+406d) | 2025-11-24 → 2027-01-04 (+406d) |  | 159d → -181d | resources Pro Engineer [44.04 h] → none |
| PRO-R15-SW-DL-130 | Material Delivery & Site Inspection of Membrane Insulation for Sewage Network | 2025-11-25 → 2026-12-06 (+376d) | 2025-12-24 → 2027-01-04 (+376d) |  | 136d → -178d | resources Pro Engineer [44.04 h] → none |
| 4 | **Road 10 Local 2 ( 2352 LM )** | 2025-06-04 → 2025-05-21 (-14d) | 2026-01-24 → 2027-02-03 (+375d) |  |  |  |
| 1 | **Main Line Sections** | 2025-06-04 → 2025-05-21 (-14d) | 2025-07-02 → 2025-06-04 (-28d) |  |  |  |
| PRO-R10-SW-DL-100 | Material Delivery & Site Inspection of Main Line Pipes for Sewage Network | 2025-06-17 → 2025-05-21 A (-27d) | 2025-07-02 → 2025-06-02 A (-30d) | 0% → 100% | 39d → none | resources Pro Engineer [312.12 h]; Depth : 1.5 - 2.5m; Depth : 2.5 - 3.5m; Depth : 3.5 - 4.5m; Depth : 5.5 - 6.5m; Depth : 6.5 -7.5m; Depth :more than 7.5m → Depth : 1.5 - 2.5m [150]; Depth : 2.5 - 3.5m [88.87]; Depth : 3.5 - 4.5m [88.87]; Depth : 5.5 - 6.5m [500]; Depth : 6.5 -7.5m [400]; Depth : 6.5 -7.5m [150]; Depth :more than 7.5m [100] |
| PRO-R10-SW-DL-110 | Material Delivery & Site Inspection of Manholes for Sewage Network | 2025-06-04 → 2025-05-22 A (-13d) | 2025-06-25 → 2025-06-04 A (-21d) | 0% → 100% | 47d → none | resources Pro Engineer [312.12 h]; Depth: 1.5 - 2.5m; Depth: 2.5 - 3.5m; Depth: 3.5 - 4.5m; Depth: 4.5 - 5.5m; Depth: 5.5 - 6.5m; Depth:6.5 - 7.5m; Depth: more than 7.5m → Depth: 1.5 - 2.5m [4]; Depth: 2.5 - 3.5m [10]; Depth: 3.5 - 4.5m [1]; Depth: 4.5 - 5.5m [2]; Depth: 5.5 - 6.5m [3]; Depth:6.5 - 7.5m [4]; Depth: more than 7.5m [1] |
| 3 | **Testing and Finishes** | 2025-11-25 → 2027-01-05 (+406d) | 2026-01-24 → 2027-02-03 (+375d) |  |  |  |
| PRO-R10-SW-DL-120 | Material Delivery & Site Inspection of Manholes Covers for Sewage Network | 2025-11-25 → 2027-01-05 (+406d) | 2025-12-24 → 2027-02-03 (+406d) |  | 159d → -181d | resources Pro Engineer [44.04 h] → none |
| PRO-R10-SW-DL-130 | Material Delivery & Site Inspection of Membrane Insulation for Sewage Network | 2025-12-25 → 2027-01-05 (+376d) | 2026-01-24 → 2027-02-03 (+375d) |  | 136d → -178d | resources Pro Engineer [44.04 h] → none |
| 6 | **Road 14 Local 1 ( 584 LM )** | 2025-06-26 → 2025-06-03 (-23d) | 2026-02-23 → 2027-03-07 (+377d) |  |  |  |
| 1 | **Main Line Sections** | 2025-06-26 → 2025-06-03 (-23d) | 2025-07-19 → 2025-06-26 (-23d) |  |  |  |
| PRO-R14-SW-DL-100 | Material Delivery & Site Inspection of Main Line Pipes for Sewage Network | 2025-07-03 → 2025-06-03 A (-30d) | 2025-07-19 → 2025-06-20 A (-29d) | 0% → 100% | 55d → none | resources Pro Engineer [312.12 h]; Nominal bore : 160mm; Depth : 0.0m - 1.5m; Nominal bore : 200mm; Depth : 0.0m - 1.5m; Nominal bore : 200mm; Depth : 1.5m - 2.5m; Nominal bore : 200mm; Depth : 2.5m - 3.5m; Nominal bore : 200mm; Depth : 3.5m - 4.5m; Nominal bore : 200mm; Depth : 4.5m -5.5m; Nominal bore : 200mm; Depth : 5.5m - 6.5m → Nominal bore : 160mm; Depth : 0.0m - 1.5m [72]; Nominal bore : 200mm; Depth : 0.0m - 1.5m [117.36]; Nominal bore : 200mm; Depth : 1.5m - 2.5m [120.8]; Nominal bore : 200mm; Depth : 2.5m - 3.5m [200.08]; Nominal bore : 200mm; Depth : 3.5m - 4.5m [197.84]; Nominal bore : 200mm; Depth : 4.5m -5.5m [122.88]; Nominal bore : 200mm; Depth : 5.5m - 6.5m [166.56] |
| PRO-R14-SW-DL-110 | Material Delivery & Site Inspection of Manholes for Sewage Network | 2025-06-26 → 2025-06-05 A (-21d) | 2025-07-13 → 2025-06-26 A (-17d) | 0% → 100% | 62d → none | resources Pro Engineer [312.12 h]; Depth: not exceeding 1.5m; Depth: 1.5 - 2.5m; Depth: 3.5 - 4.5m; Depth: 4.5 - 5.5m; Depth: 5.5 - 6.5m; Depth:6.5 - 7.5m → Depth: not exceeding 1.5m [4]; Depth: 1.5 - 2.5m [6]; Depth: 3.5 - 4.5m [1]; Depth: 4.5 - 5.5m [1]; Depth: 5.5 - 6.5m [2]; Depth:6.5 - 7.5m [1] |
| 3 | **Testing and Finishes** | 2025-12-25 → 2027-02-04 (+406d) | 2026-02-23 → 2027-03-07 (+377d) |  |  |  |
| PRO-R14-SW-DL-120 | Material Delivery & Site Inspection of Manholes Covers for Sewage Network | 2025-12-25 → 2027-02-04 (+406d) | 2026-01-24 → 2027-03-07 (+407d) |  | 159d → -181d | resources Pro Engineer [44.04 h] → none |
| PRO-R14-SW-DL-130 | Material Delivery & Site Inspection of Membrane Insulation for Sewage Network | 2026-01-25 → 2027-02-04 (+375d) | 2026-02-23 → 2027-03-07 (+377d) |  | 136d → -178d | resources Pro Engineer [44.04 h] → none |
| 2 | **Road 09 Local 2 ( 2278 LM )** | 2025-03-26 → 2025-05-10 (+45d) | 2025-09-07 → 2026-11-18 (+437d) |  |  |  |
| 1 | **Main Line Sections** | 2025-03-26 → 2025-05-10 (+45d) | 2025-04-10 → 2025-06-01 (+52d) |  |  |  |
| PRO-R09-SW-DL-110 | Material Delivery & Site Inspection of Manholes for Rising Main Network | 2025-03-27 → 2025-05-10 A (+44d) | 2025-04-08 → 2025-06-01 A (+54d) | 0% → 100% | 114d → none | resources Pro Engineer [312.12 h]; Depth: 1.5 - 2.5m; Depth: 3.5 - 4.5m; Depth: 4.5 - 5.5m; Depth:6.5 - 7.5m; Depth: more than 7.5m; Depth: 2.5 - 3.5m; Depth: 5.5 - 6.5m → Depth: 1.5 - 2.5m [8]; Depth: 3.5 - 4.5m [2]; Depth: 4.5 - 5.5m [3]; Depth:6.5 - 7.5m [7]; Depth: more than 7.5m [2]; Depth: 2.5 - 3.5m [5]; Depth: 3.5 - 4.5m [3]; Depth: 4.5 - 5.5m [2]; Depth: 5.5 - 6.5m [2] |
| PRO-R09-SW-DL-100 | Material Delivery & Site Inspection of Main Line Pipes for Rising Main Network | 2025-03-26 → 2025-05-14 A (+49d) | 2025-04-10 → 2025-05-29 A (+49d) | 0% → 100% | 107d → none | resources Pro Engineer [312.12 h]; Nominal bore : 160mm; Depth : 1.5m - 2.5m; Nominal bore : 200mm; Depth : 0.0m - 1.5m; Nominal bore : 200mm; Depth : 1.5m - 2.5m; Nominal bore : 200mm; Depth : 2.5m - 3.5m; Nominal bore : 200mm; Depth : 3.5m - 4.5m; Nominal bore : 200mm; Depth : 4.5m -5.5m; Nominal bore : 200mm; Depth : 5.5m - 6.5m; Nominal bore : 250mm; Depth : 4.5m -5.5m; Nominal bore : 250mm; Depth : 5.5m - 6.5m; Nominal bore : 315mm; Depth : 4.5m -5.5m; Nominal bore : 315mm; Depth : 6.5m - 7.5m; Depth : 6.5 -7.5m; Depth :more than 7.5m → Nominal bore : 160mm; Depth : 1.5m - 2.5m [200]; Nominal bore : 200mm; Depth : 0.0m - 1.5m [109.83]; Nominal bore : 200mm; Depth : 1.5m - 2.5m [301.62]; Nominal bore : 200mm; Depth : 2.5m - 3.5m [441]; Nominal bore : 200mm; Depth : 3.5m - 4.5m [510.14]; Nominal bore : 200mm; Depth : 4.5m -5.5m [251.92]; Nominal bore : 200mm; Depth : 5.5m - 6.5m [326.76]; Nominal bore : 250mm; Depth : 4.5m -5.5m [220]; Nominal bore : 250mm; Depth : 5.5m - 6.5m [180]; Nominal bore : 315mm; Depth : 4.5m -5.5m [180]; Nominal bore : 315mm; Depth : 6.5m - 7.5m [200]; Depth : 6.5 -7.5m [250]; Depth :more than 7.5m [600] |
| 3 | **Testing and Finishes** | 2025-07-26 → 2026-10-06 (+437d) | 2025-09-07 → 2026-11-18 (+437d) |  |  |  |
| PRO-R09-SW-DL-120 | Material Delivery & Site Inspection of Manholes Covers for Rising Main Network | 2025-07-26 → 2026-10-06 (+437d) | 2025-09-07 → 2026-11-18 (+437d) |  | 296d → -70d | resources Pro Engineer [44.04 h] → none |
| PRO-R09-SW-DL-130 | Material Delivery & Site Inspection of Membrane Insulation for Rising Main Network | 2025-07-26 → 2026-10-06 (+437d) | 2025-09-07 → 2026-11-18 (+437d) |  | 312d → -54d | resources Pro Engineer [44.04 h] → none |
| 5 | **Road 11 Local 1 ( 670 LM )** | 2025-07-14 → 2025-05-06 (-69d) | 2026-03-29 → 2027-04-10 (+377d) |  |  |  |
| 1 | **Main Line Sections** | 2025-07-14 → 2025-05-06 (-69d) | 2025-08-04 → 2025-06-01 (-64d) |  |  |  |
| PRO-R11-SW-DL-100 | Material Delivery & Site Inspection of Main Line Pipes for Sewage Network | 2025-07-20 → 2025-05-06 A (-75d) | 2025-08-04 → 2025-05-29 A (-67d) | 0% → 100% | 61d → none | resources Pro Engineer [312.12 h]; Nominal bore : 160mm; Depth : 1.5m - 2.5m; Nominal bore : 200mm; Depth : 0.0m - 1.5m; Nominal bore : 200mm; Depth : 1.5m - 2.5m; Nominal bore : 200mm; Depth : 2.5m - 3.5m; Nominal bore : 200mm; Depth : 3.5m - 4.5m; Nominal bore : 200mm; Depth : 4.5m -5.5m; Nominal bore : 200mm; Depth : 5.5m - 6.5m; Depth : 1.5 - 2.5m; Depth : 2.5 - 3.5m; Depth : 3.5 - 4.5m; Depth : 4.5 - 5.5m; Depth : 5.5 - 6.5m; Depth : 6.5 -7.5m; Depth :more than 7.5m → Nominal bore : 160mm; Depth : 1.5m - 2.5m [150]; Nominal bore : 200mm; Depth : 0.0m - 1.5m [67.09]; Nominal bore : 200mm; Depth : 1.5m - 2.5m [98.17]; Nominal bore : 200mm; Depth : 2.5m - 3.5m [76.14]; Nominal bore : 200mm; Depth : 3.5m - 4.5m [197.31]; Nominal bore : 200mm; Depth : 4.5m -5.5m [74.16]; Nominal bore : 200mm; Depth : 5.5m - 6.5m [155.21]; Depth : 1.5 - 2.5m [50]; Depth : 2.5 - 3.5m [61.13]; Depth : 3.5 - 4.5m [61.13]; Depth : 4.5 - 5.5m [100]; Depth : 5.5 - 6.5m [100]; Depth : 6.5 -7.5m [300]; Depth : 6.5 -7.5m [350]; Depth :more than 7.5m [700] |
| PRO-R11-SW-DL-110 | Material Delivery & Site Inspection of Manholes for Sewage Network | 2025-07-14 → 2025-05-19 A (-56d) | 2025-07-30 → 2025-06-01 A (-59d) | 0% → 100% | 67d → none | resources Pro Engineer [312.12 h]; Depth: not exceeding 1.5m; Depth: 1.5 - 2.5m; Depth: 2.5 - 3.5m; Depth: 3.5 - 4.5m; Depth: 4.5 - 5.5m; Depth: 5.5 - 6.5m; Depth:6.5 - 7.5m → Depth: not exceeding 1.5m [2]; Depth: 1.5 - 2.5m [6]; Depth: 2.5 - 3.5m [2]; Depth: 3.5 - 4.5m [1]; Depth: 4.5 - 5.5m [1]; Depth: 5.5 - 6.5m [4]; Depth:6.5 - 7.5m [3] |
| 3 | **Testing and Finishes** | 2026-01-25 → 2027-03-08 (+407d) | 2026-03-29 → 2027-04-10 (+377d) |  |  |  |
| PRO-R11-SW-DL-120 | Material Delivery & Site Inspection of Manholes Covers for Sewage Network | 2026-01-25 → 2027-03-08 (+407d) | 2026-02-23 → 2027-04-10 (+411d) |  | 159d → -181d | resources Pro Engineer [44.04 h] → none |
| PRO-R11-SW-DL-130 | Material Delivery & Site Inspection of Membrane Insulation for Sewage Network | 2026-02-24 → 2027-03-08 (+377d) | 2026-03-29 → 2027-04-10 (+377d) |  | 136d → -178d | resources Pro Engineer [44.04 h] → none |
| SD | **Storm Drainage Network** |  | 2026-03-29 → 2027-01-16 (+293d) |  |  |  |
| MF | **Manufacturing of Material** |  | 2025-07-17 → 2025-07-13 (-4d) |  |  |  |
| 1 | **Main Line Sections** |  | 2025-04-22 → 2025-05-13 (+21d) |  |  |  |
| PRO-SD-MF-100 | Manufacturing of Materials for Manholes of Storm Drainage Network | 2025-02-18 A | 2025-04-22 → 2025-05-13 A (+21d) | 0% → 100% | 79d → none | resources Pro Engineer [312.12 h] → none |
| PRO-SD-MF-110 | Manufacturing of Materials for Main Line Pipes of Storm Drainage Network | 2025-02-18 A | 2025-04-10 → 2025-05-11 A (+31d) | 0% → 100% | 26d → none | resources Pro Engineer [312.12 h] → none |
| 2 | **Catch Basin Sections** |  | 2025-04-22 → 2025-07-13 (+82d) |  |  |  |
| PRO-SD-MF-130 | Manufacturing of Materials for Catch Basins of Storm Drainage Network | 2025-02-18 A | 2025-04-22 → 2025-05-15 A (+23d) | 0% → 100% | 91d → none | resources Pro Engineer [312.12 h] → none |
| PRO-SD-MF-150 | Manufacturing of Materials for Catch Basin Pipes of Storm Drainage Network | 2025-02-18 A | 2025-04-22 → 2025-07-13 A (+82d) | 0% → 100% | 93d → none | resources Pro Engineer [312.12 h] → none |
| 3 | **Testing and Finishes** |  | 2025-07-17 → 2025-05-29 (-49d) |  |  |  |
| PRO-SD-MF-120 | Manufacturing of Materials for Manhole Covers of Storm Drainage Network | 2025-02-18 A | 2025-07-17 → 2025-05-27 A (-51d) | 0% → 100% | 126d → none | resources Pro Engineer [312.12 h] → none |
| PRO-SD-MF-140 | Manufacturing of Materials for Catch Basin Covers of Storm Drainage Network | 2025-02-18 A | 2025-07-17 → 2025-05-29 A (-49d) | 0% → 100% | 134d → none | resources Pro Engineer [312.12 h] → none |
| PRO-SD-MF-160 | Manufacturing of Materials for Epoxy Insulation of Storm Drainage Network | 2025-02-18 A | 2025-07-17 → 2025-05-28 A (-50d) | 0% → 100% | 146d → none | resources Pro Engineer [312.12 h] → none |
| PRO-SD-PO-100 | Issuance of Purchase Order for Manholes of Storm Drainage Network | 2025-02-11 A | 2025-02-17 A | 0% → 100% | 79d → none | resources Pro Engineer [312.12 h] → none |
| PRO-SD-PO-110 | Issuance of Purchase Order for Main Line Pipes of Storm Drainage Network | 2025-02-11 A | 2025-02-17 A | 0% → 100% | 26d → none | resources Pro Engineer [312.12 h] → none |
| PRO-SD-PO-130 | Issuance of Purchase Order for Catch Basins of Storm Drainage Network | 2025-02-11 A | 2025-02-17 A | 0% → 100% | 91d → none | resources Pro Engineer [312.12 h] → none |
| PRO-SD-PO-150 | Issuance of Purchase Order for Catch Basin Pipes of Storm Drainage Network | 2025-02-11 A | 2025-02-17 A | 0% → 100% | 93d → none | resources Pro Engineer [312.12 h] → none |
| PRO-SD-PO-120 | Issuance of Purchase Order for Manhole Covers of Storm Drainage Network | 2025-02-11 A | 2025-02-17 A | 0% → 100% | 94d → none | resources Pro Engineer [312.12 h] → none |
| PRO-SD-PO-140 | Issuance of Purchase Order for Catch Basin Covers of Storm Drainage Network | 2025-02-11 A | 2025-02-17 A | 0% → 100% | 94d → none | resources Pro Engineer [312.12 h] → none |
| PRO-SD-PO-160 | Issuance of Purchase Order for Epoxy Insulation of Storm Drainage Network | 2025-02-11 A | 2025-02-17 A | 0% → 100% | 94d → none | resources Pro Engineer [312.12 h] → none |
| 1DL | **1st Material Delivery & Site Inspection** | 2025-04-12 → 2025-04-29 (+17d) | 2025-07-24 → 2026-06-30 (+341d) |  |  |  |
| 1 | **Main Line Sections** | 2025-04-12 → 2025-04-29 (+17d) | 2025-04-29 → 2025-05-29 (+30d) |  |  |  |
| PRO-SD-1DL-110 | 1ST Material Delivery for Main Line Pipes of Storm Drainage Network | 2025-04-12 → 2025-04-29 A (+17d) | 2025-04-17 → 2025-04-30 A (+13d) | 0% → 100% | 26d → none | resources Pro Engineer [312.12 h] → none |
| PRO-SD-1DL-100 | 1ST Material Delivery for Manholes of Storm Drainage Network | 2025-04-23 → 2025-05-20 A (+27d) | 2025-04-29 → 2025-05-29 A (+30d) | 0% → 100% | 79d → none | resources Pro Engineer [312.12 h] → none |
| 2 | **Catch Basin Sections** | 2025-04-23 → 2025-05-12 (+19d) | 2025-04-29 → 2025-05-31 (+32d) |  |  |  |
| PRO-SD-1DL-120 | 1ST Material Delivery for Catch Basin Pipes of Storm Drainage Network | 2025-04-23 → 2025-05-12 A (+19d) | 2025-04-29 → 2025-05-20 A (+21d) | 0% → 100% | 93d → none | resources Pro Engineer [312.12 h] → none |
| PRO-SD-1DL-130 | 1ST Material Delivery for Catch Basins of Storm Drainage Network | 2025-04-23 → 2025-05-25 A (+32d) | 2025-04-29 → 2025-05-31 A (+32d) | 0% → 100% | 91d → none | resources Pro Engineer [312.12 h] → none |
| 3 | **Testing and Finishes** | 2025-07-19 → 2026-06-24 (+340d) | 2025-07-24 → 2026-06-30 (+341d) |  |  |  |
| PRO-SD-1DL-140 | 1ST Material Delivery for Manholes Covers of Storm Drainage Network | 2025-07-19 → 2026-06-24 A (+340d) | 2025-07-24 → 2026-06-30 A (+341d) | 0% → 100% | 126d → none | resources Pro Engineer [312.12 h] → none |
| PRO-SD-1DL-150 | 1ST Material Delivery for Catch Basin Covers of Storm Drainage Network | 2025-07-19 → 2026-06-24 A (+340d) | 2025-07-24 → 2026-06-30 A (+341d) | 0% → 100% | 134d → none | resources Pro Engineer [312.12 h] → none |
| PRO-SD-1DL-160 | 1ST Material Delivery for Epoxy Insulation of Storm Drainage Network | 2025-07-19 → 2026-06-24 A (+340d) | 2025-07-24 → 2026-06-30 A (+341d) | 0% → 100% | 146d → none | resources Pro Engineer [312.12 h] → none |
| DL | **Material Delivery & Site Inspection** | 2025-04-19 → 2025-05-01 (+12d) | 2026-03-29 → 2027-01-16 (+293d) |  |  |  |

| ID | Task | Start | Finish | Duration | Complete | Total float | Predecessors | Other |
| --- | --- | --- | --- | --- | --- | --- | --- | --- |
| 1 | **Road 18 Local 1 ( 479 LM )** | 2025-04-19 → 2025-05-01 (+12d) | 2025-08-24 → 2026-10-17 (+419d) |  |  |  |  |  |
| 1 | **Main Line Sections** | 2025-04-19 → 2025-05-01 (+12d) | 2025-05-22 → 2025-05-29 (+7d) |  |  |  |  |  |
| PRO-R18-SD-DL-180 | Material Delivery & Site Inspection of Main Line Pipes of Storm Drainage Network | 2025-04-19 → 2025-05-01 A (+12d) | 2025-05-07 → 2025-05-29 A (+22d) |  | 0% → 100% | 26d → none |  | resources Pro Engineer [312.12 h]; Pipe with diameter 400mm ; depth: 0.0m - 1.5m; Pipe with diameter 400mm ; depth: 1.51m - 2.5m; Pipe with diameter 500mm ; depth: 1.51m - 2.5m; Pipe with diameter 600mm ; depth: 1.51m - 2.5m; Pipe with diameter 700mm ; depth: 1.51m - 2.5m; Pipe with diameter 800mm ; depth: 1.51m - 2.5m; Pipe with diameter 900mm ; depth: 1.51m - 2.5m; Pipe with diameter 900mm ; depth: 2.51 - 3.5m; Pipe with diameter 1000mm ; depth: 1.51m - 2.5m; Pipe with diameter 1000mm ; depth: 2.51 - 3.5m → Pipe with diameter 400mm ; depth: 0.0m - 1.5m [244.27]; Pipe with diameter 400mm ; depth: 1.51m - 2.5m [259.7]; Pipe with diameter 500mm ; depth: 1.51m - 2.5m [401.91]; Pipe with diameter 600mm ; depth: 1.51m - 2.5m [96.5]; Pipe with diameter 700mm ; depth: 1.51m - 2.5m [377.12]; Pipe with diameter 800mm ; depth: 1.51m - 2.5m [150.46]; Pipe with diameter 900mm ; depth: 1.51m - 2.5m [157.67]; Pipe with diameter 900mm ; depth: 2.51 - 3.5m [57]; Pipe with diameter 1000mm ; depth: 1.51m - 2.5m [70]; Pipe with diameter 1000mm ; depth: 2.51 - 3.5m [70] |
| PRO-R18-SD-DL-170 | Material Delivery & Site Inspection of Manholes of Storm Drainage Network | 2025-04-30 → 2025-05-11 A (+11d) | 2025-05-22 → 2025-05-24 A (+2d) |  | 0% → 100% | 79d → none |  | resources Pro Engineer [312.12 h]; MH ; depth: 0.0m - 1.5m; MH ; depth: 1.51m - 2.5m; MH ; depth: 2.51 - 3.5m → MH ; depth: 0.0m - 1.5m [2]; MH ; depth: 1.51m - 2.5m [4]; MH ; depth: 1.51m - 2.5m [6]; MH ; depth: 1.51m - 2.5m [2]; MH ; depth: 2.51 - 3.5m [2] |
| 2 | **Catch Basin Sections** | 2025-04-30 → 2025-05-21 (+21d) | 2025-05-29 → 2025-05-31 (+2d) |  |  |  |  |  |
| PRO-R18-SD-DL-200 | Material Delivery & Site Inspection of Catch Basins for Storm Drainage Network | 2025-04-30 → 2025-05-21 A (+21d) | 2025-05-29 → 2025-05-31 A (+2d) |  | 0% → 100% | 91d → none |  | resources Pro Engineer [312.12 h]; Pipe with diameter 300mm ; depth: 0 - 1.5m; Pipe with diameter 400mm ; depth: 0 - 1.5m; Single Catch basin; Double Catch basin → Pipe with diameter 300mm ; depth: 0 - 1.5m [553.74]; Pipe with diameter 400mm ; depth: 0 - 1.5m [33.76]; Single Catch basin [22]; Double Catch basin [10] |
| PRO-R18-SD-DL-220 | Material Delivery & Site Inspection of Catch Basin Pipes for Storm Drainage Network | 2025-04-30 → 2025-05-21 A (+21d) | 2025-05-29 A |  | 0% → 100% | 93d → none |  | resources Pro Engineer [312.12 h] → none |
| 3 | **Testing and Finishes** | 2025-07-26 → 2026-06-27 (+336d) | 2025-08-24 → 2026-10-17 (+419d) |  |  |  |  |  |
| PRO-R18-SD-DL-190 | Material Delivery & Site Inspection of Manholes Covers for Storm Drainage Network | 2025-07-26 → 2026-06-27 A (+336d) | 2025-08-24 → 2026-10-17 (+419d) |  |  | 126d → -120d |  | resources Pro Engineer [44.04 h] → none |
| PRO-R18-SD-DL-210 | Material Delivery & Site Inspection of Catch Basin Covers for Storm Drainage Network | 2025-07-26 → 2026-06-27 A (+336d) | 2025-08-24 → 2026-10-17 (+419d) |  |  | 134d → -106d |  | resources Pro Engineer [44.04 h] → none |
| PRO-R18-SD-DL-230 | Material Delivery & Site Inspection of Epoxy Insulation for Storm Drainage Network | 2025-07-26 → 2026-06-27 A (+336d) | 2025-08-24 → 2026-10-17 (+419d) |  |  | 146d → -94d |  | resources Pro Engineer [44.04 h] → none |
| 9 | **Road 17 Local 1 ( 500 LM )** | 2025-05-08 → 2025-05-15 (+7d) | 2025-09-24 → 2026-10-28 (+399d) |  |  |  |  |  |
| 1 | **Main Line Sections** | 2025-05-08 → 2025-05-15 (+7d) | 2025-06-19 → 2025-05-29 (-21d) |  |  |  |  |  |
| PRO-R17-SD-DL-120 | Material Delivery & Site Inspection of Main Line Pipes of Storm Drainage Network | 2025-05-08 → 2025-05-15 A (+7d) | 2025-05-27 → 2025-05-29 A (+2d) |  | 0% → 100% | 26d → none |  | resources Pro Engineer [312.12 h]; Pipe with diameter 400mm ; depth: 0.0m - 1.5m; Pipe with diameter 400mm ; depth: 1.51m - 2.5m; Pipe with diameter 500mm ; depth: 1.51m - 2.5m; Pipe with diameter 600mm ; depth: 1.51m - 2.5m; Pipe with diameter 700mm ; depth: 1.51m - 2.5m; Pipe with diameter 800mm ; depth: 1.51m - 2.5m; Pipe with diameter 900mm ; depth: 1.51m - 2.5m; Pipe with diameter 1000mm ; depth: 1.51m - 2.5m; Pipe with diameter 1000mm ; depth: 2.51 - 3.5m → Pipe with diameter 400mm ; depth: 0.0m - 1.5m [148.29]; Pipe with diameter 400mm ; depth: 1.51m - 2.5m [437.28]; Pipe with diameter 500mm ; depth: 1.51m - 2.5m [292.44]; Pipe with diameter 600mm ; depth: 1.51m - 2.5m [191.98]; Pipe with diameter 700mm ; depth: 1.51m - 2.5m [357.82]; Pipe with diameter 800mm ; depth: 1.51m - 2.5m [160.31]; Pipe with diameter 900mm ; depth: 1.51m - 2.5m [22.85]; Pipe with diameter 1000mm ; depth: 1.51m - 2.5m [61]; Pipe with diameter 1000mm ; depth: 2.51 - 3.5m [61] |
| PRO-R17-SD-DL-100 | Material Delivery & Site Inspection of Manholes of Storm Drainage Network | 2025-05-24 → 2025-05-17 A (-7d) | 2025-06-19 → 2025-05-27 A (-23d) |  | 0% → 100% | 248.25d → none |  | resources Pro Engineer [312.12 h]; MH ; depth: 0.0m - 1.5m; MH ; depth: 1.51m - 2.5m; MH ; depth: 2.51 - 3.5m → MH ; depth: 0.0m - 1.5m [2]; MH ; depth: 1.51m - 2.5m [4]; MH ; depth: 2.51 - 3.5m [1]; MH ; depth: 1.51m - 2.5m [2] |
| 2 | **Catch Basin Sections** | 2025-05-31 → 2025-05-19 (-12d) | 2025-07-03 → 2025-05-31 (-33d) |  |  |  |  |  |
| PRO-R17-SD-DL-130 | Material Delivery & Site Inspection of Catch Basins for Storm Drainage Network | 2025-05-31 → 2025-05-19 A (-12d) | 2025-07-03 → 2025-05-31 A (-33d) |  | 0% → 100% | 91d → none |  | resources Pro Engineer [312.12 h]; Pipe with diameter 300mm ; depth: 0 - 1.5m; Pipe with diameter 400mm ; depth: 0 - 1.5m; Single Catch basin; Double Catch basin → Pipe with diameter 300mm ; depth: 0 - 1.5m [527.76]; Pipe with diameter 400mm ; depth: 0 - 1.5m [32.18]; Single Catch basin [20]; Double Catch basin [6] |
| PRO-R17-SD-DL-110 | Material Delivery & Site Inspection of Catch Basin Pipes for Storm Drainage Network | 2025-05-31 → 2025-05-22 A (-9d) | 2025-07-03 → 2025-05-29 A (-35d) |  | 0% → 100% | 106d → none |  | resources Pro Engineer [312.12 h] → none |
| 3 | **Testing and Finishes** | 2025-08-25 → 2026-06-20 (+299d) | 2025-09-24 → 2026-10-28 (+399d) |  |  |  |  |  |
| PRO-R17-SD-DL-140 | Material Delivery & Site Inspection of Manholes Covers for Storm Drainage Network | 2025-08-25 → 2026-06-20 A (+299d) | 2025-09-24 → 2026-10-28 (+399d) |  |  | 126d → -120d |  | resources Pro Engineer [44.04 h] → none |
| PRO-R17-SD-DL-150 | Material Delivery & Site Inspection of Catch Basin Covers for Storm Drainage Network | 2025-08-25 → 2026-06-20 A (+299d) | 2025-09-24 → 2026-10-28 (+399d) |  |  | 134d → -106d |  | resources Pro Engineer [44.04 h] → none |
| PRO-R17-SD-DL-160 | Material Delivery & Site Inspection of Epoxy Insulation for Storm Drainage Network | 2025-08-25 → 2026-06-20 A (+299d) | 2025-09-24 → 2026-10-28 (+399d) |  |  | 146d → -94d |  | resources Pro Engineer [85.07 h] → none |
| 8 | **Road 16 Local 1 ( 527 LM )** | 2025-05-28 → 2025-05-20 (-8d) | 2025-10-25 → 2026-11-16 (+387d) |  |  |  |  |  |
| 1 | **Main Line Sections** | 2025-05-28 → 2025-05-20 (-8d) | 2025-07-13 → 2025-06-01 (-42d) |  |  |  |  |  |
| PRO-R16-SD-DL-100 | Material Delivery & Site Inspection of Manholes of Storm Drainage Network | 2025-06-21 → 2025-05-20 A (-32d) | 2025-07-13 → 2025-05-28 A (-46d) |  | 0% → 100% | 248.25d → none |  | resources Pro Engineer [312.12 h]; MH ; depth: 0.0m - 1.5m; MH ; depth: 1.51m - 2.5m; MH ; depth: 2.51 - 3.5m → MH ; depth: 0.0m - 1.5m [2]; MH ; depth: 1.51m - 2.5m [4]; MH ; depth: 1.51m - 2.5m [2]; MH ; depth: 2.51 - 3.5m [1] |
| PRO-R16-SD-DL-120 | Material Delivery & Site Inspection of Main Line Pipes of Storm Drainage Network | 2025-05-28 → 2025-05-20 A (-8d) | 2025-06-21 → 2025-06-01 A (-20d) |  | 0% → 100% | 26d → none |  | resources Pro Engineer [312.12 h]; Pipe with diameter 400mm ; depth: 0.0m - 1.5m; Pipe with diameter 400mm ; depth: 1.51m - 2.5m; Pipe with diameter 500mm ; depth: 1.51m - 2.5m; Pipe with diameter 600mm ; depth: 1.51m - 2.5m; Pipe with diameter 700mm ; depth: 1.51m - 2.5m; Pipe with diameter 800mm ; depth: 1.51m - 2.5m; Pipe with diameter 900mm ; depth: 1.51m - 2.5m; Pipe with diameter 1000mm ; depth: 1.51m - 2.5m; Pipe with diameter 1000mm ; depth: 2.51 - 3.5m → Pipe with diameter 400mm ; depth: 0.0m - 1.5m [216.53]; Pipe with diameter 400mm ; depth: 1.51m - 2.5m [197.85]; Pipe with diameter 500mm ; depth: 1.51m - 2.5m [382.97]; Pipe with diameter 600mm ; depth: 1.51m - 2.5m [87.24]; Pipe with diameter 700mm ; depth: 1.51m - 2.5m [190.66]; Pipe with diameter 800mm ; depth: 1.51m - 2.5m [82.86]; Pipe with diameter 900mm ; depth: 1.51m - 2.5m [22.62]; Pipe with diameter 1000mm ; depth: 1.51m - 2.5m [70]; Pipe with diameter 1000mm ; depth: 2.51 - 3.5m [150] |
| 2 | **Catch Basin Sections** | 2025-07-05 → 2025-05-21 (-45d) | 2025-08-03 → 2025-06-01 (-63d) |  |  |  |  |  |
| PRO-R16-SD-DL-110 | Material Delivery & Site Inspection of Catch Basin Pipes for Storm Drainage Network | 2025-07-05 → 2025-05-21 A (-45d) | 2025-08-03 → 2025-05-31 A (-64d) |  | 0% → 100% | 106d → none |  | resources Pro Engineer [312.12 h] → none |
| PRO-R16-SD-DL-130 | Material Delivery & Site Inspection of Catch Basins for Storm Drainage Network | 2025-07-05 → 2025-05-26 A (-40d) | 2025-08-03 → 2025-06-01 A (-63d) |  | 0% → 100% | 91d → none |  | resources Pro Engineer [312.12 h]; Pipe with diameter 300mm ; depth: 0 - 1.5m; Pipe with diameter 400mm ; depth: 0 - 1.5m; Single Catch basin; Double Catch basin → Pipe with diameter 300mm ; depth: 0 - 1.5m [501.8]; Pipe with diameter 400mm ; depth: 0 - 1.5m [30.6]; Single Catch basin [20]; Double Catch basin [10] |
| 3 | **Testing and Finishes** | 2025-09-25 → 2026-10-18 (+388d) | 2025-10-25 → 2026-11-16 (+387d) |  |  |  |  |  |
| PRO-R16-SD-DL-140 | Material Delivery & Site Inspection of Manholes Covers for Storm Drainage Network | 2025-09-25 → 2026-10-18 (+388d) | 2025-10-25 → 2026-11-16 (+387d) |  |  | 126d → -120d | PRO-SD-1DL-140, PRO-R17-SD-DL-140 → PRO-SD-1DL-140, PRO-R17-SD-DL-140 SS | resources Pro Engineer [44.04 h] → none |
| PRO-R16-SD-DL-150 | Material Delivery & Site Inspection of Catch Basin Covers for Storm Drainage Network | 2025-09-25 → 2026-10-18 (+388d) | 2025-10-25 → 2026-11-16 (+387d) |  |  | 134d → -106d | PRO-SD-1DL-150, PRO-R17-SD-DL-150 → PRO-SD-1DL-150, PRO-R17-SD-DL-150 SS | resources Pro Engineer [44.04 h] → none |
| PRO-R16-SD-DL-160 | Material Delivery & Site Inspection of Epoxy Insulation for Storm Drainage Network | 2025-09-25 → 2026-10-18 (+388d) | 2025-10-25 → 2026-11-16 (+387d) |  |  | 146d → -94d | PRO-SD-1DL-160, PRO-R17-SD-DL-160 → PRO-SD-1DL-160, PRO-R17-SD-DL-160 SS | resources Pro Engineer [44.04 h] → none |
| 7 | **Road 15 Local 1 ( 556 LM )** | 2025-06-22 → 2025-05-03 (-50d) | 2025-11-24 → 2026-11-16 (+357d) |  |  |  |  |  |
| 1 | **Main Line Sections** | 2025-06-22 → 2025-05-03 (-50d) | 2025-08-12 → 2025-05-31 (-73d) |  |  |  |  |  |
| PRO-R15-SD-DL-120 | Material Delivery & Site Inspection of Main Line Pipes of Storm Drainage Network | 2025-06-22 → 2025-05-03 A (-50d) | 2025-07-10 → 2025-05-31 A (-40d) |  | 0% → 100% | 26d → none |  | resources Pro Engineer [312.12 h]; Pipe with diameter 400mm ; depth: 0.0m - 1.5m; Pipe with diameter 400mm ; depth: 1.51m - 2.5m; Pipe with diameter 500mm ; depth: 1.51m - 2.5m; Pipe with diameter 600mm ; depth: 1.51m - 2.5m; Pipe with diameter 700mm ; depth: 1.51m - 2.5m; Pipe with diameter 900mm ; depth: 1.51m - 2.5m; Pipe with diameter 1000mm ; depth: 1.51m - 2.5m; Pipe with diameter 1000mm ; depth: 2.51 - 3.5m → Pipe with diameter 400mm ; depth: 0.0m - 1.5m [197.57]; Pipe with diameter 400mm ; depth: 1.51m - 2.5m [224.41]; Pipe with diameter 500mm ; depth: 1.51m - 2.5m [376.78]; Pipe with diameter 600mm ; depth: 1.51m - 2.5m [204.56]; Pipe with diameter 700mm ; depth: 1.51m - 2.5m [155.22]; Pipe with diameter 900mm ; depth: 1.51m - 2.5m [250.54]; Pipe with diameter 1000mm ; depth: 1.51m - 2.5m [50]; Pipe with diameter 1000mm ; depth: 2.51 - 3.5m [50] |
| PRO-R15-SD-DL-100 | Material Delivery & Site Inspection of Manholes of Storm Drainage Network | 2025-07-14 → 2025-05-15 A (-60d) | 2025-08-12 → 2025-05-31 A (-73d) | 25.75d → 26d | 0% → 100% | 248.25d → none |  | resources Pro Engineer [312.12 h]; MH ; depth: 0.0m - 1.5m; MH ; depth: 1.51m - 2.5m; MH ; depth: 2.51 - 3.5m → MH ; depth: 0.0m - 1.5m [2]; MH ; depth: 1.51m - 2.5m [4]; MH ; depth: 2.51 - 3.5m [1]; MH ; depth: 1.51m - 2.5m [1]; MH ; depth: 2.51 - 3.5m [4] |
| 2 | **Catch Basin Sections** | 2025-08-04 → 2025-05-10 (-86d) | 2025-09-02 → 2025-06-01 (-93d) |  |  |  |  |  |
| PRO-R15-SD-DL-110 | Material Delivery & Site Inspection of Catch Basin Pipes for Storm Drainage Network | 2025-08-04 → 2025-05-10 A (-86d) | 2025-09-02 → 2025-05-29 A (-96d) |  | 0% → 100% | 106d → none |  | resources Pro Engineer [312.12 h] → none |
| PRO-R15-SD-DL-130 | Material Delivery & Site Inspection of Catch Basins for Storm Drainage Network | 2025-08-04 → 2025-05-24 A (-72d) | 2025-09-02 → 2025-06-01 A (-93d) |  | 0% → 100% | 91d → none |  | resources Pro Engineer [312.12 h]; Pipe with diameter 300mm ; depth: 0 - 1.5m; Pipe with diameter 400mm ; depth: 0 - 1.5m; Single Catch basin; Double Catch basin → Pipe with diameter 300mm ; depth: 0 - 1.5m [485.24]; Pipe with diameter 400mm ; depth: 0 - 1.5m [29.58]; Single Catch basin [18]; Double Catch basin [10] |
| 3 | **Testing and Finishes** | 2025-10-26 → 2026-10-18 (+357d) | 2025-11-24 → 2026-11-16 (+357d) |  |  |  |  |  |
| PRO-R15-SD-DL-140 | Material Delivery & Site Inspection of Manholes Covers for Storm Drainage Network | 2025-10-26 → 2026-10-18 (+357d) | 2025-11-24 → 2026-11-16 (+357d) |  |  | 126d → -120d | PRO-SD-1DL-140, PRO-R16-SD-DL-140 → PRO-SD-1DL-140, PRO-R16-SD-DL-140 SS | resources Pro Engineer [44.04 h] → none |
| PRO-R15-SD-DL-150 | Material Delivery & Site Inspection of Catch Basin Covers for Storm Drainage Network | 2025-10-26 → 2026-10-18 (+357d) | 2025-11-24 → 2026-11-16 (+357d) |  |  | 134d → -106d | PRO-SD-1DL-150, PRO-R16-SD-DL-150 → PRO-SD-1DL-150, PRO-R16-SD-DL-150 SS | resources Pro Engineer [44.04 h] → none |
| PRO-R15-SD-DL-160 | Material Delivery & Site Inspection of Epoxy Insulation for Storm Drainage Network | 2025-10-26 → 2026-10-18 (+357d) | 2025-11-24 → 2026-11-16 (+357d) |  |  | 146d → -94d | PRO-SD-1DL-160, PRO-R16-SD-DL-160 → PRO-SD-1DL-160, PRO-R16-SD-DL-160 SS | resources Pro Engineer [44.04 h] → none |
| 4 | **Road 10 Local 2 ( 2352 LM )** | 2025-07-12 → 2025-06-10 (-32d) | 2025-12-24 → 2026-11-16 (+327d) |  |  |  |  |  |
| 1 | **Main Line Sections** | 2025-07-12 → 2025-06-10 (-32d) | 2025-09-11 → 2025-06-25 (-78d) |  |  |  |  |  |
| PRO-R10-SD-DL-100 | Material Delivery & Site Inspection of Manholes of Storm Drainage Network | 2025-08-12 → 2025-06-10 A (-63d) | 2025-09-11 → 2025-06-25 A (-78d) |  | 0% → 100% | 248.25d → none |  | resources Pro Engineer [312.12 h]; MH ; depth: 0.0m - 1.5m; MH ; depth: 1.51m - 2.5m; MH ; depth: 1.51m - 2.5m with back drop less than 1.0 m; MH ; depth: 2.51 - 3.5m; MH ; depth: 3.51 - 4.5m → MH ; depth: 0.0m - 1.5m [6]; MH ; depth: 1.51m - 2.5m [16]; MH ; depth: 0.0m - 1.5m [4]; MH ; depth: 1.51m - 2.5m with back drop less than 1.0 m [1]; MH ; depth: 0.0m - 1.5m [2]; MH ; depth: 1.51m - 2.5m [6]; MH ; depth: 2.51 - 3.5m [8]; MH ; depth: 3.51 - 4.5m [5] |
| PRO-R10-SD-DL-120 | Material Delivery & Site Inspection of Main Line Pipes of Storm Drainage Network | 2025-07-12 → 2025-06-10 A (-32d) | 2025-07-30 → 2025-06-25 A (-35d) |  | 0% → 100% | 26d → none |  | resources Pro Engineer [312.12 h]; Pipe with diameter 400mm ; depth: 0.0m - 1.5m; Pipe with diameter 400mm ; depth: 1.51m - 2.5m; Pipe with diameter 500mm ; depth: 0.0m - 1.5m; Pipe with diameter 500mm ; depth: 1.51m - 2.5m; Pipe with diameter 600mm ; depth: 1.51m - 2.5m; Pipe with diameter 600mm ; depth: 2.51m - 3.5m; Pipe with diameter 700mm ; depth: 0.0m - 1.5m; Pipe with diameter 700mm ; depth: 1.51m - 2.5m; Pipe with diameter 800mm ; depth: 1.51m - 2.5m; Pipe with diameter 900mm ; depth: 1.51m - 2.5m; Pipe with diameter 1000mm ; depth: 0.0m - 1.5m; Pipe with diameter 1100mm ; depth: 0.0m - 1.5m → Pipe with diameter 400mm ; depth: 0.0m - 1.5m [437.98]; Pipe with diameter 400mm ; depth: 1.51m - 2.5m [558.96]; Pipe with diameter 500mm ; depth: 0.0m - 1.5m [50]; Pipe with diameter 500mm ; depth: 1.51m - 2.5m [242]; Pipe with diameter 600mm ; depth: 1.51m - 2.5m [392.9]; Pipe with diameter 600mm ; depth: 2.51m - 3.5m [173]; Pipe with diameter 700mm ; depth: 0.0m - 1.5m [50]; Pipe with diameter 700mm ; depth: 1.51m - 2.5m [921.18]; Pipe with diameter 800mm ; depth: 1.51m - 2.5m [450.17]; Pipe with diameter 900mm ; depth: 1.51m - 2.5m [231.8]; Pipe with diameter 1000mm ; depth: 0.0m - 1.5m [50]; Pipe with diameter 1100mm ; depth: 0.0m - 1.5m [50] |
| 2 | **Catch Basin Sections** | 2025-09-03 → 2025-06-12 (-83d) | 2025-10-04 → 2025-07-12 (-84d) |  |  |  |  |  |
| PRO-R10-SD-DL-110 | Material Delivery & Site Inspection of Catch Basin Pipes for Storm Drainage Network | 2025-09-03 → 2025-06-12 A (-83d) | 2025-10-04 → 2025-07-12 A (-84d) |  | 0% → 100% | 106d → none |  | resources Pro Engineer [312.12 h] → none |
| PRO-R10-SD-DL-130 | Material Delivery & Site Inspection of Catch Basins for Storm Drainage Network | 2025-09-03 → 2025-06-12 A (-83d) | 2025-10-04 → 2025-06-30 A (-96d) |  | 0% → 100% | 96d → none |  | resources Pro Engineer [312.12 h]; Pipe with diameter 300mm ; depth: 0 - 1.5m; Pipe with diameter 400mm ; depth: 0 - 1.5m; Single Catch basin; Double Catch basin → Pipe with diameter 300mm ; depth: 0 - 1.5m [2254.52]; Pipe with diameter 400mm ; depth: 0 - 1.5m [137.48]; Single Catch basin [80]; Double Catch basin [20] |
| 3 | **Testing and Finishes** | 2025-11-25 → 2026-10-18 (+327d) | 2025-12-24 → 2026-11-16 (+327d) |  |  |  |  |  |
| PRO-R10-SD-DL-140 | Material Delivery & Site Inspection of Manholes Covers for Storm Drainage Network | 2025-11-25 → 2026-10-18 (+327d) | 2025-12-24 → 2026-11-16 (+327d) |  |  | 126d → -120d | PRO-SD-1DL-140, PRO-R15-SD-DL-140 → PRO-SD-1DL-140, PRO-R15-SD-DL-140 SS | resources Pro Engineer [44.04 h] → none |
| PRO-R10-SD-DL-150 | Material Delivery & Site Inspection of Catch Basin Covers for Storm Drainage Network | 2025-11-25 → 2026-10-18 (+327d) | 2025-12-24 → 2026-11-16 (+327d) |  |  | 134d → -106d | PRO-SD-1DL-150, PRO-R15-SD-DL-150 → PRO-SD-1DL-150, PRO-R15-SD-DL-150 SS | resources Pro Engineer [312.12 h] → none |
| PRO-R10-SD-DL-160 | Material Delivery & Site Inspection of Epoxy Insulation for Storm Drainage Network | 2025-11-25 → 2026-10-18 (+327d) | 2025-12-24 → 2026-11-16 (+327d) |  |  | 146d → -94d | PRO-SD-1DL-160, PRO-R15-SD-DL-160 → PRO-SD-1DL-160, PRO-R15-SD-DL-160 SS | resources Pro Engineer [312.12 h] → none |
| 6 | **Road 14 Local 1 ( 584 LM )** | 2025-07-31 → 2025-07-15 (-16d) | 2026-01-24 → 2026-11-16 (+296d) |  |  |  |  |  |
| 1 | **Main Line Sections** | 2025-07-31 → 2025-07-15 (-16d) | 2025-10-13 → 2025-11-01 (+19d) |  |  |  |  |  |
| PRO-R14-SD-DL-120 | Material Delivery & Site Inspection of Main Line Pipes of Storm Drainage Network | 2025-07-31 → 2025-07-15 A (-16d) | 2025-08-19 → 2025-08-02 A (-17d) |  | 0% → 100% | 26d → none | PRO-SD-1DL-110, PRO-R10-SD-DL-120 → PRO-SD-1DL-110 | resources Pro Engineer [312.12 h]; Pipe with diameter 400mm ; depth: 0.0m - 1.5m; Pipe with diameter 400mm ; depth: 1.51m - 2.5m; Pipe with diameter 400mm ; depth: 2.51m - 3.5m; Pipe with diameter 500mm ; depth: 1.51m - 2.5m; Pipe with diameter 600mm ; depth: 1.51m - 2.5m; Pipe with diameter 700mm ; depth: 1.51m - 2.5m; Pipe with diameter 1200mm ; depth: 2.51 - 3.5m → Pipe with diameter 400mm ; depth: 0.0m - 1.5m [255.61]; Pipe with diameter 400mm ; depth: 1.51m - 2.5m [262.05]; Pipe with diameter 400mm ; depth: 2.51m - 3.5m [50]; Pipe with diameter 500mm ; depth: 1.51m - 2.5m [654.01]; Pipe with diameter 600mm ; depth: 1.51m - 2.5m [241.18]; Pipe with diameter 700mm ; depth: 1.51m - 2.5m [310.56]; Pipe with diameter 1200mm ; depth: 2.51 - 3.5m [483] |
| PRO-R14-SD-DL-100 | Material Delivery & Site Inspection of Manholes of Storm Drainage Network | 2025-09-11 → 2025-10-04 A (+23d) | 2025-10-13 → 2025-11-01 A (+19d) |  | 0% → 100% | 248.25d → none |  | resources Pro Engineer [312.12 h]; MH ; depth: 0.0m - 1.5m; MH ; depth: 1.51m - 2.5m; MH ; depth: 2.51 - 3.5m; MH ; depth: 2.51 - 3.5m with back drop less than 1.0 m → MH ; depth: 0.0m - 1.5m [4]; MH ; depth: 1.51m - 2.5m [8]; MH ; depth: 2.51 - 3.5m [1]; MH ; depth: 2.51 - 3.5m [2]; MH ; depth: 2.51 - 3.5m with back drop less than 1.0 m [1]; MH ; depth: 1.51m - 2.5m [2]; MH ; depth: 2.51 - 3.5m [4] |
| 2 | **Catch Basin Sections** | 2025-10-05 → 2025-10-04 (-1d) | 2025-11-03 → 2026-06-15 (+224d) |  |  |  |  |  |
| PRO-R14-SD-DL-130 | Material Delivery & Site Inspection of Catch Basins for Storm Drainage Network | 2025-10-05 → 2025-10-04 A (-1d) | 2025-11-03 → 2025-11-01 A (-2d) |  | 0% → 100% | 158d → none |  | resources Pro Engineer [312.12 h]; Pipe with diameter 300mm ; depth: 0 - 1.5m; Pipe with diameter 400mm ; depth: 0 - 1.5m; Single Catch basin; Double Catch basin → Pipe with diameter 300mm ; depth: 0 - 1.5m [970.86]; Pipe with diameter 400mm ; depth: 0 - 1.5m [59.2]; Single Catch basin [30]; Double Catch basin [24] |
| PRO-R14-SD-DL-110 | Material Delivery & Site Inspection of Catch Basin Pipes for Storm Drainage Network | 2025-10-05 → 2026-06-04 A (+242d) | 2025-11-03 → 2026-06-15 A (+224d) |  | 0% → 100% | 164d → none |  | resources Pro Engineer [312.12 h] → none |
| 3 | **Testing and Finishes** | 2025-12-25 → 2026-10-18 (+297d) | 2026-01-24 → 2026-11-16 (+296d) |  |  |  |  |  |
| PRO-R14-SD-DL-140 | Material Delivery & Site Inspection of Manholes Covers for Storm Drainage Network | 2025-12-25 → 2026-10-18 (+297d) | 2026-01-24 → 2026-11-16 (+296d) |  |  | 126d → -120d | PRO-SD-1DL-140, PRO-R10-SD-DL-140 → PRO-SD-1DL-140, PRO-R10-SD-DL-140 SS | resources Pro Engineer [44.04 h] → none |
| PRO-R14-SD-DL-150 | Material Delivery & Site Inspection of Catch Basin Covers for Storm Drainage Network | 2025-12-25 → 2026-10-18 (+297d) | 2026-01-24 → 2026-11-16 (+296d) |  |  | 134d → -106d | PRO-SD-1DL-150, PRO-R10-SD-DL-150 → PRO-SD-1DL-150, PRO-R10-SD-DL-150 SS | resources Pro Engineer [44.04 h] → none |
| PRO-R14-SD-DL-160 | Material Delivery & Site Inspection of Epoxy Insulation for Storm Drainage Network | 2025-12-25 → 2026-10-18 (+297d) | 2026-01-24 → 2026-11-16 (+296d) |  |  | 146d → -94d | PRO-SD-1DL-160, PRO-R10-SD-DL-160 → PRO-SD-1DL-160, PRO-R10-SD-DL-160 SS | resources Pro Engineer [312.12 h] → none |
| 2 | **Road 09 Local 2 ( 2278 LM )** | 2025-08-20 → 2025-06-03 (-78d) | 2026-02-23 → 2026-12-16 (+296d) |  |  |  |  |  |
| 1 | **Main Line Sections** | 2025-08-20 → 2025-06-03 (-78d) | 2025-10-27 → 2025-06-30 (-119d) |  |  |  |  |  |
| PRO-R09-SD-DL-120 | Material Delivery & Site Inspection of Main Line Pipes of Storm Drainage Network | 2025-08-20 → 2025-06-03 A (-78d) | 2025-09-08 → 2025-06-30 A (-70d) |  | 0% → 100% | 26d → none | PRO-SD-1DL-110, PRO-R14-SD-DL-120 → PRO-SD-1DL-110 | resources Pro Engineer [312.12 h]; Pipe with diameter 400mm ; depth: 0.0m - 1.5m; Pipe with diameter 400mm ; depth: 1.51m - 2.5m; Pipe with diameter 600mm ; depth: 0.0m - 1.5m; Pipe with diameter 700mm ; depth: 1.51m - 2.5m; Pipe with diameter 700mm ; depth: 2.51m - 3.5m; Pipe with diameter 800mm ; depth: 1.51m - 2.5m; Pipe with diameter 1100mm ; depth: 1.51m - 2.5m; Pipe with diameter 1100mm ; depth: 2.51 - 3.5m; Pipe with diameter 1200mm ; depth: 1.51m - 2.5m → Pipe with diameter 400mm ; depth: 0.0m - 1.5m [92.75]; Pipe with diameter 400mm ; depth: 1.51m - 2.5m [92.75]; Pipe with diameter 600mm ; depth: 0.0m - 1.5m [50]; Pipe with diameter 700mm ; depth: 1.51m - 2.5m [100]; Pipe with diameter 700mm ; depth: 2.51m - 3.5m [50]; Pipe with diameter 800mm ; depth: 1.51m - 2.5m [56]; Pipe with diameter 1100mm ; depth: 1.51m - 2.5m [667]; Pipe with diameter 1100mm ; depth: 2.51 - 3.5m [174]; Pipe with diameter 1200mm ; depth: 1.51m - 2.5m [155] |
| PRO-R09-SD-DL-100 | Material Delivery & Site Inspection of Manholes of Storm Drainage Network | 2025-10-13 → 2025-06-14 A (-121d) | 2025-10-27 → 2025-06-30 A (-119d) |  | 0% → 100% | 248.25d → none | PRO-SD-1DL-100, PRO-R14-SD-DL-100 → PRO-SD-1DL-100 | resources Pro Engineer [312.12 h]; MH ; depth: 0.0m - 1.5m; MH ; depth: 1.51m - 2.5m; MH ; depth: 2.51 - 3.5m → MH ; depth: 0.0m - 1.5m [6]; MH ; depth: 1.51m - 2.5m [16]; MH ; depth: 2.51 - 3.5m [4]; MH ; depth: 0.0m - 1.5m [4]; MH ; depth: 2.51 - 3.5m [2]; MH ; depth: 1.51m - 2.5m [8]; MH ; depth: 2.51 - 3.5m [8] |

| ID | Task | Start | Finish | Complete | Total float | Predecessors | Other |
| --- | --- | --- | --- | --- | --- | --- | --- |
| 2 | **Catch Basin Sections** | 2025-11-04 → 2025-12-01 (+27d) | 2025-12-03 → 2025-12-08 (+5d) |  |  |  |  |
| PRO-R09-SD-DL-110 | Material Delivery & Site Inspection of Catch Basin Pipes for Storm Drainage Network | 2025-11-04 → 2025-12-01 A (+27d) | 2025-12-03 → 2025-12-08 A (+5d) | 0% → 100% | 164d → none |  | resources Pro Engineer [312.12 h] → none |
| PRO-R09-SD-DL-130 | Material Delivery & Site Inspection of Catch Basins for Storm Drainage Network | 2025-11-04 → 2025-12-01 A (+27d) | 2025-12-03 → 2025-12-07 A (+4d) | 0% → 100% | 158d → none |  | resources Pro Engineer [312.12 h]; Pipe with diameter 300mm ; depth: 0 - 1.5m; Pipe with diameter 400mm ; depth: 0 - 1.5m; Access opening with dimensions 1000*1000 mm; Single Catch basin; Double Catch basin → Pipe with diameter 300mm ; depth: 0 - 1.5m [2248.2]; Pipe with diameter 400mm ; depth: 0 - 1.5m [137.08]; Access opening with dimensions 1000*1000 mm [13]; Single Catch basin [78]; Double Catch basin [25] |
| 3 | **Testing and Finishes** | 2026-01-25 → 2026-11-17 (+296d) | 2026-02-23 → 2026-12-16 (+296d) |  |  |  |  |
| PRO-R09-SD-DL-140 | Material Delivery & Site Inspection of Manholes Covers for Storm Drainage Network | 2026-01-25 → 2026-11-17 (+296d) | 2026-02-23 → 2026-12-16 (+296d) |  | 126d → -120d |  | resources Pro Engineer [44.04 h] → none |
| PRO-R09-SD-DL-150 | Material Delivery & Site Inspection of Catch Basin Covers for Storm Drainage Network | 2026-01-25 → 2026-11-17 (+296d) | 2026-02-23 → 2026-12-16 (+296d) |  | 134d → -106d |  | resources Pro Engineer [44.04 h] → none |
| PRO-R09-SD-DL-160 | Material Delivery & Site Inspection of Epoxy Insulation for Storm Drainage Network | 2026-01-25 → 2026-11-17 (+296d) | 2026-02-23 → 2026-12-16 (+296d) |  | 146d → -94d |  | resources Pro Engineer [312.12 h] → none |
| 5 | **Road 11 Local 1 ( 670 LM )** | 2025-09-09 → 2025-07-29 (-42d) | 2026-03-29 → 2027-01-16 (+293d) |  |  |  |  |
| 1 | **Main Line Sections** | 2025-09-09 → 2025-07-29 (-42d) | 2025-11-26 → 2026-07-02 (+218d) |  |  |  |  |
| PRO-R11-SD-DL-120 | Material Delivery & Site Inspection of Main Line Pipes of Storm Drainage Network | 2025-09-09 → 2025-07-29 A (-42d) | 2025-09-29 → 2025-08-07 A (-53d) | 0% → 100% | 49d → none | PRO-SD-1DL-110, PRO-R09-SD-DL-120 → PRO-SD-1DL-110 | resources Pro Engineer [312.12 h]; Pipe with diameter 500mm ; depth: 1.51m - 2.5m; Pipe with diameter 600mm ; depth: 1.51m - 2.5m; Pipe with diameter 700mm ; depth: 1.51m - 2.5m; Pipe with diameter 800mm ; depth: 0.0m - 1.5m; Pipe with diameter 800mm ; depth: 1.51m - 2.5m; Pipe with diameter 800mm ; depth: 2.51m - 3.5m; Pipe with diameter 900mm ; depth: 0.0m - 1.5m; Pipe with diameter 900mm ; depth: 1.51m - 2.5m; Pipe with diameter 1000mm ; depth: 1.51m - 2.5m; Pipe with diameter 1000mm ; depth: 2.51 - 3.5m → Pipe with diameter 500mm ; depth: 1.51m - 2.5m [639.89]; Pipe with diameter 600mm ; depth: 1.51m - 2.5m [214.64]; Pipe with diameter 700mm ; depth: 1.51m - 2.5m [210.44]; Pipe with diameter 800mm ; depth: 0.0m - 1.5m [50]; Pipe with diameter 800mm ; depth: 1.51m - 2.5m [410.2]; Pipe with diameter 800mm ; depth: 2.51m - 3.5m [70]; Pipe with diameter 900mm ; depth: 0.0m - 1.5m [50]; Pipe with diameter 900mm ; depth: 1.51m - 2.5m [168.52]; Pipe with diameter 1000mm ; depth: 1.51m - 2.5m [176]; Pipe with diameter 1000mm ; depth: 2.51 - 3.5m [176] |
| PRO-R11-SD-DL-100 | Material Delivery & Site Inspection of Manholes of Storm Drainage Network | 2025-10-27 → 2025-11-01 A (+5d) | 2025-11-26 → 2026-07-02 A (+218d) | 0% → 100% | 248.25d → none | PRO-SD-1DL-100, PRO-R09-SD-DL-100 → PRO-SD-1DL-100 | resources Pro Engineer [312.12 h]; MH ; depth: 0.0m - 1.5m; MH ; depth: 1.51m - 2.5m; MH ; depth: 2.51 - 3.5m → MH ; depth: 0.0m - 1.5m [2]; MH ; depth: 1.51m - 2.5m [6]; MH ; depth: 2.51 - 3.5m [2]; MH ; depth: 1.51m - 2.5m [4]; MH ; depth: 2.51 - 3.5m [5] |
| 2 | **Catch Basin Sections** | 2025-12-04 → 2025-12-01 (-3d) | 2026-01-03 → 2026-07-06 (+184d) |  |  |  |  |
| PRO-R11-SD-DL-130 | Material Delivery & Site Inspection of Catch Basins for Storm Drainage Network | 2025-12-04 → 2025-12-01 A (-3d) | 2026-01-03 → 2025-12-08 A (-26d) | 0% → 100% | 158d → none |  | resources Pro Engineer [312.12 h]; Pipe with diameter 300mm ; depth: 0 - 1.5m; Pipe with diameter 400mm ; depth: 0 - 1.5m; Single Catch basin; Double Catch basin → Pipe with diameter 300mm ; depth: 0 - 1.5m [657.88]; Pipe with diameter 400mm ; depth: 0 - 1.5m [40.12]; Single Catch basin [22]; Double Catch basin [20] |
| PRO-R11-SD-DL-110 | Material Delivery & Site Inspection of Catch Basin Pipes for Storm Drainage Network | 2025-12-04 → 2026-07-01 A (+209d) | 2026-01-03 → 2026-07-06 A (+184d) | 0% → 100% | 164d → none |  | resources Pro Engineer [312.12 h] → none |
| 3 | **Testing and Finishes** | 2026-02-24 → 2026-12-17 (+296d) | 2026-03-29 → 2027-01-16 (+293d) |  |  |  |  |
| PRO-R11-SD-DL-140 | Material Delivery & Site Inspection of Manholes Covers for Storm Drainage Network | 2026-02-24 → 2026-12-17 (+296d) | 2026-03-29 → 2027-01-16 (+293d) |  | 134d → -106d |  | resources Pro Engineer [44.04 h] → none |
| PRO-R11-SD-DL-150 | Material Delivery & Site Inspection of Catch Basin Covers for Storm Drainage Network | 2026-02-24 → 2026-12-17 (+296d) | 2026-03-29 → 2027-01-16 (+293d) |  | 134d → -106d |  | resources Pro Engineer [312.12 h] → none |
| PRO-R11-SD-DL-160 | Material Delivery & Site Inspection of Epoxy Insulation for Storm Drainage Network | 2026-02-24 → 2026-12-17 (+296d) | 2026-03-29 → 2027-01-16 (+293d) |  | 146d → -94d |  | resources Pro Engineer [312.12 h] → none |
| PW | **Potable Water Network** | 2025-02-09 → 2025-02-11 (+2d) | 2026-02-09 → 2027-05-23 (+468d) |  |  |  |  |
| PO | **Issuance of Purchase Orders** | 2025-02-09 → 2025-02-11 (+2d) |  |  |  |  |  |
| PRO-PW-PO-100 | Issuance of Purchase Order for Main Line Pipes of Potable Water Network | 2025-02-11 A | 2025-02-17 A | 0% → 100% | 28d → none |  | resources Pro Engineer [312.12 h] → none |
| PRO-PW-PO-110 | Issuance of Purchase Order for Valves of Potable Water Network | 2025-02-11 A | 2025-02-17 A | 0% → 100% | 28d → none |  | resources Pro Engineer [312.12 h] → none |
| PRO-PW-PO-120 | Issuance of Purchase Order for Fire Hydrants of Potable Water Network | 2025-02-11 A | 2025-02-23 A | 0% → 100% | 34d → none |  | resources Pro Engineer [312.12 h] → none |
| 4 | **Testing and Finishes** | 2025-02-09 → 2025-02-11 (+2d) | 2025-02-19 → 2025-02-23 (+4d) |  |  |  |  |
| PRO-PW-PO-130 | Issuance of Purchase Order for Surface Box of Potable Water Network | 2025-02-09 → 2025-02-11 A (+2d) | 2025-02-19 → 2025-02-23 A (+4d) | 0% → 100% | 171d → none |  | resources Pro Engineer [312.12 h] → none |
| MF | **Manufacturing of Material** |  | 2025-05-29 → 2025-05-31 (+2d) |  |  |  |  |
| 1 | **Main Line Sections** |  | 2025-05-04 → 2025-05-31 (+27d) |  |  |  |  |
| PRO-PW-MF-100 | Manufacturing of Main Line Pipes for Potable Water Network | 2025-02-18 A | 2025-05-04 → 2025-05-22 A (+18d) | 0% → 100% | 28d → none |  | resources Pro Engineer [312.12 h] → none |
| PRO-PW-MF-110 | Manufacturing of Valves for Potable Water Network | 2025-02-18 A | 2025-05-04 → 2025-05-31 A (+27d) | 0% → 100% | 28d → none |  | resources Pro Engineer [312.12 h] → none |
| 3 | **Fire Hydrant** |  | 2025-05-08 → 2025-05-21 (+13d) |  |  |  |  |
| PRO-PW-MF-120 | Manufacturing of Fire Hydrants for Potable Water Network | 2025-02-24 A | 2025-05-08 → 2025-05-21 A (+13d) | 0% → 100% | 34d → none |  | resources Pro Engineer [312.12 h] → none |
| 4 | **Testing and Finishes** | 2025-02-20 → 2025-02-24 (+4d) | 2025-05-29 → 2025-04-26 (-33d) |  |  |  |  |
| PRO-PW-MF-130 | Manufacturing for Surface Box of Potable Water Network | 2025-02-20 → 2025-02-24 A (+4d) | 2025-05-29 → 2025-04-26 A (-33d) | 0% → 100% | 171d → none |  | resources Pro Engineer [312.12 h] → none |
| 1DL | **1st Material Delivery & Site Inspection** | 2025-05-05 → 2025-05-13 (+8d) | 2025-06-10 → 2026-10-12 (+489d) |  |  |  |  |
| 1 | **Main Line Sections** | 2025-05-05 → 2025-05-13 (+8d) | 2025-05-11 → 2025-10-10 (+152d) |  |  |  |  |
| PRO-PW-1DL-100 | 1ST Material Delivery for Main Line Pipes of Potable Water Network | 2025-05-05 → 2025-05-13 A (+8d) | 2025-05-11 → 2025-05-28 A (+17d) | 0% → 100% | 28d → none |  | resources Pro Engineer [312.12 h] → none |
| PRO-PW-1DL-110 | 1ST Material Delivery for Valves of Potable Water Network | 2025-05-05 → 2025-10-04 A (+152d) | 2025-05-11 → 2025-10-10 A (+152d) | 0% → 100% | 28d → none |  | resources Pro Engineer [312.12 h] → none |
| 3 | **Fire Hydrant** | 2025-05-10 → 2025-11-01 (+175d) | 2025-05-15 → 2025-11-04 (+173d) |  |  |  |  |
| PRO-PW-1DL-120 | 1ST Material Delivery for Fire Hydrants of Potable Water Network | 2025-05-10 → 2025-11-01 A (+175d) | 2025-05-15 → 2025-11-04 A (+173d) | 0% → 100% | 34d → none |  | resources Pro Engineer [312.12 h] → none |
| 4 | **Testing and Finishes** | 2025-05-31 → 2026-10-06 (+493d) | 2025-06-10 → 2026-10-12 (+489d) |  |  |  |  |
| PRO-PW-1DL-130 | 1ST Material Delivery for Finishes of Potable Water Network | 2025-05-31 → 2026-10-06 (+493d) | 2025-06-10 → 2026-10-12 (+489d) |  | 171d → -213d |  | resources Pro Engineer [312.12 h] → none |
| DL | **Material Delivery & Site Inspection** | 2025-05-12 → 2025-05-03 (-9d) | 2026-02-09 → 2027-05-23 (+468d) |  |  |  |  |
| 1 | **Road 18 Local 1 ( 479 LM )** | 2025-05-12 → 2025-05-03 (-9d) | 2025-07-10 → 2026-11-11 (+489d) |  |  |  |  |
| 1 | **Main Line Sections** | 2025-05-12 → 2025-05-03 (-9d) | 2025-06-15 → 2025-11-04 (+142d) |  |  |  |  |
| PRO-R18-PW-DL-140 | Material Delivery & Site Inspection of Main Line Pipes for Potable Water Network | 2025-05-12 → 2025-05-03 A (-9d) | 2025-06-15 → 2025-05-28 A (-18d) | 0% → 100% | 28d → none |  | resources Pro Engineer [312.12 h]; Pipe with diameter 200mm; in depth 0.0m - 1.5m → Pipe with diameter 200mm; in depth 0.0m - 1.5m [706.08] |
| PRO-R18-PW-DL-150 | Material Delivery & Site Inspection of Valves for Potable Water Network | 2025-05-12 → 2025-10-23 A (+164d) | 2025-06-15 → 2025-11-04 A (+142d) | 0% → 100% | 28d → none |  | resources Pro Engineer [312.12 h]; Gate valves dia(200)mm on pipes with dia (200) mm. → Gate valves dia(200)mm on pipes with dia (200) mm. [7] |
| 3 | **Fire Hydrant** | 2025-05-17 → 2026-07-14 (+423d) | 2025-06-19 → 2026-07-18 (+394d) |  |  |  |  |
| PRO-R18-PW-DL-160 | Material Delivery & Site Inspection of Fire Hydrants for Potable Water Network | 2025-05-17 → 2026-07-14 A (+423d) | 2025-06-19 → 2026-07-18 A (+394d) | 0% → 100% | 34d → none |  | resources Pro Engineer [312.12 h]; 3-outlet fire hydrant (2 x 2.5 inch and 1 x 4 inch) in the form of a separate dry vacuum cylinder → 3-outlet fire hydrant (2 x 2.5 inch and 1 x 4 inch) in the form of a separate dry vacuum cylinder [2] |
| 4 | **Testing and Finishes** | 2025-06-11 → 2026-10-13 (+489d) | 2025-07-10 → 2026-11-11 (+489d) |  |  |  |  |
| PRO-R18-PW-DL-170 | Material Delivery & Site Inspection for Finishes of Potable Water Network | 2025-06-11 → 2026-10-13 (+489d) | 2025-07-10 → 2026-11-11 (+489d) |  | 171d → -213d |  | resources Pro Engineer [44.04 h] → none |
| 9 | **Road 17 Local 1 ( 500 LM )** | 2025-06-16 → 2025-05-17 (-30d) | 2025-08-10 → 2026-12-12 (+489d) |  |  |  |  |
| 1 | **Main Line Sections** | 2025-06-16 → 2025-05-17 (-30d) | 2025-07-15 → 2026-11-04 (+477d) |  |  |  |  |
| PRO-R17-PW-DL-100 | Material Delivery & Site Inspection of Main Line Pipes for Potable Water Network | 2025-06-16 → 2025-05-17 A (-30d) | 2025-07-15 → 2025-05-31 A (-45d) | 0% → 100% | 28d → none |  | resources Pro Engineer [312.12 h]; Pipe with diameter 200mm; in depth 0.0m - 1.5m → Pipe with diameter 200mm; in depth 0.0m - 1.5m [623.33] |
| PRO-R17-PW-DL-110 | Material Delivery & Site Inspection of Valves for Potable Water Network | 2025-06-16 → 2026-10-06 (+477d) | 2025-07-15 → 2026-11-04 (+477d) |  | 28d → -242.5d |  | resources Pro Engineer [44.04 h]; Gate valves dia(200)mm on pipes with dia (200) mm. → Gate valves dia(200)mm on pipes with dia (200) mm. [7] |
| 3 | **Fire Hydrant** | 2025-06-21 → 2026-07-14 (+388d) | 2025-07-20 → 2026-07-18 (+363d) |  |  |  |  |
| PRO-R17-PW-DL-120 | Material Delivery & Site Inspection of Fire Hydrants for Potable Water Network | 2025-06-21 → 2026-07-14 A (+388d) | 2025-07-20 → 2026-07-18 A (+363d) | 0% → 100% | 34d → none | PRO-PW-1DL-120, PRO-R18-PW-DL-160 → PRO-PW-1DL-120 SS, PRO-R18-PW-DL-160 SS | resources Pro Engineer [312.12 h]; 3-outlet fire hydrant (2 x 2.5 inch and 1 x 4 inch) in the form of a separate dry vacuum cylinder → 3-outlet fire hydrant (2 x 2.5 inch and 1 x 4 inch) in the form of a separate dry vacuum cylinder [3] |
| 4 | **Testing and Finishes** | 2025-07-12 → 2026-11-12 (+488d) | 2025-08-10 → 2026-12-12 (+489d) |  |  |  |  |
| PRO-R17-PW-DL-130 | Material Delivery & Site Inspection for Finishes of Potable Water Network | 2025-07-12 → 2026-11-12 (+488d) | 2025-08-10 → 2026-12-12 (+489d) |  | 171d → -213d |  | resources Pro Engineer [44.04 h] → none |
| 8 | **Road 16 Local 1 ( 527 LM )** | 2025-07-16 → 2025-05-08 (-69d) | 2025-09-09 → 2027-01-11 (+489d) |  |  |  |  |
| 1 | **Main Line Sections** | 2025-07-16 → 2025-05-08 (-69d) | 2025-08-14 → 2026-11-04 (+447d) |  |  |  |  |
| PRO-R16-PW-DL-100 | Material Delivery & Site Inspection of Main Line Pipes for Potable Water Network | 2025-07-16 → 2025-05-08 A (-69d) | 2025-08-14 → 2025-05-29 A (-77d) | 0% → 100% | 28d → none |  | resources Pro Engineer [312.12 h]; Pipe with diameter 200mm; in depth 0.0m - 1.5m → Pipe with diameter 200mm; in depth 0.0m - 1.5m [650.42] |
| PRO-R16-PW-DL-110 | Material Delivery & Site Inspection of Valves for Potable Water Network | 2025-07-16 → 2026-10-06 (+447d) | 2025-08-14 → 2026-11-04 (+447d) |  | 28d → -242.5d | PRO-PW-1DL-110, PRO-R17-PW-DL-110 → PRO-PW-1DL-110 SS, PRO-R17-PW-DL-110 SS | resources Pro Engineer [44.04 h]; Gate valves dia(200)mm on pipes with dia (200) mm. → Gate valves dia(200)mm on pipes with dia (200) mm. [5] |
| 3 | **Fire Hydrant** | 2025-07-21 → 2026-07-14 (+358d) | 2025-08-19 → 2026-07-18 (+333d) |  |  |  |  |
| PRO-R16-PW-DL-120 | Material Delivery & Site Inspection of Fire Hydrants for Potable Water Network | 2025-07-21 → 2026-07-14 A (+358d) | 2025-08-19 → 2026-07-18 A (+333d) | 0% → 100% | 34d → none |  | resources Pro Engineer [312.12 h]; 3-outlet fire hydrant (2 x 2.5 inch and 1 x 4 inch) in the form of a separate dry vacuum cylinder → 3-outlet fire hydrant (2 x 2.5 inch and 1 x 4 inch) in the form of a separate dry vacuum cylinder [4] |
| 4 | **Testing and Finishes** | 2025-08-11 → 2026-12-13 (+489d) | 2025-09-09 → 2027-01-11 (+489d) |  |  |  |  |
| PRO-R16-PW-DL-130 | Material Delivery & Site Inspection for Finishes of Potable Water Network | 2025-08-11 → 2026-12-13 (+489d) | 2025-09-09 → 2027-01-11 (+489d) |  | 171d → -213d |  | resources Pro Engineer [44.04 h] → none |
| 7 | **Road 15 Local 1 ( 556 LM )** | 2025-08-16 → 2025-05-12 (-96d) | 2025-10-11 → 2027-02-10 (+487d) |  |  |  |  |
| 1 | **Main Line Sections** | 2025-08-16 → 2025-05-12 (-96d) | 2025-09-14 → 2026-11-04 (+416d) |  |  |  |  |
| PRO-R15-PW-DL-100 | Material Delivery & Site Inspection of Main Line Pipes for Potable Water Network | 2025-08-16 → 2025-05-12 A (-96d) | 2025-09-14 → 2025-05-29 A (-108d) | 0% → 100% | 28d → none |  | resources Pro Engineer [312.12 h]; Pipe with diameter 200mm; in depth 0.0m - 1.5m → Pipe with diameter 200mm; in depth 0.0m - 1.5m [677.02] |
| PRO-R15-PW-DL-110 | Material Delivery & Site Inspection of Valves for Potable Water Network | 2025-08-16 → 2026-10-06 (+416d) | 2025-09-14 → 2026-11-04 (+416d) |  | 28d → -242.5d | PRO-PW-1DL-110, PRO-R16-PW-DL-110 → PRO-PW-1DL-110 SS, PRO-R16-PW-DL-110 SS | resources Pro Engineer [44.04 h]; Gate valves dia(200)mm on pipes with dia (200) mm. → Gate valves dia(200)mm on pipes with dia (200) mm. [6] |

| ID | Task | Start | Finish | Duration | Complete | Total float | Predecessors | Other |
| --- | --- | --- | --- | --- | --- | --- | --- | --- |
| 3 | **Fire Hydrant** | 2025-08-20 → 2026-07-14 (+328d) | 2025-09-18 → 2026-07-18 (+303d) |  |  |  |  |  |
| PRO-R15-PW-DL-120 | Material Delivery & Site Inspection of Fire Hydrants for Potable Water Network | 2025-08-20 → 2026-07-14 A (+328d) | 2025-09-18 → 2026-07-18 A (+303d) |  | 0% → 100% | 34d → none | PRO-PW-1DL-120, PRO-R16-PW-DL-120 → PRO-PW-1DL-120, PRO-R16-PW-DL-120 SS | resources Pro Engineer [312.12 h]; 3-outlet fire hydrant (2 x 2.5 inch and 1 x 4 inch) in the form of a separate dry vacuum cylinder → 3-outlet fire hydrant (2 x 2.5 inch and 1 x 4 inch) in the form of a separate dry vacuum cylinder [4] |
| 4 | **Testing and Finishes** | 2025-09-10 → 2027-01-12 (+489d) | 2025-10-11 → 2027-02-10 (+487d) |  |  |  |  |  |
| PRO-R15-PW-DL-130 | Material Delivery & Site Inspection for Finishes of Potable Water Network | 2025-09-10 → 2027-01-12 (+489d) | 2025-10-11 → 2027-02-10 (+487d) |  |  | 171d → -213d |  | resources Pro Engineer [44.04 h] → none |
| 4 | **Road 10 Local 2 ( 2352 LM )** | 2025-09-15 → 2025-05-30 (-108d) | 2025-11-10 → 2027-03-17 (+492d) |  |  |  |  |  |
| 1 | **Main Line Sections** | 2025-09-15 → 2025-05-30 (-108d) | 2025-10-15 → 2026-12-05 (+416d) |  |  |  |  |  |
| PRO-R10-PW-DL-100 | Material Delivery & Site Inspection of Main Line Pipes for Potable Water Network | 2025-09-15 → 2025-05-30 A (-108d) | 2025-10-15 → 2025-06-26 A (-111d) |  | 0% → 100% | 28d → none |  | resources Pro Engineer [312.12 h]; Pipe with diameter 200mm; in depth 0.0m - 1.5m; Pipe with diameter 560mm; in depth 1.5m - 3.0m; Pipe with diameter 630mm; in depth 1.5m - 3.0m → Pipe with diameter 200mm; in depth 0.0m - 1.5m [2551.31]; Pipe with diameter 560mm; in depth 1.5m - 3.0m [1200]; Pipe with diameter 630mm; in depth 1.5m - 3.0m [2090] |
| PRO-R10-PW-DL-110 | Material Delivery & Site Inspection of Valves for Potable Water Network | 2025-09-15 → 2025-12-13 A (+89d) | 2025-10-15 → 2026-12-05 (+416d) |  | 0% → 80% | 28d → -242.5d |  | resources Pro Engineer [208.18 h]; Gate valves dia(200)mm on pipes with dia (200) mm.; Butterfly valves with dia (560)mm on pipes with dia (560)mm.; Butterfly valves with dia (630)mm on pipes with dia (630)mm.; Wash out valve with dia (100)mm on pipes with dia (200) mm; Wash out valve with dia (150)mm on pipes with dia (560) mm; Wash out valve with dia (150)mm on pipes with dia (630) mm; Air valves with dia (50mm) mm on pipes with dia(200)mm.; Air valves with dia (65mm) mm on pipes with dia(560)mm.; Air valves with dia (65mm) mm on pipes with dia(630)mm. → Gate valves dia(200)mm on pipes with dia (200) mm. [22]; Butterfly valves with dia (560)mm on pipes with dia (560)mm. [2]; Butterfly valves with dia (630)mm on pipes with dia (630)mm. [5]; Wash out valve with dia (100)mm on pipes with dia (200) mm [1]; Wash out valve with dia (150)mm on pipes with dia (560) mm [1]; Wash out valve with dia (150)mm on pipes with dia (630) mm [3]; Air valves with dia (50mm) mm on pipes with dia(200)mm. [3]; Air valves with dia (65mm) mm on pipes with dia(560)mm. [2]; Air valves with dia (65mm) mm on pipes with dia(630)mm. [4] |
| 3 | **Fire Hydrant** | 2025-09-20 → 2026-07-14 (+297d) | 2025-10-20 → 2026-07-18 (+271d) |  |  |  |  |  |
| PRO-R10-PW-DL-120 | Material Delivery & Site Inspection of Fire Hydrants for Potable Water Network | 2025-09-20 → 2026-07-14 A (+297d) | 2025-10-20 → 2026-07-18 A (+271d) |  | 0% → 100% | 34d → none |  | resources Pro Engineer [312.12 h]; 3-outlet fire hydrant (2 x 2.5 inch and 1 x 4 inch) in the form of a separate dry vacuum cylinder → 3-outlet fire hydrant (2 x 2.5 inch and 1 x 4 inch) in the form of a separate dry vacuum cylinder [15] |
| 4 | **Testing and Finishes** | 2025-10-12 → 2027-02-11 (+487d) | 2025-11-10 → 2027-03-17 (+492d) |  |  |  |  |  |
| PRO-R10-PW-DL-130 | Material Delivery & Site Inspection for Finishes of Potable Water Network | 2025-10-12 → 2027-02-11 (+487d) | 2025-11-10 → 2027-03-17 (+492d) |  |  | 171d → -213d |  | resources Pro Engineer [44.04 h]; Wash out chamber; on 200 mm dia pipeline Depth 1.5 - 3m; Wash out chamber; on 560 mm dia pipeline Depth 1.5 - 3m; Wash out chamber; on 630 mm dia pipeline Depth 1.5 - 3m; Air valve chamber; on 200 mm dia pipeline Depth 1.5 - 3 m; Air valve chamber on 560 mm dia pipeline Depth 1.5 - 3 m; Air valve chamber on 630 mm dia pipeline Depth 1.5 - 3 m → Wash out chamber; on 200 mm dia pipeline Depth 1.5 - 3m [2]; Wash out chamber; on 560 mm dia pipeline Depth 1.5 - 3m [1]; Wash out chamber; on 630 mm dia pipeline Depth 1.5 - 3m [3]; Air valve chamber; on 200 mm dia pipeline Depth 1.5 - 3 m [3]; Air valve chamber on 560 mm dia pipeline Depth 1.5 - 3 m [2]; Air valve chamber on 630 mm dia pipeline Depth 1.5 - 3 m [4] |
| 3 | **Road 14 Local 1 ( 584 LM )** | 2025-10-16 → 2025-07-22 (-86d) | 2025-12-10 → 2026-12-05 (+360d) |  |  |  |  |  |
| 1 | **Main Line Sections** | 2025-10-16 → 2025-07-22 (-86d) | 2025-11-15 → 2026-12-05 (+385d) |  |  |  |  |  |
| PRO-R14-PW-DL-100 | Material Delivery & Site Inspection of Main Line Pipes for Potable Water Network | 2025-10-16 → 2025-07-22 A (-86d) | 2025-11-15 → 2025-08-04 A (-103d) |  | 0% → 100% | 28d → none |  | resources Pro Engineer [312.12 h]; Pipe with diameter 355mm; in depth 0.0m - 1.5m; Pipe with diameter 355mm; in depth 1.5m - 3.0m → Pipe with diameter 355mm; in depth 0.0m - 1.5m [1400]; Pipe with diameter 355mm; in depth 1.5m - 3.0m [100] |
| PRO-R14-PW-DL-110 | Material Delivery & Site Inspection of Valves for Potable Water Network | 2025-10-16 → 2026-11-05 (+385d) | 2025-11-15 → 2026-12-05 (+385d) |  |  | 28d → -242.5d | PRO-PW-1DL-110, PRO-R10-PW-DL-110 → PRO-PW-1DL-110, PRO-R10-PW-DL-110 SS | resources Pro Engineer [249.22 h]; Butterfly valves with dia (355)mm on pipes with dia (355)mm.; Air valves with dia (65mm) mm on pipes with dia(355)mm. → Butterfly valves with dia (355)mm on pipes with dia (355)mm. [18]; Air valves with dia (65mm) mm on pipes with dia(355)mm. [1] |
| 3 | **Fire Hydrant** | 2025-10-21 → 2025-12-01 (+41d) | 2025-11-19 → 2026-07-18 (+241d) |  |  |  |  |  |
| PRO-R14-PW-DL-120 | Material Delivery & Site Inspection of Fire Hydrants for Potable Water Network | 2025-10-21 → 2025-12-01 A (+41d) | 2025-11-19 → 2026-07-18 A (+241d) |  | 0% → 100% | 34d → none | PRO-PW-1DL-120, PRO-R10-PW-DL-120 → PRO-PW-1DL-120, PRO-R10-PW-DL-120 SS | resources Pro Engineer [312.12 h]; 3-outlet fire hydrant (2 x 2.5 inch and 1 x 4 inch) in the form of a separate dry vacuum cylinder → 3-outlet fire hydrant (2 x 2.5 inch and 1 x 4 inch) in the form of a separate dry vacuum cylinder [7] |
| 4 | **Testing and Finishes** | 2025-11-11 → 2025-12-01 (+20d) | 2025-12-10 → 2025-12-08 (-2d) |  |  |  |  |  |
| PRO-R14-PW-DL-130 | Material Delivery & Site Inspection for Finishes of Potable Water Network | 2025-11-11 → 2025-12-01 A (+20d) | 2025-12-10 → 2025-12-08 A (-2d) |  | 0% → 100% | 171d → none |  | resources Pro Engineer [312.12 h]; In-situ, reinforced single concrete valve chambers on the pipeline, as defined and shown on the drawingss, and all necessary works and equipment (valve measured elsewhere), and supplies construction, cut and installation of pipe cutting, backfilling, in; Air valve chamber on 355 mm dia pipeline Depth 1.5 - 3 m → In-situ, reinforced single concrete valve chambers on the pipeline, as defined and shown on the drawingss, and all necessary works and equipment (valve measured elsewhere), and supplies construction, cut and installation of pipe cutting, backfilling, in [18]; Air valve chamber on 355 mm dia pipeline Depth 1.5 - 3 m [1] |
| 2 | **Road 09 Local 2 ( 2278 LM )** | 2025-11-16 → 2025-11-01 (-15d) | 2026-01-10 → 2027-04-17 (+462d) |  |  |  |  |  |
| 1 | **Main Line Sections** | 2025-11-16 → 2025-11-01 (-15d) | 2025-12-15 → 2027-01-04 (+385d) |  |  |  |  |  |
| PRO-R09-PW-DL-100 | Material Delivery & Site Inspection of Main Line Pipes for Potable Water Network | 2025-11-16 → 2025-11-01 A (-15d) | 2025-12-15 → 2025-11-08 A (-37d) |  | 0% → 100% | 28d → none |  | resources Pro Engineer [312.12 h]; Pipe with diameter 160 mm; in depth 1.5m - 3.0m; Pipe with diameter 200mm; in depth 0.0m - 1.5m; Pipe with diameter 200mm; in depth 1.5m - 3.0m → Pipe with diameter 160 mm; in depth 1.5m - 3.0m [50]; Pipe with diameter 200mm; in depth 0.0m - 1.5m [2544.71]; Pipe with diameter 200mm; in depth 1.5m - 3.0m [100] |
| PRO-R09-PW-DL-110 | Material Delivery & Site Inspection of Valves for Potable Water Network | 2025-11-16 → 2026-12-06 (+385d) | 2025-12-15 → 2027-01-04 (+385d) |  |  | 28d → -242.5d |  | resources Pro Engineer [312.12 h]; Gate valves dia(200)mm on pipes with dia (200) mm.; Wash out valve with dia (100)mm on pipes with dia (200) mm → Gate valves dia(200)mm on pipes with dia (200) mm. [22]; Wash out valve with dia (100)mm on pipes with dia (200) mm [1] |
| 3 | **Fire Hydrant** | 2025-11-20 → 2026-07-14 (+236d) | 2025-12-20 → 2026-07-18 (+210d) |  |  |  |  |  |
| PRO-R09-PW-DL-120 | Material Delivery & Site Inspection of Fire Hydrants for Potable Water Network | 2025-11-20 → 2026-07-14 A (+236d) | 2025-12-20 → 2026-07-18 A (+210d) |  | 0% → 100% | 34d → none | PRO-PW-1DL-120, PRO-R14-PW-DL-120 → PRO-PW-1DL-120, PRO-R14-PW-DL-120 SS | resources Pro Engineer [312.12 h]; 3-outlet fire hydrant (2 x 2.5 inch and 1 x 4 inch) in the form of a separate dry vacuum cylinder → 3-outlet fire hydrant (2 x 2.5 inch and 1 x 4 inch) in the form of a separate dry vacuum cylinder [15] |
| 4 | **Testing and Finishes** | 2025-12-11 → 2027-03-18 (+462d) | 2026-01-10 → 2027-04-17 (+462d) |  |  |  |  |  |
| PRO-R09-PW-DL-130 | Material Delivery & Site Inspection for Finishes of Potable Water Network | 2025-12-11 → 2027-03-18 (+462d) | 2026-01-10 → 2027-04-17 (+462d) |  |  | 171d → -213d |  | resources Pro Engineer [44.04 h] → none |
| 5 | **Road 11 Local 1 ( 670 LM )** | 2025-12-16 → 2025-08-02 (-136d) | 2026-02-09 → 2027-05-23 (+468d) |  |  |  |  |  |
| 1 | **Main Line Sections** | 2025-12-16 → 2025-08-02 (-136d) | 2026-01-14 → 2027-02-03 (+385d) |  |  |  |  |  |
| PRO-R11-PW-DL-100 | Material Delivery & Site Inspection of Main Line Pipes for Potable Water Network | 2025-12-16 → 2025-08-02 A (-136d) | 2026-01-14 → 2025-08-09 A (-158d) |  | 0% → 100% | 28d → none | PRO-PW-1DL-100, PRO-R09-PW-DL-100 → PRO-PW-1DL-100 | resources Pro Engineer [312.12 h]; Pipe with diameter 200mm; in depth 0.0m - 1.5m → Pipe with diameter 200mm; in depth 0.0m - 1.5m [799.13] |
| PRO-R11-PW-DL-110 | Material Delivery & Site Inspection of Valves for Potable Water Network | 2025-12-16 → 2027-01-05 (+385d) | 2026-01-14 → 2027-02-03 (+385d) |  |  | 28d → -144d |  | resources Pro Engineer [44.04 h]; Gate valves dia(200)mm on pipes with dia (200) mm. → Gate valves dia(200)mm on pipes with dia (200) mm. [6] |
| 3 | **Fire Hydrant** | 2025-12-21 → 2026-07-14 (+205d) | 2026-01-19 → 2026-07-18 (+180d) |  |  |  |  |  |
| PRO-R11-PW-DL-120 | Material Delivery & Site Inspection of Fire Hydrants for Potable Water Network | 2025-12-21 → 2026-07-14 A (+205d) | 2026-01-19 → 2026-07-18 A (+180d) |  | 0% → 100% | 34d → none |  | resources Pro Engineer [312.12 h]; 3-outlet fire hydrant (2 x 2.5 inch and 1 x 4 inch) in the form of a separate dry vacuum cylinder → 3-outlet fire hydrant (2 x 2.5 inch and 1 x 4 inch) in the form of a separate dry vacuum cylinder [5] |
| 4 | **Testing and Finishes** | 2026-01-11 → 2027-04-18 (+462d) | 2026-02-09 → 2027-05-23 (+468d) |  |  |  |  |  |
| PRO-R11-PW-DL-130 | Material Delivery & Site Inspection for Finishes of Potable Water Network | 2026-01-11 → 2027-04-18 (+462d) | 2026-02-09 → 2027-05-23 (+468d) |  |  | 171d → -213d |  | resources Pro Engineer [44.04 h] → none |
| IR | **Irrigation Network** |  | 2025-12-21 → 2026-10-28 (+311d) |  |  |  |  |  |
| PRO-IR-PO-100 | Issuance of Purchase Order for Main Line Pipes of Irrigation Network | 2025-02-11 A | 2025-02-17 A |  | 0% → 100% | 53.5d → none |  | resources Pro Engineer [312.12 h] → none |
| PRO-IR-PO-110 | Issuance of Purchase Order for Valves of Irrigation Network | 2025-02-11 A | 2025-02-17 A |  | 0% → 100% | 46.5d → none |  | resources Pro Engineer [312.12 h] → none |
| MF | **Manufacturing of Material** |  | 2025-07-16 → 2025-04-30 (-77d) |  |  |  |  |  |
| 1 | **Main Line Pipes** |  | 2025-07-16 → 2025-04-30 (-77d) |  |  |  |  |  |
| PRO-IR-MF-100 | Manufacturing of Main Line Pipes for Irrigation Network | 2025-02-18 A | 2025-06-30 → 2025-04-30 A (-61d) |  | 0% → 100% | 53.5d → none |  | resources Pro Engineer [312.12 h] → none |
| PRO-IR-MF-110 | Manufacturing of Valves for Irrigation Network | 2025-02-18 A | 2025-07-16 → 2025-04-08 A (-99d) |  | 0% → 100% | 46.5d → none |  | resources Pro Engineer [312.12 h] → none |
| 1DL | **1st Material Delivery & Site Inspection** | 2025-07-01 → 2025-05-01 (-61d) | 2025-07-23 → 2026-10-12 (+446d) |  |  |  |  |  |
| 1 | **Main Line Pipes** | 2025-07-01 → 2025-05-01 (-61d) | 2025-07-23 → 2026-10-12 (+446d) |  |  |  |  |  |
| PRO-IR-1DL-100 | 1ST Material Delivery for Main Line Pipes of Irrigation Network | 2025-07-01 → 2025-05-01 A (-61d) | 2025-07-07 → 2025-05-10 A (-58d) |  | 0% → 100% | 53.5d → none |  | resources Pro Engineer [312.12 h] → none |
| PRO-IR-1DL-110 | 1ST Material Delivery for Valves of Irrigation Network | 2025-07-17 → 2026-10-06 (+446d) | 2025-07-23 → 2026-10-12 (+446d) |  |  | 46.5d → -219.5d |  | resources Pro Engineer [146.63 h] → none |
| DL | **Material Delivery & Site Inspection** | 2025-07-08 → 2025-05-03 (-66d) | 2025-12-21 → 2026-10-28 (+311d) |  |  |  |  |  |
| 1 | **Road 18 Local 1 ( 479 LM )** | 2025-07-08 → 2025-05-03 (-66d) | 2025-08-11 → 2026-10-13 (+428d) |  |  |  |  |  |
| 1 | **Main Line Pipes** | 2025-07-08 → 2025-05-03 (-66d) | 2025-08-11 → 2026-10-13 (+428d) |  |  |  |  |  |
| PRO-R18-IR-DL-120 | Material Delivery & Site Inspection of Main Line Pipes for Irrigation Network | 2025-07-08 → 2025-05-03 A (-66d) | 2025-07-26 → 2025-05-17 A (-70d) |  | 0% → 100% | 53.5d → none |  | resources Pro Engineer [312.12 h]; 125 mm pipe; depth 0.0m - 1.5m → 125 mm pipe; depth 0.0m - 1.5m [618.39] |
| PRO-R18-IR-DL-130 | Material Delivery & Site Inspection of Valves for Irrigation Network | 2025-07-24 → 2026-10-06 (+439d) | 2025-08-11 → 2026-10-13 (+428d) | 16d → 7d |  | 46.5d → -219.5d | PRO-IR-1DL-110 → PRO-IR-1DL-110 SS | resources Pro Engineer [44.04 h]; Gate valves dia (90)mm on pipes with dia (125) mm.; Wash out valve with dia (100)mm on pipes with dia (125) mm → Gate valves dia (90)mm on pipes with dia (125) mm. [5]; Wash out valve with dia (100)mm on pipes with dia (125) mm [1] |
| 9 | **Road 17 Local 1 ( 500 LM )** | 2025-07-27 → 2025-05-05 (-83d) | 2025-08-30 → 2026-10-21 (+417d) |  |  |  |  |  |
| 1 | **Main Line Pipes** | 2025-07-27 → 2025-05-05 (-83d) | 2025-08-30 → 2026-10-21 (+417d) |  |  |  |  |  |
| PRO-R17-IR-DL-100 | Material Delivery & Site Inspection of Main Line Pipes for Irrigation Network | 2025-07-27 → 2025-05-05 A (-83d) | 2025-08-13 → 2025-05-20 A (-85d) |  | 0% → 100% | 53.5d → none |  | resources Pro Engineer [312.12 h]; 125 mm pipe; depth 0.0m - 1.5m; 355 mm pipe; depth 1.5m - 3.0m → 125 mm pipe; depth 0.0m - 1.5m [639.48]; 355 mm pipe; depth 1.5m - 3.0m [1000] |
| PRO-R17-IR-DL-110 | Material Delivery & Site Inspection of Valves for Irrigation Network | 2025-08-12 → 2026-10-14 (+428d) | 2025-08-30 → 2026-10-21 (+417d) | 16d → 7d |  | 46.5d → -219.5d |  | resources Pro Engineer [44.04 h]; Gate valves dia (90)mm on pipes with dia (125) mm.; Wash out valve with dia (150)mm on pipes with dia (400) mm → Gate valves dia (90)mm on pipes with dia (125) mm. [5]; Wash out valve with dia (150)mm on pipes with dia (400) mm [2] |
| 8 | **Road 16 Local 1 ( 527 LM )** | 2025-08-14 → 2025-05-14 (-92d) | 2025-09-17 → 2026-10-21 (+399d) |  |  |  |  |  |
| 1 | **Main Line Pipes** | 2025-08-14 → 2025-05-14 (-92d) | 2025-09-17 → 2026-10-21 (+399d) |  |  |  |  |  |
| PRO-R16-IR-DL-100 | Material Delivery & Site Inspection of Main Line Pipes for Irrigation Network | 2025-08-14 → 2025-05-14 A (-92d) | 2025-09-01 → 2025-05-31 A (-93d) |  | 0% → 100% | 53.5d → none |  | resources Pro Engineer [312.12 h]; 125 mm pipe; depth 0.0m - 1.5m → 125 mm pipe; depth 0.0m - 1.5m [672.58] |
| PRO-R16-IR-DL-110 | Material Delivery & Site Inspection of Valves for Irrigation Network | 2025-08-31 → 2026-10-14 (+409d) | 2025-09-17 → 2026-10-21 (+399d) | 16d → 7d |  | 46.5d → -219.5d | PRO-IR-1DL-110, PRO-R17-IR-DL-110 → PRO-IR-1DL-110, PRO-R17-IR-DL-110 SS | resources Pro Engineer [44.04 h]; Gate valves dia (90)mm on pipes with dia (125) mm.; Air valves with dia (50mm) mm on pipes with dia(125)mm. → Gate valves dia (90)mm on pipes with dia (125) mm. [6]; Air valves with dia (50mm) mm on pipes with dia(125)mm. [1] |
| 7 | **Road 15 Local 1 ( 556 LM )** | 2025-09-02 → 2025-05-13 (-112d) | 2025-10-07 → 2026-10-28 (+386d) |  |  |  |  |  |
| 1 | **Main Line Pipes** | 2025-09-02 → 2025-05-13 (-112d) | 2025-10-07 → 2026-10-28 (+386d) |  |  |  |  |  |
| PRO-R15-IR-DL-100 | Material Delivery & Site Inspection of Main Line Pipes for Irrigation Network | 2025-09-02 → 2025-05-13 A (-112d) | 2025-09-20 → 2025-05-29 A (-114d) |  | 0% → 100% | 53.5d → none |  | resources Pro Engineer [312.12 h]; 125 mm pipe; depth 0.0m - 1.5m → 125 mm pipe; depth 0.0m - 1.5m [705.67] |
| PRO-R15-IR-DL-110 | Material Delivery & Site Inspection of Valves for Irrigation Network | 2025-09-18 → 2026-10-22 (+399d) | 2025-10-07 → 2026-10-28 (+386d) | 16d → 6d |  | 46.5d → -219.5d |  | resources Pro Engineer [44.04 h]; Gate valves dia (90)mm on pipes with dia (125) mm. → Gate valves dia (90)mm on pipes with dia (125) mm. [6] |
| 4 | **Road 10 Local 2 ( 2352 LM )** | 2025-09-21 → 2025-06-19 (-94d) | 2025-10-26 → 2026-06-01 (+218d) |  |  |  |  |  |
| 1 | **Main Line Pipes** | 2025-09-21 → 2025-06-19 (-94d) | 2025-10-26 → 2026-06-01 (+218d) |  |  |  |  |  |
| PRO-R19.2-IR-DL-100 | Material Delivery & Site Inspection of Main Line Pipes for Irrigation Network | 2025-09-21 → 2025-06-19 A (-94d) | 2025-10-09 → 2025-07-08 A (-93d) |  | 0% → 100% | 53.5d → none |  | resources Pro Engineer [312.12 h]; 125 mm pipe; depth 0.0m - 1.5m; 400 mm pipe; depth 1.5m - 3.0m; 500. mm pipe; depth 1.5m - 3.0m → 125 mm pipe; depth 0.0m - 1.5m [2873.15]; 400 mm pipe; depth 1.5m - 3.0m [1000]; 500. mm pipe; depth 1.5m - 3.0m [2800] |
| PRO-R19.2-IR-DL-110 | Material Delivery & Site Inspection of Valves for Irrigation Network | 2025-10-08 → 2025-12-11 A (+64d) | 2025-10-26 → 2026-06-01 A (+218d) |  | 0% → 100% | 46.5d → none |  | resources Pro Engineer [312.12 h]; Gate valves dia (90)mm on pipes with dia (125) mm.; Butterfly valves with dia (355)mm on pipes with dia (355)mm.; Butterfly valves with dia (400)mm on pipes with dia (400)mm.; Butterfly valves with dia (500)mm on pipes with dia (500)mm.; Wash out valve with dia (100)mm on pipes with dia (355) mm; Wash out valve with dia (150)mm on pipes with dia (500) mm; Air valves with dia (65mm) mm on pipes with dia(280)mm.; Air valves with dia (65mm) mm on pipes with dia(400)mm.; Air valves with dia (65mm) mm on pipes with dia(500)mm. → Gate valves dia (90)mm on pipes with dia (125) mm. [22]; Butterfly valves with dia (355)mm on pipes with dia (355)mm. [2]; Butterfly valves with dia (400)mm on pipes with dia (400)mm. [2]; Butterfly valves with dia (500)mm on pipes with dia (500)mm. [6]; Wash out valve with dia (100)mm on pipes with dia (355) mm [1]; Wash out valve with dia (150)mm on pipes with dia (500) mm [5]; Air valves with dia (65mm) mm on pipes with dia(280)mm. [1]; Air valves with dia (65mm) mm on pipes with dia(400)mm. [1]; Air valves with dia (65mm) mm on pipes with dia(500)mm. [6] |
| 6 | **Road 14 Local 1 ( 584 LM )** | 2025-10-11 → 2026-05-19 (+220d) | 2025-11-13 → 2026-06-01 (+200d) |  |  |  |  |  |
| 1 | **Main Line Pipes** | 2025-10-11 → 2026-05-19 (+220d) | 2025-11-13 → 2026-06-01 (+200d) |  |  |  |  |  |

| ID | Task | Start | Finish | Complete | Total float | Predecessors | Other |
| --- | --- | --- | --- | --- | --- | --- | --- |
| PRO-R14-IR-DL-100 | Material Delivery & Site Inspection of Main Line Pipes for Irrigation Network | 2025-10-11 → 2026-05-19 A (+220d) | 2025-10-28 → 2026-06-01 A (+216d) | 0% → 100% | 53.5d → none |  | resources Pro Engineer [312.12 h]; 125 mm pipe; depth 0.0m - 1.5m; 280 mm pipe; depth 0.0m - 1.5m; 280 mm pipe; depth 1.5m - 3.0m → 125 mm pipe; depth 0.0m - 1.5m [1237.33]; 280 mm pipe; depth 0.0m - 1.5m [475]; 280 mm pipe; depth 1.5m - 3.0m [50] |
| PRO-R14-IR-DL-110 | Material Delivery & Site Inspection of Valves for Irrigation Network | 2025-10-27 → 2026-05-21 A (+206d) | 2025-11-13 → 2026-06-01 A (+200d) | 0% → 100% | 46.5d → none | PRO-IR-1DL-110, PRO-R19.2-IR-DL-110 → PRO-IR-1DL-110, PRO-R19.2-IR-DL-110 SS | resources Pro Engineer [312.12 h]; Gate valves dia (90)mm on pipes with dia (125) mm.; Gate valves dia (200)mm on pipes with dia (280) mm.; Air valves with dia (50mm) mm on pipes with dia(125)mm. → Gate valves dia (90)mm on pipes with dia (125) mm. [9]; Gate valves dia (200)mm on pipes with dia (280) mm. [8]; Air valves with dia (50mm) mm on pipes with dia(125)mm. [1] |
| 2 | **Road 09 Local 2 ( 2278 LM )** | 2025-10-29 → 2026-05-21 (+204d) | 2025-12-02 → 2026-06-02 (+182d) |  |  |  |  |
| 1 | **Main Line Pipes** | 2025-10-29 → 2026-05-21 (+204d) | 2025-12-02 → 2026-06-02 (+182d) |  |  |  |  |
| PRO-R09-IR-DL-100 | Material Delivery & Site Inspection of Main Line Pipes for Irrigation Network | 2025-10-29 → 2026-05-21 A (+204d) | 2025-11-16 → 2026-06-02 A (+198d) | 0% → 100% | 53.5d → none |  | resources Pro Engineer [312.12 h]; 125 mm pipe; depth 0.0m - 1.5m → 125 mm pipe; depth 0.0m - 1.5m [2865] |
| PRO-R09-IR-DL-110 | Material Delivery & Site Inspection of Valves for Irrigation Network | 2025-11-15 → 2026-05-21 A (+187d) | 2025-12-02 → 2026-06-02 A (+182d) | 0% → 100% | 46.5d → none |  | resources Pro Engineer [312.12 h]; Gate valves dia (90)mm on pipes with dia (125) mm.; Wash out valve with dia (100)mm on pipes with dia (125) mm → Gate valves dia (90)mm on pipes with dia (125) mm. [22]; Wash out valve with dia (100)mm on pipes with dia (125) mm [2] |
| 5 | **Road 11 Local 1 ( 670 LM )** | 2025-11-17 → 2026-05-19 (+183d) | 2025-12-21 → 2026-06-01 (+162d) |  |  |  |  |
| 1 | **Main Line Pipes** | 2025-11-17 → 2026-05-19 (+183d) | 2025-12-21 → 2026-06-01 (+162d) |  |  |  |  |
| PRO-R11-IR-DL-150 | Material Delivery & Site Inspection of Valves for Irrigation Network | 2025-12-03 → 2026-05-19 A (+167d) | 2025-12-21 → 2026-06-01 A (+162d) | 0% → 100% | 46.5d → none |  | resources Pro Engineer [312.12 h]; Gate valves dia (90)mm on pipes with dia (125) mm.; Air valves with dia (50mm) mm on pipes with dia(125)mm. → Gate valves dia (90)mm on pipes with dia (125) mm. [7]; Air valves with dia (50mm) mm on pipes with dia(125)mm. [2] |
| PRO-R11-IR-DL-140 | Material Delivery & Site Inspection of Main Line Pipes for Irrigation Network | 2025-11-17 → 2026-05-20 A (+184d) | 2025-12-04 → 2026-06-01 A (+179d) | 0% → 100% | 53.5d → none |  | resources Pro Engineer [312.12 h]; 125 mm pipe; depth 0.0m - 1.5m → 125 mm pipe; depth 0.0m - 1.5m [838.4] |
| MV | **Medium Voltage Network** |  | 2026-03-04 → 2027-07-15 (+498d) |  |  |  |  |
| PO | **Issuance of Purchase Orders** |  | 2025-02-25 → 2025-03-10 (+13d) |  |  |  |  |
| PRO-MV-PO-100 | Issuance of Purchase Order for Medium Voltage Cables of Medium Voltage Network | 2025-02-11 A | 2025-02-25 A | 0% → 100% | 101d → none |  | resources Pro Engineer [312.12 h] → none |
| 2 | **RMU Concrete Works** | 2025-02-11 → 2025-02-21 (+10d) | 2025-02-25 → 2025-03-10 (+13d) |  |  |  |  |
| PRO-MV-PO-110 | Issuance of Purchase Order for RMU Concrete Foundations of Medium Voltage Network | 2025-02-11 → 2025-02-21 A (+10d) | 2025-02-25 → 2025-03-10 A (+13d) | 0% → 100% | 182d → none |  | resources Pro Engineer [312.12 h] → none |
| PRO-MV-PO-120 | Issuance of Purchase Order for Termination and Joints Kits of Medium Voltage Network | 2025-02-11 A | 2025-02-25 A | 0% → 100% | 189d → none |  | resources Pro Engineer [312.12 h] → none |
| MF | **Manufacturing of Material** |  | 2025-09-09 → 2025-07-15 (-56d) |  |  |  |  |
| 1 | **Cabling Works** |  | 2025-05-01 → 2025-04-30 (-1d) |  |  |  |  |
| PRO-MV-MF-100 | Manufacturing of Medium Voltage Cables for Medium Voltage Network | 2025-02-26 A | 2025-05-01 → 2025-04-30 A (-1d) | 0% → 100% | 101d → none |  | resources Pro Engineer [312.12 h] → none |
| 2 | **RMU Concrete Works** | 2025-02-26 → 2025-03-11 (+13d) | 2025-09-09 → 2025-07-15 (-56d) |  |  |  |  |
| PRO-MV-MF-120 | Manufacturing of RMU Concrete Foundations for Medium Voltage Network | 2025-02-26 → 2025-03-11 A (+13d) | 2025-09-09 → 2025-07-15 A (-56d) | 0% → 100% | 182d → none |  | resources Pro Engineer [312.12 h] → none |
| 3 | **Termination and Testing Works** |  | 2025-05-01 → 2025-04-29 (-2d) |  |  |  |  |
| PRO-MV-MF-110 | Manufacturing of Termination and Joints Kits for Medium Voltage Network | 2025-02-26 A | 2025-05-01 → 2025-04-29 A (-2d) | 0% → 100% | 189d → none |  | resources Pro Engineer [312.12 h] → none |
| 1DL | **1st Material Delivery & Site Inspection** | 2025-05-03 → 2025-05-01 (-2d) | 2025-11-10 → 2026-12-05 (+390d) |  |  |  |  |
| 1 | **Cabling Works** | 2025-05-03 → 2025-05-01 (-2d) |  |  |  |  |  |
| PRO-MV-1DL-100 | 1ST Material Delivery for Medium Voltage Cables of Medium Voltage Network | 2025-05-03 → 2025-05-01 A (-2d) | 2025-05-15 A | 0% → 100% | 101d → none |  | resources Pro Engineer [312.12 h] → none |
| 2 | **RMU Concrete Works** | 2025-09-10 → 2026-10-06 (+391d) | 2025-11-10 → 2026-12-05 (+390d) |  |  |  |  |
| PRO-MV-1DL-110 | 1ST Material Delivery for RMU Concrete Foundations of Medium Voltage Network | 2025-09-10 → 2026-10-06 (+391d) | 2025-11-10 → 2026-12-05 (+390d) |  | 182d → -131d |  | resources Pro Engineer [312.12 h] → none |
| 3 | **Termination and Testing Works** | 2025-05-03 → 2026-10-06 (+521d) | 2025-06-01 → 2026-11-04 (+521d) |  |  |  |  |
| PRO-MV-1DL-120 | 1ST Material Delivery for Termination and Joints Kits of Medium Voltage Network | 2025-05-03 → 2026-10-06 (+521d) | 2025-06-01 → 2026-11-04 (+521d) |  | 189d → -245d |  | resources Pro Engineer [312.12 h] → none |
| DL | **Material Delivery & Site Inspection** | 2025-05-17 → 2025-05-16 (-1d) | 2026-03-04 → 2027-07-15 (+498d) |  |  |  |  |
| 1 | **Road 18 Local 1 ( 479 LM )** | 2025-05-17 → 2025-05-16 (-1d) | 2025-07-20 → 2026-12-05 (+503d) |  |  |  |  |
| 1 | **Cabling Works** | 2025-05-17 → 2025-05-16 (-1d) | 2025-06-19 → 2025-05-27 (-23d) |  |  |  |  |
| PRO-R18-MV-DL-120 | Material Delivery & Site Inspection of Medium Voltage Cables for Medium Voltage Network | 2025-05-17 → 2025-05-16 A (-1d) | 2025-06-19 → 2025-05-27 A (-23d) | 0% → 100% | 101d → none |  | resources Pro Engineer [312.12 h]; Excavation for Trench size 40cm wide and 80cm deep ( Maximum 1 cable 33kv); Excavation for Trench size 60cm wide and 80cm deep ( for Max two cables 33 kv); Excavation for Trench size 90cm wide and 80cm deep ( Maximum 3 cable 33kv); Excavation for Trench size 120cm wide and 80cm deep ( Maximum 4cable 33kv); Excavation for Trench size 150cm wide and 80cm deep ( Maximum 4cable 33kv); Duct bank for (2) 33 kv cables; Duct bank for (4) 33 kv cables; Duct bank for (6) 33 kv cables; 33kv 3Cx400 mmï¿½ Al XLPE / LLDPE /PVC Cable; 33kv 3Cx400 mmï¿½ Al XLPE /LLDPE/PVC → Excavation for Trench size 40cm wide and 80cm deep ( Maximum 1 cable 33kv) [171.62]; Excavation for Trench size 60cm wide and 80cm deep ( for Max two cables 33 kv) [9.76]; Excavation for Trench size 90cm wide and 80cm deep ( Maximum 3 cable 33kv) [43.49]; Excavation for Trench size 120cm wide and 80cm deep ( Maximum 4cable 33kv) [14.79]; Excavation for Trench size 150cm wide and 80cm deep ( Maximum 4cable 33kv) [54.74]; Duct bank for (2) 33 kv cables [5.67]; Duct bank for (4) 33 kv cables [39.26]; Duct bank for (6) 33 kv cables [18.03]; 33kv 3Cx400 mm² Al XLPE / LLDPE /PVC Cable [1153.63]; 33kv 3Cx400 mm² Al XLPE /LLDPE/PVC [4] |
| 3 | **Termination and Testing Works** | 2025-06-21 → 2026-11-05 (+502d) | 2025-07-20 → 2026-12-05 (+503d) |  |  |  |  |
| PRO-R18-MV-DL-130 | Material Delivery & Site Inspection of Termination and Joints Kits for Medium Voltage Network | 2025-06-21 → 2026-11-05 (+502d) | 2025-07-20 → 2026-12-05 (+503d) |  | 177d → -245d |  | resources Pro Engineer [312.12 h]; 33kv 3Cx400 mmï¿½ Al XLPE/LLDPE Cable Termination → 33kv 3Cx400 mm² Al XLPE/LLDPE Cable Termination [2] |
| 9 | **Road 17 Local 1 ( 500 LM )** | 2025-06-21 → 2025-05-16 (-36d) | 2026-03-04 → 2027-02-17 (+350d) |  |  |  |  |
| 1 | **Cabling Works** | 2025-06-21 → 2025-05-16 (-36d) | 2025-07-20 → 2025-05-27 (-54d) |  |  |  |  |
| PRO-R17-MV-DL-100 | Material Delivery & Site Inspection of Medium Voltage Cables for Medium Voltage Network | 2025-06-21 → 2025-05-16 A (-36d) | 2025-07-20 → 2025-05-27 A (-54d) | 0% → 100% | 101d → none |  | resources Pro Engineer [312.12 h]; Excavation for Trench size 40cm wide and 80cm deep ( Maximum 1 cable 33kv); Excavation for Trench size 60cm wide and 80cm deep ( for Max two cables 33 kv); Excavation for Trench size 90cm wide and 80cm deep ( Maximum 3 cable 33kv); Excavation for Trench size 120cm wide and 80cm deep ( Maximum 4cable 33kv); Excavation for Trench size 150cm wide and 80cm deep ( Maximum 4cable 33kv); Duct bank for (2) 33 kv cables; Duct bank for (4) 33 kv cables; Duct bank for (6) 33 kv cables; 33kv 3Cx400 mmï¿½ Al XLPE / LLDPE /PVC Cable; 33kv 3Cx400 mmï¿½ Al XLPE /LLDPE/PVC → Excavation for Trench size 40cm wide and 80cm deep ( Maximum 1 cable 33kv) [177.46]; Excavation for Trench size 60cm wide and 80cm deep ( for Max two cables 33 kv) [10.1]; Excavation for Trench size 90cm wide and 80cm deep ( Maximum 3 cable 33kv) [44.99]; Excavation for Trench size 120cm wide and 80cm deep ( Maximum 4cable 33kv) [15.3]; Excavation for Trench size 150cm wide and 80cm deep ( Maximum 4cable 33kv) [56.6]; Duct bank for (2) 33 kv cables [6.12]; Duct bank for (4) 33 kv cables [40.39]; Duct bank for (6) 33 kv cables [18.36]; 33kv 3Cx400 mm² Al XLPE / LLDPE /PVC Cable [1193.29]; 33kv 3Cx400 mm² Al XLPE /LLDPE/PVC [4] |
| 2 | **RMU Concrete Works** | 2026-01-20 → 2027-01-05 (+350d) | 2026-03-04 → 2027-02-17 (+350d) |  |  |  |  |
| PRO-R17-MV-DL-120 | Material Delivery & Site Inspection of RMU Concrete Foundations for Medium Voltage Network | 2026-01-20 → 2027-01-05 (+350d) | 2026-03-04 → 2027-02-17 (+350d) |  | 148d → -131d |  | resources Pro Engineer [312.12 h] → none |
| 3 | **Termination and Testing Works** | 2025-07-21 → 2026-12-06 (+503d) | 2025-08-19 → 2027-01-04 (+503d) |  |  |  |  |
| PRO-R17-MV-DL-110 | Material Delivery & Site Inspection of Termination and Joints Kits for Medium Voltage Network | 2025-07-21 → 2026-12-06 (+503d) | 2025-08-19 → 2027-01-04 (+503d) |  | 177d → -245d |  | resources Pro Engineer [312.12 h]; 33kv 3Cx400 mmï¿½ Al XLPE/LLDPE Cable Termination → 33kv 3Cx400 mm² Al XLPE/LLDPE Cable Termination [1] |
| 3 | **Road 16 Local 1 ( 527 LM )** | 2025-07-21 → 2025-05-16 (-66d) | 2025-09-18 → 2027-02-03 (+503d) |  |  |  |  |
| 1 | **Cabling Works** | 2025-07-21 → 2025-05-16 (-66d) | 2025-08-19 → 2025-05-29 (-82d) |  |  |  |  |
| PRO-R16-MV-DL-100 | Material Delivery & Site Inspection of Medium Voltage Cables for Medium Voltage Network | 2025-07-21 → 2025-05-16 A (-66d) | 2025-08-19 → 2025-05-29 A (-82d) | 0% → 100% | 101d → none |  | resources Pro Engineer [312.12 h]; Excavation for Trench size 40cm wide and 80cm deep ( Maximum 1 cable 33kv); Excavation for Trench size 60cm wide and 80cm deep ( for Max two cables 33 kv); Excavation for Trench size 90cm wide and 80cm deep ( Maximum 3 cable 33kv); Excavation for Trench size 120cm wide and 80cm deep ( Maximum 4cable 33kv); Excavation for Trench size 150cm wide and 80cm deep ( Maximum 4cable 33kv); Duct bank for (2) 33 kv cables; Duct bank for (4) 33 kv cables; Duct bank for (6) 33 kv cables; 33kv 3Cx400 mmï¿½ Al XLPE / LLDPE /PVC Cable; 33kv 3Cx400 mmï¿½ Al XLPE /LLDPE/PVC → Excavation for Trench size 40cm wide and 80cm deep ( Maximum 1 cable 33kv) [186.65]; Excavation for Trench size 60cm wide and 80cm deep ( for Max two cables 33 kv) [10.62]; Excavation for Trench size 90cm wide and 80cm deep ( Maximum 3 cable 33kv) [47.31]; Excavation for Trench size 120cm wide and 80cm deep ( Maximum 4cable 33kv) [16.09]; Excavation for Trench size 150cm wide and 80cm deep ( Maximum 4cable 33kv) [59.53]; Duct bank for (2) 33 kv cables [6.44]; Duct bank for (4) 33 kv cables [42.48]; Duct bank for (6) 33 kv cables [19.31]; 33kv 3Cx400 mm² Al XLPE / LLDPE /PVC Cable [1255.04]; 33kv 3Cx400 mm² Al XLPE /LLDPE/PVC [4] |
| 3 | **Termination and Testing Works** | 2025-08-20 → 2027-01-05 (+503d) | 2025-09-18 → 2027-02-03 (+503d) |  |  |  |  |
| PRO-R16-MV-DL-110 | Material Delivery & Site Inspection of Termination and Joints Kits for Medium Voltage Network | 2025-08-20 → 2027-01-05 (+503d) | 2025-09-18 → 2027-02-03 (+503d) |  | 177d → -245d |  | resources Pro Engineer [312.12 h]; 33kv 3Cx400 mmï¿½ Al XLPE/LLDPE Cable Termination → 33kv 3Cx400 mm² Al XLPE/LLDPE Cable Termination [2] |
| 7 | **Road 15 Local 1 ( 556 LM )** | 2025-08-20 → 2025-05-16 (-96d) | 2025-10-20 → 2027-03-07 (+503d) |  |  |  |  |
| 1 | **Cabling Works** | 2025-08-20 → 2025-05-16 (-96d) | 2025-09-18 → 2025-05-29 (-112d) |  |  |  |  |
| PRO-R15-MV-DL-100 | Material Delivery & Site Inspection of Medium Voltage Cables for Medium Voltage Network | 2025-08-20 → 2025-05-16 A (-96d) | 2025-09-18 → 2025-05-29 A (-112d) | 0% → 100% | 101d → none |  | resources Pro Engineer [312.12 h]; Excavation for Trench size 40cm wide and 80cm deep ( Maximum 1 cable 33kv); Excavation for Trench size 60cm wide and 80cm deep ( for Max two cables 33 kv); Excavation for Trench size 90cm wide and 80cm deep ( Maximum 3 cable 33kv); Excavation for Trench size 120cm wide and 80cm deep ( Maximum 4cable 33kv); Excavation for Trench size 150cm wide and 80cm deep ( Maximum 4cable 33kv); Duct bank for (2) 33 kv cables; Duct bank for (4) 33 kv cables; Duct bank for (6) 33 kv cables; 33kv 3Cx400 mmï¿½ Al XLPE / LLDPE /PVC Cable; 33kv 3Cx400 mmï¿½ Al XLPE /LLDPE/PVC → Excavation for Trench size 40cm wide and 80cm deep ( Maximum 1 cable 33kv) [195.83]; Excavation for Trench size 60cm wide and 80cm deep ( for Max two cables 33 kv) [11.14]; Excavation for Trench size 90cm wide and 80cm deep ( Maximum 3 cable 33kv) [49.63]; Excavation for Trench size 120cm wide and 80cm deep ( Maximum 4cable 33kv) [16.88]; Excavation for Trench size 150cm wide and 80cm deep ( Maximum 4cable 33kv) [62.46]; Duct bank for (2) 33 kv cables [6.75]; Duct bank for (4) 33 kv cables [44.57]; Duct bank for (6) 33 kv cables [20.26]; 33kv 3Cx400 mm² Al XLPE / LLDPE /PVC Cable [1316.8]; 33kv 3Cx400 mm² Al XLPE /LLDPE/PVC [4] |
| 3 | **Termination and Testing Works** | 2025-09-20 → 2027-02-04 (+502d) | 2025-10-20 → 2027-03-07 (+503d) |  |  |  |  |
| PRO-R15-MV-DL-110 | Material Delivery & Site Inspection of Termination and Joints Kits for Medium Voltage Network | 2025-09-20 → 2027-02-04 (+502d) | 2025-10-20 → 2027-03-07 (+503d) |  | 177d → -245d |  | resources Pro Engineer [312.12 h]; 33kv 3Cx400 mmï¿½ Al XLPE/LLDPE Cable Termination → 33kv 3Cx400 mm² Al XLPE/LLDPE Cable Termination [1] |
| 4 | **Road 10 Local 2 ( 2352 LM )** | 2025-09-20 → 2025-11-01 (+42d) | 2026-01-19 → 2027-04-10 (+446d) |  |  |  |  |
| 1 | **Cabling Works** | 2025-09-20 → 2025-11-01 (+42d) | 2025-10-20 → 2025-11-09 (+20d) |  |  |  |  |
| PRO-R10-MV-DL-100 | Material Delivery & Site Inspection of Medium Voltage Cables for Medium Voltage Network | 2025-09-20 → 2025-11-01 A (+42d) | 2025-10-20 → 2025-11-09 A (+20d) | 0% → 100% | 101d → none |  | resources Pro Engineer [312.12 h]; Excavation for Trench size 40cm wide and 80cm deep ( Maximum 1 cable 33kv); Excavation for Trench size 60cm wide and 80cm deep ( for Max two cables 33 kv); Excavation for Trench size 90cm wide and 80cm deep ( Maximum 3 cable 33kv); Excavation for Trench size 120cm wide and 80cm deep ( Maximum 4cable 33kv); Excavation for Trench size 150cm wide and 80cm deep ( Maximum 4cable 33kv); Duct bank for (2) 33 kv cables; Duct bank for (4) 33 kv cables; Duct bank for (6) 33 kv cables; 33kv 3Cx400 mmï¿½ Al XLPE / LLDPE /PVC Cable; 33kv 3Cx400 mmï¿½ Al XLPE /LLDPE/PVC → Excavation for Trench size 40cm wide and 80cm deep ( Maximum 1 cable 33kv) [398.67]; Excavation for Trench size 60cm wide and 80cm deep ( for Max two cables 33 kv) [22.68]; Excavation for Trench size 90cm wide and 80cm deep ( Maximum 3 cable 33kv) [101.04]; Excavation for Trench size 120cm wide and 80cm deep ( Maximum 4cable 33kv) [34.37]; Excavation for Trench size 150cm wide and 80cm deep ( Maximum 4cable 33kv) [127.16]; Duct bank for (2) 33 kv cables [13.75]; Duct bank for (4) 33 kv cables [90.73]; Duct bank for (6) 33 kv cables [41.24]; 33kv 3Cx400 mm² Al XLPE / LLDPE /PVC Cable [2680.69]; 33kv 3Cx400 mm² Al XLPE /LLDPE/PVC [8] |
| 2 | **RMU Concrete Works** | 2025-12-21 → 2026-12-06 (+350d) | 2026-01-19 → 2027-01-04 (+350d) |  |  |  |  |
| PRO-R10-MV-DL-120 | Material Delivery & Site Inspection of RMU Concrete Foundations for Medium Voltage Network | 2025-12-21 → 2026-12-06 (+350d) | 2026-01-19 → 2027-01-04 (+350d) |  | 148d → -131d |  | resources Pro Engineer [312.12 h] → none |
| 3 | **Termination and Testing Works** | 2025-10-21 → 2027-03-08 (+503d) | 2025-11-19 → 2027-04-10 (+507d) |  |  |  |  |
| PRO-R10-MV-DL-110 | Material Delivery & Site Inspection of Termination and Joints Kits for Medium Voltage Network | 2025-10-21 → 2027-03-08 (+503d) | 2025-11-19 → 2027-04-10 (+507d) |  | 177d → -245d |  | resources Pro Engineer [312.12 h]; 33kv 3Cx400 mmï¿½ Al XLPE/LLDPE Cable Termination → 33kv 3Cx400 mm² Al XLPE/LLDPE Cable Termination [4] |
| 6 | **Road 14 Local 1 ( 584 LM )** | 2025-10-21 → 2025-08-16 (-66d) | 2025-12-20 → 2027-05-10 (+506d) |  |  |  |  |
| 1 | **Cabling Works** | 2025-10-21 → 2025-08-16 (-66d) | 2025-11-19 → 2025-08-16 (-95d) |  |  |  |  |
| PRO-R14-MV-DL-100 | Material Delivery & Site Inspection of Medium Voltage Cables for Medium Voltage Network | 2025-10-21 → 2025-08-16 A (-66d) | 2025-11-19 → 2025-08-16 A (-95d) | 0% → 100% | 101d → none | PRO-MV-1DL-100, PRO-R10-MV-DL-100 → PRO-MV-1DL-100 | resources Pro Engineer [312.12 h]; Excavation for Trench size 40cm wide and 80cm deep ( Maximum 1 cable 33kv); Excavation for Trench size 60cm wide and 80cm deep ( for Max two cables 33 kv); Excavation for Trench size 90cm wide and 80cm deep ( Maximum 3 cable 33kv); Excavation for Trench size 120cm wide and 80cm deep ( Maximum 4cable 33kv); Excavation for Trench size 150cm wide and 80cm deep ( Maximum 4cable 33kv); Duct bank for (2) 33 kv cables; Duct bank for (4) 33 kv cables; Duct bank for (6) 33 kv cables; 33kv 3Cx400 mmï¿½ Al XLPE / LLDPE /PVC Cable; 33kv 3Cx400 mmï¿½ Al XLPE /LLDPE/PVC → Excavation for Trench size 40cm wide and 80cm deep ( Maximum 1 cable 33kv) [343.35]; Excavation for Trench size 60cm wide and 80cm deep ( for Max two cables 33 kv) [19.54]; Excavation for Trench size 90cm wide and 80cm deep ( Maximum 3 cable 33kv) [87.02]; Excavation for Trench size 120cm wide and 80cm deep ( Maximum 4cable 33kv) [29.6]; Excavation for Trench size 150cm wide and 80cm deep ( Maximum 4cable 33kv) [109.52]; Duct bank for (2) 33 kv cables [11.84]; Duct bank for (4) 33 kv cables [78.14]; Duct bank for (6) 33 kv cables [35.52]; 33kv 3Cx400 mm² Al XLPE / LLDPE /PVC Cable [2308.74]; 33kv 3Cx400 mm² Al XLPE /LLDPE/PVC [7] |
| 3 | **Termination and Testing Works** | 2025-11-20 → 2027-04-11 (+507d) | 2025-12-20 → 2027-05-10 (+506d) |  |  |  |  |
| PRO-R14-MV-DL-110 | Material Delivery & Site Inspection of Termination and Joints Kits for Medium Voltage Network | 2025-11-20 → 2027-04-11 (+507d) | 2025-12-20 → 2027-05-10 (+506d) |  | 177d → -245d |  | resources Pro Engineer [312.12 h]; 33kv 3Cx400 mmï¿½ Al XLPE/LLDPE Cable Termination → 33kv 3Cx400 mm² Al XLPE/LLDPE Cable Termination [2] |
| 2 | **Road 09 Local 2 ( 2278 LM )** | 2025-11-20 → 2025-12-13 (+23d) | 2026-01-19 → 2027-06-15 (+512d) |  |  |  |  |
| 1 | **Cabling Works** | 2025-11-20 → 2025-12-13 (+23d) | 2025-12-20 → 2026-11-04 (+319d) |  |  |  |  |
| PRO-R09-MV-DL-100 | Material Delivery & Site Inspection of Medium Voltage Cables for Medium Voltage Network | 2025-11-20 → 2025-12-13 A (+23d) | 2025-12-20 → 2026-11-04 (+319d) | 0% → 90% | 101d → -165d |  | resources Pro Engineer [312.12 h]; Excavation for Trench size 40cm wide and 80cm deep ( Maximum 1 cable 33kv); Excavation for Trench size 60cm wide and 80cm deep ( for Max two cables 33 kv); Excavation for Trench size 90cm wide and 80cm deep ( Maximum 3 cable 33kv); Excavation for Trench size 120cm wide and 80cm deep ( Maximum 4cable 33kv); Excavation for Trench size 150cm wide and 80cm deep ( Maximum 4cable 33kv); Duct bank for (2) 33 kv cables; Duct bank for (4) 33 kv cables; Duct bank for (6) 33 kv cables; 33kv 3Cx400 mmï¿½ Al XLPE / LLDPE /PVC Cable; 33kv 3Cx400 mmï¿½ Al XLPE /LLDPE/PVC → Excavation for Trench size 40cm wide and 80cm deep ( Maximum 1 cable 33kv) [1193.76]; Excavation for Trench size 60cm wide and 80cm deep ( for Max two cables 33 kv) [67.92]; Excavation for Trench size 90cm wide and 80cm deep ( Maximum 3 cable 33kv) [302.56]; Excavation for Trench size 120cm wide and 80cm deep ( Maximum 4cable 33kv) [102.91]; Excavation for Trench size 150cm wide and 80cm deep ( Maximum 4cable 33kv) [380.77]; Duct bank for (2) 33 kv cables [41.42]; Duct bank for (4) 33 kv cables [270.95]; Duct bank for (6) 33 kv cables [123.25]; 33kv 3Cx400 mm² Al XLPE / LLDPE /PVC Cable [8027.33]; 33kv 3Cx400 mm² Al XLPE /LLDPE/PVC [23] |
| 3 | **Termination and Testing Works** | 2025-12-21 → 2027-05-11 (+506d) | 2026-01-19 → 2027-06-15 (+512d) |  |  |  |  |
| PRO-R09-MV-DL-110 | Material Delivery & Site Inspection of Termination and Joints Kits for Medium Voltage Network | 2025-12-21 → 2027-05-11 (+506d) | 2026-01-19 → 2027-06-15 (+512d) |  | 177d → -245d |  | resources Pro Engineer [312.12 h]; 33kv 3Cx400 mmï¿½ Al XLPE/LLDPE Cable Termination → 33kv 3Cx400 mm² Al XLPE/LLDPE Cable Termination [6] |

| ID | Task | Start | Finish | Duration | Complete | Total float | Predecessors | Other |
| --- | --- | --- | --- | --- | --- | --- | --- | --- |
| 5 | **Road 11 Local 1 ( 670 LM )** | 2025-12-21 → 2026-07-22 (+213d) | 2026-02-18 → 2027-07-15 (+512d) |  |  |  |  |  |
| 1 | **Cabling Works** | 2025-12-21 → 2026-07-22 (+213d) | 2026-01-19 → 2026-08-13 (+206d) |  |  |  |  |  |
| PRO-R11-MV-DL-100 | Material Delivery & Site Inspection of Medium Voltage Cables for Medium Voltage Network | 2025-12-21 → 2026-07-22 A (+213d) | 2026-01-19 → 2026-08-13 A (+206d) |  | 0% → 100% | 148d → none |  | resources Pro Engineer [312.12 h]; Excavation for Trench size 40cm wide and 80cm deep ( Maximum 1 cable 33kv); Excavation for Trench size 60cm wide and 80cm deep ( for Max two cables 33 kv); Excavation for Trench size 90cm wide and 80cm deep ( Maximum 3 cable 33kv); Excavation for Trench size 120cm wide and 80cm deep ( Maximum 4cable 33kv); Excavation for Trench size 150cm wide and 80cm deep ( Maximum 4cable 33kv); Duct bank for (2) 33 kv cables; Duct bank for (4) 33 kv cables; Duct bank for (6) 33 kv cables; 33kv 3Cx400 mmï¿½ Al XLPE / LLDPE /PVC Cable; 33kv 3Cx400 mmï¿½ Al XLPE /LLDPE/PVC → Excavation for Trench size 40cm wide and 80cm deep ( Maximum 1 cable 33kv) [232.66]; Excavation for Trench size 60cm wide and 80cm deep ( for Max two cables 33 kv) [13.24]; Excavation for Trench size 90cm wide and 80cm deep ( Maximum 3 cable 33kv) [58.96]; Excavation for Trench size 120cm wide and 80cm deep ( Maximum 4cable 33kv) [20.06]; Excavation for Trench size 150cm wide and 80cm deep ( Maximum 4cable 33kv) [74.22]; Duct bank for (2) 33 kv cables [8.01]; Duct bank for (4) 33 kv cables [53.48]; Duct bank for (6) 33 kv cables [24.03]; 33kv 3Cx400 mm² Al XLPE / LLDPE /PVC Cable [1564.48]; 33kv 3Cx400 mm² Al XLPE /LLDPE/PVC [6] |
| 3 | **Termination and Testing Works** | 2026-01-20 → 2027-06-16 (+512d) | 2026-02-18 → 2027-07-15 (+512d) |  |  |  |  |  |
| PRO-R11-MV-DL-110 | Material Delivery & Site Inspection of Termination and Joints Kits for Medium Voltage Network | 2026-01-20 → 2027-06-16 (+512d) | 2026-02-18 → 2027-07-15 (+512d) |  |  | 177d → -245d |  | resources Pro Engineer [312.12 h]; 33kv 3Cx400 mmï¿½ Al XLPE/LLDPE Cable Termination → 33kv 3Cx400 mm² Al XLPE/LLDPE Cable Termination [2] |
| SL | **Street Lighting Network** |  | 2026-06-23 → 2027-07-08 (+380d) |  |  |  |  |  |
| PO | **Issuance of Purchase Orders** |  | 2025-03-23 → 2025-05-31 (+69d) |  |  |  |  |  |
| PRO-SL-PO-100 | Issuance of Purchase Order for Lighting Cables of Street Lighting Network | 2025-02-11 A | 2025-02-17 A |  | 0% → 100% | 36d → none |  | resources Pro Engineer [312.12 h] → none |
| 2 | **Lighting Poles Works** |  | 2025-03-11 → 2025-05-20 (+70d) |  |  |  |  |  |
| PRO-SL-PO-110 | Issuance of Purchase Order for Lighting Poles Foundations of Street Lighting Network | 2025-02-11 A | 2025-02-25 A |  | 0% → 100% | 56d → none |  | resources Pro Engineer [312.12 h] → none |
| PRO-SL-PO-120 | Issuance of Purchase Order for Lighting Poles of Street Lighting Network | 2025-02-11 A | 2025-02-25 A |  | 0% → 100% | 54d → none |  | resources Pro Engineer [312.12 h] → none |
| PRO-SL-PO-140 | Issuance of Purchase Order for Lighting Fixtures of Street Lighting Network | 2025-02-26 A | 2025-03-11 → 2025-05-20 A (+70d) |  | 0% → 100% | 102d → none |  | resources Pro Engineer [312.12 h] → none |
| 3 | **Distribution Panel Board** | 2025-03-12 → 2025-05-07 (+56d) | 2025-03-23 → 2025-05-31 (+69d) |  |  |  |  |  |
| PRO-SL-PO-160 | Issuance of Purchase Order for Distrubution Panel Boards of Street Lighting Network | 2025-03-12 → 2025-05-07 A (+56d) | 2025-03-23 → 2025-05-31 A (+69d) |  | 0% → 100% | 143d → none |  | resources Pro Engineer [312.12 h] → none |
| 4 | **Earthing System Works** | 2025-03-12 → 2025-05-21 (+70d) | 2025-03-23 → 2025-05-31 (+69d) |  |  |  |  |  |
| PRO-SL-PO-150 | Issuance of Purchase Order for Lighting Earthing of Street Lighting Network | 2025-03-12 → 2025-05-21 A (+70d) | 2025-03-23 → 2025-05-31 A (+69d) |  | 0% → 100% | 315d → none |  | resources Pro Engineer [312.12 h] → none |
| 5 | **Termination and Testing Works** | 2025-03-12 → 2025-05-12 (+61d) | 2025-03-23 → 2025-05-29 (+67d) |  |  |  |  |  |
| PRO-SL-PO-170 | Issuance of Purchase Order for Cable Lugs of Street Lighting Network | 2025-03-12 → 2025-05-12 A (+61d) | 2025-03-23 → 2025-05-18 A (+56d) |  | 0% → 100% | 169d → none |  | resources Pro Engineer [312.12 h] → none |
| PRO-SL-PO-130 | Issuance of Purchase Order for Fuse Boxes of Street Lighting Network | 2025-03-12 → 2025-05-20 A (+69d) | 2025-03-23 → 2025-05-29 A (+67d) |  | 0% → 100% | 143d → none |  | resources Pro Engineer [312.12 h] → none |
| MF | **Manufacturing of Material** |  | 2025-07-24 → 2026-08-30 (+402d) |  |  |  |  |  |
| 1 | **Cabling Works** |  | 2025-05-04 → 2025-05-31 (+27d) |  |  |  |  |  |
| PRO-SL-MF-100 | Manufacturing of Lighting Cables for Street Lighting Network | 2025-02-18 A | 2025-05-04 → 2025-05-31 A (+27d) |  | 0% → 100% | 36d → none |  | resources Pro Engineer [312.12 h] → none |
| 2 | **Lighting Poles Works** |  | 2025-07-24 → 2025-06-01 (-53d) |  |  |  |  |  |
| PRO-SL-MF-110 | Manufacturing of Lighting Poles Foundations for Street Lighting Network | 2025-02-26 A | 2025-05-11 → 2025-04-16 A (-25d) |  | 0% → 100% | 56d → none |  | resources Pro Engineer [312.12 h] → none |
| PRO-SL-MF-120 | Manufacturing of Lighting Poles for Street Lighting Network | 2025-02-26 A | 2025-05-11 → 2025-04-30 A (-11d) |  | 0% → 100% | 54d → none |  | resources Pro Engineer [312.12 h] → none |
| PRO-SL-MF-140 | Manufacturing of Lighting Fixtures for Street Lighting Network | 2025-05-12 → 2025-04-30 A (-12d) | 2025-07-24 → 2025-06-01 A (-53d) |  | 0% → 100% | 54d → none |  | resources Pro Engineer [312.12 h] → none |
| 3 | **Distribution Panel Board** | 2025-06-25 → 2026-08-25 (+426d) | 2025-07-24 → 2026-08-30 (+402d) |  |  |  |  |  |
| PRO-SL-MF-160 | Manufacturing of Distrubution Panel Boards for Street Lighting Network | 2025-06-25 → 2026-08-25 A (+426d) | 2025-07-24 → 2026-08-30 A (+402d) | 26d → 16d | 0% → 100% | 71d → none |  | resources Pro Engineer [312.12 h] → none |
| 4 | **Earthing System Works** | 2025-06-25 → 2026-08-25 (+426d) | 2025-07-24 → 2026-08-30 (+402d) |  |  |  |  |  |
| PRO-SL-MF-150 | Manufacturing of Lighting Earthing for Street Lighting Network | 2025-06-25 → 2026-08-25 A (+426d) | 2025-07-24 → 2026-08-30 A (+402d) |  | 0% → 100% | 243d → none |  | resources Pro Engineer [312.12 h] → none |
| 5 | **Termination and Testing Works** | 2025-06-25 → 2026-08-25 (+426d) | 2025-07-24 → 2026-08-30 (+402d) |  |  |  |  |  |
| PRO-SL-MF-130 | Manufacturing of Fuse Boxes for Street Lighting Network | 2025-06-25 → 2026-08-25 A (+426d) | 2025-07-24 → 2026-08-30 A (+402d) | 26d → 6d | 0% → 100% | 71d → none |  | resources Pro Engineer [312.12 h] → none |
| PRO-SL-MF-170 | Manufacturing of Cable Lugs for Street Lighting Network | 2025-06-25 → 2026-08-25 A (+426d) | 2025-07-24 → 2026-08-30 A (+402d) | 26d → 12d | 0% → 100% | 97d → none |  | resources Pro Engineer [312.12 h] → none |
| 1DL | **1st Material Delivery & Site Inspection** | 2025-05-05 → 2025-04-17 (-18d) | 2025-08-11 → 2026-10-22 (+437d) |  |  |  |  |  |
| 1 | **Cabling Works** | 2025-05-05 → 2025-06-01 (+27d) | 2025-05-11 → 2025-06-10 (+30d) |  |  |  |  |  |
| PRO-SL-1DL-100 | 1ST Material Delivery for Lighting Cables of Street Lighting Network | 2025-05-05 → 2025-06-01 A (+27d) | 2025-05-11 → 2025-06-10 A (+30d) |  | 0% → 100% | 36d → none |  | resources Pro Engineer [312.12 h] → none |
| 2 | **Lighting Poles Works** | 2025-05-12 → 2025-04-17 (-25d) | 2025-07-31 → 2026-10-12 (+438d) |  |  |  |  |  |
| PRO-SL-1DL-110 | 1ST Material Delivery for Lighting Poles Foundations of Street Lighting Network | 2025-05-12 → 2025-04-17 A (-25d) | 2025-05-18 → 2025-04-27 A (-21d) |  | 0% → 100% | 56d → none |  | resources Pro Engineer [312.12 h] → none |
| PRO-SL-1DL-120 | 1ST Material Delivery for Lighting Poles of Street Lighting Network | 2025-05-12 → 2025-09-01 A (+112d) | 2025-05-18 → 2025-09-08 A (+113d) |  | 0% → 100% | 82d → none |  | resources Pro Engineer [312.12 h] → none |
| PRO-SL-1DL-140 | 1ST Material Delivery for Lighting Fixtures of Street Lighting Network | 2025-07-26 → 2026-10-06 (+437d) | 2025-07-31 → 2026-10-12 (+438d) |  |  | 54d → -274d |  | resources Pro Engineer [44.04 h] → none |
| 3 | **Distribution Panel Board** | 2025-07-26 → 2026-10-06 (+437d) | 2025-07-31 → 2026-10-12 (+438d) |  |  |  |  |  |
| PRO-SL-1DL-160 | 1ST Material Delivery for Distrubution Panel Boards of Street Lighting Network | 2025-07-26 → 2026-10-06 (+437d) | 2025-07-31 → 2026-10-12 (+438d) |  |  | 258d → -108d |  | resources Pro Engineer [312.12 h] → none |
| 5 | **Termination and Testing Works** | 2025-07-26 → 2026-10-06 (+437d) | 2025-08-11 → 2026-10-22 (+437d) |  |  |  |  |  |
| PRO-SL-1DL-130 | 1ST Material Delivery for Fuse Boxes of Street Lighting Network | 2025-07-26 → 2026-10-06 (+437d) | 2025-08-11 → 2026-10-12 (+427d) | 15d → 6d |  | 71d → -268d |  | resources Pro Engineer [312.12 h] → none |
| PRO-SL-1DL-170 | 1ST Material Delivery for Cable Lugs of Street Lighting Network | 2025-07-26 → 2026-10-06 (+437d) | 2025-08-11 → 2026-10-22 (+437d) |  |  | 97d → -269d |  | resources Pro Engineer [312.12 h] → none |
| 4 | **Earthing System Works** | 2025-07-26 → 2026-10-06 (+437d) | 2025-07-31 → 2026-10-12 (+438d) |  |  |  |  |  |
| PRO-SL-1DL-150 | 1ST Material Delivery for Lighting Earthing of Street Lighting Network | 2025-07-26 → 2026-10-06 (+437d) | 2025-07-31 → 2026-10-12 (+438d) |  |  | 243d → -123d |  | resources Pro Engineer [44.04 h] → none |
| DL | **Material Delivery & Site Inspection** | 2025-05-12 → 2025-06-11 (+30d) | 2026-06-23 → 2027-07-08 (+380d) |  |  |  |  |  |
| 1 | **Road 18 Local 1 ( 479 LM )** | 2025-05-12 → 2025-06-11 (+30d) | 2025-11-15 → 2026-11-28 (+378d) |  |  |  |  |  |
| 1 | **Cabling Works** | 2025-05-12 → 2025-06-11 (+30d) | 2025-06-15 → 2025-06-30 (+15d) |  |  |  |  |  |
| PRO-R18-SL-DL-180 | Material Delivery & Site Inspection of Lighting Cables for Street Lighting Network | 2025-05-12 → 2025-06-11 A (+30d) | 2025-06-15 → 2025-06-30 A (+15d) |  | 0% → 100% | 36d → none |  | resources Pro Engineer [312.12 h]; Supply, installation , test and operation of cables, Copper, (4Cx25mmï¿½,Cu/XLPE/SWA/PVC +1x16mmï¿½ PVC/PVC) → Supply, installation , test and operation of cables, Copper, (4Cx25mm²,Cu/XLPE/SWA/PVC +1x16mm² PVC/PVC) [1239] |
| 2 | **Lighting Poles Works** | 2025-06-16 → 2025-07-01 (+15d) | 2025-09-14 → 2026-10-24 (+405d) |  |  |  |  |  |
| PRO-R18-SL-DL-190 | Material Delivery & Site Inspection of Lighting Poles Foundations for Street Lighting Network | 2025-06-16 → 2025-07-01 A (+15d) | 2025-07-15 → 2025-07-10 A (-5d) |  | 0% → 100% | 36d → none |  | resources Pro Engineer [312.12 h]; Reinforced concrete foundation, for 12m high lighting columns With Drawpits → Reinforced concrete foundation, for 12m high lighting columns With Drawpits [21] |
| PRO-R18-SL-DL-200 | Material Delivery & Site Inspection of Lighting Poles for Street Lighting Network | 2025-07-16 → 2025-09-09 A (+55d) | 2025-08-14 → 2025-09-09 A (+26d) |  | 0% → 100% | 36d → none |  | resources Pro Engineer [312.12 h]; Lighting poles with one arm, including the power distribution box, screws, cables, 12 meters in height. → Lighting poles with one arm, including the power distribution box, screws, cables, 12 meters in height. [21] |
| PRO-R18-SL-DL-220 | Material Delivery & Site Inspection of Lighting Fixtures for Street Lighting Network | 2025-08-16 → 2026-10-13 (+423d) | 2025-09-14 → 2026-10-24 (+405d) | 26d → 10d |  | 42d → -274d |  | resources Pro Engineer [44.04 h]; Street Lighting( LED) Luminaire,(Type C) complete with control gear and lamp, ?.17000 Lumen → Street Lighting( LED) Luminaire,(Type C) complete with control gear and lamp, ?.17000 Lumen [21] |
| 4 | **Termination and Testing Works** | 2025-09-15 → 2026-10-13 (+393d) | 2025-11-15 → 2026-11-28 (+378d) |  |  |  |  |  |
| PRO-R18-SL-DL-210 | Material Delivery & Site Inspection of Fuse Boxes for Street Lighting Network | 2025-09-15 → 2026-10-13 (+393d) | 2025-10-15 → 2026-10-28 (+378d) | 26d → 14d |  | 42d → -274d | PRO-SL-1DL-130, PRO-R18-SL-DL-220 → PRO-SL-1DL-130 SS, PRO-R18-SL-DL-220 SS | resources Pro Engineer [44.04 h]; Road crossing ducts, 4 way (4 x 100mm PVC); Drawpit with medium duty steel cover, size 900x900x1200mm, Type 4 → Road crossing ducts, 4 way (4 x 100mm PVC) [46.02]; Drawpit with medium duty steel cover, size 900x900x1200mm, Type 4 [4] |
| PRO-R18-SL-DL-250 | Material Delivery & Site Inspection of Cable Lugs for Street Lighting Network | 2025-10-16 → 2026-10-29 (+378d) | 2025-11-15 → 2026-11-28 (+378d) |  |  | 42d → -274d |  | resources Pro Engineer [44.04 h] → none |
| 9 | **Road 17 Local 1 ( 500 LM )** | 2025-06-16 → 2025-06-11 (-5d) | 2025-12-15 → 2026-12-28 (+378d) |  |  |  |  |  |
| 1 | **Cabling Works** | 2025-06-16 → 2025-06-11 (-5d) | 2025-07-15 → 2025-06-30 (-15d) |  |  |  |  |  |
| PRO-R17-SL-DL-100 | Material Delivery & Site Inspection of Lighting Cables for Street Lighting Network | 2025-06-16 → 2025-06-11 A (-5d) | 2025-07-15 → 2025-06-30 A (-15d) |  | 0% → 100% | 108d → none |  | resources Pro Engineer [312.12 h]; Supply, installation , test and operation of cables, Copper, (4Cx25mmï¿½,Cu/XLPE/SWA/PVC +1x16mmï¿½ PVC/PVC) → Supply, installation , test and operation of cables, Copper, (4Cx25mm²,Cu/XLPE/SWA/PVC +1x16mm² PVC/PVC) [1281] |
| 2 | **Lighting Poles Works** | 2025-07-16 → 2025-07-11 (-5d) | 2025-10-15 → 2026-11-23 (+404d) |  |  |  |  |  |
| PRO-R17-SL-DL-110 | Material Delivery & Site Inspection of Lighting Poles Foundations for Street Lighting Network | 2025-07-16 → 2025-07-11 A (-5d) | 2025-08-14 → 2025-07-20 A (-25d) |  | 0% → 100% | 41d → none |  | resources Pro Engineer [312.12 h]; Reinforced concrete foundation, for 12m high lighting columns With Drawpits → Reinforced concrete foundation, for 12m high lighting columns With Drawpits [26] |
| PRO-R17-SL-DL-120 | Material Delivery & Site Inspection of Lighting Poles for Street Lighting Network | 2025-08-16 → 2025-09-10 A (+25d) | 2025-09-14 → 2025-09-10 A (-4d) |  | 0% → 100% | 36d → none |  | resources Pro Engineer [312.12 h]; Lighting poles with one arm, including the power distribution box, screws, cables, 12 meters in height. → Lighting poles with one arm, including the power distribution box, screws, cables, 12 meters in height. [22] |
| PRO-R17-SL-DL-140 | Material Delivery & Site Inspection of Lighting Fixtures for Street Lighting Network | 2025-09-15 → 2026-10-25 (+405d) | 2025-10-15 → 2026-11-23 (+404d) |  |  | 64.5d → -247.5d |  | resources Pro Engineer [44.04 h]; Street Lighting( LED) Luminaire,(Type C) complete with control gear and lamp, ?.17000 Lumen → Street Lighting( LED) Luminaire,(Type C) complete with control gear and lamp, ?.17000 Lumen [22] |
| 4 | **Termination and Testing Works** | 2025-10-16 → 2026-10-13 (+362d) | 2025-12-15 → 2026-12-28 (+378d) |  |  |  |  |  |
| PRO-R17-SL-DL-130 | Material Delivery & Site Inspection of Fuse Boxes for Street Lighting Network | 2025-10-16 → 2026-10-13 (+362d) | 2025-11-15 → 2026-11-11 (+361d) |  |  | 50.5d → -225.5d | PRO-SL-1DL-130, PRO-R18-SL-DL-210 → PRO-SL-1DL-130, PRO-R18-SL-DL-210 SS | resources Pro Engineer [44.04 h]; Road crossing ducts, 4 way (4 x 100mm PVC); Drawpit with medium duty steel cover, size 900x900x1200mm, Type 4 → Road crossing ducts, 4 way (4 x 100mm PVC) [48.08]; Drawpit with medium duty steel cover, size 900x900x1200mm, Type 4 [3] |
| PRO-R17-SL-DL-170 | Material Delivery & Site Inspection of Cable Lugs for Street Lighting Network | 2025-11-16 → 2026-11-29 (+378d) | 2025-12-15 → 2026-12-28 (+378d) |  |  | 42d → -274d |  | resources Pro Engineer [44.04 h] → none |
| 8 | **Road 16 Local 1 ( 527 LM )** | 2025-07-16 → 2025-06-11 (-35d) | 2026-01-14 → 2027-01-27 (+378d) |  |  |  |  |  |
| 1 | **Cabling Works** | 2025-07-16 → 2025-06-11 (-35d) | 2025-08-14 → 2025-06-30 (-45d) |  |  |  |  |  |

| ID | Task | Start | Finish | Complete | Total float | Predecessors | Other |
| --- | --- | --- | --- | --- | --- | --- | --- |
| PRO-R16-SL-DL-100 | Material Delivery & Site Inspection of Lighting Cables for Street Lighting Network | 2025-07-16 → 2025-06-11 A (-35d) | 2025-08-14 → 2025-06-30 A (-45d) | 0% → 100% | 108d → none | PRO-SL-1DL-100, PRO-R17-SL-DL-100 → PRO-SL-1DL-100, PRO-R17-SL-DL-100 FF | resources Pro Engineer [312.12 h]; Supply, installation , test and operation of cables, Copper, (4Cx25mmï¿½,Cu/XLPE/SWA/PVC +1x16mmï¿½ PVC/PVC) → Supply, installation , test and operation of cables, Copper, (4Cx25mm²,Cu/XLPE/SWA/PVC +1x16mm² PVC/PVC) [1344] |
| 2 | **Lighting Poles Works** | 2025-08-16 → 2025-09-01 (+16d) | 2025-11-15 → 2026-12-23 (+403d) |  |  |  |  |
| PRO-R16-SL-DL-110 | Material Delivery & Site Inspection of Lighting Poles Foundations for Street Lighting Network | 2025-08-16 → 2025-09-01 A (+16d) | 2025-09-14 → 2025-09-02 A (-12d) | 0% → 100% | 41d → none |  | resources Pro Engineer [312.12 h]; Reinforced concrete foundation, for 12m high lighting columns With Drawpits → Reinforced concrete foundation, for 12m high lighting columns With Drawpits [23] |
| PRO-R16-SL-DL-120 | Material Delivery & Site Inspection of Lighting Poles for Street Lighting Network | 2025-09-15 → 2025-09-11 A (-4d) | 2025-10-15 → 2025-09-11 A (-34d) | 0% → 100% | 36d → none |  | resources Pro Engineer [312.12 h]; Lighting poles with one arm, including the power distribution box, screws, cables, 12 meters in height. → Lighting poles with one arm, including the power distribution box, screws, cables, 12 meters in height. [23] |
| PRO-R16-SL-DL-140 | Material Delivery & Site Inspection of Lighting Fixtures for Street Lighting Network | 2025-10-16 → 2026-11-24 (+404d) | 2025-11-15 → 2026-12-23 (+403d) |  | 64.5d → -247.5d |  | resources Pro Engineer [44.04 h]; Street Lighting( LED) Luminaire,(Type C) complete with control gear and lamp, ?.17000 Lumen → Street Lighting( LED) Luminaire,(Type C) complete with control gear and lamp, ?.17000 Lumen [23] |
| 4 | **Termination and Testing Works** | 2025-11-16 → 2026-10-13 (+331d) | 2026-01-14 → 2027-01-27 (+378d) |  |  |  |  |
| PRO-R16-SL-DL-130 | Material Delivery & Site Inspection of Fuse Boxes for Street Lighting Network | 2025-11-16 → 2026-10-13 (+331d) | 2025-12-15 → 2026-11-11 (+331d) |  | 50.5d → -225.5d | PRO-SL-1DL-130, PRO-R17-SL-DL-130 → PRO-SL-1DL-130 SS, PRO-R17-SL-DL-130 SS | resources Pro Engineer [44.04 h]; Road crossing ducts, 4 way (4 x 100mm PVC); Drawpit with medium duty steel cover, size 900x900x1200mm, Type 4 → Road crossing ducts, 4 way (4 x 100mm PVC) [49.92]; Drawpit with medium duty steel cover, size 900x900x1200mm, Type 4 [3] |
| PRO-R16-SL-DL-170 | Material Delivery & Site Inspection of Cable Lugs for Street Lighting Network | 2025-12-16 → 2026-12-29 (+378d) | 2026-01-14 → 2027-01-27 (+378d) |  | 42d → -274d |  | resources Pro Engineer [44.04 h] → none |
| 7 | **Road 15 Local 1 ( 556 LM )** | 2025-08-16 → 2025-06-11 (-66d) | 2026-02-14 → 2027-02-28 (+379d) |  |  |  |  |
| 1 | **Cabling Works** | 2025-08-16 → 2025-06-11 (-66d) | 2025-09-14 → 2025-06-30 (-76d) |  |  |  |  |
| PRO-R15-SL-DL-100 | Material Delivery & Site Inspection of Lighting Cables for Street Lighting Network | 2025-08-16 → 2025-06-11 A (-66d) | 2025-09-14 → 2025-06-30 A (-76d) | 0% → 100% | 108d → none | PRO-SL-1DL-100, PRO-R16-SL-DL-100 → PRO-SL-1DL-100, PRO-R16-SL-DL-100 FF | resources Pro Engineer [312.12 h]; Supply, installation , test and operation of cables, Copper, (4Cx25mmï¿½,Cu/XLPE/SWA/PVC +1x16mmï¿½ PVC/PVC) → Supply, installation , test and operation of cables, Copper, (4Cx25mm²,Cu/XLPE/SWA/PVC +1x16mm² PVC/PVC) [1428] |
| 2 | **Lighting Poles Works** | 2025-09-15 → 2025-07-28 (-49d) | 2025-12-15 → 2026-12-23 (+373d) |  |  |  |  |
| PRO-R15-SL-DL-110 | Material Delivery & Site Inspection of Lighting Poles Foundations for Street Lighting Network | 2025-09-15 → 2025-07-28 A (-49d) | 2025-10-15 → 2025-08-03 A (-73d) | 0% → 100% | 41d → none | PRO-SL-1DL-110, PRO-R16-SL-DL-110 → PRO-SL-1DL-110 | resources Pro Engineer [312.12 h]; Reinforced concrete foundation, for 12m high lighting columns With Drawpits → Reinforced concrete foundation, for 12m high lighting columns With Drawpits [25] |
| PRO-R15-SL-DL-120 | Material Delivery & Site Inspection of Lighting Poles for Street Lighting Network | 2025-10-16 → 2025-09-13 A (-33d) | 2025-11-15 → 2025-09-13 A (-63d) | 0% → 100% | 36d → none |  | resources Pro Engineer [312.12 h]; Lighting poles with one arm, including the power distribution box, screws, cables, 12 meters in height. → Lighting poles with one arm, including the power distribution box, screws, cables, 12 meters in height. [25] |
| PRO-R15-SL-DL-140 | Material Delivery & Site Inspection of Lighting Fixtures for Street Lighting Network | 2025-11-16 → 2026-11-24 (+373d) | 2025-12-15 → 2026-12-23 (+373d) |  | 64.5d → -247.5d | PRO-SL-1DL-140, PRO-R16-SL-DL-140 → PRO-SL-1DL-140, PRO-R16-SL-DL-140 SS | resources Pro Engineer [44.04 h]; Street Lighting( LED) Luminaire,(Type C) complete with control gear and lamp, ?.17000 Lumen → Street Lighting( LED) Luminaire,(Type C) complete with control gear and lamp, ?.17000 Lumen [25] |
| 4 | **Termination and Testing Works** | 2025-12-16 → 2026-11-12 (+331d) | 2026-02-14 → 2027-02-28 (+379d) |  |  |  |  |
| PRO-R15-SL-DL-130 | Material Delivery & Site Inspection of Fuse Boxes for Street Lighting Network | 2025-12-16 → 2026-11-12 (+331d) | 2026-01-14 → 2026-12-12 (+332d) |  | 50.5d → -225.5d |  | resources Pro Engineer [44.04 h]; Road crossing ducts, 4 way (4 x 100mm PVC); Drawpit with medium duty steel cover, size 900x900x1200mm, Type 4 → Road crossing ducts, 4 way (4 x 100mm PVC) [53.04]; Drawpit with medium duty steel cover, size 900x900x1200mm, Type 4 [4] |
| PRO-R15-SL-DL-170 | Material Delivery & Site Inspection of Cable Lugs for Street Lighting Network | 2026-01-15 → 2027-01-28 (+378d) | 2026-02-14 → 2027-02-28 (+379d) |  | 42d → -274d |  | resources Pro Engineer [44.04 h] → none |
| 4 | **Road 10 Local 2 ( 2352 LM )** | 2025-08-02 → 2025-06-15 (-48d) | 2026-03-16 → 2027-04-03 (+383d) |  |  |  |  |
| 1 | **Cabling Works** | 2025-09-15 → 2025-06-15 (-92d) | 2025-10-15 → 2025-06-30 (-107d) |  |  |  |  |
| PRO-R10-SL-DL-100 | Material Delivery & Site Inspection of Lighting Cables for Street Lighting Network | 2025-09-15 → 2025-06-15 A (-92d) | 2025-10-15 → 2025-06-30 A (-107d) | 0% → 100% | 108d → none | PRO-SL-1DL-100, PRO-R15-SL-DL-100 → PRO-SL-1DL-100, PRO-R15-SL-DL-100 FF | resources Pro Engineer [312.12 h]; Supply, installation , test and operation of cables, Copper, (4Cx25mmï¿½,Cu/XLPE/SWA/PVC +1x16mmï¿½ PVC/PVC) → Supply, installation , test and operation of cables, Copper, (4Cx25mm²,Cu/XLPE/SWA/PVC +1x16mm² PVC/PVC) [5775] |
| 2 | **Lighting Poles Works** | 2025-10-16 → 2026-08-27 (+315d) | 2026-01-14 → 2027-01-23 (+374d) |  |  |  |  |
| PRO-R10-SL-DL-110 | Material Delivery & Site Inspection of Lighting Poles Foundations for Street Lighting Network | 2025-10-16 → 2026-08-27 A (+315d) | 2025-11-15 → 2026-08-29 A (+287d) | 0% → 100% | 41d → none |  | resources Pro Engineer [312.12 h]; Reinforced concrete foundation, for 12m high lighting columns With Drawpits; Reinforced concrete base With fence for Distribution substation in accordance with SEC Specifications → Reinforced concrete foundation, for 12m high lighting columns With Drawpits [96]; Reinforced concrete base With fence for Distribution substation in accordance with SEC Specifications [3] |
| PRO-R10-SL-DL-120 | Material Delivery & Site Inspection of Lighting Poles for Street Lighting Network | 2025-11-16 → 2026-08-27 A (+284d) | 2025-12-15 → 2026-08-29 A (+257d) | 0% → 100% | 36d → none |  | resources Pro Engineer [312.12 h]; Lighting poles with one arm, including the power distribution box, screws, cables, 12 meters in height. → Lighting poles with one arm, including the power distribution box, screws, cables, 12 meters in height. [96] |
| PRO-R10-SL-DL-140 | Material Delivery & Site Inspection of Lighting Fixtures for Street Lighting Network | 2025-12-16 → 2026-12-24 (+373d) | 2026-01-14 → 2027-01-23 (+374d) |  | 64.5d → -247.5d |  | resources Pro Engineer [44.04 h]; Street Lighting( LED) Luminaire,(Type C) complete with control gear and lamp, ?.17000 Lumen → Street Lighting( LED) Luminaire,(Type C) complete with control gear and lamp, ?.17000 Lumen [96] |
| 3 | **Distribution Panel Board** | 2025-08-02 → 2026-09-21 (+415d) | 2025-08-31 → 2026-11-11 (+437d) |  |  |  |  |
| PRO-R10-SL-DL-160 | Material Delivery & Site Inspection of Distrubution Panel Boards for Street Lighting Network | 2025-08-02 → 2026-09-21 A (+415d) | 2025-08-31 → 2026-11-11 (+437d) | 0% → 80% | 258d → -108d |  | resources Pro Engineer [208.18 h]; Package Substation 33000/400V, 500kVA with RMU; Street Lighting Feeder pillars , Includes foundation and draw pits → Package Substation 33000/400V, 500kVA with RMU [3]; Street Lighting Feeder pillars , Includes foundation and draw pits [3] |
| 4 | **Termination and Testing Works** | 2026-01-15 → 2026-09-21 (+249d) | 2026-03-16 → 2027-04-03 (+383d) |  |  |  |  |
| PRO-R10-SL-DL-130 | Material Delivery & Site Inspection of Fuse Boxes for Street Lighting Network | 2026-01-15 → 2026-09-21 A (+249d) | 2026-02-14 → 2027-01-11 (+331d) | 0% → 80% | 50.5d → -225.5d |  | resources Pro Engineer [208.18 h]; Road crossing ducts, 4 way (4 x 100mm PVC); Drawpit with medium duty steel cover, size 600x600x1000mm, Type 18; Drawpit with medium duty steel cover, size 900x900x1200mm, Type 4 → Road crossing ducts, 4 way (4 x 100mm PVC) [214.5]; Drawpit with medium duty steel cover, size 600x600x1000mm, Type 18 [3]; Drawpit with medium duty steel cover, size 900x900x1200mm, Type 4 [20] |
| PRO-R10-SL-DL-170 | Material Delivery & Site Inspection of Cable Lugs for Street Lighting Network | 2026-02-15 → 2026-09-21 A (+218d) | 2026-03-16 → 2027-04-03 (+383d) | 0% → 80% | 42d → -274d |  | resources Pro Engineer [208.18 h] → none |
| 5 | **Earthing System Works** | 2025-08-02 → 2026-10-13 (+437d) | 2025-08-31 → 2026-11-11 (+437d) |  |  |  |  |
| PRO-R10-SL-DL-150 | Material Delivery & Site Inspection of Lighting Earthing for Street Lighting Network | 2025-08-02 → 2026-10-13 (+437d) | 2025-08-31 → 2026-11-11 (+437d) |  | 243d → -123d |  | resources Pro Engineer [44.04 h]; Earthing installation, lighting plants.; Earthing installation, for Street lighting circuits, including earth rod in plastic chamber; Earthing installation Lighting Panales → Earthing installation, lighting plants. [3]; Earthing installation, for Street lighting circuits, including earth rod in plastic chamber [25]; Earthing installation Lighting Panales [3] |
| 6 | **Road 14 Local 1 ( 584 LM )** | 2025-10-16 → 2025-11-01 (+16d) | 2026-04-19 → 2027-05-03 (+379d) |  |  |  |  |
| 1 | **Cabling Works** | 2025-10-16 → 2025-11-01 (+16d) | 2025-11-15 → 2025-11-04 (-11d) |  |  |  |  |
| PRO-R14-SL-DL-100 | Material Delivery & Site Inspection of Lighting Cables for Street Lighting Network | 2025-10-16 → 2025-11-01 A (+16d) | 2025-11-15 → 2025-11-04 A (-11d) | 0% → 100% | 108d → none |  | resources Pro Engineer [312.12 h]; Supply, installation , test and operation of cables, Copper, (4Cx25mmï¿½,Cu/XLPE/SWA/PVC +1x16mmï¿½ PVC/PVC) → Supply, installation , test and operation of cables, Copper, (4Cx25mm²,Cu/XLPE/SWA/PVC +1x16mm² PVC/PVC) [2478] |
| 2 | **Lighting Poles Works** | 2025-11-16 → 2026-08-26 (+283d) | 2026-02-14 → 2027-02-23 (+374d) |  |  |  |  |
| PRO-R14-SL-DL-110 | Material Delivery & Site Inspection of Lighting Poles Foundations for Street Lighting Network | 2025-11-16 → 2026-08-26 A (+283d) | 2025-12-15 → 2026-08-31 A (+259d) | 0% → 100% | 41d → none | PRO-SL-1DL-110, PRO-R10-SL-DL-110 → PRO-SL-1DL-110, PRO-R10-SL-DL-110, PRO-R16-SL-DL-110 | resources Pro Engineer [312.12 h]; Reinforced concrete foundation, for 12m high lighting columns With Drawpits → Reinforced concrete foundation, for 12m high lighting columns With Drawpits [42] |
| PRO-R14-SL-DL-120 | Material Delivery & Site Inspection of Lighting Poles for Street Lighting Network | 2025-12-16 → 2026-08-26 A (+253d) | 2026-01-14 → 2026-08-31 A (+229d) | 0% → 100% | 36d → none |  | resources Pro Engineer [312.12 h]; Lighting poles with one arm, including the power distribution box, screws, cables, 12 meters in height.; Lighting poles complete with two arms, including the power distribution box, screws, cables, 12 meters in height. → Lighting poles with one arm, including the power distribution box, screws, cables, 12 meters in height. [42]; Lighting poles complete with two arms, including the power distribution box, screws, cables, 12 meters in height. [4] |
| PRO-R14-SL-DL-140 | Material Delivery & Site Inspection of Lighting Fixtures for Street Lighting Network | 2026-01-15 → 2027-01-24 (+374d) | 2026-02-14 → 2027-02-23 (+374d) |  | 64.5d → -247.5d |  | resources Pro Engineer [44.04 h]; Street Lighting( LED) Luminaire,(Type C) complete with control gear and lamp, ?.17000 Lumen; Street Lighting( LED) Luminaire,(Type B) complete with control gear and lamp, ?.40600 Lumen → Street Lighting( LED) Luminaire,(Type C) complete with control gear and lamp, ?.17000 Lumen [42]; Street Lighting( LED) Luminaire,(Type B) complete with control gear and lamp, ?.40600 Lumen [8] |
| 4 | **Termination and Testing Works** | 2026-02-15 → 2027-01-12 (+331d) | 2026-04-19 → 2027-05-03 (+379d) |  |  |  |  |
| PRO-R14-SL-DL-130 | Material Delivery & Site Inspection of Fuse Boxes for Street Lighting Network | 2026-02-15 → 2027-01-12 (+331d) | 2026-03-16 → 2027-02-10 (+331d) |  | 50.5d → -225.5d |  | resources Pro Engineer [44.04 h]; Road crossing ducts, 4 way (4 x 100mm PVC); Drawpit with medium duty steel cover, size 900x900x1200mm, Type 4 → Road crossing ducts, 4 way (4 x 100mm PVC) [92.04]; Drawpit with medium duty steel cover, size 900x900x1200mm, Type 4 [6] |
| PRO-R14-SL-DL-170 | Material Delivery & Site Inspection of Cable Lugs for Street Lighting Network | 2026-03-17 → 2027-04-04 (+383d) | 2026-04-19 → 2027-05-03 (+379d) |  | 42d → -274d |  | resources Pro Engineer [44.04 h] → none |
| 2 | **Road 09 Local 2 ( 2278 LM )** | 2025-08-02 → 2025-10-31 (+90d) | 2026-05-19 → 2027-06-08 (+385d) |  |  |  |  |
| 1 | **Cabling Works** | 2025-11-16 → 2026-02-17 (+93d) | 2025-12-15 → 2026-02-22 (+69d) |  |  |  |  |
| PRO-R09-SL-DL-100 | Material Delivery & Site Inspection of Lighting Cables for Street Lighting Network | 2025-11-16 → 2026-02-17 A (+93d) | 2025-12-15 → 2026-02-22 A (+69d) | 0% → 100% | 108d → none |  | resources Pro Engineer [312.12 h]; Supply, installation , test and operation of cables, Copper, (4Cx25mmï¿½,Cu/XLPE/SWA/PVC +1x16mmï¿½ PVC/PVC) → Supply, installation , test and operation of cables, Copper, (4Cx25mm²,Cu/XLPE/SWA/PVC +1x16mm² PVC/PVC) [5754] |
| 2 | **Lighting Poles Works** | 2025-12-16 → 2026-02-17 (+63d) | 2026-03-16 → 2027-03-29 (+378d) |  |  |  |  |
| PRO-R09-SL-DL-110 | Material Delivery & Site Inspection of Lighting Poles Foundations for Street Lighting Network | 2025-12-16 → 2026-02-17 A (+63d) | 2026-01-14 → 2026-02-22 A (+39d) | 0% → 100% | 41d → none |  | resources Pro Engineer [312.12 h]; Reinforced concrete foundation, for 12m high lighting columns With Drawpits; Reinforced concrete base With fence for Distribution substation in accordance with SEC Specifications → Reinforced concrete foundation, for 12m high lighting columns With Drawpits [98]; Reinforced concrete base With fence for Distribution substation in accordance with SEC Specifications [3] |
| PRO-R09-SL-DL-120 | Material Delivery & Site Inspection of Lighting Poles for Street Lighting Network | 2026-01-15 → 2026-02-17 A (+33d) | 2026-02-14 → 2026-02-22 A (+8d) | 0% → 100% | 36d → none |  | resources Pro Engineer [312.12 h]; Lighting poles with one arm, including the power distribution box, screws, cables, 12 meters in height. → Lighting poles with one arm, including the power distribution box, screws, cables, 12 meters in height. [98] |
| PRO-R09-SL-DL-140 | Material Delivery & Site Inspection of Lighting Fixtures for Street Lighting Network | 2026-02-15 → 2027-02-24 (+374d) | 2026-03-16 → 2027-03-29 (+378d) |  | 64.5d → -247.5d |  | resources Pro Engineer [44.04 h]; Street Lighting( LED) Luminaire,(Type C) complete with control gear and lamp, ?.17000 Lumen → Street Lighting( LED) Luminaire,(Type C) complete with control gear and lamp, ?.17000 Lumen [98] |
| 3 | **Distribution Panel Board** | 2025-08-02 → 2025-10-31 (+90d) | 2025-08-31 → 2026-02-20 (+173d) |  |  |  |  |
| PRO-R09-SL-DL-160 | Material Delivery & Site Inspection of Distrubution Panel Boards for Street Lighting Network | 2025-08-02 → 2025-10-31 A (+90d) | 2025-08-31 → 2026-02-20 A (+173d) | 0% → 100% | 307.75d → none |  | resources Pro Engineer [312.12 h]; Package Substation 33000/400V, 500kVA with RMU; Street Lighting Feeder pillars , Includes foundation and draw pits → Package Substation 33000/400V, 500kVA with RMU [3]; Street Lighting Feeder pillars , Includes foundation and draw pits [3] |
| 4 | **Termination and Testing Works** | 2026-03-17 → 2027-02-11 (+331d) | 2026-05-19 → 2027-06-08 (+385d) |  |  |  |  |
| PRO-R09-SL-DL-130 | Material Delivery & Site Inspection of Fuse Boxes for Street Lighting Network | 2026-03-17 → 2027-02-11 (+331d) | 2026-04-19 → 2027-03-17 (+332d) |  | 50.5d → -225.5d |  | resources Pro Engineer [44.04 h]; Road crossing ducts, 4 way (4 x 100mm PVC); Drawpit with medium duty steel cover, size 600x600x1000mm, Type 18; Drawpit with medium duty steel cover, size 900x900x1200mm, Type 4 → Road crossing ducts, 4 way (4 x 100mm PVC) [214]; Drawpit with medium duty steel cover, size 600x600x1000mm, Type 18 [3]; Drawpit with medium duty steel cover, size 900x900x1200mm, Type 4 [20] |
| PRO-R09-SL-DL-170 | Material Delivery & Site Inspection of Cable Lugs for Street Lighting Network | 2026-04-20 → 2027-05-04 (+379d) | 2026-05-19 → 2027-06-08 (+385d) |  | 42d → -274d |  | resources Pro Engineer [44.04 h] → none |
| 5 | **Earthing System Works** | 2025-08-02 → 2026-10-13 (+437d) | 2025-08-31 → 2026-11-11 (+437d) |  |  |  |  |
| PRO-R09-SL-DL-150 | Material Delivery & Site Inspection of Lighting Earthing for Street Lighting Network | 2025-08-02 → 2026-10-13 (+437d) | 2025-08-31 → 2026-11-11 (+437d) |  | 256.5d → -109.5d |  | resources Pro Engineer [44.04 h]; Earthing installation, lighting plants.; Earthing installation, for Street lighting circuits, including earth rod in plastic chamber; Earthing installation Lighting Panales → Earthing installation, lighting plants. [3]; Earthing installation, for Street lighting circuits, including earth rod in plastic chamber [25]; Earthing installation Lighting Panales [3] |
| 5 | **Road 11 Local 1 ( 670 LM )** | 2025-12-16 → 2026-07-23 (+219d) | 2026-06-23 → 2027-07-08 (+380d) |  |  |  |  |
| 1 | **Cabling Works** | 2025-12-16 → 2026-07-23 (+219d) | 2026-01-14 → 2026-07-25 (+192d) |  |  |  |  |
| PRO-R11-SL-DL-100 | Material Delivery & Site Inspection of Lighting Cables for Street Lighting Network | 2025-12-16 → 2026-07-23 A (+219d) | 2026-01-14 → 2026-07-25 A (+192d) | 0% → 100% | 108d → none |  | resources Pro Engineer [312.12 h]; Supply, installation , test and operation of cables, Copper, (4Cx25mmï¿½,Cu/XLPE/SWA/PVC +1x16mmï¿½ PVC/PVC) → Supply, installation , test and operation of cables, Copper, (4Cx25mm²,Cu/XLPE/SWA/PVC +1x16mm² PVC/PVC) [1701] |
| 2 | **Lighting Poles Works** | 2026-01-15 → 2026-08-19 (+216d) | 2026-04-19 → 2027-04-28 (+374d) |  |  |  |  |
| PRO-R11-SL-DL-110 | Material Delivery & Site Inspection of Lighting Poles Foundations for Street Lighting Network | 2026-01-15 → 2026-08-19 A (+216d) | 2026-02-14 → 2026-08-22 A (+189d) | 0% → 100% | 41d → none |  | resources Pro Engineer [312.12 h]; Reinforced concrete foundation, for 12m high lighting columns With Drawpits → Reinforced concrete foundation, for 12m high lighting columns With Drawpits [28] |
| PRO-R11-SL-DL-120 | Material Delivery & Site Inspection of Lighting Poles for Street Lighting Network | 2026-02-15 → 2026-08-19 A (+185d) | 2026-03-16 → 2026-08-22 A (+159d) | 0% → 100% | 36d → none |  | resources Pro Engineer [312.12 h]; Lighting poles with one arm, including the power distribution box, screws, cables, 12 meters in height. → Lighting poles with one arm, including the power distribution box, screws, cables, 12 meters in height. [28] |
| PRO-R11-SL-DL-140 | Material Delivery & Site Inspection of Lighting Fixtures for Street Lighting Network | 2026-03-17 → 2027-03-30 (+378d) | 2026-04-19 → 2027-04-28 (+374d) |  | 128.5d → -183.5d |  | resources Pro Engineer [44.04 h]; Street Lighting( LED) Luminaire,(Type C) complete with control gear and lamp, ?.17000 Lumen → Street Lighting( LED) Luminaire,(Type C) complete with control gear and lamp, ?.17000 Lumen [28] |
| 4 | **Termination and Testing Works** | 2026-04-20 → 2027-03-18 (+332d) | 2026-06-23 → 2027-07-08 (+380d) |  |  |  |  |
| PRO-R11-SL-DL-130 | Material Delivery & Site Inspection of Fuse Boxes for Street Lighting Network | 2026-04-20 → 2027-03-18 (+332d) | 2026-05-19 → 2027-04-17 (+333d) |  | 72d → -204d |  | resources Pro Engineer [44.04 h]; Road crossing ducts, 4 way (4 x 100mm PVC); Drawpit with medium duty steel cover, size 900x900x1200mm, Type 4 → Road crossing ducts, 4 way (4 x 100mm PVC) [62.4]; Drawpit with medium duty steel cover, size 900x900x1200mm, Type 4 [4] |
| PRO-R11-SL-DL-170 | Material Delivery & Site Inspection of Cable Lugs for Street Lighting Network | 2026-05-20 → 2027-06-09 (+385d) | 2026-06-23 → 2027-07-08 (+380d) |  | 42d → -274d |  | resources Pro Engineer [44.04 h] → none |
| TE | **Telecom Network** |  | 2026-01-14 → 2026-08-16 (+214d) |  |  |  |  |
| PRO-TE-PO-100 | Issuance of Purchase Order for Ducts forTelecom Network | 2025-02-11 A | 2025-02-17 A | 0% → 100% | 145d → none |  | resources Pro Engineer [312.12 h] → none |
| PRO-TE-PO-110 | Issuance of Purchase Order for Manholes forTelecom Network | 2025-02-11 A | 2025-02-17 A | 0% → 100% | 152d → none |  | resources Pro Engineer [312.12 h] → none |
| MF | **Manufacturing of Material** |  | 2025-05-04 → 2025-05-21 (+17d) |  |  |  |  |

| ID | Task | Start | Finish | Duration | Complete | Total float | Predecessors | Other |
| --- | --- | --- | --- | --- | --- | --- | --- | --- |
| 1 | **Ducts Works** |  | 2025-05-04 → 2025-05-21 (+17d) |  |  |  |  |  |
| PRO-TE-MF-100 | Manufacturing of Ducts for Telecom Network | 2025-02-18 A | 2025-05-04 → 2025-05-21 A (+17d) |  | 0% → 100% | 145d → none |  | resources Pro Engineer [312.12 h] → none |
| 3 | **Manholes Works** |  | 2025-05-04 → 2025-05-20 (+16d) |  |  |  |  |  |
| PRO-TE-MF-110 | Manufacturing of Manholes for Telecom Network | 2025-02-18 A | 2025-05-04 → 2025-05-20 A (+16d) |  | 0% → 100% | 152d → none |  | resources Pro Engineer [312.12 h] → none |
| 1DL | **1st Material Delivery & Site Inspection** | 2025-05-05 → 2025-05-21 (+16d) | 2025-05-11 → 2025-05-30 (+19d) |  |  |  |  |  |
| 1 | **Ducts Works** | 2025-05-05 → 2025-05-22 (+17d) | 2025-05-11 → 2025-05-30 (+19d) |  |  |  |  |  |
| PRO-TE-1DL-100 | 1ST Material Delivery for Ducts of Telecom Network | 2025-05-05 → 2025-05-22 A (+17d) | 2025-05-11 → 2025-05-30 A (+19d) |  | 0% → 100% | 145d → none |  | resources Pro Engineer [312.12 h] → none |
| 3 | **Manholes Works** | 2025-05-05 → 2025-05-21 (+16d) | 2025-05-11 → 2025-05-29 (+18d) |  |  |  |  |  |
| PRO-TE-1DL-110 | 1ST Material Delivery for Manholes of Telecom Network | 2025-05-05 → 2025-05-21 A (+16d) | 2025-05-11 → 2025-05-29 A (+18d) |  | 0% → 100% | 152d → none |  | resources Pro Engineer [312.12 h] → none |
| DL | **Material Delivery & Site Inspection** | 2025-05-12 → 2025-06-01 (+20d) | 2026-01-14 → 2026-08-16 (+214d) |  |  |  |  |  |
| 1 | **Road 18 Local 1 ( 479 LM )** | 2025-05-12 → 2025-06-01 (+20d) | 2025-06-15 → 2025-06-30 (+15d) |  |  |  |  |  |
| 1 | **Ducts Works** | 2025-05-12 → 2025-06-01 (+20d) | 2025-06-15 → 2025-06-30 (+15d) |  |  |  |  |  |
| PRO-R18-TE-DL-120 | Material Delivery & Site Inspection for Ducts of Telecom Network | 2025-05-12 → 2025-06-01 A (+20d) | 2025-06-15 → 2025-06-30 A (+15d) |  | 0% → 100% | 145d → none |  | resources Pro Engineer [312.12 h]; 6-way ducts, 50mm dia. HDPE; Road crossing ducts (6-way) → 6-way ducts, 50mm dia. HDPE [384.8]; Road crossing ducts (6-way) [33.06] |
| 3 | **Manholes Works** | 2025-05-12 → 2025-06-01 (+20d) | 2025-06-15 → 2025-06-10 (-5d) |  |  |  |  |  |
| PRO-R18-TE-DL-130 | Material Delivery & Site Inspection of Manholes for Telecom Network | 2025-05-12 → 2025-06-01 A (+20d) | 2025-06-15 → 2025-06-10 A (-5d) |  | 0% → 100% | 152d → none |  | resources Pro Engineer [312.12 h]; Manhole Type 1 (2000x1000x1000); Manhole Type 2 (2000x1000x1000); Manhole Type 3 (2000x1000x1000) → Manhole Type 1 (2000x1000x1000) [2]; Manhole Type 2 (2000x1000x1000) [4]; Manhole Type 3 (2000x1000x1000) [1] |
| 9 | **Road 17 Local 1 ( 500 LM )** | 2025-06-16 → 2025-06-01 (-15d) | 2025-07-15 → 2025-06-30 (-15d) |  |  |  |  |  |
| 1 | **Ducts Works** | 2025-06-16 → 2025-06-01 (-15d) | 2025-07-15 → 2025-06-30 (-15d) |  |  |  |  |  |
| PRO-R17-TE-DL-100 | Material Delivery & Site Inspection for Ducts of Telecom Network | 2025-06-16 → 2025-06-01 A (-15d) | 2025-07-15 → 2025-06-30 A (-15d) |  | 0% → 100% | 145d → none | PRO-TE-1DL-100, PRO-R18-TE-DL-120 → PRO-TE-1DL-100, PRO-R18-TE-DL-120 FF | resources Pro Engineer [312.12 h]; 6-way ducts, 50mm dia. HDPE; Road crossing ducts (6-way) → 6-way ducts, 50mm dia. HDPE [398.1]; Road crossing ducts (6-way) [33.97] |
| 3 | **Manholes Works** | 2025-06-16 → 2025-06-11 (-5d) | 2025-07-15 → 2025-06-14 (-31d) |  |  |  |  |  |
| PRO-R17-TE-DL-110 | Material Delivery & Site Inspection of Manholes for Telecom Network | 2025-06-16 → 2025-06-11 A (-5d) | 2025-07-15 → 2025-06-14 A (-31d) |  | 0% → 100% | 152d → none |  | resources Pro Engineer [312.12 h]; Manhole Type 1 (2000x1000x1000); Manhole Type 2 (2000x1000x1000) → Manhole Type 1 (2000x1000x1000) [2]; Manhole Type 2 (2000x1000x1000) [2] |
| 8 | **Road 16 Local 1 ( 527 LM )** | 2025-07-16 → 2025-06-01 (-45d) | 2025-08-14 → 2025-06-30 (-45d) |  |  |  |  |  |
| 1 | **Ducts Works** | 2025-07-16 → 2025-06-01 (-45d) | 2025-08-14 → 2025-06-30 (-45d) |  |  |  |  |  |
| PRO-R16-TE-DL-100 | Material Delivery & Site Inspection for Ducts of Telecom Network | 2025-07-16 → 2025-06-01 A (-45d) | 2025-08-14 → 2025-06-30 A (-45d) |  | 0% → 100% | 145d → none | PRO-TE-1DL-100, PRO-R17-TE-DL-100 → PRO-TE-1DL-100, PRO-R17-TE-DL-100 FF | resources Pro Engineer [312.12 h]; 6-way ducts, 50mm dia. HDPE; Road crossing ducts (6-way) → 6-way ducts, 50mm dia. HDPE [418.6]; Road crossing ducts (6-way) [35.42] |
| 3 | **Manholes Works** | 2025-07-16 → 2025-06-15 (-31d) | 2025-08-14 → 2025-06-19 (-56d) |  |  |  |  |  |
| PRO-R16-TE-DL-110 | Material Delivery & Site Inspection of Manholes for Telecom Network | 2025-07-16 → 2025-06-15 A (-31d) | 2025-08-14 → 2025-06-19 A (-56d) |  | 0% → 100% | 152d → none |  | resources Pro Engineer [312.12 h]; Manhole Type 1 (2000x1000x1000); Manhole Type 2 (2000x1000x1000) → Manhole Type 1 (2000x1000x1000) [2]; Manhole Type 2 (2000x1000x1000) [4] |
| 7 | **Road 15 Local 1 ( 556 LM )** | 2025-08-16 → 2025-06-01 (-76d) | 2025-09-14 → 2025-06-30 (-76d) |  |  |  |  |  |
| 1 | **Ducts Works** | 2025-08-16 → 2025-06-01 (-76d) | 2025-09-14 → 2025-06-30 (-76d) |  |  |  |  |  |
| PRO-R15-TE-DL-100 | Material Delivery & Site Inspection for Ducts of Telecom Network | 2025-08-16 → 2025-06-01 A (-76d) | 2025-09-14 → 2025-06-30 A (-76d) |  | 0% → 100% | 145d → none | PRO-TE-1DL-100, PRO-R16-TE-DL-100 → PRO-TE-1DL-100, PRO-R16-TE-DL-100 FF | resources Pro Engineer [312.12 h]; 6-way ducts, 50mm dia. HDPE; Road crossing ducts (6-way) → 6-way ducts, 50mm dia. HDPE [438.75]; Road crossing ducts (6-way) [37.12] |
| 3 | **Manholes Works** | 2025-08-16 → 2025-06-21 (-56d) | 2025-09-14 → 2025-06-26 (-80d) |  |  |  |  |  |
| PRO-R15-TE-DL-110 | Material Delivery & Site Inspection of Manholes for Telecom Network | 2025-08-16 → 2025-06-21 A (-56d) | 2025-09-14 → 2025-06-26 A (-80d) |  | 0% → 100% | 152d → none |  | resources Pro Engineer [312.12 h]; Manhole Type 1 (2000x1000x1000); Manhole Type 2 (2000x1000x1000) → Manhole Type 1 (2000x1000x1000) [2]; Manhole Type 2 (2000x1000x1000) [4] |
| 4 | **Road 10 Local 2 ( 2352 LM )** | 2025-09-15 → 2025-11-01 (+47d) | 2025-10-15 → 2026-08-16 (+305d) |  |  |  |  |  |
| 1 | **Ducts Works** | 2025-09-15 → 2025-11-01 (+47d) | 2025-10-15 → 2025-11-10 (+26d) |  |  |  |  |  |
| PRO-R10-TE-DL-100 | Material Delivery & Site Inspection for Ducts of Telecom Network | 2025-09-15 → 2025-11-01 A (+47d) | 2025-10-15 → 2025-11-10 A (+26d) |  | 0% → 100% | 145d → none |  | resources Pro Engineer [312.12 h]; 6-way ducts, 50mm dia. HDPE; Road crossing ducts (6-way) → 6-way ducts, 50mm dia. HDPE [1786.85]; Road crossing ducts (6-way) [151.19] |
| 3 | **Manholes Works** | 2025-09-15 → 2026-08-01 (+320d) | 2025-10-15 → 2026-08-16 (+305d) |  |  |  |  |  |
| PRO-R10-TE-DL-110 | Material Delivery & Site Inspection of Manholes for Telecom Network | 2025-09-15 → 2026-08-01 A (+320d) | 2025-10-15 → 2026-08-16 A (+305d) |  | 0% → 100% | 152d → none |  | resources Pro Engineer [312.12 h]; Manhole Type 1 (2000x1000x1000); Manhole Type 2 (2000x1000x1000) → Manhole Type 1 (2000x1000x1000) [6]; Manhole Type 2 (2000x1000x1000) [14] |
| 6 | **Road 14 Local 1 ( 584 LM )** | 2025-10-16 → 2025-11-01 (+16d) | 2025-11-15 → 2026-08-16 (+274d) |  |  |  |  |  |
| 1 | **Ducts Works** | 2025-10-16 → 2025-11-01 (+16d) | 2025-11-15 → 2025-11-10 (-5d) |  |  |  |  |  |
| PRO-R14-TE-DL-100 | Material Delivery & Site Inspection for Ducts of Telecom Network | 2025-10-16 → 2025-11-01 A (+16d) | 2025-11-15 → 2025-11-10 A (-5d) |  | 0% → 100% | 145d → none |  | resources Pro Engineer [312.12 h]; 6-way ducts, 50mm dia. HDPE; Road crossing ducts (6-way) → 6-way ducts, 50mm dia. HDPE [769.6]; Road crossing ducts (6-way) [65.12] |
| 3 | **Manholes Works** | 2025-10-16 → 2026-08-01 (+289d) | 2025-11-15 → 2026-08-16 (+274d) |  |  |  |  |  |
| PRO-R14-TE-DL-110 | Material Delivery & Site Inspection of Manholes for Telecom Network | 2025-10-16 → 2026-08-01 A (+289d) | 2025-11-15 → 2026-08-16 A (+274d) |  | 0% → 100% | 152d → none |  | resources Pro Engineer [312.12 h]; Manhole Type 1 (2000x1000x1000); Manhole Type 2 (2000x1000x1000) → Manhole Type 1 (2000x1000x1000) [4]; Manhole Type 2 (2000x1000x1000) [6] |
| 2 | **Road 09 Local 2 ( 2278 LM )** | 2025-11-16 → 2026-08-01 (+258d) | 2025-12-15 → 2026-08-16 (+244d) |  |  |  |  |  |
| 1 | **Ducts Works** | 2025-11-16 → 2026-08-01 (+258d) | 2025-12-15 → 2026-08-16 (+244d) |  |  |  |  |  |
| PRO-R09-TE-DL-110 | Material Delivery & Site Inspection of Manholes for Telecom Network | 2025-11-16 → 2026-08-01 A (+258d) | 2025-12-15 → 2026-08-16 A (+244d) |  | 0% → 100% | 152d → none |  | resources Pro Engineer [312.12 h]; Manhole Type 1 (2000x1000x1000); Manhole Type 2 (2000x1000x1000); Manhole Type 3 (2000x1000x1000) → Manhole Type 1 (2000x1000x1000) [5]; Manhole Type 2 (2000x1000x1000) [14]; Manhole Type 3 (2000x1000x1000) [3] |
| 3 | **Manholes Works** | 2025-11-16 → 2026-08-01 (+258d) | 2025-12-15 → 2026-08-16 (+244d) |  |  |  |  |  |
| PRO-R09-TE-DL-100 | Material Delivery & Site Inspection for Ducts of Telecom Network | 2025-11-16 → 2026-08-01 A (+258d) | 2025-12-15 → 2026-08-16 A (+244d) |  | 0% → 100% | 145d → none |  | resources Pro Engineer [312.12 h]; 6-way ducts, 50mm dia. HDPE; Road crossing ducts (6-way) → 6-way ducts, 50mm dia. HDPE [1782]; Road crossing ducts (6-way) [150] |
| 5 | **Road 11 Local 1 ( 670 LM )** | 2025-12-16 → 2026-08-01 (+228d) | 2026-01-14 → 2026-08-16 (+214d) |  |  |  |  |  |
| 1 | **Ducts Works** | 2025-12-16 → 2026-08-01 (+228d) | 2026-01-14 → 2026-08-16 (+214d) |  |  |  |  |  |
| PRO-R11-TE-DL-100 | Material Delivery & Site Inspection for Ducts of Telecom Network | 2025-12-16 → 2026-08-01 A (+228d) | 2026-01-14 → 2026-08-16 A (+214d) |  | 0% → 100% | 145d → none |  | resources Pro Engineer [312.12 h]; 6-way ducts, 50mm dia. HDPE; Road crossing ducts (6-way) → 6-way ducts, 50mm dia. HDPE [521.3]; Road crossing ducts (6-way) [44.11] |
| 3 | **Manholes Works** | 2025-12-16 → 2026-08-01 (+228d) | 2026-01-14 → 2026-08-16 (+214d) |  |  |  |  |  |
| PRO-R11-TE-DL-110 | Material Delivery & Site Inspection of Manholes for Telecom Network | 2025-12-16 → 2026-08-01 A (+228d) | 2026-01-14 → 2026-08-16 A (+214d) |  | 0% → 100% | 152d → none |  | resources Pro Engineer [312.12 h]; Manhole Type 1 (2000x1000x1000); Manhole Type 2 (2000x1000x1000) → Manhole Type 1 (2000x1000x1000) [2]; Manhole Type 2 (2000x1000x1000) [4] |
| 1 | **Superstructure Works** |  | 2026-02-14 → 2027-03-17 (+396d) |  |  |  |  |  |
| 1 | **Issuance of Purchase Orders** |  | 2025-03-18 → 2025-03-30 (+12d) |  |  |  |  |  |
| SL | **Sewage Pump Stations ( PS 06 )** |  | 2025-03-04 → 2025-03-06 (+2d) |  |  |  |  |  |
| PRO-SPS-CV-PO-10 | Issuance of Purchase Order for Civil Works for Sewage Pump Stations | 2025-02-18 A | 2025-03-04 → 2025-03-06 A (+2d) |  | 0% → 100% | 82d → none |  | resources Pro Engineer [312.12 h] → none |
| TE | **Storm Drainage Ponds ( PO-J1 , PO-J2 )** | 2025-03-05 → 2025-03-19 (+14d) | 2025-03-18 → 2025-03-30 (+12d) |  |  |  |  |  |
| PRO-DPO-CV-PO-10 | Issuance of Purchase Order for Civil Works for Storm Drainage Ponds | 2025-03-05 → 2025-03-19 A (+14d) | 2025-03-18 → 2025-03-30 A (+12d) |  | 0% → 100% | 82d → none |  | resources Pro Engineer [312.12 h] → none |
| 2 | **Manufacturing of Material** | 2025-03-05 → 2025-03-07 (+2d) | 2025-10-25 → 2026-11-21 (+392d) |  |  |  |  |  |
| SL | **Sewage Pump Stations ( PS 06 )** | 2025-03-05 → 2025-03-07 (+2d) | 2025-08-12 → 2025-07-17 (-26d) |  |  |  |  |  |
| PRO-SPS-CV-MF-10 | Manufacturing of Civil Works for Sewage Pump Stations ( PS06 ) | 2025-03-05 → 2025-03-07 A (+2d) | 2025-08-12 → 2025-07-17 A (-26d) |  | 0% → 100% | 91d → none |  | resources Pro Engineer [312.12 h] → none |
| TE | **Storm Drainage Ponds ( PO-J1 , PO-J2 )** | 2025-03-19 → 2025-04-01 (+13d) | 2025-10-25 → 2026-11-21 (+392d) |  |  |  |  |  |
| PRO-DPO-CV-MF-10 | Manufacturing of Civil Works for Storm Drainage Ponds ( PO-J1 ) | 2025-03-19 → 2025-04-01 A (+13d) | 2025-08-14 → 2025-07-17 A (-28d) |  | 0% → 100% | 82d → none |  | resources Pro Engineer [312.12 h] → none |
| PRO-DPO-CV-MF-20 | Manufacturing of Civil Works for Storm Drainage Ponds ( PO-J2 ) | 2025-08-16 → 2026-10-06 (+416d) | 2025-10-25 → 2026-11-21 (+392d) | 60d → 40d |  | 82d → -243d |  | resources Pro Engineer [312.12 h] → none |
| 3 | **1st Material Delivery & Site Inspection** | 2025-08-13 → 2025-10-04 (+52d) | 2025-11-24 → 2026-12-21 (+392d) |  |  |  |  |  |
| SL | **Sewage Pump Stations ( PS 06 )** | 2025-08-13 → 2026-10-06 (+419d) | 2025-09-29 → 2026-11-21 (+418d) |  |  |  |  |  |
| PRO-SPS-CV-1DL-10 | 1ST Material Delivery for Civil Works for Sewage Pump Stations ( PS 06 ) | 2025-08-13 → 2026-10-06 (+419d) | 2025-09-29 → 2026-11-21 (+418d) |  |  | 91d → -189d |  | resources Pro Engineer [312.12 h] → none |
| TE | **Storm Drainage Ponds ( PO-J1 , PO-J2 )** | 2025-08-16 → 2025-10-04 (+49d) | 2025-11-24 → 2026-12-21 (+392d) |  |  |  |  |  |
| PRO-DPO-CV-1DL-10 | 1ST Material Delivery for Civil Works for Storm Drainage Ponds ( PO-J1 ) | 2025-08-16 → 2025-10-04 A (+49d) | 2025-09-14 → 2025-10-23 A (+39d) |  | 0% → 100% | 132d → none |  | resources Pro Engineer [312.12 h] → none |
| PRO-DPO-CV-1DL-20 | 1ST Material Delivery for Civil Works for Storm Drainage Ponds ( PO-J2 ) | 2025-10-26 → 2026-11-22 (+392d) | 2025-11-24 → 2026-12-21 (+392d) |  |  | 82d → -243d |  | resources Pro Engineer [312.12 h] → none |
| 4 | **Material Delivery & Site Inspection** | 2025-09-15 → 2025-10-29 (+44d) | 2026-02-14 → 2027-03-17 (+396d) |  |  |  |  |  |
| SL | **Sewage Pump Stations ( PS 06 )** | 2025-09-30 → 2025-11-29 (+60d) | 2025-12-20 → 2025-12-01 (-19d) |  |  |  |  |  |

| ID | Task | Start | Finish | Complete | Total float | Predecessors | Other |
| --- | --- | --- | --- | --- | --- | --- | --- |
| PRO-SPS-CV-DL-10 | Material Delivery & Site Inspection for Civil Works for Sewage Pump Stations ( PS 06 ) | 2025-09-30 → 2025-11-29 A (+60d) | 2025-12-20 → 2025-12-01 A (-19d) | 0% → 100% | 91d → none |  | resources Pro Engineer [312.12 h]; HDPE force main DN 800mm diameter, in trenches depth: 0- 1.5m; HDPE force main DN 800mm diameter, in trenches depth: 1.51- 2.5m; Washout valve 200mm, on 800mm dia. pipe; Air release valve 110 mm dia, on 800mm dia. pipe; Washout valve chamber; Air release valve chamber; Wet well structure internal size (5.5*4.0m) at 11.0m depth; Valve chamber; for the pump station; basket screen; CMU walls with thickness 200mm; Waterproofing for foundation; Roof Insulation; Acrylic paint on elevations including plastering; Acrylic paint on internal wallsand ceiling including plastering; Epoxy paint on floors; Supply and install 2000*3000 mm double leaf manufacturer label shall pass the test requirements complete with accessories as per door schedule and material as approved by the Client. → HDPE force main DN 800mm diameter, in trenches depth: 0- 1.5m [100]; HDPE force main DN 800mm diameter, in trenches depth: 1.51- 2.5m [2237]; Washout valve 200mm, on 800mm dia. pipe [2]; Air release valve 110 mm dia, on 800mm dia. pipe [3]; Washout valve chamber [2]; Air release valve chamber [3]; Wet well structure internal size (5.5*4.0m) at 11.0m depth [1]; Valve chamber [1]; for the pump station [1]; basket screen [1]; CMU walls with thickness 200mm [150]; Waterproofing for foundation [60]; Roof Insulation [45]; Acrylic paint on elevations including plastering [150]; Acrylic paint on internal wallsand ceiling including plastering [190]; Epoxy paint on floors [40]; Supply and install 2000*3000 mm double leaf manufacturer label shall pass the test requirements complete with accessories as per door schedule and material as approved by the Client. [1] |
| TE | **Storm Drainage Ponds ( PO-J1 , PO-J2 )** | 2025-09-15 → 2025-10-29 (+44d) | 2026-02-14 → 2027-03-17 (+396d) |  |  |  |  |
| PRO-DPO-CV-DL-10 | Material Delivery & Site Inspection for Civil Works for Storm Drainage Ponds ( PO-J1 ) | 2025-09-15 → 2025-10-29 A (+44d) | 2025-12-06 → 2026-12-26 (+385d) | 0% → 97% | 132d → -78d |  | resources Pro Engineer [243.06 h]; Excavation in all type of soil for any depth including levelling, compaction and disposal of surplus material; Reinforced Concrete lining including blinding concrete, construction, isolation layers and expansion joints as shown in drawings. → Excavation in all type of soil for any depth including levelling, compaction and disposal of surplus material [49955]; Reinforced Concrete lining including blinding concrete, construction, isolation layers and expansion joints as shown in drawings. [40] |
| PRO-DPO-CV-DL-20 | Material Delivery & Site Inspection for Civil Works for Storm Drainage Ponds ( PO-J2 ) | 2025-11-25 → 2026-09-09 A (+288d) | 2026-02-14 → 2027-03-17 (+396d) | 0% → 85% | 82d → -243d |  | resources Pro Engineer [218.44 h]; Excavation in all type of soil to increase the depth of the existing pond for any depth including levelling, compaction and disposal of surplus material; Reinforced Concrete lining including blinding concrete, construction, isolation layers and expansion joints as shown in drawings. → Excavation in all type of soil to increase the depth of the existing pond for any depth including levelling, compaction and disposal of surplus material [20425]; Reinforced Concrete lining including blinding concrete, construction, isolation layers and expansion joints as shown in drawings. [18] |
| LL | **Long Lead Time Items** | 2025-02-10 → 2025-02-11 (+1d) | 2026-08-31 → 2027-05-08 (+250d) |  |  |  |  |
| 2 | **Infrastructure Networks** | 2025-02-10 → 2025-02-11 (+1d) | 2026-02-05 → 2026-09-20 (+227d) |  |  |  |  |
| 1 | **RMU Works of Medium Voltage Network** | 2025-02-10 → 2025-02-11 (+1d) | 2026-02-05 → 2026-09-20 (+227d) |  |  |  |  |
| PO | **Issuance of Purchase Orders** | 2025-02-10 → 2025-02-11 (+1d) | 2025-03-17 → 2025-05-05 (+49d) |  |  |  |  |
| PRO-MV-LL-PO-10 | Issuance of Purchase Order for RMU of Medium Voltage Network | 2025-02-10 → 2025-02-11 A (+1d) | 2025-03-17 → 2025-05-05 A (+49d) | 0% → 100% | 37d → none |  | resources Pro Engineer [312.12 h] → none |
| MF | **Manufacturing of Material** | 2025-03-18 → 2025-06-01 (+75d) | 2025-09-17 → 2026-06-20 (+276d) |  |  |  |  |
| PRO-MV-LL-MF-10 | Manufacturing of RMU for Medium Voltage Network | 2025-03-18 → 2025-06-01 A (+75d) | 2025-09-17 → 2026-06-20 A (+276d) | 0% → 100% | 37d → none |  | resources Pro Engineer [312.12 h] → none |
| 1DL | **Material Shipping/Custom Clearance/Delivery** | 2025-09-18 → 2026-05-15 (+239d) | 2026-01-01 → 2026-05-28 (+147d) |  |  |  |  |
| PRO-MV-LL-SH/DL-10 | Material Delivery for RMU of Medium Voltage Network | 2025-09-18 → 2026-05-15 A (+239d) | 2026-01-01 → 2026-05-28 A (+147d) | 0% → 100% | 161d → none |  | resources Pro Engineer [312.12 h] → none |
| DL | **Material Site Inspection** | 2026-01-03 → 2026-08-01 (+210d) | 2026-02-05 → 2026-09-20 (+227d) |  |  |  |  |
| DL4 | **Road 10 Local 2 ( 2352 LM )** | 2026-01-03 → 2026-08-01 (+210d) | 2026-02-05 → 2026-08-06 (+182d) |  |  |  |  |
| PRO-R10-MV-LL-MSI-10 | Material Site Inspection of RMU for Medium Voltage Network | 2026-01-03 → 2026-08-01 A (+210d) | 2026-02-05 → 2026-08-06 A (+182d) | 0% → 100% | 161d → none |  | resources Pro Engineer [312.12 h]; Supply & installation of (33) kv MV Switch (RMU) for Normally-open Points (NOP) according to the Saudi Electric Company specification → Supply & installation of (33) kv MV Switch (RMU) for Normally-open Points (NOP) according to the Saudi Electric Company specification [2] |
| DL9111 | **Road 17 Local 1 ( 500 LM )** | 2026-01-03 → 2026-09-15 (+255d) | 2026-02-05 → 2026-09-20 (+227d) |  |  |  |  |
| PRO-R17-MV-LL-MSI-40 | Material Site Inspection of RMU for Medium Voltage Network | 2026-01-03 → 2026-09-15 A (+255d) | 2026-02-05 → 2026-09-20 A (+227d) | 0% → 100% | 179d → none |  | resources Pro Engineer [312.12 h]; Supply & installation of (33) kv MV Switch (RMU) for Normally-open Points (NOP) according to the Saudi Electric Company specification → Supply & installation of (33) kv MV Switch (RMU) for Normally-open Points (NOP) according to the Saudi Electric Company specification [1] |
| 1 | **Superstructure Works** | 2025-09-18 → 2025-06-01 (-109d) | 2026-08-31 → 2027-05-08 (+250d) |  |  |  |  |
| SL | **Sewage Pump Stations ( PS 06 )** | 2025-09-18 → 2025-06-01 (-109d) | 2026-08-31 → 2027-05-08 (+250d) |  |  |  |  |
| 1 | **Issuance of Purchase Orders** | 2025-09-18 → 2025-06-01 (-109d) | 2025-11-27 → 2025-06-05 (-175d) |  |  |  |  |
| PRO-SPS-LL-PO-10 | Issuance of Purchase Order for Electromechanical Works for Sewage Pump Stations | 2025-09-18 → 2025-06-01 A (-109d) | 2025-11-27 → 2025-06-05 A (-175d) | 0% → 100% | 37d → none | ENG-MS-SPS-A-110, ENG-SH-SPS-A-110, ENG-MT-SPS-MC-A-110, PRO-MV-LL-PO-10, PRO-MV-LL-MF-10 → ENG-MS-SPS-A-110, ENG-SH-SPS-A-110, ENG-MT-SPS-MC-A-110, PRO-MV-LL-PO-10, PRO-MV-LL-MF-10 SS | resources Pro Engineer [312.12 h] → none |
| 2 | **Manufacturing of Material** | 2025-11-29 → 2025-06-01 (-181d) | 2026-03-28 → 2026-12-02 (+249d) |  |  |  |  |
| PRO-SPS7-LL-MF-10 | Manufacturing of Electromechanical Works for Sewage Pump Stations ( PS 06 ) | 2025-11-29 → 2025-06-01 A (-181d) | 2026-03-28 → 2026-12-02 (+249d) | 0% → 50% | 37d → -172d | PRO-SPS-LL-PO-10, PRO-MV-LL-MF-10 → PRO-SPS-LL-PO-10, PRO-MV-LL-MF-10 SS | resources Pro Engineer [312.12 h] → none |
| 3 | **Material Shipping/Custom Clearance/Delivery** | 2026-03-29 → 2026-12-03 (+249d) | 2026-07-04 → 2027-03-07 (+246d) |  |  |  |  |
| PRO-SPS7-LL-SH/DL-10 | Material Delivery for Electromechanical Works for Sewage Pump Stations ( PS 06 ) | 2026-03-29 → 2026-12-03 (+249d) | 2026-07-04 → 2027-03-07 (+246d) |  | 37d → -172d |  | resources Pro Engineer [312.12 h] → none |
| 4 | **Material Site Inspection** | 2026-07-05 → 2026-09-15 (+72d) | 2026-08-31 → 2027-05-08 (+250d) |  |  |  |  |
| PRO-SPS7-LL-MSI-10 | Material Site Inspection for Electromechanical Works for Sewage Pump Stations ( PS06 ) | 2026-07-05 → 2026-09-15 A (+72d) | 2026-08-31 → 2027-05-08 (+250d) | 0% → 30% | 37d → -172d |  | resources Pro Engineer [126.11 h]; Constant speed drive, sewage pumps, centrifugal submersible type; 2 duty / 1 standby capable of delivering a flow rate of flow 424 l/s against a total head of 22m, rate includes provision of MCC; Odour control system; Gate valves for the pump station; Non return valves for the pump station; Penstok for the pump station; Standby Diesel Generator Set 400/230KVA, 3P, 60Hz in Sound Attenuated Enclosure KVA rating by contractor as per total load onsite after pumps selection; Supply, install, test and commission of manually operated fuel pump, The pump should be supplied with all accessories as specified.; Supply, install, test and commission of Fuel pump with capacity of not less than 1 hour to fill the daily tank of generator at required head.; supply, install, test & commission Automatic Transfer Switch ATS panel including all accessories & works required.; Supply, install, test and commission under ground fuel tank for 3 days of continuous operation of the standby generator at full load. The tank should be supplied with all accessories such as black steel pipes, float switches with two contactors ï¿½etc. as; 4Cx 185mm2 Cu/XLPE//PVC from nearest power supply (SEC) and generator to the ATS and from ATS to MCC-SPS; 4Cx 95mm2 Cu/XLPE//PVC from nearest power supply (SEC) and generator to the ATS and from ATS to MCC-SPS; 4Cx 10mm2 Cu/XLPE/SWA/PVC from MCC-SPS to ELP; 4Cx 150mm2 + 1Cx25mm2 SUBMERGED RUBBER INSULATED FLEXIBLE CABLE from MCC to PUMP1& PUMP2.; 4Cx 10mm2 + 1Cx10mm2 Cu/XLPE/PVC FROM MCC-SPS to DB-SPS; 4Cx 10mm2 + 1Cx10mm2 Cu/XLPE/PVC FROM MCC-SPS to Penstok; 4Cx 10mm2 + 1Cx10mm2 Cu/XLPE/PVC FROM MCC-SPS to Odor Control Unit; 4Cx 6mm2 + 1Cx6mm2 Cu/XLPE/PVC FROM MCC-SPS to the mechanical bar screen; 3Cx 6mm2 Cu/XLPE/PVC FROM MCC-SPS to the two fuel pumps.; 3Cx 4mm2 Cu/XLPE/PVC to the AC.; MCC; Surge protection system study; Surge protection system; Local Control Panel, IP 65; Isolator/disconnect switches IP65; DB-SPS Panel; ELP Panel: phtocell , timer,40 Ampere, 3P, IP66,60Hz incomer MCCB & 5ways outgoing MCCB; Electrical Hand Hole 600mm x 600mm x 800mm concrete hand hole with hot dip galvanized heavy duty steel cover; Electrical Hand Hole 400mm x 400mm x 600mm concrete hand hole with hot dip galvanized heavy duty steel cover; Surfaced Mounted Light; 13A DOUBLE SWITCH SOCKET OUTLET (WEATHER PROOF); 20A SWITCH SOCKET OUTLET (FOR SPLIT UNIT), (WEATHER PROOF); Supply, install and test the following grounding and lightning system including ground wires, ground rods, inspection pits, terminations, bonding/clamping, civil works and all materials and accessories required to complete the work according to specificat; Supply and install telephone and fire alarm system including smoke detector, cabinet, control panel, cables, conduits, switches, and other accessories to complete as per drawings and specifications.; Supply, installation, testing and commissioning of all control, instrumentation( as shown on the P & ID drawings cable schedule) including all installation accessories such as termination kits, lugs, glands, cable containments, junction boxes , conduits,; Supply, installation, testing and commissioning of all field instruments such as hydrostatic level meter, level switches, flow switch, and all necessary instruments including all installation accessories, etc. all as per specifications and design drawings; DX wall mounted Split/AC; CO2 fire extinguishers; Powder fire extinguishers; Flood lights shall be high pole with 250 watt HPS luminaire; 1 - way duct - not exceeding 1.5m deep; 2 - way duct - not exceeding 1.5m deep; 8 - way duct - not exceeding 1.5m deep; Earth pits; Cable draw pit, 600x600mm; Supply, installation, testing and commissioning of PLC system → Constant speed drive, sewage pumps, centrifugal submersible type; 2 duty / 1 standby capable of delivering a flow rate of flow 424 l/s against a total head of 22m, rate includes provision of MCC [1]; Odour control system [1]; Gate valves for the pump station [3]; Non return valves for the pump station [3]; Penstok for the pump station [1]; Standby Diesel Generator Set 400/230KVA, 3P, 60Hz in Sound Attenuated Enclosure KVA rating by contractor as per total load onsite after pumps selection [1]; Supply, install, test and commission of manually operated fuel pump, The pump should be supplied with all accessories as specified. [1]; Supply, install, test and commission of Fuel pump with capacity of not less than 1 hour to fill the daily tank of generator at required head. [1]; supply, install, test & commission Automatic Transfer Switch ATS panel including all accessories & works required. [1]; Supply, install, test and commission under ground fuel tank for 3 days of continuous operation of the standby generator at full load. The tank should be supplied with all accessories such as black steel pipes, float switches with two contactors …etc. as s [1]; 4Cx 185mm2 Cu/XLPE//PVC from nearest power supply (SEC) and generator to the ATS and from ATS to MCC-SPS [600]; 4Cx 95mm2 Cu/XLPE//PVC from nearest power supply (SEC) and generator to the ATS and from ATS to MCC-SPS [400]; 4Cx 10mm2 Cu/XLPE/SWA/PVC from MCC-SPS to ELP [50]; 4Cx 150mm2 + 1Cx25mm2 SUBMERGED RUBBER INSULATED FLEXIBLE CABLE from MCC to PUMP1& PUMP2. [210]; 4Cx 10mm2 + 1Cx10mm2 Cu/XLPE/PVC FROM MCC-SPS to DB-SPS [50]; 4Cx 10mm2 + 1Cx10mm2 Cu/XLPE/PVC FROM MCC-SPS to Penstok [100]; 4Cx 10mm2 + 1Cx10mm2 Cu/XLPE/PVC FROM MCC-SPS to Odor Control Unit [100]; 4Cx 6mm2 + 1Cx6mm2 Cu/XLPE/PVC FROM MCC-SPS to the mechanical bar screen [80]; 3Cx 6mm2 Cu/XLPE/PVC FROM MCC-SPS to the two fuel pumps. [100]; 3Cx 4mm2 Cu/XLPE/PVC to the AC. [80]; MCC [1]; Surge protection system study [1]; Surge protection system [1]; Local Control Panel, IP 65 [4]; Isolator/disconnect switches IP65 [16]; DB-SPS Panel [4]; ELP Panel: phtocell , timer,40 Ampere, 3P, IP66,60Hz incomer MCCB & 5ways outgoing MCCB [4]; Electrical Hand Hole 600mm x 600mm x 800mm concrete hand hole with hot dip galvanized heavy duty steel cover [10]; Electrical Hand Hole 400mm x 400mm x 600mm concrete hand hole with hot dip galvanized heavy duty steel cover [10]; Surfaced Mounted Light [8]; 13A DOUBLE SWITCH SOCKET OUTLET (WEATHER PROOF) [8]; 20A SWITCH SOCKET OUTLET (FOR SPLIT UNIT), (WEATHER PROOF) [8]; Supply, install and test the following grounding and lightning system including ground wires, ground rods, inspection pits, terminations, bonding/clamping, civil works and all materials and accessories required to complete the work according to specificat [2]; Supply and install telephone and fire alarm system including smoke detector, cabinet, control panel, cables, conduits, switches, and other accessories to complete as per drawings and specifications. [1]; Supply, installation, testing and commissioning of all control, instrumentation( as shown on the P & ID drawings cable schedule) including all installation accessories such as termination kits, lugs, glands, cable containments, junction boxes , conduits, [2]; Supply, installation, testing and commissioning of all field instruments such as hydrostatic level meter, level switches, flow switch, and all necessary instruments including all installation accessories, etc. all as per specifications and design drawings [2]; DX wall mounted Split/AC [2]; CO2 fire extinguishers [2]; Powder fire extinguishers [2]; Flood lights shall be high pole with 250 watt HPS luminaire [4]; 1 - way duct - not exceeding 1.5m deep [1]; 2 - way duct - not exceeding 1.5m deep [1]; 8 - way duct - not exceeding 1.5m deep [1]; Earth pits [1]; Cable draw pit, 600x600mm [1]; Supply, installation, testing and commissioning of PLC system [2] |
| CON | **Construction Works** | 2025-02-09 → 2025-02-11 (+2d) | 2026-12-28 → 2027-10-25 (+301d) |  |  |  |  |
| INF | **Infrastructure Networks** | 2025-02-09 → 2025-02-11 (+2d) | 2026-12-28 → 2027-10-25 (+301d) |  |  |  |  |
| 1 | **Phase 2 Block "J"** | 2025-02-09 → 2025-02-11 (+2d) | 2026-12-01 → 2027-09-06 (+279d) |  |  |  |  |
| SW | **Rising Main Network** | 2025-09-01 → 2025-12-27 (+117d) | 2025-11-13 → 2026-12-14 (+396d) |  |  |  |  |
| ML | **Main Line Sections** | 2025-09-01 → 2025-12-27 (+117d) | 2025-11-13 → 2026-12-14 (+396d) |  |  |  |  |
| CO-RM-SW-290 | Trench Excavation and Bedding Works for Main Lines of Rising Main Network | 2025-09-01 → 2025-12-27 A (+117d) | 2025-09-25 → 2026-01-05 A (+102d) | 0% → 100% | 355d → none |  | resources Skilled Labor/Surveyor [1701.33 h]; Foreman [1701.33 h]; Excavator [288 h]; HDPE force main DN 800mm diameter, in trenches depth: 0- 1.5m [14.04]; HDPE force main DN 800mm diameter, in trenches depth: 1.51- 2.5m [317.99] → Skilled Labor/Surveyor [29 h]; Foreman [29 h]; Excavator [288 h]; HDPE force main DN 800mm diameter, in trenches depth: 0- 1.5m [10]; HDPE force main DN 800mm diameter, in trenches depth: 1.51- 2.5m [223.7] |
| CO-RM-SW-300 | Pipes Laying Works for Main Lines of Rising Main Network | 2025-09-27 → 2026-02-25 A (+151d) | 2025-10-20 → 2026-11-19 (+395d) | 0% → 96% | 355d → 24d |  | resources Labor/Helper [2604.66 h]; Skilled Labor/Surveyor [93.02 h]; Foreman [131.78 h]; Plumber [1302.33 h]; Excavator [384 h]; HDPE force main DN 800mm diameter, in trenches depth: 0- 1.5m [50.16]; HDPE force main DN 800mm diameter, in trenches depth: 1.51- 2.5m [1111.47] → Labor/Helper [768 h]; Skilled Labor/Surveyor [39 h]; Foreman [39 h]; Plumber [384 h]; Excavator [384 h]; HDPE force main DN 800mm diameter, in trenches depth: 0- 1.5m [35]; HDPE force main DN 800mm diameter, in trenches depth: 1.51- 2.5m [782.95] |
| CO-RM-SW-310 | Trench Backfilling and Compaction Works for Main Lines of Rising Main Network | 2025-10-21 → 2026-09-01 A (+315d) | 2025-11-13 → 2026-12-14 (+396d) | 0% → 30% | 355d → 24d |  | resources Skilled Labor/Surveyor [760.21 h]; Foreman [760.21 h]; Excavator [288 h]; HDPE force main DN 800mm diameter, in trenches depth: 0- 1.5m [7.02]; HDPE force main DN 800mm diameter, in trenches depth: 1.51- 2.5m [158.5] → Skilled Labor/Surveyor [29 h]; Foreman [29 h]; Excavator [288 h]; HDPE force main DN 800mm diameter, in trenches depth: 0- 1.5m [5]; HDPE force main DN 800mm diameter, in trenches depth: 1.51- 2.5m [111.85] |
| MH | **Manholes** | 2025-09-27 → 2026-01-08 (+103d) | 2025-10-18 → 2026-11-16 (+394d) |  |  |  |  |
| CO-RM-SW-320 | Excavation Works for Main Line Manholes of Rising Main Network | 2025-09-27 → 2026-01-08 A (+103d) | 2025-09-27 → 2026-01-15 A (+110d) | 0% → 100% | 357d → none |  | resources Labor/Helper [81.66 h]; Skilled Labor/Surveyor [40.83 h]; Excavator [8 h]; HDPE force main DN 800mm diameter, in trenches depth: 0- 1.5m [8.03]; HDPE force main DN 800mm diameter, in trenches depth: 1.51- 2.5m [190.6] → Labor/Helper [8 h]; Skilled Labor/Surveyor [4 h]; Excavator [8 h]; HDPE force main DN 800mm diameter, in trenches depth: 0- 1.5m [6]; HDPE force main DN 800mm diameter, in trenches depth: 1.51- 2.5m [134.22] |
| CO-RM-SW-330 | Installation RC Footing Works for Main Line Manholes of Rising Main Network | 2025-09-28 → 2026-01-17 A (+111d) | 2025-09-30 → 2026-10-29 (+394d) | 0% → 97% | 357d → 27d |  | resources Cons. Carpenter [103.27 h]; Steel Fixer [103.27 h]; HDPE force main DN 800mm diameter, in trenches depth: 0- 1.5m [3.01]; HDPE force main DN 800mm diameter, in trenches depth: 1.51- 2.5m [64.2] → Cons. Carpenter [48 h]; Steel Fixer [48 h]; HDPE force main DN 800mm diameter, in trenches depth: 0- 1.5m [2]; HDPE force main DN 800mm diameter, in trenches depth: 1.51- 2.5m [44.74] |
| CO-RM-SW-340 | Install Grp Liner Wall Works for Main Line Manholes of Rising Main Network | 2025-10-01 → 2026-01-17 A (+108d) | 2025-10-07 → 2026-11-05 (+394d) | 0% → 98% | 357d → 27d |  | resources Labor/Helper [340.95 h]; Plumber [340.95 h]; HDPE force main DN 800mm diameter, in trenches depth: 0- 1.5m [21.07]; HDPE force main DN 800mm diameter, in trenches depth: 1.51- 2.5m [476.49] → Labor/Helper [96 h]; Plumber [96 h]; HDPE force main DN 800mm diameter, in trenches depth: 0- 1.5m [15]; HDPE force main DN 800mm diameter, in trenches depth: 1.51- 2.5m [335.55] |
| CO-RM-SW-350 | Pouring Grp Liner Wall Works for Main Line Manholes of Rising Main Network | 2025-10-08 → 2026-09-18 A (+345d) | 2025-10-11 → 2026-11-09 (+394d) | 0% → 30% | 357d → 27d |  | resources Cons. Carpenter [547.48 h]; Steel Fixer [547.48 h]; HDPE force main DN 800mm diameter, in trenches depth: 0- 1.5m [3.01]; HDPE force main DN 800mm diameter, in trenches depth: 1.51- 2.5m [64.2] → Cons. Carpenter [48 h]; Steel Fixer [48 h]; HDPE force main DN 800mm diameter, in trenches depth: 0- 1.5m [2]; HDPE force main DN 800mm diameter, in trenches depth: 1.51- 2.5m [44.74] |
| CO-RM-SW-360 | Backfilling Works for Main Line Manholes of Rising Main Network | 2025-10-12 → 2026-09-21 A (+344d) | 2025-10-16 → 2026-11-15 (+395d) | 0% → 15% | 357d → 27d |  | resources Labor/Helper [677.59 h]; Skilled Labor/Surveyor [338.8 h]; Excavator [40 h]; HDPE force main DN 800mm diameter, in trenches depth: 0- 1.5m [4.01]; HDPE force main DN 800mm diameter, in trenches depth: 1.51- 2.5m [95.3] → Labor/Helper [40 h]; Skilled Labor/Surveyor [20 h]; Excavator [40 h]; HDPE force main DN 800mm diameter, in trenches depth: 0- 1.5m [3]; HDPE force main DN 800mm diameter, in trenches depth: 1.51- 2.5m [67.11] |
| CO-RM-SW-370 | Testing Works for Main Line Manholes of Rising Main Network | 2025-10-18 → 2026-11-16 (+394d) | 2025-10-18 → 2026-11-16 (+394d) |  | 357d → 27d |  | resources Labor/Helper [208.71 h]; Plumber [208.71 h]; HDPE force main DN 800mm diameter, in trenches depth: 0- 1.5m [4.01]; HDPE force main DN 800mm diameter, in trenches depth: 1.51- 2.5m [95.3] → Labor/Helper [8 h]; Plumber [8 h]; HDPE force main DN 800mm diameter, in trenches depth: 0- 1.5m [3]; HDPE force main DN 800mm diameter, in trenches depth: 1.51- 2.5m [67.11] |
| VC | **Valves Chamber** | 2025-09-27 → 2026-05-02 (+217d) | 2025-11-01 → 2026-11-15 (+379d) |  |  |  |  |
| CO-RM-SW-380 | Excavation Works for Valve Chambers and Washout chamber of Rising Main Network | 2025-09-27 → 2026-05-02 A (+217d) | 2025-09-27 → 2026-05-09 A (+224d) | 0% → 100% | 366d → none |  | resources Labor/Helper [36.48 h]; Skilled Labor/Surveyor [18.24 h]; Excavator [32 h]; HDPE force main DN 800mm diameter, in trenches depth: 0- 1.5m [6.02]; HDPE force main DN 800mm diameter, in trenches depth: 1.51- 2.5m [126.39]; Washout valve 200mm, on 800mm dia. pipe [0.4]; Air release valve 110 mm dia, on 800mm dia. pipe [1]; Washout valve chamber [0.4]; Air release valve chamber [1] → Labor/Helper [32 h]; Skilled Labor/Surveyor [16 h]; Excavator [32 h]; HDPE force main DN 800mm diameter, in trenches depth: 0- 1.5m [4]; HDPE force main DN 800mm diameter, in trenches depth: 1.51- 2.5m [89.48]; Washout valve 200mm, on 800mm dia. pipe [0.4]; Air release valve 110 mm dia, on 800mm dia. pipe [0.6]; Washout valve chamber [0.4]; Air release valve chamber [0.6] |
| CO-RM-SW-390 | RC Footing Works for Valve Chambers and Washout chamber of Rising Main Network | 2025-09-28 → 2026-05-09 A (+223d) | 2025-10-04 → 2026-05-12 A (+220d) | 0% → 100% | 366d → none |  | resources Cons. Carpenter [218.86 h]; Steel Fixer [218.86 h]; HDPE force main DN 800mm diameter, in trenches depth: 0- 1.5m [1]; HDPE force main DN 800mm diameter, in trenches depth: 1.51- 2.5m [31.1]; Washout valve 200mm, on 800mm dia. pipe [0.1]; Air release valve 110 mm dia, on 800mm dia. pipe [0.15]; Washout valve chamber [0.1]; Air release valve chamber [0.15] → Cons. Carpenter [192 h]; Steel Fixer [192 h]; HDPE force main DN 800mm diameter, in trenches depth: 0- 1.5m [1]; HDPE force main DN 800mm diameter, in trenches depth: 1.51- 2.5m [22.37]; Washout valve 200mm, on 800mm dia. pipe [0.1]; Air release valve 110 mm dia, on 800mm dia. pipe [0.15]; Washout valve chamber [0.1]; Air release valve chamber [0.15] |
| CO-RM-SW-400 | RC Wall Works for Valve Chambers and Washout chamber of Rising Main Network | 2025-10-05 → 2026-05-14 A (+221d) | 2025-10-12 → 2026-10-27 (+380d) | 0% → 35% | 366d → 49d |  | resources Cons. Carpenter [218.92 h]; Steel Fixer [252.47 h]; HDPE force main DN 800mm diameter, in trenches depth: 0- 1.5m [13.04]; HDPE force main DN 800mm diameter, in trenches depth: 1.51- 2.5m [284.89]; Washout valve 200mm, on 800mm dia. pipe [1]; Air release valve 110 mm dia, on 800mm dia. pipe [1]; Washout valve chamber [1]; Air release valve chamber [1] → Cons. Carpenter [224 h]; Steel Fixer [224 h]; HDPE force main DN 800mm diameter, in trenches depth: 0- 1.5m [9]; HDPE force main DN 800mm diameter, in trenches depth: 1.51- 2.5m [201.33]; Washout valve 200mm, on 800mm dia. pipe [0.9]; Air release valve 110 mm dia, on 800mm dia. pipe [1.35]; Washout valve chamber [0.9]; Air release valve chamber [1.35] |
| CO-RM-SW-410 | RC Slab Works for Valve Chambers and Washout chamber of Rising Main Network | 2025-10-13 → 2026-10-27 (+379d) | 2025-10-20 → 2026-11-03 (+379d) |  | 366d → 49d |  | resources Cons. Carpenter [56.31 h]; Steel Fixer [102.42 h]; HDPE force main DN 800mm diameter, in trenches depth: 0- 1.5m [1]; HDPE force main DN 800mm diameter, in trenches depth: 1.51- 2.5m [31.1]; Washout valve 200mm, on 800mm dia. pipe [0.1]; Air release valve 110 mm dia, on 800mm dia. pipe [0.15]; Washout valve chamber [0.1]; Air release valve chamber [0.15] → Cons. Carpenter [224 h]; Steel Fixer [224 h]; HDPE force main DN 800mm diameter, in trenches depth: 0- 1.5m [1]; HDPE force main DN 800mm diameter, in trenches depth: 1.51- 2.5m [22.37]; Washout valve 200mm, on 800mm dia. pipe [0.1]; Air release valve 110 mm dia, on 800mm dia. pipe [0.15]; Washout valve chamber [0.1]; Air release valve chamber [0.15] |
| CO-RM-SW-420 | Insulation Works for Valve Chambers and Washout chamber of Rising Main Network | 2025-10-21 → 2026-11-04 (+379d) | 2025-10-22 → 2026-11-05 (+379d) |  | 366d → 49d |  | resources Labor/Helper [12.07 h]; Plumber [17.32 h]; HDPE force main DN 800mm diameter, in trenches depth: 0- 1.5m [1]; HDPE force main DN 800mm diameter, in trenches depth: 1.51- 2.5m [31.1]; Washout valve 200mm, on 800mm dia. pipe [0.1]; Air release valve 110 mm dia, on 800mm dia. pipe [0.15]; Washout valve chamber [0.1]; Air release valve chamber [0.15] → Labor/Helper [64 h]; Plumber [64 h]; HDPE force main DN 800mm diameter, in trenches depth: 0- 1.5m [1]; HDPE force main DN 800mm diameter, in trenches depth: 1.51- 2.5m [22.37]; Washout valve 200mm, on 800mm dia. pipe [0.1]; Air release valve 110 mm dia, on 800mm dia. pipe [0.15]; Washout valve chamber [0.1]; Air release valve chamber [0.15] |
| CO-RM-SW-430 | Backfilling Works for Valve Chambers and Washout chamber of Rising Main Network | 2025-10-23 → 2026-11-07 (+380d) | 2025-10-28 → 2026-11-11 (+379d) |  | 366d → 49d |  | resources Labor/Helper [30.17 h]; Skilled Labor/Surveyor [38.11 h]; Excavator [80 h]; HDPE force main DN 800mm diameter, in trenches depth: 0- 1.5m [1]; HDPE force main DN 800mm diameter, in trenches depth: 1.51- 2.5m [31.1]; Washout valve 200mm, on 800mm dia. pipe [0.2]; Air release valve 110 mm dia, on 800mm dia. pipe [0.3]; Washout valve chamber [0.2]; Air release valve chamber [0.3] → Labor/Helper [80 h]; Skilled Labor/Surveyor [40 h]; Excavator [80 h]; HDPE force main DN 800mm diameter, in trenches depth: 0- 1.5m [1]; HDPE force main DN 800mm diameter, in trenches depth: 1.51- 2.5m [22.37]; Washout valve 200mm, on 800mm dia. pipe [0.2]; Air release valve 110 mm dia, on 800mm dia. pipe [0.3]; Washout valve chamber [0.2]; Air release valve chamber [0.3] |
| CO-RM-SW-440 | Testing and Covering Works for Valve Chambers and Washout chamber of Rising Main Network | 2025-10-29 → 2026-11-12 (+379d) | 2025-11-01 → 2026-11-15 (+379d) |  | 366d → 49d |  | resources Labor/Helper [18.1 h]; Plumber [25.98 h]; HDPE force main DN 800mm diameter, in trenches depth: 0- 1.5m [3.01]; HDPE force main DN 800mm diameter, in trenches depth: 1.51- 2.5m [64.2]; Washout valve 200mm, on 800mm dia. pipe [0.2]; Air release valve 110 mm dia, on 800mm dia. pipe [0.3]; Washout valve chamber [0.2]; Air release valve chamber [0.3] → Labor/Helper [72 h]; Plumber [72 h]; HDPE force main DN 800mm diameter, in trenches depth: 0- 1.5m [2]; HDPE force main DN 800mm diameter, in trenches depth: 1.51- 2.5m [44.74]; Washout valve 200mm, on 800mm dia. pipe [0.2]; Air release valve 110 mm dia, on 800mm dia. pipe [0.3]; Washout valve chamber [0.2]; Air release valve chamber [0.3] |
| 2 | **Road 09 Local 2 ( 2278 LM )** | 2025-06-16 → 2025-03-26 (-82d) | 2026-10-01 → 2027-08-07 (+310d) |  |  |  |  |
| SW_1 | **SW_1** | 2025-06-16 → 2025-03-26 (-82d) | 2026-09-24 → 2027-07-31 (+310d) |  |  |  |  |
| EW | **Earthworks** | 2025-06-16 → 2025-03-26 (-82d) | 2025-07-08 → 2025-05-31 (-38d) |  |  |  |  |
| EW | **Earthworks** | 2025-06-16 → 2025-03-26 (-82d) | 2025-07-08 → 2025-05-31 (-38d) |  |  |  |  |
| CO-R09.S01-EW-110 | Embankments Works Upto Design Level for Earthworks-[Road 09] -[SW-1] | 2025-06-28 → 2025-03-26 A (-94d) | 2025-07-08 → 2025-05-03 A (-66d) | 0% → 100% | 17d → none |  | resources Labor/Helper [1185.49 h]; Skilled Labor/Surveyor [148.19 h]; Foreman [148.19 h]; Water Tank [1560 h]; Dozer [1560 h]; Embankments to the ROW, with suitable material other than top soil or rock according to specifications [76067.6] → Labor/Helper [1560 h]; Skilled Labor/Surveyor [195 h]; Foreman [195 h]; Water Tank [1560 h]; Dozer [1560 h]; Embankments to the ROW, with suitable material other than top soil or rock according to specifications [53596.5] |
| CO-R09.S01-EW-100 | Roadway Excavation Works Upto Design Level for Earthworks-[Road 09] -[SW-1] | 2025-06-16 → 2025-05-25 A (-22d) | 2025-06-26 → 2025-05-31 A (-26d) | 0% → 100% | 11d → none |  | resources Labor/Helper [1094.3 h]; Skilled Labor/Surveyor [136.79 h]; Foreman [136.79 h]; Water Tank [1152 h]; Dozer [1152 h]; Roadway Excavation for cuttings; on any type of material for all depths including trimming and Preparation of excavated surfaces and disposal. [45187.2] → Labor/Helper [1152 h]; Skilled Labor/Surveyor [144 h]; Foreman [144 h]; Water Tank [1152 h]; Dozer [1152 h]; Roadway Excavation for cuttings; on any type of material for all depths including trimming and Preparation of excavated surfaces and disposal. [31838.6] |
| SW | **Sewage Network** | 2025-07-09 → 2025-09-01 (+54d) | 2025-08-17 → 2026-10-06 (+415d) |  |  |  |  |
| ML | **Main Line Sections** | 2025-07-09 → 2025-09-01 (+54d) | 2025-08-17 → 2026-05-05 (+261d) |  |  |  |  |
| CO-R09.S01-SW-100 | Trench Excavation and Bedding Works for Main Lines of Sewage Network-[Road 09] -[SW-1] | 2025-07-09 → 2025-09-01 A (+54d) | 2025-07-20 → 2025-09-04 A (+46d) | 0% → 100% | 17d → none |  | resources Skilled Labor/Surveyor [680.53 h]; Foreman [680.53 h]; Excavator [288 h]; Nominal bore : 160mm; Depth : 1.5m - 2.5m [57.18]; Nominal bore : 200mm; Depth : 0.0m - 1.5m [16.05]; Nominal bore : 200mm; Depth : 1.5m - 2.5m [42.13]; Nominal bore : 200mm; Depth : 2.5m - 3.5m [62.19]; Nominal bore : 200mm; Depth : 3.5m - 4.5m [72.23]; Nominal bore : 200mm; Depth : 4.5m -5.5m [35.11]; Nominal bore : 200mm; Depth : 5.5m - 6.5m [47.15]; Nominal bore : 250mm; Depth : 4.5m -5.5m [62.19]; Nominal bore : 250mm; Depth : 5.5m - 6.5m [51.16]; Nominal bore : 315mm; Depth : 4.5m -5.5m [51.16]; Nominal bore : 315mm; Depth : 6.5m - 7.5m [57.18]; Depth : 6.5 -7.5m [71.22]; Depth :more than 7.5m [170.53] → Skilled Labor/Surveyor [29 h]; Foreman [29 h]; Excavator [288 h]; Nominal bore : 160mm; Depth : 1.5m - 2.5m [40]; Nominal bore : 200mm; Depth : 0.0m - 1.5m [10.97]; Nominal bore : 200mm; Depth : 1.5m - 2.5m [30.16]; Nominal bore : 200mm; Depth : 2.5m - 3.5m [44.1]; Nominal bore : 200mm; Depth : 3.5m - 4.5m [51.01]; Nominal bore : 200mm; Depth : 4.5m -5.5m [25.19]; Nominal bore : 200mm; Depth : 5.5m - 6.5m [32.68]; Nominal bore : 250mm; Depth : 4.5m -5.5m [44]; Nominal bore : 250mm; Depth : 5.5m - 6.5m [36]; Nominal bore : 315mm; Depth : 4.5m -5.5m [36]; Nominal bore : 315mm; Depth : 6.5m - 7.5m [40]; Depth : 6.5 -7.5m [50]; Depth :more than 7.5m [120] |
| CO-R09.S01-SW-120 | Pipes Laying Works for Main Lines of Sewage Network-[Road 09] -[SW-1] | 2025-07-21 → 2025-09-06 A (+47d) | 2025-08-03 → 2025-09-15 A (+43d) | 0% → 100% | 25d → none |  | resources Labor/Helper [3399.34 h]; Skilled Labor/Surveyor [172.62 h]; Foreman [172.62 h]; Plumber [1699.67 h]; Excavator [384 h]; Nominal bore : 160mm; Depth : 0.0m - 1.5m [1118.49]; Nominal bore : 160mm; Depth : 1.5m - 2.5m [170.53]; Nominal bore : 200mm; Depth : 0.0m - 1.5m [47.15]; Nominal bore : 200mm; Depth : 1.5m - 2.5m [127.4]; Nominal bore : 200mm; Depth : 2.5m - 3.5m [187.59]; Nominal bore : 200mm; Depth : 3.5m - 4.5m [216.68]; Nominal bore : 200mm; Depth : 4.5m -5.5m [108.34]; Nominal bore : 200mm; Depth : 5.5m - 6.5m [139.44]; Nominal bore : 250mm; Depth : 4.5m -5.5m [187.59]; Nominal bore : 250mm; Depth : 5.5m - 6.5m [153.48]; Nominal bore : 315mm; Depth : 4.5m -5.5m [153.48]; Nominal bore : 315mm; Depth : 6.5m - 7.5m [170.53]; Depth : 6.5 -7.5m [212.66]; Depth :more than 7.5m [510.59] → Labor/Helper [768 h]; Skilled Labor/Surveyor [39 h]; Foreman [39 h]; Plumber [384 h]; Excavator [384 h]; Nominal bore : 160mm; Depth : 0.0m - 1.5m [788.46]; Nominal bore : 160mm; Depth : 1.5m - 2.5m [120]; Nominal bore : 200mm; Depth : 0.0m - 1.5m [32.9]; Nominal bore : 200mm; Depth : 1.5m - 2.5m [90.49]; Nominal bore : 200mm; Depth : 2.5m - 3.5m [132.3]; Nominal bore : 200mm; Depth : 3.5m - 4.5m [153.04]; Nominal bore : 200mm; Depth : 4.5m -5.5m [75.58]; Nominal bore : 200mm; Depth : 5.5m - 6.5m [98.03]; Nominal bore : 250mm; Depth : 4.5m -5.5m [132]; Nominal bore : 250mm; Depth : 5.5m - 6.5m [108]; Nominal bore : 315mm; Depth : 4.5m -5.5m [108]; Nominal bore : 315mm; Depth : 6.5m - 7.5m [120]; Depth : 6.5 -7.5m [150]; Depth :more than 7.5m [360] |
| CO-R09.S01-SW-130 | Trench Backfilling and Compaction Works for Main Lines of Sewage Network-[Road 09] -[SW-1] | 2025-08-04 → 2025-10-24 A (+81d) | 2025-08-17 → 2026-05-05 A (+261d) | 0% → 100% | 25d → none |  | resources Skilled Labor/Surveyor [680.53 h]; Foreman [680.53 h]; Excavator [288 h]; Nominal bore : 160mm; Depth : 1.5m - 2.5m [28.09]; Nominal bore : 200mm; Depth : 0.0m - 1.5m [7.02]; Nominal bore : 200mm; Depth : 1.5m - 2.5m [21.07]; Nominal bore : 200mm; Depth : 2.5m - 3.5m [31.1]; Nominal bore : 200mm; Depth : 3.5m - 4.5m [37.12]; Nominal bore : 200mm; Depth : 4.5m -5.5m [18.06]; Nominal bore : 200mm; Depth : 5.5m - 6.5m [23.07]; Nominal bore : 250mm; Depth : 4.5m -5.5m [31.1]; Nominal bore : 250mm; Depth : 5.5m - 6.5m [25.08]; Nominal bore : 315mm; Depth : 4.5m -5.5m [25.08]; Nominal bore : 315mm; Depth : 6.5m - 7.5m [28.09]; Depth : 6.5 -7.5m [35.11]; Depth :more than 7.5m [85.27] → Skilled Labor/Surveyor [29 h]; Foreman [29 h]; Excavator [288 h]; Nominal bore : 160mm; Depth : 1.5m - 2.5m [20]; Nominal bore : 200mm; Depth : 0.0m - 1.5m [5.48]; Nominal bore : 200mm; Depth : 1.5m - 2.5m [15.08]; Nominal bore : 200mm; Depth : 2.5m - 3.5m [22.05]; Nominal bore : 200mm; Depth : 3.5m - 4.5m [25.51]; Nominal bore : 200mm; Depth : 4.5m -5.5m [12.6]; Nominal bore : 200mm; Depth : 5.5m - 6.5m [16.34]; Nominal bore : 250mm; Depth : 4.5m -5.5m [22]; Nominal bore : 250mm; Depth : 5.5m - 6.5m [18]; Nominal bore : 315mm; Depth : 4.5m -5.5m [18]; Nominal bore : 315mm; Depth : 6.5m - 7.5m [20]; Depth : 6.5 -7.5m [25]; Depth :more than 7.5m [60] |
| MH | **Manholes** | 2025-07-21 → 2025-10-12 (+83d) | 2025-08-11 → 2026-10-06 (+421d) |  |  |  |  |
| CO-R09.S01-SW-160 | Excavation Works for Main Line Manholes of Sewage Network-[Road 09] -[SW-1] | 2025-07-21 → 2025-10-12 A (+83d) | 2025-07-21 → 2025-10-15 A (+86d) | 0% → 100% | 30d → none |  | resources Labor/Helper [197.59 h]; Skilled Labor/Surveyor [74.63 h]; Excavator [8 h]; Depth: 1.5 - 2.5m [1]; Depth: 3.5 - 4.5m [0.15]; Depth: 4.5 - 5.5m [0.3]; Depth:6.5 - 7.5m [1]; Depth: more than 7.5m [0.3]; Depth: 2.5 - 3.5m [1]; Depth: 3.5 - 4.5m [0.45]; Depth: 5.5 - 6.5m [0.3] → Labor/Helper [8 h]; Skilled Labor/Surveyor [4 h]; Excavator [8 h]; Depth: 1.5 - 2.5m [0.75]; Depth: 3.5 - 4.5m [0.15]; Depth: 4.5 - 5.5m [0.3]; Depth:6.5 - 7.5m [0.75]; Depth: more than 7.5m [0.3]; Depth: 2.5 - 3.5m [0.75]; Depth: 3.5 - 4.5m [0.45]; Depth: 5.5 - 6.5m [0.3]; Depth:6.5 - 7.5m [1.05] |
| CO-R09.S01-SW-170 | Installation RC Footing Works for Main Line Manholes of Sewage Network-[Road 09] -[SW-1] | 2025-07-22 → 2025-10-13 A (+83d) | 2025-07-24 → 2025-10-16 A (+84d) | 0% → 100% | 30d → none |  | resources Cons. Carpenter [279.02 h]; Steel Fixer [279.02 h]; Depth: 1.5 - 2.5m [1]; Depth: 3.5 - 4.5m [0.1]; Depth: 4.5 - 5.5m [0.2]; Depth:6.5 - 7.5m [1]; Depth: more than 7.5m [0.2]; Depth: 2.5 - 3.5m [1]; Depth: 3.5 - 4.5m [0.3]; Depth: 5.5 - 6.5m [0.2] → Cons. Carpenter [48 h]; Steel Fixer [48 h]; Depth: 1.5 - 2.5m [0.5]; Depth: 3.5 - 4.5m [0.1]; Depth: 4.5 - 5.5m [0.2]; Depth:6.5 - 7.5m [0.5]; Depth: more than 7.5m [0.2]; Depth: 2.5 - 3.5m [0.5]; Depth: 3.5 - 4.5m [0.3]; Depth: 5.5 - 6.5m [0.2]; Depth:6.5 - 7.5m [0.7] |
| CO-R09.S01-SW-180 | Install Grp Liner Wall Works for Main Line Manholes of Sewage Network-[Road 09] -[SW-1] | 2025-07-26 → 2025-10-13 A (+79d) | 2025-07-31 → 2025-10-16 A (+77d) | 0% → 100% | 30d → none |  | resources Labor/Helper [408.32 h]; Plumber [408.32 h]; Depth: 1.5 - 2.5m [3.01]; Depth: 3.5 - 4.5m [0.4]; Depth: 4.5 - 5.5m [1]; Depth:6.5 - 7.5m [3.01]; Depth: more than 7.5m [1]; Depth: 2.5 - 3.5m [3.01]; Depth: 3.5 - 4.5m [1]; Depth: 5.5 - 6.5m [1]; Depth:6.5 - 7.5m [4.01] → Labor/Helper [96 h]; Plumber [96 h]; Depth: 1.5 - 2.5m [2]; Depth: 3.5 - 4.5m [0.4]; Depth: 4.5 - 5.5m [0.8]; Depth:6.5 - 7.5m [2]; Depth: more than 7.5m [0.8]; Depth: 2.5 - 3.5m [2]; Depth: 3.5 - 4.5m [1.2]; Depth: 5.5 - 6.5m [0.8]; Depth:6.5 - 7.5m [2.8] |
| CO-R09.S01-SW-190 | Pouring Grp Liner Wall Works for Main Line Manholes of Sewage Network-[Road 09] -[SW-1] | 2025-08-02 → 2025-10-14 A (+73d) | 2025-08-04 → 2025-10-18 A (+75d) | 0% → 100% | 30d → none |  | resources Cons. Carpenter [272.21 h]; Steel Fixer [272.21 h]; Depth: 1.5 - 2.5m [0.25]; Depth: 3.5 - 4.5m [0.05]; Depth: 4.5 - 5.5m [0.1]; Depth:6.5 - 7.5m [0.25]; Depth: more than 7.5m [0.1]; Depth: 2.5 - 3.5m [0.25]; Depth: 3.5 - 4.5m [0.15]; Depth: 5.5 - 6.5m [0.1]; Depth:6.5 - 7.5m [0.35] → Cons. Carpenter [48 h]; Steel Fixer [48 h]; Depth: 1.5 - 2.5m [0.25]; Depth: 3.5 - 4.5m [0.05]; Depth: 4.5 - 5.5m [0.1]; Depth:6.5 - 7.5m [0.25]; Depth: more than 7.5m [0.1]; Depth: 2.5 - 3.5m [0.25]; Depth: 3.5 - 4.5m [0.15]; Depth: 5.5 - 6.5m [0.1]; Depth:6.5 - 7.5m [0.35] |
| CO-R09.S01-SW-200 | Backfilling Works for Main Line Manholes of Sewage Network-[Road 09] -[SW-1] | 2025-08-05 → 2025-10-15 A (+71d) | 2025-08-10 → 2025-10-20 A (+71d) | 0% → 100% | 30d → none |  | resources Labor/Helper [181.48 h]; Skilled Labor/Surveyor [90.74 h]; Excavator [40 h]; Depth: 1.5 - 2.5m [1]; Depth: 3.5 - 4.5m [0.15]; Depth: 4.5 - 5.5m [0.3]; Depth:6.5 - 7.5m [1]; Depth: more than 7.5m [0.3]; Depth: 2.5 - 3.5m [1]; Depth: 3.5 - 4.5m [0.45]; Depth: 5.5 - 6.5m [0.3] → Labor/Helper [40 h]; Skilled Labor/Surveyor [20 h]; Excavator [40 h]; Depth: 1.5 - 2.5m [0.75]; Depth: 3.5 - 4.5m [0.15]; Depth: 4.5 - 5.5m [0.3]; Depth:6.5 - 7.5m [0.75]; Depth: more than 7.5m [0.3]; Depth: 2.5 - 3.5m [0.75]; Depth: 3.5 - 4.5m [0.45]; Depth: 5.5 - 6.5m [0.3]; Depth:6.5 - 7.5m [1.05] |
| CO-R09.S01-SW-210 | Testing Works for Main Line Manholes of Sewage Network-[Road 09] -[SW-1] | 2025-08-11 → 2026-10-06 (+421d) | 2025-08-11 → 2026-10-06 (+421d) |  | 30d → -239.5d |  | resources Labor/Helper; Plumber; Depth: 1.5 - 2.5m; Depth: 3.5 - 4.5m; Depth: 4.5 - 5.5m; Depth:6.5 - 7.5m; Depth: more than 7.5m; Depth: 2.5 - 3.5m; Depth: 5.5 - 6.5m → Labor/Helper [8 h]; Plumber [8 h]; Depth: 1.5 - 2.5m [0.25]; Depth: 3.5 - 4.5m [0.05]; Depth: 4.5 - 5.5m [0.1]; Depth:6.5 - 7.5m [0.25]; Depth: more than 7.5m [0.1]; Depth: 2.5 - 3.5m [0.25]; Depth: 3.5 - 4.5m [0.15]; Depth: 5.5 - 6.5m [0.1]; Depth:6.5 - 7.5m [0.35] |
| SD | **Storm Drainage Network** | 2025-09-08 → 2025-10-16 (+38d) | 2025-11-18 → 2026-11-12 (+359d) |  |  |  |  |

| ID | Task | Start | Finish | Duration | Complete | Total float | Predecessors | Other |
| --- | --- | --- | --- | --- | --- | --- | --- | --- |
| ML | **Main Line Sections** | 2025-09-08 → 2025-10-16 (+38d) | 2025-11-18 → 2026-03-11 (+113d) |  |  |  |  |  |
| CO-R09.S01-SD-100 | Trench Excavation and Bedding Works for Main Lines of Storm Drainage Network-[Road 09] -[SW-1] | 2025-09-08 → 2025-10-16 A (+38d) | 2025-09-18 → 2026-03-10 A (+173d) |  | 0% → 100% | 0d → none | ENG-SH-SD-ML-A-110, CO-R09.S01-EW-110, CO-R09.S01-EW-100, MS-CS-PS SS, ENG-MS-SD-ML-A-110, CO-R09.S01-SW-130 SS+3d, CO-R09.S01-SW-130 FF+3d, CO-R10.S04-ES-SD-100 → ENG-SH-SD-ML-A-110, CO-R09.S01-EW-110, CO-R09.S01-EW-100, MS-CS-PS SS, ENG-MS-SD-ML-A-110, CO-R09.S01-SW-130 SS, CO-R09.S01-SW-130 FF, CO-R10.S04-ES-SD-100 | resources Skilled Labor/Surveyor [340.27 h]; Foreman [340.27 h]; Excavator [160 h]; Pipe with diameter 400mm ; depth: 0.0m - 1.5m [27.08]; Pipe with diameter 600mm ; depth: 0.0m - 1.5m [14.04]; Pipe with diameter 700mm ; depth: 1.51m - 2.5m [28.09]; Pipe with diameter 700mm ; depth: 2.51m - 3.5m [14.04]; Pipe with diameter 800mm ; depth: 1.51m - 2.5m [16.05]; Pipe with diameter 1100mm ; depth: 1.51m - 2.5m [95.3]; Pipe with diameter 1100mm ; depth: 2.51 - 3.5m [24.08] → Skilled Labor/Surveyor [16 h]; Foreman [16 h]; Excavator [160 h]; Pipe with diameter 400mm ; depth: 0.0m - 1.5m [18.55]; Pipe with diameter 600mm ; depth: 0.0m - 1.5m [10]; Pipe with diameter 700mm ; depth: 1.51m - 2.5m [20]; Pipe with diameter 700mm ; depth: 2.51m - 3.5m [10]; Pipe with diameter 800mm ; depth: 1.51m - 2.5m [11.2]; Pipe with diameter 1100mm ; depth: 1.51m - 2.5m [66.7]; Pipe with diameter 1100mm ; depth: 2.51 - 3.5m [17.4] |
| CO-R09.S01-SD-120 | Pipes Laying Works for Main Lines of Storm Drainage Network-[Road 09] -[SW-1] | 2025-09-20 → 2025-10-18 A (+28d) | 2025-10-01 → 2026-03-11 A (+161d) |  | 0% → 100% | 0d → none |  | resources Labor/Helper [1267.48 h]; Skilled Labor/Surveyor [133.14 h]; Foreman [143.34 h]; Plumber [633.74 h]; Excavator [336 h]; Pipe with diameter 400mm ; depth: 0.0m - 1.5m [79.25]; Pipe with diameter 600mm ; depth: 0.0m - 1.5m [42.13]; Pipe with diameter 700mm ; depth: 1.51m - 2.5m [85.27]; Pipe with diameter 700mm ; depth: 2.51m - 3.5m [42.13]; Pipe with diameter 800mm ; depth: 1.51m - 2.5m [48.15]; Pipe with diameter 1000mm ; depth: 2.51 - 3.5m [503.57]; Pipe with diameter 1100mm ; depth: 1.51m - 2.5m [283.89]; Pipe with diameter 1100mm ; depth: 2.51 - 3.5m [74.23]; Pipe encasement dia 300 mm [64.2]; Pipe encasement dia 400 mm [33.1]; Pipe encasement dia 500 mm [24.08]; Pipe encasement dia 600 mm [11.03]; Pipe encasement dia 700 mm [21.07]; Pipe encasement dia 800 mm [10.03]; Pipe encasement dia 900 mm [7.02]; Pipe encasement dia 1000 mm [7.02]; Pipe encasement dia 1100 mm [7.02]; Pipe encasement dia 1200 mm [4.01]; Box Conduit with dimensions 1200*1200 mm ; depth: 0.0m - 1.5m [106.33]; Box Conduit with dimensions 1200*1200 mm ; depth: 2.51m - 3.5m [962]; Box Conduit with dimensions 1500*1200 mm ; depth: 2.51m - 3.5m [770.41]; Box Conduit with dimensions 1500*1500 mm ; depth: 2.51m - 3.5m [383.2]; Box Conduit with dimensions 2000*1200 mm ; depth: 2.51m - 3.5m [688.15] → Labor/Helper [672 h]; Skilled Labor/Surveyor [34 h]; Foreman [34 h]; Plumber [336 h]; Excavator [336 h]; Pipe with diameter 400mm ; depth: 0.0m - 1.5m [55.65]; Pipe with diameter 600mm ; depth: 0.0m - 1.5m [30]; Pipe with diameter 700mm ; depth: 1.51m - 2.5m [60]; Pipe with diameter 700mm ; depth: 2.51m - 3.5m [30]; Pipe with diameter 800mm ; depth: 1.51m - 2.5m [33.6]; Pipe with diameter 1000mm ; depth: 2.51 - 3.5m [354.81]; Pipe with diameter 1100mm ; depth: 1.51m - 2.5m [200.1]; Pipe with diameter 1100mm ; depth: 2.51 - 3.5m [52.2]; Pipe encasement dia 300 mm [44.96]; Pipe encasement dia 400 mm [23.04]; Pipe encasement dia 500 mm [16.72]; Pipe encasement dia 600 mm [8.22]; Pipe encasement dia 700 mm [14.54]; Pipe encasement dia 800 mm [7.4]; Pipe encasement dia 900 mm [4.94]; Pipe encasement dia 1000 mm [5.2]; Pipe encasement dia 1100 mm [4.66]; Pipe encasement dia 1200 mm [2.74]; Box Conduit with dimensions 1200*1200 mm ; depth: 0.0m - 1.5m [75]; Box Conduit with dimensions 1200*1200 mm ; depth: 2.51m - 3.5m [678]; Box Conduit with dimensions 1500*1200 mm ; depth: 2.51m - 3.5m [543]; Box Conduit with dimensions 1500*1500 mm ; depth: 2.51m - 3.5m [270]; Box Conduit with dimensions 2000*1200 mm ; depth: 2.51m - 3.5m [485] |
| CO-R09.S01-SD-130 | Trench Backfilling and Compaction Works for Main Lines of Storm Drainage Network-[Road 09] -[SW-1] | 2025-10-27 → 2025-12-18 A (+52d) | 2025-11-18 → 2026-03-11 A (+113d) |  | 0% → 100% | 188d → none |  | resources Skilled Labor/Surveyor [616.83 h]; Foreman [616.83 h]; Excavator [160 h]; Pipe with diameter 400mm ; depth: 0.0m - 1.5m [13.04]; Pipe with diameter 600mm ; depth: 0.0m - 1.5m [7.02]; Pipe with diameter 700mm ; depth: 1.51m - 2.5m [14.04]; Pipe with diameter 700mm ; depth: 2.51m - 3.5m [7.02]; Pipe with diameter 800mm ; depth: 1.51m - 2.5m [8.03]; Pipe with diameter 1100mm ; depth: 1.51m - 2.5m [47.15]; Pipe with diameter 1100mm ; depth: 2.51 - 3.5m [13.04] → Skilled Labor/Surveyor [16 h]; Foreman [16 h]; Excavator [160 h]; Pipe with diameter 400mm ; depth: 0.0m - 1.5m [9.28]; Pipe with diameter 600mm ; depth: 0.0m - 1.5m [5]; Pipe with diameter 700mm ; depth: 1.51m - 2.5m [10]; Pipe with diameter 700mm ; depth: 2.51m - 3.5m [5]; Pipe with diameter 800mm ; depth: 1.51m - 2.5m [5.6]; Pipe with diameter 1100mm ; depth: 1.51m - 2.5m [33.35]; Pipe with diameter 1100mm ; depth: 2.51 - 3.5m [8.7] |
| MH | **Manholes** | 2025-09-20 → 2025-12-11 (+82d) | 2025-10-14 → 2026-10-08 (+359d) |  |  |  |  |  |
| CO-R09.S01-SD-180 | Trench Excavation and Bedding Works for Manholes of Storm Drainage Network-[Road 09] -[SW-1] | 2025-09-20 → 2025-12-11 A (+82d) | 2025-09-21 → 2025-12-15 A (+85d) |  | 0% → 100% | 34.5d → none |  | resources Labor/Helper [54.71 h]; Skilled Labor/Surveyor [27.36 h]; Excavator [48 h]; MH ; depth: 0.0m - 1.5m [0.45]; MH ; depth: 1.51m - 2.5m [1]; MH ; depth: 2.51 - 3.5m [0.3]; MH ; depth: 0.0m - 1.5m [0.3]; MH ; depth: 2.51 - 3.5m [0.15]; MH ; depth: 2.51 - 3.5m [1] → Labor/Helper [48 h]; Skilled Labor/Surveyor [24 h]; Excavator [48 h]; MH ; depth: 0.0m - 1.5m [0.45]; MH ; depth: 1.51m - 2.5m [1.2]; MH ; depth: 2.51 - 3.5m [0.3]; MH ; depth: 0.0m - 1.5m [0.3]; MH ; depth: 2.51 - 3.5m [0.15]; MH ; depth: 1.51m - 2.5m [0.6]; MH ; depth: 2.51 - 3.5m [0.6] |
| CO-R09.S01-SD-190 | Install RC Footing Works for Manholes of Storm Drainage Network-[Road 09] -[SW-1] | 2025-09-22 → 2025-12-11 A (+80d) | 2025-09-25 → 2025-12-15 A (+81d) |  | 0% → 100% | 34.5d → none | CO-R09.S01-SD-180 → CO-R09.S01-SD-180 SS | resources Cons. Carpenter [164.14 h]; Steel Fixer [164.14 h]; MH ; depth: 0.0m - 1.5m [0.15]; MH ; depth: 1.51m - 2.5m [0.4]; MH ; depth: 2.51 - 3.5m [0.1]; MH ; depth: 0.0m - 1.5m [0.1]; MH ; depth: 2.51 - 3.5m [0.05]; MH ; depth: 1.51m - 2.5m [0.2]; MH ; depth: 2.51 - 3.5m [0.2] → Cons. Carpenter [144 h]; Steel Fixer [144 h]; MH ; depth: 0.0m - 1.5m [0.15]; MH ; depth: 1.51m - 2.5m [0.4]; MH ; depth: 2.51 - 3.5m [0.1]; MH ; depth: 0.0m - 1.5m [0.1]; MH ; depth: 2.51 - 3.5m [0.05]; MH ; depth: 1.51m - 2.5m [0.2]; MH ; depth: 2.51 - 3.5m [0.2] |
| CO-R09.S01-SD-200 | Install RC Wall Rings & Slab Works for Manholes of Storm Drainage Network-[Road 09] -[SW-1] | 2025-09-27 → 2025-12-11 A (+75d) | 2025-10-04 → 2025-12-15 A (+72d) | 7d → 5d | 0% → 100% | 34.5d → none | CO-R09.S01-SD-190 → CO-R09.S01-SD-190 SS | resources Cons. Carpenter [255.34 h]; Steel Fixer [255.34 h]; MH ; depth: 0.0m - 1.5m [1]; MH ; depth: 1.51m - 2.5m [6.02]; MH ; depth: 2.51 - 3.5m [1]; MH ; depth: 2.51 - 3.5m [0.45]; MH ; depth: 1.51m - 2.5m [3.01]; MH ; depth: 2.51 - 3.5m [3.01] → Cons. Carpenter [224 h]; Steel Fixer [224 h]; MH ; depth: 0.0m - 1.5m [1.35]; MH ; depth: 1.51m - 2.5m [3.6]; MH ; depth: 2.51 - 3.5m [0.9]; MH ; depth: 0.0m - 1.5m [0.9]; MH ; depth: 2.51 - 3.5m [0.45]; MH ; depth: 1.51m - 2.5m [1.8]; MH ; depth: 2.51 - 3.5m [1.8] |
| CO-R09.S01-SD-220 | Backfilling Works for Manholes of Storm Drainage Network-[Road 09] -[SW-1] | 2025-10-07 → 2026-05-02 A (+207d) | 2025-10-14 → 2026-05-09 A (+207d) |  | 0% → 100% | 34.5d → none |  | resources Labor/Helper [127.67 h]; Skilled Labor/Surveyor [63.83 h]; Excavator [112 h]; MH ; depth: 0.0m - 1.5m [1]; MH ; depth: 1.51m - 2.5m [3.01]; MH ; depth: 2.51 - 3.5m [0.4]; MH ; depth: 0.0m - 1.5m [0.4]; MH ; depth: 2.51 - 3.5m [0.2]; MH ; depth: 1.51m - 2.5m [1]; MH ; depth: 2.51 - 3.5m [1] → Labor/Helper [112 h]; Skilled Labor/Surveyor [56 h]; Excavator [112 h]; MH ; depth: 0.0m - 1.5m [0.6]; MH ; depth: 1.51m - 2.5m [1.6]; MH ; depth: 2.51 - 3.5m [0.4]; MH ; depth: 0.0m - 1.5m [0.4]; MH ; depth: 2.51 - 3.5m [0.2]; MH ; depth: 1.51m - 2.5m [0.8]; MH ; depth: 2.51 - 3.5m [0.8] |
| CO-R09.S01-SD-210 | Testing Works for Manholes of Storm Drainage Network-[Road 09] -[SW-1] | 2025-10-05 → 2026-10-07 (+367d) | 2025-10-06 → 2026-10-08 (+367d) |  |  | 34.5d → -239.5d |  | resources Labor/Helper [54.47 h]; Plumber [54.47 h]; MH ; depth: 0.0m - 1.5m [0.3]; MH ; depth: 1.51m - 2.5m [1]; MH ; depth: 2.51 - 3.5m [0.2]; MH ; depth: 0.0m - 1.5m [0.2]; MH ; depth: 2.51 - 3.5m [0.1]; MH ; depth: 1.51m - 2.5m [0.4]; MH ; depth: 2.51 - 3.5m [0.4] → Labor/Helper [48 h]; Plumber [48 h]; MH ; depth: 0.0m - 1.5m [0.3]; MH ; depth: 1.51m - 2.5m [0.8]; MH ; depth: 2.51 - 3.5m [0.2]; MH ; depth: 0.0m - 1.5m [0.2]; MH ; depth: 2.51 - 3.5m [0.1]; MH ; depth: 1.51m - 2.5m [0.4]; MH ; depth: 2.51 - 3.5m [0.4] |
| CB | **Catch Basin Sections** | 2025-10-15 → 2026-06-27 (+255d) | 2025-11-18 → 2026-11-12 (+359d) |  |  |  |  |  |
| CO-R09.S01-SD-140 | Trench Excavation and Bedding Works for Catch Basins of Storm Drainage Network-[Road 09] -[SW-1] | 2025-10-15 → 2026-06-27 A (+255d) | 2025-10-21 → 2026-10-15 (+359d) |  | 0% → 90% | 43.5d → -239.5d |  | resources Skilled Labor/Surveyor [49.68 h]; Foreman [53.44 h]; Excavator [80 h]; Pipe with diameter 300mm ; depth: 0 - 1.5m [239.75]; Pipe with diameter 400mm ; depth: 0 - 1.5m [14.04] → Skilled Labor/Surveyor [8 h]; Foreman [8 h]; Excavator [80 h]; Pipe with diameter 300mm ; depth: 0 - 1.5m [168.62]; Pipe with diameter 400mm ; depth: 0 - 1.5m [10.28] |
| CO-R09.S01-SD-150 | Installation and Pipes Laying Connection Works for Catch Basins of Storm Drainage Network-[Road 09] -[SW-1] | 2025-10-22 → 2026-06-29 A (+250d) | 2025-10-29 → 2026-10-24 (+360d) |  | 0% → 90% | 43.5d → -239.5d |  | resources Labor/Helper [258.26 h]; Skilled Labor/Surveyor [48.72 h]; Foreman [52.4 h]; Excavator [80 h]; Pipe with diameter 300mm ; depth: 0 - 1.5m [718.24]; Pipe with diameter 400mm ; depth: 0 - 1.5m [44.14] → Labor/Helper [160 h]; Skilled Labor/Surveyor [8 h]; Foreman [8 h]; Excavator [80 h]; Pipe with diameter 300mm ; depth: 0 - 1.5m [505.85]; Pipe with diameter 400mm ; depth: 0 - 1.5m [30.84] |
| CO-R09.S01-SD-170 | Trench Backfilling and Compaction Works for Catch Basins of Storm Drainage Network-[Road 09] -[SW-1] | 2025-11-08 → 2026-08-03 A (+268d) | 2025-11-18 → 2026-11-12 (+359d) |  | 0% → 90% | 43.5d → -239.5d |  | resources Skilled Labor/Surveyor [32.94 h]; Foreman [35.39 h]; Excavator [80 h]; Pipe with diameter 300mm ; depth: 0 - 1.5m [319]; Pipe with diameter 400mm ; depth: 0 - 1.5m [20.06] → Skilled Labor/Surveyor [8 h]; Foreman [8 h]; Excavator [80 h]; Pipe with diameter 300mm ; depth: 0 - 1.5m [224.82]; Pipe with diameter 400mm ; depth: 0 - 1.5m [13.71] |
| CO-R09.S01-SD-160 | Testing Works for Catch Basins of Storm Drainage Network-[Road 09] -[SW-1] | 2025-10-30 → 2026-10-25 (+360d) | 2025-11-06 → 2026-11-01 (+360d) |  |  | 43.5d → -239.5d |  | resources Labor/Helper [127.11 h]; Skilled Labor/Surveyor [6.81 h]; Foreman [6.81 h]; Plumber [63.55 h]; Excavator [56 h]; Pipe with diameter 300mm ; depth: 0 - 1.5m [158.5]; Pipe with diameter 400mm ; depth: 0 - 1.5m [10.03] → Labor/Helper [112 h]; Skilled Labor/Surveyor [6 h]; Foreman [6 h]; Plumber [56 h]; Excavator [56 h]; Pipe with diameter 300mm ; depth: 0 - 1.5m [112.41]; Pipe with diameter 400mm ; depth: 0 - 1.5m [6.85] |
| IR | **Irrigation Network** | 2025-11-19 → 2025-11-29 (+10d) | 2025-12-28 → 2026-12-02 (+339d) |  |  |  |  |  |
| ML | **Main Line Pipes** | 2025-11-19 → 2025-11-29 (+10d) | 2025-12-28 → 2026-12-02 (+339d) |  |  |  |  |  |
| CO-R09.S01-IR-100 | Trench Excavation and Bedding Works for Main Lines of Irrigation Network-[Road 09] -[SW-1] | 2025-11-19 → 2025-11-29 A (+10d) | 2025-11-26 → 2025-12-01 A (+5d) |  | 0% → 100% | 43.5d → none |  | resources Skilled Labor/Surveyor [340.27 h]; Foreman [340.27 h]; Excavator [56 h]; 125 mm pipe; depth 0.0m - 1.5m [813.54] → Skilled Labor/Surveyor [6 h]; Foreman [6 h]; Excavator [56 h]; 125 mm pipe; depth 0.0m - 1.5m [573] |
| CO-R09.S01-IR-110 | Pipes Laying Works for Main Lines of Irrigation Network-[Road 09] -[SW-1] | 2025-11-27 → 2025-11-30 A (+3d) | 2025-12-08 → 2026-04-04 A (+117d) |  | 0% → 100% | 43.5d → none |  | resources Labor/Helper [680.53 h]; Skilled Labor/Surveyor [34.03 h]; Foreman [34.03 h]; Plumber [373.19 h]; Excavator [80 h]; 125 mm pipe; depth 0.0m - 1.5m [11461.8]; 500. mm pipe; depth 1.5m - 3.0m [2066.45] → Labor/Helper [160 h]; Skilled Labor/Surveyor [8 h]; Foreman [8 h]; Plumber [80 h]; Excavator [80 h]; 125 mm pipe; depth 0.0m - 1.5m [8075.76]; 500. mm pipe; depth 1.5m - 3.0m [1455.88] |
| CO-R09.S01-IR-120 | Installation Works for Main Line Valves of Irrigation Network-[Road 09] -[SW-1] | 2025-12-09 → 2026-05-02 A (+144d) | 2025-12-16 → 2026-11-21 (+340d) |  | 0% → 20% | 43.5d → -239.5d |  | resources Labor/Helper [687.94 h]; Skilled Labor/Surveyor [27.24 h]; Foreman [27.24 h]; Plumber [508.44 h]; Gate valves dia (90)mm on pipes with dia (125) mm. [31.1]; Wash out valve with dia (100)mm on pipes with dia (125) mm [3.01]; Wash out chamber; on 125 mm dia pipeline Depth 1.5 - 3m [3.01] → Labor/Helper [112 h]; Skilled Labor/Surveyor [6 h]; Foreman [6 h]; Plumber [112 h]; Gate valves dia (90)mm on pipes with dia (125) mm. [22]; Wash out valve with dia (100)mm on pipes with dia (125) mm [2]; Wash out chamber; on 125 mm dia pipeline Depth 1.5 - 3m [2] |
| CO-R09.S01-IR-140 | Trench Backfilling and Compaction Works for Main Lines of Irrigation Network-[Road 09] -[SW-1] | 2025-12-17 → 2026-11-22 (+340d) | 2025-12-28 → 2026-12-02 (+339d) |  |  | 43.5d → -239.5d |  | resources Skilled Labor/Surveyor [9.12 h]; Foreman [9.12 h]; Excavator [80 h]; 125 mm pipe; depth 0.0m - 1.5m [407.27] → Skilled Labor/Surveyor [8 h]; Foreman [8 h]; Excavator [80 h]; 125 mm pipe; depth 0.0m - 1.5m [286.5] |
| SL | **Street Lighting Network** | 2025-12-29 → 2026-12-03 (+339d) | 2026-08-13 → 2027-06-20 (+311d) |  |  |  |  |  |
| LP | **Lighting Poles Works** | 2025-12-29 → 2026-12-03 (+339d) | 2026-04-30 → 2027-02-20 (+296d) |  |  |  |  |  |
| CO-R09.S01-SL-100 | Foundation Excavation Works for Lighting Poles of Street Lighting Network-[Road 09] -[SW-1] | 2025-12-29 → 2026-12-03 (+339d) | 2026-01-08 → 2026-12-14 (+340d) |  |  | 43.5d → -239.5d |  | resources Labor/Helper [108.61 h]; Skilled Labor/Surveyor [86.65 h]; Excavator [160 h]; Lighting poles with one arm, including the power distribution box, screws, cables, 12 meters in height. [3.01] → Labor/Helper [160 h]; Skilled Labor/Surveyor [80 h]; Excavator [160 h]; Lighting poles with one arm, including the power distribution box, screws, cables, 12 meters in height. [2.45] |
| CO-R09.S01-SL-110 | Installation Works for Lighting Poles Foundation of Street Lighting Network-[Road 09] -[SW-1] | 2026-01-10 → 2026-12-15 (+339d) | 2026-01-22 → 2026-12-28 (+340d) |  |  | 43.5d → -239.5d |  | resources Labor/Helper [215.34 h]; Skilled Labor/Surveyor [11.22 h]; Foreman [11.22 h]; Eq. Operator [11.22 h]; Loader [24 h]; Reinforced concrete foundation, for 12m high lighting columns With Drawpits [69.22] → Labor/Helper [192 h]; Skilled Labor/Surveyor [10 h]; Foreman [10 h]; Eq. Operator [10 h]; Loader [24 h]; Reinforced concrete foundation, for 12m high lighting columns With Drawpits [49] |
| CO-R09.S01-SL-120 | Installation Works for Lighting Poles of Street Lighting Network-[Road 09] -[SW-1] | 2026-02-14 → 2027-01-19 (+339d) | 2026-02-25 → 2027-01-31 (+340d) |  |  | 43.5d → -239.5d | PRO-SL-1DL-120, CO-R09.S01-SL-160, CO-R09.S01-SL-110 → PRO-SL-1DL-120, CO-R09.S01-SL-160 | resources Labor/Helper [98.7 h]; Electrician [98.7 h]; Lighting poles with one arm, including the power distribution box, screws, cables, 12 meters in height. [38.12] → Labor/Helper [88 h]; Electrician [88 h]; Lighting poles with one arm, including the power distribution box, screws, cables, 12 meters in height. [26.95] |
| CO-R09.S01-SL-210 | Backfilling Works for Lighting Poles of Street Lighting Network-[Road 09] -[SW-1] | 2026-04-12 → 2027-02-01 (+295d) | 2026-04-25 → 2027-02-14 (+295d) |  |  | 8.5d → -239.5d |  | resources Labor/Helper [107.67 h]; Skilled Labor/Surveyor [53.84 h]; Excavator [96 h]; Lighting poles with one arm, including the power distribution box, screws, cables, 12 meters in height. [14.04] → Labor/Helper [96 h]; Skilled Labor/Surveyor [48 h]; Excavator [96 h]; Lighting poles with one arm, including the power distribution box, screws, cables, 12 meters in height. [9.8] |
| CO-R09.S01-SL-130 | Installation Works for Lighting Fixtures With Drop Wire of Street Lighting Network-[Road 09] -[SW-1] | 2026-04-18 → 2027-02-07 (+295d) | 2026-04-30 → 2027-02-20 (+296d) |  |  | 31.5d → -216.5d |  | resources Labor/Helper [107.67 h]; Electrician [107.67 h]; Manlift [96 h]; Street Lighting( LED) Luminaire,(Type C) complete with control gear and lamp, ?.17000 Lumen [69.22] → Labor/Helper [96 h]; Electrician [96 h]; Manlift [96 h]; Street Lighting( LED) Luminaire,(Type C) complete with control gear and lamp, ?.17000 Lumen [49] |
| CO-R09.S01-SL-200 | Testing Works for Lighting Poles of Street Lighting Network-[Road 09] -[SW-1] | 2026-04-26 → 2027-02-15 (+295d) | 2026-04-30 → 2027-02-20 (+296d) |  |  | 31.5d → -216.5d |  | resources Labor/Helper [44.86 h]; Electrician [44.86 h]; Lighting poles with one arm, including the power distribution box, screws, cables, 12 meters in height. [14.04] → Labor/Helper [40 h]; Electrician [40 h]; Lighting poles with one arm, including the power distribution box, screws, cables, 12 meters in height. [9.8] |
| CW | **Cabling Works** | 2026-01-10 → 2026-12-15 (+339d) | 2026-02-12 → 2027-01-18 (+340d) |  |  |  |  |  |
| CO-R09.S01-SL-140 | Trench Excavation and Bedding Works for Street Lighting Network-[Road 09] -[SW-1] | 2026-01-10 → 2026-12-15 (+339d) | 2026-01-20 → 2026-12-26 (+340d) |  |  | 43.5d → -239.5d |  | resources Labor/Helper [89.73 h]; Skilled Labor/Surveyor [44.86 h]; Excavator [80 h] → Labor/Helper [80 h]; Skilled Labor/Surveyor [40 h]; Excavator [80 h] |
| CO-R09.S01-SL-150 | Cable Laying Works for Street Lighting Network-[Road 09] -[SW-1] | 2026-01-21 → 2026-12-27 (+340d) | 2026-02-01 → 2027-01-06 (+339d) |  |  | 43.5d → -239.5d |  | resources Labor/Helper [89.73 h]; Electrician [89.73 h]; Low Current Technician [89.73 h]; Supply, installation , test and operation of cables, Copper, (4Cx25mmï¿½,Cu/XLPE/SWA/PVC +1x16mmï¿½ PVC/PVC) [2654.29] → Labor/Helper [80 h]; Electrician [80 h]; Low Current Technician [80 h]; Supply, installation , test and operation of cables, Copper, (4Cx25mm²,Cu/XLPE/SWA/PVC +1x16mm² PVC/PVC) [1870.05] |
| CO-R09.S01-SL-160 | Trench Backfilling and Compaction Works for Street Lighting Network-[Road 09] -[SW-1] | 2026-02-02 → 2027-01-07 (+339d) | 2026-02-12 → 2027-01-18 (+340d) |  |  | 43.5d → -239.5d |  | resources Skilled Labor/Surveyor [8.97 h]; Foreman [8.97 h]; Excavator [80 h]; Water Tank [20 h]; Supply, installation , test and operation of cables, Copper, (4Cx25mmï¿½,Cu/XLPE/SWA/PVC +1x16mmï¿½ PVC/PVC) [204.64] → Skilled Labor/Surveyor [8 h]; Foreman [8 h]; Excavator [80 h]; Water Tank [20 h]; Supply, installation , test and operation of cables, Copper, (4Cx25mm²,Cu/XLPE/SWA/PVC +1x16mm² PVC/PVC) [143.85] |
| DPB | **Distrubution Panel Boards** | 2026-06-30 → 2027-05-01 (+305d) | 2026-08-13 → 2027-06-20 (+311d) |  |  |  |  |  |
| CO-R09.S01-SL-170 | Foundation Excavation Works For Panel Boards of Street Lighting Network-[Road 09] -[SW-1] | 2026-06-30 → 2027-05-01 (+305d) | 2026-07-16 → 2027-05-23 (+311d) |  |  | 8.5d → -247.5d |  | resources Labor/Helper [134.59 h]; Skilled Labor/Surveyor [67.29 h]; Excavator [120 h] → Labor/Helper [120 h]; Skilled Labor/Surveyor [60 h]; Excavator [120 h] |
| CO-R09.S01-SL-180 | Installation Works for Panel Board Concrete Foundations of Street Lighting Network-[Road 09] -[SW-1] | 2026-07-18 → 2027-05-24 (+310d) | 2026-07-30 → 2027-06-06 (+311d) |  |  | 8.5d → -247.5d |  | resources Skilled Labor/Surveyor [11.22 h]; Foreman [11.22 h]; Excavator [96 h]; Water Tank [24 h] → Skilled Labor/Surveyor [10 h]; Foreman [10 h]; Excavator [96 h]; Water Tank [24 h] |
| CO-R09.S01-SL-190 | Installation Works for Lighting Panel Boards of Street Lighting Network-[Road 09] -[SW-1] | 2026-08-01 → 2027-06-07 (+310d) | 2026-08-13 → 2027-06-20 (+311d) |  |  | 8.5d → -247.5d |  | resources Labor/Helper [107.67 h]; Electrician [107.67 h] → Labor/Helper [96 h]; Electrician [96 h] |
| CO-R09.S01-SL-220 | A wall of concrete blocks to install the KWH meter of Street Lighting Network-[Road 09] -[SW-1] | 2026-08-01 → 2027-06-07 (+310d) | 2026-08-13 → 2027-06-20 (+311d) |  |  | 8.5d → -247.5d |  | resources Block Mason [107.67 h]; Road crossing ducts, 4 way (4 x 100mm PVC) [151.47]; Drawpit with medium duty steel cover, size 900x900x1200mm, Type 4 [14.04] → Block Mason [96 h]; Road crossing ducts, 4 way (4 x 100mm PVC) [107]; Drawpit with medium duty steel cover, size 900x900x1200mm, Type 4 [10] |
| MV | **Medium Voltage Network** | 2026-02-14 → 2026-09-30 (+228d) | 2026-03-03 → 2027-02-06 (+340d) |  |  |  |  |  |
| CW | **Cabling Works** | 2026-02-14 → 2026-09-30 (+228d) | 2026-03-03 → 2027-02-06 (+340d) |  |  |  |  |  |
| CO-R09.S01-MV-100 | Trench Excavation and Bedding Works for Medium Voltage Network-[Road 09] -[SW-1] | 2026-02-14 → 2026-09-30 A (+228d) | 2026-02-17 → 2027-01-23 (+340d) |  | 0% → 20% | 48d → -235d |  | resources Skilled Labor/Surveyor [7.15 h]; Foreman [8.65 h]; Excavator [32 h]; Excavation for Trench size 40cm wide and 80cm deep ( Maximum 1 cable 33kv) [1694.29]; Excavation for Trench size 60cm wide and 80cm deep ( for Max two cables 33 kv) [96.3]; Excavation for Trench size 90cm wide and 80cm deep ( Maximum 3 cable 33kv) [430.34]; Excavation for Trench size 120cm wide and 80cm deep ( Maximum 4cable 33kv) [146.46]; Excavation for Trench size 150cm wide and 80cm deep ( Maximum 4cable 33kv) [540.69]; Duct bank for (2) 33 kv cables [58.18]; Duct bank for (4) 33 kv cables [384.2]; Duct bank for (6) 33 kv cables [174.55] → Skilled Labor/Surveyor [4 h]; Foreman [4 h]; Excavator [32 h]; Excavation for Trench size 40cm wide and 80cm deep ( Maximum 1 cable 33kv) [1193.76]; Excavation for Trench size 60cm wide and 80cm deep ( for Max two cables 33 kv) [67.92]; Excavation for Trench size 90cm wide and 80cm deep ( Maximum 3 cable 33kv) [302.56]; Excavation for Trench size 120cm wide and 80cm deep ( Maximum 4cable 33kv) [102.91]; Excavation for Trench size 150cm wide and 80cm deep ( Maximum 4cable 33kv) [380.77]; Duct bank for (2) 33 kv cables [41.42]; Duct bank for (4) 33 kv cables [270.95]; Duct bank for (6) 33 kv cables [123.25] |
| CO-R09.S01-MV-110 | Cable Laying Works for Medium Voltage Network-[Road 09] -[SW-1] | 2026-02-18 → 2027-01-24 (+340d) | 2026-02-23 → 2027-01-28 (+339d) |  |  | 48d → -235d |  | resources Labor/Helper [45.4 h]; Electrician [169.64 h]; Low Current Technician [45.85 h]; 33kv 3Cx400 mmï¿½ Al XLPE / LLDPE /PVC Cable [7974.91]; 33kv 3Cx400 mmï¿½ Al XLPE /LLDPE/PVC [23.07] → Labor/Helper [40 h]; Electrician [40 h]; Low Current Technician [40 h]; 33kv 3Cx400 mm² Al XLPE / LLDPE /PVC Cable [5619.13]; 33kv 3Cx400 mm² Al XLPE /LLDPE/PVC [16.1] |
| CO-R09.S01-MV-120 | Trench Backfilling and Compaction Works for Medium Voltage Network-[Road 09] -[SW-1] | 2026-02-24 → 2027-01-30 (+340d) | 2026-03-03 → 2027-02-06 (+340d) |  |  | 48d → -235d |  | resources Skilled Labor/Surveyor [6.81 h]; Foreman [6.81 h]; Excavator [56 h]; Water Tank [14 h]; 33kv 3Cx400 mmï¿½ Al XLPE / LLDPE /PVC Cable [3417.68]; 33kv 3Cx400 mmï¿½ Al XLPE /LLDPE/PVC [10.03] → Skilled Labor/Surveyor [6 h]; Foreman [6 h]; Excavator [56 h]; Water Tank [14 h]; 33kv 3Cx400 mm² Al XLPE / LLDPE /PVC Cable [2408.2]; 33kv 3Cx400 mm² Al XLPE /LLDPE/PVC [6.9] |
| TE | **Telecom Network** | 2026-05-03 → 2027-02-07 (+280d) | 2026-06-20 → 2027-03-27 (+280d) |  |  |  |  |  |
| PD | **Ducts Works** | 2026-05-03 → 2027-02-07 (+280d) | 2026-05-16 → 2027-02-20 (+280d) |  |  |  |  |  |
| CO-R09.S01-TE-100 | Trench Excavation and Bedding Works for Ducts of Telecom Network-[Road 09] -[SW-1] | 2026-05-03 → 2027-02-07 (+280d) | 2026-05-04 → 2027-02-08 (+280d) |  |  | 0d → -235d |  | resources Skilled Labor/Surveyor [2.24 h]; Foreman [2.24 h]; Excavator [16 h]; 6-way ducts, 50mm dia. HDPE [126.39]; Road crossing ducts (6-way) [11.03] → Skilled Labor/Surveyor [2 h]; Foreman [2 h]; Excavator [16 h]; 6-way ducts, 50mm dia. HDPE [89]; Road crossing ducts (6-way) [8] |
| CO-R09.S01-TE-110 | Pipes Laying Works for Ducts of Telecom Network-[Road 09] -[SW-1] | 2026-05-05 → 2027-02-09 (+280d) | 2026-05-09 → 2027-02-13 (+280d) |  |  | 8d → -221d |  | resources Labor/Helper [143.56 h]; Skilled Labor/Surveyor [7.85 h]; Foreman [7.85 h]; Plumber [71.78 h]; Excavator [64 h]; JCB [32 h]; Truck [64 h]; 6-way ducts, 50mm dia. HDPE [759.37]; Road crossing ducts (6-way) [64.2] → Labor/Helper [128 h]; Skilled Labor/Surveyor [7 h]; Foreman [7 h]; Plumber [64 h]; Excavator [64 h]; JCB [32 h]; Truck [64 h]; 6-way ducts, 50mm dia. HDPE [535]; Road crossing ducts (6-way) [45] |
| CO-R09.S01-TE-120 | Pouring Plain Concrete Above Ducts of Telecom Network-[Road 09] -[SW-1] | 2026-05-10 → 2027-02-14 (+280d) | 2026-05-11 → 2027-02-15 (+280d) |  |  | 8d → -221d |  | resources Skilled Labor/Surveyor [2.24 h]; Foreman [2.24 h]; Cons. Carpenter [35.89 h]; Block Mason [17.95 h]; 6-way ducts, 50mm dia. HDPE [126.39]; Road crossing ducts (6-way) [11.03] → Skilled Labor/Surveyor [2 h]; Foreman [2 h]; Cons. Carpenter [32 h]; Block Mason [16 h]; 6-way ducts, 50mm dia. HDPE [89]; Road crossing ducts (6-way) [8] |
| CO-R09.S01-TE-130 | Trench Backfilling and Compaction Works for Ducts of Telecom Network-[Road 09] -[SW-1] | 2026-05-12 → 2027-02-16 (+280d) | 2026-05-16 → 2027-02-20 (+280d) |  |  | 8d → -221d |  | resources Skilled Labor/Surveyor [4.49 h]; Foreman [4.49 h]; Excavator [32 h]; 6-way ducts, 50mm dia. HDPE [252.79]; Road crossing ducts (6-way) [21.07] → Skilled Labor/Surveyor [4 h]; Foreman [4 h]; Excavator [32 h]; 6-way ducts, 50mm dia. HDPE [178]; Road crossing ducts (6-way) [15] |
| MH | **Manholes Works** | 2026-05-05 → 2027-02-09 (+280d) | 2026-06-20 → 2027-03-27 (+280d) |  |  |  |  |  |
| CO-R09.S01-TE-140 | Excavation Works for Manholes of Telecom Network-[Road 09] -[SW-1] | 2026-05-05 → 2027-02-09 (+280d) | 2026-05-18 → 2027-02-23 (+281d) |  |  | 0d → -235d |  | resources Skilled Labor/Surveyor [11.22 h]; Foreman [11.22 h]; Excavator [96 h]; Manhole Type 1 (2000x1000x1000) [1]; Manhole Type 2 (2000x1000x1000) [1] → Skilled Labor/Surveyor [10 h]; Foreman [10 h]; Excavator [96 h]; Manhole Type 1 (2000x1000x1000) [1]; Manhole Type 2 (2000x1000x1000) [1.4] |
| CO-R09.S01-TE-150 | Installation Works for Manholes of Telecom Network-[Road 09] -[SW-1] | 2026-05-19 → 2027-02-24 (+281d) | 2026-06-06 → 2027-03-13 (+280d) |  |  | 0d → -235d |  | resources Skilled Labor/Surveyor [11.22 h]; Foreman [11.22 h]; Excavator [96 h]; Manhole Type 1 (2000x1000x1000) [3.01]; Manhole Type 2 (2000x1000x1000) [6.02] → Skilled Labor/Surveyor [10 h]; Foreman [10 h]; Excavator [96 h]; Manhole Type 1 (2000x1000x1000) [2]; Manhole Type 2 (2000x1000x1000) [4.2] |
| CO-R09.S01-TE-160 | Backfilling Works for Manholes of Telecom Network-[Road 09] -[SW-1] | 2026-06-07 → 2027-03-14 (+280d) | 2026-06-20 → 2027-03-27 (+280d) |  |  | 0d → -235d |  | resources Skilled Labor/Surveyor [11.22 h]; Foreman [11.22 h]; Excavator [96 h]; Manhole Type 1 (2000x1000x1000) [1]; Manhole Type 2 (2000x1000x1000) [1] → Skilled Labor/Surveyor [10 h]; Foreman [10 h]; Excavator [96 h]; Manhole Type 1 (2000x1000x1000) [1]; Manhole Type 2 (2000x1000x1000) [1.4] |
| RD | **Road Works** | 2026-06-21 → 2026-06-10 (-11d) | 2026-09-24 → 2027-07-31 (+310d) |  |  |  |  |  |
| RD | **Pre-Bituminous Construction** | 2026-06-21 → 2026-06-10 (-11d) | 2026-07-18 → 2027-04-24 (+280d) |  |  |  |  |  |
| CO-R09.S01-RD-P-100 | Capping and Subgrade Layer for Road Works-[Road 09] -[SW-1] | 2026-06-21 → 2026-06-10 A (-11d) | 2026-07-14 → 2027-04-20 (+280d) |  | 0% → 60% | 12d → -223d |  | resources Labor/Helper [1996.5 h]; Skilled Labor/Surveyor [998.25 h]; Loader [672 h]; Grader [672 h]; Road Roller [672 h]; Water Tank [672 h]; 300mm capping layer underneath subgrade , CBR?15% [9596.98]; 300mm thick Subgrade, including subgrade preparation, CBR?25% [9596.98] → Labor/Helper [1344 h]; Skilled Labor/Surveyor [672 h]; Loader [672 h]; Grader [672 h]; Road Roller [672 h]; Water Tank [672 h]; 300mm capping layer underneath subgrade , CBR?15% [6762.42]; 300mm thick Subgrade, including subgrade preparation, CBR?25% [6762.42] |
| CO-R09.S01-RD-P-110 | Aggregate Base Course Layer for Road Works-[Road 09] -[SW-1] | 2026-06-24 → 2027-03-31 (+280d) | 2026-07-18 → 2027-04-24 (+280d) |  |  | 36d → -181d |  | resources Labor/Helper [401.76 h]; Skilled Labor/Surveyor [200.88 h]; Foreman [200.88 h]; Loader [336 h]; Grader [336 h]; Road Roller [336 h]; Aggregate base course 200mm thick after compaction in two layers(Grading 1); CBR?80%; including watering, compaction and testing [6398.99] → Labor/Helper [672 h]; Skilled Labor/Surveyor [336 h]; Foreman [336 h]; Loader [336 h]; Grader [336 h]; Road Roller [336 h]; Aggregate base course 200mm thick after compaction in two layers(Grading 1); CBR?80%; including watering, compaction and testing [4508.74] |
| LS | **Pavement Works** | 2026-07-19 → 2026-08-25 (+37d) | 2026-09-24 → 2027-07-31 (+310d) |  |  |  |  |  |
| CO-R09.S01-RD-P-120 | Fixing of Curbstone for Sidewalks Pavement-[Road 09] -[SW-1] | 2026-07-19 → 2026-08-25 A (+37d) | 2026-08-08 → 2026-08-31 A (+23d) |  | 0% → 100% | 36d → none |  | resources Labor/Helper [1701.33 h]; Block Mason [5103.99 h]; Precast Concrete Kerb, Type K1 [3541.06]; Precast Concrete Kerb, Type L1 [7024.94] → Labor/Helper [1152 h]; Block Mason [3456 h]; Precast Concrete Kerb, Type K1 [2494.95]; Precast Concrete Kerb, Type L1 [4950.29] |
| CO-R09.S01-RD-P-130 | Fixing of Interlock Tiles for Sidewalks Pavement-[Road 09] -[SW-1] | 2026-09-09 → 2026-08-25 A (-15d) | 2026-09-24 → 2027-07-31 (+310d) |  | 0% → 50% | 8.5d → -247.5d |  | resources Labor/Helper [970.92 h]; Block Mason [2912.75 h]; Interlocking block pavers for sidewalk/footpath 60mm thick on and including 30mm Sand Bedding, 200mm Aggregate subbase, all in accordance with authority standards and complete as per specifications [6322.75]; Extraover for Pedestrian ramps [16.05] → Labor/Helper [1296 h]; Block Mason [3888 h]; Interlocking block pavers for sidewalk/footpath 60mm thick on and including 30mm Sand Bedding, 200mm Aggregate subbase, all in accordance with authority standards and complete as per specifications [4455.27]; Extraover for Pedestrian ramps [11] |
| SW_2 | **SW_2** | 2025-06-28 → 2025-04-17 (-72d) | 2026-10-01 → 2027-08-07 (+310d) |  |  |  |  |  |
| EW | **Earthworks** | 2025-06-28 → 2025-04-17 (-72d) | 2025-07-20 → 2025-05-03 (-78d) |  |  |  |  |  |
| EW | **Earthworks** | 2025-06-28 → 2025-04-17 (-72d) | 2025-07-20 → 2025-05-03 (-78d) |  |  |  |  |  |
| CO-R09.S02-EW-110 | Roadway Excavation Works Upto Design Level for Earthworks-[Road 09]-[SW-2] | 2025-06-28 → 2025-04-17 A (-72d) | 2025-07-08 → 2025-04-26 A (-73d) |  | 0% → 100% | 11d → none |  | resources Labor/Helper [729.53 h]; Skilled Labor/Surveyor [91.19 h]; Foreman [91.19 h]; Water Tank [1152 h]; Dozer [1152 h]; Roadway Excavation for cuttings; on any type of material for all depths including trimming and Preparation of excavated surfaces and disposal. [45187.2] → Labor/Helper [1152 h]; Skilled Labor/Surveyor [144 h]; Foreman [144 h]; Water Tank [1152 h]; Dozer [1152 h]; Roadway Excavation for cuttings; on any type of material for all depths including trimming and Preparation of excavated surfaces and disposal. [31838.6] |
| CO-R09.S02-EW-120 | Embankments Works Upto Design Level for Earthworks-[Road 09]-[SW-2] | 2025-07-09 → 2025-04-17 A (-83d) | 2025-07-20 → 2025-05-03 A (-78d) |  | 0% → 100% | 17d → none |  | resources Labor/Helper [1185.49 h]; Skilled Labor/Surveyor [148.19 h]; Foreman [148.19 h]; Water Tank [1248 h]; Dozer [1248 h]; Embankments to the ROW, with suitable material other than top soil or rock according to specifications [76067.6] → Labor/Helper [1248 h]; Skilled Labor/Surveyor [156 h]; Foreman [156 h]; Water Tank [1248 h]; Dozer [1248 h]; Embankments to the ROW, with suitable material other than top soil or rock according to specifications [53596.5] |
| SW | **Sewage Network** | 2025-07-21 → 2025-11-10 (+112d) | 2025-08-31 → 2026-10-26 (+421d) |  |  |  |  |  |
| ML | **Main Line Sections** | 2025-07-21 → 2025-11-10 (+112d) | 2025-08-31 → 2026-10-26 (+421d) |  |  |  |  |  |
| CO-R09.S02-SW-100 | Trench Excavation and Bedding Works for Main Lines of Sewage Network-[Road 09]-[SW-2] | 2025-07-21 → 2025-11-10 A (+112d) | 2025-08-03 → 2026-10-10 (+433d) |  | 0% → 95% | 17d → -212.5d |  | resources Skilled Labor/Surveyor [122.24 h]; Foreman [137.86 h]; Nominal bore : 200mm; Depth : 0.0m - 1.5m [16.05]; Nominal bore : 200mm; Depth : 1.5m - 2.5m [42.13]; Nominal bore : 200mm; Depth : 2.5m - 3.5m [62.19]; Nominal bore : 200mm; Depth : 3.5m - 4.5m [72.23]; Nominal bore : 200mm; Depth : 4.5m -5.5m [35.11]; Nominal bore : 200mm; Depth : 5.5m - 6.5m [41.13] → Nominal bore : 200mm; Depth : 0.0m - 1.5m [11]; Nominal bore : 200mm; Depth : 1.5m - 2.5m [30.16]; Nominal bore : 200mm; Depth : 2.5m - 3.5m [44.1]; Nominal bore : 200mm; Depth : 3.5m - 4.5m [51.01]; Nominal bore : 200mm; Depth : 4.5m -5.5m [25.19]; Nominal bore : 200mm; Depth : 5.5m - 6.5m [32.68] |
| CO-R09.S02-SW-120 | Pipes Laying Works for Main Lines of Sewage Network-[Road 09]-[SW-2] | 2025-08-04 → 2026-02-15 A (+195d) | 2025-08-17 → 2026-10-18 (+427d) |  | 0% → 95% | 23d → -212.5d |  | resources Labor/Helper [2222.66 h]; Skilled Labor/Surveyor [188.62 h]; Foreman [206 h]; Plumber [1312.49 h]; Nominal bore : 200mm; Depth : 0.0m - 1.5m [47.15]; Nominal bore : 200mm; Depth : 1.5m - 2.5m [127.4]; Nominal bore : 200mm; Depth : 2.5m - 3.5m [187.59]; Nominal bore : 200mm; Depth : 3.5m - 4.5m [216.68]; Nominal bore : 200mm; Depth : 4.5m -5.5m [108.34]; Nominal bore : 200mm; Depth : 5.5m - 6.5m [139.44] → Nominal bore : 200mm; Depth : 0.0m - 1.5m [33]; Nominal bore : 200mm; Depth : 1.5m - 2.5m [90.49]; Nominal bore : 200mm; Depth : 2.5m - 3.5m [132.3]; Nominal bore : 200mm; Depth : 3.5m - 4.5m [153.04]; Nominal bore : 200mm; Depth : 4.5m -5.5m [75.58]; Nominal bore : 200mm; Depth : 5.5m - 6.5m [98.03] |
| CO-R09.S02-SW-130 | Trench Backfilling and Compaction Works for Main Lines of Sewage Network-[Road 09]-[SW-2] | 2025-08-18 → 2026-05-02 A (+257d) | 2025-08-31 → 2026-10-26 (+421d) |  | 0% → 90% | 23d → -212.5d |  | resources Skilled Labor/Surveyor [579.69 h]; Foreman [649.77 h]; Nominal bore : 200mm; Depth : 0.0m - 1.5m [8.03]; Nominal bore : 200mm; Depth : 1.5m - 2.5m [21.07]; Nominal bore : 200mm; Depth : 2.5m - 3.5m [31.1]; Nominal bore : 200mm; Depth : 3.5m - 4.5m [37.12]; Nominal bore : 200mm; Depth : 4.5m -5.5m [18.06]; Nominal bore : 200mm; Depth : 5.5m - 6.5m [41.13] → Nominal bore : 200mm; Depth : 0.0m - 1.5m [5.5]; Nominal bore : 200mm; Depth : 1.5m - 2.5m [15.27]; Nominal bore : 200mm; Depth : 2.5m - 3.5m [22.05]; Nominal bore : 200mm; Depth : 3.5m - 4.5m [25.51]; Nominal bore : 200mm; Depth : 4.5m -5.5m [12.6]; Nominal bore : 200mm; Depth : 5.5m - 6.5m [16.34] |

| ID | Task | Start | Finish | Complete | Total float | Other |
| --- | --- | --- | --- | --- | --- | --- |
| MH | **Manholes** | 2025-08-04 → 2026-05-02 (+271d) | 2025-08-25 → 2026-10-11 (+412d) |  |  |  |
| CO-R09.S02-SW-160 | Excavation Works for Main Line Manholes of Sewage Network-[Road 09]-[SW-2] | 2025-08-04 → 2026-05-02 A (+271d) | 2025-08-04 → 2026-05-10 A (+279d) | 0% → 100% | 28d → none | resources Labor/Helper [410.45 h]; Skilled Labor/Surveyor [58.63 h]; Depth: 1.5 - 2.5m [0.45]; Depth: 3.5 - 4.5m [0.15]; Depth: 4.5 - 5.5m [0.15]; Depth:6.5 - 7.5m [0.3] → Depth: 1.5 - 2.5m [0.45]; Depth: 3.5 - 4.5m [0.15]; Depth: 4.5 - 5.5m [0.15]; Depth:6.5 - 7.5m [0.3] |
| CO-R09.S02-SW-170 | Installation RC Footing Works for Main Line Manholes of Sewage Network-[Road 09]-[SW-2] | 2025-08-05 → 2026-05-02 A (+270d) | 2025-08-07 → 2026-05-10 A (+276d) | 0% → 100% | 28d → none | resources Cons. Carpenter [437.04 h]; Steel Fixer [159.01 h]; Depth: 1.5 - 2.5m [0.3]; Depth: 3.5 - 4.5m [0.1]; Depth: 4.5 - 5.5m [0.1]; Depth:6.5 - 7.5m [0.2] → Depth: 1.5 - 2.5m [0.3]; Depth: 3.5 - 4.5m [0.1]; Depth: 4.5 - 5.5m [0.1]; Depth:6.5 - 7.5m [0.2] |
| CO-R09.S02-SW-180 | Install Grp Liner Wall Works for Main Line Manholes of Sewage Network-[Road 09]-[SW-2] | 2025-08-09 → 2026-05-02 A (+266d) | 2025-08-14 → 2026-05-10 A (+269d) | 0% → 100% | 28d → none | resources Labor/Helper [410.45 h]; Plumber [364.26 h]; Depth: 1.5 - 2.5m [1]; Depth: 3.5 - 4.5m [0.4]; Depth: 4.5 - 5.5m [0.4]; Depth:6.5 - 7.5m [1] → Depth: 1.5 - 2.5m [1.2]; Depth: 3.5 - 4.5m [0.4]; Depth: 4.5 - 5.5m [0.4]; Depth:6.5 - 7.5m [0.8] |
| CO-R09.S02-SW-190 | Pouring Grp Liner Wall Works for Main Line Manholes of Sewage Network-[Road 09]-[SW-2] | 2025-08-16 → 2026-07-01 A (+319d) | 2025-08-18 → 2026-07-05 A (+321d) | 0% → 100% | 28d → none | resources Cons. Carpenter [282.79 h]; Steel Fixer [102.89 h]; Depth: 1.5 - 2.5m [0.15]; Depth: 3.5 - 4.5m [0.05]; Depth: 4.5 - 5.5m [0.05]; Depth:6.5 - 7.5m [0.1] → Depth: 1.5 - 2.5m [0.15]; Depth: 3.5 - 4.5m [0.05]; Depth: 4.5 - 5.5m [0.05]; Depth:6.5 - 7.5m [0.1] |
| CO-R09.S02-SW-200 | Backfilling Works for Main Line Manholes of Sewage Network-[Road 09]-[SW-2] | 2025-08-19 → 2026-07-05 A (+320d) | 2025-08-24 → 2026-07-06 A (+316d) | 0% → 100% | 28d → none | resources Labor/Helper [256.53 h]; Skilled Labor/Surveyor [36.64 h]; Depth: 1.5 - 2.5m [0.45]; Depth: 3.5 - 4.5m [0.15]; Depth: 4.5 - 5.5m [0.15]; Depth:6.5 - 7.5m [0.3] → Depth: 1.5 - 2.5m [0.45]; Depth: 3.5 - 4.5m [0.15]; Depth: 4.5 - 5.5m [0.15]; Depth:6.5 - 7.5m [0.3] |
| CO-R09.S02-SW-210 | Testing Works for Main Line Manholes of Sewage Network-[Road 09]-[SW-2] | 2025-08-25 → 2026-10-11 (+412d) | 2025-08-25 → 2026-10-11 (+412d) |  | 28d → -199.5d | resources Labor/Helper [8.97 h]; Plumber [8.97 h]; Depth: 1.5 - 2.5m [0.15]; Depth: 3.5 - 4.5m [0.05]; Depth: 4.5 - 5.5m [0.05]; Depth:6.5 - 7.5m [0.1] → Depth: 1.5 - 2.5m [0.15]; Depth: 3.5 - 4.5m [0.05]; Depth: 4.5 - 5.5m [0.05]; Depth:6.5 - 7.5m [0.1] |
| SD | **Storm Drainage Network** | 2025-09-20 → 2025-12-25 (+96d) | 2025-12-20 → 2026-11-29 (+344d) |  |  |  |
| ML | **Main Line Sections** | 2025-09-20 → 2025-12-25 (+96d) | 2025-11-02 → 2026-11-16 (+379d) |  |  |  |
| CO-R09.S02-SD-100 | Trench Excavation and Bedding Works for Main Lines of Storm Drainage Network-[Road 09]-[SW-2] | 2025-09-20 → 2025-12-25 A (+96d) | 2025-10-01 → 2025-12-29 A (+89d) | 0% → 100% | 0d → none | resources Skilled Labor/Surveyor [476.37 h]; Foreman [476.37 h]; Excavator [112 h]; Pipe with diameter 400mm ; depth: 1.51m - 2.5m [27.08]; Pipe with diameter 1100mm ; depth: 1.51m - 2.5m [95.3]; Pipe with diameter 1100mm ; depth: 2.51 - 3.5m [24.08]; Pipe with diameter 1200mm ; depth: 1.51m - 2.5m [44.14] → Skilled Labor/Surveyor [12 h]; Foreman [12 h]; Excavator [112 h]; Pipe with diameter 400mm ; depth: 1.51m - 2.5m [18.55]; Pipe with diameter 1100mm ; depth: 1.51m - 2.5m [66.7]; Pipe with diameter 1100mm ; depth: 2.51 - 3.5m [17.4]; Pipe with diameter 1200mm ; depth: 1.51m - 2.5m [31] |
| CO-R09.S02-SD-120 | Pipes Laying Works for Main Lines of Storm Drainage Network-[Road 09]-[SW-2] | 2025-10-02 → 2025-12-27 A (+86d) | 2025-10-13 → 2025-12-29 A (+77d) | 0% → 100% | 0d → none | resources Labor/Helper [2296.8 h]; Skilled Labor/Surveyor [114.84 h]; Foreman [114.84 h]; Plumber [1148.4 h]; Excavator [240 h]; Pipe with diameter 400mm ; depth: 1.51m - 2.5m [79.25]; Pipe with diameter 1100mm ; depth: 1.51m - 2.5m [283.89]; Pipe with diameter 1100mm ; depth: 2.51 - 3.5m [74.23]; Pipe with diameter 1200mm ; depth: 1.51m - 2.5m [132.41] → Labor/Helper [480 h]; Skilled Labor/Surveyor [24 h]; Foreman [24 h]; Plumber [240 h]; Excavator [240 h]; Pipe with diameter 400mm ; depth: 1.51m - 2.5m [55.65]; Pipe with diameter 1100mm ; depth: 1.51m - 2.5m [200.1]; Pipe with diameter 1100mm ; depth: 2.51 - 3.5m [52.2]; Pipe with diameter 1200mm ; depth: 1.51m - 2.5m [93] |
| CO-R09.S02-SD-130 | Trench Backfilling and Compaction Works for Main Lines of Storm Drainage Network-[Road 09]-[SW-2] | 2025-10-16 → 2026-01-22 A (+98d) | 2025-11-02 → 2026-11-16 (+379d) | 0% → 90% | 104.5d → -212.5d | resources Skilled Labor/Surveyor [476.37 h]; Foreman [476.37 h]; Excavator [120 h]; Pipe with diameter 400mm ; depth: 1.51m - 2.5m [13.04]; Pipe with diameter 1100mm ; depth: 1.51m - 2.5m [47.15]; Pipe with diameter 1100mm ; depth: 2.51 - 3.5m [13.04]; Pipe with diameter 1200mm ; depth: 1.51m - 2.5m [23.07] → Skilled Labor/Surveyor [12 h]; Foreman [12 h]; Excavator [120 h]; Pipe with diameter 400mm ; depth: 1.51m - 2.5m [9.28]; Pipe with diameter 1100mm ; depth: 1.51m - 2.5m [33.35]; Pipe with diameter 1100mm ; depth: 2.51 - 3.5m [8.7]; Pipe with diameter 1200mm ; depth: 1.51m - 2.5m [15.5] |
| MH | **Manholes** | 2025-10-15 → 2026-03-01 (+137d) | 2025-11-02 → 2026-11-01 (+364d) |  |  |  |
| CO-R09.S02-SD-180 | Trench Excavation and Bedding Works for Manholes of Storm Drainage Network-[Road 09]-[SW-2] | 2025-10-15 → 2026-03-01 A (+137d) | 2025-10-15 → 2026-03-09 A (+145d) | 0% → 100% | 34.5d → none | resources Labor/Helper [45.37 h]; Skilled Labor/Surveyor [22.68 h]; Excavator [8 h]; MH ; depth: 0.0m - 1.5m [0.45]; MH ; depth: 1.51m - 2.5m [1]; MH ; depth: 2.51 - 3.5m [0.3]; MH ; depth: 0.0m - 1.5m [0.3]; MH ; depth: 2.51 - 3.5m [0.15]; MH ; depth: 2.51 - 3.5m [1] → Labor/Helper [8 h]; Skilled Labor/Surveyor [4 h]; Excavator [8 h]; MH ; depth: 0.0m - 1.5m [0.45]; MH ; depth: 1.51m - 2.5m [1.2]; MH ; depth: 2.51 - 3.5m [0.3]; MH ; depth: 0.0m - 1.5m [0.3]; MH ; depth: 2.51 - 3.5m [0.15]; MH ; depth: 1.51m - 2.5m [0.6]; MH ; depth: 2.51 - 3.5m [0.6] |
| CO-R09.S02-SD-190 | Install RC Footing Works for Manholes of Storm Drainage Network-[Road 09]-[SW-2] | 2025-10-16 → 2026-03-01 A (+136d) | 2025-10-18 → 2026-03-09 A (+142d) | 0% → 100% | 34.5d → none | resources Cons. Carpenter [170.13 h]; Steel Fixer [170.13 h]; MH ; depth: 0.0m - 1.5m [0.15]; MH ; depth: 1.51m - 2.5m [0.4]; MH ; depth: 2.51 - 3.5m [0.1]; MH ; depth: 0.0m - 1.5m [0.1]; MH ; depth: 2.51 - 3.5m [0.05]; MH ; depth: 1.51m - 2.5m [0.2]; MH ; depth: 2.51 - 3.5m [0.2] → Cons. Carpenter [32 h]; Steel Fixer [32 h]; MH ; depth: 0.0m - 1.5m [0.15]; MH ; depth: 1.51m - 2.5m [0.4]; MH ; depth: 2.51 - 3.5m [0.1]; MH ; depth: 0.0m - 1.5m [0.1]; MH ; depth: 2.51 - 3.5m [0.05]; MH ; depth: 1.51m - 2.5m [0.2]; MH ; depth: 2.51 - 3.5m [0.2] |
| CO-R09.S02-SD-200 | Install RC Wall Rings & Slab Works for Manholes of Storm Drainage Network-[Road 09]-[SW-2] | 2025-10-19 → 2026-03-01 A (+133d) | 2025-10-22 → 2026-03-09 A (+138d) | 0% → 100% | 34.5d → none | resources Cons. Carpenter [136.11 h]; Steel Fixer [136.11 h]; MH ; depth: 0.0m - 1.5m [1]; MH ; depth: 1.51m - 2.5m [6.02]; MH ; depth: 2.51 - 3.5m [1]; MH ; depth: 2.51 - 3.5m [0.45]; MH ; depth: 1.51m - 2.5m [3.01]; MH ; depth: 2.51 - 3.5m [3.01] → Cons. Carpenter [64 h]; Steel Fixer [64 h]; MH ; depth: 0.0m - 1.5m [1.35]; MH ; depth: 1.51m - 2.5m [3.6]; MH ; depth: 2.51 - 3.5m [0.9]; MH ; depth: 0.0m - 1.5m [0.9]; MH ; depth: 2.51 - 3.5m [0.45]; MH ; depth: 1.51m - 2.5m [1.8]; MH ; depth: 2.51 - 3.5m [1.8] |
| CO-R09.S02-SD-220 | Backfilling Works for Manholes of Storm Drainage Network-[Road 09]-[SW-2] | 2025-10-26 → 2026-03-05 A (+130d) | 2025-11-02 → 2026-03-30 A (+148d) | 0% → 100% | 34.5d → none | resources Labor/Helper [108.41 h]; Skilled Labor/Surveyor [54.2 h]; Excavator [56 h]; MH ; depth: 0.0m - 1.5m [1]; MH ; depth: 1.51m - 2.5m [3.01]; MH ; depth: 2.51 - 3.5m [0.4]; MH ; depth: 0.0m - 1.5m [0.4]; MH ; depth: 2.51 - 3.5m [0.2]; MH ; depth: 1.51m - 2.5m [1]; MH ; depth: 2.51 - 3.5m [1] → Labor/Helper [56 h]; Skilled Labor/Surveyor [28 h]; Excavator [56 h]; MH ; depth: 0.0m - 1.5m [0.6]; MH ; depth: 1.51m - 2.5m [1.6]; MH ; depth: 2.51 - 3.5m [0.4]; MH ; depth: 0.0m - 1.5m [0.4]; MH ; depth: 2.51 - 3.5m [0.2]; MH ; depth: 1.51m - 2.5m [0.8]; MH ; depth: 2.51 - 3.5m [0.8] |
| CO-R09.S02-SD-210 | Testing Works for Manholes of Storm Drainage Network-[Road 09]-[SW-2] | 2025-10-23 → 2026-10-31 (+373d) | 2025-10-25 → 2026-11-01 (+372d) |  | 34.5d → -199.5d | resources Labor/Helper [18.16 h]; Plumber [18.16 h]; MH ; depth: 0.0m - 1.5m [0.3]; MH ; depth: 1.51m - 2.5m [1]; MH ; depth: 2.51 - 3.5m [0.2]; MH ; depth: 0.0m - 1.5m [0.2]; MH ; depth: 2.51 - 3.5m [0.1]; MH ; depth: 1.51m - 2.5m [0.4]; MH ; depth: 2.51 - 3.5m [0.4] → Labor/Helper [16 h]; Plumber [16 h]; MH ; depth: 0.0m - 1.5m [0.3]; MH ; depth: 1.51m - 2.5m [0.8]; MH ; depth: 2.51 - 3.5m [0.2]; MH ; depth: 0.0m - 1.5m [0.2]; MH ; depth: 2.51 - 3.5m [0.1]; MH ; depth: 1.51m - 2.5m [0.4]; MH ; depth: 2.51 - 3.5m [0.4] |
| CB | **Catch Basin Sections** | 2025-11-03 → 2026-06-24 (+233d) | 2025-12-20 → 2026-11-29 (+344d) |  |  |  |
| CO-R09.S02-SD-140 | Trench Excavation and Bedding Works for Catch Basins of Storm Drainage Network-[Road 09]-[SW-2] | 2025-11-03 → 2026-06-24 A (+233d) | 2025-11-09 → 2026-11-08 (+364d) | 0% → 80% | 34.5d → -171d | resources Skilled Labor/Surveyor [136.08 h]; Foreman [136.08 h]; Excavator [48 h]; Pipe with diameter 300mm ; depth: 0 - 1.5m [239.75]; Pipe with diameter 400mm ; depth: 0 - 1.5m [14.04] → Skilled Labor/Surveyor [5 h]; Foreman [5 h]; Excavator [48 h]; Pipe with diameter 300mm ; depth: 0 - 1.5m [168.62]; Pipe with diameter 400mm ; depth: 0 - 1.5m [10.28] |
| CO-R09.S02-SD-150 | Installation and Pipes Laying Connection Works for Catch Basins of Storm Drainage Network-[Road 09]-[SW-2] | 2025-11-30 → 2026-06-25 A (+207d) | 2025-12-07 → 2026-11-16 (+344d) | 0% → 80% | 226d → -73d | resources Labor/Helper [576.2 h]; Skilled Labor/Surveyor [51.01 h]; Foreman [54.81 h]; Excavator [112 h]; Pipe with diameter 300mm ; depth: 0 - 1.5m [718.24]; Pipe with diameter 400mm ; depth: 0 - 1.5m [44.14] → Labor/Helper [224 h]; Skilled Labor/Surveyor [12 h]; Foreman [12 h]; Excavator [112 h]; Pipe with diameter 300mm ; depth: 0 - 1.5m [505.85]; Pipe with diameter 400mm ; depth: 0 - 1.5m [30.84] |
| CO-R09.S02-SD-170 | Trench Backfilling and Compaction Works for Catch Basins of Storm Drainage Network-[Road 09]-[SW-2] | 2025-12-13 → 2026-06-28 A (+197d) | 2025-12-20 → 2026-11-29 (+344d) | 0% → 80% | 226d → -73d | resources Skilled Labor/Surveyor [136.19 h]; Foreman [136.19 h]; Excavator [56 h]; Pipe with diameter 300mm ; depth: 0 - 1.5m [319]; Pipe with diameter 400mm ; depth: 0 - 1.5m [20.06] → Skilled Labor/Surveyor [6 h]; Foreman [6 h]; Excavator [56 h]; Pipe with diameter 300mm ; depth: 0 - 1.5m [224.82]; Pipe with diameter 400mm ; depth: 0 - 1.5m [13.71] |
| CO-R09.S02-SD-160 | Testing Works for Catch Basins of Storm Drainage Network-[Road 09]-[SW-2] | 2025-12-08 → 2026-11-17 (+344d) | 2025-12-11 → 2026-11-21 (+345d) |  | 226d → -73d | resources Labor/Helper [72.63 h]; Skilled Labor/Surveyor [4.54 h]; Foreman [4.54 h]; Plumber [36.32 h]; Excavator [32 h]; Pipe with diameter 300mm ; depth: 0 - 1.5m [158.5]; Pipe with diameter 400mm ; depth: 0 - 1.5m [10.03] → Labor/Helper [64 h]; Skilled Labor/Surveyor [4 h]; Foreman [4 h]; Plumber [32 h]; Excavator [32 h]; Pipe with diameter 300mm ; depth: 0 - 1.5m [112.41]; Pipe with diameter 400mm ; depth: 0 - 1.5m [6.85] |
| PW | **Potable Water Network** | 2025-11-03 → 2026-06-27 (+236d) | 2025-12-29 → 2027-01-17 (+384d) |  |  |  |
| ML | **Main Line Sections** | 2025-11-03 → 2026-06-27 (+236d) | 2025-12-29 → 2027-01-17 (+384d) |  |  |  |
| CO-R09.S02-PW-100 | Trench Excavation and Bedding Works for Main Lines of Potable Water Network-[Road 09]-[SW-2] | 2025-11-03 → 2026-06-27 A (+236d) | 2025-11-10 → 2026-11-24 (+379d) | 0% → 95% | 104.5d → -212.5d | resources Skilled Labor/Surveyor [474.62 h]; Foreman [474.62 h]; Excavator [56 h]; Pipe with diameter 160 mm; in depth 1.5m - 3.0m [14.04]; Pipe with diameter 200mm; in depth 0.0m - 1.5m [722.26]; Pipe with diameter 200mm; in depth 1.5m - 3.0m [28.09] → Skilled Labor/Surveyor [6 h]; Foreman [6 h]; Excavator [56 h]; Pipe with diameter 160 mm; in depth 1.5m - 3.0m [10]; Pipe with diameter 200mm; in depth 0.0m - 1.5m [508.94]; Pipe with diameter 200mm; in depth 1.5m - 3.0m [20] |
| CO-R09.S02-PW-110 | Pipes Laying and accessories for Main Lines of Potable Water Network-[Road 09]-[SW-2] | 2025-12-10 → 2026-06-30 A (+202d) | 2025-12-18 → 2027-01-07 (+385d) | 0% → 85% | 79.5d → -242.5d | resources Labor/Helper [1653.58 h]; Skilled Labor/Surveyor [83.97 h]; Foreman [83.97 h]; Plumber [826.79 h]; Excavator [128 h]; Pipe with diameter 160 mm; in depth 1.5m - 3.0m [35.11]; Pipe with diameter 200mm; in depth 0.0m - 1.5m [830.59]; Pipe with diameter 200mm; in depth 1.5m - 3.0m [71.22] → Labor/Helper [256 h]; Skilled Labor/Surveyor [13 h]; Foreman [13 h]; Plumber [128 h]; Excavator [128 h]; Pipe with diameter 160 mm; in depth 1.5m - 3.0m [25]; Pipe with diameter 200mm; in depth 0.0m - 1.5m [584.55]; Pipe with diameter 200mm; in depth 1.5m - 3.0m [50] |
| CO-R09.S02-PW-130 | Trench Backfilling and Compaction Works for Main Lines of Potable Water Network-[Road 09]-[SW-2] | 2025-12-21 → 2026-07-01 A (+192d) | 2025-12-29 → 2027-01-17 (+384d) | 0% → 85% | 78.5d → -242.5d | resources Skilled Labor/Surveyor [226.64 h]; Foreman [226.64 h]; Eq. Operator [226.64 h]; Loader [64 h]; Compactor [64 h]; Water Tank [16 h]; Pipe with diameter 160 mm; in depth 1.5m - 3.0m [35.11]; Pipe with diameter 200mm; in depth 0.0m - 1.5m [722.26]; Pipe with diameter 200mm; in depth 1.5m - 3.0m [28.09] → Skilled Labor/Surveyor [7 h]; Foreman [7 h]; Eq. Operator [7 h]; Loader [64 h]; Compactor [64 h]; Water Tank [16 h]; Pipe with diameter 160 mm; in depth 1.5m - 3.0m [25]; Pipe with diameter 200mm; in depth 0.0m - 1.5m [508.94]; Pipe with diameter 200mm; in depth 1.5m - 3.0m [20] |
| VC | **Valve Chamber** | 2025-11-11 → 2026-11-25 (+379d) | 2025-11-17 → 2026-12-01 (+379d) |  |  |  |
| CO-R09.S02-PW-210 | Installation Works for Main Line Valves and Valve Chambers of Potable Water Network-[Road 09]-[SW-2] | 2025-11-11 → 2026-11-25 (+379d) | 2025-11-17 → 2026-12-01 (+379d) |  | 114.5d → -202.5d | resources Labor/Helper [161.51 h]; Plumber [161.51 h]; Gate valves dia(200)mm on pipes with dia (200) mm. [31.1]; Wash out valve with dia (100)mm on pipes with dia (200) mm [1] → Labor/Helper [24 h]; Plumber [24 h]; Gate valves dia(200)mm on pipes with dia (200) mm. [22]; Wash out valve with dia (100)mm on pipes with dia (200) mm [1] |
| FH | **Fire Hydrant** | 2025-11-11 → 2026-11-25 (+379d) | 2025-12-29 → 2026-12-13 (+349d) |  |  |  |
| CO-R09.S02-PW-140 | Excavation Works for Fire Hydrants of Potable Water Network-[Road 09]-[SW-2] | 2025-11-11 → 2026-11-25 (+379d) | 2025-11-16 → 2026-11-30 (+379d) |  | 104.5d → -212.5d | resources Skilled Labor/Surveyor [4.49 h]; Foreman [4.49 h]; Excavator [40 h]; 3-outlet fire hydrant (2 x 2.5 inch and 1 x 4 inch) in the form of a separate dry vacuum cylinder [3.01] → Skilled Labor/Surveyor [4 h]; Foreman [4 h]; Excavator [40 h]; 3-outlet fire hydrant (2 x 2.5 inch and 1 x 4 inch) in the form of a separate dry vacuum cylinder [2.25] |
| CO-R09.S02-PW-150 | Installation Works for Fire Hydrant of Potable Water Network-[Road 09]-[SW-2] | 2025-12-17 → 2026-12-01 (+349d) | 2025-12-23 → 2026-12-07 (+349d) |  | 78.5d → -212.5d | resources Labor/Helper [107.67 h]; Skilled Labor/Surveyor [5.61 h]; Foreman [5.61 h]; Plumber [107.67 h]; 3-outlet fire hydrant (2 x 2.5 inch and 1 x 4 inch) in the form of a separate dry vacuum cylinder [14.04] → Labor/Helper [96 h]; Skilled Labor/Surveyor [5 h]; Foreman [5 h]; Plumber [96 h]; 3-outlet fire hydrant (2 x 2.5 inch and 1 x 4 inch) in the form of a separate dry vacuum cylinder [9.75] |
| CO-R09.S02-PW-160 | Trench Backfilling and Compaction Works for Fire Hydrants of Potable Water Network-[Road 09]-[SW-2] | 2025-12-24 → 2026-12-08 (+349d) | 2025-12-29 → 2026-12-13 (+349d) |  | 78.5d → -212.5d | resources Skilled Labor/Surveyor [4.49 h]; Foreman [4.49 h]; Excavator [40 h]; 3-outlet fire hydrant (2 x 2.5 inch and 1 x 4 inch) in the form of a separate dry vacuum cylinder [4.01] → Skilled Labor/Surveyor [4 h]; Foreman [4 h]; Excavator [40 h]; 3-outlet fire hydrant (2 x 2.5 inch and 1 x 4 inch) in the form of a separate dry vacuum cylinder [3] |
| SL | **Street Lighting Network** | 2025-12-30 → 2027-01-18 (+384d) | 2026-08-25 → 2027-07-01 (+310d) |  |  |  |
| LP | **Lighting Poles Works** | 2025-12-30 → 2027-01-18 (+384d) | 2026-06-01 → 2027-04-01 (+304d) |  |  |  |
| CO-R09.S02-SL-100 | Foundation Excavation Works for Lighting Poles of Street Lighting Network-[Road 09]-[SW-2] | 2025-12-30 → 2027-01-18 (+384d) | 2026-01-08 → 2027-01-27 (+384d) |  | 78.5d → -242.5d | resources Labor/Helper [161.51 h]; Skilled Labor/Surveyor [80.75 h]; Excavator [144 h]; Lighting poles with one arm, including the power distribution box, screws, cables, 12 meters in height. [3.01] → Labor/Helper [144 h]; Skilled Labor/Surveyor [72 h]; Excavator [144 h]; Lighting poles with one arm, including the power distribution box, screws, cables, 12 meters in height. [2.45] |
| CO-R09.S02-SL-110 | Installation Works for Lighting Poles Foundation of Street Lighting Network-[Road 09]-[SW-2] | 2026-01-10 → 2027-01-28 (+383d) | 2026-01-19 → 2027-02-07 (+384d) |  | 78.5d → -242.5d | resources Labor/Helper [161.51 h]; Skilled Labor/Surveyor [8.97 h]; Foreman [8.97 h]; Eq. Operator [8.97 h]; Loader [18 h]; Reinforced concrete foundation, for 12m high lighting columns With Drawpits [69.22] → Labor/Helper [144 h]; Skilled Labor/Surveyor [8 h]; Foreman [8 h]; Eq. Operator [8 h]; Loader [18 h]; Reinforced concrete foundation, for 12m high lighting columns With Drawpits [49] |
| CO-R09.S02-SL-120 | Installation Works for Lighting Poles of Street Lighting Network-[Road 09]-[SW-2] | 2026-02-08 → 2027-02-08 (+365d) | 2026-02-17 → 2027-02-17 (+365d) |  | 62.5d → -242.5d | resources Labor/Helper [80.75 h]; Electrician [80.75 h]; Lighting poles with one arm, including the power distribution box, screws, cables, 12 meters in height. [38.12] → Labor/Helper [72 h]; Electrician [72 h]; Lighting poles with one arm, including the power distribution box, screws, cables, 12 meters in height. [26.95] |
| CO-R09.S02-SL-210 | Backfilling Works for Lighting Poles of Street Lighting Network-[Road 09]-[SW-2] | 2026-04-26 → 2027-02-18 (+298d) | 2026-05-18 → 2027-03-17 (+303d) |  | 8.5d → -242.5d | resources Labor/Helper [179.45 h]; Skilled Labor/Surveyor [89.73 h]; Excavator [160 h]; Lighting poles with one arm, including the power distribution box, screws, cables, 12 meters in height. [14.04] → Labor/Helper [160 h]; Skilled Labor/Surveyor [80 h]; Excavator [160 h]; Lighting poles with one arm, including the power distribution box, screws, cables, 12 meters in height. [9.8] |
| CO-R09.S02-SL-130 | Installation Works for Lighting Fixtures With Drop Wire of Street Lighting Network-[Road 09]-[SW-2] | 2026-05-09 → 2027-03-14 (+309d) | 2026-06-01 → 2027-04-01 (+304d) |  | 8.5d → -247.5d | resources Labor/Helper [152.53 h]; Electrician [143.56 h]; Manlift [136 h]; Street Lighting( LED) Luminaire,(Type C) complete with control gear and lamp, ?.17000 Lumen [69.22] → Labor/Helper [136 h]; Electrician [136 h]; Manlift [136 h]; Street Lighting( LED) Luminaire,(Type C) complete with control gear and lamp, ?.17000 Lumen [49] |
| CO-R09.S02-SL-200 | Testing Works for Lighting Poles of Street Lighting Network-[Road 09]-[SW-2] | 2026-05-19 → 2027-03-18 (+303d) | 2026-06-01 → 2027-03-27 (+299d) |  | 8.5d → -242.5d | resources Labor/Helper [143.56 h]; Electrician [143.56 h]; Lighting poles with one arm, including the power distribution box, screws, cables, 12 meters in height. [14.04] → Labor/Helper [128 h]; Electrician [128 h]; Lighting poles with one arm, including the power distribution box, screws, cables, 12 meters in height. [9.8] |
| CW | **Cabling Works** | 2026-02-18 → 2027-02-18 (+365d) | 2026-03-28 → 2027-03-29 (+366d) |  |  |  |
| CO-R09.S02-SL-140 | Trench Excavation and Bedding Works for Street Lighting Network-[Road 09]-[SW-2] | 2026-02-18 → 2027-02-18 (+365d) | 2026-03-01 → 2027-03-02 (+366d) |  | 96d → -209d | resources Labor/Helper [89.73 h]; Skilled Labor/Surveyor [44.86 h]; Excavator [80 h] → Labor/Helper [80 h]; Skilled Labor/Surveyor [40 h]; Excavator [80 h] |
| CO-R09.S02-SL-150 | Cable Laying Works for Street Lighting Network-[Road 09]-[SW-2] | 2026-03-02 → 2027-03-03 (+366d) | 2026-03-12 → 2027-03-17 (+370d) |  | 96d → -209d | resources Labor/Helper [89.73 h]; Electrician [89.73 h]; Low Current Technician [89.73 h]; Supply, installation , test and operation of cables, Copper, (4Cx25mmï¿½,Cu/XLPE/SWA/PVC +1x16mmï¿½ PVC/PVC) [2654.29] → Labor/Helper [80 h]; Electrician [80 h]; Low Current Technician [80 h]; Supply, installation , test and operation of cables, Copper, (4Cx25mm²,Cu/XLPE/SWA/PVC +1x16mm² PVC/PVC) [1870.05] |
| CO-R09.S02-SL-160 | Trench Backfilling and Compaction Works for Street Lighting Network-[Road 09]-[SW-2] | 2026-03-14 → 2027-03-18 (+369d) | 2026-03-28 → 2027-03-29 (+366d) |  | 96d → -209d | resources Skilled Labor/Surveyor [8.97 h]; Foreman [8.97 h]; Excavator [80 h]; Water Tank [20 h]; Supply, installation , test and operation of cables, Copper, (4Cx25mmï¿½,Cu/XLPE/SWA/PVC +1x16mmï¿½ PVC/PVC) [204.64] → Skilled Labor/Surveyor [8 h]; Foreman [8 h]; Excavator [80 h]; Water Tank [20 h]; Supply, installation , test and operation of cables, Copper, (4Cx25mm²,Cu/XLPE/SWA/PVC +1x16mm² PVC/PVC) [143.85] |
| DPB | **Distrubution Panel Boards** | 2026-06-30 → 2027-05-01 (+305d) | 2026-08-25 → 2027-07-01 (+310d) |  |  |  |
| CO-R09.S02-SL-170 | Foundation Excavation Works For Panel Boards of Street Lighting Network-[Road 09]-[SW-2] | 2026-06-30 → 2027-05-01 (+305d) | 2026-07-11 → 2027-05-11 (+304d) |  | 29.75d → -226.25d | resources Labor/Helper [89.73 h]; Skilled Labor/Surveyor [44.86 h]; Reinforced concrete base With fence for Distribution substation in accordance with SEC Specifications [4.01] → Reinforced concrete base With fence for Distribution substation in accordance with SEC Specifications [3] |
| CO-R09.S02-SL-180 | Installation Works for Panel Board Concrete Foundations of Street Lighting Network-[Road 09]-[SW-2] | 2026-07-12 → 2027-05-12 (+304d) | 2026-07-22 → 2027-05-29 (+311d) |  | 29.75d → -226.25d | resources Skilled Labor/Surveyor [17.95 h]; Foreman [17.95 h]; Excavator [160 h]; Water Tank [40 h]; Package Substation 33000/400V, 500kVA with RMU [0.45] → Skilled Labor/Surveyor [16 h]; Foreman [16 h]; Excavator [160 h]; Water Tank [40 h]; Package Substation 33000/400V, 500kVA with RMU [0.45] |
| CO-R09.S02-SL-190 | Installation Works for Lighting Panel Boards of Street Lighting Network-[Road 09]-[SW-2] | 2026-07-23 → 2027-05-30 (+311d) | 2026-08-03 → 2027-06-09 (+310d) |  | 29.75d → -226.25d | resources Labor/Helper [179.45 h]; Electrician [143.56 h]; Package Substation 33000/400V, 500kVA with RMU [3.01] → Labor/Helper [160 h]; Electrician [160 h]; Package Substation 33000/400V, 500kVA with RMU [1.65] |
| CO-R09.S02-SL-220 | A wall of concrete blocks to install the KWH meter of Street Lighting Network-[Road 09]-[SW-2] | 2026-08-04 → 2027-06-10 (+310d) | 2026-08-25 → 2027-07-01 (+310d) |  | 29.75d → -226.25d | resources Block Mason [161.51 h]; Road crossing ducts, 4 way (4 x 100mm PVC) [151.47]; Drawpit with medium duty steel cover, size 600x600x1000mm, Type 18 [4.01]; Drawpit with medium duty steel cover, size 900x900x1200mm, Type 4 [14.04]; Street Lighting Feeder pillars , Includes foundation and draw pits [4.01] → Block Mason [146 h]; Road crossing ducts, 4 way (4 x 100mm PVC) [107]; Drawpit with medium duty steel cover, size 600x600x1000mm, Type 18 [3]; Drawpit with medium duty steel cover, size 900x900x1200mm, Type 4 [10]; Street Lighting Feeder pillars , Includes foundation and draw pits [3] |
| TE | **Telecom Network** | 2026-05-17 → 2027-02-21 (+280d) | 2026-07-14 → 2027-04-20 (+280d) |  |  |  |
| PD | **Ducts Works** | 2026-05-17 → 2027-02-21 (+280d) | 2026-06-17 → 2027-03-24 (+280d) |  |  |  |
| CO-R09.S02-TE-100 | Trench Excavation and Bedding Works for Ducts of Telecom Network-[Road 09]-[SW-2] | 2026-05-17 → 2027-02-21 (+280d) | 2026-05-19 → 2027-02-24 (+281d) |  | 8d → -221d | resources Skilled Labor/Surveyor [3.36 h]; Foreman [3.36 h]; Excavator [56 h]; 6-way ducts, 50mm dia. HDPE [126.39]; Road crossing ducts (6-way) [11.03] → Skilled Labor/Surveyor [6 h]; Foreman [6 h]; Excavator [56 h]; 6-way ducts, 50mm dia. HDPE [89]; Road crossing ducts (6-way) [8] |
| CO-R09.S02-TE-110 | Pipes Laying Works for Ducts of Telecom Network-[Road 09]-[SW-2] | 2026-05-20 → 2027-02-25 (+281d) | 2026-06-01 → 2027-03-04 (+276d) |  | 23d → -212d | resources Labor/Helper [125.62 h]; Skilled Labor/Surveyor [6.73 h]; Foreman [6.73 h]; Plumber [62.81 h]; Excavator [56 h]; JCB [28 h]; Truck [56 h]; 6-way ducts, 50mm dia. HDPE [759.37]; Road crossing ducts (6-way) [64.2] → Labor/Helper [112 h]; Skilled Labor/Surveyor [6 h]; Foreman [6 h]; Plumber [56 h]; Excavator [56 h]; JCB [28 h]; Truck [56 h]; 6-way ducts, 50mm dia. HDPE [535]; Road crossing ducts (6-way) [45] |
| CO-R09.S02-TE-120 | Pouring Plain Concrete Above Ducts of Telecom Network-[Road 09]-[SW-2] | 2026-06-02 → 2027-03-06 (+277d) | 2026-06-09 → 2027-03-16 (+280d) |  | 23d → -212d | resources Skilled Labor/Surveyor [6.73 h]; Foreman [6.73 h]; Cons. Carpenter [125.62 h]; Block Mason [62.81 h]; 6-way ducts, 50mm dia. HDPE [126.39]; Road crossing ducts (6-way) [11.03] → Skilled Labor/Surveyor [6 h]; Foreman [6 h]; Cons. Carpenter [112 h]; Block Mason [56 h]; 6-way ducts, 50mm dia. HDPE [89]; Road crossing ducts (6-way) [8] |
| CO-R09.S02-TE-130 | Trench Backfilling and Compaction Works for Ducts of Telecom Network-[Road 09]-[SW-2] | 2026-06-10 → 2027-03-17 (+280d) | 2026-06-17 → 2027-03-24 (+280d) |  | 23d → -212d | resources Skilled Labor/Surveyor [6.73 h]; Foreman [6.73 h]; Excavator [56 h]; 6-way ducts, 50mm dia. HDPE [252.79]; Road crossing ducts (6-way) [21.07] → Skilled Labor/Surveyor [6 h]; Foreman [6 h]; Excavator [56 h]; 6-way ducts, 50mm dia. HDPE [178]; Road crossing ducts (6-way) [15] |
| MH | **Manholes Works** | 2026-06-21 → 2027-03-28 (+280d) | 2026-07-14 → 2027-04-20 (+280d) |  |  |  |
| CO-R09.S02-TE-140 | Excavation Works for Manholes of Telecom Network-[Road 09]-[SW-2] | 2026-06-21 → 2027-03-28 (+280d) | 2026-06-28 → 2027-04-04 (+280d) |  | 0d → -235d | resources Skilled Labor/Surveyor [6.73 h]; Foreman [6.73 h]; Excavator [56 h]; Manhole Type 2 (2000x1000x1000) [1]; Manhole Type 3 (2000x1000x1000) [1] → Skilled Labor/Surveyor [6 h]; Foreman [6 h]; Excavator [56 h]; Manhole Type 2 (2000x1000x1000) [1.4]; Manhole Type 3 (2000x1000x1000) [0.6] |
| CO-R09.S02-TE-150 | Installation Works for Manholes of Telecom Network-[Road 09]-[SW-2] | 2026-06-29 → 2027-04-05 (+280d) | 2026-07-06 → 2027-04-12 (+280d) |  | 0d → -235d | resources Skilled Labor/Surveyor [6.73 h]; Foreman [6.73 h]; Excavator [56 h]; Manhole Type 1 (2000x1000x1000) [1]; Manhole Type 2 (2000x1000x1000) [6.02]; Manhole Type 3 (2000x1000x1000) [3.01] → Skilled Labor/Surveyor [6 h]; Foreman [6 h]; Excavator [56 h]; Manhole Type 1 (2000x1000x1000) [1]; Manhole Type 2 (2000x1000x1000) [4.2]; Manhole Type 3 (2000x1000x1000) [1.8] |
| CO-R09.S02-TE-160 | Backfilling Works for Manholes of Telecom Network-[Road 09]-[SW-2] | 2026-07-07 → 2027-04-13 (+280d) | 2026-07-14 → 2027-04-20 (+280d) |  | 0d → -235d | resources Skilled Labor/Surveyor [6.73 h]; Foreman [6.73 h]; Excavator [56 h]; Manhole Type 2 (2000x1000x1000) [1]; Manhole Type 3 (2000x1000x1000) [1] → Skilled Labor/Surveyor [6 h]; Foreman [6 h]; Excavator [56 h]; Manhole Type 2 (2000x1000x1000) [1.4]; Manhole Type 3 (2000x1000x1000) [0.6] |
| RD | **Road Works** | 2026-07-15 → 2026-08-25 (+41d) | 2026-10-01 → 2027-08-07 (+310d) |  |  |  |
| RD | **Pre-Bituminous Construction** | 2026-07-15 → 2027-04-21 (+280d) | 2026-08-08 → 2027-05-20 (+285d) |  |  |  |
| CO-R09.S02-RD-P-100 | Capping and Subgrade Layer for Road Works-[Road 09]-[SW-2] | 2026-07-15 → 2027-04-21 (+280d) | 2026-07-28 → 2027-05-04 (+280d) |  | 0d → -235d | resources Labor/Helper [329.71 h]; Skilled Labor/Surveyor [394.94 h]; Loader [576 h]; Grader [576 h]; Road Roller [576 h]; Water Tank [576 h]; 300mm capping layer underneath subgrade , CBR?15% [9596.98]; 300mm thick Subgrade, including subgrade preparation, CBR?25% [9596.98] → Labor/Helper [1152 h]; Skilled Labor/Surveyor [576 h]; Loader [576 h]; Grader [576 h]; Road Roller [576 h]; Water Tank [576 h]; 300mm capping layer underneath subgrade , CBR?15% [6762.42]; 300mm thick Subgrade, including subgrade preparation, CBR?25% [6762.42] |
| CO-R09.S02-RD-P-110 | Aggregate Base Course Layer for Road Works-[Road 09]-[SW-2] | 2026-07-19 → 2027-04-25 (+280d) | 2026-08-08 → 2027-05-20 (+285d) |  | 49d → -201d | resources Labor/Helper [646.03 h]; Skilled Labor/Surveyor [323.01 h]; Foreman [323.01 h]; Loader [288 h]; Grader [288 h]; Road Roller [288 h]; Aggregate base course 200mm thick after compaction in two layers(Grading 1); CBR?80%; including watering, compaction and testing [6398.99] → Labor/Helper [576 h]; Skilled Labor/Surveyor [288 h]; Foreman [288 h]; Loader [288 h]; Grader [288 h]; Road Roller [288 h]; Aggregate base course 200mm thick after compaction in two layers(Grading 1); CBR?80%; including watering, compaction and testing [4508.74] |
| LS | **Pavement Works** | 2026-07-22 → 2026-08-25 (+34d) | 2026-10-01 → 2027-08-07 (+310d) |  |  |  |
| CO-R09.S02-RD-P-120 | Fixing of Curbstone for Sidewalks Pavement-[Road 09]-[SW-2] | 2026-07-22 → 2026-08-25 A (+34d) | 2026-08-11 → 2026-08-31 A (+20d) | 0% → 100% | 49d → none | resources Labor/Helper [2722.13 h]; Block Mason [8166.39 h]; Precast Concrete Kerb, Type K1 [3541.06]; Precast Concrete Kerb, Type L1 [7024.94] → Labor/Helper [1152 h]; Block Mason [3456 h]; Precast Concrete Kerb, Type K1 [2494.95]; Precast Concrete Kerb, Type L1 [4950.29] |
| CO-R09.S02-RD-P-130 | Fixing of Interlock Tiles for Sidewalks Pavement-[Road 09]-[SW-2] | 2026-09-09 → 2026-08-25 A (-15d) | 2026-10-01 → 2027-08-07 (+310d) | 0% → 50% | 9.5d → -246.5d | resources Labor/Helper [1453.02 h]; Block Mason [4205.26 h]; Interlocking block pavers for sidewalk/footpath 60mm thick on and including 30mm Sand Bedding, 200mm Aggregate subbase, all in accordance with authority standards and complete as per specifications [6322.75]; Extraover for Pedestrian ramps [16.05] → Labor/Helper [1296 h]; Block Mason [3888 h]; Interlocking block pavers for sidewalk/footpath 60mm thick on and including 30mm Sand Bedding, 200mm Aggregate subbase, all in accordance with authority standards and complete as per specifications [4455.27]; Extraover for Pedestrian ramps [11] |
| 4 | **Road 10 Local 2 ( 2352 LM )** | 2025-05-19 → 2025-03-15 (-65d) | 2026-10-01 → 2027-06-21 (+263d) |  |  |  |
| 1 | **SW-3** | 2025-05-19 → 2025-03-15 (-65d) | 2026-09-29 → 2027-06-19 (+263d) |  |  |  |

| ID | Task | Start | Finish | Complete | Total float | Predecessors | Other |
| --- | --- | --- | --- | --- | --- | --- | --- |
| SW_3 | **SW_3-East** | 2025-05-19 → 2025-03-15 (-65d) | 2026-09-29 → 2027-06-19 (+263d) |  |  |  |  |
| EW | **Earthworks** | 2025-05-19 → 2025-03-15 (-65d) | 2025-06-17 → 2025-03-24 (-85d) |  |  |  |  |
| EW | **Earthworks** | 2025-05-19 → 2025-03-15 (-65d) | 2025-06-17 → 2025-03-24 (-85d) |  |  |  |  |
| CO-R10.S03-ES-EW-100 | Roadway Excavation Works Upto Design Level for Earthworks-[Road 10]-[SW-3] | 2025-05-19 → 2025-03-15 A (-65d) | 2025-05-29 → 2025-03-22 A (-68d) | 0% → 100% | 11d → none |  | resources Labor/Helper [871.08 h]; Skilled Labor/Surveyor [108.89 h]; Foreman [108.89 h]; Water Tank [192 h]; Dozer [192 h]; Roadway Excavation for cuttings; on any type of material for all depths including trimming and Preparation of excavated surfaces and disposal. [22656.8] → Labor/Helper [192 h]; Skilled Labor/Surveyor [24 h]; Foreman [24 h]; Water Tank [192 h]; Dozer [192 h]; Roadway Excavation for cuttings; on any type of material for all depths including trimming and Preparation of excavated surfaces and disposal. [15964.1] |
| CO-R10.S03-ES-EW-110 | Embankments Works Upto Design Level for Earthworks-[Road 10]-[SW-3] | 2025-05-31 → 2025-03-18 A (-74d) | 2025-06-17 → 2025-03-24 A (-85d) | 0% → 100% | 50d → none |  | resources Labor/Helper [1361.06 h]; Skilled Labor/Surveyor [170.13 h]; Foreman [170.13 h]; Water Tank [720 h]; Dozer [720 h]; Embankments to the ROW, with suitable material other than top soil or rock according to specifications [38141.1] → Labor/Helper [720 h]; Skilled Labor/Surveyor [90 h]; Foreman [90 h]; Water Tank [720 h]; Dozer [720 h]; Embankments to the ROW, with suitable material other than top soil or rock according to specifications [26873.7] |
| SD | **Storm Drainage Network** | 2025-08-16 → 2025-08-02 (-14d) | 2025-10-23 → 2026-10-17 (+359d) |  |  |  |  |
| ML | **Main Line Sections** | 2025-08-16 → 2025-08-02 (-14d) | 2025-10-07 → 2025-08-21 (-47d) |  |  |  |  |
| CO-R10.S03-ES-SD-100 | Trench Excavation and Bedding Works for Main Lines of Storm Drainage Network-[Road 10]-[SW-3] | 2025-08-16 → 2025-08-02 A (-14d) | 2025-08-26 → 2025-08-07 A (-19d) | 0% → 100% | 0d → none |  | resources Skilled Labor/Surveyor [13.68 h]; Foreman [13.68 h]; Excavator [112 h]; Pipe with diameter 500mm ; depth: 0.0m - 1.5m [7.02]; Pipe with diameter 600mm ; depth: 1.51m - 2.5m [28.09]; Pipe with diameter 600mm ; depth: 2.51m - 3.5m [24.08]; Pipe with diameter 700mm ; depth: 1.51m - 2.5m [79.25] → Skilled Labor/Surveyor [12 h]; Foreman [12 h]; Excavator [112 h]; Pipe with diameter 500mm ; depth: 0.0m - 1.5m [5]; Pipe with diameter 600mm ; depth: 1.51m - 2.5m [19.65]; Pipe with diameter 600mm ; depth: 2.51m - 3.5m [17.3]; Pipe with diameter 700mm ; depth: 1.51m - 2.5m [56.06] |
| CO-R10.S03-ES-SD-120 | Pipes Laying Works for Main Lines of Storm Drainage Network-[Road 10]-[SW-3] | 2025-09-02 → 2025-08-09 A (-24d) | 2025-09-18 → 2025-08-14 A (-35d) | 0% → 100% | 65d → none |  | resources Labor/Helper [273.57 h]; Skilled Labor/Surveyor [13.68 h]; Foreman [13.68 h]; Plumber [136.79 h]; Excavator [120 h]; Pipe with diameter 500mm ; depth: 0.0m - 1.5m [21.07]; Pipe with diameter 600mm ; depth: 1.51m - 2.5m [83.26]; Pipe with diameter 600mm ; depth: 2.51m - 3.5m [74.23]; Pipe with diameter 700mm ; depth: 1.51m - 2.5m [238.75] → Labor/Helper [240 h]; Skilled Labor/Surveyor [12 h]; Foreman [12 h]; Plumber [120 h]; Excavator [120 h]; Pipe with diameter 500mm ; depth: 0.0m - 1.5m [15]; Pipe with diameter 600mm ; depth: 1.51m - 2.5m [58.94]; Pipe with diameter 600mm ; depth: 2.51m - 3.5m [51.9]; Pipe with diameter 700mm ; depth: 1.51m - 2.5m [168.18] |
| CO-R10.S03-ES-SD-130 | Trench Backfilling and Compaction Works for Main Lines of Storm Drainage Network-[Road 10]-[SW-3] | 2025-09-20 → 2025-08-16 A (-35d) | 2025-10-07 → 2025-08-21 A (-47d) | 0% → 100% | 65d → none | ENG-SH-SD-ML-A-110 FF, ENG-MS-SD-ML-A-110 FF, CO-R10.S03-ES-SD-120, CO-R10.S03-ES-SD-220 FF → ENG-SH-SD-ML-A-110 FF, ENG-MS-SD-ML-A-110 FF, CO-R10.S03-ES-SD-120 | resources Skilled Labor/Surveyor [13.68 h]; Foreman [13.68 h]; Excavator [120 h]; Pipe with diameter 500mm ; depth: 0.0m - 1.5m [4.01]; Pipe with diameter 600mm ; depth: 1.51m - 2.5m [14.04]; Pipe with diameter 600mm ; depth: 2.51m - 3.5m [13.04]; Pipe with diameter 700mm ; depth: 1.51m - 2.5m [40.13] → Skilled Labor/Surveyor [12 h]; Foreman [12 h]; Excavator [120 h]; Pipe with diameter 500mm ; depth: 0.0m - 1.5m [2.5]; Pipe with diameter 600mm ; depth: 1.51m - 2.5m [9.82]; Pipe with diameter 600mm ; depth: 2.51m - 3.5m [8.65]; Pipe with diameter 700mm ; depth: 1.51m - 2.5m [28.03] |
| MH | **Manholes** | 2025-09-02 → 2025-11-01 (+60d) | 2025-09-17 → 2026-10-06 (+384d) |  |  |  |  |
| CO-R10.S03-ES-SD-180 | Trench Excavation and Bedding Works for Manholes of Storm Drainage Network-[Road 10]-[SW-3] | 2025-09-02 → 2025-11-01 A (+60d) | 2025-09-02 → 2025-11-06 A (+65d) | 0% → 100% | 75d → none |  | resources Labor/Helper [45.6 h]; Skilled Labor/Surveyor [22.8 h]; Excavator [40 h]; MH ; depth: 0.0m - 1.5m [0.23]; MH ; depth: 1.51m - 2.5m [1]; MH ; depth: 0.0m - 1.5m [0.15]; MH ; depth: 0.0m - 1.5m [0.07]; MH ; depth: 1.51m - 2.5m [0.23]; MH ; depth: 2.51 - 3.5m [0.3]; MH ; depth: 3.51 - 4.5m [0.15] → Labor/Helper [40 h]; Skilled Labor/Surveyor [20 h]; Excavator [40 h]; MH ; depth: 0.0m - 1.5m [0.23]; MH ; depth: 1.51m - 2.5m [0.6]; MH ; depth: 0.0m - 1.5m [0.15]; MH ; depth: 0.0m - 1.5m [0.07]; MH ; depth: 1.51m - 2.5m [0.23]; MH ; depth: 2.51 - 3.5m [0.3]; MH ; depth: 3.51 - 4.5m [0.15] |
| CO-R10.S03-ES-SD-190 | Install RC Footing Works for Manholes of Storm Drainage Network-[Road 10]-[SW-3] | 2025-09-03 → 2025-11-05 A (+63d) | 2025-09-03 → 2025-11-13 A (+71d) | 0% → 100% | 75d → none |  | resources Cons. Carpenter [91.19 h]; Steel Fixer [91.19 h]; MH ; depth: 0.0m - 1.5m [0.07]; MH ; depth: 1.51m - 2.5m [0.2]; MH ; depth: 0.0m - 1.5m [0.05]; MH ; depth: 0.0m - 1.5m [0.03]; MH ; depth: 1.51m - 2.5m [0.07]; MH ; depth: 2.51 - 3.5m [0.1]; MH ; depth: 3.51 - 4.5m [0.05] → Cons. Carpenter [80 h]; Steel Fixer [80 h]; MH ; depth: 0.0m - 1.5m [0.07]; MH ; depth: 1.51m - 2.5m [0.2]; MH ; depth: 0.0m - 1.5m [0.05]; MH ; depth: 0.0m - 1.5m [0.03]; MH ; depth: 1.51m - 2.5m [0.07]; MH ; depth: 2.51 - 3.5m [0.1]; MH ; depth: 3.51 - 4.5m [0.05] |
| CO-R10.S03-ES-SD-200 | Install RC Wall Rings & Slab Works for Manholes of Storm Drainage Network-[Road 10]-[SW-3] | 2025-09-04 → 2025-11-11 A (+68d) | 2025-09-08 → 2025-11-22 A (+75d) | 0% → 100% | 75d → none |  | resources Cons. Carpenter [145.91 h]; Steel Fixer [145.91 h]; MH ; depth: 0.0m - 1.5m [1]; MH ; depth: 1.51m - 2.5m [3.01]; MH ; depth: 0.0m - 1.5m [0.45]; MH ; depth: 0.0m - 1.5m [0.23]; MH ; depth: 1.51m - 2.5m [1]; MH ; depth: 2.51 - 3.5m [1]; MH ; depth: 3.51 - 4.5m [0.45] → Cons. Carpenter [320 h]; Steel Fixer [320 h]; MH ; depth: 0.0m - 1.5m [0.68]; MH ; depth: 1.51m - 2.5m [1.8]; MH ; depth: 0.0m - 1.5m [0.45]; MH ; depth: 0.0m - 1.5m [0.23]; MH ; depth: 1.51m - 2.5m [0.68]; MH ; depth: 2.51 - 3.5m [0.9]; MH ; depth: 3.51 - 4.5m [0.45] |
| CO-R10.S03-ES-SD-220 | Backfilling Works for Manholes of Storm Drainage Network-[Road 10]-[SW-3] | 2025-09-10 → 2025-11-16 A (+67d) | 2025-09-17 → 2025-11-24 A (+68d) | 0% → 100% | 75d → none | CO-R10.S03-ES-SD-210 → CO-R10.S03-ES-SD-200 | resources Labor/Helper [319.17 h]; Skilled Labor/Surveyor [159.58 h]; Excavator [280 h]; MH ; depth: 0.0m - 1.5m [0.3]; MH ; depth: 1.51m - 2.5m [1]; MH ; depth: 0.0m - 1.5m [0.2]; MH ; depth: 0.0m - 1.5m [0.1]; MH ; depth: 1.51m - 2.5m [0.3]; MH ; depth: 2.51 - 3.5m [0.4]; MH ; depth: 3.51 - 4.5m [0.2] → Labor/Helper [280 h]; Skilled Labor/Surveyor [140 h]; Excavator [280 h]; MH ; depth: 0.0m - 1.5m [0.3]; MH ; depth: 1.51m - 2.5m [0.8]; MH ; depth: 0.0m - 1.5m [0.2]; MH ; depth: 0.0m - 1.5m [0.1]; MH ; depth: 1.51m - 2.5m [0.3]; MH ; depth: 2.51 - 3.5m [0.4]; MH ; depth: 3.51 - 4.5m [0.2] |
| CO-R10.S03-ES-SD-210 | Testing Works for Manholes of Storm Drainage Network-[Road 10]-[SW-3] | 2025-09-09 → 2026-09-15 A (+371d) | 2025-09-09 → 2026-10-06 (+392d) | 0% → 90% | 75d → -56d | CO-R10.S03-ES-SD-200 → CO-R10.S03-ES-SD-200, CO-R10.S03-ES-SD-220 | resources Labor/Helper [62.79 h]; Plumber [45.6 h]; MH ; depth: 0.0m - 1.5m [0.15]; MH ; depth: 1.51m - 2.5m [0.4]; MH ; depth: 0.0m - 1.5m [0.1]; MH ; depth: 0.0m - 1.5m [0.05]; MH ; depth: 1.51m - 2.5m [0.15]; MH ; depth: 2.51 - 3.5m [0.2]; MH ; depth: 3.51 - 4.5m [0.1] → Labor/Helper [40 h]; Plumber [40 h]; MH ; depth: 0.0m - 1.5m [0.15]; MH ; depth: 1.51m - 2.5m [0.4]; MH ; depth: 0.0m - 1.5m [0.1]; MH ; depth: 0.0m - 1.5m [0.05]; MH ; depth: 1.51m - 2.5m [0.15]; MH ; depth: 2.51 - 3.5m [0.2]; MH ; depth: 3.51 - 4.5m [0.1] |
| CB | **Catch Basin Sections** | 2025-09-18 → 2025-08-20 (-29d) | 2025-10-23 → 2026-10-17 (+359d) |  |  |  |  |
| CO-R10.S03-ES-SD-140 | Trench Excavation and Bedding Works for Catch Basins of Storm Drainage Network-[Road 10]-[SW-3] | 2025-09-18 → 2025-08-20 A (-29d) | 2025-09-25 → 2025-08-25 A (-31d) | 0% → 100% | 75d → none | CO-R10.S03-ES-EW-110, ENG-SH-SD-CB-A-110, ENG-MS-SD-CB-A-110, CO-R10.S03-ES-SD-220, CO-R15.S10-SD-140 → CO-R10.S03-ES-EW-110, ENG-SH-SD-CB-A-110, ENG-MS-SD-CB-A-110, CO-R15.S10-SD-140 | resources Skilled Labor/Surveyor [5.7 h]; Foreman [5.7 h]; Excavator [48 h]; Pipe with diameter 300mm ; depth: 0 - 1.5m [120.38]; Pipe with diameter 400mm ; depth: 0 - 1.5m [7.02] → Skilled Labor/Surveyor [5 h]; Foreman [5 h]; Excavator [48 h]; Pipe with diameter 300mm ; depth: 0 - 1.5m [84.55]; Pipe with diameter 400mm ; depth: 0 - 1.5m [5.16] |
| CO-R10.S03-ES-SD-150 | Installation and Pipes Laying Connection Works for Catch Basins of Storm Drainage Network-[Road 10]-[SW-3] | 2025-09-27 → 2025-08-26 A (-32d) | 2025-10-04 → 2025-08-28 A (-37d) | 0% → 100% | 75d → none |  | resources Labor/Helper [255.34 h]; Skilled Labor/Surveyor [13.68 h]; Foreman [13.68 h]; Excavator [112 h]; Pipe with diameter 300mm ; depth: 0 - 1.5m [360.12]; Pipe with diameter 400mm ; depth: 0 - 1.5m [21.07] → Labor/Helper [224 h]; Skilled Labor/Surveyor [12 h]; Foreman [12 h]; Excavator [112 h]; Pipe with diameter 300mm ; depth: 0 - 1.5m [253.63]; Pipe with diameter 400mm ; depth: 0 - 1.5m [15.47] |
| CO-R10.S03-ES-SD-170 | Trench Backfilling and Compaction Works for Catch Basins of Storm Drainage Network-[Road 10]-[SW-3] | 2025-10-16 → 2025-08-30 A (-47d) | 2025-10-23 → 2025-09-02 A (-51d) | 0% → 100% | 75d → none | CO-R10.S03-ES-SD-160 → CO-R10.S03-ES-SD-150 | resources Skilled Labor/Surveyor [6.84 h]; Foreman [6.84 h]; Excavator [56 h]; Pipe with diameter 300mm ; depth: 0 - 1.5m [160.5]; Pipe with diameter 400mm ; depth: 0 - 1.5m [10.03] → Skilled Labor/Surveyor [6 h]; Foreman [6 h]; Excavator [56 h]; Pipe with diameter 300mm ; depth: 0 - 1.5m [112.73]; Pipe with diameter 400mm ; depth: 0 - 1.5m [6.87] |
| CO-R10.S03-ES-SD-160 | Testing Works for Catch Basins of Storm Drainage Network-[Road 10]-[SW-3] | 2025-10-05 → 2026-09-15 A (+345d) | 2025-10-15 → 2026-10-17 (+367d) | 0% → 90% | 75d → -37d |  | resources Labor/Helper [182.38 h]; Skilled Labor/Surveyor [9.12 h]; Foreman [9.12 h]; Plumber [91.19 h]; Excavator [80 h]; Pipe with diameter 300mm ; depth: 0 - 1.5m [79.25]; Pipe with diameter 400mm ; depth: 0 - 1.5m [4.01] → Labor/Helper [160 h]; Skilled Labor/Surveyor [8 h]; Foreman [8 h]; Plumber [80 h]; Excavator [80 h]; Pipe with diameter 300mm ; depth: 0 - 1.5m [56.36]; Pipe with diameter 400mm ; depth: 0 - 1.5m [3.44] |
| PW | **Potable Water Network** | 2025-10-08 → 2025-08-05 (-64d) | 2025-11-04 → 2026-11-23 (+384d) |  |  |  |  |
| ML | **Main Line Sections** | 2025-10-08 → 2025-08-05 (-64d) | 2025-11-04 → 2025-08-16 (-80d) |  |  |  |  |
| CO-R10.S03-ES-PW-100 | Trench Excavation and Bedding Works for Main Lines of Potable Water Network-[Road 10]-[SW-3] | 2025-10-08 → 2025-08-05 A (-64d) | 2025-10-14 → 2025-08-07 A (-68d) | 0% → 100% | 65d → none | ENG-SH-PW-ML-A-110, CO-R10.S03-ES-EW-110, CO-R10.S03-ES-EW-100, ENG-MS-PW-ML-A-110, ENG-SH-PW-FH-A-110, CO-R10.S03-ES-SD-130 → ENG-SH-PW-ML-A-110, CO-R10.S03-ES-EW-110, CO-R10.S03-ES-EW-100, ENG-MS-PW-ML-A-110, ENG-SH-PW-FH-A-110 | resources Skilled Labor/Surveyor [204.16 h]; Foreman [204.16 h]; Excavator [48 h]; Pipe with diameter 200mm; in depth 0.0m - 1.5m [362.13] → Skilled Labor/Surveyor [5 h]; Foreman [5 h]; Excavator [48 h]; Pipe with diameter 200mm; in depth 0.0m - 1.5m [255.13] |
| CO-R10.S03-ES-PW-110 | Pipes Laying and accessories for Main Lines of Potable Water Network-[Road 10]-[SW-3] | 2025-10-15 → 2025-08-09 A (-67d) | 2025-10-21 → 2025-08-12 A (-70d) | 0% → 100% | 65d → none | CO-R10.S03-ES-PW-100, PRO-R10-PW-DL-110 FF+3d → CO-R10.S03-ES-PW-100, PRO-R10-PW-DL-100 | resources Labor/Helper [551.5 h]; Skilled Labor/Surveyor [28.72 h]; Foreman [28.72 h]; Plumber [275.75 h]; Excavator [96 h]; Pipe with diameter 200mm; in depth 0.0m - 1.5m [905.83] → Labor/Helper [192 h]; Skilled Labor/Surveyor [10 h]; Foreman [10 h]; Plumber [96 h]; Excavator [96 h]; Pipe with diameter 200mm; in depth 0.0m - 1.5m [637.83] |
| CO-R10.S03-ES-PW-130 | Trench Backfilling and Compaction Works for Main Lines of Potable Water Network-[Road 10]-[SW-3] | 2025-10-29 → 2025-08-13 A (-77d) | 2025-11-04 → 2025-08-16 A (-80d) | 0% → 100% | 65d → none | CO-R10.S03-ES-PW-110 SS+3d, CO-R10.S03-ES-PW-110 FF+3d, CO-R10.S03-ES-PW-220 FF, CO-R10.S03-ES-PW-160 FF → CO-R10.S03-ES-PW-110 SS+3d, CO-R10.S03-ES-PW-110 FF+3d | resources Skilled Labor/Surveyor [113.42 h]; Foreman [113.42 h]; Eq. Operator [113.42 h]; Loader [48 h]; Compactor [48 h]; Water Tank [12 h]; Pipe with diameter 200mm; in depth 0.0m - 1.5m [362.13] → Skilled Labor/Surveyor [5 h]; Foreman [5 h]; Eq. Operator [5 h]; Loader [48 h]; Compactor [48 h]; Water Tank [12 h]; Pipe with diameter 200mm; in depth 0.0m - 1.5m [255.13] |
| VC | **Valve Chamber** | 2025-10-15 → 2026-11-05 (+386d) | 2025-11-02 → 2026-11-23 (+386d) |  |  |  |  |
| CO-R10.S03-ES-PW-170 | Excavation Works for Main Line Valves and Valve Chambers of Potable Water Network-[Road 10]-[SW-3] | 2025-10-15 → 2026-11-05 (+386d) | 2025-10-15 → 2026-11-05 (+386d) |  | 67d → -88d | CO-R10.S03-ES-PW-100 → CO-R10.S03-ES-PW-100, PRO-R17-PW-DL-110 | resources Labor/Helper [18.24 h]; Skilled Labor/Surveyor [9.12 h]; Excavator [16 h]; Air valve chamber; on 200 mm dia pipeline Depth 1.5 - 3 m [0.15] → Labor/Helper [16 h]; Skilled Labor/Surveyor [8 h]; Excavator [16 h]; Air valve chamber; on 200 mm dia pipeline Depth 1.5 - 3 m [0.15] |
| CO-R10.S03-ES-PW-180 | RC Footing Works for Main Line Valves and Valve Chambers of Potable Water Network-[Road 10]-[SW-3] | 2025-10-16 → 2026-11-07 (+387d) | 2025-10-19 → 2026-11-09 (+386d) |  | 67d → -88d |  | resources Cons. Carpenter [54.71 h]; Steel Fixer [54.71 h]; Wash out chamber; on 200 mm dia pipeline Depth 1.5 - 3m [0.15]; Air valve chamber; on 200 mm dia pipeline Depth 1.5 - 3 m [0.23] → Cons. Carpenter [48 h]; Steel Fixer [48 h]; Wash out chamber; on 200 mm dia pipeline Depth 1.5 - 3m [0.15]; Air valve chamber; on 200 mm dia pipeline Depth 1.5 - 3 m [0.23] |
| CO-R10.S03-ES-PW-190 | RC Wall Works for Main Line Valves and Valve Chambers of Potable Water Network-[Road 10]-[SW-3] | 2025-10-20 → 2026-11-10 (+386d) | 2025-10-26 → 2026-11-16 (+386d) |  | 67d → -88d |  | resources Cons. Carpenter [109.43 h]; Steel Fixer [109.43 h]; Wash out chamber; on 200 mm dia pipeline Depth 1.5 - 3m [0.35]; Air valve chamber; on 200 mm dia pipeline Depth 1.5 - 3 m [1] → Cons. Carpenter [96 h]; Steel Fixer [96 h]; Wash out chamber; on 200 mm dia pipeline Depth 1.5 - 3m [0.35]; Air valve chamber; on 200 mm dia pipeline Depth 1.5 - 3 m [0.53] |
| CO-R10.S03-ES-PW-200 | RC Slab Works for Main Line Valves and Valve Chambers of Potable Water Network-[Road 10]-[SW-3] | 2025-10-27 → 2026-11-17 (+386d) | 2025-10-28 → 2026-11-18 (+386d) |  | 67d → -88d |  | resources Cons. Carpenter [72.95 h]; Steel Fixer [72.95 h]; Wash out chamber; on 200 mm dia pipeline Depth 1.5 - 3m [0.2]; Air valve chamber; on 200 mm dia pipeline Depth 1.5 - 3 m [0.3] → Cons. Carpenter [64 h]; Steel Fixer [64 h]; Wash out chamber; on 200 mm dia pipeline Depth 1.5 - 3m [0.2]; Air valve chamber; on 200 mm dia pipeline Depth 1.5 - 3 m [0.3] |
| CO-R10.S03-ES-PW-210 | Insulation Works for Main Line Valves and Valve Chambers of Potable Water Network-[Road 10]-[SW-3] | 2025-10-29 → 2026-11-19 (+386d) | 2025-10-29 → 2026-11-19 (+386d) |  | 67d → -88d |  | resources Labor/Helper [18.24 h]; Plumber [18.24 h]; Gate valves dia(200)mm on pipes with dia (200) mm. [16.05]; Wash out valve with dia (100)mm on pipes with dia (200) mm [1]; Air valves with dia (50mm) mm on pipes with dia(200)mm. [3.01] → Labor/Helper [16 h]; Plumber [16 h]; Gate valves dia(200)mm on pipes with dia (200) mm. [11]; Wash out valve with dia (100)mm on pipes with dia (200) mm [0.5]; Air valves with dia (50mm) mm on pipes with dia(200)mm. [1.5] |
| CO-R10.S03-ES-PW-220 | Backfilling Works for Main Line Valves and Valve Chambers of Potable Water Network-[Road 10]-[SW-3] | 2025-10-30 → 2026-11-21 (+387d) | 2025-11-02 → 2026-11-23 (+386d) |  | 67d → -88d |  | resources Labor/Helper [27.36 h]; Skilled Labor/Surveyor [13.68 h]; Excavator [24 h]; Wash out chamber; on 200 mm dia pipeline Depth 1.5 - 3m [0.2]; Air valve chamber; on 200 mm dia pipeline Depth 1.5 - 3 m [0.3] → Labor/Helper [24 h]; Skilled Labor/Surveyor [12 h]; Excavator [24 h]; Wash out chamber; on 200 mm dia pipeline Depth 1.5 - 3m [0.2]; Air valve chamber; on 200 mm dia pipeline Depth 1.5 - 3 m [0.3] |
| FH | **Fire Hydrant** | 2025-10-19 → 2026-10-06 (+352d) | 2025-11-04 → 2026-10-22 (+352d) |  |  |  |  |
| CO-R10.S03-ES-PW-140 | Excavation Works for Fire Hydrants of Potable Water Network-[Road 10]-[SW-3] | 2025-10-19 → 2026-10-06 (+352d) | 2025-10-25 → 2026-10-12 (+352d) |  | 65d → -82d |  | resources Skilled Labor/Surveyor [5.61 h]; Foreman [5.61 h]; Excavator [48 h]; 3-outlet fire hydrant (2 x 2.5 inch and 1 x 4 inch) in the form of a separate dry vacuum cylinder [1] → Skilled Labor/Surveyor [5 h]; Foreman [5 h]; Excavator [48 h]; 3-outlet fire hydrant (2 x 2.5 inch and 1 x 4 inch) in the form of a separate dry vacuum cylinder [1.12] |
| CO-R10.S03-ES-PW-150 | Installation Works for Fire Hydrant of Potable Water Network-[Road 10]-[SW-3] | 2025-10-26 → 2026-10-13 (+352d) | 2025-11-01 → 2026-10-19 (+352d) |  | 65d → -82d |  | resources Labor/Helper [107.67 h]; Skilled Labor/Surveyor [5.61 h]; Foreman [5.61 h]; Plumber [107.67 h]; 3-outlet fire hydrant (2 x 2.5 inch and 1 x 4 inch) in the form of a separate dry vacuum cylinder [7.02] → Labor/Helper [96 h]; Skilled Labor/Surveyor [5 h]; Foreman [5 h]; Plumber [96 h]; 3-outlet fire hydrant (2 x 2.5 inch and 1 x 4 inch) in the form of a separate dry vacuum cylinder [4.88] |
| CO-R10.S03-ES-PW-160 | Trench Backfilling and Compaction Works for Fire Hydrants of Potable Water Network-[Road 10]-[SW-3] | 2025-10-29 → 2026-10-17 (+353d) | 2025-11-04 → 2026-10-22 (+352d) |  | 65d → -82d |  | resources Skilled Labor/Surveyor [5.61 h]; Foreman [5.61 h]; Excavator [48 h]; 3-outlet fire hydrant (2 x 2.5 inch and 1 x 4 inch) in the form of a separate dry vacuum cylinder [3.01] → Skilled Labor/Surveyor [5 h]; Foreman [5 h]; Excavator [48 h]; 3-outlet fire hydrant (2 x 2.5 inch and 1 x 4 inch) in the form of a separate dry vacuum cylinder [1.5] |
| IR | **Irrigation Network** | 2025-11-05 → 2025-07-20 (-108d) | 2025-12-01 → 2025-10-06 (-56d) |  |  |  |  |
| ML | **Main Line Pipes** | 2025-11-05 → 2025-07-20 (-108d) | 2025-12-01 → 2025-10-06 (-56d) |  |  |  |  |
| CO-R10.S03-ES-IR-100 | Trench Excavation and Bedding Works for Main Lines of Irrigation Network-[Road 10]-[SW-3] | 2025-11-05 → 2025-07-20 A (-108d) | 2025-11-12 → 2025-07-24 A (-111d) | 0% → 100% | 65d → none | ENG-SH-IR-ML-A-110, CO-R10.S03-ES-EW-110, CO-R10.S03-ES-PW-130, CO-R10.S03-ES-SD-170, ENG-MS-IR-ML-A-110 → ENG-SH-IR-ML-A-110, CO-R10.S03-ES-EW-110, ENG-MS-IR-ML-A-110 | resources Skilled Labor/Surveyor [88.47 h]; Foreman [88.47 h]; Excavator [56 h]; 355 mm pipe; depth 1.5m - 3.0m [141.44]; 400 mm pipe; depth 1.5m - 3.0m [141.44]; 500. mm pipe; depth 1.5m - 3.0m [397.24] → Skilled Labor/Surveyor [6 h]; Foreman [6 h]; Excavator [56 h]; 355 mm pipe; depth 1.5m - 3.0m [100]; 400 mm pipe; depth 1.5m - 3.0m [100]; 500. mm pipe; depth 1.5m - 3.0m [280] |
| CO-R10.S03-ES-IR-110 | Pipes Laying Works for Main Lines of Irrigation Network-[Road 10]-[SW-3] | 2025-11-13 → 2025-07-26 A (-110d) | 2025-11-20 → 2025-07-31 A (-112d) | 0% → 100% | 65d → none |  | resources Labor/Helper [211.72 h]; Skilled Labor/Surveyor [11.34 h]; Foreman [11.34 h]; Plumber [105.86 h]; Excavator [56 h]; 355 mm pipe; depth 1.5m - 3.0m [425.33]; 400 mm pipe; depth 1.5m - 3.0m [425.33] → Labor/Helper [112 h]; Skilled Labor/Surveyor [6 h]; Foreman [6 h]; Plumber [56 h]; Excavator [56 h]; 355 mm pipe; depth 1.5m - 3.0m [300]; 400 mm pipe; depth 1.5m - 3.0m [300] |
| CO-R10.S03-ES-IR-130 | Trench Backfilling and Compaction Works for Main Lines of Irrigation Network-[Road 10]-[SW-3] | 2025-11-24 → 2025-08-20 A (-96d) | 2025-12-01 → 2025-08-21 A (-102d) | 0% → 100% | 65d → none | CO-R10.S03-ES-IR-120, CO-R10.S03-ES-IR-110 → CO-R10.S03-ES-IR-110 | resources Skilled Labor/Surveyor [68.05 h]; Foreman [68.05 h]; Excavator [56 h]; 355 mm pipe; depth 1.5m - 3.0m [71.22]; 400 mm pipe; depth 1.5m - 3.0m [71.22] → Skilled Labor/Surveyor [6 h]; Foreman [6 h]; Excavator [56 h]; 355 mm pipe; depth 1.5m - 3.0m [50]; 400 mm pipe; depth 1.5m - 3.0m [50] |
| CO-R10.S03-ES-IR-120 | Installation Works for Main Line Valves of Irrigation Network-[Road 10]-[SW-3] | 2025-11-22 → 2025-10-01 A (-52d) | 2025-11-23 → 2025-10-06 A (-48d) | 0% → 100% | 65d → none |  | resources Labor/Helper [182.76 h]; Skilled Labor/Surveyor [11.42 h]; Foreman [11.42 h]; Plumber [182.76 h]; Butterfly valves with dia (355)mm on pipes with dia (355)mm. [1]; Butterfly valves with dia (400)mm on pipes with dia (400)mm. [1]; Butterfly valves with dia (500)mm on pipes with dia (500)mm. [4.01]; Wash out valve with dia (100)mm on pipes with dia (355) mm [1]; Wash out valve with dia (150)mm on pipes with dia (400) mm [1]; Wash out valve with dia (150)mm on pipes with dia (500) mm [4.01]; Air valves with dia (65mm) mm on pipes with dia(280)mm. [1]; Air valves with dia (65mm) mm on pipes with dia(400)mm. [1]; Air valves with dia (65mm) mm on pipes with dia(500)mm. [4.01]; Wash out chamber; on 355 mm dia pipeline Depth 1.5 - 3m [1]; Wash out chamber; on 400 mm dia pipeline Depth 1.5 - 3m [1]; Wash out chamber; on 500 mm dia pipeline Depth 1.5 - 3m [4.01] → Labor/Helper [64 h]; Skilled Labor/Surveyor [4 h]; Foreman [4 h]; Plumber [64 h]; Butterfly valves with dia (355)mm on pipes with dia (355)mm. [1]; Butterfly valves with dia (400)mm on pipes with dia (400)mm. [1]; Butterfly valves with dia (500)mm on pipes with dia (500)mm. [3]; Wash out valve with dia (100)mm on pipes with dia (355) mm [1]; Wash out valve with dia (150)mm on pipes with dia (400) mm [1]; Wash out valve with dia (150)mm on pipes with dia (500) mm [3]; Air valves with dia (65mm) mm on pipes with dia(280)mm. [1]; Air valves with dia (65mm) mm on pipes with dia(400)mm. [1]; Air valves with dia (65mm) mm on pipes with dia(500)mm. [3]; Wash out chamber; on 355 mm dia pipeline Depth 1.5 - 3m [1]; Wash out chamber; on 400 mm dia pipeline Depth 1.5 - 3m [1]; Wash out chamber; on 500 mm dia pipeline Depth 1.5 - 3m [3] |
| SL | **Street Lighting Network** | 2025-12-02 → 2026-10-06 (+308d) | 2026-06-29 → 2027-02-23 (+239d) |  |  |  |  |
| LP | **Lighting Poles Works** | 2025-12-02 → 2026-10-06 (+308d) | 2026-02-16 → 2026-11-12 (+269d) |  |  |  |  |
| CO-R10.S03-ES-SL-100 | Foundation Excavation Works for Lighting Poles of Street Lighting Network-[Road 10]-[SW-3] | 2025-12-02 → 2026-10-06 (+308d) | 2025-12-15 → 2026-10-19 (+308d) |  | 65d → -191d |  | resources Labor/Helper [215.34 h]; Skilled Labor/Surveyor [107.67 h]; Excavator [192 h]; Lighting poles with one arm, including the power distribution box, screws, cables, 12 meters in height. [1] → Labor/Helper [192 h]; Skilled Labor/Surveyor [96 h]; Excavator [192 h]; Lighting poles with one arm, including the power distribution box, screws, cables, 12 meters in height. [1.2] |
| CO-R10.S03-ES-SL-110 | Installation Works for Lighting Poles Foundation of Street Lighting Network-[Road 10]-[SW-3] | 2025-12-08 → 2026-10-12 (+308d) | 2025-12-21 → 2026-10-25 (+308d) |  | 65d → -191d |  | resources Labor/Helper [244.38 h]; Skilled Labor/Surveyor [22.43 h]; Foreman [22.43 h]; Eq. Operator [22.43 h]; Loader [48 h]; Reinforced concrete foundation, for 12m high lighting columns With Drawpits [34.11] → Labor/Helper [384 h]; Skilled Labor/Surveyor [20 h]; Foreman [20 h]; Eq. Operator [20 h]; Loader [48 h]; Reinforced concrete foundation, for 12m high lighting columns With Drawpits [24] |
| CO-R10.S03-ES-SL-120 | Installation Works for Lighting Poles of Street Lighting Network-[Road 10]-[SW-3] | 2025-12-14 → 2026-10-18 (+308d) | 2026-01-03 → 2026-11-07 (+308d) |  | 65d → -191d |  | resources Labor/Helper [161.51 h]; Electrician [89.28 h]; Lighting poles with one arm, including the power distribution box, screws, cables, 12 meters in height. [18.06] → Labor/Helper [144 h]; Electrician [144 h]; Lighting poles with one arm, including the power distribution box, screws, cables, 12 meters in height. [13.2] |
| CO-R10.S03-ES-SL-130 | Installation Works for Lighting Fixtures With Drop Wire of Street Lighting Network-[Road 10]-[SW-3] | 2026-01-26 → 2026-10-24 (+271d) | 2026-02-16 → 2026-11-12 (+269d) |  | 78.5d → -145d |  | resources Labor/Helper [161.51 h]; Electrician [148.8 h]; Manlift [144 h]; Street Lighting( LED) Luminaire,(Type C) complete with control gear and lamp, ?.17000 Lumen [34.11] → Labor/Helper [144 h]; Electrician [144 h]; Manlift [144 h]; Street Lighting( LED) Luminaire,(Type C) complete with control gear and lamp, ?.17000 Lumen [24] |
| CO-R10.S03-ES-SL-210 | Backfilling Works for Lighting Poles of Street Lighting Network-[Road 10]-[SW-3] | 2026-01-27 → 2026-10-25 (+271d) | 2026-02-10 → 2026-11-07 (+270d) |  | 42d → -181.5d |  | resources Labor/Helper [215.34 h]; Skilled Labor/Surveyor [69.77 h]; Excavator [192 h]; Lighting poles with one arm, including the power distribution box, screws, cables, 12 meters in height. [7.02] → Labor/Helper [192 h]; Skilled Labor/Surveyor [96 h]; Excavator [192 h]; Lighting poles with one arm, including the power distribution box, screws, cables, 12 meters in height. [4.8] |
| CO-R10.S03-ES-SL-200 | Testing Works for Lighting Poles of Street Lighting Network-[Road 10]-[SW-3] | 2026-02-10 → 2026-11-08 (+271d) | 2026-02-16 → 2026-11-12 (+269d) |  | 78.5d → -145d |  | resources Labor/Helper [26.78 h]; Electrician [26.78 h]; Lighting poles with one arm, including the power distribution box, screws, cables, 12 meters in height. [7.02] → Labor/Helper [160 h]; Electrician [160 h]; Lighting poles with one arm, including the power distribution box, screws, cables, 12 meters in height. [4.8] |
| CW | **Cabling Works** | 2026-01-04 → 2026-11-08 (+308d) | 2026-02-07 → 2026-12-12 (+308d) |  |  |  |  |
| CO-R10.S03-ES-SL-140 | Trench Excavation and Bedding Works for Street Lighting Network-[Road 10]-[SW-3] | 2026-01-04 → 2026-11-08 (+308d) | 2026-01-14 → 2026-11-18 (+308d) |  | 65d → -191d |  | resources Labor/Helper [89.73 h]; Skilled Labor/Surveyor [44.86 h]; Excavator [80 h] → Labor/Helper [80 h]; Skilled Labor/Surveyor [40 h]; Excavator [80 h] |
| CO-R10.S03-ES-SL-150 | Cable Laying Works for Street Lighting Network-[Road 10]-[SW-3] | 2026-01-15 → 2026-11-19 (+308d) | 2026-01-26 → 2026-11-30 (+308d) |  | 65d → -191d |  | resources Labor/Helper [89.73 h]; Electrician [89.28 h]; Low Current Technician [89.28 h]; Supply, installation , test and operation of cables, Copper, (4Cx25mmï¿½,Cu/XLPE/SWA/PVC +1x16mmï¿½ PVC/PVC) [1331.16] → Labor/Helper [80 h]; Electrician [80 h]; Low Current Technician [80 h]; Supply, installation , test and operation of cables, Copper, (4Cx25mm²,Cu/XLPE/SWA/PVC +1x16mm² PVC/PVC) [938.44] |
| CO-R10.S03-ES-SL-160 | Trench Backfilling and Compaction Works for Street Lighting Network-[Road 10]-[SW-3] | 2026-01-27 → 2026-12-01 (+308d) | 2026-02-07 → 2026-12-12 (+308d) |  | 65d → -191d |  | resources Skilled Labor/Surveyor [8.97 h]; Foreman [8.97 h]; Excavator [80 h]; Water Tank [20 h]; Supply, installation , test and operation of cables, Copper, (4Cx25mmï¿½,Cu/XLPE/SWA/PVC +1x16mmï¿½ PVC/PVC) [102.32] → Skilled Labor/Surveyor [8 h]; Foreman [8 h]; Excavator [80 h]; Water Tank [20 h]; Supply, installation , test and operation of cables, Copper, (4Cx25mm²,Cu/XLPE/SWA/PVC +1x16mm² PVC/PVC) [72.19] |
| DPB | **Distrubution Panel Boards** | 2026-06-06 → 2027-01-30 (+238d) | 2026-06-29 → 2027-02-23 (+239d) |  |  |  |  |
| CO-R10.S03-ES-SL-170 | Foundation Excavation Works For Panel Boards of Street Lighting Network-[Road 10]-[SW-3] | 2026-06-06 → 2027-01-30 (+238d) | 2026-06-18 → 2027-02-11 (+238d) |  | 16d → -187d |  | resources Labor/Helper [107.67 h]; Skilled Labor/Surveyor [53.84 h]; Excavator [96 h]; Reinforced concrete base With fence for Distribution substation in accordance with SEC Specifications [3.01] → Labor/Helper [96 h]; Skilled Labor/Surveyor [48 h]; Excavator [96 h]; Reinforced concrete base With fence for Distribution substation in accordance with SEC Specifications [1.5] |
| CO-R10.S03-ES-SL-180 | Installation Works for Panel Board Concrete Foundations of Street Lighting Network-[Road 10]-[SW-3] | 2026-06-13 → 2027-02-06 (+238d) | 2026-06-25 → 2027-02-18 (+238d) |  | 16d → -187d |  | resources Skilled Labor/Surveyor [11.22 h]; Foreman [11.22 h]; Excavator [96 h]; Water Tank [24 h]; Package Substation 33000/400V, 500kVA with RMU [0.45] → Skilled Labor/Surveyor [10 h]; Foreman [10 h]; Excavator [96 h]; Water Tank [24 h]; Package Substation 33000/400V, 500kVA with RMU [0.45] |
| CO-R10.S03-ES-SL-220 | A wall of concrete blocks to install the KWH meter of Street Lighting Network-[Road 10]-[SW-3] | 2026-06-13 → 2027-02-06 (+238d) | 2026-06-25 → 2027-02-18 (+238d) |  | 19d → -184d |  | resources Block Mason [107.67 h]; Road crossing ducts, 4 way (4 x 100mm PVC) [76.24]; Drawpit with medium duty steel cover, size 600x600x1000mm, Type 18 [3.01]; Drawpit with medium duty steel cover, size 900x900x1200mm, Type 4 [7.02]; Street Lighting Feeder pillars , Includes foundation and draw pits [3.01] → Block Mason [96 h]; Road crossing ducts, 4 way (4 x 100mm PVC) [53.63]; Drawpit with medium duty steel cover, size 600x600x1000mm, Type 18 [1.5]; Drawpit with medium duty steel cover, size 900x900x1200mm, Type 4 [5]; Street Lighting Feeder pillars , Includes foundation and draw pits [1.5] |
| CO-R10.S03-ES-SL-190 | Installation Works for Lighting Panel Boards of Street Lighting Network-[Road 10]-[SW-3] | 2026-06-16 → 2027-02-09 (+238d) | 2026-06-29 → 2027-02-23 (+239d) |  | 16d → -187d |  | resources Labor/Helper [107.67 h]; Electrician [89.28 h]; Package Substation 33000/400V, 500kVA with RMU [3.01] → Labor/Helper [96 h]; Electrician [96 h]; Package Substation 33000/400V, 500kVA with RMU [1.65] |
| TE | **Telecom Network** | 2026-01-27 → 2026-12-01 (+308d) | 2026-02-28 → 2027-01-02 (+308d) |  |  |  |  |
| PD | **Ducts Works** | 2026-01-27 → 2026-12-01 (+308d) | 2026-02-28 → 2027-01-02 (+308d) |  |  |  |  |
| CO-R10.S03-ES-TE-100 | Trench Excavation and Bedding Works for Ducts of Telecom Network-[Road 10]-[SW-3] | 2026-01-27 → 2026-12-01 (+308d) | 2026-02-03 → 2026-12-08 (+308d) |  | 65d → -191d |  | resources Skilled Labor/Surveyor [6.73 h]; Foreman [6.73 h]; Excavator [56 h]; 6-way ducts, 50mm dia. HDPE [64.2]; Road crossing ducts (6-way) [6.02] → Skilled Labor/Surveyor [6 h]; Foreman [6 h]; Excavator [56 h]; 6-way ducts, 50mm dia. HDPE [45]; Road crossing ducts (6-way) [4] |
| CO-R10.S03-ES-TE-110 | Pipes Laying Works for Ducts of Telecom Network-[Road 10]-[SW-3] | 2026-02-04 → 2026-12-09 (+308d) | 2026-02-11 → 2026-12-16 (+308d) |  | 92d → -148d |  | resources Labor/Helper [125.62 h]; Skilled Labor/Surveyor [6.73 h]; Foreman [6.73 h]; Plumber [62.81 h]; Excavator [56 h]; JCB [28 h]; Truck [56 h]; 6-way ducts, 50mm dia. HDPE [380.19]; Road crossing ducts (6-way) [33.1] → Labor/Helper [112 h]; Skilled Labor/Surveyor [6 h]; Foreman [6 h]; Plumber [56 h]; Excavator [56 h]; JCB [28 h]; Truck [56 h]; 6-way ducts, 50mm dia. HDPE [268]; Road crossing ducts (6-way) [23] |
| CO-R10.S03-ES-TE-120 | Pouring Plain Concrete Above Ducts of Telecom Network-[Road 10]-[SW-3] | 2026-02-12 → 2026-12-17 (+308d) | 2026-02-19 → 2026-12-24 (+308d) |  | 92d → -148d |  | resources Skilled Labor/Surveyor [6.73 h]; Foreman [6.73 h]; Cons. Carpenter [125.62 h]; Block Mason [62.81 h]; 6-way ducts, 50mm dia. HDPE [64.2]; Road crossing ducts (6-way) [6.02] → Skilled Labor/Surveyor [6 h]; Foreman [6 h]; Cons. Carpenter [112 h]; Block Mason [56 h]; 6-way ducts, 50mm dia. HDPE [45]; Road crossing ducts (6-way) [4] |
| CO-R10.S03-ES-TE-130 | Trench Backfilling and Compaction Works for Ducts of Telecom Network-[Road 10]-[SW-3] | 2026-02-21 → 2026-12-26 (+308d) | 2026-02-28 → 2027-01-02 (+308d) |  | 92d → -148d |  | resources Skilled Labor/Surveyor [6.73 h]; Foreman [6.73 h]; Excavator [56 h]; 6-way ducts, 50mm dia. HDPE [126.39]; Road crossing ducts (6-way) [11.03] → Skilled Labor/Surveyor [6 h]; Foreman [6 h]; Excavator [56 h]; 6-way ducts, 50mm dia. HDPE [89]; Road crossing ducts (6-way) [8] |
| MH | **Manholes Works** | 2026-02-04 → 2026-12-09 (+308d) | 2026-02-28 → 2027-01-02 (+308d) |  |  |  |  |
| CO-R10.S03-ES-TE-140 | Excavation Works for Manholes of Telecom Network-[Road 10]-[SW-3] | 2026-02-04 → 2026-12-09 (+308d) | 2026-02-11 → 2026-12-16 (+308d) |  | 110d → -146d |  | resources Skilled Labor/Surveyor [6.73 h]; Foreman [6.73 h]; Excavator [56 h]; Manhole Type 2 (2000x1000x1000) [1] → Skilled Labor/Surveyor [6 h]; Foreman [6 h]; Excavator [56 h]; Manhole Type 2 (2000x1000x1000) [0.7] |
| CO-R10.S03-ES-TE-150 | Installation Works for Manholes of Telecom Network-[Road 10]-[SW-3] | 2026-02-12 → 2026-12-17 (+308d) | 2026-02-19 → 2026-12-24 (+308d) |  | 112d → -143d |  | resources Skilled Labor/Surveyor [6.73 h]; Foreman [6.73 h]; Excavator [56 h]; Manhole Type 1 (2000x1000x1000) [1]; Manhole Type 2 (2000x1000x1000) [3.01] → Skilled Labor/Surveyor [6 h]; Foreman [6 h]; Excavator [56 h]; Manhole Type 1 (2000x1000x1000) [1]; Manhole Type 2 (2000x1000x1000) [2.1] |
| CO-R10.S03-ES-TE-160 | Backfilling Works for Manholes of Telecom Network-[Road 10]-[SW-3] | 2026-02-21 → 2026-12-26 (+308d) | 2026-02-28 → 2027-01-02 (+308d) |  | 112d → -143d |  | resources Skilled Labor/Surveyor [6.73 h]; Foreman [6.73 h]; Excavator [56 h]; Manhole Type 2 (2000x1000x1000) [1] → Skilled Labor/Surveyor [6 h]; Foreman [6 h]; Excavator [56 h]; Manhole Type 2 (2000x1000x1000) [0.7] |

| ID | Task | Start | Finish | Complete | Total float | Predecessors | Other |
| --- | --- | --- | --- | --- | --- | --- | --- |
| MV | **Medium Voltage Network** | 2026-02-24 → 2026-07-09 (+135d) | 2026-05-19 → 2027-01-25 (+251d) |  |  |  |  |
| CW | **Cabling Works** | 2026-02-24 → 2026-09-09 (+197d) | 2026-03-26 → 2027-01-25 (+305d) |  |  |  |  |
| CO-R10.S03-ES-MV-100 | Trench Excavation and Bedding Works for Medium Voltage Network-[Road 10]-[SW-3] | 2026-02-24 → 2026-09-09 A (+197d) | 2026-03-16 → 2027-01-18 (+308d) | 0% → 80% | 92d → -148d |  | resources Skilled Labor/Surveyor [17.1 h]; Foreman [17.1 h]; Excavator [144 h]; Excavation for Trench size 40cm wide and 80cm deep ( Maximum 1 cable 33kv) [282.88]; Excavation for Trench size 60cm wide and 80cm deep ( for Max two cables 33 kv) [16.05]; Excavation for Trench size 90cm wide and 80cm deep ( Maximum 3 cable 33kv) [72.23]; Excavation for Trench size 120cm wide and 80cm deep ( Maximum 4cable 33kv) [24.08]; Excavation for Trench size 150cm wide and 80cm deep ( Maximum 4cable 33kv) [91.29]; Duct bank for (2) 33 kv cables [10.03]; Duct bank for (4) 33 kv cables [64.2]; Duct bank for (6) 33 kv cables [30.09] → Skilled Labor/Surveyor [15 h]; Foreman [15 h]; Excavator [144 h]; Excavation for Trench size 40cm wide and 80cm deep ( Maximum 1 cable 33kv) [199.34]; Excavation for Trench size 60cm wide and 80cm deep ( for Max two cables 33 kv) [11.34]; Excavation for Trench size 90cm wide and 80cm deep ( Maximum 3 cable 33kv) [50.52]; Excavation for Trench size 120cm wide and 80cm deep ( Maximum 4cable 33kv) [17.19]; Excavation for Trench size 150cm wide and 80cm deep ( Maximum 4cable 33kv) [63.58]; Duct bank for (2) 33 kv cables [6.88]; Duct bank for (4) 33 kv cables [45.37]; Duct bank for (6) 33 kv cables [20.62] |
| CO-R10.S03-ES-MV-110 | Cable Laying Works for Medium Voltage Network-[Road 10]-[SW-3] | 2026-02-28 → 2026-09-13 A (+197d) | 2026-03-19 → 2027-01-21 (+308d) | 0% → 80% | 92d → -148d |  | resources Labor/Helper [328.29 h]; Electrician [328.29 h]; Low Current Technician [328.29 h]; 33kv 3Cx400 mmï¿½ Al XLPE / LLDPE /PVC Cable [1331.16]; 33kv 3Cx400 mmï¿½ Al XLPE /LLDPE/PVC [4.01] → Labor/Helper [288 h]; Electrician [288 h]; Low Current Technician [288 h]; 33kv 3Cx400 mm² Al XLPE / LLDPE /PVC Cable [938.25]; 33kv 3Cx400 mm² Al XLPE /LLDPE/PVC [2.8] |
| CO-R10.S03-ES-MV-120 | Trench Backfilling and Compaction Works for Medium Voltage Network-[Road 10]-[SW-3] | 2026-03-03 → 2026-09-16 A (+197d) | 2026-03-26 → 2027-01-25 (+305d) | 0% → 80% | 92d → -148d |  | resources Skilled Labor/Surveyor [17.1 h]; Foreman [17.1 h]; Excavator [144 h]; Water Tank [36 h]; 33kv 3Cx400 mmï¿½ Al XLPE / LLDPE /PVC Cable [570.78]; 33kv 3Cx400 mmï¿½ Al XLPE /LLDPE/PVC [1] → Skilled Labor/Surveyor [15 h]; Foreman [15 h]; Excavator [144 h]; Water Tank [36 h]; 33kv 3Cx400 mm² Al XLPE / LLDPE /PVC Cable [402.11]; 33kv 3Cx400 mm² Al XLPE /LLDPE/PVC [1.2] |
| SS | **RMU Works** | 2026-03-28 → 2026-07-09 (+103d) | 2026-05-19 → 2026-07-13 (+55d) |  |  |  |  |
| CO-R10.S03-ES-MV-130 | Foundation Excavation Works for RMU of Medium Voltage Network-[Road 10]-[SW-3] | 2026-03-28 → 2026-07-09 A (+103d) | 2026-04-09 → 2026-07-13 A (+95d) | 0% → 100% | 92d → none |  |  |
| CO-R10.S03-ES-MV-150 | Installation Works for RMU Concrete Foundations of Medium Voltage Network-[Road 10]-[SW-3] | 2026-04-11 → 2026-07-09 A (+89d) | 2026-04-30 → 2026-07-13 A (+74d) | 0% → 100% | 92d → none |  |  |
| CO-R10.S03-ES-MV-170 | Installation Works for RMU of Medium Voltage Network-[Road 10]-[SW-3] | 2026-05-02 → 2026-07-09 A (+68d) | 2026-05-07 → 2026-07-13 A (+67d) | 0% → 100% | 92d → none |  |  |
| CO-R10.S03-ES-MV-180 | Termination Works for RMU of Medium Voltage Network-[Road 10]-[SW-3] | 2026-05-09 → 2026-07-09 A (+61d) | 2026-05-13 → 2026-07-13 A (+61d) | 0% → 100% | 92d → none |  |  |
| CO-R10.S03-ES-MV-190 | Testing Works for RMU of Medium Voltage Network-[Road 10]-[SW-3] | 2026-05-14 → 2026-07-09 A (+56d) | 2026-05-19 → 2026-07-13 A (+55d) | 0% → 100% | 92d → none |  |  |
| RD | **Road Works** | 2026-03-07 → 2026-08-25 (+171d) | 2026-09-29 → 2027-06-19 (+263d) |  |  |  |  |
| RD | **Pre-Bituminous Construction** | 2026-03-07 → 2027-01-09 (+308d) | 2026-04-02 → 2027-02-01 (+305d) |  |  |  |  |
| CO-R10.S03-ES-RD-100 | Capping and Subgrade Layer for Road Works-[Road 10]-[SW-3] | 2026-03-07 → 2027-01-09 (+308d) | 2026-03-30 → 2027-01-28 (+304d) |  | 107d → -148d |  | resources Labor/Helper [326.85 h]; Skilled Labor/Surveyor [94.13 h]; Loader [144 h]; Grader [144 h]; Road Roller [144 h]; Water Tank [144 h]; 300mm capping layer underneath subgrade , CBR?15% [4813.03]; 300mm thick Subgrade, including subgrade preparation, CBR?25% [4813.03] → Labor/Helper [288 h]; Skilled Labor/Surveyor [144 h]; Loader [144 h]; Grader [144 h]; Road Roller [144 h]; Water Tank [144 h]; 300mm capping layer underneath subgrade , CBR?15% [3390.73]; 300mm thick Subgrade, including subgrade preparation, CBR?25% [3390.73] |
| CO-R10.S03-ES-RD-110 | Aggregate Base Course Layer for Road Works-[Road 10]-[SW-3] | 2026-03-10 → 2027-01-12 (+308d) | 2026-04-02 → 2027-02-01 (+305d) |  | 113d → -120d |  | resources Labor/Helper [323.01 h]; Skilled Labor/Surveyor [161.51 h]; Foreman [161.51 h]; Loader [144 h]; Grader [144 h]; Road Roller [144 h]; Aggregate base course 200mm thick after compaction in two layers(Grading 1); CBR?80%; including watering, compaction and testing [3209.02] → Labor/Helper [288 h]; Skilled Labor/Surveyor [144 h]; Foreman [144 h]; Loader [144 h]; Grader [144 h]; Road Roller [144 h]; Aggregate base course 200mm thick after compaction in two layers(Grading 1); CBR?80%; including watering, compaction and testing [2260.72] |
| LS | **Pavement Works** | 2026-03-14 → 2026-08-25 (+164d) | 2026-09-29 → 2027-06-19 (+263d) |  |  |  |  |
| CO-R10.S03-ES-RD-120 | Fixing of Curbstone for Sidewalks Pavement-[Road 10]-[SW-3] | 2026-03-14 → 2026-08-25 A (+164d) | 2026-04-06 → 2026-08-31 A (+147d) | 0% → 100% | 113d → none |  | resources Labor/Helper [328.29 h]; Block Mason [984.87 h]; Precast Concrete Kerb, Type K1 [1775.55]; Precast Concrete Kerb, Type L1 [3523] → Labor/Helper [288 h]; Block Mason [864 h]; Precast Concrete Kerb, Type K1 [1250.99]; Precast Concrete Kerb, Type L1 [2482.11] |
| CO-R10.S03-ES-RD-130 | Fixing of Interlock Tiles for Sidewalks Pavement-[Road 10]-[SW-3] | 2026-09-17 → 2026-08-25 A (-23d) | 2026-09-29 → 2027-06-19 (+263d) | 0% → 50% | 0d → -216d |  | resources Labor/Helper [482.11 h]; Block Mason [1254.94 h]; Interlocking block pavers for sidewalk/footpath 60mm thick on and including 30mm Sand Bedding, 200mm Aggregate subbase, all in accordance with authority standards and complete as per specifications [3170.9]; Extraover for Pedestrian ramps [8.03] → Labor/Helper [432 h]; Block Mason [1296 h]; Interlocking block pavers for sidewalk/footpath 60mm thick on and including 30mm Sand Bedding, 200mm Aggregate subbase, all in accordance with authority standards and complete as per specifications [2233.91]; Extraover for Pedestrian ramps [5.5] |
| SW_31 | **SW_3-West** | 2025-09-01 → 2025-04-08 (-146d) | 2026-09-29 → 2027-06-19 (+263d) |  |  |  |  |
| EW | **Earthworks** | 2025-09-01 → 2025-04-08 (-146d) | 2025-09-29 → 2025-04-14 (-168d) |  |  |  |  |
| EW | **Earthworks** | 2025-09-01 → 2025-04-08 (-146d) | 2025-09-29 → 2025-04-14 (-168d) |  |  |  |  |
| CO-R10.S03-WE-EW-100 | Roadway Excavation Works Upto Design Level for Earthworks-[Road 10]-[SW-3] | 2025-09-01 → 2025-04-08 A (-146d) | 2025-09-14 → 2025-04-14 A (-153d) | 0% → 100% | 11d → none |  | resources Labor/Helper [218.86 h]; Skilled Labor/Surveyor [27.36 h]; Foreman [27.36 h]; Water Tank [192 h]; Dozer [192 h]; Roadway Excavation for cuttings; on any type of material for all depths including trimming and Preparation of excavated surfaces and disposal. [22656.8] → Labor/Helper [192 h]; Skilled Labor/Surveyor [24 h]; Foreman [24 h]; Water Tank [192 h]; Dozer [192 h]; Roadway Excavation for cuttings; on any type of material for all depths including trimming and Preparation of excavated surfaces and disposal. [15964.1] |
| CO-R10.S03-WE-EW-110 | Embankments Works Upto Design Level for Earthworks-[Road 10]-[SW-3] | 2025-09-15 → 2025-04-08 A (-160d) | 2025-09-29 → 2025-04-14 A (-168d) | 0% → 100% | 42d → none |  | resources Labor/Helper [820.72 h]; Skilled Labor/Surveyor [102.59 h]; Foreman [102.59 h]; Water Tank [720 h]; Dozer [720 h]; Embankments to the ROW, with suitable material other than top soil or rock according to specifications [38141.1] → Labor/Helper [720 h]; Skilled Labor/Surveyor [90 h]; Foreman [90 h]; Water Tank [720 h]; Dozer [720 h]; Embankments to the ROW, with suitable material other than top soil or rock according to specifications [26873.7] |
| SD | **Storm Drainage Network** | 2025-11-18 → 2025-08-07 (-103d) | 2026-01-19 → 2026-10-17 (+271d) |  |  |  |  |
| ML | **Main Line Sections** | 2025-11-18 → 2025-08-07 (-103d) | 2025-12-28 → 2025-08-28 (-122d) |  |  |  |  |
| CO-R10.S03-WE-SD-100 | Trench Excavation and Bedding Works for Main Lines of Storm Drainage Network-[Road 10]-[SW-3] | 2025-11-18 → 2025-08-07 A (-103d) | 2025-11-29 → 2025-08-10 A (-111d) | 0% → 100% | 0d → none |  | resources Skilled Labor/Surveyor [13.68 h]; Foreman [13.68 h]; Excavator [112 h]; Pipe with diameter 500mm ; depth: 0.0m - 1.5m [7.02]; Pipe with diameter 600mm ; depth: 1.51m - 2.5m [28.09]; Pipe with diameter 600mm ; depth: 2.51m - 3.5m [24.08]; Pipe with diameter 700mm ; depth: 1.51m - 2.5m [79.25] → Skilled Labor/Surveyor [12 h]; Foreman [12 h]; Excavator [112 h]; Pipe with diameter 500mm ; depth: 0.0m - 1.5m [5]; Pipe with diameter 600mm ; depth: 1.51m - 2.5m [19.65]; Pipe with diameter 600mm ; depth: 2.51m - 3.5m [17.3]; Pipe with diameter 700mm ; depth: 1.51m - 2.5m [56.06] |
| CO-R10.S03-WE-SD-120 | Pipes Laying Works for Main Lines of Storm Drainage Network-[Road 10]-[SW-3] | 2025-11-30 → 2025-08-11 A (-111d) | 2025-12-10 → 2025-08-14 A (-118d) | 0% → 100% | 0d → none |  | resources Labor/Helper [273.57 h]; Skilled Labor/Surveyor [13.68 h]; Foreman [13.68 h]; Plumber [136.79 h]; Excavator [120 h]; Pipe with diameter 500mm ; depth: 0.0m - 1.5m [21.07]; Pipe with diameter 600mm ; depth: 1.51m - 2.5m [83.26]; Pipe with diameter 600mm ; depth: 2.51m - 3.5m [74.23]; Pipe with diameter 700mm ; depth: 1.51m - 2.5m [238.75] → Labor/Helper [240 h]; Skilled Labor/Surveyor [12 h]; Foreman [12 h]; Plumber [120 h]; Excavator [120 h]; Pipe with diameter 500mm ; depth: 0.0m - 1.5m [15]; Pipe with diameter 600mm ; depth: 1.51m - 2.5m [58.94]; Pipe with diameter 600mm ; depth: 2.51m - 3.5m [51.9]; Pipe with diameter 700mm ; depth: 1.51m - 2.5m [168.18] |
| CO-R10.S03-WE-SD-130 | Trench Backfilling and Compaction Works for Main Lines of Storm Drainage Network-[Road 10]-[SW-3] | 2025-12-11 → 2025-08-19 A (-114d) | 2025-12-28 → 2025-08-28 A (-122d) | 0% → 100% | 16d → none | ENG-SH-SD-ML-A-110 FF, ENG-MS-SD-ML-A-110 FF, CO-R10.S03-WE-SD-120, CO-R10.S03-WE-SD-220 FF → ENG-SH-SD-ML-A-110 FF, ENG-MS-SD-ML-A-110 FF, CO-R10.S03-WE-SD-120 | resources Skilled Labor/Surveyor [13.68 h]; Foreman [13.68 h]; Excavator [120 h]; Pipe with diameter 500mm ; depth: 0.0m - 1.5m [4.01]; Pipe with diameter 600mm ; depth: 1.51m - 2.5m [14.04]; Pipe with diameter 600mm ; depth: 2.51m - 3.5m [13.04]; Pipe with diameter 700mm ; depth: 1.51m - 2.5m [40.13] → Skilled Labor/Surveyor [12 h]; Foreman [12 h]; Excavator [120 h]; Pipe with diameter 500mm ; depth: 0.0m - 1.5m [2.5]; Pipe with diameter 600mm ; depth: 1.51m - 2.5m [9.82]; Pipe with diameter 600mm ; depth: 2.51m - 3.5m [8.65]; Pipe with diameter 700mm ; depth: 1.51m - 2.5m [28.03] |
| MH | **Manholes** | 2025-11-30 → 2025-11-06 (-24d) | 2025-12-15 → 2026-10-06 (+295d) |  |  |  |  |
| CO-R10.S03-WE-SD-180 | Trench Excavation and Bedding Works for Manholes of Storm Drainage Network-[Road 10]-[SW-3] | 2025-11-30 → 2025-11-06 A (-24d) | 2025-11-30 → 2025-11-15 A (-15d) | 0% → 100% | 21d → none |  | resources Labor/Helper [45.6 h]; Skilled Labor/Surveyor [22.8 h]; Excavator [40 h]; MH ; depth: 0.0m - 1.5m [0.23]; MH ; depth: 1.51m - 2.5m [1]; MH ; depth: 0.0m - 1.5m [0.15]; MH ; depth: 0.0m - 1.5m [0.07]; MH ; depth: 1.51m - 2.5m [0.23]; MH ; depth: 2.51 - 3.5m [0.3]; MH ; depth: 3.51 - 4.5m [0.3] → Labor/Helper [40 h]; Skilled Labor/Surveyor [20 h]; Excavator [40 h]; MH ; depth: 0.0m - 1.5m [0.23]; MH ; depth: 1.51m - 2.5m [0.6]; MH ; depth: 0.0m - 1.5m [0.15]; MH ; depth: 0.0m - 1.5m [0.07]; MH ; depth: 1.51m - 2.5m [0.23]; MH ; depth: 2.51 - 3.5m [0.3]; MH ; depth: 3.51 - 4.5m [0.3] |
| CO-R10.S03-WE-SD-190 | Install RC Footing Works for Manholes of Storm Drainage Network-[Road 10]-[SW-3] | 2025-12-01 → 2025-11-08 A (-23d) | 2025-12-01 → 2025-11-16 A (-15d) | 0% → 100% | 21d → none |  | resources Cons. Carpenter [91.19 h]; Steel Fixer [91.19 h]; MH ; depth: 0.0m - 1.5m [0.07]; MH ; depth: 1.51m - 2.5m [0.2]; MH ; depth: 0.0m - 1.5m [0.05]; MH ; depth: 0.0m - 1.5m [0.03]; MH ; depth: 1.51m - 2.5m [0.07]; MH ; depth: 2.51 - 3.5m [0.1]; MH ; depth: 3.51 - 4.5m [0.1] → Cons. Carpenter [80 h]; Steel Fixer [80 h]; MH ; depth: 0.0m - 1.5m [0.07]; MH ; depth: 1.51m - 2.5m [0.2]; MH ; depth: 0.0m - 1.5m [0.05]; MH ; depth: 0.0m - 1.5m [0.03]; MH ; depth: 1.51m - 2.5m [0.07]; MH ; depth: 2.51 - 3.5m [0.1]; MH ; depth: 3.51 - 4.5m [0.1] |
| CO-R10.S03-WE-SD-200 | Install RC Wall Rings & Slab Works for Manholes of Storm Drainage Network-[Road 10]-[SW-3] | 2025-12-02 → 2025-11-09 A (-23d) | 2025-12-06 → 2025-11-16 A (-20d) | 0% → 100% | 21d → none |  | resources Cons. Carpenter [145.91 h]; Steel Fixer [145.91 h]; MH ; depth: 0.0m - 1.5m [1]; MH ; depth: 1.51m - 2.5m [3.01]; MH ; depth: 0.0m - 1.5m [0.45]; MH ; depth: 0.0m - 1.5m [0.23]; MH ; depth: 1.51m - 2.5m [1]; MH ; depth: 2.51 - 3.5m [1]; MH ; depth: 3.51 - 4.5m [1] → Cons. Carpenter [320 h]; Steel Fixer [320 h]; MH ; depth: 0.0m - 1.5m [0.68]; MH ; depth: 1.51m - 2.5m [1.8]; MH ; depth: 0.0m - 1.5m [0.45]; MH ; depth: 0.0m - 1.5m [0.23]; MH ; depth: 1.51m - 2.5m [0.68]; MH ; depth: 2.51 - 3.5m [0.9]; MH ; depth: 3.51 - 4.5m [0.9] |
| CO-R10.S03-WE-SD-220 | Backfilling Works for Manholes of Storm Drainage Network-[Road 10]-[SW-3] | 2025-12-08 → 2025-11-11 A (-27d) | 2025-12-15 → 2025-11-20 A (-25d) | 0% → 100% | 21d → none | CO-R10.S03-WE-SD-210 → CO-R10.S03-WE-SD-200 | resources Labor/Helper [319.17 h]; Skilled Labor/Surveyor [159.58 h]; Excavator [280 h]; MH ; depth: 0.0m - 1.5m [0.3]; MH ; depth: 1.51m - 2.5m [1]; MH ; depth: 0.0m - 1.5m [0.2]; MH ; depth: 0.0m - 1.5m [0.1]; MH ; depth: 1.51m - 2.5m [0.3]; MH ; depth: 2.51 - 3.5m [0.4]; MH ; depth: 3.51 - 4.5m [0.4] → Labor/Helper [280 h]; Skilled Labor/Surveyor [140 h]; Excavator [280 h]; MH ; depth: 0.0m - 1.5m [0.3]; MH ; depth: 1.51m - 2.5m [0.8]; MH ; depth: 0.0m - 1.5m [0.2]; MH ; depth: 0.0m - 1.5m [0.1]; MH ; depth: 1.51m - 2.5m [0.3]; MH ; depth: 2.51 - 3.5m [0.4]; MH ; depth: 3.51 - 4.5m [0.4] |
| CO-R10.S03-WE-SD-210 | Testing Works for Manholes of Storm Drainage Network-[Road 10]-[SW-3] | 2025-12-07 → 2026-10-06 (+303d) | 2025-12-07 → 2026-10-06 (+303d) |  | 21d → -28d | CO-R10.S03-WE-SD-200 → CO-R10.S03-WE-SD-200, CO-R10.S03-WE-SD-220 | resources Labor/Helper [45.6 h]; Plumber [45.6 h]; MH ; depth: 0.0m - 1.5m [0.15]; MH ; depth: 1.51m - 2.5m [0.4]; MH ; depth: 0.0m - 1.5m [0.1]; MH ; depth: 0.0m - 1.5m [0.05]; MH ; depth: 1.51m - 2.5m [0.15]; MH ; depth: 2.51 - 3.5m [0.2]; MH ; depth: 3.51 - 4.5m [0.2] → Labor/Helper [40 h]; Plumber [40 h]; MH ; depth: 0.0m - 1.5m [0.15]; MH ; depth: 1.51m - 2.5m [0.4]; MH ; depth: 0.0m - 1.5m [0.1]; MH ; depth: 0.0m - 1.5m [0.05]; MH ; depth: 1.51m - 2.5m [0.15]; MH ; depth: 2.51 - 3.5m [0.2]; MH ; depth: 3.51 - 4.5m [0.2] |
| CB | **Catch Basin Sections** | 2025-12-16 → 2025-09-01 (-106d) | 2026-01-19 → 2026-10-17 (+271d) |  |  |  |  |
| CO-R10.S03-WE-SD-140 | Trench Excavation and Bedding Works for Catch Basins of Storm Drainage Network-[Road 10]-[SW-3] | 2025-12-16 → 2025-09-01 A (-106d) | 2025-12-22 → 2025-09-04 A (-109d) | 0% → 100% | 21d → none | CO-R10.S03-WE-EW-110, ENG-SH-SD-CB-A-110, ENG-MS-SD-CB-A-110, CO-R10.S03-WE-SD-220 → CO-R10.S03-WE-EW-110, ENG-SH-SD-CB-A-110, ENG-MS-SD-CB-A-110 | resources Skilled Labor/Surveyor [5.7 h]; Foreman [5.7 h]; Excavator [48 h]; Pipe with diameter 300mm ; depth: 0 - 1.5m [120.38]; Pipe with diameter 400mm ; depth: 0 - 1.5m [7.02] → Skilled Labor/Surveyor [5 h]; Foreman [5 h]; Excavator [48 h]; Pipe with diameter 300mm ; depth: 0 - 1.5m [84.55]; Pipe with diameter 400mm ; depth: 0 - 1.5m [5.16] |
| CO-R10.S03-WE-SD-150 | Installation and Pipes Laying Connection Works for Catch Basins of Storm Drainage Network-[Road 10]-[SW-3] | 2025-12-23 → 2025-09-06 A (-108d) | 2025-12-30 → 2025-09-07 A (-114d) | 0% → 100% | 21d → none |  | resources Labor/Helper [255.34 h]; Skilled Labor/Surveyor [13.68 h]; Foreman [13.68 h]; Excavator [112 h]; Pipe with diameter 300mm ; depth: 0 - 1.5m [360.12]; Pipe with diameter 400mm ; depth: 0 - 1.5m [21.07] → Labor/Helper [224 h]; Skilled Labor/Surveyor [12 h]; Foreman [12 h]; Excavator [112 h]; Pipe with diameter 300mm ; depth: 0 - 1.5m [253.63]; Pipe with diameter 400mm ; depth: 0 - 1.5m [15.47] |
| CO-R10.S03-WE-SD-170 | Trench Backfilling and Compaction Works for Catch Basins of Storm Drainage Network-[Road 10]-[SW-3] | 2026-01-12 → 2025-09-08 A (-126d) | 2026-01-19 → 2025-09-09 A (-132d) | 0% → 100% | 21d → none | CO-R10.S03-WE-SD-160 → CO-R10.S03-WE-SD-150 | resources Skilled Labor/Surveyor [6.84 h]; Foreman [6.84 h]; Excavator [56 h]; Pipe with diameter 300mm ; depth: 0 - 1.5m [160.5]; Pipe with diameter 400mm ; depth: 0 - 1.5m [10.03] → Skilled Labor/Surveyor [6 h]; Foreman [6 h]; Excavator [56 h]; Pipe with diameter 300mm ; depth: 0 - 1.5m [112.73]; Pipe with diameter 400mm ; depth: 0 - 1.5m [6.87] |
| CO-R10.S03-WE-SD-160 | Testing Works for Catch Basins of Storm Drainage Network-[Road 10]-[SW-3] | 2025-12-31 → 2026-10-06 (+279d) | 2026-01-11 → 2026-10-17 (+279d) |  | 21d → 59d |  | resources Labor/Helper [182.38 h]; Skilled Labor/Surveyor [9.12 h]; Foreman [9.12 h]; Plumber [91.19 h]; Excavator [80 h]; Pipe with diameter 300mm ; depth: 0 - 1.5m [79.25]; Pipe with diameter 400mm ; depth: 0 - 1.5m [4.01] → Labor/Helper [160 h]; Skilled Labor/Surveyor [8 h]; Foreman [8 h]; Plumber [80 h]; Excavator [80 h]; Pipe with diameter 300mm ; depth: 0 - 1.5m [56.36]; Pipe with diameter 400mm ; depth: 0 - 1.5m [3.44] |
| PW | **Potable Water Network** | 2025-12-29 → 2025-08-05 (-146d) | 2026-01-25 → 2026-10-24 (+272d) |  |  |  |  |
| ML | **Main Line Sections** | 2025-12-29 → 2025-08-05 (-146d) | 2026-01-25 → 2025-08-16 (-162d) |  |  |  |  |
| CO-R10.S03-WE-PW-100 | Trench Excavation and Bedding Works for Main Lines of Potable Water Network-[Road 10]-[SW-3] | 2025-12-29 → 2025-08-05 A (-146d) | 2026-01-04 → 2025-08-07 A (-150d) | 0% → 100% | 16d → none | ENG-SH-PW-ML-A-110, CO-R10.S03-WE-EW-110, CO-R10.S03-WE-EW-100, ENG-MS-PW-ML-A-110, ENG-SH-PW-FH-A-110, CO-R10.S03-WE-SD-130 → ENG-SH-PW-ML-A-110, CO-R10.S03-WE-EW-110, CO-R10.S03-WE-EW-100, ENG-MS-PW-ML-A-110, ENG-SH-PW-FH-A-110 | resources Skilled Labor/Surveyor [5.7 h]; Foreman [5.7 h]; Excavator [48 h]; Pipe with diameter 200mm; in depth 0.0m - 1.5m [362.13] → Skilled Labor/Surveyor [5 h]; Foreman [5 h]; Excavator [48 h]; Pipe with diameter 200mm; in depth 0.0m - 1.5m [255.13] |
| CO-R10.S03-WE-PW-110 | Pipes Laying and accessories for Main Lines of Potable Water Network-[Road 10]-[SW-3] | 2026-01-05 → 2025-08-09 A (-149d) | 2026-01-11 → 2025-08-12 A (-152d) | 0% → 100% | 16d → none | CO-R10.S03-WE-PW-100, PRO-R10-PW-DL-110 FF+3d → CO-R10.S03-WE-PW-100, PRO-R10-PW-DL-100 | resources Labor/Helper [218.86 h]; Skilled Labor/Surveyor [11.4 h]; Foreman [11.4 h]; Plumber [109.43 h]; Excavator [96 h]; Pipe with diameter 200mm; in depth 0.0m - 1.5m [905.83] → Labor/Helper [192 h]; Skilled Labor/Surveyor [10 h]; Foreman [10 h]; Plumber [96 h]; Excavator [96 h]; Pipe with diameter 200mm; in depth 0.0m - 1.5m [637.83] |
| CO-R10.S03-WE-PW-130 | Trench Backfilling and Compaction Works for Main Lines of Potable Water Network-[Road 10]-[SW-3] | 2026-01-19 → 2025-08-13 A (-159d) | 2026-01-25 → 2025-08-16 A (-162d) | 0% → 100% | 16d → none | CO-R10.S03-WE-PW-110 SS+3d, CO-R10.S03-WE-PW-110 FF+3d, CO-R10.S03-WE-PW-220 FF, CO-R10.S03-WE-PW-160 FF → CO-R10.S03-WE-PW-110 SS+3d, CO-R10.S03-WE-PW-110 FF+3d | resources Skilled Labor/Surveyor [5.7 h]; Foreman [5.7 h]; Eq. Operator [5.7 h]; Loader [48 h]; Compactor [48 h]; Water Tank [12 h]; Pipe with diameter 200mm; in depth 0.0m - 1.5m [362.13] → Skilled Labor/Surveyor [5 h]; Foreman [5 h]; Eq. Operator [5 h]; Loader [48 h]; Compactor [48 h]; Water Tank [12 h]; Pipe with diameter 200mm; in depth 0.0m - 1.5m [255.13] |
| VC | **Valve Chamber** | 2026-01-05 → 2026-10-06 (+274d) | 2026-01-22 → 2026-10-24 (+275d) |  |  |  |  |
| CO-R10.S03-WE-PW-170 | Excavation Works for Main Line Valves and Valve Chambers of Potable Water Network-[Road 10]-[SW-3] | 2026-01-05 → 2026-10-06 (+274d) | 2026-01-05 → 2026-10-06 (+274d) |  | 18d → -62d |  | resources Labor/Helper [18.24 h]; Skilled Labor/Surveyor [9.12 h]; Excavator [16 h]; Wash out chamber; on 200 mm dia pipeline Depth 1.5 - 3m [0.1]; Air valve chamber; on 200 mm dia pipeline Depth 1.5 - 3 m [0.15] → Labor/Helper [16 h]; Skilled Labor/Surveyor [8 h]; Excavator [16 h]; Wash out chamber; on 200 mm dia pipeline Depth 1.5 - 3m [0.1]; Air valve chamber; on 200 mm dia pipeline Depth 1.5 - 3 m [0.15] |
| CO-R10.S03-WE-PW-180 | RC Footing Works for Main Line Valves and Valve Chambers of Potable Water Network-[Road 10]-[SW-3] | 2026-01-06 → 2026-10-07 (+274d) | 2026-01-08 → 2026-10-10 (+275d) |  | 18d → -62d |  | resources Cons. Carpenter [54.71 h]; Steel Fixer [54.71 h]; Wash out chamber; on 200 mm dia pipeline Depth 1.5 - 3m [0.15]; Air valve chamber; on 200 mm dia pipeline Depth 1.5 - 3 m [0.23] → Cons. Carpenter [48 h]; Steel Fixer [48 h]; Wash out chamber; on 200 mm dia pipeline Depth 1.5 - 3m [0.15]; Air valve chamber; on 200 mm dia pipeline Depth 1.5 - 3 m [0.23] |
| CO-R10.S03-WE-PW-190 | RC Wall Works for Main Line Valves and Valve Chambers of Potable Water Network-[Road 10]-[SW-3] | 2026-01-10 → 2026-10-11 (+274d) | 2026-01-15 → 2026-10-17 (+275d) |  | 18d → -62d |  | resources Cons. Carpenter [109.43 h]; Steel Fixer [109.43 h]; Wash out chamber; on 200 mm dia pipeline Depth 1.5 - 3m [0.35]; Air valve chamber; on 200 mm dia pipeline Depth 1.5 - 3 m [1] → Cons. Carpenter [96 h]; Steel Fixer [96 h]; Wash out chamber; on 200 mm dia pipeline Depth 1.5 - 3m [0.35]; Air valve chamber; on 200 mm dia pipeline Depth 1.5 - 3 m [0.53] |
| CO-R10.S03-WE-PW-200 | RC Slab Works for Main Line Valves and Valve Chambers of Potable Water Network-[Road 10]-[SW-3] | 2026-01-17 → 2026-10-18 (+274d) | 2026-01-18 → 2026-10-19 (+274d) |  | 18d → -62d |  | resources Cons. Carpenter [72.95 h]; Steel Fixer [72.95 h]; Wash out chamber; on 200 mm dia pipeline Depth 1.5 - 3m [0.2]; Air valve chamber; on 200 mm dia pipeline Depth 1.5 - 3 m [0.3] → Cons. Carpenter [64 h]; Steel Fixer [64 h]; Wash out chamber; on 200 mm dia pipeline Depth 1.5 - 3m [0.2]; Air valve chamber; on 200 mm dia pipeline Depth 1.5 - 3 m [0.3] |
| CO-R10.S03-WE-PW-210 | Insulation Works for Main Line Valves and Valve Chambers of Potable Water Network-[Road 10]-[SW-3] | 2026-01-19 → 2026-10-20 (+274d) | 2026-01-19 → 2026-10-20 (+274d) |  | 18d → -62d |  | resources Labor/Helper [18.24 h]; Plumber [18.24 h]; Gate valves dia(200)mm on pipes with dia (200) mm. [16.05]; Wash out valve with dia (100)mm on pipes with dia (200) mm [1]; Air valves with dia (50mm) mm on pipes with dia(200)mm. [3.01] → Labor/Helper [16 h]; Plumber [16 h]; Gate valves dia(200)mm on pipes with dia (200) mm. [11]; Wash out valve with dia (100)mm on pipes with dia (200) mm [0.5]; Air valves with dia (50mm) mm on pipes with dia(200)mm. [1.5] |
| CO-R10.S03-WE-PW-220 | Backfilling Works for Main Line Valves and Valve Chambers of Potable Water Network-[Road 10]-[SW-3] | 2026-01-20 → 2026-10-21 (+274d) | 2026-01-22 → 2026-10-24 (+275d) |  | 18d → -62d |  | resources Labor/Helper [27.36 h]; Skilled Labor/Surveyor [13.68 h]; Excavator [24 h]; Wash out chamber; on 200 mm dia pipeline Depth 1.5 - 3m [0.2]; Air valve chamber; on 200 mm dia pipeline Depth 1.5 - 3 m [0.3] → Labor/Helper [24 h]; Skilled Labor/Surveyor [12 h]; Excavator [24 h]; Wash out chamber; on 200 mm dia pipeline Depth 1.5 - 3m [0.2]; Air valve chamber; on 200 mm dia pipeline Depth 1.5 - 3 m [0.3] |
| FH | **Fire Hydrant** | 2026-01-08 → 2026-10-06 (+271d) | 2026-01-25 → 2026-10-22 (+270d) |  |  |  |  |
| CO-R10.S03-WE-PW-140 | Excavation Works for Fire Hydrants of Potable Water Network-[Road 10]-[SW-3] | 2026-01-08 → 2026-10-06 (+271d) | 2026-01-14 → 2026-10-12 (+271d) |  | 16d → -76d |  | resources Skilled Labor/Surveyor [5.61 h]; Foreman [5.61 h]; Excavator [48 h]; 3-outlet fire hydrant (2 x 2.5 inch and 1 x 4 inch) in the form of a separate dry vacuum cylinder [1] → Skilled Labor/Surveyor [5 h]; Foreman [5 h]; Excavator [48 h]; 3-outlet fire hydrant (2 x 2.5 inch and 1 x 4 inch) in the form of a separate dry vacuum cylinder [1.12] |
| CO-R10.S03-WE-PW-150 | Installation Works for Fire Hydrant of Potable Water Network-[Road 10]-[SW-3] | 2026-01-15 → 2026-10-13 (+271d) | 2026-01-21 → 2026-10-19 (+271d) |  | 16d → -76d |  | resources Labor/Helper [107.67 h]; Skilled Labor/Surveyor [5.61 h]; Foreman [5.61 h]; Plumber [107.67 h]; 3-outlet fire hydrant (2 x 2.5 inch and 1 x 4 inch) in the form of a separate dry vacuum cylinder [7.02] → Labor/Helper [96 h]; Skilled Labor/Surveyor [5 h]; Foreman [5 h]; Plumber [96 h]; 3-outlet fire hydrant (2 x 2.5 inch and 1 x 4 inch) in the form of a separate dry vacuum cylinder [4.88] |
| CO-R10.S03-WE-PW-160 | Trench Backfilling and Compaction Works for Fire Hydrants of Potable Water Network-[Road 10]-[SW-3] | 2026-01-19 → 2026-10-17 (+271d) | 2026-01-25 → 2026-10-22 (+270d) |  | 16d → -76d |  | resources Skilled Labor/Surveyor [5.61 h]; Foreman [5.61 h]; Excavator [48 h]; 3-outlet fire hydrant (2 x 2.5 inch and 1 x 4 inch) in the form of a separate dry vacuum cylinder [3.01] → Skilled Labor/Surveyor [5 h]; Foreman [5 h]; Excavator [48 h]; 3-outlet fire hydrant (2 x 2.5 inch and 1 x 4 inch) in the form of a separate dry vacuum cylinder [1.5] |
| IR | **Irrigation Network** | 2026-01-26 → 2025-08-10 (-169d) | 2026-02-21 → 2026-07-05 (+134d) |  |  |  |  |
| ML | **Main Line Pipes** | 2026-01-26 → 2025-08-10 (-169d) | 2026-02-21 → 2026-07-05 (+134d) |  |  |  |  |
| CO-R10.S03-WE-IR-100 | Trench Excavation and Bedding Works for Main Lines of Irrigation Network-[Road 10]-[SW-3] | 2026-01-26 → 2025-08-10 A (-169d) | 2026-02-02 → 2025-08-14 A (-172d) | 0% → 100% | 16d → none | ENG-SH-IR-ML-A-110, CO-R10.S03-WE-EW-110, CO-R10.S03-WE-PW-130, CO-R10.S03-WE-SD-170, ENG-MS-IR-ML-A-110 → ENG-SH-IR-ML-A-110, CO-R10.S03-WE-EW-110, ENG-MS-IR-ML-A-110 | resources Skilled Labor/Surveyor [6.84 h]; Foreman [6.84 h]; Excavator [56 h]; 355 mm pipe; depth 1.5m - 3.0m [141.44]; 400 mm pipe; depth 1.5m - 3.0m [141.44]; 500. mm pipe; depth 1.5m - 3.0m [397.24] → Skilled Labor/Surveyor [6 h]; Foreman [6 h]; Excavator [56 h]; 355 mm pipe; depth 1.5m - 3.0m [100]; 400 mm pipe; depth 1.5m - 3.0m [100]; 500. mm pipe; depth 1.5m - 3.0m [280] |
| CO-R10.S03-WE-IR-110 | Pipes Laying Works for Main Lines of Irrigation Network-[Road 10]-[SW-3] | 2026-02-03 → 2025-08-16 A (-171d) | 2026-02-10 → 2025-08-19 A (-175d) | 0% → 100% | 16d → none |  | resources Labor/Helper [127.67 h]; Skilled Labor/Surveyor [6.84 h]; Foreman [6.84 h]; Plumber [63.83 h]; Excavator [56 h]; 355 mm pipe; depth 1.5m - 3.0m [425.33]; 400 mm pipe; depth 1.5m - 3.0m [425.33] → Labor/Helper [112 h]; Skilled Labor/Surveyor [6 h]; Foreman [6 h]; Plumber [56 h]; Excavator [56 h]; 355 mm pipe; depth 1.5m - 3.0m [300]; 400 mm pipe; depth 1.5m - 3.0m [300] |
| CO-R10.S03-WE-IR-130 | Trench Backfilling and Compaction Works for Main Lines of Irrigation Network-[Road 10]-[SW-3] | 2026-02-14 → 2025-08-20 A (-178d) | 2026-02-21 → 2025-08-24 A (-181d) | 0% → 100% | 16d → none | CO-R10.S03-WE-IR-120, CO-R10.S03-WE-IR-110 → CO-R10.S03-WE-IR-110 | resources Skilled Labor/Surveyor [6.84 h]; Foreman [6.84 h]; Excavator [56 h]; 355 mm pipe; depth 1.5m - 3.0m [71.22]; 400 mm pipe; depth 1.5m - 3.0m [71.22] → Skilled Labor/Surveyor [6 h]; Foreman [6 h]; Excavator [56 h]; 355 mm pipe; depth 1.5m - 3.0m [50]; 400 mm pipe; depth 1.5m - 3.0m [50] |
| CO-R10.S03-WE-IR-120 | Installation Works for Main Line Valves of Irrigation Network-[Road 10]-[SW-3] | 2026-02-11 → 2026-07-01 A (+140d) | 2026-02-12 → 2026-07-05 A (+143d) | 0% → 100% | 16d → none |  | resources Labor/Helper [71.78 h]; Skilled Labor/Surveyor [4.49 h]; Foreman [4.49 h]; Plumber [71.78 h]; Butterfly valves with dia (355)mm on pipes with dia (355)mm. [1]; Butterfly valves with dia (400)mm on pipes with dia (400)mm. [1]; Butterfly valves with dia (500)mm on pipes with dia (500)mm. [4.01]; Wash out valve with dia (150)mm on pipes with dia (400) mm [1]; Wash out valve with dia (150)mm on pipes with dia (500) mm [4.01]; Air valves with dia (65mm) mm on pipes with dia(500)mm. [4.01]; Wash out chamber; on 400 mm dia pipeline Depth 1.5 - 3m [1]; Wash out chamber; on 500 mm dia pipeline Depth 1.5 - 3m [3.01] → Labor/Helper [64 h]; Skilled Labor/Surveyor [4 h]; Foreman [4 h]; Plumber [64 h]; Butterfly valves with dia (355)mm on pipes with dia (355)mm. [1]; Butterfly valves with dia (400)mm on pipes with dia (400)mm. [1]; Butterfly valves with dia (500)mm on pipes with dia (500)mm. [3]; Wash out valve with dia (150)mm on pipes with dia (400) mm [1]; Wash out valve with dia (150)mm on pipes with dia (500) mm [3]; Air valves with dia (65mm) mm on pipes with dia(500)mm. [3]; Wash out chamber; on 400 mm dia pipeline Depth 1.5 - 3m [1]; Wash out chamber; on 500 mm dia pipeline Depth 1.5 - 3m [2] |
| SL | **Street Lighting Network** | 2026-02-22 → 2026-10-06 (+226d) | 2026-06-29 → 2027-02-23 (+239d) |  |  |  |  |
| LP | **Lighting Poles Works** | 2026-02-22 → 2026-10-06 (+226d) | 2026-04-04 → 2026-11-12 (+222d) |  |  |  |  |
| CO-R10.S03-WE-SL-100 | Foundation Excavation Works for Lighting Poles of Street Lighting Network-[Road 10]-[SW-3] | 2026-02-22 → 2026-10-06 (+226d) | 2026-03-07 → 2026-10-19 (+226d) |  | 16d → -170d |  | resources Labor/Helper [215.34 h]; Skilled Labor/Surveyor [54.15 h]; Excavator [192 h]; Lighting poles with one arm, including the power distribution box, screws, cables, 12 meters in height. [1] → Labor/Helper [192 h]; Skilled Labor/Surveyor [96 h]; Excavator [192 h]; Lighting poles with one arm, including the power distribution box, screws, cables, 12 meters in height. [1.2] |
| CO-R10.S03-WE-SL-110 | Installation Works for Lighting Poles Foundation of Street Lighting Network-[Road 10]-[SW-3] | 2026-02-28 → 2026-10-12 (+226d) | 2026-03-12 → 2026-10-25 (+227d) |  | 16d → -170d |  | resources Labor/Helper [430.68 h]; Skilled Labor/Surveyor [22.43 h]; Foreman [22.43 h]; Eq. Operator [22.43 h]; Loader [48 h]; Reinforced concrete foundation, for 12m high lighting columns With Drawpits [34.11] → Labor/Helper [384 h]; Skilled Labor/Surveyor [20 h]; Foreman [20 h]; Eq. Operator [20 h]; Loader [48 h]; Reinforced concrete foundation, for 12m high lighting columns With Drawpits [24] |
| CO-R10.S03-WE-SL-120 | Installation Works for Lighting Poles of Street Lighting Network-[Road 10]-[SW-3] | 2026-03-05 → 2026-10-18 (+227d) | 2026-03-29 → 2026-11-07 (+223d) |  | 16d → -170d |  | resources Labor/Helper [161.51 h]; Electrician [161.51 h]; Lighting poles with one arm, including the power distribution box, screws, cables, 12 meters in height. [18.06] → Labor/Helper [144 h]; Electrician [144 h]; Lighting poles with one arm, including the power distribution box, screws, cables, 12 meters in height. [13.2] |
| CO-R10.S03-WE-SL-130 | Installation Works for Lighting Fixtures With Drop Wire of Street Lighting Network-[Road 10]-[SW-3] | 2026-03-11 → 2026-10-24 (+227d) | 2026-04-04 → 2026-11-12 (+222d) |  | 41d → -145d |  | resources Labor/Helper [161.51 h]; Electrician [161.51 h]; Manlift [144 h]; Street Lighting( LED) Luminaire,(Type C) complete with control gear and lamp, ?.17000 Lumen [34.11] → Labor/Helper [144 h]; Electrician [144 h]; Manlift [144 h]; Street Lighting( LED) Luminaire,(Type C) complete with control gear and lamp, ?.17000 Lumen [24] |
| CO-R10.S03-WE-SL-210 | Backfilling Works for Lighting Poles of Street Lighting Network-[Road 10]-[SW-3] | 2026-03-12 → 2026-10-25 (+227d) | 2026-03-29 → 2026-11-07 (+223d) |  | 41d → -145d |  | resources Labor/Helper [108.61 h]; Skilled Labor/Surveyor [27.08 h]; Excavator [192 h]; Lighting poles with one arm, including the power distribution box, screws, cables, 12 meters in height. [7.02] → Labor/Helper [192 h]; Skilled Labor/Surveyor [96 h]; Excavator [192 h]; Lighting poles with one arm, including the power distribution box, screws, cables, 12 meters in height. [4.8] |
| CO-R10.S03-WE-SL-200 | Testing Works for Lighting Poles of Street Lighting Network-[Road 10]-[SW-3] | 2026-03-30 → 2026-11-08 (+223d) | 2026-04-04 → 2026-11-12 (+222d) |  | 41d → -145d |  | resources Labor/Helper [179.45 h]; Electrician [179.45 h]; Lighting poles with one arm, including the power distribution box, screws, cables, 12 meters in height. [7.02] → Labor/Helper [160 h]; Electrician [160 h]; Lighting poles with one arm, including the power distribution box, screws, cables, 12 meters in height. [4.8] |
| CW | **Cabling Works** | 2026-03-30 → 2026-11-08 (+223d) | 2026-05-03 → 2026-12-12 (+223d) |  |  |  |  |

| ID | Task | Start | Finish | Complete | Total float | Predecessors | Other |
| --- | --- | --- | --- | --- | --- | --- | --- |
| CO-R10.S03-WE-SL-140 | Trench Excavation and Bedding Works for Street Lighting Network-[Road 10]-[SW-3] | 2026-03-30 → 2026-11-08 (+223d) | 2026-04-09 → 2026-11-18 (+223d) |  | 16d → -170d |  | resources Labor/Helper [89.73 h]; Skilled Labor/Surveyor [44.86 h]; Excavator [80 h] → Labor/Helper [80 h]; Skilled Labor/Surveyor [40 h]; Excavator [80 h] |
| CO-R10.S03-WE-SL-150 | Cable Laying Works for Street Lighting Network-[Road 10]-[SW-3] | 2026-04-11 → 2026-11-19 (+222d) | 2026-04-21 → 2026-11-30 (+223d) |  | 16d → -170d |  | resources Labor/Helper [89.73 h]; Electrician [89.73 h]; Low Current Technician [89.73 h]; Supply, installation , test and operation of cables, Copper, (4Cx25mmï¿½,Cu/XLPE/SWA/PVC +1x16mmï¿½ PVC/PVC) [1331.16] → Labor/Helper [80 h]; Electrician [80 h]; Low Current Technician [80 h]; Supply, installation , test and operation of cables, Copper, (4Cx25mm²,Cu/XLPE/SWA/PVC +1x16mm² PVC/PVC) [938.44] |
| CO-R10.S03-WE-SL-160 | Trench Backfilling and Compaction Works for Street Lighting Network-[Road 10]-[SW-3] | 2026-04-22 → 2026-12-01 (+223d) | 2026-05-03 → 2026-12-12 (+223d) |  | 16d → -170d |  | resources Skilled Labor/Surveyor [8.97 h]; Foreman [8.97 h]; Excavator [80 h]; Water Tank [20 h]; Supply, installation , test and operation of cables, Copper, (4Cx25mmï¿½,Cu/XLPE/SWA/PVC +1x16mmï¿½ PVC/PVC) [102.32] → Skilled Labor/Surveyor [8 h]; Foreman [8 h]; Excavator [80 h]; Water Tank [20 h]; Supply, installation , test and operation of cables, Copper, (4Cx25mm²,Cu/XLPE/SWA/PVC +1x16mm² PVC/PVC) [72.19] |
| DPB | **Distrubution Panel Boards** | 2026-06-06 → 2027-01-30 (+238d) | 2026-06-29 → 2027-02-23 (+239d) |  |  |  |  |
| CO-R10.S03-WE-SL-170 | Foundation Excavation Works For Panel Boards of Street Lighting Network-[Road 10]-[SW-3] | 2026-06-06 → 2027-01-30 (+238d) | 2026-06-18 → 2027-02-11 (+238d) |  | 16d → -187d |  | resources Labor/Helper [107.67 h]; Skilled Labor/Surveyor [53.84 h]; Excavator [96 h]; Reinforced concrete base With fence for Distribution substation in accordance with SEC Specifications [3.01] → Labor/Helper [96 h]; Skilled Labor/Surveyor [48 h]; Excavator [96 h]; Reinforced concrete base With fence for Distribution substation in accordance with SEC Specifications [1.5] |
| CO-R10.S03-WE-SL-180 | Installation Works for Panel Board Concrete Foundations of Street Lighting Network-[Road 10]-[SW-3] | 2026-06-13 → 2027-02-06 (+238d) | 2026-06-25 → 2027-02-18 (+238d) |  | 16d → -187d |  | resources Skilled Labor/Surveyor [11.22 h]; Foreman [11.22 h]; Excavator [96 h]; Water Tank [24 h] → Skilled Labor/Surveyor [10 h]; Foreman [10 h]; Excavator [96 h]; Water Tank [24 h] |
| CO-R10.S03-WE-SL-220 | A wall of concrete blocks to install the KWH meter of Street Lighting Network-[Road 10]-[SW-3] | 2026-06-13 → 2027-02-06 (+238d) | 2026-06-25 → 2027-02-18 (+238d) |  | 19d → -184d |  | resources Block Mason [107.67 h]; Road crossing ducts, 4 way (4 x 100mm PVC) [76.24]; Drawpit with medium duty steel cover, size 600x600x1000mm, Type 18 [3.01]; Drawpit with medium duty steel cover, size 900x900x1200mm, Type 4 [7.02]; Street Lighting Feeder pillars , Includes foundation and draw pits [3.01] → Block Mason [96 h]; Road crossing ducts, 4 way (4 x 100mm PVC) [53.63]; Drawpit with medium duty steel cover, size 600x600x1000mm, Type 18 [1.5]; Drawpit with medium duty steel cover, size 900x900x1200mm, Type 4 [5]; Street Lighting Feeder pillars , Includes foundation and draw pits [1.5] |
| CO-R10.S03-WE-SL-190 | Installation Works for Lighting Panel Boards of Street Lighting Network-[Road 10]-[SW-3] | 2026-06-16 → 2027-02-09 (+238d) | 2026-06-29 → 2027-02-23 (+239d) |  | 16d → -187d |  | resources Labor/Helper [107.67 h]; Electrician [107.67 h] → Labor/Helper [96 h]; Electrician [96 h] |
| TE | **Telecom Network** | 2026-06-17 → 2027-03-04 (+260d) | 2026-07-14 → 2027-04-04 (+264d) |  |  |  |  |
| PD | **Ducts Works** | 2026-06-17 → 2027-03-04 (+260d) | 2026-07-14 → 2027-04-04 (+264d) |  |  |  |  |
| CO-R10.S03-WE-TE-100 | Trench Excavation and Bedding Works for Ducts of Telecom Network-[Road 10]-[SW-3] | 2026-06-17 → 2027-03-04 (+260d) | 2026-06-20 → 2027-03-07 (+260d) |  | 0d → -221d |  | resources Skilled Labor/Surveyor [6.73 h]; Foreman [6.73 h]; Excavator [56 h]; 6-way ducts, 50mm dia. HDPE [64.2]; Road crossing ducts (6-way) [6.02] → Skilled Labor/Surveyor [6 h]; Foreman [6 h]; Excavator [56 h]; 6-way ducts, 50mm dia. HDPE [45]; Road crossing ducts (6-way) [4] |
| CO-R10.S03-WE-TE-110 | Pipes Laying Works for Ducts of Telecom Network-[Road 10]-[SW-3] | 2026-06-21 → 2027-03-08 (+260d) | 2026-06-28 → 2027-03-18 (+263d) |  | 0d → -215d |  | resources Labor/Helper [125.62 h]; Skilled Labor/Surveyor [6.73 h]; Foreman [6.73 h]; Plumber [62.81 h]; Excavator [56 h]; JCB [28 h]; Truck [56 h]; 6-way ducts, 50mm dia. HDPE [380.19]; Road crossing ducts (6-way) [33.1] → Labor/Helper [112 h]; Skilled Labor/Surveyor [6 h]; Foreman [6 h]; Plumber [56 h]; Excavator [56 h]; JCB [28 h]; Truck [56 h]; 6-way ducts, 50mm dia. HDPE [268]; Road crossing ducts (6-way) [23] |
| CO-R10.S03-WE-TE-120 | Pouring Plain Concrete Above Ducts of Telecom Network-[Road 10]-[SW-3] | 2026-06-29 → 2027-03-20 (+264d) | 2026-07-06 → 2027-03-27 (+264d) |  | 0d → -215d |  | resources Skilled Labor/Surveyor [6.73 h]; Foreman [6.73 h]; Cons. Carpenter [125.62 h]; Block Mason [62.81 h]; 6-way ducts, 50mm dia. HDPE [64.2]; Road crossing ducts (6-way) [6.02] → Skilled Labor/Surveyor [6 h]; Foreman [6 h]; Cons. Carpenter [112 h]; Block Mason [56 h]; 6-way ducts, 50mm dia. HDPE [45]; Road crossing ducts (6-way) [4] |
| CO-R10.S03-WE-TE-130 | Trench Backfilling and Compaction Works for Ducts of Telecom Network-[Road 10]-[SW-3] | 2026-07-07 → 2027-03-28 (+264d) | 2026-07-14 → 2027-04-04 (+264d) |  | 0d → -215d |  | resources Skilled Labor/Surveyor [6.73 h]; Foreman [6.73 h]; Excavator [56 h]; 6-way ducts, 50mm dia. HDPE [126.39]; Road crossing ducts (6-way) [11.03] → Skilled Labor/Surveyor [6 h]; Foreman [6 h]; Excavator [56 h]; 6-way ducts, 50mm dia. HDPE [89]; Road crossing ducts (6-way) [8] |
| MH | **Manholes Works** | 2026-06-21 → 2027-03-08 (+260d) | 2026-07-14 → 2027-04-04 (+264d) |  |  |  |  |
| CO-R10.S03-WE-TE-140 | Excavation Works for Manholes of Telecom Network-[Road 10]-[SW-3] | 2026-06-21 → 2027-03-08 (+260d) | 2026-06-28 → 2027-03-18 (+263d) |  | 0d → -221d |  | resources Skilled Labor/Surveyor [6.73 h]; Foreman [6.73 h]; Excavator [56 h]; Manhole Type 2 (2000x1000x1000) [1] → Skilled Labor/Surveyor [6 h]; Foreman [6 h]; Excavator [56 h]; Manhole Type 2 (2000x1000x1000) [0.7] |
| CO-R10.S03-WE-TE-150 | Installation Works for Manholes of Telecom Network-[Road 10]-[SW-3] | 2026-06-29 → 2027-03-20 (+264d) | 2026-07-06 → 2027-03-27 (+264d) |  | 7d → -212d |  | resources Skilled Labor/Surveyor [6.73 h]; Foreman [6.73 h]; Excavator [56 h]; Manhole Type 1 (2000x1000x1000) [1]; Manhole Type 2 (2000x1000x1000) [3.01] → Skilled Labor/Surveyor [6 h]; Foreman [6 h]; Excavator [56 h]; Manhole Type 1 (2000x1000x1000) [1]; Manhole Type 2 (2000x1000x1000) [2.1] |
| CO-R10.S03-WE-TE-160 | Backfilling Works for Manholes of Telecom Network-[Road 10]-[SW-3] | 2026-07-07 → 2027-03-28 (+264d) | 2026-07-14 → 2027-04-04 (+264d) |  | 7d → -212d |  | resources Skilled Labor/Surveyor [6.73 h]; Foreman [6.73 h]; Excavator [56 h]; Manhole Type 2 (2000x1000x1000) [1] → Skilled Labor/Surveyor [6 h]; Foreman [6 h]; Excavator [56 h]; Manhole Type 2 (2000x1000x1000) [0.7] |
| MV | **Medium Voltage Network** | 2026-07-11 → 2026-07-09 (-2d) | 2026-09-08 → 2027-04-18 (+222d) |  |  |  |  |
| CW | **Cabling Works** | 2026-07-11 → 2026-09-22 (+73d) | 2026-07-28 → 2027-04-18 (+264d) |  |  |  |  |
| CO-R10.S03-WE-MV-100 | Trench Excavation and Bedding Works for Medium Voltage Network-[Road 10]-[SW-3] | 2026-07-11 → 2026-09-22 A (+73d) | 2026-07-21 → 2027-04-11 (+264d) | 0% → 80% | 0d → -215d |  | resources Skilled Labor/Surveyor [17.1 h]; Foreman [17.1 h]; Excavator [144 h]; Excavation for Trench size 40cm wide and 80cm deep ( Maximum 1 cable 33kv) [282.88]; Excavation for Trench size 60cm wide and 80cm deep ( for Max two cables 33 kv) [16.05]; Excavation for Trench size 90cm wide and 80cm deep ( Maximum 3 cable 33kv) [72.23]; Excavation for Trench size 120cm wide and 80cm deep ( Maximum 4cable 33kv) [24.08]; Excavation for Trench size 150cm wide and 80cm deep ( Maximum 4cable 33kv) [91.29]; Duct bank for (2) 33 kv cables [10.03]; Duct bank for (4) 33 kv cables [64.2]; Duct bank for (6) 33 kv cables [30.09] → Skilled Labor/Surveyor [15 h]; Foreman [15 h]; Excavator [144 h]; Excavation for Trench size 40cm wide and 80cm deep ( Maximum 1 cable 33kv) [199.34]; Excavation for Trench size 60cm wide and 80cm deep ( for Max two cables 33 kv) [11.34]; Excavation for Trench size 90cm wide and 80cm deep ( Maximum 3 cable 33kv) [50.52]; Excavation for Trench size 120cm wide and 80cm deep ( Maximum 4cable 33kv) [17.19]; Excavation for Trench size 150cm wide and 80cm deep ( Maximum 4cable 33kv) [63.58]; Duct bank for (2) 33 kv cables [6.88]; Duct bank for (4) 33 kv cables [45.37]; Duct bank for (6) 33 kv cables [20.62] |
| CO-R10.S03-WE-MV-110 | Cable Laying Works for Medium Voltage Network-[Road 10]-[SW-3] | 2026-07-14 → 2026-09-22 A (+70d) | 2026-07-25 → 2027-04-14 (+263d) | 0% → 80% | 0d → -215d |  | resources Labor/Helper [91.19 h]; Electrician [638.96 h]; Low Current Technician [91.19 h]; 33kv 3Cx400 mmï¿½ Al XLPE / LLDPE /PVC Cable [1331.16]; 33kv 3Cx400 mmï¿½ Al XLPE /LLDPE/PVC [4.01] → Labor/Helper [288 h]; Electrician [288 h]; Low Current Technician [288 h]; 33kv 3Cx400 mm² Al XLPE / LLDPE /PVC Cable [938.25]; 33kv 3Cx400 mm² Al XLPE /LLDPE/PVC [2.8] |
| CO-R10.S03-WE-MV-120 | Trench Backfilling and Compaction Works for Medium Voltage Network-[Road 10]-[SW-3] | 2026-07-18 → 2026-09-22 A (+66d) | 2026-07-28 → 2027-04-18 (+264d) | 0% → 80% | 0d → -215d |  | resources Skilled Labor/Surveyor [17.1 h]; Foreman [17.1 h]; Excavator [144 h]; Water Tank [36 h]; 33kv 3Cx400 mmï¿½ Al XLPE / LLDPE /PVC Cable [570.78]; 33kv 3Cx400 mmï¿½ Al XLPE /LLDPE/PVC [1] → Skilled Labor/Surveyor [15 h]; Foreman [15 h]; Excavator [144 h]; Water Tank [36 h]; 33kv 3Cx400 mm² Al XLPE / LLDPE /PVC Cable [402.11]; 33kv 3Cx400 mm² Al XLPE /LLDPE/PVC [1.2] |
| SS | **RMU Works** | 2026-07-29 → 2026-07-09 (-20d) | 2026-09-08 → 2026-07-13 (-57d) |  |  |  |  |
| CO-R10.S03-WE-MV-130 | Foundation Excavation Works for RMU of Medium Voltage Network-[Road 10]-[SW-3] | 2026-07-29 → 2026-07-09 A (-20d) | 2026-08-09 → 2026-07-13 A (-27d) | 0% → 100% | 0d → none |  |  |
| CO-R10.S03-WE-MV-150 | Installation Works for RMU Concrete Foundations of Medium Voltage Network-[Road 10]-[SW-3] | 2026-08-10 → 2026-07-09 A (-32d) | 2026-08-20 → 2026-07-13 A (-38d) | 0% → 100% | 0d → none |  |  |
| CO-R10.S03-WE-MV-170 | Installation Works for RMU of Medium Voltage Network-[Road 10]-[SW-3] | 2026-08-22 → 2026-07-09 A (-44d) | 2026-08-27 → 2026-07-13 A (-45d) | 0% → 100% | 0d → none |  |  |
| CO-R10.S03-WE-MV-180 | Termination Works for RMU of Medium Voltage Network-[Road 10]-[SW-3] | 2026-08-29 → 2026-07-09 A (-51d) | 2026-09-02 → 2026-07-13 A (-51d) | 0% → 100% | 0d → none |  |  |
| CO-R10.S03-WE-MV-190 | Testing Works for RMU of Medium Voltage Network-[Road 10]-[SW-3] | 2026-09-03 → 2026-07-09 A (-56d) | 2026-09-08 → 2026-07-13 A (-57d) | 0% → 100% | 0d → none |  |  |
| RD | **Road Works** | 2026-07-21 → 2026-08-25 (+35d) | 2026-09-29 → 2027-06-19 (+263d) |  |  |  |  |
| RD | **Pre-Bituminous Construction** | 2026-07-21 → 2027-04-08 (+261d) | 2026-08-13 → 2027-05-02 (+262d) |  |  |  |  |
| CO-R10.S03-WE-RD-100 | Capping and Subgrade Layer for Road Works-[Road 10]-[SW-3] | 2026-07-21 → 2027-04-08 (+261d) | 2026-08-03 → 2027-04-21 (+261d) |  | 3d → -215d |  | resources Labor/Helper [326.85 h]; Skilled Labor/Surveyor [136.99 h]; Loader [144 h]; Grader [144 h]; Road Roller [144 h]; Water Tank [144 h]; 300mm capping layer underneath subgrade , CBR?15% [4813.03]; 300mm thick Subgrade, including subgrade preparation, CBR?25% [4813.03] → Labor/Helper [288 h]; Skilled Labor/Surveyor [144 h]; Loader [144 h]; Grader [144 h]; Road Roller [144 h]; Water Tank [144 h]; 300mm capping layer underneath subgrade , CBR?15% [3390.73]; 300mm thick Subgrade, including subgrade preparation, CBR?25% [3390.73] |
| CO-R10.S03-WE-RD-110 | Aggregate Base Course Layer for Road Works-[Road 10]-[SW-3] | 2026-07-25 → 2027-04-12 (+261d) | 2026-08-13 → 2027-05-02 (+262d) |  | 3d → -193d |  | resources Labor/Helper [323.01 h]; Skilled Labor/Surveyor [135.38 h]; Foreman [161.51 h]; Loader [144 h]; Grader [144 h]; Road Roller [144 h]; Aggregate base course 200mm thick after compaction in two layers(Grading 1); CBR?80%; including watering, compaction and testing [3209.02] → Labor/Helper [288 h]; Skilled Labor/Surveyor [144 h]; Foreman [144 h]; Loader [144 h]; Grader [144 h]; Road Roller [144 h]; Aggregate base course 200mm thick after compaction in two layers(Grading 1); CBR?80%; including watering, compaction and testing [2260.72] |
| LS | **Pavement Works** | 2026-07-28 → 2026-08-25 (+28d) | 2026-09-29 → 2027-06-19 (+263d) |  |  |  |  |
| CO-R10.S03-WE-RD-120 | Fixing of Curbstone for Sidewalks Pavement-[Road 10]-[SW-3] | 2026-07-28 → 2026-08-25 A (+28d) | 2026-08-17 → 2026-08-31 A (+14d) | 0% → 100% | 3d → none |  | resources Labor/Helper [612.48 h]; Block Mason [1837.44 h]; Precast Concrete Kerb, Type K1 [1775.55]; Precast Concrete Kerb, Type L1 [3523] → Labor/Helper [288 h]; Block Mason [864 h]; Precast Concrete Kerb, Type K1 [1250.99]; Precast Concrete Kerb, Type L1 [2482.11] |
| CO-R10.S03-WE-RD-130 | Fixing of Interlock Tiles for Sidewalks Pavement-[Road 10]-[SW-3] | 2026-09-17 → 2026-08-25 A (-23d) | 2026-09-29 → 2027-06-19 (+263d) | 0% → 50% | 0d → -216d |  | resources Labor/Helper [844.9 h]; Block Mason [2534.69 h]; Interlocking block pavers for sidewalk/footpath 60mm thick on and including 30mm Sand Bedding, 200mm Aggregate subbase, all in accordance with authority standards and complete as per specifications [3170.9]; Extraover for Pedestrian ramps [8.03] → Labor/Helper [432 h]; Block Mason [1296 h]; Interlocking block pavers for sidewalk/footpath 60mm thick on and including 30mm Sand Bedding, 200mm Aggregate subbase, all in accordance with authority standards and complete as per specifications [2233.91]; Extraover for Pedestrian ramps [5.5] |
| 2 | **SW-4** | 2025-05-31 → 2025-04-01 (-60d) | 2026-10-01 → 2027-06-21 (+263d) |  |  |  |  |
| SW_4 | **SW_4-East** | 2025-05-31 → 2025-04-01 (-60d) | 2026-09-29 → 2027-06-19 (+263d) |  |  |  |  |
| EW | **Earthworks** | 2025-05-31 → 2025-04-01 (-60d) | 2025-06-26 → 2025-04-13 (-74d) |  |  |  |  |
| EW | **Earthworks** | 2025-05-31 → 2025-04-01 (-60d) | 2025-06-26 → 2025-04-13 (-74d) |  |  |  |  |
| CO-R10.S04-ES-EW-100 | Roadway Excavation Works Upto Design Level for Earthworks-[Road 10]-[SW-4] | 2025-05-31 → 2025-04-01 A (-60d) | 2025-06-15 → 2025-04-12 A (-64d) | 0% → 100% | 11d → none |  | resources Labor/Helper [218.86 h]; Skilled Labor/Surveyor [27.36 h]; Foreman [27.36 h]; Water Tank [192 h]; Dozer [192 h]; Roadway Excavation for cuttings; on any type of material for all depths including trimming and Preparation of excavated surfaces and disposal. [22656.8] → Labor/Helper [192 h]; Skilled Labor/Surveyor [24 h]; Foreman [24 h]; Water Tank [192 h]; Dozer [192 h]; Roadway Excavation for cuttings; on any type of material for all depths including trimming and Preparation of excavated surfaces and disposal. [15964.1] |
| CO-R10.S04-ES-EW-110 | Embankments Works Upto Design Level for Earthworks-[Road 10]-[SW-4] | 2025-06-16 → 2025-04-01 A (-76d) | 2025-06-26 → 2025-04-13 A (-74d) | 0% → 100% | 17d → none |  | resources Labor/Helper [547.15 h]; Skilled Labor/Surveyor [68.39 h]; Foreman [68.39 h]; Water Tank [480 h]; Dozer [480 h]; Embankments to the ROW, with suitable material other than top soil or rock according to specifications [38141.1] → Labor/Helper [480 h]; Skilled Labor/Surveyor [60 h]; Foreman [60 h]; Water Tank [480 h]; Dozer [480 h]; Embankments to the ROW, with suitable material other than top soil or rock according to specifications [26873.7] |
| SW | **Sewage Network** | 2025-06-28 → 2025-08-17 (+50d) | 2025-08-05 → 2026-10-06 (+427d) |  |  |  |  |
| ML | **Main Line Sections** | 2025-06-28 → 2025-08-17 (+50d) | 2025-08-05 → 2025-08-28 (+23d) |  |  |  |  |
| CO-R10.S04-ES-SW-100 | Trench Excavation and Bedding Works for Main Lines of Sewage Network-[Road 10]-[SW-4] | 2025-06-28 → 2025-08-17 A (+50d) | 2025-07-08 → 2025-08-20 A (+43d) | 0% → 100% | 17d → none |  | resources Labor/Helper [109.43 h]; Foreman [109.43 h]; Excavator [96 h]; Depth : 1.5 - 2.5m [21.07]; Depth : 2.5 - 3.5m [13.04]; Depth : 3.5 - 4.5m [13.04]; Depth : 5.5 - 6.5m [71.22]; Depth : 6.5 -7.5m [57.18]; Depth : 6.5 -7.5m [21.07]; Depth :more than 7.5m [14.04] → Labor/Helper [96 h]; Foreman [96 h]; Excavator [96 h]; Depth : 1.5 - 2.5m [15]; Depth : 2.5 - 3.5m [8.89]; Depth : 3.5 - 4.5m [8.89]; Depth : 5.5 - 6.5m [50]; Depth : 6.5 -7.5m [40]; Depth : 6.5 -7.5m [15]; Depth :more than 7.5m [10] |
| CO-R10.S04-ES-SW-120 | Pipes Laying Works for Main Lines of Sewage Network-[Road 10]-[SW-4] | 2025-07-09 → 2025-08-21 A (+43d) | 2025-07-22 → 2025-08-24 A (+33d) | 0% → 100% | 25d → none |  | resources Labor/Helper [218.86 h]; Skilled Labor/Surveyor [11.4 h]; Foreman [11.4 h]; Plumber [109.43 h]; Excavator [96 h]; Depth : 1.5 - 2.5m [64.2]; Depth : 2.5 - 3.5m [38.12]; Depth : 3.5 - 4.5m [38.12]; Depth : 5.5 - 6.5m [212.66]; Depth : 6.5 -7.5m [170.53]; Depth : 6.5 -7.5m [64.2]; Depth :more than 7.5m [42.13] → Labor/Helper [192 h]; Skilled Labor/Surveyor [10 h]; Foreman [10 h]; Plumber [96 h]; Excavator [96 h]; Depth : 1.5 - 2.5m [45]; Depth : 2.5 - 3.5m [26.66]; Depth : 3.5 - 4.5m [26.66]; Depth : 5.5 - 6.5m [150]; Depth : 6.5 -7.5m [120]; Depth : 6.5 -7.5m [45]; Depth :more than 7.5m [30] |
| CO-R10.S04-ES-SW-130 | Trench Backfilling and Compaction Works for Main Lines of Sewage Network-[Road 10]-[SW-4] | 2025-07-23 → 2025-08-25 A (+33d) | 2025-08-05 → 2025-08-28 A (+23d) | 0% → 100% | 25d → none | CO-R10.S04-ES-SW-120, CO-R10.S04-ES-SW-210 FF → CO-R10.S04-ES-SW-120 | resources Skilled Labor/Surveyor [11.4 h]; Foreman [11.4 h]; Excavator [96 h]; Depth : 1.5 - 2.5m [11.03]; Depth : 2.5 - 3.5m [6.02]; Depth : 3.5 - 4.5m [6.02]; Depth : 5.5 - 6.5m [35.11]; Depth : 6.5 -7.5m [28.09]; Depth : 6.5 -7.5m [11.03]; Depth :more than 7.5m [7.02] → Skilled Labor/Surveyor [10 h]; Foreman [10 h]; Excavator [96 h]; Depth : 1.5 - 2.5m [7.5]; Depth : 2.5 - 3.5m [4.44]; Depth : 3.5 - 4.5m [4.44]; Depth : 5.5 - 6.5m [25]; Depth : 6.5 -7.5m [20]; Depth : 6.5 -7.5m [7.5]; Depth :more than 7.5m [5] |
| 1 | **Manholes** | 2025-07-09 → 2025-11-06 (+120d) | 2025-07-23 → 2026-10-06 (+440d) |  |  |  |  |
| CO-R10.S04-ES-SW-160 | Excavation Works for Main Line Manholes of Sewage Network-[Road 10]-[SW-4] | 2025-07-09 → 2025-11-06 A (+120d) | 2025-07-09 → 2025-11-13 A (+127d) | 0% → 100% | 36d → none |  | resources Labor/Helper [23.13 h]; Skilled Labor/Surveyor [9.12 h]; Excavator [16 h]; Depth: 1.5 - 2.5m [0.3]; Depth: 2.5 - 3.5m [1]; Depth: 3.5 - 4.5m [0.07]; Depth: 4.5 - 5.5m [0.15]; Depth: 5.5 - 6.5m [0.23]; Depth:6.5 - 7.5m [0.3] → Labor/Helper [16 h]; Skilled Labor/Surveyor [8 h]; Excavator [16 h]; Depth: 1.5 - 2.5m [0.3]; Depth: 2.5 - 3.5m [0.75]; Depth: 3.5 - 4.5m [0.07]; Depth: 4.5 - 5.5m [0.15]; Depth: 5.5 - 6.5m [0.23]; Depth:6.5 - 7.5m [0.3] |
| CO-R10.S04-ES-SW-170 | Installation RC Footing Works for Main Line Manholes of Sewage Network-[Road 10]-[SW-4] | 2025-07-10 → 2025-11-06 A (+119d) | 2025-07-12 → 2025-11-16 A (+127d) | 0% → 100% | 36d → none |  | resources Cons. Carpenter [72.95 h]; Steel Fixer [72.95 h]; Depth: 1.5 - 2.5m [0.2]; Depth: 2.5 - 3.5m [1]; Depth: 3.5 - 4.5m [0.05]; Depth: 4.5 - 5.5m [0.1]; Depth: 5.5 - 6.5m [0.15]; Depth:6.5 - 7.5m [0.2] → Cons. Carpenter [64 h]; Steel Fixer [64 h]; Depth: 1.5 - 2.5m [0.2]; Depth: 2.5 - 3.5m [0.5]; Depth: 3.5 - 4.5m [0.05]; Depth: 4.5 - 5.5m [0.1]; Depth: 5.5 - 6.5m [0.15]; Depth:6.5 - 7.5m [0.2] |
| CO-R10.S04-ES-SW-180 | Install Grp Liner Wall Works for Main Line Manholes of Sewage Network-[Road 10]-[SW-4] | 2025-07-13 → 2025-11-06 A (+116d) | 2025-07-16 → 2025-11-17 A (+124d) | 0% → 100% | 36d → none |  | resources Labor/Helper [72.95 h]; Plumber [72.95 h]; Depth: 1.5 - 2.5m [1]; Depth: 2.5 - 3.5m [3.01]; Depth: 3.5 - 4.5m [0.2]; Depth: 4.5 - 5.5m [0.4]; Depth: 5.5 - 6.5m [1]; Depth:6.5 - 7.5m [1] → Labor/Helper [64 h]; Plumber [64 h]; Depth: 1.5 - 2.5m [0.8]; Depth: 2.5 - 3.5m [2]; Depth: 3.5 - 4.5m [0.2]; Depth: 4.5 - 5.5m [0.4]; Depth: 5.5 - 6.5m [0.6]; Depth:6.5 - 7.5m [0.8] |
| CO-R10.S04-ES-SW-190 | Pouring Grp Liner Wall Works for Main Line Manholes of Sewage Network-[Road 10]-[SW-4] | 2025-07-17 → 2025-11-06 A (+112d) | 2025-07-17 → 2025-11-20 A (+126d) | 0% → 100% | 36d → none |  | resources Cons. Carpenter [36.48 h]; Steel Fixer [36.48 h]; Depth: 1.5 - 2.5m [0.1]; Depth: 2.5 - 3.5m [0.25]; Depth: 3.5 - 4.5m [0.03]; Depth: 4.5 - 5.5m [0.05]; Depth: 5.5 - 6.5m [0.07]; Depth:6.5 - 7.5m [0.1] → Cons. Carpenter [32 h]; Steel Fixer [32 h]; Depth: 1.5 - 2.5m [0.1]; Depth: 2.5 - 3.5m [0.25]; Depth: 3.5 - 4.5m [0.03]; Depth: 4.5 - 5.5m [0.05]; Depth: 5.5 - 6.5m [0.07]; Depth:6.5 - 7.5m [0.1] |
| CO-R10.S04-ES-SW-200 | Backfilling Works for Main Line Manholes of Sewage Network-[Road 10]-[SW-4] | 2025-07-19 → 2025-11-06 A (+110d) | 2025-07-22 → 2025-11-21 A (+122d) | 0% → 100% | 36d → none |  | resources Labor/Helper [72.95 h]; Skilled Labor/Surveyor [36.48 h]; Excavator [64 h]; Depth: 1.5 - 2.5m [0.3]; Depth: 2.5 - 3.5m [1]; Depth: 3.5 - 4.5m [0.07]; Depth: 4.5 - 5.5m [0.15]; Depth: 5.5 - 6.5m [0.23]; Depth:6.5 - 7.5m [0.3] → Labor/Helper [64 h]; Skilled Labor/Surveyor [32 h]; Excavator [64 h]; Depth: 1.5 - 2.5m [0.3]; Depth: 2.5 - 3.5m [0.75]; Depth: 3.5 - 4.5m [0.07]; Depth: 4.5 - 5.5m [0.15]; Depth: 5.5 - 6.5m [0.23]; Depth:6.5 - 7.5m [0.3] |
| CO-R10.S04-ES-SW-210 | Testing Works for Main Line Manholes of Sewage Network-[Road 10]-[SW-4] | 2025-07-23 → 2026-10-06 (+440d) | 2025-07-23 → 2026-10-06 (+440d) |  | 36d → -59d |  | resources Labor/Helper [18.24 h]; Plumber [18.24 h]; Depth: 1.5 - 2.5m [0.1]; Depth: 2.5 - 3.5m [0.25]; Depth: 3.5 - 4.5m [0.03]; Depth: 4.5 - 5.5m [0.05]; Depth: 5.5 - 6.5m [0.07]; Depth:6.5 - 7.5m [0.1] → Labor/Helper [16 h]; Plumber [16 h]; Depth: 1.5 - 2.5m [0.1]; Depth: 2.5 - 3.5m [0.25]; Depth: 3.5 - 4.5m [0.03]; Depth: 4.5 - 5.5m [0.05]; Depth: 5.5 - 6.5m [0.07]; Depth:6.5 - 7.5m [0.1] |
| SD | **Storm Drainage Network** | 2025-08-27 → 2025-08-25 (-2d) | 2026-01-26 → 2026-10-17 (+264d) |  |  |  |  |
| ML | **Main Line Sections** | 2025-08-27 → 2025-08-25 (-2d) | 2026-01-03 → 2025-09-07 (-118d) |  |  |  |  |
| CO-R10.S04-ES-SD-100 | Trench Excavation and Bedding Works for Main Lines of Storm Drainage Network-[Road 10]-[SW-4] | 2025-08-27 → 2025-08-25 A (-2d) | 2025-09-07 → 2025-08-28 A (-10d) | 0% → 100% | 0d → none |  | resources Skilled Labor/Surveyor [13.68 h]; Foreman [13.68 h]; Excavator [120 h]; Pipe with diameter 400mm ; depth: 0.0m - 1.5m [62.19]; Pipe with diameter 400mm ; depth: 1.51m - 2.5m [79.25]; Pipe with diameter 500mm ; depth: 1.51m - 2.5m [34.11]; Pipe with diameter 600mm ; depth: 1.51m - 2.5m [28.09]; Pipe with diameter 700mm ; depth: 0.0m - 1.5m [7.02]; Pipe with diameter 700mm ; depth: 1.51m - 2.5m [51.16]; Pipe with diameter 800mm ; depth: 1.51m - 2.5m [64.2]; Pipe with diameter 900mm ; depth: 1.51m - 2.5m [33.1]; Pipe with diameter 1000mm ; depth: 0.0m - 1.5m [7.02]; Pipe with diameter 1100mm ; depth: 0.0m - 1.5m [7.02] → Skilled Labor/Surveyor [12 h]; Foreman [12 h]; Excavator [120 h]; Pipe with diameter 400mm ; depth: 0.0m - 1.5m [43.8]; Pipe with diameter 400mm ; depth: 1.51m - 2.5m [55.9]; Pipe with diameter 500mm ; depth: 1.51m - 2.5m [24.2]; Pipe with diameter 600mm ; depth: 1.51m - 2.5m [19.65]; Pipe with diameter 700mm ; depth: 0.0m - 1.5m [5]; Pipe with diameter 700mm ; depth: 1.51m - 2.5m [36.06]; Pipe with diameter 800mm ; depth: 1.51m - 2.5m [45.02]; Pipe with diameter 900mm ; depth: 1.51m - 2.5m [23.18]; Pipe with diameter 1000mm ; depth: 0.0m - 1.5m [5]; Pipe with diameter 1100mm ; depth: 0.0m - 1.5m [5] |
| CO-R10.S04-ES-SD-120 | Pipes Laying Works for Main Lines of Storm Drainage Network-[Road 10]-[SW-4] | 2025-12-11 → 2025-08-30 A (-103d) | 2025-12-22 → 2025-09-03 A (-110d) | 0% → 100% | 0d → none |  | resources Labor/Helper [273.57 h]; Skilled Labor/Surveyor [13.68 h]; Foreman [13.68 h]; Plumber [136.79 h]; Excavator [120 h]; Pipe with diameter 400mm ; depth: 0.0m - 1.5m [185.58]; Pipe with diameter 400mm ; depth: 1.51m - 2.5m [238.75]; Pipe with diameter 500mm ; depth: 1.51m - 2.5m [103.32]; Pipe with diameter 600mm ; depth: 1.51m - 2.5m [83.26]; Pipe with diameter 700mm ; depth: 0.0m - 1.5m [21.07]; Pipe with diameter 700mm ; depth: 1.51m - 2.5m [153.48]; Pipe with diameter 800mm ; depth: 1.51m - 2.5m [191.6]; Pipe with diameter 900mm ; depth: 1.51m - 2.5m [99.31]; Pipe with diameter 1000mm ; depth: 0.0m - 1.5m [21.07]; Pipe with diameter 1100mm ; depth: 0.0m - 1.5m [21.07] → Labor/Helper [240 h]; Skilled Labor/Surveyor [12 h]; Foreman [12 h]; Plumber [120 h]; Excavator [120 h]; Pipe with diameter 400mm ; depth: 0.0m - 1.5m [131.39]; Pipe with diameter 400mm ; depth: 1.51m - 2.5m [167.69]; Pipe with diameter 500mm ; depth: 1.51m - 2.5m [72.6]; Pipe with diameter 600mm ; depth: 1.51m - 2.5m [58.94]; Pipe with diameter 700mm ; depth: 0.0m - 1.5m [15]; Pipe with diameter 700mm ; depth: 1.51m - 2.5m [108.18]; Pipe with diameter 800mm ; depth: 1.51m - 2.5m [135.05]; Pipe with diameter 900mm ; depth: 1.51m - 2.5m [69.54]; Pipe with diameter 1000mm ; depth: 0.0m - 1.5m [15]; Pipe with diameter 1100mm ; depth: 0.0m - 1.5m [15] |
| CO-R10.S04-ES-SD-130 | Trench Backfilling and Compaction Works for Main Lines of Storm Drainage Network-[Road 10]-[SW-4] | 2025-12-23 → 2025-09-04 A (-110d) | 2026-01-03 → 2025-09-07 A (-118d) | 0% → 100% | 0d → none | CO-R10.S04-ES-SD-120 SS+3d, CO-R10.S04-ES-SD-120 FF+3d, CO-R10.S04-ES-SD-120, CO-R10.S04-ES-SD-220 FF → CO-R10.S04-ES-SD-120 | resources Skilled Labor/Surveyor [13.68 h]; Foreman [13.68 h]; Excavator [120 h]; Pipe with diameter 400mm ; depth: 0.0m - 1.5m [31.1]; Pipe with diameter 400mm ; depth: 1.51m - 2.5m [40.13]; Pipe with diameter 500mm ; depth: 1.51m - 2.5m [17.05]; Pipe with diameter 600mm ; depth: 1.51m - 2.5m [14.04]; Pipe with diameter 700mm ; depth: 0.0m - 1.5m [4.01]; Pipe with diameter 700mm ; depth: 1.51m - 2.5m [25.08]; Pipe with diameter 800mm ; depth: 1.51m - 2.5m [33.1]; Pipe with diameter 900mm ; depth: 1.51m - 2.5m [17.05]; Pipe with diameter 1000mm ; depth: 0.0m - 1.5m [4.01]; Pipe with diameter 1100mm ; depth: 0.0m - 1.5m [4.01] → Skilled Labor/Surveyor [12 h]; Foreman [12 h]; Excavator [120 h]; Pipe with diameter 400mm ; depth: 0.0m - 1.5m [21.9]; Pipe with diameter 400mm ; depth: 1.51m - 2.5m [27.95]; Pipe with diameter 500mm ; depth: 1.51m - 2.5m [12.1]; Pipe with diameter 600mm ; depth: 1.51m - 2.5m [9.82]; Pipe with diameter 700mm ; depth: 0.0m - 1.5m [2.5]; Pipe with diameter 700mm ; depth: 1.51m - 2.5m [18.03]; Pipe with diameter 800mm ; depth: 1.51m - 2.5m [22.51]; Pipe with diameter 900mm ; depth: 1.51m - 2.5m [11.59]; Pipe with diameter 1000mm ; depth: 0.0m - 1.5m [2.5]; Pipe with diameter 1100mm ; depth: 0.0m - 1.5m [2.5] |
| MH | **Manholes** | 2025-12-11 → 2026-03-17 (+96d) | 2025-12-27 → 2026-10-06 (+283d) |  |  |  |  |
| CO-R10.S04-ES-SD-180 | Trench Excavation and Bedding Works for Manholes of Storm Drainage Network-[Road 10]-[SW-4] | 2025-12-11 → 2026-03-17 A (+96d) | 2025-12-11 → 2026-03-17 A (+96d) | 0% → 100% | 6d → none |  | resources Labor/Helper [27.36 h]; Skilled Labor/Surveyor [13.68 h]; Excavator [24 h]; MH ; depth: 0.0m - 1.5m [0.23]; MH ; depth: 1.51m - 2.5m [1]; MH ; depth: 0.0m - 1.5m [0.15]; MH ; depth: 0.0m - 1.5m [0.07]; MH ; depth: 1.51m - 2.5m [0.23]; MH ; depth: 2.51 - 3.5m [0.3]; MH ; depth: 3.51 - 4.5m [0.15] → Labor/Helper [24 h]; Skilled Labor/Surveyor [12 h]; Excavator [24 h]; MH ; depth: 0.0m - 1.5m [0.23]; MH ; depth: 1.51m - 2.5m [0.6]; MH ; depth: 0.0m - 1.5m [0.15]; MH ; depth: 0.0m - 1.5m [0.07]; MH ; depth: 1.51m - 2.5m [0.23]; MH ; depth: 2.51 - 3.5m [0.3]; MH ; depth: 3.51 - 4.5m [0.15] |
| CO-R10.S04-ES-SD-190 | Install RC Footing Works for Manholes of Storm Drainage Network-[Road 10]-[SW-4] | 2025-12-13 → 2026-03-18 A (+95d) | 2025-12-13 → 2026-03-18 A (+95d) | 0% → 100% | 6d → none |  | resources Cons. Carpenter [54.71 h]; Steel Fixer [54.71 h]; MH ; depth: 0.0m - 1.5m [0.07]; MH ; depth: 1.51m - 2.5m [0.2]; MH ; depth: 0.0m - 1.5m [0.05]; MH ; depth: 0.0m - 1.5m [0.03]; MH ; depth: 1.51m - 2.5m [0.07]; MH ; depth: 2.51 - 3.5m [0.1]; MH ; depth: 3.51 - 4.5m [0.05] → Cons. Carpenter [48 h]; Steel Fixer [48 h]; MH ; depth: 0.0m - 1.5m [0.07]; MH ; depth: 1.51m - 2.5m [0.2]; MH ; depth: 0.0m - 1.5m [0.05]; MH ; depth: 0.0m - 1.5m [0.03]; MH ; depth: 1.51m - 2.5m [0.07]; MH ; depth: 2.51 - 3.5m [0.1]; MH ; depth: 3.51 - 4.5m [0.05] |
| CO-R10.S04-ES-SD-200 | Install RC Wall Rings & Slab Works for Manholes of Storm Drainage Network-[Road 10]-[SW-4] | 2025-12-14 → 2026-03-19 A (+95d) | 2025-12-17 → 2026-03-26 A (+99d) | 0% → 100% | 6d → none |  | resources Cons. Carpenter [218.86 h]; Steel Fixer [218.86 h]; MH ; depth: 0.0m - 1.5m [1]; MH ; depth: 1.51m - 2.5m [3.01]; MH ; depth: 0.0m - 1.5m [0.45]; MH ; depth: 0.0m - 1.5m [0.23]; MH ; depth: 1.51m - 2.5m [1]; MH ; depth: 2.51 - 3.5m [1]; MH ; depth: 3.51 - 4.5m [0.45] → Cons. Carpenter [192 h]; Steel Fixer [192 h]; MH ; depth: 0.0m - 1.5m [0.68]; MH ; depth: 1.51m - 2.5m [1.8]; MH ; depth: 0.0m - 1.5m [0.45]; MH ; depth: 0.0m - 1.5m [0.23]; MH ; depth: 1.51m - 2.5m [0.68]; MH ; depth: 2.51 - 3.5m [0.9]; MH ; depth: 3.51 - 4.5m [0.45] |
| CO-R10.S04-ES-SD-220 | Backfilling Works for Manholes of Storm Drainage Network-[Road 10]-[SW-4] | 2025-12-20 → 2026-03-28 A (+98d) | 2025-12-27 → 2026-04-04 A (+98d) | 0% → 100% | 6d → none | CO-R10.S04-ES-SD-210 → CO-R10.S04-ES-SD-200 | resources Labor/Helper [127.67 h]; Skilled Labor/Surveyor [63.83 h]; Excavator [112 h]; MH ; depth: 0.0m - 1.5m [0.3]; MH ; depth: 1.51m - 2.5m [1]; MH ; depth: 0.0m - 1.5m [0.2]; MH ; depth: 0.0m - 1.5m [0.1]; MH ; depth: 1.51m - 2.5m [0.3]; MH ; depth: 2.51 - 3.5m [0.4]; MH ; depth: 3.51 - 4.5m [0.2] → Labor/Helper [112 h]; Skilled Labor/Surveyor [56 h]; Excavator [112 h]; MH ; depth: 0.0m - 1.5m [0.3]; MH ; depth: 1.51m - 2.5m [0.8]; MH ; depth: 0.0m - 1.5m [0.2]; MH ; depth: 0.0m - 1.5m [0.1]; MH ; depth: 1.51m - 2.5m [0.3]; MH ; depth: 2.51 - 3.5m [0.4]; MH ; depth: 3.51 - 4.5m [0.2] |
| CO-R10.S04-ES-SD-210 | Testing Works for Manholes of Storm Drainage Network-[Road 10]-[SW-4] | 2025-12-18 → 2026-10-06 (+292d) | 2025-12-18 → 2026-10-06 (+292d) |  | 6d → -28d | CO-R10.S04-ES-SD-200 → CO-R10.S04-ES-SD-200, CO-R10.S04-ES-SD-220 | resources Labor/Helper [27.36 h]; Plumber [27.36 h]; MH ; depth: 0.0m - 1.5m [0.15]; MH ; depth: 1.51m - 2.5m [0.4]; MH ; depth: 0.0m - 1.5m [0.1]; MH ; depth: 0.0m - 1.5m [0.05]; MH ; depth: 1.51m - 2.5m [0.15]; MH ; depth: 2.51 - 3.5m [0.2]; MH ; depth: 3.51 - 4.5m [0.1] → Labor/Helper [24 h]; Plumber [24 h]; MH ; depth: 0.0m - 1.5m [0.15]; MH ; depth: 1.51m - 2.5m [0.4]; MH ; depth: 0.0m - 1.5m [0.1]; MH ; depth: 0.0m - 1.5m [0.05]; MH ; depth: 1.51m - 2.5m [0.15]; MH ; depth: 2.51 - 3.5m [0.2]; MH ; depth: 3.51 - 4.5m [0.1] |
| CB | **Catch Basin Sections** | 2025-12-28 → 2025-09-06 (-113d) | 2026-01-26 → 2026-10-17 (+264d) |  |  |  |  |
| CO-R10.S04-ES-SD-140 | Trench Excavation and Bedding Works for Catch Basins of Storm Drainage Network-[Road 10]-[SW-4] | 2025-12-28 → 2025-09-06 A (-113d) | 2026-01-03 → 2025-09-08 A (-117d) | 0% → 100% | 14d → none | CO-R10.S04-ES-EW-110, CO-R10.S04-ES-SD-220 → CO-R10.S04-ES-EW-110 | resources Skilled Labor/Surveyor [5.7 h]; Foreman [5.7 h]; Excavator [48 h]; Pipe with diameter 300mm ; depth: 0 - 1.5m [120.38]; Pipe with diameter 400mm ; depth: 0 - 1.5m [7.02] → Skilled Labor/Surveyor [5 h]; Foreman [5 h]; Excavator [48 h]; Pipe with diameter 300mm ; depth: 0 - 1.5m [84.55]; Pipe with diameter 400mm ; depth: 0 - 1.5m [5.16] |
| CO-R10.S04-ES-SD-150 | Installation and Pipes Laying Connection Works for Catch Basins of Storm Drainage Network-[Road 10]-[SW-4] | 2026-01-04 → 2025-09-09 A (-117d) | 2026-01-11 → 2025-09-11 A (-122d) | 0% → 100% | 14d → none |  | resources Labor/Helper [255.34 h]; Skilled Labor/Surveyor [13.68 h]; Foreman [13.68 h]; Excavator [112 h]; Pipe with diameter 300mm ; depth: 0 - 1.5m [360.12]; Pipe with diameter 400mm ; depth: 0 - 1.5m [21.07] → Labor/Helper [224 h]; Skilled Labor/Surveyor [12 h]; Foreman [12 h]; Excavator [112 h]; Pipe with diameter 300mm ; depth: 0 - 1.5m [253.63]; Pipe with diameter 400mm ; depth: 0 - 1.5m [15.47] |
| CO-R10.S04-ES-SD-170 | Trench Backfilling and Compaction Works for Catch Basins of Storm Drainage Network-[Road 10]-[SW-4] | 2026-01-19 → 2025-09-13 A (-128d) | 2026-01-26 → 2025-09-15 A (-133d) | 0% → 100% | 14d → none | CO-R10.S04-ES-SD-160 SS+3d, CO-R10.S04-ES-SD-160 FF+3d → CO-R10.S04-ES-SD-150 | resources Skilled Labor/Surveyor [6.84 h]; Foreman [6.84 h]; Excavator [56 h]; Pipe with diameter 300mm ; depth: 0 - 1.5m [160.5]; Pipe with diameter 400mm ; depth: 0 - 1.5m [10.03] → Skilled Labor/Surveyor [6 h]; Foreman [6 h]; Excavator [56 h]; Pipe with diameter 300mm ; depth: 0 - 1.5m [112.73]; Pipe with diameter 400mm ; depth: 0 - 1.5m [6.87] |
| CO-R10.S04-ES-SD-160 | Testing Works for Catch Basins of Storm Drainage Network-[Road 10]-[SW-4] | 2026-01-12 → 2026-10-06 (+267d) | 2026-01-22 → 2026-10-17 (+268d) |  | 14d → -37d |  | resources Labor/Helper [182.38 h]; Skilled Labor/Surveyor [9.12 h]; Foreman [9.12 h]; Plumber [91.19 h]; Excavator [80 h]; Pipe with diameter 300mm ; depth: 0 - 1.5m [79.25]; Pipe with diameter 400mm ; depth: 0 - 1.5m [4.01] → Labor/Helper [160 h]; Skilled Labor/Surveyor [8 h]; Foreman [8 h]; Plumber [80 h]; Excavator [80 h]; Pipe with diameter 300mm ; depth: 0 - 1.5m [56.36]; Pipe with diameter 400mm ; depth: 0 - 1.5m [3.44] |

| ID | Task | Start | Finish | Complete | Total float | Predecessors | Other |
| --- | --- | --- | --- | --- | --- | --- | --- |
| PW | **Potable Water Network** | 2026-01-04 → 2025-10-01 (-95d) | 2026-02-11 → 2027-01-02 (+325d) |  |  |  |  |
| ML | **Main Line Sections** | 2026-01-04 → 2025-10-01 (-95d) | 2026-02-11 → 2025-10-07 (-127d) |  |  |  |  |
| CO-R10.S04-ES-PW-100 | Trench Excavation and Bedding Works for Main Lines of Potable Water Network-[Road 10]-[SW-4] | 2026-01-04 → 2025-10-01 A (-95d) | 2026-01-14 → 2025-10-07 A (-99d) | 0% → 100% | 0d → none |  | resources Skilled Labor/Surveyor [9.12 h]; Foreman [9.12 h]; Excavator [80 h]; Pipe with diameter 560mm; in depth 1.5m - 3.0m [170.53]; Pipe with diameter 630mm; in depth 1.5m - 3.0m [296.93] → Skilled Labor/Surveyor [8 h]; Foreman [8 h]; Excavator [80 h]; Pipe with diameter 560mm; in depth 1.5m - 3.0m [120]; Pipe with diameter 630mm; in depth 1.5m - 3.0m [209] |
| CO-R10.S04-ES-PW-110 | Pipes Laying and accessories for Main Lines of Potable Water Network-[Road 10]-[SW-4] | 2026-01-15 → 2025-10-02 A (-105d) | 2026-01-26 → 2025-10-07 A (-111d) | 0% → 100% | 0d → none |  | resources Labor/Helper [182.38 h]; Skilled Labor/Surveyor [9.12 h]; Foreman [9.12 h]; Plumber [91.19 h]; Excavator [80 h]; Pipe with diameter 560mm; in depth 1.5m - 3.0m [425.33]; Pipe with diameter 630mm; in depth 1.5m - 3.0m [742.32] → Labor/Helper [160 h]; Skilled Labor/Surveyor [8 h]; Foreman [8 h]; Plumber [80 h]; Excavator [80 h]; Pipe with diameter 560mm; in depth 1.5m - 3.0m [300]; Pipe with diameter 630mm; in depth 1.5m - 3.0m [522.5] |
| CO-R10.S04-ES-PW-130 | Trench Backfilling and Compaction Works for Main Lines of Potable Water Network-[Road 10]-[SW-4] | 2026-02-04 → 2025-10-04 A (-123d) | 2026-02-11 → 2025-10-07 A (-127d) | 0% → 100% | 0d → none |  | resources Skilled Labor/Surveyor [9.12 h]; Foreman [9.12 h]; Eq. Operator [9.12 h]; Loader [80 h]; Compactor [80 h]; Water Tank [20 h]; Pipe with diameter 560mm; in depth 1.5m - 3.0m [170.53]; Pipe with diameter 630mm; in depth 1.5m - 3.0m [296.93] → Skilled Labor/Surveyor [8 h]; Foreman [8 h]; Eq. Operator [8 h]; Loader [80 h]; Compactor [80 h]; Water Tank [20 h]; Pipe with diameter 560mm; in depth 1.5m - 3.0m [120]; Pipe with diameter 630mm; in depth 1.5m - 3.0m [209] |
| VC | **Valve Chamber** | 2026-01-15 → 2026-06-21 (+157d) | 2026-02-02 → 2026-10-24 (+264d) |  |  |  |  |
| CO-R10.S04-ES-PW-210 | Insulation Works for Main Line Valves and Valve Chambers of Potable Water Network-[Road 10]-[SW-4] | 2026-01-29 → 2026-06-21 A (+143d) | 2026-01-29 → 2026-10-20 (+264d) | 0% → 60% | 8d → -79d |  | resources Labor/Helper [3.65 h]; Plumber [3.65 h]; Butterfly valves with dia (560)mm on pipes with dia (560)mm. [0.4]; Butterfly valves with dia (630)mm on pipes with dia (630)mm. [1.61]; Wash out valve with dia (150)mm on pipes with dia (560) mm [0.4]; Wash out valve with dia (150)mm on pipes with dia (630) mm [1.2]; Air valves with dia (65mm) mm on pipes with dia(560)mm. [0.4]; Air valves with dia (65mm) mm on pipes with dia(630)mm. [1.2] → Labor/Helper [8 h]; Plumber [8 h]; Butterfly valves with dia (560)mm on pipes with dia (560)mm. [1]; Butterfly valves with dia (630)mm on pipes with dia (630)mm. [2.5]; Wash out valve with dia (150)mm on pipes with dia (560) mm [0.5]; Wash out valve with dia (150)mm on pipes with dia (630) mm [1.5]; Air valves with dia (65mm) mm on pipes with dia(560)mm. [1]; Air valves with dia (65mm) mm on pipes with dia(630)mm. [2] |
| CO-R10.S04-ES-PW-170 | Excavation Works for Main Line Valves and Valve Chambers of Potable Water Network-[Road 10]-[SW-4] | 2026-01-15 → 2026-10-06 (+264d) | 2026-01-15 → 2026-10-06 (+264d) |  | 2d → -85d |  | resources Labor/Helper [9.12 h]; Skilled Labor/Surveyor [4.56 h]; Excavator [8 h]; Wash out chamber; on 200 mm dia pipeline Depth 1.5 - 3m [0.1]; Wash out chamber; on 560 mm dia pipeline Depth 1.5 - 3m [0.05]; Wash out chamber; on 630 mm dia pipeline Depth 1.5 - 3m [0.2]; Air valve chamber on 560 mm dia pipeline Depth 1.5 - 3 m [0.1]; Air valve chamber on 630 mm dia pipeline Depth 1.5 - 3 m [0.2] → Labor/Helper [8 h]; Skilled Labor/Surveyor [4 h]; Excavator [8 h]; Wash out chamber; on 200 mm dia pipeline Depth 1.5 - 3m [0.1]; Wash out chamber; on 560 mm dia pipeline Depth 1.5 - 3m [0.05]; Wash out chamber; on 630 mm dia pipeline Depth 1.5 - 3m [0.2]; Air valve chamber on 560 mm dia pipeline Depth 1.5 - 3 m [0.1]; Air valve chamber on 630 mm dia pipeline Depth 1.5 - 3 m [0.2] |
| CO-R10.S04-ES-PW-180 | RC Footing Works for Main Line Valves and Valve Chambers of Potable Water Network-[Road 10]-[SW-4] | 2026-01-17 → 2026-10-07 (+263d) | 2026-01-19 → 2026-10-10 (+264d) |  | 8d → -79d |  | resources Cons. Carpenter [54.71 h]; Steel Fixer [54.71 h]; Wash out chamber; on 560 mm dia pipeline Depth 1.5 - 3m [0.07]; Wash out chamber; on 630 mm dia pipeline Depth 1.5 - 3m [0.3]; Air valve chamber on 560 mm dia pipeline Depth 1.5 - 3 m [0.15]; Air valve chamber on 630 mm dia pipeline Depth 1.5 - 3 m [0.3] → Cons. Carpenter [48 h]; Steel Fixer [48 h]; Wash out chamber; on 560 mm dia pipeline Depth 1.5 - 3m [0.07]; Wash out chamber; on 630 mm dia pipeline Depth 1.5 - 3m [0.3]; Air valve chamber on 560 mm dia pipeline Depth 1.5 - 3 m [0.15]; Air valve chamber on 630 mm dia pipeline Depth 1.5 - 3 m [0.3] |
| CO-R10.S04-ES-PW-190 | RC Wall Works for Main Line Valves and Valve Chambers of Potable Water Network-[Road 10]-[SW-4] | 2026-01-20 → 2026-10-11 (+264d) | 2026-01-26 → 2026-10-17 (+264d) |  | 8d → -79d |  | resources Cons. Carpenter [109.43 h]; Steel Fixer [109.43 h]; Wash out chamber; on 560 mm dia pipeline Depth 1.5 - 3m [0.17]; Wash out chamber; on 630 mm dia pipeline Depth 1.5 - 3m [1]; Air valve chamber on 560 mm dia pipeline Depth 1.5 - 3 m [0.35]; Air valve chamber on 630 mm dia pipeline Depth 1.5 - 3 m [1] → Cons. Carpenter [96 h]; Steel Fixer [96 h]; Wash out chamber; on 560 mm dia pipeline Depth 1.5 - 3m [0.17]; Wash out chamber; on 630 mm dia pipeline Depth 1.5 - 3m [0.7]; Air valve chamber on 560 mm dia pipeline Depth 1.5 - 3 m [0.35]; Air valve chamber on 630 mm dia pipeline Depth 1.5 - 3 m [0.7] |
| CO-R10.S04-ES-PW-200 | RC Slab Works for Main Line Valves and Valve Chambers of Potable Water Network-[Road 10]-[SW-4] | 2026-01-27 → 2026-10-18 (+264d) | 2026-01-28 → 2026-10-19 (+264d) |  | 8d → -79d |  | resources Cons. Carpenter [36.48 h]; Steel Fixer [36.48 h]; Wash out chamber; on 560 mm dia pipeline Depth 1.5 - 3m [0.1]; Wash out chamber; on 630 mm dia pipeline Depth 1.5 - 3m [0.4]; Air valve chamber on 560 mm dia pipeline Depth 1.5 - 3 m [0.2]; Air valve chamber on 630 mm dia pipeline Depth 1.5 - 3 m [0.4] → Cons. Carpenter [32 h]; Steel Fixer [32 h]; Wash out chamber; on 560 mm dia pipeline Depth 1.5 - 3m [0.1]; Wash out chamber; on 630 mm dia pipeline Depth 1.5 - 3m [0.4]; Air valve chamber on 560 mm dia pipeline Depth 1.5 - 3 m [0.2]; Air valve chamber on 630 mm dia pipeline Depth 1.5 - 3 m [0.4] |
| CO-R10.S04-ES-PW-220 | Backfilling Works for Main Line Valves and Valve Chambers of Potable Water Network-[Road 10]-[SW-4] | 2026-01-31 → 2026-10-21 (+263d) | 2026-02-02 → 2026-10-24 (+264d) |  | 8d → -79d |  | resources Labor/Helper [27.36 h]; Skilled Labor/Surveyor [13.68 h]; Excavator [24 h]; Wash out chamber; on 560 mm dia pipeline Depth 1.5 - 3m [0.1]; Wash out chamber; on 630 mm dia pipeline Depth 1.5 - 3m [0.4]; Air valve chamber on 560 mm dia pipeline Depth 1.5 - 3 m [0.2]; Air valve chamber on 630 mm dia pipeline Depth 1.5 - 3 m [0.4] → Labor/Helper [24 h]; Skilled Labor/Surveyor [12 h]; Excavator [24 h]; Wash out chamber; on 560 mm dia pipeline Depth 1.5 - 3m [0.1]; Wash out chamber; on 630 mm dia pipeline Depth 1.5 - 3m [0.4]; Air valve chamber on 560 mm dia pipeline Depth 1.5 - 3 m [0.2]; Air valve chamber on 630 mm dia pipeline Depth 1.5 - 3 m [0.4] |
| FH | **Fire Hydrant** | 2026-01-19 → 2026-12-09 (+324d) | 2026-02-11 → 2027-01-02 (+325d) |  |  |  |  |
| CO-R10.S04-ES-PW-140 | Excavation Works for Fire Hydrants of Potable Water Network-[Road 10]-[SW-4] | 2026-01-19 → 2026-12-09 (+324d) | 2026-01-26 → 2026-12-16 (+324d) |  | 0d → -139d |  | resources Skilled Labor/Surveyor [6.73 h]; Foreman [6.73 h]; Excavator [56 h] → Skilled Labor/Surveyor [6 h]; Foreman [6 h]; Excavator [56 h] |
| CO-R10.S04-ES-PW-150 | Installation Works for Fire Hydrant of Potable Water Network-[Road 10]-[SW-4] | 2026-01-27 → 2026-12-17 (+324d) | 2026-02-03 → 2026-12-24 (+324d) |  | 0d → -139d |  | resources Labor/Helper [125.62 h]; Skilled Labor/Surveyor [6.73 h]; Foreman [6.73 h]; Plumber [125.62 h] → Labor/Helper [112 h]; Skilled Labor/Surveyor [6 h]; Foreman [6 h]; Plumber [112 h] |
| CO-R10.S04-ES-PW-160 | Trench Backfilling and Compaction Works for Fire Hydrants of Potable Water Network-[Road 10]-[SW-4] | 2026-02-04 → 2026-12-26 (+325d) | 2026-02-11 → 2027-01-02 (+325d) |  | 0d → -139d |  | resources Skilled Labor/Surveyor [6.73 h]; Foreman [6.73 h]; Excavator [56 h] → Skilled Labor/Surveyor [6 h]; Foreman [6 h]; Excavator [56 h] |
| IR | **Irrigation Network** | 2026-02-12 → 2026-06-10 (+118d) | 2026-03-09 → 2026-06-20 (+103d) |  |  |  |  |
| ML | **Main Line Pipes** | 2026-02-12 → 2026-06-10 (+118d) | 2026-03-09 → 2026-06-20 (+103d) |  |  |  |  |
| CO-R10.S04-ES-IR-100 | Trench Excavation and Bedding Works for Main Lines of Irrigation Network-[Road 10]-[SW-4] | 2026-02-12 → 2026-06-10 A (+118d) | 2026-02-18 → 2026-06-20 A (+122d) | 0% → 100% | 0d → none | CO-R10.S04-ES-EW-110, CO-R10.S04-ES-PW-130, CO-R10.S04-ES-SD-170 → CO-R10.S04-ES-EW-110 | resources Skilled Labor/Surveyor [5.7 h]; Foreman [5.7 h]; Excavator [48 h]; 125 mm pipe; depth 0.0m - 1.5m [407.27] → Skilled Labor/Surveyor [5 h]; Foreman [5 h]; Excavator [48 h]; 125 mm pipe; depth 0.0m - 1.5m [287.31] |
| CO-R10.S04-ES-IR-110 | Pipes Laying Works for Main Lines of Irrigation Network-[Road 10]-[SW-4] | 2026-02-19 → 2026-06-10 A (+111d) | 2026-02-26 → 2026-06-20 A (+114d) | 0% → 100% | 0d → none |  | resources Labor/Helper [127.67 h]; Skilled Labor/Surveyor [6.84 h]; Foreman [6.84 h]; Plumber [63.83 h]; Excavator [56 h]; 125 mm pipe; depth 0.0m - 1.5m [1223.82] → Labor/Helper [112 h]; Skilled Labor/Surveyor [6 h]; Foreman [6 h]; Plumber [56 h]; Excavator [56 h]; 125 mm pipe; depth 0.0m - 1.5m [861.95] |
| CO-R10.S04-ES-IR-120 | Installation Works for Main Line Valves of Irrigation Network-[Road 10]-[SW-4] | 2026-02-28 → 2026-06-10 A (+102d) | 2026-03-03 → 2026-06-20 A (+109d) | 0% → 100% | 0d → none |  | resources Labor/Helper [143.56 h]; Skilled Labor/Surveyor [7.85 h]; Foreman [7.85 h]; Plumber [143.56 h]; Gate valves dia (90)mm on pipes with dia (125) mm. [16.05]; Air valve chamber on 280 mm dia pipeline Depth 1.5 - 3 m [1] → Labor/Helper [128 h]; Skilled Labor/Surveyor [7 h]; Foreman [7 h]; Plumber [128 h]; Gate valves dia (90)mm on pipes with dia (125) mm. [11]; Air valve chamber on 280 mm dia pipeline Depth 1.5 - 3 m [1] |
| CO-R10.S04-ES-IR-130 | Trench Backfilling and Compaction Works for Main Lines of Irrigation Network-[Road 10]-[SW-4] | 2026-03-04 → 2026-06-10 A (+98d) | 2026-03-09 → 2026-06-20 A (+103d) | 0% → 100% | 0d → none |  | resources Skilled Labor/Surveyor [4.56 h]; Foreman [4.56 h]; Excavator [40 h]; 125 mm pipe; depth 0.0m - 1.5m [204.64] → Skilled Labor/Surveyor [4 h]; Foreman [4 h]; Excavator [40 h]; 125 mm pipe; depth 0.0m - 1.5m [143.66] |
| SL | **Street Lighting Network** | 2026-03-10 → 2026-10-29 (+233d) | 2026-06-15 → 2027-01-26 (+225d) |  |  |  |  |
| LP | **Lighting Poles Works** | 2026-03-10 → 2026-10-29 (+233d) | 2026-04-20 → 2027-01-26 (+281d) |  |  |  |  |
| CO-R10.S04-ES-SL-100 | Foundation Excavation Works for Lighting Poles of Street Lighting Network-[Road 10]-[SW-4] | 2026-03-10 → 2026-10-29 (+233d) | 2026-03-17 → 2026-11-05 (+233d) |  | 0d → -192d |  | resources Labor/Helper [29.29 h]; Skilled Labor/Surveyor [23.26 h]; Excavator [112 h]; Lighting poles with one arm, including the power distribution box, screws, cables, 12 meters in height. [1] → Labor/Helper [288 h]; Skilled Labor/Surveyor [144 h]; Excavator [288 h]; Lighting poles with one arm, including the power distribution box, screws, cables, 12 meters in height. [1.2] |
| CO-R10.S04-ES-SL-110 | Installation Works for Lighting Poles Foundation of Street Lighting Network-[Road 10]-[SW-4] | 2026-03-16 → 2026-11-04 (+233d) | 2026-03-26 → 2026-11-11 (+230d) |  | 0d → -192d |  | resources Labor/Helper [115.82 h]; Skilled Labor/Surveyor [6.03 h]; Foreman [6.03 h]; Eq. Operator [6.03 h]; Loader [24 h]; Reinforced concrete foundation, for 12m high lighting columns With Drawpits [34.11] → Labor/Helper [192 h]; Skilled Labor/Surveyor [10 h]; Foreman [10 h]; Eq. Operator [10 h]; Loader [24 h]; Reinforced concrete foundation, for 12m high lighting columns With Drawpits [24] |
| CO-R10.S04-ES-SL-120 | Installation Works for Lighting Poles of Street Lighting Network-[Road 10]-[SW-4] | 2026-03-25 → 2026-11-10 (+230d) | 2026-04-01 → 2026-11-17 (+230d) |  | 0d → -192d |  | resources Labor/Helper [81.46 h]; Electrician [29.76 h]; Lighting poles with one arm, including the power distribution box, screws, cables, 12 meters in height. [18.06] → Labor/Helper [144 h]; Electrician [144 h]; Lighting poles with one arm, including the power distribution box, screws, cables, 12 meters in height. [13.2] |
| CO-R10.S04-ES-SL-210 | Backfilling Works for Lighting Poles of Street Lighting Network-[Road 10]-[SW-4] | 2026-03-25 → 2026-11-10 (+230d) | 2026-04-11 → 2026-11-26 (+229d) |  | 8.5d → -183.5d |  | resources Labor/Helper [17.86 h]; Skilled Labor/Surveyor [8.93 h]; Excavator [240 h]; Lighting poles with one arm, including the power distribution box, screws, cables, 12 meters in height. [7.02] → Labor/Helper [240 h]; Skilled Labor/Surveyor [120 h]; Excavator [240 h]; Lighting poles with one arm, including the power distribution box, screws, cables, 12 meters in height. [4.8] |
| CO-R10.S04-ES-SL-200 | Testing Works for Lighting Poles of Street Lighting Network-[Road 10]-[SW-4] | 2026-04-12 → 2026-11-28 (+230d) | 2026-04-19 → 2026-12-05 (+230d) |  | 113.5d → -78.5d |  | resources Labor/Helper [87.05 h]; Electrician [87.05 h]; Lighting poles with one arm, including the power distribution box, screws, cables, 12 meters in height. [7.02] → Labor/Helper [168 h]; Electrician [168 h]; Lighting poles with one arm, including the power distribution box, screws, cables, 12 meters in height. [4.8] |
| CO-R10.S04-ES-SL-130 | Installation Works for Lighting Fixtures With Drop Wire of Street Lighting Network-[Road 10]-[SW-4] | 2026-03-31 → 2027-01-06 (+281d) | 2026-04-20 → 2027-01-26 (+281d) |  | 112.5d → -123.5d |  | resources Labor/Helper [133.66 h]; Electrician [134.18 h]; Manlift [261 h]; Street Lighting( LED) Luminaire,(Type C) complete with control gear and lamp, ?.17000 Lumen [34.11] → Labor/Helper [288 h]; Electrician [288 h]; Manlift [288 h]; Street Lighting( LED) Luminaire,(Type C) complete with control gear and lamp, ?.17000 Lumen [24] |
| CW | **Cabling Works** | 2026-04-02 → 2026-11-18 (+230d) | 2026-04-26 → 2026-12-12 (+230d) |  |  |  |  |
| CO-R10.S04-ES-SL-140 | Trench Excavation and Bedding Works for Street Lighting Network-[Road 10]-[SW-4] | 2026-04-02 → 2026-11-18 (+230d) | 2026-04-09 → 2026-11-25 (+230d) |  | 0d → -192d |  | resources Labor/Helper [17.86 h]; Skilled Labor/Surveyor [8.93 h]; Excavator [80 h] → Labor/Helper [80 h]; Skilled Labor/Surveyor [40 h]; Excavator [80 h] |
| CO-R10.S04-ES-SL-150 | Cable Laying Works for Street Lighting Network-[Road 10]-[SW-4] | 2026-04-11 → 2026-11-26 (+229d) | 2026-04-18 → 2026-12-03 (+229d) |  | 0d → -192d |  | resources Labor/Helper [44.64 h]; Electrician [44.64 h]; Low Current Technician [44.64 h]; Supply, installation , test and operation of cables, Copper, (4Cx25mmï¿½,Cu/XLPE/SWA/PVC +1x16mmï¿½ PVC/PVC) [1331.16] → Labor/Helper [80 h]; Electrician [80 h]; Low Current Technician [80 h]; Supply, installation , test and operation of cables, Copper, (4Cx25mm²,Cu/XLPE/SWA/PVC +1x16mm² PVC/PVC) [938.44] |
| CO-R10.S04-ES-SL-160 | Trench Backfilling and Compaction Works for Street Lighting Network-[Road 10]-[SW-4] | 2026-04-19 → 2026-12-05 (+230d) | 2026-04-26 → 2026-12-12 (+230d) |  | 0d → -192d |  | resources Skilled Labor/Surveyor [8.97 h]; Foreman [8.97 h]; Excavator [80 h]; Water Tank [20 h]; Supply, installation , test and operation of cables, Copper, (4Cx25mmï¿½,Cu/XLPE/SWA/PVC +1x16mmï¿½ PVC/PVC) [102.32] → Skilled Labor/Surveyor [8 h]; Foreman [8 h]; Excavator [80 h]; Water Tank [20 h]; Supply, installation , test and operation of cables, Copper, (4Cx25mm²,Cu/XLPE/SWA/PVC +1x16mm² PVC/PVC) [72.19] |
| DPB | **Distrubution Panel Boards** | 2026-04-27 → 2026-12-13 (+230d) | 2026-06-15 → 2027-01-26 (+225d) |  |  |  |  |
| CO-R10.S04-ES-SL-170 | Foundation Excavation Works For Panel Boards of Street Lighting Network-[Road 10]-[SW-4] | 2026-04-27 → 2026-12-13 (+230d) | 2026-05-17 → 2027-01-02 (+230d) |  | 19d → -173d |  | resources Labor/Helper [17.86 h]; Skilled Labor/Surveyor [8.93 h]; Excavator [144 h] → Labor/Helper [144 h]; Skilled Labor/Surveyor [72 h]; Excavator [144 h] |
| CO-R10.S04-ES-SL-180 | Installation Works for Panel Board Concrete Foundations of Street Lighting Network-[Road 10]-[SW-4] | 2026-05-07 → 2026-12-23 (+230d) | 2026-05-20 → 2027-01-05 (+230d) |  | 28d → -164d |  | resources Skilled Labor/Surveyor [6.7 h]; Foreman [6.7 h]; Excavator [96 h]; Water Tank [24 h] → Skilled Labor/Surveyor [10 h]; Foreman [10 h]; Excavator [96 h]; Water Tank [24 h] |
| CO-R10.S04-ES-SL-190 | Installation Works for Lighting Panel Boards of Street Lighting Network-[Road 10]-[SW-4] | 2026-05-21 → 2027-01-06 (+230d) | 2026-06-08 → 2027-01-19 (+225d) |  | 28d → -164d |  | resources Labor/Helper [33.48 h]; Electrician [33.48 h] → Labor/Helper [96 h]; Electrician [96 h] |
| CO-R10.S04-ES-SL-220 | A wall of concrete blocks to install the KWH meter of Street Lighting Network-[Road 10]-[SW-4] | 2026-05-21 → 2027-01-06 (+230d) | 2026-06-15 → 2027-01-26 (+225d) |  | 28d → -164d |  | resources Block Mason [13.39 h]; Road crossing ducts, 4 way (4 x 100mm PVC) [76.24]; Drawpit with medium duty steel cover, size 900x900x1200mm, Type 4 [7.02] → Block Mason [144 h]; Road crossing ducts, 4 way (4 x 100mm PVC) [53.63]; Drawpit with medium duty steel cover, size 900x900x1200mm, Type 4 [5] |
| TE | **Telecom Network** | 2026-04-25 → 2026-12-10 (+229d) | 2026-07-22 → 2027-04-12 (+264d) |  |  |  |  |
| PD | **Ducts Works** | 2026-04-25 → 2026-12-10 (+229d) | 2026-05-31 → 2027-01-11 (+225d) |  |  |  |  |
| CO-R10.S04-ES-TE-100 | Trench Excavation and Bedding Works for Ducts of Telecom Network-[Road 10]-[SW-4] | 2026-04-25 → 2026-12-10 (+229d) | 2026-05-02 → 2026-12-17 (+229d) |  | 0d → -192d |  | resources Skilled Labor/Surveyor [6.73 h]; Foreman [6.73 h]; Excavator [56 h]; 6-way ducts, 50mm dia. HDPE [64.2]; Road crossing ducts (6-way) [6.02] → Skilled Labor/Surveyor [6 h]; Foreman [6 h]; Excavator [56 h]; 6-way ducts, 50mm dia. HDPE [45]; Road crossing ducts (6-way) [4] |
| CO-R10.S04-ES-TE-110 | Pipes Laying Works for Ducts of Telecom Network-[Road 10]-[SW-4] | 2026-05-03 → 2026-12-19 (+230d) | 2026-05-10 → 2026-12-26 (+230d) |  | 45d → -147d |  | resources Labor/Helper [244.38 h]; Skilled Labor/Surveyor [13.46 h]; Foreman [13.46 h]; Plumber [125.62 h]; Excavator [56 h]; JCB [28 h]; Truck [56 h]; 6-way ducts, 50mm dia. HDPE [380.19]; Road crossing ducts (6-way) [33.1] → Labor/Helper [112 h]; Skilled Labor/Surveyor [6 h]; Foreman [6 h]; Plumber [56 h]; Excavator [56 h]; JCB [28 h]; Truck [56 h]; 6-way ducts, 50mm dia. HDPE [268]; Road crossing ducts (6-way) [23] |
| CO-R10.S04-ES-TE-120 | Pouring Plain Concrete Above Ducts of Telecom Network-[Road 10]-[SW-4] | 2026-05-11 → 2026-12-27 (+230d) | 2026-05-18 → 2027-01-03 (+230d) |  | 45d → -147d |  | resources Skilled Labor/Surveyor [6.73 h]; Foreman [6.73 h]; Cons. Carpenter [125.62 h]; Block Mason [62.81 h]; 6-way ducts, 50mm dia. HDPE [64.2]; Road crossing ducts (6-way) [6.02] → Skilled Labor/Surveyor [6 h]; Foreman [6 h]; Cons. Carpenter [112 h]; Block Mason [56 h]; 6-way ducts, 50mm dia. HDPE [45]; Road crossing ducts (6-way) [4] |
| CO-R10.S04-ES-TE-130 | Trench Backfilling and Compaction Works for Ducts of Telecom Network-[Road 10]-[SW-4] | 2026-05-19 → 2027-01-04 (+230d) | 2026-05-31 → 2027-01-11 (+225d) |  | 45d → -147d |  | resources Skilled Labor/Surveyor [6.73 h]; Foreman [6.73 h]; Excavator [56 h]; 6-way ducts, 50mm dia. HDPE [126.39]; Road crossing ducts (6-way) [11.03] → Skilled Labor/Surveyor [6 h]; Foreman [6 h]; Excavator [56 h]; 6-way ducts, 50mm dia. HDPE [89]; Road crossing ducts (6-way) [8] |
| MH | **Manholes Works** | 2026-06-29 → 2027-03-20 (+264d) | 2026-07-22 → 2027-04-12 (+264d) |  |  |  |  |
| CO-R10.S04-ES-TE-140 | Excavation Works for Manholes of Telecom Network-[Road 10]-[SW-4] | 2026-06-29 → 2027-03-20 (+264d) | 2026-07-06 → 2027-03-27 (+264d) |  | 0d → -221d |  | resources Skilled Labor/Surveyor [6.73 h]; Foreman [6.73 h]; Excavator [56 h]; Manhole Type 2 (2000x1000x1000) [1] → Skilled Labor/Surveyor [6 h]; Foreman [6 h]; Excavator [56 h]; Manhole Type 2 (2000x1000x1000) [0.7] |
| CO-R10.S04-ES-TE-150 | Installation Works for Manholes of Telecom Network-[Road 10]-[SW-4] | 2026-07-07 → 2027-03-28 (+264d) | 2026-07-14 → 2027-04-04 (+264d) |  | 0d → -221d |  | resources Skilled Labor/Surveyor [6.73 h]; Foreman [6.73 h]; Excavator [56 h]; Manhole Type 1 (2000x1000x1000) [1]; Manhole Type 2 (2000x1000x1000) [3.01] → Skilled Labor/Surveyor [6 h]; Foreman [6 h]; Excavator [56 h]; Manhole Type 1 (2000x1000x1000) [1]; Manhole Type 2 (2000x1000x1000) [2.1] |
| CO-R10.S04-ES-TE-160 | Backfilling Works for Manholes of Telecom Network-[Road 10]-[SW-4] | 2026-07-15 → 2027-04-05 (+264d) | 2026-07-22 → 2027-04-12 (+264d) |  | 0d → -221d |  | resources Skilled Labor/Surveyor [6.73 h]; Foreman [6.73 h]; Excavator [56 h]; Manhole Type 2 (2000x1000x1000) [1] → Skilled Labor/Surveyor [6 h]; Foreman [6 h]; Excavator [56 h]; Manhole Type 2 (2000x1000x1000) [0.7] |
| RD | **Road Works** | 2026-07-23 → 2026-08-25 (+33d) | 2026-09-29 → 2027-06-19 (+263d) |  |  |  |  |
| RD | **Pre-Bituminous Construction** | 2026-07-23 → 2027-04-13 (+264d) | 2026-08-11 → 2027-05-02 (+264d) |  |  |  |  |
| CO-R10.S04-ES-RD-100 | Capping and Subgrade Layer for Road Works-[Road 10]-[SW-4] | 2026-07-23 → 2027-04-13 (+264d) | 2026-08-08 → 2027-04-28 (+263d) |  | 0d → -221d |  | resources Labor/Helper [164.85 h]; Skilled Labor/Surveyor [47.06 h]; Loader [144 h]; Grader [144 h]; Road Roller [144 h]; Water Tank [144 h]; 300mm capping layer underneath subgrade , CBR?15% [4813.03]; 300mm thick Subgrade, including subgrade preparation, CBR?25% [4813.03] → Labor/Helper [288 h]; Skilled Labor/Surveyor [144 h]; Loader [144 h]; Grader [144 h]; Road Roller [144 h]; Water Tank [144 h]; 300mm capping layer underneath subgrade , CBR?15% [3390.73]; 300mm thick Subgrade, including subgrade preparation, CBR?25% [3390.73] |
| CO-R10.S04-ES-RD-110 | Aggregate Base Course Layer for Road Works-[Road 10]-[SW-4] | 2026-07-29 → 2027-04-19 (+264d) | 2026-08-11 → 2027-05-02 (+264d) |  | 5d → -191d |  | resources Labor/Helper [407.3 h]; Skilled Labor/Surveyor [116.28 h]; Foreman [168.85 h]; Loader [144 h]; Grader [144 h]; Road Roller [144 h]; Aggregate base course 200mm thick after compaction in two layers(Grading 1); CBR?80%; including watering, compaction and testing [3209.02] → Labor/Helper [288 h]; Skilled Labor/Surveyor [144 h]; Foreman [144 h]; Loader [144 h]; Grader [144 h]; Road Roller [144 h]; Aggregate base course 200mm thick after compaction in two layers(Grading 1); CBR?80%; including watering, compaction and testing [2260.72] |
| LS | **Pavement Works** | 2026-08-02 → 2026-08-25 (+23d) | 2026-09-29 → 2027-06-19 (+263d) |  |  |  |  |
| CO-R10.S04-ES-RD-120 | Fixing of Curbstone for Sidewalks Pavement-[Road 10]-[SW-4] | 2026-08-02 → 2026-08-25 A (+23d) | 2026-08-15 → 2026-08-31 A (+16d) | 0% → 100% | 5d → none |  | resources Labor/Helper [1531.2 h]; Block Mason [4593.59 h]; Precast Concrete Kerb, Type K1 [1775.55]; Precast Concrete Kerb, Type L1 [3523] → Labor/Helper [288 h]; Block Mason [864 h]; Precast Concrete Kerb, Type K1 [1250.99]; Precast Concrete Kerb, Type L1 [2482.11] |
| CO-R10.S04-ES-RD-130 | Fixing of Interlock Tiles for Sidewalks Pavement-[Road 10]-[SW-4] | 2026-09-17 → 2026-08-25 A (-23d) | 2026-09-29 → 2027-06-19 (+263d) | 0% → 50% | 2d → -214d |  | resources Labor/Helper [794.55 h]; Block Mason [1867.06 h]; Interlocking block pavers for sidewalk/footpath 60mm thick on and including 30mm Sand Bedding, 200mm Aggregate subbase, all in accordance with authority standards and complete as per specifications [3170.9]; Extraover for Pedestrian ramps [8.03] → Labor/Helper [432 h]; Block Mason [1296 h]; Interlocking block pavers for sidewalk/footpath 60mm thick on and including 30mm Sand Bedding, 200mm Aggregate subbase, all in accordance with authority standards and complete as per specifications [2233.91]; Extraover for Pedestrian ramps [5.5] |
| SW_41 | **SW_4-West** | 2025-09-15 → 2025-04-08 (-160d) | 2026-10-01 → 2027-06-21 (+263d) |  |  |  |  |
| EW | **Earthworks** | 2025-09-15 → 2025-04-08 (-160d) | 2025-10-13 → 2025-04-12 (-184d) |  |  |  |  |
| EW | **Earthworks** | 2025-09-15 → 2025-04-08 (-160d) | 2025-10-13 → 2025-04-12 (-184d) |  |  |  |  |
| CO-R10.S04-WE-EW-100 | Roadway Excavation Works Upto Design Level for Earthworks-[Road 10]-[SW-4] | 2025-09-15 → 2025-04-08 A (-160d) | 2025-09-29 → 2025-04-12 A (-170d) | 0% → 100% | 11d → none |  | resources Labor/Helper [1313.15 h]; Skilled Labor/Surveyor [164.14 h]; Foreman [164.14 h]; Water Tank [192 h]; Dozer [192 h]; Roadway Excavation for cuttings; on any type of material for all depths including trimming and Preparation of excavated surfaces and disposal. [22656.8] → Labor/Helper [192 h]; Skilled Labor/Surveyor [24 h]; Foreman [24 h]; Water Tank [192 h]; Dozer [192 h]; Roadway Excavation for cuttings; on any type of material for all depths including trimming and Preparation of excavated surfaces and disposal. [15964.1] |
| CO-R10.S04-WE-EW-110 | Embankments Works Upto Design Level for Earthworks-[Road 10]-[SW-4] | 2025-09-30 → 2025-04-08 A (-175d) | 2025-10-13 → 2025-04-12 A (-184d) | 0% → 100% | 11d → none |  | resources Labor/Helper [1422.58 h]; Skilled Labor/Surveyor [177.82 h]; Foreman [177.82 h]; Water Tank [480 h]; Dozer [480 h]; Embankments to the ROW, with suitable material other than top soil or rock according to specifications [38141.1] → Labor/Helper [480 h]; Skilled Labor/Surveyor [60 h]; Foreman [60 h]; Water Tank [480 h]; Dozer [480 h]; Embankments to the ROW, with suitable material other than top soil or rock according to specifications [26873.7] |
| SW | **Sewage Network** | 2025-10-14 → 2025-08-16 (-59d) | 2025-11-24 → 2026-10-06 (+316d) |  |  |  |  |
| ML | **Main Line Sections** | 2025-10-14 → 2025-08-16 (-59d) | 2025-11-24 → 2025-08-25 (-91d) |  |  |  |  |
| CO-R10.S04-WE-SW-100 | Trench Excavation and Bedding Works for Main Lines of Sewage Network-[Road 10]-[SW-4] | 2025-10-14 → 2025-08-16 A (-59d) | 2025-10-27 → 2025-08-18 A (-70d) | 0% → 100% | 11d → none | CO-R10.S04-WE-EW-110, ENG-MS-SW-ML-A-110, ENG-SH-SW-ML-A-110, CO-R11.S06-SW-100 → CO-R10.S04-WE-EW-110, ENG-MS-SW-ML-A-110, ENG-SH-SW-ML-A-110 | resources Labor/Helper [109.43 h]; Foreman [109.43 h]; Excavator [96 h]; Depth : 1.5 - 2.5m [21.07]; Depth : 2.5 - 3.5m [13.04]; Depth : 3.5 - 4.5m [13.04]; Depth : 5.5 - 6.5m [71.22]; Depth : 6.5 -7.5m [57.18]; Depth : 6.5 -7.5m [21.07]; Depth :more than 7.5m [14.04] → Labor/Helper [96 h]; Foreman [96 h]; Excavator [96 h]; Depth : 1.5 - 2.5m [15]; Depth : 2.5 - 3.5m [8.89]; Depth : 3.5 - 4.5m [8.89]; Depth : 5.5 - 6.5m [50]; Depth : 6.5 -7.5m [40]; Depth : 6.5 -7.5m [15]; Depth :more than 7.5m [10] |
| CO-R10.S04-WE-SW-120 | Pipes Laying Works for Main Lines of Sewage Network-[Road 10]-[SW-4] | 2025-10-28 → 2025-08-19 A (-70d) | 2025-11-10 → 2025-08-21 A (-81d) | 0% → 100% | 11d → none |  | resources Labor/Helper [875.44 h]; Skilled Labor/Surveyor [44.46 h]; Foreman [44.46 h]; Plumber [437.72 h]; Excavator [96 h]; Depth : 1.5 - 2.5m [64.2]; Depth : 2.5 - 3.5m [38.12]; Depth : 3.5 - 4.5m [38.12]; Depth : 5.5 - 6.5m [212.66]; Depth : 6.5 -7.5m [170.53]; Depth : 6.5 -7.5m [64.2]; Depth :more than 7.5m [42.13] → Labor/Helper [192 h]; Skilled Labor/Surveyor [10 h]; Foreman [10 h]; Plumber [96 h]; Excavator [96 h]; Depth : 1.5 - 2.5m [45]; Depth : 2.5 - 3.5m [26.66]; Depth : 3.5 - 4.5m [26.66]; Depth : 5.5 - 6.5m [150]; Depth : 6.5 -7.5m [120]; Depth : 6.5 -7.5m [45]; Depth :more than 7.5m [30] |
| CO-R10.S04-WE-SW-130 | Trench Backfilling and Compaction Works for Main Lines of Sewage Network-[Road 10]-[SW-4] | 2025-11-11 → 2025-08-23 A (-80d) | 2025-11-24 → 2025-08-25 A (-91d) | 0% → 100% | 11d → none | CO-R10.S04-WE-SW-120, CO-R10.S04-WE-SW-210 FF → CO-R10.S04-WE-SW-120 | resources Skilled Labor/Surveyor [11.4 h]; Foreman [11.4 h]; Excavator [96 h]; Depth : 1.5 - 2.5m [11.03]; Depth : 2.5 - 3.5m [6.02]; Depth : 3.5 - 4.5m [6.02]; Depth : 5.5 - 6.5m [35.11]; Depth : 6.5 -7.5m [28.09]; Depth : 6.5 -7.5m [11.03]; Depth :more than 7.5m [7.02] → Skilled Labor/Surveyor [10 h]; Foreman [10 h]; Excavator [96 h]; Depth : 1.5 - 2.5m [7.5]; Depth : 2.5 - 3.5m [4.44]; Depth : 3.5 - 4.5m [4.44]; Depth : 5.5 - 6.5m [25]; Depth : 6.5 -7.5m [20]; Depth : 6.5 -7.5m [7.5]; Depth :more than 7.5m [5] |
| 1 | **Manholes** | 2025-10-28 → 2026-06-27 (+242d) | 2025-11-11 → 2026-10-06 (+329d) |  |  |  |  |
| CO-R10.S04-WE-SW-160 | Excavation Works for Main Line Manholes of Sewage Network-[Road 10]-[SW-4] | 2025-10-28 → 2026-06-27 A (+242d) | 2025-10-28 → 2026-07-04 A (+249d) | 0% → 100% | 22d → none |  | resources Labor/Helper [30.85 h]; Skilled Labor/Surveyor [9.12 h]; Excavator [16 h]; Depth: 1.5 - 2.5m [0.3]; Depth: 2.5 - 3.5m [1]; Depth: 3.5 - 4.5m [0.07]; Depth: 4.5 - 5.5m [0.15]; Depth: 5.5 - 6.5m [0.23]; Depth:6.5 - 7.5m [0.3]; Depth: more than 7.5m [0.15] → Labor/Helper [16 h]; Skilled Labor/Surveyor [8 h]; Excavator [16 h]; Depth: 1.5 - 2.5m [0.3]; Depth: 2.5 - 3.5m [0.75]; Depth: 3.5 - 4.5m [0.07]; Depth: 4.5 - 5.5m [0.15]; Depth: 5.5 - 6.5m [0.23]; Depth:6.5 - 7.5m [0.3]; Depth: more than 7.5m [0.15] |
| CO-R10.S04-WE-SW-170 | Installation RC Footing Works for Main Line Manholes of Sewage Network-[Road 10]-[SW-4] | 2025-10-29 → 2026-06-27 A (+241d) | 2025-10-30 → 2026-07-04 A (+247d) | 0% → 100% | 22d → none |  | resources Cons. Carpenter [72.95 h]; Steel Fixer [72.95 h]; Depth: 1.5 - 2.5m [0.2]; Depth: 2.5 - 3.5m [1]; Depth: 3.5 - 4.5m [0.05]; Depth: 4.5 - 5.5m [0.1]; Depth: 5.5 - 6.5m [0.15]; Depth:6.5 - 7.5m [0.2]; Depth: more than 7.5m [0.1] → Cons. Carpenter [64 h]; Steel Fixer [64 h]; Depth: 1.5 - 2.5m [0.2]; Depth: 2.5 - 3.5m [0.5]; Depth: 3.5 - 4.5m [0.05]; Depth: 4.5 - 5.5m [0.1]; Depth: 5.5 - 6.5m [0.15]; Depth:6.5 - 7.5m [0.2]; Depth: more than 7.5m [0.1] |
| CO-R10.S04-WE-SW-180 | Install Grp Liner Wall Works for Main Line Manholes of Sewage Network-[Road 10]-[SW-4] | 2025-11-01 → 2026-06-27 A (+238d) | 2025-11-04 → 2026-07-04 A (+242d) | 0% → 100% | 22d → none |  | resources Labor/Helper [72.95 h]; Plumber [72.95 h]; Depth: 1.5 - 2.5m [1]; Depth: 2.5 - 3.5m [3.01]; Depth: 3.5 - 4.5m [0.2]; Depth: 4.5 - 5.5m [0.4]; Depth: 5.5 - 6.5m [1]; Depth:6.5 - 7.5m [1]; Depth: more than 7.5m [0.4] → Labor/Helper [64 h]; Plumber [64 h]; Depth: 1.5 - 2.5m [0.8]; Depth: 2.5 - 3.5m [2]; Depth: 3.5 - 4.5m [0.2]; Depth: 4.5 - 5.5m [0.4]; Depth: 5.5 - 6.5m [0.6]; Depth:6.5 - 7.5m [0.8]; Depth: more than 7.5m [0.4] |

| ID | Task | Start | Finish | Duration | Complete | Total float | Predecessors | Other |
| --- | --- | --- | --- | --- | --- | --- | --- | --- |
| CO-R10.S04-WE-SW-190 | Pouring Grp Liner Wall Works for Main Line Manholes of Sewage Network-[Road 10]-[SW-4] | 2025-11-05 → 2026-06-27 A (+234d) | 2025-11-05 → 2026-07-04 A (+241d) |  | 0% → 100% | 22d → none |  | resources Cons. Carpenter [36.48 h]; Steel Fixer [36.48 h]; Depth: 1.5 - 2.5m [0.1]; Depth: 2.5 - 3.5m [0.25]; Depth: 3.5 - 4.5m [0.03]; Depth: 4.5 - 5.5m [0.05]; Depth: 5.5 - 6.5m [0.07]; Depth:6.5 - 7.5m [0.1]; Depth: more than 7.5m [0.05] → Cons. Carpenter [32 h]; Steel Fixer [32 h]; Depth: 1.5 - 2.5m [0.1]; Depth: 2.5 - 3.5m [0.25]; Depth: 3.5 - 4.5m [0.03]; Depth: 4.5 - 5.5m [0.05]; Depth: 5.5 - 6.5m [0.07]; Depth:6.5 - 7.5m [0.1]; Depth: more than 7.5m [0.05] |
| CO-R10.S04-WE-SW-200 | Backfilling Works for Main Line Manholes of Sewage Network-[Road 10]-[SW-4] | 2025-11-06 → 2026-06-27 A (+233d) | 2025-11-10 → 2026-07-04 A (+236d) |  | 0% → 100% | 22d → none |  | resources Labor/Helper [72.95 h]; Skilled Labor/Surveyor [36.48 h]; Excavator [64 h]; Depth: 1.5 - 2.5m [0.3]; Depth: 2.5 - 3.5m [1]; Depth: 3.5 - 4.5m [0.07]; Depth: 4.5 - 5.5m [0.15]; Depth: 5.5 - 6.5m [0.23]; Depth:6.5 - 7.5m [0.3]; Depth: more than 7.5m [0.15] → Labor/Helper [64 h]; Skilled Labor/Surveyor [32 h]; Excavator [64 h]; Depth: 1.5 - 2.5m [0.3]; Depth: 2.5 - 3.5m [0.75]; Depth: 3.5 - 4.5m [0.07]; Depth: 4.5 - 5.5m [0.15]; Depth: 5.5 - 6.5m [0.23]; Depth:6.5 - 7.5m [0.3]; Depth: more than 7.5m [0.15] |
| CO-R10.S04-WE-SW-210 | Testing Works for Main Line Manholes of Sewage Network-[Road 10]-[SW-4] | 2025-11-11 → 2026-10-06 (+329d) | 2025-11-11 → 2026-10-06 (+329d) |  |  | 22d → -59d |  | resources Labor/Helper [18.24 h]; Plumber [18.24 h]; Depth: 1.5 - 2.5m [0.1]; Depth: 2.5 - 3.5m [0.25]; Depth: 3.5 - 4.5m [0.03]; Depth: 4.5 - 5.5m [0.05]; Depth: 5.5 - 6.5m [0.07]; Depth:6.5 - 7.5m [0.1]; Depth: more than 7.5m [0.05] → Labor/Helper [16 h]; Plumber [16 h]; Depth: 1.5 - 2.5m [0.1]; Depth: 2.5 - 3.5m [0.25]; Depth: 3.5 - 4.5m [0.03]; Depth: 4.5 - 5.5m [0.05]; Depth: 5.5 - 6.5m [0.07]; Depth:6.5 - 7.5m [0.1]; Depth: more than 7.5m [0.05] |
| SD | **Storm Drainage Network** | 2025-11-30 → 2025-08-23 (-99d) | 2026-01-26 → 2026-10-19 (+266d) |  |  |  |  |  |
| ML | **Main Line Sections** | 2025-11-30 → 2025-08-23 (-99d) | 2026-01-03 → 2025-09-02 (-123d) |  |  |  |  |  |
| CO-R10.S04-WE-SD-100 | Trench Excavation and Bedding Works for Main Lines of Storm Drainage Network-[Road 10]-[SW-4] | 2025-11-30 → 2025-08-23 A (-99d) | 2025-12-10 → 2025-08-25 A (-107d) |  | 0% → 100% | 0d → none |  | resources Skilled Labor/Surveyor [13.68 h]; Foreman [13.68 h]; Excavator [120 h]; Pipe with diameter 400mm ; depth: 0.0m - 1.5m [62.19]; Pipe with diameter 400mm ; depth: 1.51m - 2.5m [79.25]; Pipe with diameter 500mm ; depth: 1.51m - 2.5m [34.11]; Pipe with diameter 600mm ; depth: 1.51m - 2.5m [28.09]; Pipe with diameter 700mm ; depth: 0.0m - 1.5m [7.02]; Pipe with diameter 700mm ; depth: 1.51m - 2.5m [51.16]; Pipe with diameter 800mm ; depth: 1.51m - 2.5m [64.2]; Pipe with diameter 900mm ; depth: 1.51m - 2.5m [33.1]; Pipe with diameter 1000mm ; depth: 0.0m - 1.5m [7.02]; Pipe with diameter 1100mm ; depth: 0.0m - 1.5m [7.02] → Skilled Labor/Surveyor [12 h]; Foreman [12 h]; Excavator [120 h]; Pipe with diameter 400mm ; depth: 0.0m - 1.5m [43.8]; Pipe with diameter 400mm ; depth: 1.51m - 2.5m [55.9]; Pipe with diameter 500mm ; depth: 1.51m - 2.5m [24.2]; Pipe with diameter 600mm ; depth: 1.51m - 2.5m [19.65]; Pipe with diameter 700mm ; depth: 0.0m - 1.5m [5]; Pipe with diameter 700mm ; depth: 1.51m - 2.5m [36.06]; Pipe with diameter 800mm ; depth: 1.51m - 2.5m [45.02]; Pipe with diameter 900mm ; depth: 1.51m - 2.5m [23.18]; Pipe with diameter 1000mm ; depth: 0.0m - 1.5m [5]; Pipe with diameter 1100mm ; depth: 0.0m - 1.5m [5] |
| CO-R10.S04-WE-SD-120 | Pipes Laying Works for Main Lines of Storm Drainage Network-[Road 10]-[SW-4] | 2025-12-11 → 2025-08-26 A (-107d) | 2025-12-22 → 2025-08-28 A (-116d) |  | 0% → 100% | 0d → none |  | resources Labor/Helper [273.57 h]; Skilled Labor/Surveyor [13.68 h]; Foreman [13.68 h]; Plumber [136.79 h]; Excavator [120 h]; Pipe with diameter 400mm ; depth: 0.0m - 1.5m [185.58]; Pipe with diameter 400mm ; depth: 1.51m - 2.5m [238.75]; Pipe with diameter 500mm ; depth: 1.51m - 2.5m [103.32]; Pipe with diameter 600mm ; depth: 1.51m - 2.5m [83.26]; Pipe with diameter 700mm ; depth: 0.0m - 1.5m [21.07]; Pipe with diameter 700mm ; depth: 1.51m - 2.5m [153.48]; Pipe with diameter 800mm ; depth: 1.51m - 2.5m [191.6]; Pipe with diameter 900mm ; depth: 1.51m - 2.5m [99.31]; Pipe with diameter 1000mm ; depth: 0.0m - 1.5m [21.07]; Pipe with diameter 1100mm ; depth: 0.0m - 1.5m [21.07] → Labor/Helper [240 h]; Skilled Labor/Surveyor [12 h]; Foreman [12 h]; Plumber [120 h]; Excavator [120 h]; Pipe with diameter 400mm ; depth: 0.0m - 1.5m [131.39]; Pipe with diameter 400mm ; depth: 1.51m - 2.5m [167.69]; Pipe with diameter 500mm ; depth: 1.51m - 2.5m [72.6]; Pipe with diameter 600mm ; depth: 1.51m - 2.5m [58.94]; Pipe with diameter 700mm ; depth: 0.0m - 1.5m [15]; Pipe with diameter 700mm ; depth: 1.51m - 2.5m [108.18]; Pipe with diameter 800mm ; depth: 1.51m - 2.5m [135.05]; Pipe with diameter 900mm ; depth: 1.51m - 2.5m [69.54]; Pipe with diameter 1000mm ; depth: 0.0m - 1.5m [15]; Pipe with diameter 1100mm ; depth: 0.0m - 1.5m [15] |
| CO-R10.S04-WE-SD-130 | Trench Backfilling and Compaction Works for Main Lines of Storm Drainage Network-[Road 10]-[SW-4] | 2025-12-23 → 2025-08-30 A (-115d) | 2026-01-03 → 2025-09-02 A (-123d) |  | 0% → 100% | 0d → none | CO-R10.S04-WE-SD-120 SS+3d, CO-R10.S04-WE-SD-120 FF+3d, CO-R10.S04-WE-SD-120, CO-R10.S04-WE-SD-220 FF → CO-R10.S04-WE-SD-120 SS+3d, CO-R10.S04-WE-SD-120 FF+3d, CO-R10.S04-WE-SD-120 | resources Skilled Labor/Surveyor [13.68 h]; Foreman [13.68 h]; Excavator [120 h]; Pipe with diameter 400mm ; depth: 0.0m - 1.5m [31.1]; Pipe with diameter 400mm ; depth: 1.51m - 2.5m [40.13]; Pipe with diameter 500mm ; depth: 1.51m - 2.5m [17.05]; Pipe with diameter 600mm ; depth: 1.51m - 2.5m [14.04]; Pipe with diameter 700mm ; depth: 0.0m - 1.5m [4.01]; Pipe with diameter 700mm ; depth: 1.51m - 2.5m [25.08]; Pipe with diameter 800mm ; depth: 1.51m - 2.5m [33.1]; Pipe with diameter 900mm ; depth: 1.51m - 2.5m [17.05]; Pipe with diameter 1000mm ; depth: 0.0m - 1.5m [4.01]; Pipe with diameter 1100mm ; depth: 0.0m - 1.5m [4.01] → Skilled Labor/Surveyor [12 h]; Foreman [12 h]; Excavator [120 h]; Pipe with diameter 400mm ; depth: 0.0m - 1.5m [21.9]; Pipe with diameter 400mm ; depth: 1.51m - 2.5m [27.95]; Pipe with diameter 500mm ; depth: 1.51m - 2.5m [12.1]; Pipe with diameter 600mm ; depth: 1.51m - 2.5m [9.82]; Pipe with diameter 700mm ; depth: 0.0m - 1.5m [2.5]; Pipe with diameter 700mm ; depth: 1.51m - 2.5m [18.03]; Pipe with diameter 800mm ; depth: 1.51m - 2.5m [22.51]; Pipe with diameter 900mm ; depth: 1.51m - 2.5m [11.59]; Pipe with diameter 1000mm ; depth: 0.0m - 1.5m [2.5]; Pipe with diameter 1100mm ; depth: 0.0m - 1.5m [2.5] |
| MH | **Manholes** | 2025-12-11 → 2025-11-09 (-32d) | 2025-12-27 → 2026-10-06 (+283d) |  |  |  |  |  |
| CO-R10.S04-WE-SD-180 | Trench Excavation and Bedding Works for Manholes of Storm Drainage Network-[Road 10]-[SW-4] | 2025-12-11 → 2025-11-09 A (-32d) | 2025-12-11 → 2025-11-15 A (-26d) |  | 0% → 100% | 6d → none |  | resources Labor/Helper [27.36 h]; Skilled Labor/Surveyor [13.68 h]; Excavator [24 h]; MH ; depth: 0.0m - 1.5m [0.23]; MH ; depth: 1.51m - 2.5m [1]; MH ; depth: 0.0m - 1.5m [0.15]; MH ; depth: 1.51m - 2.5m with back drop less than 1.0 m [0.15]; MH ; depth: 0.0m - 1.5m [0.07]; MH ; depth: 1.51m - 2.5m [0.23]; MH ; depth: 2.51 - 3.5m [0.3]; MH ; depth: 3.51 - 4.5m [0.15] → Labor/Helper [24 h]; Skilled Labor/Surveyor [12 h]; Excavator [24 h]; MH ; depth: 0.0m - 1.5m [0.23]; MH ; depth: 1.51m - 2.5m [0.6]; MH ; depth: 0.0m - 1.5m [0.15]; MH ; depth: 1.51m - 2.5m with back drop less than 1.0 m [0.15]; MH ; depth: 0.0m - 1.5m [0.07]; MH ; depth: 1.51m - 2.5m [0.23]; MH ; depth: 2.51 - 3.5m [0.3]; MH ; depth: 3.51 - 4.5m [0.15] |
| CO-R10.S04-WE-SD-190 | Install RC Footing Works for Manholes of Storm Drainage Network-[Road 10]-[SW-4] | 2025-12-13 → 2025-11-10 A (-33d) | 2025-12-13 → 2025-11-17 A (-26d) |  | 0% → 100% | 6d → none |  | resources Cons. Carpenter [54.71 h]; Steel Fixer [54.71 h]; MH ; depth: 0.0m - 1.5m [0.07]; MH ; depth: 1.51m - 2.5m [0.2]; MH ; depth: 0.0m - 1.5m [0.05]; MH ; depth: 1.51m - 2.5m with back drop less than 1.0 m [0.05]; MH ; depth: 0.0m - 1.5m [0.03]; MH ; depth: 1.51m - 2.5m [0.07]; MH ; depth: 2.51 - 3.5m [0.1]; MH ; depth: 3.51 - 4.5m [0.05] → Cons. Carpenter [48 h]; Steel Fixer [48 h]; MH ; depth: 0.0m - 1.5m [0.07]; MH ; depth: 1.51m - 2.5m [0.2]; MH ; depth: 0.0m - 1.5m [0.05]; MH ; depth: 1.51m - 2.5m with back drop less than 1.0 m [0.05]; MH ; depth: 0.0m - 1.5m [0.03]; MH ; depth: 1.51m - 2.5m [0.07]; MH ; depth: 2.51 - 3.5m [0.1]; MH ; depth: 3.51 - 4.5m [0.05] |
| CO-R10.S04-WE-SD-200 | Install RC Wall Rings & Slab Works for Manholes of Storm Drainage Network-[Road 10]-[SW-4] | 2025-12-14 → 2025-11-11 A (-33d) | 2025-12-17 → 2025-11-18 A (-29d) |  | 0% → 100% | 6d → none |  | resources Cons. Carpenter [218.86 h]; Steel Fixer [218.86 h]; MH ; depth: 0.0m - 1.5m [1]; MH ; depth: 1.51m - 2.5m [3.01]; MH ; depth: 0.0m - 1.5m [0.45]; MH ; depth: 1.51m - 2.5m with back drop less than 1.0 m [0.45]; MH ; depth: 0.0m - 1.5m [0.23]; MH ; depth: 1.51m - 2.5m [1]; MH ; depth: 2.51 - 3.5m [1]; MH ; depth: 3.51 - 4.5m [0.45] → Cons. Carpenter [192 h]; Steel Fixer [192 h]; MH ; depth: 0.0m - 1.5m [0.68]; MH ; depth: 1.51m - 2.5m [1.8]; MH ; depth: 0.0m - 1.5m [0.45]; MH ; depth: 1.51m - 2.5m with back drop less than 1.0 m [0.45]; MH ; depth: 0.0m - 1.5m [0.23]; MH ; depth: 1.51m - 2.5m [0.68]; MH ; depth: 2.51 - 3.5m [0.9]; MH ; depth: 3.51 - 4.5m [0.45] |
| CO-R10.S04-WE-SD-220 | Backfilling Works for Manholes of Storm Drainage Network-[Road 10]-[SW-4] | 2025-12-20 → 2025-11-12 A (-38d) | 2025-12-27 → 2025-12-20 A (-7d) |  | 0% → 100% | 6d → none |  | resources Labor/Helper [145.42 h]; Skilled Labor/Surveyor [63.83 h]; Excavator [112 h]; MH ; depth: 0.0m - 1.5m [0.3]; MH ; depth: 1.51m - 2.5m [1]; MH ; depth: 0.0m - 1.5m [0.2]; MH ; depth: 1.51m - 2.5m with back drop less than 1.0 m [0.2]; MH ; depth: 0.0m - 1.5m [0.1]; MH ; depth: 1.51m - 2.5m [0.3]; MH ; depth: 2.51 - 3.5m [0.4]; MH ; depth: 3.51 - 4.5m [0.2] → Labor/Helper [112 h]; Skilled Labor/Surveyor [56 h]; Excavator [112 h]; MH ; depth: 0.0m - 1.5m [0.3]; MH ; depth: 1.51m - 2.5m [0.8]; MH ; depth: 0.0m - 1.5m [0.2]; MH ; depth: 1.51m - 2.5m with back drop less than 1.0 m [0.2]; MH ; depth: 0.0m - 1.5m [0.1]; MH ; depth: 1.51m - 2.5m [0.3]; MH ; depth: 2.51 - 3.5m [0.4]; MH ; depth: 3.51 - 4.5m [0.2] |
| CO-R10.S04-WE-SD-210 | Testing Works for Manholes of Storm Drainage Network-[Road 10]-[SW-4] | 2025-12-18 → 2026-10-06 (+292d) | 2025-12-18 → 2026-10-06 (+292d) |  |  | 6d → -38d |  | resources Labor/Helper [27.36 h]; Plumber [27.36 h]; MH ; depth: 0.0m - 1.5m [0.15]; MH ; depth: 1.51m - 2.5m [0.4]; MH ; depth: 0.0m - 1.5m [0.1]; MH ; depth: 1.51m - 2.5m with back drop less than 1.0 m [0.1]; MH ; depth: 0.0m - 1.5m [0.05]; MH ; depth: 1.51m - 2.5m [0.15]; MH ; depth: 2.51 - 3.5m [0.2]; MH ; depth: 3.51 - 4.5m [0.1] → Labor/Helper [24 h]; Plumber [24 h]; MH ; depth: 0.0m - 1.5m [0.15]; MH ; depth: 1.51m - 2.5m [0.4]; MH ; depth: 0.0m - 1.5m [0.1]; MH ; depth: 1.51m - 2.5m with back drop less than 1.0 m [0.1]; MH ; depth: 0.0m - 1.5m [0.05]; MH ; depth: 1.51m - 2.5m [0.15]; MH ; depth: 2.51 - 3.5m [0.2]; MH ; depth: 3.51 - 4.5m [0.1] |
| CB | **Catch Basin Sections** | 2025-12-28 → 2026-06-17 (+171d) | 2026-01-26 → 2026-10-19 (+266d) |  |  |  |  |  |
| CO-R10.S04-WE-SD-140 | Trench Excavation and Bedding Works for Catch Basins of Storm Drainage Network-[Road 10]-[SW-4] | 2025-12-28 → 2026-06-17 A (+171d) | 2026-01-03 → 2026-10-08 (+278d) |  | 0% → 80% | 14d → -38d |  | resources Skilled Labor/Surveyor [33.47 h]; Foreman [36.01 h]; Excavator [48 h]; Pipe with diameter 300mm ; depth: 0 - 1.5m [120.38]; Pipe with diameter 400mm ; depth: 0 - 1.5m [7.02] → Skilled Labor/Surveyor [5 h]; Foreman [5 h]; Excavator [48 h]; Pipe with diameter 300mm ; depth: 0 - 1.5m [84.55]; Pipe with diameter 400mm ; depth: 0 - 1.5m [5.16] |
| CO-R10.S04-WE-SD-150 | Installation and Pipes Laying Connection Works for Catch Basins of Storm Drainage Network-[Road 10]-[SW-4] | 2026-01-04 → 2026-06-20 A (+167d) | 2026-01-11 → 2026-10-11 (+273d) |  | 0% → 70% | 14d → -38d |  | resources Labor/Helper [508.44 h]; Skilled Labor/Surveyor [35.79 h]; Foreman [38.28 h]; Excavator [112 h]; Pipe with diameter 300mm ; depth: 0 - 1.5m [360.12]; Pipe with diameter 400mm ; depth: 0 - 1.5m [21.07] → Labor/Helper [224 h]; Skilled Labor/Surveyor [12 h]; Foreman [12 h]; Excavator [112 h]; Pipe with diameter 300mm ; depth: 0 - 1.5m [253.63]; Pipe with diameter 400mm ; depth: 0 - 1.5m [15.47] |
| CO-R10.S04-WE-SD-160 | Testing Works for Catch Basins of Storm Drainage Network-[Road 10]-[SW-4] | 2026-01-12 → 2026-06-23 A (+162d) | 2026-01-22 → 2026-10-14 (+265d) |  | 0% → 70% | 14d → -38d |  | resources Labor/Helper [473.34 h]; Skilled Labor/Surveyor [33.45 h]; Foreman [35.87 h]; Plumber [196.99 h]; Excavator [80 h]; Pipe with diameter 300mm ; depth: 0 - 1.5m [79.25]; Pipe with diameter 400mm ; depth: 0 - 1.5m [4.01] → Labor/Helper [160 h]; Skilled Labor/Surveyor [8 h]; Foreman [8 h]; Plumber [80 h]; Excavator [80 h]; Pipe with diameter 300mm ; depth: 0 - 1.5m [56.36]; Pipe with diameter 400mm ; depth: 0 - 1.5m [3.44] |
| CO-R10.S04-WE-SD-170 | Trench Backfilling and Compaction Works for Catch Basins of Storm Drainage Network-[Road 10]-[SW-4] | 2026-01-19 → 2026-10-12 (+266d) | 2026-01-26 → 2026-10-19 (+266d) |  |  | 14d → -38d |  | resources Skilled Labor/Surveyor [6.84 h]; Foreman [6.84 h]; Excavator [56 h]; Pipe with diameter 300mm ; depth: 0 - 1.5m [160.5]; Pipe with diameter 400mm ; depth: 0 - 1.5m [10.03] → Skilled Labor/Surveyor [6 h]; Foreman [6 h]; Excavator [56 h]; Pipe with diameter 300mm ; depth: 0 - 1.5m [112.73]; Pipe with diameter 400mm ; depth: 0 - 1.5m [6.87] |
| PW | **Potable Water Network** | 2026-01-04 → 2025-10-01 (-95d) | 2026-02-11 → 2027-01-02 (+325d) |  |  |  |  |  |
| ML | **Main Line Sections** | 2026-01-04 → 2025-10-01 (-95d) | 2026-02-11 → 2026-06-24 (+133d) |  |  |  |  |  |
| CO-R10.S04-WE-PW-100 | Trench Excavation and Bedding Works for Main Lines of Potable Water Network-[Road 10]-[SW-4] | 2026-01-04 → 2025-10-01 A (-95d) | 2026-01-14 → 2025-10-07 A (-99d) |  | 0% → 100% | 0d → none |  | resources Skilled Labor/Surveyor [9.12 h]; Foreman [9.12 h]; Excavator [80 h]; Pipe with diameter 560mm; in depth 1.5m - 3.0m [170.53]; Pipe with diameter 630mm; in depth 1.5m - 3.0m [296.93] → Skilled Labor/Surveyor [8 h]; Foreman [8 h]; Excavator [80 h]; Pipe with diameter 560mm; in depth 1.5m - 3.0m [120]; Pipe with diameter 630mm; in depth 1.5m - 3.0m [209] |
| CO-R10.S04-WE-PW-110 | Pipes Laying and accessories for Main Lines of Potable Water Network-[Road 10]-[SW-4] | 2026-01-15 → 2025-10-02 A (-105d) | 2026-01-26 → 2026-06-18 A (+143d) |  | 0% → 100% | 0d → none |  | resources Labor/Helper [947.41 h]; Skilled Labor/Surveyor [69.51 h]; Foreman [74.98 h]; Plumber [383.91 h]; Excavator [80 h]; Pipe with diameter 560mm; in depth 1.5m - 3.0m [425.33]; Pipe with diameter 630mm; in depth 1.5m - 3.0m [742.32] → Labor/Helper [160 h]; Skilled Labor/Surveyor [8 h]; Foreman [8 h]; Plumber [80 h]; Excavator [80 h]; Pipe with diameter 560mm; in depth 1.5m - 3.0m [300]; Pipe with diameter 630mm; in depth 1.5m - 3.0m [522.5] |
| CO-R10.S04-WE-PW-130 | Trench Backfilling and Compaction Works for Main Lines of Potable Water Network-[Road 10]-[SW-4] | 2026-02-01 → 2026-06-11 A (+130d) | 2026-02-11 → 2026-06-24 A (+133d) | 10d → 4d | 0% → 100% | 0d → none |  | resources Skilled Labor/Surveyor [9.12 h]; Foreman [9.12 h]; Eq. Operator [10.75 h]; Loader [80 h]; Compactor [80 h]; Water Tank [20 h]; Pipe with diameter 560mm; in depth 1.5m - 3.0m [170.53]; Pipe with diameter 630mm; in depth 1.5m - 3.0m [296.93] → Skilled Labor/Surveyor [8 h]; Foreman [8 h]; Eq. Operator [8 h]; Loader [80 h]; Compactor [80 h]; Water Tank [20 h]; Pipe with diameter 560mm; in depth 1.5m - 3.0m [120]; Pipe with diameter 630mm; in depth 1.5m - 3.0m [209] |
| VC | **Valve Chamber** | 2026-01-15 → 2026-06-21 (+157d) | 2026-02-02 → 2026-10-24 (+264d) |  |  |  |  |  |
| CO-R10.S04-WE-PW-210 | Insulation Works for Main Line Valves and Valve Chambers of Potable Water Network-[Road 10]-[SW-4] | 2026-01-29 → 2026-06-21 A (+143d) | 2026-01-29 → 2026-10-20 (+264d) |  | 0% → 60% | 8d → -77d |  | resources Labor/Helper [3.63 h]; Plumber [3.63 h]; Butterfly valves with dia (560)mm on pipes with dia (560)mm. [0.4]; Butterfly valves with dia (630)mm on pipes with dia (630)mm. [1.61]; Wash out valve with dia (150)mm on pipes with dia (560) mm [0.4]; Wash out valve with dia (150)mm on pipes with dia (630) mm [1.2]; Air valves with dia (65mm) mm on pipes with dia(560)mm. [0.4]; Air valves with dia (65mm) mm on pipes with dia(630)mm. [1.2] → Labor/Helper [8 h]; Plumber [8 h]; Butterfly valves with dia (560)mm on pipes with dia (560)mm. [1]; Butterfly valves with dia (630)mm on pipes with dia (630)mm. [2.5]; Wash out valve with dia (150)mm on pipes with dia (560) mm [0.5]; Wash out valve with dia (150)mm on pipes with dia (630) mm [1.5]; Air valves with dia (65mm) mm on pipes with dia(560)mm. [1]; Air valves with dia (65mm) mm on pipes with dia(630)mm. [2] |
| CO-R10.S04-WE-PW-170 | Excavation Works for Main Line Valves and Valve Chambers of Potable Water Network-[Road 10]-[SW-4] | 2026-01-15 → 2026-10-06 (+264d) | 2026-01-15 → 2026-10-06 (+264d) |  |  | 2d → -83d |  | resources Labor/Helper [8.97 h]; Skilled Labor/Surveyor [4.49 h]; Excavator [8 h]; Wash out chamber; on 560 mm dia pipeline Depth 1.5 - 3m [0.05]; Wash out chamber; on 630 mm dia pipeline Depth 1.5 - 3m [0.1]; Air valve chamber on 560 mm dia pipeline Depth 1.5 - 3 m [0.1]; Air valve chamber on 630 mm dia pipeline Depth 1.5 - 3 m [0.2] → Labor/Helper [8 h]; Skilled Labor/Surveyor [4 h]; Excavator [8 h]; Wash out chamber; on 560 mm dia pipeline Depth 1.5 - 3m [0.05]; Wash out chamber; on 630 mm dia pipeline Depth 1.5 - 3m [0.1]; Air valve chamber on 560 mm dia pipeline Depth 1.5 - 3 m [0.1]; Air valve chamber on 630 mm dia pipeline Depth 1.5 - 3 m [0.2] |
| CO-R10.S04-WE-PW-180 | RC Footing Works for Main Line Valves and Valve Chambers of Potable Water Network-[Road 10]-[SW-4] | 2026-01-17 → 2026-10-07 (+263d) | 2026-01-19 → 2026-10-10 (+264d) |  |  | 8d → -77d |  | resources Cons. Carpenter [53.84 h]; Steel Fixer [53.84 h]; Wash out chamber; on 560 mm dia pipeline Depth 1.5 - 3m [0.07]; Wash out chamber; on 630 mm dia pipeline Depth 1.5 - 3m [0.15]; Air valve chamber on 560 mm dia pipeline Depth 1.5 - 3 m [0.15]; Air valve chamber on 630 mm dia pipeline Depth 1.5 - 3 m [0.3] → Cons. Carpenter [48 h]; Steel Fixer [48 h]; Wash out chamber; on 560 mm dia pipeline Depth 1.5 - 3m [0.07]; Wash out chamber; on 630 mm dia pipeline Depth 1.5 - 3m [0.15]; Air valve chamber on 560 mm dia pipeline Depth 1.5 - 3 m [0.15]; Air valve chamber on 630 mm dia pipeline Depth 1.5 - 3 m [0.3] |
| CO-R10.S04-WE-PW-190 | RC Wall Works for Main Line Valves and Valve Chambers of Potable Water Network-[Road 10]-[SW-4] | 2026-01-20 → 2026-10-11 (+264d) | 2026-01-26 → 2026-10-17 (+264d) |  |  | 8d → -77d |  | resources Cons. Carpenter [107.67 h]; Steel Fixer [107.67 h]; Wash out chamber; on 560 mm dia pipeline Depth 1.5 - 3m [0.17]; Wash out chamber; on 630 mm dia pipeline Depth 1.5 - 3m [0.35]; Air valve chamber on 560 mm dia pipeline Depth 1.5 - 3 m [0.35]; Air valve chamber on 630 mm dia pipeline Depth 1.5 - 3 m [1] → Cons. Carpenter [96 h]; Steel Fixer [96 h]; Wash out chamber; on 560 mm dia pipeline Depth 1.5 - 3m [0.17]; Wash out chamber; on 630 mm dia pipeline Depth 1.5 - 3m [0.35]; Air valve chamber on 560 mm dia pipeline Depth 1.5 - 3 m [0.35]; Air valve chamber on 630 mm dia pipeline Depth 1.5 - 3 m [0.7] |
| CO-R10.S04-WE-PW-200 | RC Slab Works for Main Line Valves and Valve Chambers of Potable Water Network-[Road 10]-[SW-4] | 2026-01-27 → 2026-10-18 (+264d) | 2026-01-28 → 2026-10-19 (+264d) |  |  | 8d → -77d |  | resources Cons. Carpenter [35.89 h]; Steel Fixer [35.89 h]; Wash out chamber; on 560 mm dia pipeline Depth 1.5 - 3m [0.1]; Wash out chamber; on 630 mm dia pipeline Depth 1.5 - 3m [0.2]; Air valve chamber on 560 mm dia pipeline Depth 1.5 - 3 m [0.2]; Air valve chamber on 630 mm dia pipeline Depth 1.5 - 3 m [0.4] → Cons. Carpenter [32 h]; Steel Fixer [32 h]; Wash out chamber; on 560 mm dia pipeline Depth 1.5 - 3m [0.1]; Wash out chamber; on 630 mm dia pipeline Depth 1.5 - 3m [0.2]; Air valve chamber on 560 mm dia pipeline Depth 1.5 - 3 m [0.2]; Air valve chamber on 630 mm dia pipeline Depth 1.5 - 3 m [0.4] |
| CO-R10.S04-WE-PW-220 | Backfilling Works for Main Line Valves and Valve Chambers of Potable Water Network-[Road 10]-[SW-4] | 2026-01-31 → 2026-10-21 (+263d) | 2026-02-02 → 2026-10-24 (+264d) |  |  | 8d → -77d |  | resources Labor/Helper [26.92 h]; Skilled Labor/Surveyor [13.46 h]; Excavator [24 h]; Wash out chamber; on 560 mm dia pipeline Depth 1.5 - 3m [0.1]; Wash out chamber; on 630 mm dia pipeline Depth 1.5 - 3m [0.2]; Air valve chamber on 560 mm dia pipeline Depth 1.5 - 3 m [0.2]; Air valve chamber on 630 mm dia pipeline Depth 1.5 - 3 m [0.4] → Labor/Helper [24 h]; Skilled Labor/Surveyor [12 h]; Excavator [24 h]; Wash out chamber; on 560 mm dia pipeline Depth 1.5 - 3m [0.1]; Wash out chamber; on 630 mm dia pipeline Depth 1.5 - 3m [0.2]; Air valve chamber on 560 mm dia pipeline Depth 1.5 - 3 m [0.2]; Air valve chamber on 630 mm dia pipeline Depth 1.5 - 3 m [0.4] |
| FH | **Fire Hydrant** | 2026-01-19 → 2026-12-09 (+324d) | 2026-02-11 → 2027-01-02 (+325d) |  |  |  |  |  |
| CO-R10.S04-WE-PW-140 | Excavation Works for Fire Hydrants of Potable Water Network-[Road 10]-[SW-4] | 2026-01-19 → 2026-12-09 (+324d) | 2026-01-26 → 2026-12-16 (+324d) |  |  | 0d → -137d |  | resources Skilled Labor/Surveyor [6.73 h]; Foreman [6.73 h]; Excavator [56 h] → Skilled Labor/Surveyor [6 h]; Foreman [6 h]; Excavator [56 h] |
| CO-R10.S04-WE-PW-150 | Installation Works for Fire Hydrant of Potable Water Network-[Road 10]-[SW-4] | 2026-01-27 → 2026-12-17 (+324d) | 2026-02-03 → 2026-12-24 (+324d) |  |  | 0d → -137d |  | resources Labor/Helper [125.62 h]; Skilled Labor/Surveyor [6.73 h]; Foreman [6.73 h]; Plumber [125.62 h] → Labor/Helper [112 h]; Skilled Labor/Surveyor [6 h]; Foreman [6 h]; Plumber [112 h] |
| CO-R10.S04-WE-PW-160 | Trench Backfilling and Compaction Works for Fire Hydrants of Potable Water Network-[Road 10]-[SW-4] | 2026-02-04 → 2026-12-26 (+325d) | 2026-02-11 → 2027-01-02 (+325d) |  |  | 0d → -137d |  | resources Skilled Labor/Surveyor [6.73 h]; Foreman [6.73 h]; Excavator [56 h] → Skilled Labor/Surveyor [6 h]; Foreman [6 h]; Excavator [56 h] |
| IR | **Irrigation Network** | 2026-02-12 → 2026-10-06 (+236d) | 2026-03-08 → 2026-11-03 (+240d) |  |  |  |  |  |
| ML | **Main Line Pipes** | 2026-02-12 → 2026-10-06 (+236d) | 2026-03-08 → 2026-11-03 (+240d) |  |  |  |  |  |
| CO-R10.S04-WE-IR-100 | Trench Excavation and Bedding Works for Main Lines of Irrigation Network-[Road 10]-[SW-4] | 2026-02-12 → 2026-10-06 (+236d) | 2026-02-18 → 2026-10-12 (+236d) |  |  | 0d → -194d | CO-R10.S04-WE-EW-110, CO-R10.S04-WE-PW-130, CO-R10.S04-WE-SD-170 → CO-R10.S04-WE-EW-110 | resources Skilled Labor/Surveyor [5.67 h]; Foreman [5.67 h]; Excavator [48 h]; 125 mm pipe; depth 0.0m - 1.5m [407.27] → Skilled Labor/Surveyor; Foreman; Excavator; 125 mm pipe; depth 0.0m - 1.5m [287.34] |
| CO-R10.S04-WE-IR-110 | Pipes Laying Works for Main Lines of Irrigation Network-[Road 10]-[SW-4] | 2026-02-19 → 2026-10-13 (+236d) | 2026-02-26 → 2026-10-20 (+236d) |  |  | 0d → -194d |  | resources Labor/Helper [127.11 h]; Skilled Labor/Surveyor [6.81 h]; Foreman [6.81 h]; Plumber [63.55 h]; Excavator [56 h]; 125 mm pipe; depth 0.0m - 1.5m [1223.82] → Labor/Helper [112 h]; Skilled Labor/Surveyor [6 h]; Foreman [6 h]; Plumber [56 h]; Excavator [56 h]; 125 mm pipe; depth 0.0m - 1.5m [861.95] |
| CO-R10.S04-WE-IR-120 | Installation Works for Main Line Valves of Irrigation Network-[Road 10]-[SW-4] | 2026-02-28 → 2026-10-26 (+240d) | 2026-03-02 → 2026-10-28 (+240d) |  |  | 0d → -198d |  | resources Labor/Helper [143.56 h]; Skilled Labor/Surveyor [7.85 h]; Foreman [7.85 h]; Plumber [143.56 h]; Gate valves dia (90)mm on pipes with dia (125) mm. [16.05] → Labor/Helper [128 h]; Skilled Labor/Surveyor [7 h]; Foreman [7 h]; Plumber [128 h]; Gate valves dia (90)mm on pipes with dia (125) mm. [11] |
| CO-R10.S04-WE-IR-130 | Trench Backfilling and Compaction Works for Main Lines of Irrigation Network-[Road 10]-[SW-4] | 2026-03-03 → 2026-10-29 (+240d) | 2026-03-08 → 2026-11-03 (+240d) |  |  | 0d → -198d |  | resources Skilled Labor/Surveyor [4.54 h]; Foreman [4.54 h]; Excavator [40 h]; 125 mm pipe; depth 0.0m - 1.5m [204.64] → Skilled Labor/Surveyor [4 h]; Foreman [4 h]; Excavator [40 h]; 125 mm pipe; depth 0.0m - 1.5m [143.66] |
| SL | **Street Lighting Network** | 2026-03-09 → 2026-11-04 (+240d) | 2026-07-07 → 2027-02-25 (+233d) |  |  |  |  |  |
| LP | **Lighting Poles Works** | 2026-03-09 → 2026-11-04 (+240d) | 2026-04-23 → 2027-01-26 (+278d) |  |  |  |  |  |
| CO-R10.S04-WE-SL-100 | Foundation Excavation Works for Lighting Poles of Street Lighting Network-[Road 10]-[SW-4] | 2026-03-09 → 2026-11-04 (+240d) | 2026-03-19 → 2026-11-15 (+241d) |  |  | 0d → -198d |  | resources Labor/Helper [323.01 h]; Skilled Labor/Surveyor [81.23 h]; Excavator [288 h]; Lighting poles with one arm, including the power distribution box, screws, cables, 12 meters in height. [1] → Labor/Helper [288 h]; Skilled Labor/Surveyor [144 h]; Excavator [288 h]; Lighting poles with one arm, including the power distribution box, screws, cables, 12 meters in height. [1.2] |
| CO-R10.S04-WE-SL-110 | Installation Works for Lighting Poles Foundation of Street Lighting Network-[Road 10]-[SW-4] | 2026-03-15 → 2026-11-10 (+240d) | 2026-03-29 → 2026-11-21 (+237d) |  |  | 0d → -198d |  | resources Labor/Helper [215.34 h]; Skilled Labor/Surveyor [11.22 h]; Foreman [11.22 h]; Eq. Operator [11.22 h]; Loader [24 h]; Reinforced concrete foundation, for 12m high lighting columns With Drawpits [34.11] → Labor/Helper [192 h]; Skilled Labor/Surveyor [10 h]; Foreman [10 h]; Eq. Operator [10 h]; Loader [24 h]; Reinforced concrete foundation, for 12m high lighting columns With Drawpits [24] |
| CO-R10.S04-WE-SL-120 | Installation Works for Lighting Poles of Street Lighting Network-[Road 10]-[SW-4] | 2026-03-24 → 2026-11-16 (+237d) | 2026-04-13 → 2026-12-06 (+237d) |  |  | 0d → -198d |  | resources Labor/Helper [161.51 h]; Electrician [161.51 h]; Lighting poles with one arm, including the power distribution box, screws, cables, 12 meters in height. [18.06] → Labor/Helper [144 h]; Electrician [144 h]; Lighting poles with one arm, including the power distribution box, screws, cables, 12 meters in height. [13.2] |
| CO-R10.S04-WE-SL-210 | Backfilling Works for Lighting Poles of Street Lighting Network-[Road 10]-[SW-4] | 2026-03-30 → 2026-11-19 (+234d) | 2026-04-15 → 2026-12-06 (+235d) |  |  | 109.5d → -86.5d |  | resources Labor/Helper [269.18 h]; Skilled Labor/Surveyor [134.59 h]; Excavator [240 h]; Lighting poles with one arm, including the power distribution box, screws, cables, 12 meters in height. [7.02] → Labor/Helper [240 h]; Skilled Labor/Surveyor [120 h]; Excavator [240 h]; Lighting poles with one arm, including the power distribution box, screws, cables, 12 meters in height. [4.8] |
| CO-R10.S04-WE-SL-200 | Testing Works for Lighting Poles of Street Lighting Network-[Road 10]-[SW-4] | 2026-04-16 → 2026-12-07 (+235d) | 2026-04-23 → 2026-12-14 (+235d) |  |  | 109.5d → -86.5d |  | resources Labor/Helper [188.42 h]; Electrician [188.42 h]; Lighting poles with one arm, including the power distribution box, screws, cables, 12 meters in height. [7.02] → Labor/Helper [168 h]; Electrician [168 h]; Lighting poles with one arm, including the power distribution box, screws, cables, 12 meters in height. [4.8] |
| CO-R10.S04-WE-SL-130 | Installation Works for Lighting Fixtures With Drop Wire of Street Lighting Network-[Road 10]-[SW-4] | 2026-04-04 → 2027-01-06 (+277d) | 2026-04-23 → 2027-01-26 (+278d) |  |  | 109.5d → -123.5d |  | resources Labor/Helper [323.01 h]; Electrician [323.01 h]; Manlift [288 h]; Street Lighting( LED) Luminaire,(Type C) complete with control gear and lamp, ?.17000 Lumen [34.11] → Labor/Helper [288 h]; Electrician [288 h]; Manlift [288 h]; Street Lighting( LED) Luminaire,(Type C) complete with control gear and lamp, ?.17000 Lumen [24] |
| CW | **Cabling Works** | 2026-04-14 → 2026-12-07 (+237d) | 2026-05-18 → 2027-01-10 (+237d) |  |  |  |  |  |
| CO-R10.S04-WE-SL-140 | Trench Excavation and Bedding Works for Street Lighting Network-[Road 10]-[SW-4] | 2026-04-14 → 2026-12-07 (+237d) | 2026-04-25 → 2026-12-17 (+236d) |  |  | 0d → -198d |  | resources Labor/Helper [89.73 h]; Skilled Labor/Surveyor [44.86 h]; Excavator [80 h] → Labor/Helper [80 h]; Skilled Labor/Surveyor [40 h]; Excavator [80 h] |
| CO-R10.S04-WE-SL-150 | Cable Laying Works for Street Lighting Network-[Road 10]-[SW-4] | 2026-04-26 → 2026-12-19 (+237d) | 2026-05-06 → 2026-12-29 (+237d) |  |  | 0d → -198d |  | resources Labor/Helper [89.73 h]; Electrician [89.73 h]; Low Current Technician [89.73 h]; Supply, installation , test and operation of cables, Copper, (4Cx25mmï¿½,Cu/XLPE/SWA/PVC +1x16mmï¿½ PVC/PVC) [1331.16] → Labor/Helper [80 h]; Electrician [80 h]; Low Current Technician [80 h]; Supply, installation , test and operation of cables, Copper, (4Cx25mm²,Cu/XLPE/SWA/PVC +1x16mm² PVC/PVC) [938.44] |
| CO-R10.S04-WE-SL-160 | Trench Backfilling and Compaction Works for Street Lighting Network-[Road 10]-[SW-4] | 2026-05-07 → 2026-12-30 (+237d) | 2026-05-18 → 2027-01-10 (+237d) |  |  | 0d → -198d |  | resources Skilled Labor/Surveyor [8.97 h]; Foreman [8.97 h]; Excavator [80 h]; Water Tank [20 h]; Supply, installation , test and operation of cables, Copper, (4Cx25mmï¿½,Cu/XLPE/SWA/PVC +1x16mmï¿½ PVC/PVC) [102.32] → Skilled Labor/Surveyor [8 h]; Foreman [8 h]; Excavator [80 h]; Water Tank [20 h]; Supply, installation , test and operation of cables, Copper, (4Cx25mm²,Cu/XLPE/SWA/PVC +1x16mm² PVC/PVC) [72.19] |
| DPB | **Distrubution Panel Boards** | 2026-05-19 → 2027-01-11 (+237d) | 2026-07-07 → 2027-02-25 (+233d) |  |  |  |  |  |
| CO-R10.S04-WE-SL-170 | Foundation Excavation Works For Panel Boards of Street Lighting Network-[Road 10]-[SW-4] | 2026-05-19 → 2027-01-11 (+237d) | 2026-06-13 → 2027-01-31 (+232d) |  |  | 0d → -198d |  | resources Labor/Helper [161.51 h]; Skilled Labor/Surveyor [80.75 h]; Excavator [144 h] → Labor/Helper [144 h]; Skilled Labor/Surveyor [72 h]; Excavator [144 h] |
| CO-R10.S04-WE-SL-180 | Installation Works for Panel Board Concrete Foundations of Street Lighting Network-[Road 10]-[SW-4] | 2026-06-03 → 2027-01-21 (+232d) | 2026-06-16 → 2027-02-03 (+232d) |  |  | 9d → -189d |  | resources Skilled Labor/Surveyor [11.22 h]; Foreman [11.22 h]; Excavator [96 h]; Water Tank [24 h] → Skilled Labor/Surveyor [10 h]; Foreman [10 h]; Excavator [96 h]; Water Tank [24 h] |
| CO-R10.S04-WE-SL-190 | Installation Works for Lighting Panel Boards of Street Lighting Network-[Road 10]-[SW-4] | 2026-06-17 → 2027-02-04 (+232d) | 2026-06-30 → 2027-02-17 (+232d) |  |  | 9d → -189d |  | resources Labor/Helper [107.67 h]; Electrician [107.67 h] → Labor/Helper [96 h]; Electrician [96 h] |
| CO-R10.S04-WE-SL-220 | A wall of concrete blocks to install the KWH meter of Street Lighting Network-[Road 10]-[SW-4] | 2026-06-17 → 2027-02-04 (+232d) | 2026-07-07 → 2027-02-25 (+233d) |  |  | 9d → -189d |  | resources Block Mason [161.51 h]; Road crossing ducts, 4 way (4 x 100mm PVC) [76.24]; Drawpit with medium duty steel cover, size 900x900x1200mm, Type 4 [7.02] → Block Mason [144 h]; Road crossing ducts, 4 way (4 x 100mm PVC) [53.63]; Drawpit with medium duty steel cover, size 900x900x1200mm, Type 4 [5] |
| TE | **Telecom Network** | 2026-06-21 → 2027-03-08 (+260d) | 2026-07-22 → 2027-04-12 (+264d) |  |  |  |  |  |
| PD | **Ducts Works** | 2026-06-21 → 2027-03-08 (+260d) | 2026-07-22 → 2027-04-12 (+264d) |  |  |  |  |  |
| CO-R10.S04-WE-TE-100 | Trench Excavation and Bedding Works for Ducts of Telecom Network-[Road 10]-[SW-4] | 2026-06-21 → 2027-03-08 (+260d) | 2026-06-28 → 2027-03-18 (+263d) |  |  | 0d → -219d |  | resources Skilled Labor/Surveyor [6.73 h]; Foreman [6.73 h]; Excavator [56 h]; 6-way ducts, 50mm dia. HDPE [64.2]; Road crossing ducts (6-way) [6.02] → Skilled Labor/Surveyor [6 h]; Foreman [6 h]; Excavator [56 h]; 6-way ducts, 50mm dia. HDPE [45]; Road crossing ducts (6-way) [4] |
| CO-R10.S04-WE-TE-110 | Pipes Laying Works for Ducts of Telecom Network-[Road 10]-[SW-4] | 2026-06-29 → 2027-03-20 (+264d) | 2026-07-06 → 2027-03-27 (+264d) |  |  | 0d → -219d |  | resources Labor/Helper [125.62 h]; Skilled Labor/Surveyor [6.73 h]; Foreman [6.73 h]; Plumber [62.81 h]; Excavator [56 h]; JCB [28 h]; Truck [56 h]; 6-way ducts, 50mm dia. HDPE [380.19]; Road crossing ducts (6-way) [33.1] → Labor/Helper [112 h]; Skilled Labor/Surveyor [6 h]; Foreman [6 h]; Plumber [56 h]; Excavator [56 h]; JCB [28 h]; Truck [56 h]; 6-way ducts, 50mm dia. HDPE [268]; Road crossing ducts (6-way) [23] |
| CO-R10.S04-WE-TE-120 | Pouring Plain Concrete Above Ducts of Telecom Network-[Road 10]-[SW-4] | 2026-07-07 → 2027-03-28 (+264d) | 2026-07-14 → 2027-04-04 (+264d) |  |  | 0d → -219d |  | resources Skilled Labor/Surveyor [6.73 h]; Foreman [6.73 h]; Cons. Carpenter [125.62 h]; Block Mason [62.81 h]; 6-way ducts, 50mm dia. HDPE [64.2]; Road crossing ducts (6-way) [6.02] → Skilled Labor/Surveyor [6 h]; Foreman [6 h]; Cons. Carpenter [112 h]; Block Mason [56 h]; 6-way ducts, 50mm dia. HDPE [45]; Road crossing ducts (6-way) [4] |
| CO-R10.S04-WE-TE-130 | Trench Backfilling and Compaction Works for Ducts of Telecom Network-[Road 10]-[SW-4] | 2026-07-15 → 2027-04-05 (+264d) | 2026-07-22 → 2027-04-12 (+264d) |  |  | 0d → -219d |  | resources Skilled Labor/Surveyor [6.73 h]; Foreman [6.73 h]; Excavator [56 h]; 6-way ducts, 50mm dia. HDPE [126.39]; Road crossing ducts (6-way) [11.03] → Skilled Labor/Surveyor [6 h]; Foreman [6 h]; Excavator [56 h]; 6-way ducts, 50mm dia. HDPE [89]; Road crossing ducts (6-way) [8] |
| MH | **Manholes Works** | 2026-06-29 → 2027-03-20 (+264d) | 2026-07-22 → 2027-04-12 (+264d) |  |  |  |  |  |
| CO-R10.S04-WE-TE-140 | Excavation Works for Manholes of Telecom Network-[Road 10]-[SW-4] | 2026-06-29 → 2027-03-20 (+264d) | 2026-07-06 → 2027-03-27 (+264d) |  |  | 0d → -219d |  | resources Skilled Labor/Surveyor [6.73 h]; Foreman [6.73 h]; Excavator [56 h]; Manhole Type 2 (2000x1000x1000) [1] → Skilled Labor/Surveyor [6 h]; Foreman [6 h]; Excavator [56 h]; Manhole Type 2 (2000x1000x1000) [0.7] |
| CO-R10.S04-WE-TE-150 | Installation Works for Manholes of Telecom Network-[Road 10]-[SW-4] | 2026-07-07 → 2027-03-28 (+264d) | 2026-07-14 → 2027-04-04 (+264d) |  |  | 0d → -219d |  | resources Skilled Labor/Surveyor [6.73 h]; Foreman [6.73 h]; Excavator [56 h]; Manhole Type 1 (2000x1000x1000) [1]; Manhole Type 2 (2000x1000x1000) [3.01] → Skilled Labor/Surveyor [6 h]; Foreman [6 h]; Excavator [56 h]; Manhole Type 1 (2000x1000x1000) [1]; Manhole Type 2 (2000x1000x1000) [2.1] |
| CO-R10.S04-WE-TE-160 | Backfilling Works for Manholes of Telecom Network-[Road 10]-[SW-4] | 2026-07-15 → 2027-04-05 (+264d) | 2026-07-22 → 2027-04-12 (+264d) |  |  | 0d → -219d |  | resources Skilled Labor/Surveyor [6.73 h]; Foreman [6.73 h]; Excavator [56 h]; Manhole Type 2 (2000x1000x1000) [1] → Skilled Labor/Surveyor [6 h]; Foreman [6 h]; Excavator [56 h]; Manhole Type 2 (2000x1000x1000) [0.7] |
| RD | **Road Works** | 2026-07-23 → 2026-08-25 (+33d) | 2026-10-01 → 2027-06-21 (+263d) |  |  |  |  |  |
| RD | **Pre-Bituminous Construction** | 2026-07-23 → 2027-04-13 (+264d) | 2026-08-09 → 2027-04-29 (+263d) |  |  |  |  |  |

| ID | Task | Start | Finish | Complete | Total float | Predecessors | Other |
| --- | --- | --- | --- | --- | --- | --- | --- |
| CO-R10.S04-WE-RD-100 | Capping and Subgrade Layer for Road Works-[Road 10]-[SW-4] | 2026-07-23 → 2027-04-13 (+264d) | 2026-08-05 → 2027-04-26 (+264d) |  | 2d → -219d |  | resources Labor/Helper [219.8 h]; Skilled Labor/Surveyor [54.8 h]; Loader [144 h]; Grader [144 h]; Road Roller [144 h]; Water Tank [144 h]; 300mm capping layer underneath subgrade , CBR?15% [4813.03]; 300mm thick Subgrade, including subgrade preparation, CBR?25% [4813.03] → Labor/Helper [288 h]; Skilled Labor/Surveyor [144 h]; Loader [144 h]; Grader [144 h]; Road Roller [144 h]; Water Tank [144 h]; 300mm capping layer underneath subgrade , CBR?15% [3390.73]; 300mm thick Subgrade, including subgrade preparation, CBR?25% [3390.73] |
| CO-R10.S04-WE-RD-110 | Aggregate Base Course Layer for Road Works-[Road 10]-[SW-4] | 2026-07-27 → 2027-04-17 (+264d) | 2026-08-09 → 2027-04-29 (+263d) |  | 7d → -191d |  | resources Labor/Helper [323.01 h]; Skilled Labor/Surveyor [161.51 h]; Foreman [161.51 h]; Loader [144 h]; Grader [144 h]; Road Roller [144 h]; Aggregate base course 200mm thick after compaction in two layers(Grading 1); CBR?80%; including watering, compaction and testing [3209.02] → Labor/Helper [288 h]; Skilled Labor/Surveyor [144 h]; Foreman [144 h]; Loader [144 h]; Grader [144 h]; Road Roller [144 h]; Aggregate base course 200mm thick after compaction in two layers(Grading 1); CBR?80%; including watering, compaction and testing [2260.72] |
| LS | **Pavement Works** | 2026-07-30 → 2026-08-25 (+26d) | 2026-10-01 → 2027-06-21 (+263d) |  |  |  |  |
| CO-R10.S04-WE-RD-120 | Fixing of Curbstone for Sidewalks Pavement-[Road 10]-[SW-4] | 2026-07-30 → 2026-08-25 A (+26d) | 2026-08-12 → 2026-08-31 A (+19d) | 0% → 100% | 7d → none |  | resources Labor/Helper [875.44 h]; Block Mason [2626.31 h]; Precast Concrete Kerb, Type K1 [1775.55]; Precast Concrete Kerb, Type L1 [3523] → Labor/Helper [288 h]; Block Mason [864 h]; Precast Concrete Kerb, Type K1 [1250.99]; Precast Concrete Kerb, Type L1 [2482.11] |
| CO-R10.S04-WE-RD-130 | Fixing of Interlock Tiles for Sidewalks Pavement-[Road 10]-[SW-4] | 2026-09-17 → 2026-08-25 A (-23d) | 2026-10-01 → 2027-06-21 (+263d) | 0% → 50% | 0d → -216d |  | resources Labor/Helper [970.92 h]; Block Mason [2912.75 h]; Interlocking block pavers for sidewalk/footpath 60mm thick on and including 30mm Sand Bedding, 200mm Aggregate subbase, all in accordance with authority standards and complete as per specifications [3170.9]; Extraover for Pedestrian ramps [8.03] → Labor/Helper [432 h]; Block Mason [1296 h]; Interlocking block pavers for sidewalk/footpath 60mm thick on and including 30mm Sand Bedding, 200mm Aggregate subbase, all in accordance with authority standards and complete as per specifications [2233.91]; Extraover for Pedestrian ramps [5.5] |
| 5 | **Road 11 Local 1 ( 670 LM )** | 2025-08-04 → 2025-04-23 (-103d) | 2026-10-13 → 2027-07-31 (+291d) |  |  |  |  |
| SW_5 | **SW_5** | 2025-08-04 → 2025-04-26 (-100d) | 2026-10-11 → 2027-07-31 (+293d) |  |  |  |  |
| EW | **Earthworks** | 2025-08-04 → 2025-04-26 (-100d) | 2025-08-31 → 2025-05-03 (-120d) |  |  |  |  |
| EW | **Earthworks** | 2025-08-04 → 2025-04-26 (-100d) | 2025-08-31 → 2025-05-03 (-120d) |  |  |  |  |
| CO-R11.S05-EW-100 | Roadway Excavation Works Upto Design Level for Earthworks-[Road 11]-[SW-5] | 2025-08-04 → 2025-04-26 A (-100d) | 2025-08-17 → 2025-04-27 A (-112d) | 0% → 100% | 11d → none |  | resources Labor/Helper [218.86 h]; Skilled Labor/Surveyor [27.36 h]; Foreman [27.36 h]; Water Tank [192 h]; Dozer [192 h]; Roadway Excavation for cuttings; on any type of material for all depths including trimming and Preparation of excavated surfaces and disposal. [13223.3] → Labor/Helper [192 h]; Skilled Labor/Surveyor [24 h]; Foreman [24 h]; Water Tank [192 h]; Dozer [192 h]; Roadway Excavation for cuttings; on any type of material for all depths including trimming and Preparation of excavated surfaces and disposal. [9316.87] |
| CO-R11.S05-EW-110 | Embankments Works Upto Design Level for Earthworks-[Road 11]-[SW-5] | 2025-08-18 → 2025-04-26 A (-114d) | 2025-08-31 → 2025-05-03 A (-120d) | 0% → 100% | 17d → none |  | resources Labor/Helper [820.72 h]; Skilled Labor/Surveyor [102.59 h]; Foreman [102.59 h]; Water Tank [720 h]; Dozer [720 h]; Embankments to the ROW, with suitable material other than top soil or rock according to specifications [22259.5] → Labor/Helper [720 h]; Skilled Labor/Surveyor [90 h]; Foreman [90 h]; Water Tank [720 h]; Dozer [720 h]; Embankments to the ROW, with suitable material other than top soil or rock according to specifications [15683.9] |
| SW | **Sewage Network** | 2025-09-01 → 2025-08-12 (-20d) | 2025-10-13 → 2026-08-31 (+322d) |  |  |  |  |
| ML | **Main Line Sections** | 2025-09-01 → 2025-08-12 (-20d) | 2025-10-13 → 2026-04-06 (+175d) |  |  |  |  |
| CO-R11.S05-SW-100 | Trench Excavation and Bedding Works for Main Lines of Sewage Network-[Road 11]-[SW-5] | 2025-09-01 → 2025-08-12 A (-20d) | 2025-09-14 → 2025-08-14 A (-31d) | 0% → 100% | 17d → none | CO-R11.S05-EW-110, ENG-MS-SW-ML-A-110, ENG-SH-SW-ML-A-110, CO-R14.S08-SW-100 → CO-R11.S05-EW-110, ENG-MS-SW-ML-A-110, ENG-SH-SW-ML-A-110 | resources Labor/Helper [612.48 h]; Foreman [612.48 h]; Excavator [192 h]; Nominal bore : 160mm; Depth : 1.5m - 2.5m [42.13]; Depth : 1.5 - 2.5m [14.04]; Depth : 2.5 - 3.5m [17.05]; Depth : 3.5 - 4.5m [17.05]; Depth : 4.5 - 5.5m [28.09]; Depth : 5.5 - 6.5m [28.09]; Depth : 6.5 -7.5m [85.27]; Depth : 6.5 -7.5m [99.31]; Depth :more than 7.5m [198.62] → Labor/Helper [192 h]; Foreman [192 h]; Excavator [192 h]; Nominal bore : 160mm; Depth : 1.5m - 2.5m [30]; Depth : 1.5 - 2.5m [10]; Depth : 2.5 - 3.5m [12.23]; Depth : 3.5 - 4.5m [12.23]; Depth : 4.5 - 5.5m [20]; Depth : 5.5 - 6.5m [20]; Depth : 6.5 -7.5m [60]; Depth : 6.5 -7.5m [70]; Depth :more than 7.5m [140] |
| CO-R11.S05-SW-120 | Pipes Laying Works for Main Lines of Sewage Network-[Road 11]-[SW-5] | 2025-09-15 → 2025-09-16 A (+1d) | 2025-09-29 → 2026-04-05 A (+188d) | 0% → 100% | 17d → none |  | resources Labor/Helper [932.37 h]; Skilled Labor/Surveyor [133.17 h]; Foreman [148.6 h]; Plumber [827.45 h]; Excavator [192 h]; Nominal bore : 160mm; Depth : 1.5m - 2.5m [127.4]; Depth : 1.5 - 2.5m [42.13]; Depth : 2.5 - 3.5m [52.16]; Depth : 3.5 - 4.5m [52.16]; Depth : 4.5 - 5.5m [85.27]; Depth : 5.5 - 6.5m [85.27]; Depth : 6.5 -7.5m [255.8]; Depth : 6.5 -7.5m [297.93]; Depth :more than 7.5m [595.86] → Labor/Helper [384 h]; Skilled Labor/Surveyor [20 h]; Foreman [20 h]; Plumber [192 h]; Excavator [192 h]; Nominal bore : 160mm; Depth : 1.5m - 2.5m [90]; Depth : 1.5 - 2.5m [30]; Depth : 2.5 - 3.5m [36.67]; Depth : 3.5 - 4.5m [36.67]; Depth : 4.5 - 5.5m [60]; Depth : 5.5 - 6.5m [60]; Depth : 6.5 -7.5m [180]; Depth : 6.5 -7.5m [210]; Depth :more than 7.5m [420] |
| CO-R11.S05-SW-130 | Trench Backfilling and Compaction Works for Main Lines of Sewage Network-[Road 11]-[SW-5] | 2025-09-30 → 2025-09-18 A (-12d) | 2025-10-13 → 2026-04-06 A (+175d) | 0% → 100% | 17d → none | ENG-SH-SW-ML-A-110 FF, ENG-MS-SW-ML-A-110 FF, CO-R11.S05-SW-120, CO-R11.S05-SW-210 FF → ENG-SH-SW-ML-A-110 FF, ENG-MS-SW-ML-A-110 FF, CO-R11.S05-SW-120 | resources Skilled Labor/Surveyor [321.63 h]; Foreman [358.9 h]; Excavator [192 h]; Nominal bore : 160mm; Depth : 1.5m - 2.5m [21.07]; Depth : 1.5 - 2.5m [7.02]; Depth : 2.5 - 3.5m [8.03]; Depth : 3.5 - 4.5m [8.03]; Depth : 4.5 - 5.5m [14.04]; Depth : 5.5 - 6.5m [14.04]; Depth : 6.5 -7.5m [42.13]; Depth : 6.5 -7.5m [50.16]; Depth :more than 7.5m [99.31] → Skilled Labor/Surveyor [20 h]; Foreman [20 h]; Excavator [192 h]; Nominal bore : 160mm; Depth : 1.5m - 2.5m [15]; Depth : 1.5 - 2.5m [5]; Depth : 2.5 - 3.5m [6.11]; Depth : 3.5 - 4.5m [6.11]; Depth : 4.5 - 5.5m [10]; Depth : 5.5 - 6.5m [10]; Depth : 6.5 -7.5m [30]; Depth : 6.5 -7.5m [35]; Depth :more than 7.5m [70] |
| 1 | **Manholes** | 2025-09-15 → 2026-08-20 (+339d) | 2025-09-30 → 2026-08-31 (+335d) |  |  |  |  |
| CO-R11.S05-SW-160 | Excavation Works for Main Line Manholes of Sewage Network-[Road 11]-[SW-5] | 2025-09-15 → 2026-08-20 A (+339d) | 2025-09-15 → 2026-08-20 A (+339d) | 0% → 100% | 28d → none |  | resources Labor/Helper [27.36 h]; Skilled Labor/Surveyor [13.68 h]; Excavator [24 h]; Depth: not exceeding 1.5m [0.15]; Depth: 1.5 - 2.5m [0.45]; Depth: 3.5 - 4.5m [0.15]; Depth: 4.5 - 5.5m [0.15]; Depth:6.5 - 7.5m [0.3] → Labor/Helper [24 h]; Skilled Labor/Surveyor [12 h]; Excavator [24 h]; Depth: not exceeding 1.5m [0.15]; Depth: 1.5 - 2.5m [0.45]; Depth: 3.5 - 4.5m [0.15]; Depth: 4.5 - 5.5m [0.15]; Depth:6.5 - 7.5m [0.3] |
| CO-R11.S05-SW-170 | Installation RC Footing Works for Main Line Manholes of Sewage Network-[Road 11]-[SW-5] | 2025-09-16 → 2026-08-22 A (+340d) | 2025-09-17 → 2026-08-23 A (+340d) | 0% → 100% | 28d → none |  | resources Cons. Carpenter [109.43 h]; Steel Fixer [109.43 h]; Depth: not exceeding 1.5m [0.1]; Depth: 1.5 - 2.5m [0.3]; Depth: 3.5 - 4.5m [0.1]; Depth: 4.5 - 5.5m [0.1]; Depth:6.5 - 7.5m [0.2] → Cons. Carpenter [96 h]; Steel Fixer [96 h]; Depth: not exceeding 1.5m [0.1]; Depth: 1.5 - 2.5m [0.3]; Depth: 3.5 - 4.5m [0.1]; Depth: 4.5 - 5.5m [0.1]; Depth:6.5 - 7.5m [0.2] |
| CO-R11.S05-SW-180 | Install Grp Liner Wall Works for Main Line Manholes of Sewage Network-[Road 11]-[SW-5] | 2025-09-18 → 2026-08-24 A (+340d) | 2025-09-22 → 2026-08-27 A (+339d) | 0% → 100% | 28d → none |  | resources Labor/Helper [109.43 h]; Plumber [109.43 h]; Depth: not exceeding 1.5m [0.4]; Depth: 1.5 - 2.5m [1]; Depth: 3.5 - 4.5m [0.4]; Depth: 4.5 - 5.5m [0.4]; Depth:6.5 - 7.5m [1] → Labor/Helper [96 h]; Plumber [96 h]; Depth: not exceeding 1.5m [0.4]; Depth: 1.5 - 2.5m [1.2]; Depth: 3.5 - 4.5m [0.4]; Depth: 4.5 - 5.5m [0.4]; Depth:6.5 - 7.5m [0.8] |
| CO-R11.S05-SW-190 | Pouring Grp Liner Wall Works for Main Line Manholes of Sewage Network-[Road 11]-[SW-5] | 2025-09-24 → 2026-08-28 A (+338d) | 2025-09-24 → 2026-08-28 A (+338d) | 0% → 100% | 28d → none |  | resources Cons. Carpenter [54.71 h]; Steel Fixer [54.71 h]; Depth: not exceeding 1.5m [0.05]; Depth: 1.5 - 2.5m [0.15]; Depth: 3.5 - 4.5m [0.05]; Depth: 4.5 - 5.5m [0.05]; Depth:6.5 - 7.5m [0.1] → Cons. Carpenter [48 h]; Steel Fixer [48 h]; Depth: not exceeding 1.5m [0.05]; Depth: 1.5 - 2.5m [0.15]; Depth: 3.5 - 4.5m [0.05]; Depth: 4.5 - 5.5m [0.05]; Depth:6.5 - 7.5m [0.1] |
| CO-R11.S05-SW-200 | Backfilling Works for Main Line Manholes of Sewage Network-[Road 11]-[SW-5] | 2025-09-25 → 2026-08-29 A (+338d) | 2025-09-29 → 2026-08-30 A (+335d) | 0% → 100% | 28d → none |  | resources Labor/Helper [109.43 h]; Skilled Labor/Surveyor [54.71 h]; Excavator [96 h]; Depth: not exceeding 1.5m [0.15]; Depth: 1.5 - 2.5m [0.45]; Depth: 3.5 - 4.5m [0.15]; Depth: 4.5 - 5.5m [0.15]; Depth:6.5 - 7.5m [0.3] → Labor/Helper [96 h]; Skilled Labor/Surveyor [48 h]; Excavator [96 h]; Depth: not exceeding 1.5m [0.15]; Depth: 1.5 - 2.5m [0.45]; Depth: 3.5 - 4.5m [0.15]; Depth: 4.5 - 5.5m [0.15]; Depth:6.5 - 7.5m [0.3] |
| CO-R11.S05-SW-210 | Testing Works for Main Line Manholes of Sewage Network-[Road 11]-[SW-5] | 2025-09-30 → 2026-08-30 A (+334d) | 2025-09-30 → 2026-08-31 A (+335d) | 0% → 100% | 28d → none |  | resources Labor/Helper [27.36 h]; Plumber [27.36 h]; Depth: not exceeding 1.5m [0.05]; Depth: 1.5 - 2.5m [0.15]; Depth: 3.5 - 4.5m [0.05]; Depth: 4.5 - 5.5m [0.05]; Depth:6.5 - 7.5m [0.1] → Labor/Helper [24 h]; Plumber [24 h]; Depth: not exceeding 1.5m [0.05]; Depth: 1.5 - 2.5m [0.15]; Depth: 3.5 - 4.5m [0.05]; Depth: 4.5 - 5.5m [0.05]; Depth:6.5 - 7.5m [0.1] |
| SD | **Storm Drainage Network** | 2025-10-26 → 2025-07-29 (-89d) | 2026-01-14 → 2026-04-30 (+106d) |  |  |  |  |
| ML | **Main Line Sections** | 2025-10-26 → 2025-07-29 (-89d) | 2026-01-14 → 2025-08-20 (-147d) |  |  |  |  |
| CO-R11.S05-SD-100 | Trench Excavation and Bedding Works for Main Lines of Storm Drainage Network-[Road 11]-[SW-5] | 2025-10-26 → 2025-07-29 A (-89d) | 2025-11-05 → 2025-08-03 A (-94d) | 0% → 100% | 0d → none | ENG-SH-SD-ML-A-110, CO-R11.S05-EW-110, CO-R11.S05-EW-100, CO-R11.S05-SW-130 SS+3d, CO-R11.S05-SW-130 FF+3d, ENG-MS-SD-ML-A-110, CO-R14.S08-SD-100 → ENG-SH-SD-ML-A-110, CO-R11.S05-EW-110, CO-R11.S05-EW-100, ENG-MS-SD-ML-A-110 | resources Skilled Labor/Surveyor [238.19 h]; Foreman [238.19 h]; Excavator [112 h]; Pipe with diameter 600mm ; depth: 1.51m - 2.5m [44.14]; Pipe with diameter 700mm ; depth: 1.51m - 2.5m [30.09]; Pipe with diameter 800mm ; depth: 0.0m - 1.5m [14.04]; Pipe with diameter 800mm ; depth: 1.51m - 2.5m [58.18]; Pipe with diameter 800mm ; depth: 2.51m - 3.5m [20.06]; Pipe with diameter 900mm ; depth: 0.0m - 1.5m [14.04]; Pipe with diameter 900mm ; depth: 1.51m - 2.5m [48.15] → Skilled Labor/Surveyor [12 h]; Foreman [12 h]; Excavator [112 h]; Pipe with diameter 600mm ; depth: 1.51m - 2.5m [31.46]; Pipe with diameter 700mm ; depth: 1.51m - 2.5m [21.04]; Pipe with diameter 800mm ; depth: 0.0m - 1.5m [10]; Pipe with diameter 800mm ; depth: 1.51m - 2.5m [41.02]; Pipe with diameter 800mm ; depth: 2.51m - 3.5m [14]; Pipe with diameter 900mm ; depth: 0.0m - 1.5m [10]; Pipe with diameter 900mm ; depth: 1.51m - 2.5m [33.7] |
| CO-R11.S05-SD-120 | Pipes Laying Works for Main Lines of Storm Drainage Network-[Road 11]-[SW-5] | 2025-11-06 → 2025-08-12 A (-86d) | 2025-11-17 → 2025-08-14 A (-95d) | 0% → 100% | 0d → none | CO-R11.S05-SD-100, CO-R14.S08-SD-120 → CO-R11.S05-SD-100 | resources Labor/Helper [723.07 h]; Skilled Labor/Surveyor [36.15 h]; Foreman [36.15 h]; Plumber [361.53 h]; Excavator [120 h]; Pipe with diameter 600mm ; depth: 1.51m - 2.5m [133.42]; Pipe with diameter 700mm ; depth: 1.51m - 2.5m [89.28]; Pipe with diameter 800mm ; depth: 0.0m - 1.5m [42.13]; Pipe with diameter 800mm ; depth: 1.51m - 2.5m [174.55]; Pipe with diameter 800mm ; depth: 2.51m - 3.5m [59.18]; Pipe with diameter 900mm ; depth: 0.0m - 1.5m [42.13]; Pipe with diameter 900mm ; depth: 1.51m - 2.5m [143.45] → Labor/Helper [240 h]; Skilled Labor/Surveyor [12 h]; Foreman [12 h]; Plumber [120 h]; Excavator [120 h]; Pipe with diameter 600mm ; depth: 1.51m - 2.5m [94.39]; Pipe with diameter 700mm ; depth: 1.51m - 2.5m [63.13]; Pipe with diameter 800mm ; depth: 0.0m - 1.5m [30]; Pipe with diameter 800mm ; depth: 1.51m - 2.5m [123.06]; Pipe with diameter 800mm ; depth: 2.51m - 3.5m [42]; Pipe with diameter 900mm ; depth: 0.0m - 1.5m [30]; Pipe with diameter 900mm ; depth: 1.51m - 2.5m [101.11] |
| CO-R11.S05-SD-130 | Trench Backfilling and Compaction Works for Main Lines of Storm Drainage Network-[Road 11]-[SW-5] | 2025-12-29 → 2025-08-13 A (-138d) | 2026-01-14 → 2025-08-20 A (-147d) | 0% → 100% | 23d → none | CO-R11.S05-SD-120 SS+3d, CO-R11.S05-SD-120 FF+3d, ENG-SH-SD-ML-A-110 FF, CO-R10.S03-ES-SD-130, ENG-MS-SD-ML-A-110 FF, CO-R11.S05-SD-120, CO-R11.S05-SD-220 FF, CO-R10.S03-WE-SD-130 → CO-R11.S05-SD-120 SS+3d, CO-R11.S05-SD-120 FF+3d, ENG-SH-SD-ML-A-110 FF, ENG-MS-SD-ML-A-110 FF, CO-R11.S05-SD-120 | resources Skilled Labor/Surveyor [306.24 h]; Foreman [306.24 h]; Excavator [120 h]; Pipe with diameter 600mm ; depth: 1.51m - 2.5m [23.07]; Pipe with diameter 700mm ; depth: 1.51m - 2.5m [16.05]; Pipe with diameter 800mm ; depth: 0.0m - 1.5m [7.02]; Pipe with diameter 800mm ; depth: 1.51m - 2.5m [30.09]; Pipe with diameter 800mm ; depth: 2.51m - 3.5m [10.03]; Pipe with diameter 900mm ; depth: 0.0m - 1.5m [7.02]; Pipe with diameter 900mm ; depth: 1.51m - 2.5m [24.08] → Skilled Labor/Surveyor [12 h]; Foreman [12 h]; Excavator [120 h]; Pipe with diameter 600mm ; depth: 1.51m - 2.5m [15.73]; Pipe with diameter 700mm ; depth: 1.51m - 2.5m [10.52]; Pipe with diameter 800mm ; depth: 0.0m - 1.5m [5]; Pipe with diameter 800mm ; depth: 1.51m - 2.5m [20.51]; Pipe with diameter 800mm ; depth: 2.51m - 3.5m [7]; Pipe with diameter 900mm ; depth: 0.0m - 1.5m [5]; Pipe with diameter 900mm ; depth: 1.51m - 2.5m [16.85] |
| MH | **Manholes** | 2025-11-06 → 2026-03-22 (+136d) | 2025-11-22 → 2026-04-07 (+136d) |  |  |  |  |
| CO-R11.S05-SD-180 | Trench Excavation and Bedding Works for Manholes of Storm Drainage Network-[Road 11]-[SW-5] | 2025-11-06 → 2026-03-22 A (+136d) | 2025-11-06 → 2026-03-31 A (+145d) | 0% → 100% | 69d → none |  | resources Labor/Helper [27.36 h]; Skilled Labor/Surveyor [13.68 h]; Excavator [24 h]; MH ; depth: 0.0m - 1.5m [0.15]; MH ; depth: 1.51m - 2.5m [0.45]; MH ; depth: 2.51 - 3.5m [0.15]; MH ; depth: 1.51m - 2.5m [0.3]; MH ; depth: 2.51 - 3.5m [0.45]; MH ; depth: 2.51 - 3.5m [0.3] → Labor/Helper [24 h]; Skilled Labor/Surveyor [12 h]; Excavator [24 h]; MH ; depth: 0.0m - 1.5m [0.15]; MH ; depth: 1.51m - 2.5m [0.45]; MH ; depth: 2.51 - 3.5m [0.15]; MH ; depth: 1.51m - 2.5m [0.3]; MH ; depth: 2.51 - 3.5m [0.45]; MH ; depth: 2.51 - 3.5m [0.3] |
| CO-R11.S05-SD-190 | Install RC Footing Works for Manholes of Storm Drainage Network-[Road 11]-[SW-5] | 2025-11-08 → 2026-04-01 A (+144d) | 2025-11-08 → 2026-04-01 A (+144d) | 0% → 100% | 69d → none |  | resources Cons. Carpenter [54.71 h]; Steel Fixer [54.71 h]; MH ; depth: 0.0m - 1.5m [0.05]; MH ; depth: 1.51m - 2.5m [0.15]; MH ; depth: 2.51 - 3.5m [0.05]; MH ; depth: 1.51m - 2.5m [0.1]; MH ; depth: 2.51 - 3.5m [0.15]; MH ; depth: 2.51 - 3.5m [0.1] → Cons. Carpenter [48 h]; Steel Fixer [48 h]; MH ; depth: 0.0m - 1.5m [0.05]; MH ; depth: 1.51m - 2.5m [0.15]; MH ; depth: 2.51 - 3.5m [0.05]; MH ; depth: 1.51m - 2.5m [0.1]; MH ; depth: 2.51 - 3.5m [0.15]; MH ; depth: 2.51 - 3.5m [0.1] |
| CO-R11.S05-SD-200 | Install RC Wall Rings & Slab Works for Manholes of Storm Drainage Network-[Road 11]-[SW-5] | 2025-11-09 → 2026-04-02 A (+144d) | 2025-11-12 → 2026-04-04 A (+143d) | 0% → 100% | 69d → none |  | resources Cons. Carpenter [218.86 h]; Steel Fixer [218.86 h]; MH ; depth: 0.0m - 1.5m [0.45]; MH ; depth: 1.51m - 2.5m [1]; MH ; depth: 2.51 - 3.5m [0.45]; MH ; depth: 2.51 - 3.5m [1] → Cons. Carpenter [192 h]; Steel Fixer [192 h]; MH ; depth: 0.0m - 1.5m [0.45]; MH ; depth: 1.51m - 2.5m [1.35]; MH ; depth: 2.51 - 3.5m [0.45]; MH ; depth: 1.51m - 2.5m [0.9]; MH ; depth: 2.51 - 3.5m [1.35]; MH ; depth: 2.51 - 3.5m [0.9] |
| CO-R11.S05-SD-210 | Testing Works for Manholes of Storm Drainage Network-[Road 11]-[SW-5] | 2025-11-13 → 2026-04-05 A (+143d) | 2025-11-13 → 2026-04-06 A (+144d) | 0% → 100% | 69d → none |  | resources Labor/Helper [27.36 h]; Plumber [27.36 h]; MH ; depth: 0.0m - 1.5m [0.1]; MH ; depth: 1.51m - 2.5m [0.3]; MH ; depth: 2.51 - 3.5m [0.1]; MH ; depth: 1.51m - 2.5m [0.2]; MH ; depth: 2.51 - 3.5m [0.3]; MH ; depth: 2.51 - 3.5m [0.2] → Labor/Helper [24 h]; Plumber [24 h]; MH ; depth: 0.0m - 1.5m [0.1]; MH ; depth: 1.51m - 2.5m [0.3]; MH ; depth: 2.51 - 3.5m [0.1]; MH ; depth: 1.51m - 2.5m [0.2]; MH ; depth: 2.51 - 3.5m [0.3]; MH ; depth: 2.51 - 3.5m [0.2] |
| CO-R11.S05-SD-220 | Backfilling Works for Manholes of Storm Drainage Network-[Road 11]-[SW-5] | 2025-11-15 → 2026-04-06 A (+142d) | 2025-11-22 → 2026-04-07 A (+136d) | 0% → 100% | 69d → none |  | resources Labor/Helper [191.5 h]; Skilled Labor/Surveyor [95.75 h]; Excavator [168 h]; MH ; depth: 0.0m - 1.5m [0.2]; MH ; depth: 1.51m - 2.5m [1]; MH ; depth: 2.51 - 3.5m [0.2]; MH ; depth: 1.51m - 2.5m [0.4]; MH ; depth: 2.51 - 3.5m [1]; MH ; depth: 2.51 - 3.5m [0.4] → Labor/Helper [168 h]; Skilled Labor/Surveyor [84 h]; Excavator [168 h]; MH ; depth: 0.0m - 1.5m [0.2]; MH ; depth: 1.51m - 2.5m [0.6]; MH ; depth: 2.51 - 3.5m [0.2]; MH ; depth: 1.51m - 2.5m [0.4]; MH ; depth: 2.51 - 3.5m [0.6]; MH ; depth: 2.51 - 3.5m [0.4] |
| CB | **Catch Basin Sections** | 2025-11-24 → 2026-04-25 (+152d) | 2025-12-28 → 2026-04-30 (+123d) |  |  |  |  |
| CO-R11.S05-SD-140 | Trench Excavation and Bedding Works for Catch Basins of Storm Drainage Network-[Road 11]-[SW-5] | 2025-11-24 → 2026-04-25 A (+152d) | 2025-11-30 → 2026-04-30 A (+151d) | 0% → 100% | 112d → none |  | resources Skilled Labor/Surveyor [5.7 h]; Foreman [5.7 h]; Excavator [48 h]; Pipe with diameter 300mm ; depth: 0 - 1.5m [69.22]; Pipe with diameter 400mm ; depth: 0 - 1.5m [4.01] → Skilled Labor/Surveyor [5 h]; Foreman [5 h]; Excavator [48 h]; Pipe with diameter 300mm ; depth: 0 - 1.5m [49.34]; Pipe with diameter 400mm ; depth: 0 - 1.5m [3.01] |
| CO-R11.S05-SD-150 | Installation and Pipes Laying Connection Works for Catch Basins of Storm Drainage Network-[Road 11]-[SW-5] | 2025-12-01 → 2026-04-25 A (+145d) | 2025-12-08 → 2026-04-30 A (+143d) | 0% → 100% | 112d → none |  | resources Labor/Helper [255.34 h]; Skilled Labor/Surveyor [13.68 h]; Foreman [13.68 h]; Excavator [112 h]; Pipe with diameter 300mm ; depth: 0 - 1.5m [209.65]; Pipe with diameter 400mm ; depth: 0 - 1.5m [13.04] → Labor/Helper [224 h]; Skilled Labor/Surveyor [12 h]; Foreman [12 h]; Excavator [112 h]; Pipe with diameter 300mm ; depth: 0 - 1.5m [148.02]; Pipe with diameter 400mm ; depth: 0 - 1.5m [9.03] |
| CO-R11.S05-SD-160 | Testing Works for Catch Basins of Storm Drainage Network-[Road 11]-[SW-5] | 2025-12-09 → 2026-04-25 A (+137d) | 2025-12-20 → 2026-04-30 A (+131d) | 0% → 100% | 112d → none |  | resources Labor/Helper [182.38 h]; Skilled Labor/Surveyor [9.12 h]; Foreman [9.12 h]; Plumber [91.19 h]; Excavator [80 h]; Pipe with diameter 300mm ; depth: 0 - 1.5m [47.15]; Pipe with diameter 400mm ; depth: 0 - 1.5m [3.01] → Labor/Helper [160 h]; Skilled Labor/Surveyor [8 h]; Foreman [8 h]; Plumber [80 h]; Excavator [80 h]; Pipe with diameter 300mm ; depth: 0 - 1.5m [32.89]; Pipe with diameter 400mm ; depth: 0 - 1.5m [2.01] |
| CO-R11.S05-SD-170 | Trench Backfilling and Compaction Works for Catch Basins of Storm Drainage Network-[Road 11]-[SW-5] | 2025-12-21 → 2026-04-25 A (+125d) | 2025-12-28 → 2026-04-30 A (+123d) | 0% → 100% | 112d → none |  | resources Skilled Labor/Surveyor [6.84 h]; Foreman [6.84 h]; Excavator [56 h]; Pipe with diameter 300mm ; depth: 0 - 1.5m [93.29]; Pipe with diameter 400mm ; depth: 0 - 1.5m [6.02] → Skilled Labor/Surveyor [6 h]; Foreman [6 h]; Excavator [56 h]; Pipe with diameter 300mm ; depth: 0 - 1.5m [65.79]; Pipe with diameter 400mm ; depth: 0 - 1.5m [4.01] |
| IR | **Irrigation Network** | 2025-12-29 → 2026-04-25 (+117d) | 2026-01-21 → 2026-11-19 (+302d) |  |  |  |  |
| ML | **Main Line Pipes** | 2025-12-29 → 2026-04-25 (+117d) | 2026-01-21 → 2026-11-19 (+302d) |  |  |  |  |
| CO-R11.S05-IR-100 | Trench Excavation and Bedding Works for Main Lines of Irrigation Network-[Road 11]-[SW-5] | 2025-12-29 → 2026-04-25 A (+117d) | 2026-01-01 → 2026-04-30 A (+119d) | 0% → 100% | 112d → none |  | resources Skilled Labor/Surveyor [4.56 h]; Foreman [4.56 h]; Excavator [32 h]; 125 mm pipe; depth 0.0m - 1.5m [238.75] → Skilled Labor/Surveyor [4 h]; Foreman [4 h]; Excavator [32 h]; 125 mm pipe; depth 0.0m - 1.5m [167.68] |
| CO-R11.S05-IR-110 | Pipes Laying Works for Main Lines of Irrigation Network-[Road 11]-[SW-5] | 2026-01-03 → 2026-04-25 A (+112d) | 2026-01-10 → 2026-11-09 (+303d) | 0% → 70% | 112d → -133d |  | resources Labor/Helper [764.95 h]; Skilled Labor/Surveyor [19.46 h]; Foreman [25.36 h]; Plumber [523.95 h]; Excavator [56 h]; 125 mm pipe; depth 0.0m - 1.5m [714.23] → Labor/Helper [112 h]; Skilled Labor/Surveyor [6 h]; Foreman [6 h]; Plumber [56 h]; Excavator [56 h]; 125 mm pipe; depth 0.0m - 1.5m [503.04] |
| CO-R11.S05-IR-120 | Installation Works for Main Line Valves of Irrigation Network-[Road 11]-[SW-5] | 2026-01-11 → 2026-11-09 (+302d) | 2026-01-13 → 2026-11-11 (+302d) |  | 112d → -133d |  | resources Labor/Helper [107.67 h]; Skilled Labor/Surveyor [5.61 h]; Foreman [5.61 h]; Plumber [107.67 h]; Gate valves dia (90)mm on pipes with dia (125) mm. [10.03]; Air valves with dia (50mm) mm on pipes with dia(125)mm. [3.01]; Air valve chamber; on 125 mm dia pipeline Depth 1.5 - 3 m [3.01] → Labor/Helper [96 h]; Skilled Labor/Surveyor [5 h]; Foreman [5 h]; Plumber [96 h]; Gate valves dia (90)mm on pipes with dia (125) mm. [7]; Air valves with dia (50mm) mm on pipes with dia(125)mm. [2]; Air valve chamber; on 125 mm dia pipeline Depth 1.5 - 3 m [2] |
| CO-R11.S05-IR-130 | Trench Backfilling and Compaction Works for Main Lines of Irrigation Network-[Road 11]-[SW-5] | 2026-01-14 → 2026-11-12 (+302d) | 2026-01-21 → 2026-11-19 (+302d) |  | 112d → -133d |  | resources Skilled Labor/Surveyor [6.73 h]; Foreman [6.73 h]; Excavator [56 h]; 125 mm pipe; depth 0.0m - 1.5m [119.37] → Skilled Labor/Surveyor [6 h]; Foreman [6 h]; Excavator [56 h]; 125 mm pipe; depth 0.0m - 1.5m [83.84] |
| TE | **Telecom Network** | 2026-06-10 → 2026-07-08 (+28d) | 2026-07-22 → 2027-04-12 (+264d) |  |  |  |  |
| PD | **Ducts Works** | 2026-06-10 → 2026-07-08 (+28d) | 2026-07-22 → 2026-07-13 (-9d) |  |  |  |  |
| CO-R11.S05-TE-100 | Trench Excavation and Bedding Works for Ducts of Telecom Network-[Road 11]-[SW-5] | 2026-06-10 → 2026-07-08 A (+28d) | 2026-06-13 → 2026-07-13 A (+30d) | 0% → 100% | 0d → none |  | resources Skilled Labor/Surveyor [6.84 h]; Foreman [6.84 h]; Excavator [56 h]; 6-way ducts, 50mm dia. HDPE [37.12]; Road crossing ducts (6-way) [3.01] → Skilled Labor/Surveyor [6 h]; Foreman [6 h]; Excavator [56 h]; 6-way ducts, 50mm dia. HDPE [26]; Road crossing ducts (6-way) [2] |
| CO-R11.S05-TE-110 | Pipes Laying Works for Ducts of Telecom Network-[Road 11]-[SW-5] | 2026-06-29 → 2026-07-08 A (+9d) | 2026-07-06 → 2026-07-13 A (+7d) | 0% → 100% | 0d → none |  | resources Labor/Helper [127.67 h]; Skilled Labor/Surveyor [6.84 h]; Foreman [6.84 h]; Plumber [63.83 h]; Excavator [56 h]; JCB [28 h]; Truck [56 h]; 6-way ducts, 50mm dia. HDPE [221.69]; Road crossing ducts (6-way) [18.06] → Labor/Helper [112 h]; Skilled Labor/Surveyor [6 h]; Foreman [6 h]; Plumber [56 h]; Excavator [56 h]; JCB [28 h]; Truck [56 h]; 6-way ducts, 50mm dia. HDPE [156]; Road crossing ducts (6-way) [13] |
| CO-R11.S05-TE-120 | Pouring Plain Concrete Above Ducts of Telecom Network-[Road 11]-[SW-5] | 2026-07-07 → 2026-07-08 A (+1d) | 2026-07-14 → 2026-07-13 A (-1d) | 0% → 100% | 0d → none |  | resources Skilled Labor/Surveyor [6.84 h]; Foreman [6.84 h]; Cons. Carpenter [127.67 h]; Block Mason [63.83 h]; 6-way ducts, 50mm dia. HDPE [37.12]; Road crossing ducts (6-way) [3.01] → Skilled Labor/Surveyor [6 h]; Foreman [6 h]; Cons. Carpenter [112 h]; Block Mason [56 h]; 6-way ducts, 50mm dia. HDPE [26]; Road crossing ducts (6-way) [2] |
| CO-R11.S05-TE-130 | Trench Backfilling and Compaction Works for Ducts of Telecom Network-[Road 11]-[SW-5] | 2026-07-15 → 2026-07-08 A (-7d) | 2026-07-22 → 2026-07-13 A (-9d) | 0% → 100% | 0d → none |  | resources Skilled Labor/Surveyor [6.84 h]; Foreman [6.84 h]; Excavator [56 h]; 6-way ducts, 50mm dia. HDPE [74.23]; Road crossing ducts (6-way) [6.02] → Skilled Labor/Surveyor [6 h]; Foreman [6 h]; Excavator [56 h]; 6-way ducts, 50mm dia. HDPE [52]; Road crossing ducts (6-way) [4] |
| MH | **Manholes Works** | 2026-06-29 → 2027-03-20 (+264d) | 2026-07-22 → 2027-04-12 (+264d) |  |  |  |  |
| CO-R11.S05-TE-140 | Excavation Works for Manholes of Telecom Network-[Road 11]-[SW-5] | 2026-06-29 → 2027-03-20 (+264d) | 2026-07-06 → 2027-03-27 (+264d) |  | 0d → -206d |  | resources Skilled Labor/Surveyor [6.73 h]; Foreman [6.73 h]; Excavator [56 h]; Manhole Type 2 (2000x1000x1000) [0.4] → Skilled Labor/Surveyor [6 h]; Foreman [6 h]; Excavator [56 h]; Manhole Type 2 (2000x1000x1000) [0.4] |
| CO-R11.S05-TE-150 | Installation Works for Manholes of Telecom Network-[Road 11]-[SW-5] | 2026-07-07 → 2027-03-28 (+264d) | 2026-07-14 → 2027-04-04 (+264d) |  | 7d → -204d |  | resources Skilled Labor/Surveyor [6.73 h]; Foreman [6.73 h]; Excavator [56 h]; Manhole Type 1 (2000x1000x1000) [1]; Manhole Type 2 (2000x1000x1000) [1] → Skilled Labor/Surveyor [6 h]; Foreman [6 h]; Excavator [56 h]; Manhole Type 1 (2000x1000x1000) [1]; Manhole Type 2 (2000x1000x1000) [1.2] |
| CO-R11.S05-TE-160 | Backfilling Works for Manholes of Telecom Network-[Road 11]-[SW-5] | 2026-07-15 → 2027-04-05 (+264d) | 2026-07-22 → 2027-04-12 (+264d) |  | 7d → -204d |  | resources Skilled Labor/Surveyor [6.73 h]; Foreman [6.73 h]; Excavator [56 h]; Manhole Type 2 (2000x1000x1000) [0.4] → Skilled Labor/Surveyor [6 h]; Foreman [6 h]; Excavator [56 h]; Manhole Type 2 (2000x1000x1000) [0.4] |
| MV | **Medium Voltage Network** | 2026-07-22 → 2026-07-08 (-14d) | 2026-08-18 → 2026-07-13 (-36d) |  |  |  |  |
| CW | **Cabling Works** | 2026-07-22 → 2026-07-08 (-14d) | 2026-08-18 → 2026-07-13 (-36d) |  |  |  |  |
| CO-R11.S05-MV-100 | Trench Excavation and Bedding Works for Medium Voltage Network-[Road 11]-[SW-5] | 2026-07-22 → 2026-07-08 A (-14d) | 2026-08-11 → 2026-07-13 A (-29d) | 0% → 100% | 0d → none |  | resources Skilled Labor/Surveyor [17.1 h]; Foreman [17.1 h]; Excavator [144 h]; Excavation for Trench size 40cm wide and 80cm deep ( Maximum 1 cable 33kv) [164.51]; Excavation for Trench size 60cm wide and 80cm deep ( for Max two cables 33 kv) [10.03]; Excavation for Trench size 90cm wide and 80cm deep ( Maximum 3 cable 33kv) [41.13]; Excavation for Trench size 120cm wide and 80cm deep ( Maximum 4cable 33kv) [14.04]; Excavation for Trench size 150cm wide and 80cm deep ( Maximum 4cable 33kv) [52.16]; Duct bank for (2) 33 kv cables [6.02]; Duct bank for (4) 33 kv cables [37.12]; Duct bank for (6) 33 kv cables [17.05] → Skilled Labor/Surveyor [15 h]; Foreman [15 h]; Excavator [144 h]; Excavation for Trench size 40cm wide and 80cm deep ( Maximum 1 cable 33kv) [116.33]; Excavation for Trench size 60cm wide and 80cm deep ( for Max two cables 33 kv) [6.62]; Excavation for Trench size 90cm wide and 80cm deep ( Maximum 3 cable 33kv) [29.48]; Excavation for Trench size 120cm wide and 80cm deep ( Maximum 4cable 33kv) [10.03]; Excavation for Trench size 150cm wide and 80cm deep ( Maximum 4cable 33kv) [37.11]; Duct bank for (2) 33 kv cables [4.01]; Duct bank for (4) 33 kv cables [26.48]; Duct bank for (6) 33 kv cables [12.03] |
| CO-R11.S05-MV-110 | Cable Laying Works for Medium Voltage Network-[Road 11]-[SW-5] | 2026-07-26 → 2026-07-08 A (-18d) | 2026-08-15 → 2026-07-13 A (-33d) | 0% → 100% | 0d → none |  | resources Labor/Helper [328.29 h]; Electrician [328.29 h]; Low Current Technician [328.29 h]; 33kv 3Cx400 mmï¿½ Al XLPE / LLDPE /PVC Cable [777.43]; 33kv 3Cx400 mmï¿½ Al XLPE /LLDPE/PVC [3.01] → Labor/Helper [288 h]; Electrician [288 h]; Low Current Technician [288 h]; 33kv 3Cx400 mm² Al XLPE / LLDPE /PVC Cable [547.57]; 33kv 3Cx400 mm² Al XLPE /LLDPE/PVC [2.1] |
| CO-R11.S05-MV-120 | Trench Backfilling and Compaction Works for Medium Voltage Network-[Road 11]-[SW-5] | 2026-07-29 → 2026-07-08 A (-21d) | 2026-08-18 → 2026-07-13 A (-36d) | 0% → 100% | 0d → none |  | resources Skilled Labor/Surveyor [17.1 h]; Foreman [17.1 h]; Excavator [144 h]; Water Tank [36 h]; 33kv 3Cx400 mmï¿½ Al XLPE / LLDPE /PVC Cable [333.04]; 33kv 3Cx400 mmï¿½ Al XLPE /LLDPE/PVC [1] → Skilled Labor/Surveyor [15 h]; Foreman [15 h]; Excavator [144 h]; Water Tank [36 h]; 33kv 3Cx400 mm² Al XLPE / LLDPE /PVC Cable [234.67]; 33kv 3Cx400 mm² Al XLPE /LLDPE/PVC [0.9] |
| RD | **Road Works** | 2026-08-02 → 2026-03-29 (-126d) | 2026-10-11 → 2027-07-31 (+293d) |  |  |  |  |
| RD | **Pre-Bituminous Construction** | 2026-08-02 → 2026-03-29 (-126d) | 2026-09-03 → 2026-04-21 (-135d) |  |  |  |  |
| CO-R11.S05-RD-P-100 | Capping and Subgrade Layer for Road Works-[Road 11]-[SW-5] | 2026-08-02 → 2026-03-29 A (-126d) | 2026-08-22 → 2026-04-04 A (-140d) | 0% → 100% | 0d → none |  | resources Labor/Helper [328.29 h]; Skilled Labor/Surveyor [164.14 h]; Loader [144 h]; Grader [144 h]; Road Roller [144 h]; Water Tank [144 h]; 300mm capping layer underneath subgrade , CBR?15% [2808.77]; 300mm thick Subgrade, including subgrade preparation, CBR?25% [2808.77] → Labor/Helper [288 h]; Skilled Labor/Surveyor [144 h]; Loader [144 h]; Grader [144 h]; Road Roller [144 h]; Water Tank [144 h]; 300mm capping layer underneath subgrade , CBR?15% [1978.87]; 300mm thick Subgrade, including subgrade preparation, CBR?25% [1978.87] |
| CO-R11.S05-RD-P-110 | Aggregate Base Course Layer for Road Works-[Road 11]-[SW-5] | 2026-08-15 → 2026-04-09 A (-128d) | 2026-09-03 → 2026-04-21 A (-135d) | 0% → 100% | 3d → none |  | resources Labor/Helper [328.29 h]; Skilled Labor/Surveyor [164.14 h]; Foreman [164.14 h]; Loader [144 h]; Grader [144 h]; Road Roller [144 h]; Aggregate base course 200mm thick after compaction in two layers(Grading 1); CBR?80%; including watering, compaction and testing [1871.85] → Labor/Helper [288 h]; Skilled Labor/Surveyor [144 h]; Foreman [144 h]; Loader [144 h]; Grader [144 h]; Road Roller [144 h]; Aggregate base course 200mm thick after compaction in two layers(Grading 1); CBR?80%; including watering, compaction and testing [1319.38] |
| LS | **Pavement Works** | 2026-08-18 → 2026-08-25 (+7d) | 2026-10-11 → 2027-07-31 (+293d) |  |  |  |  |
| CO-R11.S05-RD-P-120 | Fixing of Curbstone for Sidewalks Pavement-[Road 11]-[SW-5] | 2026-08-18 → 2026-08-25 A (+7d) | 2026-09-07 → 2026-08-31 A (-7d) | 0% → 100% | 3d → none |  | resources Labor/Helper [340.27 h]; Block Mason [1020.8 h]; Precast Concrete Kerb, Type K1 [1036.24]; Precast Concrete Kerb, Type L1 [2056.42] → Labor/Helper [288 h]; Block Mason [864 h]; Precast Concrete Kerb, Type K1 [730.09]; Precast Concrete Kerb, Type L1 [1448.59] |
| CO-R11.S05-RD-P-130 | Fixing of Interlock Tiles for Sidewalks Pavement-[Road 11]-[SW-5] | 2026-09-30 → 2026-08-25 A (-36d) | 2026-10-11 → 2027-07-31 (+293d) | 0% → 50% | 0d → -242d |  | resources Labor/Helper [602.57 h]; Block Mason [1139.59 h]; Interlocking block pavers for sidewalk/footpath 60mm thick on and including 30mm Sand Bedding, 200mm Aggregate subbase, all in accordance with authority standards and complete as per specifications [1850.78]; Extraover for Pedestrian ramps [4.01] → Labor/Helper [432 h]; Block Mason [1296 h]; Interlocking block pavers for sidewalk/footpath 60mm thick on and including 30mm Sand Bedding, 200mm Aggregate subbase, all in accordance with authority standards and complete as per specifications [1303.74]; Extraover for Pedestrian ramps [3] |
| SW_6 | **SW_6** | 2025-08-18 → 2025-04-23 (-117d) | 2026-10-13 → 2027-07-31 (+291d) |  |  |  |  |
| EW | **Earthworks** | 2025-08-18 → 2025-04-23 (-117d) | 2025-09-14 → 2025-05-03 (-134d) |  |  |  |  |
| EW | **Earthworks** | 2025-08-18 → 2025-04-23 (-117d) | 2025-09-14 → 2025-05-03 (-134d) |  |  |  |  |

| ID | Task | Start | Finish | Complete | Total float | Predecessors | Other |
| --- | --- | --- | --- | --- | --- | --- | --- |
| CO-R11.S06-EW-100 | Roadway Excavation Works Upto Design Level for Earthworks-[Road 11]-[SW-6] | 2025-08-18 → 2025-04-23 A (-117d) | 2025-08-31 → 2025-04-27 A (-126d) | 0% → 100% | 11d → none |  | resources Labor/Helper [218.86 h]; Skilled Labor/Surveyor [27.36 h]; Foreman [27.36 h]; Water Tank [192 h]; Dozer [192 h]; Roadway Excavation for cuttings; on any type of material for all depths including trimming and Preparation of excavated surfaces and disposal. [13223.3] → Labor/Helper [192 h]; Skilled Labor/Surveyor [24 h]; Foreman [24 h]; Water Tank [192 h]; Dozer [192 h]; Roadway Excavation for cuttings; on any type of material for all depths including trimming and Preparation of excavated surfaces and disposal. [9316.87] |
| CO-R11.S06-EW-110 | Embankments Works Upto Design Level for Earthworks-[Road 11]-[SW-6] | 2025-09-01 → 2025-04-26 A (-128d) | 2025-09-14 → 2025-05-03 A (-134d) | 0% → 100% | 17d → none |  | resources Labor/Helper [547.15 h]; Skilled Labor/Surveyor [68.39 h]; Foreman [68.39 h]; Water Tank [480 h]; Dozer [480 h]; Embankments to the ROW, with suitable material other than top soil or rock according to specifications [22259.5] → Labor/Helper [480 h]; Skilled Labor/Surveyor [60 h]; Foreman [60 h]; Water Tank [480 h]; Dozer [480 h]; Embankments to the ROW, with suitable material other than top soil or rock according to specifications [15683.9] |
| SW | **Sewage Network** | 2025-09-15 → 2025-09-16 (+1d) | 2025-10-25 → 2026-10-11 (+351d) |  |  |  |  |
| ML | **Main Line Sections** | 2025-09-15 → 2025-09-16 (+1d) | 2025-10-25 → 2026-07-05 (+253d) |  |  |  |  |
| CO-R11.S06-SW-100 | Trench Excavation and Bedding Works for Main Lines of Sewage Network-[Road 11]-[SW-6] | 2025-09-15 → 2025-09-16 A (+1d) | 2025-09-29 → 2026-07-01 A (+275d) | 0% → 100% | 17d → none |  | resources Nominal bore : 200mm; Depth : 0.0m - 1.5m [18.06]; Nominal bore : 200mm; Depth : 1.5m - 2.5m [28.09]; Nominal bore : 200mm; Depth : 2.5m - 3.5m [21.07]; Nominal bore : 200mm; Depth : 3.5m - 4.5m [55.17]; Nominal bore : 200mm; Depth : 4.5m -5.5m [21.07]; Nominal bore : 200mm; Depth : 5.5m - 6.5m [44.14] → Nominal bore : 200mm; Depth : 0.0m - 1.5m [13.42]; Nominal bore : 200mm; Depth : 1.5m - 2.5m [19.63]; Nominal bore : 200mm; Depth : 2.5m - 3.5m [15.23]; Nominal bore : 200mm; Depth : 3.5m - 4.5m [39.46]; Nominal bore : 200mm; Depth : 4.5m -5.5m [14.83]; Nominal bore : 200mm; Depth : 5.5m - 6.5m [31.04] |
| CO-R11.S06-SW-120 | Pipes Laying Works for Main Lines of Sewage Network-[Road 11]-[SW-6] | 2025-09-30 → 2025-09-20 A (-10d) | 2025-10-13 → 2026-06-30 A (+260d) | 0% → 100% | 17d → none |  | resources Nominal bore : 200mm; Depth : 0.0m - 1.5m [57.18]; Nominal bore : 200mm; Depth : 1.5m - 2.5m [83.26]; Nominal bore : 200mm; Depth : 2.5m - 3.5m [65.2]; Nominal bore : 200mm; Depth : 3.5m - 4.5m [167.52]; Nominal bore : 200mm; Depth : 4.5m -5.5m [62.19]; Nominal bore : 200mm; Depth : 5.5m - 6.5m [132.41] → Nominal bore : 200mm; Depth : 0.0m - 1.5m [40.25]; Nominal bore : 200mm; Depth : 1.5m - 2.5m [58.9]; Nominal bore : 200mm; Depth : 2.5m - 3.5m [45.68]; Nominal bore : 200mm; Depth : 3.5m - 4.5m [118.39]; Nominal bore : 200mm; Depth : 4.5m -5.5m [44.5]; Nominal bore : 200mm; Depth : 5.5m - 6.5m [93.13] |
| CO-R11.S06-SW-130 | Trench Backfilling and Compaction Works for Main Lines of Sewage Network-[Road 11]-[SW-6] | 2025-10-14 → 2025-09-29 A (-15d) | 2025-10-25 → 2026-07-05 A (+253d) | 0% → 100% | 17d → none |  | resources Nominal bore : 200mm; Depth : 0.0m - 1.5m [10.03]; Nominal bore : 200mm; Depth : 1.5m - 2.5m [14.04]; Nominal bore : 200mm; Depth : 2.5m - 3.5m [11.03]; Nominal bore : 200mm; Depth : 3.5m - 4.5m [28.09]; Nominal bore : 200mm; Depth : 4.5m -5.5m [10.03]; Nominal bore : 200mm; Depth : 5.5m - 6.5m [23.07] → Nominal bore : 200mm; Depth : 0.0m - 1.5m [6.71]; Nominal bore : 200mm; Depth : 1.5m - 2.5m [9.82]; Nominal bore : 200mm; Depth : 2.5m - 3.5m [7.61]; Nominal bore : 200mm; Depth : 3.5m - 4.5m [19.73]; Nominal bore : 200mm; Depth : 4.5m -5.5m [7.42]; Nominal bore : 200mm; Depth : 5.5m - 6.5m [15.52] |
| 1 | **Manholes** | 2025-09-30 → 2026-04-01 (+183d) | 2025-10-14 → 2026-10-11 (+362d) |  |  |  |  |
| CO-R11.S06-SW-160 | Excavation Works for Main Line Manholes of Sewage Network-[Road 11]-[SW-6] | 2025-09-30 → 2026-04-01 A (+183d) | 2025-09-30 → 2026-04-05 A (+187d) | 0% → 100% | 26d → none |  | resources Depth: not exceeding 1.5m [0.15]; Depth: 1.5 - 2.5m [0.45]; Depth: 2.5 - 3.5m [0.3]; Depth: 5.5 - 6.5m [1]; Depth:6.5 - 7.5m [0.15] → Depth: not exceeding 1.5m [0.15]; Depth: 1.5 - 2.5m [0.45]; Depth: 2.5 - 3.5m [0.3]; Depth: 5.5 - 6.5m [0.6]; Depth:6.5 - 7.5m [0.15] |
| CO-R11.S06-SW-170 | Installation RC Footing Works for Main Line Manholes of Sewage Network-[Road 11]-[SW-6] | 2025-10-01 → 2026-04-01 A (+182d) | 2025-10-02 → 2026-04-06 A (+186d) | 0% → 100% | 26d → none |  |  |
| CO-R11.S06-SW-180 | Install Grp Liner Wall Works for Main Line Manholes of Sewage Network-[Road 11]-[SW-6] | 2025-10-04 → 2026-04-02 A (+180d) | 2025-10-07 → 2026-10-10 (+368d) | 0% → 50% | 26d → -51d |  | resources Depth: not exceeding 1.5m [0.4]; Depth: 1.5 - 2.5m [1]; Depth: 2.5 - 3.5m [1]; Depth: 5.5 - 6.5m [3.01]; Depth:6.5 - 7.5m [0.4] → Depth: not exceeding 1.5m [0.4]; Depth: 1.5 - 2.5m [1.2]; Depth: 2.5 - 3.5m [0.8]; Depth: 5.5 - 6.5m [1.6]; Depth:6.5 - 7.5m [0.4] |
| CO-R11.S06-SW-190 | Pouring Grp Liner Wall Works for Main Line Manholes of Sewage Network-[Road 11]-[SW-6] | 2025-10-08 → 2026-07-01 A (+266d) | 2025-10-08 → 2026-07-06 A (+271d) | 0% → 100% | 26d → none |  |  |
| CO-R11.S06-SW-200 | Backfilling Works for Main Line Manholes of Sewage Network-[Road 11]-[SW-6] | 2025-10-09 → 2026-07-01 A (+265d) | 2025-10-13 → 2026-07-09 A (+269d) | 0% → 100% | 26d → none |  | resources Depth: not exceeding 1.5m [0.15]; Depth: 1.5 - 2.5m [0.45]; Depth: 2.5 - 3.5m [0.3]; Depth: 5.5 - 6.5m [1]; Depth:6.5 - 7.5m [0.15] → Depth: not exceeding 1.5m [0.15]; Depth: 1.5 - 2.5m [0.45]; Depth: 2.5 - 3.5m [0.3]; Depth: 5.5 - 6.5m [0.6]; Depth:6.5 - 7.5m [0.15] |
| CO-R11.S06-SW-210 | Testing Works for Main Line Manholes of Sewage Network-[Road 11]-[SW-6] | 2025-10-14 → 2026-10-11 (+362d) | 2025-10-14 → 2026-10-11 (+362d) |  | 26d → -51d |  |  |
| SD | **Storm Drainage Network** | 2025-11-06 → 2025-08-05 (-93d) | 2026-01-21 → 2026-07-07 (+167d) |  |  |  |  |
| ML | **Main Line Sections** | 2025-11-06 → 2025-08-05 (-93d) | 2026-01-20 → 2025-08-14 (-159d) |  |  |  |  |
| CO-R11.S06-SD-100 | Trench Excavation and Bedding Works for Main Lines of Storm Drainage Network-[Road 11]-[SW-6] | 2025-11-06 → 2025-08-05 A (-93d) | 2025-11-17 → 2025-08-06 A (-103d) | 0% → 100% | 0d → none | CO-R11.S06-EW-110, CO-R11.S06-EW-100, CO-R11.S06-SW-130 SS+3d, CO-R11.S06-SW-130 FF+3d, CO-R11.S05-SD-100 → CO-R11.S06-EW-110, CO-R11.S06-EW-100, CO-R11.S05-SD-100 | resources Skilled Labor/Surveyor [13.68 h]; Foreman [13.68 h]; Excavator [112 h]; Pipe with diameter 500mm ; depth: 1.51m - 2.5m [181.57]; Pipe with diameter 600mm ; depth: 1.51m - 2.5m [16.05]; Pipe with diameter 700mm ; depth: 1.51m - 2.5m [30.09]; Pipe with diameter 800mm ; depth: 1.51m - 2.5m [58.18]; Pipe with diameter 1000mm ; depth: 1.51m - 2.5m [50.16]; Pipe with diameter 1000mm ; depth: 2.51 - 3.5m [50.16] → Skilled Labor/Surveyor [12 h]; Foreman [12 h]; Excavator [112 h]; Pipe with diameter 500mm ; depth: 1.51m - 2.5m [127.98]; Pipe with diameter 600mm ; depth: 1.51m - 2.5m [11.46]; Pipe with diameter 700mm ; depth: 1.51m - 2.5m [21.04]; Pipe with diameter 800mm ; depth: 1.51m - 2.5m [41.02]; Pipe with diameter 1000mm ; depth: 1.51m - 2.5m [35.2]; Pipe with diameter 1000mm ; depth: 2.51 - 3.5m [35.2] |
| CO-R11.S06-SD-120 | Pipes Laying Works for Main Lines of Storm Drainage Network-[Road 11]-[SW-6] | 2025-11-18 → 2025-08-07 A (-103d) | 2025-11-29 → 2025-08-09 A (-112d) | 0% → 100% | 0d → none | PRO-R11-SD-DL-120 FF+3d, CO-R11.S06-SD-100, CO-R11.S05-SD-120 → PRO-R11-SD-DL-120 FF+3d, CO-R11.S06-SD-100 | resources Labor/Helper [273.57 h]; Skilled Labor/Surveyor [13.68 h]; Foreman [13.68 h]; Plumber [136.79 h]; Excavator [120 h]; Pipe with diameter 500mm ; depth: 1.51m - 2.5m [544.7]; Pipe with diameter 600mm ; depth: 1.51m - 2.5m [48.15]; Pipe with diameter 700mm ; depth: 1.51m - 2.5m [89.28]; Pipe with diameter 800mm ; depth: 1.51m - 2.5m [174.55]; Pipe with diameter 1000mm ; depth: 1.51m - 2.5m [150.47]; Pipe with diameter 1000mm ; depth: 2.51 - 3.5m [150.47] → Labor/Helper [240 h]; Skilled Labor/Surveyor [12 h]; Foreman [12 h]; Plumber [120 h]; Excavator [120 h]; Pipe with diameter 500mm ; depth: 1.51m - 2.5m [383.93]; Pipe with diameter 600mm ; depth: 1.51m - 2.5m [34.39]; Pipe with diameter 700mm ; depth: 1.51m - 2.5m [63.13]; Pipe with diameter 800mm ; depth: 1.51m - 2.5m [123.06]; Pipe with diameter 1000mm ; depth: 1.51m - 2.5m [105.6]; Pipe with diameter 1000mm ; depth: 2.51 - 3.5m [105.6] |
| CO-R11.S06-SD-130 | Trench Backfilling and Compaction Works for Main Lines of Storm Drainage Network-[Road 11]-[SW-6] | 2026-01-04 → 2025-08-10 A (-147d) | 2026-01-20 → 2025-08-14 A (-159d) | 0% → 100% | 4d → none | CO-R11.S06-SD-120 SS+3d, CO-R11.S06-SD-120 FF+3d, CO-R10.S04-ES-SD-130, CO-R11.S06-SD-120, CO-R11.S06-SD-220 FF, CO-R10.S04-WE-SD-130 → CO-R11.S06-SD-120 | resources Skilled Labor/Surveyor [13.68 h]; Foreman [13.68 h]; Excavator [120 h]; Pipe with diameter 500mm ; depth: 1.51m - 2.5m [91.29]; Pipe with diameter 600mm ; depth: 1.51m - 2.5m [8.03]; Pipe with diameter 700mm ; depth: 1.51m - 2.5m [16.05]; Pipe with diameter 800mm ; depth: 1.51m - 2.5m [30.09]; Pipe with diameter 1000mm ; depth: 1.51m - 2.5m [25.08]; Pipe with diameter 1000mm ; depth: 2.51 - 3.5m [25.08] → Skilled Labor/Surveyor [12 h]; Foreman [12 h]; Excavator [120 h]; Pipe with diameter 500mm ; depth: 1.51m - 2.5m [63.99]; Pipe with diameter 600mm ; depth: 1.51m - 2.5m [5.73]; Pipe with diameter 700mm ; depth: 1.51m - 2.5m [10.52]; Pipe with diameter 800mm ; depth: 1.51m - 2.5m [20.51]; Pipe with diameter 1000mm ; depth: 1.51m - 2.5m [17.6]; Pipe with diameter 1000mm ; depth: 2.51 - 3.5m [17.6] |
| MH | **Manholes** | 2025-11-18 → 2026-03-31 (+133d) | 2025-12-03 → 2026-04-06 (+124d) |  |  |  |  |
| CO-R11.S06-SD-180 | Trench Excavation and Bedding Works for Manholes of Storm Drainage Network-[Road 11]-[SW-6] | 2025-11-18 → 2026-03-31 A (+133d) | 2025-11-18 → 2026-03-31 A (+133d) | 0% → 100% | 45d → none |  | resources Labor/Helper [27.36 h]; Skilled Labor/Surveyor [13.68 h]; Excavator [24 h]; MH ; depth: 0.0m - 1.5m [0.15]; MH ; depth: 1.51m - 2.5m [0.45]; MH ; depth: 2.51 - 3.5m [0.15]; MH ; depth: 1.51m - 2.5m [0.3]; MH ; depth: 2.51 - 3.5m [0.3] → Labor/Helper [24 h]; Skilled Labor/Surveyor [12 h]; Excavator [24 h]; MH ; depth: 0.0m - 1.5m [0.15]; MH ; depth: 1.51m - 2.5m [0.45]; MH ; depth: 2.51 - 3.5m [0.15]; MH ; depth: 1.51m - 2.5m [0.3]; MH ; depth: 2.51 - 3.5m [0.3] |
| CO-R11.S06-SD-190 | Install RC Footing Works for Manholes of Storm Drainage Network-[Road 11]-[SW-6] | 2025-11-19 → 2026-04-01 A (+133d) | 2025-11-19 → 2026-04-01 A (+133d) | 0% → 100% | 45d → none |  | resources Cons. Carpenter [54.71 h]; Steel Fixer [54.71 h]; MH ; depth: 0.0m - 1.5m [0.05]; MH ; depth: 1.51m - 2.5m [0.15]; MH ; depth: 2.51 - 3.5m [0.05]; MH ; depth: 1.51m - 2.5m [0.1]; MH ; depth: 2.51 - 3.5m [0.1] → Cons. Carpenter [48 h]; Steel Fixer [48 h]; MH ; depth: 0.0m - 1.5m [0.05]; MH ; depth: 1.51m - 2.5m [0.15]; MH ; depth: 2.51 - 3.5m [0.05]; MH ; depth: 1.51m - 2.5m [0.1]; MH ; depth: 2.51 - 3.5m [0.1] |
| CO-R11.S06-SD-200 | Install RC Wall Rings & Slab Works for Manholes of Storm Drainage Network-[Road 11]-[SW-6] | 2025-11-20 → 2026-04-02 A (+133d) | 2025-11-24 → 2026-04-05 A (+132d) | 0% → 100% | 45d → none |  | resources Cons. Carpenter [145.91 h]; Steel Fixer [145.91 h]; MH ; depth: 0.0m - 1.5m [0.45]; MH ; depth: 1.51m - 2.5m [1]; MH ; depth: 2.51 - 3.5m [0.45]; MH ; depth: 2.51 - 3.5m [1] → Cons. Carpenter [128 h]; Steel Fixer [128 h]; MH ; depth: 0.0m - 1.5m [0.45]; MH ; depth: 1.51m - 2.5m [1.35]; MH ; depth: 2.51 - 3.5m [0.45]; MH ; depth: 1.51m - 2.5m [0.9]; MH ; depth: 2.51 - 3.5m [0.9] |
| CO-R11.S06-SD-210 | Testing Works for Manholes of Storm Drainage Network-[Road 11]-[SW-6] | 2025-11-25 → 2026-04-05 A (+131d) | 2025-11-25 → 2026-04-06 A (+132d) | 0% → 100% | 45d → none |  | resources Labor/Helper [27.36 h]; Plumber [27.36 h]; MH ; depth: 0.0m - 1.5m [0.1]; MH ; depth: 1.51m - 2.5m [0.3]; MH ; depth: 2.51 - 3.5m [0.1]; MH ; depth: 1.51m - 2.5m [0.2]; MH ; depth: 2.51 - 3.5m [0.2] → Labor/Helper [24 h]; Plumber [24 h]; MH ; depth: 0.0m - 1.5m [0.1]; MH ; depth: 1.51m - 2.5m [0.3]; MH ; depth: 2.51 - 3.5m [0.1]; MH ; depth: 1.51m - 2.5m [0.2]; MH ; depth: 2.51 - 3.5m [0.2] |
| CO-R11.S06-SD-220 | Backfilling Works for Manholes of Storm Drainage Network-[Road 11]-[SW-6] | 2025-11-26 → 2026-04-05 A (+130d) | 2025-12-03 → 2026-04-06 A (+124d) | 0% → 100% | 45d → none |  | constraint none → start on or after 2026-04-05; resources Labor/Helper [127.67 h]; Skilled Labor/Surveyor [63.83 h]; Excavator [112 h]; MH ; depth: 0.0m - 1.5m [0.2]; MH ; depth: 1.51m - 2.5m [1]; MH ; depth: 2.51 - 3.5m [0.2]; MH ; depth: 1.51m - 2.5m [0.4]; MH ; depth: 2.51 - 3.5m [0.4] → Labor/Helper [112 h]; Skilled Labor/Surveyor [56 h]; Excavator [112 h]; MH ; depth: 0.0m - 1.5m [0.2]; MH ; depth: 1.51m - 2.5m [0.6]; MH ; depth: 2.51 - 3.5m [0.2]; MH ; depth: 1.51m - 2.5m [0.4]; MH ; depth: 2.51 - 3.5m [0.4] |
| CB | **Catch Basin Sections** | 2025-12-04 → 2026-06-14 (+192d) | 2026-01-21 → 2026-07-07 (+167d) |  |  |  |  |
| CO-R11.S06-SD-160 | Testing Works for Catch Basins of Storm Drainage Network-[Road 11]-[SW-6] | 2026-01-07 → 2026-06-14 A (+158d) | 2026-01-13 → 2026-06-20 A (+158d) | 0% → 100% | 158d → none |  | resources Labor/Helper [109.43 h]; Skilled Labor/Surveyor [5.7 h]; Foreman [5.7 h]; Plumber [54.71 h]; Excavator [48 h]; Pipe with diameter 300mm ; depth: 0 - 1.5m [47.15]; Pipe with diameter 400mm ; depth: 0 - 1.5m [3.01] → Labor/Helper [96 h]; Skilled Labor/Surveyor [5 h]; Foreman [5 h]; Plumber [48 h]; Excavator [48 h]; Pipe with diameter 300mm ; depth: 0 - 1.5m [32.89]; Pipe with diameter 400mm ; depth: 0 - 1.5m [2.01] |
| CO-R11.S06-SD-140 | Trench Excavation and Bedding Works for Catch Basins of Storm Drainage Network-[Road 11]-[SW-6] | 2025-12-04 → 2026-06-24 A (+202d) | 2025-12-11 → 2026-07-01 A (+202d) | 0% → 100% | 173d → none |  | resources Skilled Labor/Surveyor [6.84 h]; Foreman [6.84 h]; Excavator [56 h]; Pipe with diameter 300mm ; depth: 0 - 1.5m [69.22]; Pipe with diameter 400mm ; depth: 0 - 1.5m [4.01] → Skilled Labor/Surveyor [6 h]; Foreman [6 h]; Excavator [56 h]; Pipe with diameter 300mm ; depth: 0 - 1.5m [49.34]; Pipe with diameter 400mm ; depth: 0 - 1.5m [3.01] |
| CO-R11.S06-SD-150 | Installation and Pipes Laying Connection Works for Catch Basins of Storm Drainage Network-[Road 11]-[SW-6] | 2025-12-30 → 2026-06-27 A (+179d) | 2026-01-06 → 2026-07-01 A (+176d) | 0% → 100% | 158d → none |  | resources Labor/Helper [182.38 h]; Skilled Labor/Surveyor [9.12 h]; Foreman [9.12 h]; Excavator [80 h]; Pipe with diameter 300mm ; depth: 0 - 1.5m [209.65]; Pipe with diameter 400mm ; depth: 0 - 1.5m [13.04] → Labor/Helper [160 h]; Skilled Labor/Surveyor [8 h]; Foreman [8 h]; Excavator [80 h]; Pipe with diameter 300mm ; depth: 0 - 1.5m [148.02]; Pipe with diameter 400mm ; depth: 0 - 1.5m [9.03] |
| CO-R11.S06-SD-170 | Trench Backfilling and Compaction Works for Catch Basins of Storm Drainage Network-[Road 11]-[SW-6] | 2026-01-14 → 2026-06-30 A (+167d) | 2026-01-21 → 2026-07-07 A (+167d) | 0% → 100% | 158d → none |  | resources Skilled Labor/Surveyor [6.84 h]; Foreman [6.84 h]; Excavator [56 h]; Pipe with diameter 300mm ; depth: 0 - 1.5m [93.29]; Pipe with diameter 400mm ; depth: 0 - 1.5m [6.02] → Skilled Labor/Surveyor [6 h]; Foreman [6 h]; Excavator [56 h]; Pipe with diameter 300mm ; depth: 0 - 1.5m [65.79]; Pipe with diameter 400mm ; depth: 0 - 1.5m [4.01] |
| PW | **Potable Water Network** | 2026-01-21 → 2025-08-14 (-160d) | 2026-02-28 → 2027-02-10 (+347d) |  |  |  |  |
| ML | **Main Line Sections** | 2026-01-21 → 2025-08-14 (-160d) | 2026-02-28 → 2025-08-21 (-191d) |  |  |  |  |
| CO-R11.S06-PW-100 | Trench Excavation and Bedding Works for Main Lines of Potable Water Network-[Road 11]-[SW-6] | 2026-01-21 → 2025-08-14 A (-160d) | 2026-01-27 → 2025-08-16 A (-164d) | 0% → 100% | 10d → none | CO-R11.S06-EW-110, CO-R11.S06-EW-100, CO-R11.S06-SD-130 → CO-R11.S06-EW-110, CO-R11.S06-EW-100 | resources Skilled Labor/Surveyor [5.7 h]; Foreman [5.7 h]; Excavator [48 h]; Pipe with diameter 200mm; in depth 0.0m - 1.5m [226.71] → Skilled Labor/Surveyor [5 h]; Foreman [5 h]; Excavator [48 h]; Pipe with diameter 200mm; in depth 0.0m - 1.5m [159.83] |
| CO-R11.S06-PW-110 | Pipes Laying and accessories for Main Lines of Potable Water Network-[Road 11]-[SW-6] | 2026-01-28 → 2025-08-17 A (-164d) | 2026-02-08 → 2025-08-18 A (-174d) | 0% → 100% | 10d → none | CO-R11.S06-PW-100, CO-R10.S04-ES-PW-110 SS, PRO-R11-PW-DL-100 FF+3d, PRO-R11-PW-DL-110 FF+3d, CO-R10.S04-WE-PW-110 SS → CO-R11.S06-PW-100, PRO-R11-PW-DL-100 FF+3d | resources Labor/Helper [182.38 h]; Skilled Labor/Surveyor [9.12 h]; Foreman [9.12 h]; Plumber [91.19 h]; Excavator [80 h]; Pipe with diameter 200mm; in depth 0.0m - 1.5m [567.77] → Labor/Helper [160 h]; Skilled Labor/Surveyor [8 h]; Foreman [8 h]; Plumber [80 h]; Excavator [80 h]; Pipe with diameter 200mm; in depth 0.0m - 1.5m [399.56] |
| CO-R11.S06-PW-130 | Trench Backfilling and Compaction Works for Main Lines of Potable Water Network-[Road 11]-[SW-6] | 2026-02-17 → 2025-08-19 A (-182d) | 2026-02-28 → 2025-08-21 A (-191d) | 0% → 100% | 10d → none | CO-R11.S06-PW-110, CO-R10.S04-ES-PW-130, CO-R11.S06-PW-160 FF, CO-R10.S04-WE-PW-130, CO-R11.S06-PW-210 FF → CO-R11.S06-PW-110 | resources Skilled Labor/Surveyor [9.12 h]; Foreman [9.12 h]; Eq. Operator [9.12 h]; Loader [80 h]; Compactor [80 h]; Water Tank [20 h]; Pipe with diameter 200mm; in depth 0.0m - 1.5m [226.71] → Skilled Labor/Surveyor [8 h]; Foreman [8 h]; Eq. Operator [8 h]; Loader [80 h]; Compactor [80 h]; Water Tank [20 h]; Pipe with diameter 200mm; in depth 0.0m - 1.5m [159.83] |
| VC | **Valve Chamber** | 2026-01-28 → 2027-02-04 (+372d) | 2026-02-03 → 2027-02-10 (+372d) |  |  |  |  |
| CO-R11.S06-PW-210 | Installation Works for Main Line Valves and Valve Chambers of Potable Water Network-[Road 11]-[SW-6] | 2026-01-28 → 2027-02-04 (+372d) | 2026-02-03 → 2027-02-10 (+372d) |  | 31d → -144d | CO-R11.S06-PW-100 → CO-R11.S06-PW-100, PRO-R11-PW-DL-110 | resources Labor/Helper [8.97 h]; Plumber [8.97 h]; Gate valves dia(200)mm on pipes with dia (200) mm. [8.03] → Labor/Helper [8 h]; Plumber [8 h]; Gate valves dia(200)mm on pipes with dia (200) mm. [6] |
| FH | **Fire Hydrant** | 2026-02-04 → 2026-10-06 (+244d) | 2026-02-28 → 2026-10-29 (+243d) |  |  |  |  |
| CO-R11.S06-PW-140 | Excavation Works for Fire Hydrants of Potable Water Network-[Road 11]-[SW-6] | 2026-02-04 → 2026-10-06 (+244d) | 2026-02-11 → 2026-10-13 (+244d) |  | 10d → -67d |  | resources Skilled Labor/Surveyor [6.73 h]; Foreman [6.73 h]; Excavator [56 h]; 3-outlet fire hydrant (2 x 2.5 inch and 1 x 4 inch) in the form of a separate dry vacuum cylinder [1] → Skilled Labor/Surveyor [6 h]; Foreman [6 h]; Excavator [56 h]; 3-outlet fire hydrant (2 x 2.5 inch and 1 x 4 inch) in the form of a separate dry vacuum cylinder [0.75] |
| CO-R11.S06-PW-150 | Installation Works for Fire Hydrant of Potable Water Network-[Road 11]-[SW-6] | 2026-02-12 → 2026-10-14 (+244d) | 2026-02-19 → 2026-10-21 (+244d) |  | 10d → -67d |  | resources Labor/Helper [125.62 h]; Skilled Labor/Surveyor [6.73 h]; Foreman [6.73 h]; Plumber [125.62 h]; 3-outlet fire hydrant (2 x 2.5 inch and 1 x 4 inch) in the form of a separate dry vacuum cylinder [4.01] → Labor/Helper [112 h]; Skilled Labor/Surveyor [6 h]; Foreman [6 h]; Plumber [112 h]; 3-outlet fire hydrant (2 x 2.5 inch and 1 x 4 inch) in the form of a separate dry vacuum cylinder [3.25] |
| CO-R11.S06-PW-160 | Trench Backfilling and Compaction Works for Fire Hydrants of Potable Water Network-[Road 11]-[SW-6] | 2026-02-21 → 2026-10-22 (+243d) | 2026-02-28 → 2026-10-29 (+243d) |  | 10d → -67d |  | resources Skilled Labor/Surveyor [6.73 h]; Foreman [6.73 h]; Excavator [56 h]; 3-outlet fire hydrant (2 x 2.5 inch and 1 x 4 inch) in the form of a separate dry vacuum cylinder [1] → Skilled Labor/Surveyor [6 h]; Foreman [6 h]; Excavator [56 h]; 3-outlet fire hydrant (2 x 2.5 inch and 1 x 4 inch) in the form of a separate dry vacuum cylinder [1] |
| SL | **Street Lighting Network** | 2026-03-01 → 2026-07-07 (+128d) | 2026-07-25 → 2027-05-02 (+281d) |  |  |  |  |
| LP | **Lighting Poles Works** | 2026-03-01 → 2026-07-07 (+128d) | 2026-07-19 → 2027-05-02 (+287d) |  |  |  |  |
| CO-R11.S06-SL-100 | Foundation Excavation Works for Lighting Poles of Street Lighting Network-[Road 11]-[SW-6] | 2026-03-01 → 2026-07-07 A (+128d) | 2026-03-14 → 2026-07-13 A (+121d) | 0% → 100% | 10d → none |  | resources Labor/Helper [328.29 h]; Skilled Labor/Surveyor [164.14 h]; Excavator [288 h]; Lighting poles with one arm, including the power distribution box, screws, cables, 12 meters in height. [1] → Labor/Helper [288 h]; Skilled Labor/Surveyor [144 h]; Excavator [288 h]; Lighting poles with one arm, including the power distribution box, screws, cables, 12 meters in height. [1.4] |
| CO-R11.S06-SL-110 | Installation Works for Lighting Poles Foundation of Street Lighting Network-[Road 11]-[SW-6] | 2026-03-30 → 2026-07-07 A (+99d) | 2026-04-09 → 2026-07-13 A (+95d) | 0% → 100% | 0d → none |  | resources Labor/Helper [437.72 h]; Skilled Labor/Surveyor [22.8 h]; Foreman [22.8 h]; Eq. Operator [22.8 h]; Loader [48 h]; Reinforced concrete foundation, for 12m high lighting columns With Drawpits [40.13] → Labor/Helper [384 h]; Skilled Labor/Surveyor [20 h]; Foreman [20 h]; Eq. Operator [20 h]; Loader [48 h]; Reinforced concrete foundation, for 12m high lighting columns With Drawpits [28] |
| CO-R11.S06-SL-120 | Installation Works for Lighting Poles of Street Lighting Network-[Road 11]-[SW-6] | 2026-04-05 → 2026-07-07 A (+93d) | 2026-04-25 → 2026-07-13 A (+79d) | 0% → 100% | 8d → none |  | resources Labor/Helper [164.14 h]; Electrician [204.47 h]; Lighting poles with one arm, including the power distribution box, screws, cables, 12 meters in height. [21.07] → Labor/Helper [144 h]; Electrician [144 h]; Lighting poles with one arm, including the power distribution box, screws, cables, 12 meters in height. [15.4] |
| CO-R11.S06-SL-210 | Backfilling Works for Lighting Poles of Street Lighting Network-[Road 11]-[SW-6] | 2026-06-24 → 2027-04-01 (+281d) | 2026-07-11 → 2027-04-18 (+281d) |  | 57.5d → -178.5d |  | resources Labor/Helper [269.18 h]; Skilled Labor/Surveyor [134.59 h]; Excavator [240 h]; Lighting poles with one arm, including the power distribution box, screws, cables, 12 meters in height. [8.03] → Labor/Helper [240 h]; Skilled Labor/Surveyor [120 h]; Excavator [240 h]; Lighting poles with one arm, including the power distribution box, screws, cables, 12 meters in height. [5.6] |
| CO-R11.S06-SL-130 | Installation Works for Lighting Fixtures With Drop Wire of Street Lighting Network-[Road 11]-[SW-6] | 2026-06-29 → 2027-04-12 (+287d) | 2026-07-19 → 2027-05-02 (+287d) |  | 57.5d → -183.5d |  | resources Labor/Helper [323.01 h]; Electrician [323.01 h]; Manlift [288 h]; Street Lighting( LED) Luminaire,(Type C) complete with control gear and lamp, ?.17000 Lumen [40.13] → Labor/Helper [288 h]; Electrician [288 h]; Manlift [288 h]; Street Lighting( LED) Luminaire,(Type C) complete with control gear and lamp, ?.17000 Lumen [28] |
| CO-R11.S06-SL-200 | Testing Works for Lighting Poles of Street Lighting Network-[Road 11]-[SW-6] | 2026-07-12 → 2027-04-19 (+281d) | 2026-07-19 → 2027-04-26 (+281d) |  | 57.5d → -178.5d |  | resources Labor/Helper [188.42 h]; Electrician [188.42 h]; Lighting poles with one arm, including the power distribution box, screws, cables, 12 meters in height. [8.03] → Labor/Helper [168 h]; Electrician [168 h]; Lighting poles with one arm, including the power distribution box, screws, cables, 12 meters in height. [5.6] |
| CW | **Cabling Works** | 2026-04-26 → 2026-07-09 (+74d) | 2026-06-03 → 2026-12-02 (+182d) |  |  |  |  |
| CO-R11.S06-SL-140 | Trench Excavation and Bedding Works for Street Lighting Network-[Road 11]-[SW-6] | 2026-04-26 → 2026-07-09 A (+74d) | 2026-05-06 → 2026-07-13 A (+68d) | 0% → 100% | 8d → none |  | resources Labor/Helper [91.19 h]; Skilled Labor/Surveyor [45.6 h]; Excavator [80 h] → Labor/Helper [80 h]; Skilled Labor/Surveyor [40 h]; Excavator [80 h] |
| CO-R11.S06-SL-150 | Cable Laying Works for Street Lighting Network-[Road 11]-[SW-6] | 2026-05-07 → 2026-07-09 A (+63d) | 2026-05-18 → 2026-07-13 A (+56d) | 0% → 100% | 8d → none |  | resources Labor/Helper [91.19 h]; Electrician [136.31 h]; Low Current Technician [91.19 h]; Supply, installation , test and operation of cables, Copper, (4Cx25mmï¿½,Cu/XLPE/SWA/PVC +1x16mmï¿½ PVC/PVC) [1569.9] → Labor/Helper [80 h]; Electrician [80 h]; Low Current Technician [80 h]; Supply, installation , test and operation of cables, Copper, (4Cx25mm²,Cu/XLPE/SWA/PVC +1x16mm² PVC/PVC) [1105.65] |
| CO-R11.S06-SL-160 | Trench Backfilling and Compaction Works for Street Lighting Network-[Road 11]-[SW-6] | 2026-05-19 → 2026-11-22 (+187d) | 2026-06-03 → 2026-12-02 (+182d) |  | 8d → -144d |  | resources Skilled Labor/Surveyor [8.97 h]; Foreman [8.97 h]; Excavator [80 h]; Water Tank [20 h]; Supply, installation , test and operation of cables, Copper, (4Cx25mmï¿½,Cu/XLPE/SWA/PVC +1x16mmï¿½ PVC/PVC) [120.38] → Skilled Labor/Surveyor [8 h]; Foreman [8 h]; Excavator [80 h]; Water Tank [20 h]; Supply, installation , test and operation of cables, Copper, (4Cx25mm²,Cu/XLPE/SWA/PVC +1x16mm² PVC/PVC) [85.05] |
| DPB | **Distrubution Panel Boards** | 2026-06-14 → 2027-02-01 (+232d) | 2026-07-25 → 2027-03-18 (+236d) |  |  |  |  |
| CO-R11.S06-SL-170 | Foundation Excavation Works For Panel Boards of Street Lighting Network-[Road 11]-[SW-6] | 2026-06-14 → 2027-02-01 (+232d) | 2026-06-27 → 2027-02-14 (+232d) |  | 0d → -198d |  | resources Labor/Helper [107.67 h]; Skilled Labor/Surveyor [53.84 h]; Excavator [96 h] → Labor/Helper [96 h]; Skilled Labor/Surveyor [48 h]; Excavator [96 h] |
| CO-R11.S06-SL-180 | Installation Works for Panel Board Concrete Foundations of Street Lighting Network-[Road 11]-[SW-6] | 2026-06-28 → 2027-02-15 (+232d) | 2026-07-11 → 2027-03-01 (+233d) |  | 0d → -198d |  | resources Skilled Labor/Surveyor [11.22 h]; Foreman [11.22 h]; Excavator [96 h]; Water Tank [24 h] → Skilled Labor/Surveyor [10 h]; Foreman [10 h]; Excavator [96 h]; Water Tank [24 h] |
| CO-R11.S06-SL-190 | Installation Works for Lighting Panel Boards of Street Lighting Network-[Road 11]-[SW-6] | 2026-07-12 → 2027-03-02 (+233d) | 2026-07-25 → 2027-03-18 (+236d) |  | 0d → -198d |  | resources Labor/Helper [107.67 h]; Electrician [107.67 h] → Labor/Helper [96 h]; Electrician [96 h] |
| CO-R11.S06-SL-220 | A wall of concrete blocks to install the KWH meter of Street Lighting Network-[Road 11]-[SW-6] | 2026-07-12 → 2027-03-02 (+233d) | 2026-07-25 → 2027-03-18 (+236d) |  | 6d → -192d |  | resources Block Mason [323.01 h]; Road crossing ducts, 4 way (4 x 100mm PVC) [88.28]; Drawpit with medium duty steel cover, size 900x900x1200mm, Type 4 [6.02] → Block Mason [288 h]; Road crossing ducts, 4 way (4 x 100mm PVC) [62.4]; Drawpit with medium duty steel cover, size 900x900x1200mm, Type 4 [4] |
| TE | **Telecom Network** | 2026-06-14 → 2026-07-09 (+25d) | 2026-07-30 → 2027-04-20 (+264d) |  |  |  |  |
| PD | **Ducts Works** | 2026-06-14 → 2026-07-09 (+25d) | 2026-07-30 → 2026-07-12 (-18d) |  |  |  |  |
| CO-R11.S06-TE-100 | Trench Excavation and Bedding Works for Ducts of Telecom Network-[Road 11]-[SW-6] | 2026-06-14 → 2026-07-09 A (+25d) | 2026-06-16 → 2026-07-12 A (+26d) | 0% → 100% | 0d → none |  | resources Skilled Labor/Surveyor [6.84 h]; Foreman [6.84 h]; Excavator [56 h]; 6-way ducts, 50mm dia. HDPE [37.12]; Road crossing ducts (6-way) [3.01] → Skilled Labor/Surveyor [6 h]; Foreman [6 h]; Excavator [56 h]; 6-way ducts, 50mm dia. HDPE [26]; Road crossing ducts (6-way) [2] |
| CO-R11.S06-TE-110 | Pipes Laying Works for Ducts of Telecom Network-[Road 11]-[SW-6] | 2026-07-07 → 2026-07-09 A (+2d) | 2026-07-14 → 2026-07-12 A (-2d) | 0% → 100% | 0d → none |  | resources Labor/Helper [255.34 h]; Skilled Labor/Surveyor [13.68 h]; Foreman [13.68 h]; Plumber [127.67 h]; Excavator [112 h]; JCB [56 h]; Truck [112 h]; 6-way ducts, 50mm dia. HDPE [221.69]; Road crossing ducts (6-way) [18.06] → Labor/Helper [224 h]; Skilled Labor/Surveyor [12 h]; Foreman [12 h]; Plumber [112 h]; Excavator [112 h]; JCB [56 h]; Truck [112 h]; 6-way ducts, 50mm dia. HDPE [156]; Road crossing ducts (6-way) [13] |
| CO-R11.S06-TE-120 | Pouring Plain Concrete Above Ducts of Telecom Network-[Road 11]-[SW-6] | 2026-07-15 → 2026-07-09 A (-6d) | 2026-07-22 → 2026-07-12 A (-10d) | 0% → 100% | 0d → none |  | resources Skilled Labor/Surveyor [6.84 h]; Foreman [6.84 h]; Cons. Carpenter [127.67 h]; Block Mason [63.83 h]; 6-way ducts, 50mm dia. HDPE [37.12]; Road crossing ducts (6-way) [3.01] → Skilled Labor/Surveyor [6 h]; Foreman [6 h]; Cons. Carpenter [112 h]; Block Mason [56 h]; 6-way ducts, 50mm dia. HDPE [26]; Road crossing ducts (6-way) [2] |
| CO-R11.S06-TE-130 | Trench Backfilling and Compaction Works for Ducts of Telecom Network-[Road 11]-[SW-6] | 2026-07-23 → 2026-07-09 A (-14d) | 2026-07-30 → 2026-07-12 A (-18d) | 0% → 100% | 0d → none |  | resources Skilled Labor/Surveyor [6.84 h]; Foreman [6.84 h]; Excavator [56 h]; 6-way ducts, 50mm dia. HDPE [74.23]; Road crossing ducts (6-way) [6.02] → Skilled Labor/Surveyor [6 h]; Foreman [6 h]; Excavator [56 h]; 6-way ducts, 50mm dia. HDPE [52]; Road crossing ducts (6-way) [4] |
| MH | **Manholes Works** | 2026-07-07 → 2027-03-28 (+264d) | 2026-07-30 → 2027-04-20 (+264d) |  |  |  |  |
| CO-R11.S06-TE-140 | Excavation Works for Manholes of Telecom Network-[Road 11]-[SW-6] | 2026-07-07 → 2027-03-28 (+264d) | 2026-07-14 → 2027-04-04 (+264d) |  | 0d → -211d |  | resources Skilled Labor/Surveyor [6.73 h]; Foreman [6.73 h]; Excavator [56 h]; Manhole Type 2 (2000x1000x1000) [0.4] → Skilled Labor/Surveyor [6 h]; Foreman [6 h]; Excavator [56 h]; Manhole Type 2 (2000x1000x1000) [0.4] |
| CO-R11.S06-TE-150 | Installation Works for Manholes of Telecom Network-[Road 11]-[SW-6] | 2026-07-15 → 2027-04-05 (+264d) | 2026-07-22 → 2027-04-12 (+264d) |  | 0d → -211d |  | resources Skilled Labor/Surveyor [6.73 h]; Foreman [6.73 h]; Excavator [56 h]; Manhole Type 1 (2000x1000x1000) [1]; Manhole Type 2 (2000x1000x1000) [1] → Skilled Labor/Surveyor [6 h]; Foreman [6 h]; Excavator [56 h]; Manhole Type 1 (2000x1000x1000) [1]; Manhole Type 2 (2000x1000x1000) [1.2] |
| CO-R11.S06-TE-160 | Backfilling Works for Manholes of Telecom Network-[Road 11]-[SW-6] | 2026-07-23 → 2027-04-13 (+264d) | 2026-07-30 → 2027-04-20 (+264d) |  | 0d → -211d |  | resources Skilled Labor/Surveyor [6.73 h]; Foreman [6.73 h]; Excavator [56 h]; Manhole Type 2 (2000x1000x1000) [0.4] → Skilled Labor/Surveyor [6 h]; Foreman [6 h]; Excavator [56 h]; Manhole Type 2 (2000x1000x1000) [0.4] |
| MV | **Medium Voltage Network** | 2026-07-27 → 2026-07-08 (-19d) | 2026-08-16 → 2026-07-13 (-34d) |  |  |  |  |
| CW | **Cabling Works** | 2026-07-27 → 2026-07-08 (-19d) | 2026-08-16 → 2026-07-13 (-34d) |  |  |  |  |

| ID | Task | Start | Finish | Complete | Total float | Predecessors | Other |
| --- | --- | --- | --- | --- | --- | --- | --- |
| CO-R11.S06-MV-100 | Trench Excavation and Bedding Works for Medium Voltage Network-[Road 11]-[SW-6] | 2026-07-27 → 2026-07-08 A (-19d) | 2026-08-09 → 2026-07-13 A (-27d) | 0% → 100% | 2d → none |  | resources Skilled Labor/Surveyor [17.1 h]; Foreman [17.1 h]; Excavator [144 h]; Excavation for Trench size 40cm wide and 80cm deep ( Maximum 1 cable 33kv) [164.51]; Excavation for Trench size 60cm wide and 80cm deep ( for Max two cables 33 kv) [10.03]; Excavation for Trench size 90cm wide and 80cm deep ( Maximum 3 cable 33kv) [41.13]; Excavation for Trench size 120cm wide and 80cm deep ( Maximum 4cable 33kv) [14.04]; Excavation for Trench size 150cm wide and 80cm deep ( Maximum 4cable 33kv) [52.16]; Duct bank for (2) 33 kv cables [6.02]; Duct bank for (4) 33 kv cables [38.12]; Duct bank for (6) 33 kv cables [17.05] → Skilled Labor/Surveyor [15 h]; Foreman [15 h]; Excavator [144 h]; Excavation for Trench size 40cm wide and 80cm deep ( Maximum 1 cable 33kv) [116.33]; Excavation for Trench size 60cm wide and 80cm deep ( for Max two cables 33 kv) [6.62]; Excavation for Trench size 90cm wide and 80cm deep ( Maximum 3 cable 33kv) [29.48]; Excavation for Trench size 120cm wide and 80cm deep ( Maximum 4cable 33kv) [10.03]; Excavation for Trench size 150cm wide and 80cm deep ( Maximum 4cable 33kv) [37.11]; Duct bank for (2) 33 kv cables [4]; Duct bank for (4) 33 kv cables [27]; Duct bank for (6) 33 kv cables [12] |
| CO-R11.S06-MV-110 | Cable Laying Works for Medium Voltage Network-[Road 11]-[SW-6] | 2026-07-30 → 2026-07-08 A (-22d) | 2026-08-12 → 2026-07-13 A (-30d) | 0% → 100% | 2d → none |  | resources Labor/Helper [328.29 h]; Electrician [328.29 h]; Low Current Technician [328.29 h]; 33kv 3Cx400 mmï¿½ Al XLPE / LLDPE /PVC Cable [777.43]; 33kv 3Cx400 mmï¿½ Al XLPE /LLDPE/PVC [3.01] → Labor/Helper [288 h]; Electrician [288 h]; Low Current Technician [288 h]; 33kv 3Cx400 mm² Al XLPE / LLDPE /PVC Cable [547.57]; 33kv 3Cx400 mm² Al XLPE /LLDPE/PVC [2.1] |
| CO-R11.S06-MV-120 | Trench Backfilling and Compaction Works for Medium Voltage Network-[Road 11]-[SW-6] | 2026-08-03 → 2026-07-08 A (-26d) | 2026-08-16 → 2026-07-13 A (-34d) | 0% → 100% | 2d → none |  | resources Skilled Labor/Surveyor [17.1 h]; Foreman [17.1 h]; Excavator [144 h]; Water Tank [36 h]; 33kv 3Cx400 mmï¿½ Al XLPE / LLDPE /PVC Cable [333.04]; 33kv 3Cx400 mmï¿½ Al XLPE /LLDPE/PVC [1] → Skilled Labor/Surveyor [15 h]; Foreman [15 h]; Excavator [144 h]; Water Tank [36 h]; 33kv 3Cx400 mm² Al XLPE / LLDPE /PVC Cable [234.67]; 33kv 3Cx400 mm² Al XLPE /LLDPE/PVC [0.9] |
| RD | **Road Works** | 2026-08-06 → 2026-04-01 (-127d) | 2026-10-13 → 2027-07-31 (+291d) |  |  |  |  |
| RD | **Pre-Bituminous Construction** | 2026-08-06 → 2026-04-01 (-127d) | 2026-09-01 → 2026-04-16 (-138d) |  |  |  |  |
| CO-R11.S06-RD-P-100 | Capping and Subgrade Layer for Road Works-[Road 11]-[SW-6] | 2026-08-06 → 2026-04-01 A (-127d) | 2026-08-19 → 2026-04-07 A (-134d) | 0% → 100% | 2d → none |  | resources Labor/Helper [328.29 h]; Skilled Labor/Surveyor [164.14 h]; Loader [144 h]; Grader [144 h]; Road Roller [144 h]; Water Tank [144 h]; 300mm capping layer underneath subgrade , CBR?15% [2808.77]; 300mm thick Subgrade, including subgrade preparation, CBR?25% [2808.77] → Labor/Helper [288 h]; Skilled Labor/Surveyor [144 h]; Loader [144 h]; Grader [144 h]; Road Roller [144 h]; Water Tank [144 h]; 300mm capping layer underneath subgrade , CBR?15% [1978.87]; 300mm thick Subgrade, including subgrade preparation, CBR?25% [1978.87] |
| CO-R11.S06-RD-P-110 | Aggregate Base Course Layer for Road Works-[Road 11]-[SW-6] | 2026-08-12 → 2026-04-08 A (-126d) | 2026-09-01 → 2026-04-16 A (-138d) | 0% → 100% | 5d → none |  | resources Labor/Helper [328.29 h]; Skilled Labor/Surveyor [164.14 h]; Foreman [164.14 h]; Loader [144 h]; Grader [144 h]; Road Roller [144 h]; Aggregate base course 200mm thick after compaction in two layers(Grading 1); CBR?80%; including watering, compaction and testing [1871.85] → Labor/Helper [288 h]; Skilled Labor/Surveyor [144 h]; Foreman [144 h]; Loader [144 h]; Grader [144 h]; Road Roller [144 h]; Aggregate base course 200mm thick after compaction in two layers(Grading 1); CBR?80%; including watering, compaction and testing [1319.38] |
| LS | **Pavement Works** | 2026-08-16 → 2026-06-01 (-76d) | 2026-10-13 → 2027-07-31 (+291d) |  |  |  |  |
| CO-R11.S06-RD-P-120 | Fixing of Curbstone for Sidewalks Pavement-[Road 11]-[SW-6] | 2026-08-16 → 2026-06-01 A (-76d) | 2026-09-05 → 2026-08-31 A (-5d) | 0% → 100% | 5d → none |  | resources Labor/Helper [672.37 h]; Block Mason [1709.49 h]; Precast Concrete Kerb, Type K1 [1036.24]; Precast Concrete Kerb, Type L1 [2056.42] → Labor/Helper [288 h]; Block Mason [864 h]; Precast Concrete Kerb, Type K1 [730.09]; Precast Concrete Kerb, Type L1 [1448.59] |
| CO-R11.S06-RD-P-130 | Fixing of Interlock Tiles for Sidewalks Pavement-[Road 11]-[SW-6] | 2026-10-03 → 2026-08-25 A (-39d) | 2026-10-13 → 2027-07-31 (+291d) | 0% → 50% | 0d → -240d |  | resources Labor/Helper [435.25 h]; Block Mason [1129.97 h]; Interlocking block pavers for sidewalk/footpath 60mm thick on and including 30mm Sand Bedding, 200mm Aggregate subbase, all in accordance with authority standards and complete as per specifications [1850.78]; Extraover for Pedestrian ramps [4.01] → Labor/Helper [432 h]; Block Mason [1296 h]; Interlocking block pavers for sidewalk/footpath 60mm thick on and including 30mm Sand Bedding, 200mm Aggregate subbase, all in accordance with authority standards and complete as per specifications [1303.74]; Extraover for Pedestrian ramps [3] |
| 6 | **Road 14 Local 1 ( 584 LM )** | 2025-07-09 → 2025-04-17 (-83d) | 2026-10-27 → 2027-08-14 (+291d) |  |  |  |  |
| SW_7 | **SW_7** | 2025-07-09 → 2025-04-17 (-83d) | 2026-10-25 → 2027-08-14 (+293d) |  |  |  |  |
| EW | **Earthworks** | 2025-07-09 → 2025-04-17 (-83d) | 2025-07-31 → 2025-05-03 (-89d) |  |  |  |  |
| EW | **Earthworks** | 2025-07-09 → 2025-04-17 (-83d) | 2025-07-31 → 2025-05-03 (-89d) |  |  |  |  |
| CO-R14.S07-EW-100 | Roadway Excavation Works Upto Design Level for Earthworks-[Road 14]-[SW-7] | 2025-07-09 → 2025-04-17 A (-83d) | 2025-07-20 → 2025-04-27 A (-84d) | 0% → 100% | 11d → none |  | resources Labor/Helper [4134.92 h]; Skilled Labor/Surveyor [610.98 h]; Foreman [610.98 h]; Roadway Excavation for cuttings; on any type of material for all depths including trimming and Preparation of excavated surfaces and disposal. [19513] → Roadway Excavation for cuttings; on any type of material for all depths including trimming and Preparation of excavated surfaces and disposal. [13749.1] |
| CO-R14.S07-EW-110 | Embankments Works Upto Design Level for Earthworks-[Road 14]-[SW-7] | 2025-07-21 → 2025-04-19 A (-93d) | 2025-07-31 → 2025-05-03 A (-89d) | 0% → 100% | 19d → none |  | resources Labor/Helper [4125.79 h]; Skilled Labor/Surveyor [403.6 h]; Foreman [540.44 h]; Embankments to the ROW, with suitable material other than top soil or rock according to specifications [32848.6] → Embankments to the ROW, with suitable material other than top soil or rock according to specifications [23144.9] |
| SW | **Sewage Network** | 2025-08-04 → 2025-08-10 (+6d) | 2025-09-14 → 2026-10-06 (+387d) |  |  |  |  |
| ML | **Main Line Sections** | 2025-08-04 → 2025-08-10 (+6d) | 2025-09-14 → 2025-08-21 (-24d) |  |  |  |  |
| CO-R14.S07-SW-100 | Trench Excavation and Bedding Works for Main Lines of Sewage Network-[Road 14]-[SW-7] | 2025-08-04 → 2025-08-10 A (+6d) | 2025-08-17 → 2025-08-14 A (-3d) | 0% → 100% | 17d → none | CO-R14.S07-EW-110, ENG-MS-SW-ML-A-110, ENG-SH-SW-ML-A-110, CO-R09.S02-SW-100 → CO-R14.S07-EW-110, ENG-MS-SW-ML-A-110, ENG-SH-SW-ML-A-110 | resources Nominal bore : 160mm; Depth : 0.0m - 1.5m [10.03]; Nominal bore : 200mm; Depth : 0.0m - 1.5m [17.05]; Nominal bore : 200mm; Depth : 1.5m - 2.5m [17.05]; Nominal bore : 200mm; Depth : 2.5m - 3.5m [28.09]; Nominal bore : 200mm; Depth : 3.5m - 4.5m [28.09]; Nominal bore : 200mm; Depth : 4.5m -5.5m [17.05]; Nominal bore : 200mm; Depth : 5.5m - 6.5m [24.08] → Nominal bore : 160mm; Depth : 0.0m - 1.5m [7.2]; Nominal bore : 200mm; Depth : 0.0m - 1.5m [11.74]; Nominal bore : 200mm; Depth : 1.5m - 2.5m [12.08]; Nominal bore : 200mm; Depth : 2.5m - 3.5m [20.01]; Nominal bore : 200mm; Depth : 3.5m - 4.5m [19.78]; Nominal bore : 200mm; Depth : 4.5m -5.5m [12.29]; Nominal bore : 200mm; Depth : 5.5m - 6.5m [16.66] |
| CO-R14.S07-SW-120 | Pipes Laying Works for Main Lines of Sewage Network-[Road 14]-[SW-7] | 2025-08-18 → 2025-08-16 A (-2d) | 2025-08-31 → 2025-08-18 A (-13d) | 0% → 100% | 21d → none |  | resources Nominal bore : 160mm; Depth : 0.0m - 1.5m [31.1]; Nominal bore : 200mm; Depth : 0.0m - 1.5m [50.16]; Nominal bore : 200mm; Depth : 1.5m - 2.5m [51.16]; Nominal bore : 200mm; Depth : 2.5m - 3.5m [85.27]; Nominal bore : 200mm; Depth : 3.5m - 4.5m [83.26]; Nominal bore : 200mm; Depth : 4.5m -5.5m [52.16]; Nominal bore : 200mm; Depth : 5.5m - 6.5m [71.22] → Nominal bore : 160mm; Depth : 0.0m - 1.5m [21.6]; Nominal bore : 200mm; Depth : 0.0m - 1.5m [35.21]; Nominal bore : 200mm; Depth : 1.5m - 2.5m [36.24]; Nominal bore : 200mm; Depth : 2.5m - 3.5m [60.02]; Nominal bore : 200mm; Depth : 3.5m - 4.5m [59.35]; Nominal bore : 200mm; Depth : 4.5m -5.5m [36.86]; Nominal bore : 200mm; Depth : 5.5m - 6.5m [49.97] |
| CO-R14.S07-SW-130 | Trench Backfilling and Compaction Works for Main Lines of Sewage Network-[Road 14]-[SW-7] | 2025-09-01 → 2025-08-19 A (-13d) | 2025-09-14 → 2025-08-21 A (-24d) | 0% → 100% | 21d → none | ENG-SH-SW-ML-A-110 FF, ENG-MS-SW-ML-A-110 FF, CO-R14.S07-SW-120, CO-R14.S07-SW-210 FF → ENG-SH-SW-ML-A-110 FF, ENG-MS-SW-ML-A-110 FF, CO-R14.S07-SW-120 | resources Nominal bore : 160mm; Depth : 0.0m - 1.5m [6.02]; Nominal bore : 200mm; Depth : 0.0m - 1.5m [8.03]; Nominal bore : 200mm; Depth : 1.5m - 2.5m [8.03]; Nominal bore : 200mm; Depth : 2.5m - 3.5m [14.04]; Nominal bore : 200mm; Depth : 3.5m - 4.5m [14.04]; Nominal bore : 200mm; Depth : 4.5m -5.5m [8.03]; Nominal bore : 200mm; Depth : 5.5m - 6.5m [11.03] → Nominal bore : 160mm; Depth : 0.0m - 1.5m [3.6]; Nominal bore : 200mm; Depth : 0.0m - 1.5m [5.87]; Nominal bore : 200mm; Depth : 1.5m - 2.5m [6.04]; Nominal bore : 200mm; Depth : 2.5m - 3.5m [10]; Nominal bore : 200mm; Depth : 3.5m - 4.5m [9.89]; Nominal bore : 200mm; Depth : 4.5m -5.5m [6.14]; Nominal bore : 200mm; Depth : 5.5m - 6.5m [8.33] |
| 1 | **Manholes** | 2025-08-18 → 2025-08-19 (+1d) | 2025-09-01 → 2026-10-06 (+400d) |  |  |  |  |
| CO-R14.S07-SW-160 | Excavation Works for Main Line Manholes of Sewage Network-[Road 14]-[SW-7] | 2025-08-18 → 2025-08-19 A (+1d) | 2025-08-18 → 2025-08-21 A (+3d) | 0% → 100% | 32d → none |  |  |
| CO-R14.S07-SW-170 | Installation RC Footing Works for Main Line Manholes of Sewage Network-[Road 14]-[SW-7] | 2025-08-19 → 2025-08-23 A (+4d) | 2025-08-20 → 2025-08-25 A (+5d) | 0% → 100% | 32d → none |  |  |
| CO-R14.S07-SW-180 | Install Grp Liner Wall Works for Main Line Manholes of Sewage Network-[Road 14]-[SW-7] | 2025-08-21 → 2025-08-26 A (+5d) | 2025-08-25 → 2025-08-28 A (+3d) | 0% → 100% | 32d → none |  | resources Depth: not exceeding 1.5m [1]; Depth: 1.5 - 2.5m [1]; Depth: 3.5 - 4.5m [0.4]; Depth: 5.5 - 6.5m [1]; Depth:6.5 - 7.5m [0.4] → Depth: not exceeding 1.5m [0.8]; Depth: 1.5 - 2.5m [1.2]; Depth: 3.5 - 4.5m [0.4]; Depth: 5.5 - 6.5m [0.8]; Depth:6.5 - 7.5m [0.4] |
| CO-R14.S07-SW-200 | Backfilling Works for Main Line Manholes of Sewage Network-[Road 14]-[SW-7] | 2025-08-27 → 2025-08-30 A (+3d) | 2025-08-31 A | 0% → 100% | 32d → none | CO-R14.S07-SW-190 → CO-R14.S07-SW-180 |  |
| CO-R14.S07-SW-190 | Pouring Grp Liner Wall Works for Main Line Manholes of Sewage Network-[Road 14]-[SW-7] | 2025-08-26 → 2026-07-01 A (+309d) | 2025-08-26 → 2026-07-07 A (+315d) | 0% → 100% | 32d → none |  |  |
| CO-R14.S07-SW-210 | Testing Works for Main Line Manholes of Sewage Network-[Road 14]-[SW-7] | 2025-09-01 → 2026-10-06 (+400d) | 2025-09-01 → 2026-10-06 (+400d) |  | 32d → -35d | CO-R14.S07-SW-200 → CO-R14.S07-SW-200, CO-R14.S07-SW-190 |  |
| SD | **Storm Drainage Network** | 2025-10-02 → 2025-08-10 (-53d) | 2026-02-01 → 2026-06-04 (+123d) |  |  |  |  |
| ML | **Main Line Sections** | 2025-10-02 → 2025-08-10 (-53d) | 2026-02-01 → 2025-08-28 (-157d) |  |  |  |  |
| CO-R14.S07-SD-100 | Trench Excavation and Bedding Works for Main Lines of Storm Drainage Network-[Road 14]-[SW-7] | 2025-10-02 → 2025-08-10 A (-53d) | 2025-10-13 → 2025-08-14 A (-60d) | 0% → 100% | 0d → none | ENG-SH-SD-ML-A-110, CO-R14.S07-EW-110, CO-R14.S07-EW-100, CO-R14.S07-SW-130 SS+3d, CO-R14.S07-SW-130 FF+3d, ENG-MS-SD-ML-A-110, CO-R09.S02-SD-100 → ENG-SH-SD-ML-A-110, CO-R14.S07-EW-110, CO-R14.S07-EW-100, ENG-MS-SD-ML-A-110 | resources Pipe with diameter 600mm ; depth: 1.51m - 2.5m [34.11]; Pipe with diameter 700mm ; depth: 1.51m - 2.5m [44.14]; Pipe with diameter 1200mm ; depth: 2.51 - 3.5m [137.43] → Pipe with diameter 600mm ; depth: 1.51m - 2.5m [24.12]; Pipe with diameter 700mm ; depth: 1.51m - 2.5m [31.06]; Pipe with diameter 1200mm ; depth: 2.51 - 3.5m [96.6] |
| CO-R14.S07-SD-120 | Pipes Laying Works for Main Lines of Storm Drainage Network-[Road 14]-[SW-7] | 2025-10-14 → 2025-08-16 A (-59d) | 2025-10-25 → 2025-08-18 A (-68d) | 0% → 100% | 0d → none | CO-R14.S07-SD-100, CO-R09.S02-SD-120 → CO-R14.S07-SD-100 | resources Pipe with diameter 600mm ; depth: 1.51m - 2.5m [102.32]; Pipe with diameter 700mm ; depth: 1.51m - 2.5m [132.41]; Pipe with diameter 1200mm ; depth: 2.51 - 3.5m [411.28] → Pipe with diameter 600mm ; depth: 1.51m - 2.5m [72.35]; Pipe with diameter 700mm ; depth: 1.51m - 2.5m [93.17]; Pipe with diameter 1200mm ; depth: 2.51 - 3.5m [289.8] |
| CO-R14.S07-SD-130 | Trench Backfilling and Compaction Works for Main Lines of Storm Drainage Network-[Road 14]-[SW-7] | 2026-01-15 → 2025-08-27 A (-141d) | 2026-02-01 → 2025-08-28 A (-157d) | 0% → 100% | 23d → none |  | resources Pipe with diameter 600mm ; depth: 1.51m - 2.5m [17.05]; Pipe with diameter 700mm ; depth: 1.51m - 2.5m [23.07]; Pipe with diameter 1200mm ; depth: 2.51 - 3.5m [68.21] → Pipe with diameter 600mm ; depth: 1.51m - 2.5m [12.06]; Pipe with diameter 700mm ; depth: 1.51m - 2.5m [15.53]; Pipe with diameter 1200mm ; depth: 2.51 - 3.5m [48.3] |
| MH | **Manholes** | 2025-10-14 → 2025-08-16 (-59d) | 2025-10-29 → 2026-06-04 (+218d) |  |  |  |  |
| CO-R14.S07-SD-180 | Trench Excavation and Bedding Works for Manholes of Storm Drainage Network-[Road 14]-[SW-7] | 2025-10-14 → 2025-08-16 A (-59d) | 2025-10-14 → 2025-08-17 A (-58d) | 0% → 100% | 43.5d → none |  | resources MH ; depth: 0.0m - 1.5m [0.3]; MH ; depth: 1.51m - 2.5m [1]; MH ; depth: 1.51m - 2.5m [0.15] → MH ; depth: 0.0m - 1.5m [0.3]; MH ; depth: 1.51m - 2.5m [0.6]; MH ; depth: 1.51m - 2.5m [0.15] |
| CO-R14.S07-SD-190 | Install RC Footing Works for Manholes of Storm Drainage Network-[Road 14]-[SW-7] | 2025-10-15 → 2025-08-18 A (-58d) | 2025-10-15 → 2025-08-20 A (-56d) | 0% → 100% | 43.5d → none |  |  |
| CO-R14.S07-SD-200 | Install RC Wall Rings & Slab Works for Manholes of Storm Drainage Network-[Road 14]-[SW-7] | 2025-10-16 → 2025-08-21 A (-56d) | 2025-10-20 → 2025-08-23 A (-58d) | 0% → 100% | 43.5d → none |  | resources MH ; depth: 0.0m - 1.5m [1]; MH ; depth: 1.51m - 2.5m [3.01]; MH ; depth: 1.51m - 2.5m [0.45] → MH ; depth: 0.0m - 1.5m [0.9]; MH ; depth: 1.51m - 2.5m [1.8]; MH ; depth: 1.51m - 2.5m [0.45] |
| CO-R14.S07-SD-220 | Backfilling Works for Manholes of Storm Drainage Network-[Road 14]-[SW-7] | 2025-10-22 → 2025-08-24 A (-59d) | 2025-10-29 → 2025-08-26 A (-64d) | 0% → 100% | 43.5d → none | CO-R14.S07-SD-210 → CO-R14.S07-SD-200 | resources MH ; depth: 0.0m - 1.5m [0.4]; MH ; depth: 1.51m - 2.5m [1]; MH ; depth: 1.51m - 2.5m [0.2] → MH ; depth: 0.0m - 1.5m [0.4]; MH ; depth: 1.51m - 2.5m [0.8]; MH ; depth: 1.51m - 2.5m [0.2] |
| CO-R14.S07-SD-210 | Testing Works for Manholes of Storm Drainage Network-[Road 14]-[SW-7] | 2025-10-21 → 2026-06-04 A (+226d) | 2025-10-21 → 2026-06-04 A (+226d) | 0% → 100% | 43.5d → none |  |  |
| CB | **Catch Basin Sections** | 2025-11-10 → 2025-12-01 (+21d) | 2025-12-10 → 2025-12-08 (-2d) |  |  |  |  |
| CO-R14.S07-SD-140 | Trench Excavation and Bedding Works for Catch Basins of Storm Drainage Network-[Road 14]-[SW-7] | 2025-11-10 → 2025-12-01 A (+21d) | 2025-11-16 → 2025-12-08 A (+22d) | 0% → 100% | 34.5d → none |  | resources Pipe with diameter 300mm ; depth: 0 - 1.5m [103.32]; Pipe with diameter 400mm ; depth: 0 - 1.5m [6.02] → Pipe with diameter 300mm ; depth: 0 - 1.5m [72.81]; Pipe with diameter 400mm ; depth: 0 - 1.5m [4.44] |
| CO-R14.S07-SD-150 | Installation and Pipes Laying Connection Works for Catch Basins of Storm Drainage Network-[Road 14]-[SW-7] | 2025-11-17 → 2025-12-01 A (+14d) | 2025-11-24 → 2025-12-08 A (+14d) | 0% → 100% | 34.5d → none |  | resources Pipe with diameter 300mm ; depth: 0 - 1.5m [308.97]; Pipe with diameter 400mm ; depth: 0 - 1.5m [18.06] → Pipe with diameter 300mm ; depth: 0 - 1.5m [218.44]; Pipe with diameter 400mm ; depth: 0 - 1.5m [13.32] |
| CO-R14.S07-SD-160 | Testing Works for Catch Basins of Storm Drainage Network-[Road 14]-[SW-7] | 2025-11-29 → 2025-12-01 A (+2d) | 2025-12-02 → 2025-12-08 A (+6d) | 0% → 100% | 34.5d → none |  | resources Pipe with diameter 300mm ; depth: 0 - 1.5m [69.22]; Pipe with diameter 400mm ; depth: 0 - 1.5m [4.01] → Pipe with diameter 300mm ; depth: 0 - 1.5m [48.54]; Pipe with diameter 400mm ; depth: 0 - 1.5m [2.96] |
| CO-R14.S07-SD-170 | Trench Backfilling and Compaction Works for Catch Basins of Storm Drainage Network-[Road 14]-[SW-7] | 2025-12-03 → 2025-12-01 A (-2d) | 2025-12-10 → 2025-12-08 A (-2d) | 0% → 100% | 34.5d → none |  | resources Pipe with diameter 300mm ; depth: 0 - 1.5m [137.43]; Pipe with diameter 400mm ; depth: 0 - 1.5m [8.03] → Pipe with diameter 300mm ; depth: 0 - 1.5m [97.09]; Pipe with diameter 400mm ; depth: 0 - 1.5m [5.92] |
| IR | **Irrigation Network** | 2025-12-11 → 2025-10-11 (-61d) | 2026-01-19 → 2025-12-07 (-43d) |  |  |  |  |
| ML | **Main Line Pipes** | 2025-12-11 → 2025-10-11 (-61d) | 2026-01-19 → 2025-12-07 (-43d) |  |  |  |  |
| CO-R14.S07-IR-130 | Trench Backfilling and Compaction Works for Main Lines of Irrigation Network-[Road 14]-[SW-7] | 2026-01-08 → 2025-10-11 A (-89d) | 2026-01-19 → 2025-10-12 A (-99d) | 0% → 100% | 34.5d → none |  | resources 125 mm pipe; depth 0.0m - 1.5m [175.55]; 280 mm pipe; depth 0.0m - 1.5m [68.21]; 280 mm pipe; depth 1.5m - 3.0m [7.02] → 125 mm pipe; depth 0.0m - 1.5m [123.8]; 280 mm pipe; depth 0.0m - 1.5m [47.5]; 280 mm pipe; depth 1.5m - 3.0m [5] |
| CO-R14.S07-IR-100 | Trench Excavation and Bedding Works for Main Lines of Irrigation Network-[Road 14]-[SW-7] | 2025-12-11 → 2025-10-13 A (-59d) | 2025-12-18 → 2025-10-13 A (-66d) | 0% → 100% | 34.5d → none |  | resources 125 mm pipe; depth 0.0m - 1.5m [350.09]; 280 mm pipe; depth 0.0m - 1.5m [134.42]; 280 mm pipe; depth 1.5m - 3.0m [14.04] → 125 mm pipe; depth 0.0m - 1.5m [247.45]; 280 mm pipe; depth 0.0m - 1.5m [95]; 280 mm pipe; depth 1.5m - 3.0m [10] |
| CO-R14.S07-IR-110 | Pipes Laying Works for Main Lines of Irrigation Network-[Road 14]-[SW-7] | 2025-12-20 → 2025-10-13 A (-68d) | 2025-12-30 → 2025-10-13 A (-78d) | 0% → 100% | 34.5d → none |  | resources 125 mm pipe; depth 0.0m - 1.5m [1053.29]; 280 mm pipe; depth 0.0m - 1.5m [404.26]; 280 mm pipe; depth 1.5m - 3.0m [42.13] → 125 mm pipe; depth 0.0m - 1.5m [742.35]; 280 mm pipe; depth 0.0m - 1.5m [285]; 280 mm pipe; depth 1.5m - 3.0m [30] |
| CO-R14.S07-IR-120 | Installation Works for Main Line Valves of Irrigation Network-[Road 14]-[SW-7] | 2025-12-31 → 2025-12-01 A (-30d) | 2026-01-07 → 2025-12-07 A (-31d) | 0% → 100% | 34.5d → none |  | resources Gate valves dia (90)mm on pipes with dia (125) mm. [13.04]; Gate valves dia (200)mm on pipes with dia (280) mm. [11.03]; Air valves with dia (50mm) mm on pipes with dia(125)mm. [1]; Air valve chamber; on 125 mm dia pipeline Depth 1.5 - 3 m [1] → Gate valves dia (90)mm on pipes with dia (125) mm. [9]; Gate valves dia (200)mm on pipes with dia (280) mm. [8]; Air valves with dia (50mm) mm on pipes with dia(125)mm. [1]; Air valve chamber; on 125 mm dia pipeline Depth 1.5 - 3 m [1] |
| SL | **Street Lighting Network** | 2025-08-02 → 2026-09-29 (+423d) | 2026-06-11 → 2027-04-06 (+299d) |  |  |  |  |
| LP | **Lighting Poles Works** | 2026-01-20 → 2026-11-09 (+293d) | 2026-06-11 → 2027-04-06 (+299d) |  |  |  |  |
| CO-R14.S07-SL-100 | Foundation Excavation Works for Lighting Poles of Street Lighting Network-[Road 14]-[SW-7] | 2026-01-20 → 2026-11-09 (+293d) | 2026-02-02 → 2026-11-22 (+293d) |  | 34.5d → -171d |  |  |
| CO-R14.S07-SL-110 | Installation Works for Lighting Poles Foundation of Street Lighting Network-[Road 14]-[SW-7] | 2026-02-03 → 2026-11-23 (+293d) | 2026-02-16 → 2026-12-06 (+293d) |  | 34.5d → -171d |  | resources Lighting poles complete with two arms, including the power distribution box, screws, cables, 12 meters in height. [1]; Reinforced concrete foundation, for 12m high lighting columns With Drawpits [6.02] → Lighting poles complete with two arms, including the power distribution box, screws, cables, 12 meters in height. [0.8]; Reinforced concrete foundation, for 12m high lighting columns With Drawpits [4] |
| CO-R14.S07-SL-120 | Installation Works for Lighting Poles of Street Lighting Network-[Road 14]-[SW-7] | 2026-02-17 → 2026-12-07 (+293d) | 2026-03-09 → 2026-12-27 (+293d) |  | 34.5d → -171d |  | resources Lighting poles complete with two arms, including the power distribution box, screws, cables, 12 meters in height. [3.01] → Lighting poles complete with two arms, including the power distribution box, screws, cables, 12 meters in height. [1.8] |
| CO-R14.S07-SL-130 | Installation Works for Lighting Fixtures With Drop Wire of Street Lighting Network-[Road 14]-[SW-7] | 2026-05-18 → 2027-03-17 (+303d) | 2026-06-11 → 2027-04-06 (+299d) |  | 59d → -192d |  | resources Street Lighting( LED) Luminaire,(Type B) complete with control gear and lamp, ?.40600 Lumen [11.03] → Street Lighting( LED) Luminaire,(Type B) complete with control gear and lamp, ?.40600 Lumen [8] |
| CO-R14.S07-SL-210 | Backfilling Works for Lighting Poles of Street Lighting Network-[Road 14]-[SW-7] | 2026-05-19 → 2027-03-18 (+303d) | 2026-06-06 → 2027-03-31 (+298d) |  | 57.5d → -192d |  |  |
| CO-R14.S07-SL-200 | Testing Works for Lighting Poles of Street Lighting Network-[Road 14]-[SW-7] | 2026-06-07 → 2027-04-01 (+298d) | 2026-06-11 → 2027-04-06 (+299d) |  | 59d → -192d |  | resources Lighting poles complete with two arms, including the power distribution box, screws, cables, 12 meters in height. [1] → Lighting poles complete with two arms, including the power distribution box, screws, cables, 12 meters in height. [0.8] |
| CW | **Cabling Works** | 2026-03-09 → 2026-09-29 (+204d) | 2026-04-16 → 2026-10-04 (+171d) |  |  |  |  |
| CO-R14.S07-SL-140 | Trench Excavation and Bedding Works for Street Lighting Network-[Road 14]-[SW-7] | 2026-03-09 → 2026-09-29 A (+204d) | 2026-03-24 → 2026-10-04 A (+194d) | 0% → 100% | 34.5d → none |  |  |
| CO-R14.S07-SL-150 | Cable Laying Works for Street Lighting Network-[Road 14]-[SW-7] | 2026-03-24 → 2026-09-29 A (+189d) | 2026-04-05 → 2026-10-04 A (+182d) | 0% → 100% | 34.5d → none |  |  |
| CO-R14.S07-SL-160 | Trench Backfilling and Compaction Works for Street Lighting Network-[Road 14]-[SW-7] | 2026-04-05 → 2026-09-29 A (+177d) | 2026-04-16 → 2026-10-04 A (+171d) | 0% → 100% | 34.5d → none |  |  |
| DPB | **Distrubution Panel Boards** | 2025-08-02 → 2026-10-06 (+430d) | 2025-08-28 → 2026-11-02 (+431d) |  |  |  |  |
| salman | Foundation Excavation Works For Panel Boards of Street Lighting Network-[Road 14]-[SW-7] | 2025-08-02 → 2026-10-06 (+430d) | 2025-08-21 → 2026-10-26 (+431d) |  | 293d → -67d |  |  |
| CO-R14.S07-SL-180 | Installation Works for Panel Board Concrete Foundations of Street Lighting Network-[Road 14]-[SW-7] | 2025-08-05 → 2026-10-10 (+431d) | 2025-08-25 → 2026-10-29 (+430d) |  | 293d → -67d |  |  |
| CO-R14.S07-SL-220 | A wall of concrete blocks to install the KWH meter of Street Lighting Network-[Road 14]-[SW-7] | 2025-08-05 → 2026-10-10 (+431d) | 2025-08-25 → 2026-10-29 (+430d) |  | 296d → -64d |  |  |
| CO-R14.S07-SL-190 | Installation Works for Lighting Panel Boards of Street Lighting Network-[Road 14]-[SW-7] | 2025-08-09 → 2026-10-13 (+430d) | 2025-08-28 → 2026-11-02 (+431d) |  | 293d → -67d |  |  |
| TE | **Telecom Network** | 2026-05-20 → 2027-02-25 (+281d) | 2026-07-30 → 2027-04-20 (+264d) |  |  |  |  |
| PD | **Ducts Works** | 2026-05-20 → 2027-02-25 (+281d) | 2026-07-30 → 2027-04-12 (+256d) |  |  |  |  |
| CO-R14.S07-TE-100 | Trench Excavation and Bedding Works for Ducts of Telecom Network-[Road 14]-[SW-7] | 2026-05-20 → 2027-02-25 (+281d) | 2026-05-23 → 2027-02-28 (+281d) |  | 8d → -221d |  | resources 6-way ducts, 50mm dia. HDPE [54.17]; Road crossing ducts (6-way) [4.01] → 6-way ducts, 50mm dia. HDPE [38]; Road crossing ducts (6-way) [3] |

| ID | Task | Start | Finish | Complete | Total float | Predecessors | Other |
| --- | --- | --- | --- | --- | --- | --- | --- |
| CO-R14.S07-TE-110 | Pipes Laying Works for Ducts of Telecom Network-[Road 14]-[SW-7] | 2026-07-07 → 2027-03-20 (+256d) | 2026-07-14 → 2027-03-27 (+256d) |  | 0d → -192d |  | resources 6-way ducts, 50mm dia. HDPE [328.02]; Road crossing ducts (6-way) [28.09] → 6-way ducts, 50mm dia. HDPE [231]; Road crossing ducts (6-way) [20] |
| CO-R14.S07-TE-120 | Pouring Plain Concrete Above Ducts of Telecom Network-[Road 14]-[SW-7] | 2026-07-15 → 2027-03-28 (+256d) | 2026-07-22 → 2027-04-04 (+256d) |  | 0d → -192d |  | resources 6-way ducts, 50mm dia. HDPE [54.17]; Road crossing ducts (6-way) [4.01] → 6-way ducts, 50mm dia. HDPE [38]; Road crossing ducts (6-way) [3] |
| CO-R14.S07-TE-130 | Trench Backfilling and Compaction Works for Ducts of Telecom Network-[Road 14]-[SW-7] | 2026-07-23 → 2027-04-05 (+256d) | 2026-07-30 → 2027-04-12 (+256d) |  | 0d → -192d |  | resources 6-way ducts, 50mm dia. HDPE [109.34]; Road crossing ducts (6-way) [10.03] → 6-way ducts, 50mm dia. HDPE [77]; Road crossing ducts (6-way) [7] |
| MH | **Manholes Works** | 2026-07-07 → 2027-03-28 (+264d) | 2026-07-30 → 2027-04-20 (+264d) |  |  |  |  |
| CO-R14.S07-TE-140 | Excavation Works for Manholes of Telecom Network-[Road 14]-[SW-7] | 2026-07-07 → 2027-03-28 (+264d) | 2026-07-14 → 2027-04-04 (+264d) |  | 0d → -206d |  | resources Manhole Type 2 (2000x1000x1000) [1] → Manhole Type 2 (2000x1000x1000) [0.6] |
| CO-R14.S07-TE-150 | Installation Works for Manholes of Telecom Network-[Road 14]-[SW-7] | 2026-07-15 → 2027-04-05 (+264d) | 2026-07-22 → 2027-04-12 (+264d) |  | 7d → -199d |  | resources Manhole Type 1 (2000x1000x1000) [1]; Manhole Type 2 (2000x1000x1000) [3.01] → Manhole Type 1 (2000x1000x1000) [1]; Manhole Type 2 (2000x1000x1000) [1.8] |
| CO-R14.S07-TE-160 | Backfilling Works for Manholes of Telecom Network-[Road 14]-[SW-7] | 2026-07-23 → 2027-04-13 (+264d) | 2026-07-30 → 2027-04-20 (+264d) |  | 7d → -199d |  | resources Manhole Type 2 (2000x1000x1000) [1] → Manhole Type 2 (2000x1000x1000) [0.6] |
| RD | **Road Works** | 2026-08-01 → 2026-08-18 (+17d) | 2026-10-25 → 2027-08-14 (+293d) |  |  |  |  |
| RD | **Pre-Bituminous Construction** | 2026-08-01 → 2026-08-18 (+17d) | 2026-09-26 → 2027-05-29 (+245d) |  |  |  |  |
| CO-R14.S07-RD-P-100 | Capping and Subgrade Layer for Road Works-[Road 14]-[SW-7] | 2026-08-01 → 2026-08-18 A (+17d) | 2026-08-20 → 2026-08-23 A (+3d) | 0% → 100% | 13d → none |  | resources 300mm capping layer underneath subgrade , CBR?15% [4143.94]; 300mm thick Subgrade, including subgrade preparation, CBR?25% [4143.94] → 300mm capping layer underneath subgrade , CBR?15% [2920.26]; 300mm thick Subgrade, including subgrade preparation, CBR?25% [2920.26] |
| CO-R14.S07-RD-P-110 | Aggregate Base Course Layer for Road Works-[Road 14]-[SW-7] | 2026-09-05 → 2027-05-03 (+240d) | 2026-09-26 → 2027-05-29 (+245d) |  | 3d → -191d |  | resources Aggregate base course 200mm thick after compaction in two layers(Grading 1); CBR?80%; including watering, compaction and testing [2763.63] → Aggregate base course 200mm thick after compaction in two layers(Grading 1); CBR?80%; including watering, compaction and testing [1947.04] |
| LS | **Pavement Works** | 2026-09-08 → 2026-08-25 (-14d) | 2026-10-25 → 2027-08-14 (+293d) |  |  |  |  |
| CO-R14.S07-RD-P-120 | Fixing of Curbstone for Sidewalks Pavement-[Road 14]-[SW-7] | 2026-09-08 → 2026-08-25 A (-14d) | 2026-09-29 → 2026-08-31 A (-29d) | 0% → 100% | 3d → none |  | resources Skilled Labor/Surveyor [164.14 h]; Block Mason [1313.15 h]; Precast Concrete Kerb, Type K1 [1528.78]; Precast Concrete Kerb, Type L1 [3034.48] → Precast Concrete Kerb, Type K1 [1077.41]; Precast Concrete Kerb, Type L1 [2137.72] |
| CO-R14.S07-RD-P-130 | Fixing of Interlock Tiles for Sidewalks Pavement-[Road 14]-[SW-7] | 2026-10-12 → 2026-08-25 A (-48d) | 2026-10-25 → 2027-08-14 (+293d) | 0% → 50% | 0d → -242d |  | resources Interlocking block pavers for sidewalk/footpath 60mm thick on and including 30mm Sand Bedding, 200mm Aggregate subbase, all in accordance with authority standards and complete as per specifications [2730.53]; Extraover for Pedestrian ramps [7.02] → Interlocking block pavers for sidewalk/footpath 60mm thick on and including 30mm Sand Bedding, 200mm Aggregate subbase, all in accordance with authority standards and complete as per specifications [1923.95]; Extraover for Pedestrian ramps [5] |
| SW_8 | **SW_8** | 2025-07-21 → 2025-04-23 (-89d) | 2026-10-27 → 2027-08-14 (+291d) |  |  |  |  |
| EW | **Earthworks** | 2025-07-21 → 2025-04-23 (-89d) | 2025-08-17 → 2025-05-03 (-106d) |  |  |  |  |
| EW | **Earthworks** | 2025-07-21 → 2025-04-23 (-89d) | 2025-08-17 → 2025-05-03 (-106d) |  |  |  |  |
| CO-R14.S08-EW-100 | Roadway Excavation Works Upto Design Level for Earthworks-[Road 14]-[SW-8] | 2025-07-21 → 2025-04-23 A (-89d) | 2025-08-03 → 2025-04-27 A (-98d) | 0% → 100% | 11d → none |  | resources Roadway Excavation for cuttings; on any type of material for all depths including trimming and Preparation of excavated surfaces and disposal. [19513] → Roadway Excavation for cuttings; on any type of material for all depths including trimming and Preparation of excavated surfaces and disposal. [13749.1] |
| CO-R14.S08-EW-110 | Embankments Works Upto Design Level for Earthworks-[Road 14]-[SW-8] | 2025-08-04 → 2025-04-26 A (-100d) | 2025-08-17 → 2025-05-03 A (-106d) | 0% → 100% | 17d → none |  | resources Embankments to the ROW, with suitable material other than top soil or rock according to specifications [32848.6] → Embankments to the ROW, with suitable material other than top soil or rock according to specifications [23144.9] |
| SW | **Sewage Network** | 2025-08-18 → 2025-08-02 (-16d) | 2025-09-29 → 2026-10-06 (+372d) |  |  |  |  |
| ML | **Main Line Sections** | 2025-08-18 → 2025-08-02 (-16d) | 2025-09-29 → 2025-08-06 (-54d) |  |  |  |  |
| CO-R14.S08-SW-100 | Trench Excavation and Bedding Works for Main Lines of Sewage Network-[Road 14]-[SW-8] | 2025-08-18 → 2025-08-02 A (-16d) | 2025-08-31 → 2025-08-03 A (-28d) | 0% → 100% | 17d → none | CO-R14.S08-EW-110, ENG-MS-SW-ML-A-110, ENG-SH-SW-ML-A-110, CO-R14.S07-SW-100 → CO-R14.S08-EW-110, ENG-MS-SW-ML-A-110, ENG-SH-SW-ML-A-110 | resources Nominal bore : 160mm; Depth : 0.0m - 1.5m [10.03]; Nominal bore : 200mm; Depth : 0.0m - 1.5m [17.05]; Nominal bore : 200mm; Depth : 1.5m - 2.5m [17.05]; Nominal bore : 200mm; Depth : 2.5m - 3.5m [28.09]; Nominal bore : 200mm; Depth : 3.5m - 4.5m [28.09]; Nominal bore : 200mm; Depth : 4.5m -5.5m [17.05]; Nominal bore : 200mm; Depth : 5.5m - 6.5m [24.08] → Nominal bore : 160mm; Depth : 0.0m - 1.5m [7.2]; Nominal bore : 200mm; Depth : 0.0m - 1.5m [11.74]; Nominal bore : 200mm; Depth : 1.5m - 2.5m [12.08]; Nominal bore : 200mm; Depth : 2.5m - 3.5m [20.01]; Nominal bore : 200mm; Depth : 3.5m - 4.5m [19.78]; Nominal bore : 200mm; Depth : 4.5m -5.5m [12.29]; Nominal bore : 200mm; Depth : 5.5m - 6.5m [16.66] |
| CO-R14.S08-SW-120 | Pipes Laying Works for Main Lines of Sewage Network-[Road 14]-[SW-8] | 2025-09-01 → 2025-08-04 A (-28d) | 2025-09-14 → 2025-08-05 A (-40d) | 0% → 100% | 19d → none |  | resources Nominal bore : 160mm; Depth : 0.0m - 1.5m [31.1]; Nominal bore : 200mm; Depth : 0.0m - 1.5m [50.16]; Nominal bore : 200mm; Depth : 1.5m - 2.5m [51.16]; Nominal bore : 200mm; Depth : 2.5m - 3.5m [85.27]; Nominal bore : 200mm; Depth : 3.5m - 4.5m [83.26]; Nominal bore : 200mm; Depth : 4.5m -5.5m [52.16]; Nominal bore : 200mm; Depth : 5.5m - 6.5m [71.22] → Nominal bore : 160mm; Depth : 0.0m - 1.5m [21.6]; Nominal bore : 200mm; Depth : 0.0m - 1.5m [35.21]; Nominal bore : 200mm; Depth : 1.5m - 2.5m [36.24]; Nominal bore : 200mm; Depth : 2.5m - 3.5m [60.02]; Nominal bore : 200mm; Depth : 3.5m - 4.5m [59.35]; Nominal bore : 200mm; Depth : 4.5m -5.5m [36.86]; Nominal bore : 200mm; Depth : 5.5m - 6.5m [49.97] |
| CO-R14.S08-SW-130 | Trench Backfilling and Compaction Works for Main Lines of Sewage Network-[Road 14]-[SW-8] | 2025-09-15 → 2025-08-06 A (-40d) | 2025-09-29 → 2025-08-06 A (-54d) | 0% → 100% | 19d → none | CO-R14.S08-SW-120, CO-R14.S08-SW-210 FF → CO-R14.S08-SW-120 | resources Nominal bore : 160mm; Depth : 0.0m - 1.5m [6.02]; Nominal bore : 200mm; Depth : 0.0m - 1.5m [8.03]; Nominal bore : 200mm; Depth : 1.5m - 2.5m [8.03]; Nominal bore : 200mm; Depth : 2.5m - 3.5m [14.04]; Nominal bore : 200mm; Depth : 3.5m - 4.5m [14.04]; Nominal bore : 200mm; Depth : 4.5m -5.5m [8.03]; Nominal bore : 200mm; Depth : 5.5m - 6.5m [11.03] → Nominal bore : 160mm; Depth : 0.0m - 1.5m [3.6]; Nominal bore : 200mm; Depth : 0.0m - 1.5m [5.87]; Nominal bore : 200mm; Depth : 1.5m - 2.5m [6.04]; Nominal bore : 200mm; Depth : 2.5m - 3.5m [10]; Nominal bore : 200mm; Depth : 3.5m - 4.5m [9.89]; Nominal bore : 200mm; Depth : 4.5m -5.5m [6.14]; Nominal bore : 200mm; Depth : 5.5m - 6.5m [8.33] |
| 1 | **Manholes** | 2025-09-01 → 2025-08-10 (-22d) | 2025-09-15 → 2026-10-06 (+386d) |  |  |  |  |
| CO-R14.S08-SW-160 | Excavation Works for Main Line Manholes of Sewage Network-[Road 14]-[SW-8] | 2025-09-01 → 2025-08-10 A (-22d) | 2025-09-01 → 2025-08-13 A (-19d) | 0% → 100% | 30d → none |  |  |
| CO-R14.S08-SW-170 | Installation RC Footing Works for Main Line Manholes of Sewage Network-[Road 14]-[SW-8] | 2025-09-02 → 2025-08-14 A (-19d) | 2025-09-03 → 2025-08-17 A (-17d) | 0% → 100% | 30d → none |  |  |
| CO-R14.S08-SW-180 | Install Grp Liner Wall Works for Main Line Manholes of Sewage Network-[Road 14]-[SW-8] | 2025-09-04 → 2025-08-18 A (-17d) | 2025-09-08 → 2025-08-19 A (-20d) | 0% → 100% | 30d → none |  | resources Depth: not exceeding 1.5m [1]; Depth: 1.5 - 2.5m [1]; Depth: 4.5 - 5.5m [0.4] → Depth: not exceeding 1.5m [0.8]; Depth: 1.5 - 2.5m [1.2]; Depth: 4.5 - 5.5m [0.4] |
| CO-R14.S08-SW-200 | Backfilling Works for Main Line Manholes of Sewage Network-[Road 14]-[SW-8] | 2025-09-10 → 2025-08-20 A (-21d) | 2025-09-14 → 2025-08-21 A (-24d) | 0% → 100% | 30d → none | CO-R14.S08-SW-190 → CO-R14.S08-SW-180 |  |
| CO-R14.S08-SW-190 | Pouring Grp Liner Wall Works for Main Line Manholes of Sewage Network-[Road 14]-[SW-8] | 2025-09-09 → 2026-07-01 A (+295d) | 2025-09-09 → 2026-07-04 A (+298d) | 0% → 100% | 30d → none |  |  |
| CO-R14.S08-SW-210 | Testing Works for Main Line Manholes of Sewage Network-[Road 14]-[SW-8] | 2025-09-15 → 2026-10-06 (+386d) | 2025-09-15 → 2026-10-06 (+386d) |  | 30d → -35d | CO-R14.S08-SW-200 → CO-R14.S08-SW-200, CO-R14.S08-SW-190 |  |
| SD | **Storm Drainage Network** | 2025-10-14 → 2025-08-06 (-69d) | 2026-02-07 → 2026-07-13 (+156d) |  |  |  |  |
| ML | **Main Line Sections** | 2025-10-14 → 2025-08-06 (-69d) | 2026-02-07 → 2025-08-08 (-183d) |  |  |  |  |
| CO-R14.S08-SD-100 | Trench Excavation and Bedding Works for Main Lines of Storm Drainage Network-[Road 14]-[SW-8] | 2025-10-14 → 2025-08-06 A (-69d) | 2025-10-25 → 2025-08-06 A (-80d) | 0% → 100% | 0d → none | CO-R14.S08-EW-110, CO-R14.S08-EW-100, CO-R14.S08-SW-130 SS+3d, CO-R14.S08-SW-130 FF+3d, CO-R14.S07-SD-100 → CO-R14.S08-EW-110, CO-R14.S08-EW-100, CO-R14.S08-SW-130 SS+3d, CO-R14.S08-SW-130 FF+3d | resources Pipe with diameter 400mm ; depth: 0.0m - 1.5m [72.23]; Pipe with diameter 400mm ; depth: 1.51m - 2.5m [74.23]; Pipe with diameter 400mm ; depth: 2.51m - 3.5m [14.04]; Pipe with diameter 500mm ; depth: 1.51m - 2.5m [185.58]; Pipe with diameter 600mm ; depth: 1.51m - 2.5m [34.11]; Pipe with diameter 700mm ; depth: 1.51m - 2.5m [44.14] → Pipe with diameter 400mm ; depth: 0.0m - 1.5m [51.12]; Pipe with diameter 400mm ; depth: 1.51m - 2.5m [51.94]; Pipe with diameter 400mm ; depth: 2.51m - 3.5m [10]; Pipe with diameter 500mm ; depth: 1.51m - 2.5m [130.8]; Pipe with diameter 600mm ; depth: 1.51m - 2.5m [24.12]; Pipe with diameter 700mm ; depth: 1.51m - 2.5m [31.06] |
| CO-R14.S08-SD-120 | Pipes Laying Works for Main Lines of Storm Drainage Network-[Road 14]-[SW-8] | 2025-10-26 → 2025-08-07 A (-80d) | 2025-11-05 → 2025-08-07 A (-90d) | 0% → 100% | 0d → none | PRO-R14-SD-DL-120 FF+3d, CO-R14.S08-SD-100, CO-R14.S07-SD-120 → PRO-R14-SD-DL-120 FF+3d, CO-R14.S08-SD-100 | resources Pipe with diameter 400mm ; depth: 0.0m - 1.5m [216.68]; Pipe with diameter 400mm ; depth: 1.51m - 2.5m [221.69]; Pipe with diameter 400mm ; depth: 2.51m - 3.5m [42.13]; Pipe with diameter 500mm ; depth: 1.51m - 2.5m [556.74]; Pipe with diameter 600mm ; depth: 1.51m - 2.5m [102.32]; Pipe with diameter 700mm ; depth: 1.51m - 2.5m [132.41] → Pipe with diameter 400mm ; depth: 0.0m - 1.5m [153.37]; Pipe with diameter 400mm ; depth: 1.51m - 2.5m [155.82]; Pipe with diameter 400mm ; depth: 2.51m - 3.5m [30]; Pipe with diameter 500mm ; depth: 1.51m - 2.5m [392.41]; Pipe with diameter 600mm ; depth: 1.51m - 2.5m [72.35]; Pipe with diameter 700mm ; depth: 1.51m - 2.5m [93.17] |
| CO-R14.S08-SD-130 | Trench Backfilling and Compaction Works for Main Lines of Storm Drainage Network-[Road 14]-[SW-8] | 2026-01-21 → 2025-08-08 A (-166d) | 2026-02-07 → 2025-08-08 A (-183d) | 0% → 100% | 4d → none | CO-R14.S08-SD-120 SS+3d, CO-R14.S08-SD-120 FF+3d, CO-R11.S06-SD-130, CO-R14.S08-SD-120, CO-R14.S08-SD-220 FF → CO-R14.S08-SD-120 SS+3d, CO-R14.S08-SD-120 FF+3d, CO-R14.S08-SD-120 | resources Pipe with diameter 400mm ; depth: 0.0m - 1.5m [37.12]; Pipe with diameter 400mm ; depth: 1.51m - 2.5m [37.12]; Pipe with diameter 400mm ; depth: 2.51m - 3.5m [7.02]; Pipe with diameter 500mm ; depth: 1.51m - 2.5m [92.29]; Pipe with diameter 600mm ; depth: 1.51m - 2.5m [17.05]; Pipe with diameter 700mm ; depth: 1.51m - 2.5m [23.07] → Pipe with diameter 400mm ; depth: 0.0m - 1.5m [25.56]; Pipe with diameter 400mm ; depth: 1.51m - 2.5m [25.97]; Pipe with diameter 400mm ; depth: 2.51m - 3.5m [5]; Pipe with diameter 500mm ; depth: 1.51m - 2.5m [65.4]; Pipe with diameter 600mm ; depth: 1.51m - 2.5m [12.06]; Pipe with diameter 700mm ; depth: 1.51m - 2.5m [15.53] |
| MH | **Manholes** | 2025-10-26 → 2025-10-09 (-17d) | 2025-11-10 → 2026-06-04 (+206d) |  |  |  |  |
| CO-R14.S08-SD-180 | Trench Excavation and Bedding Works for Manholes of Storm Drainage Network-[Road 14]-[SW-8] | 2025-10-26 → 2025-10-09 A (-17d) | 2025-10-26 → 2025-10-11 A (-15d) | 0% → 100% | 80d → none |  | resources MH ; depth: 0.0m - 1.5m [0.3]; MH ; depth: 1.51m - 2.5m [1]; MH ; depth: 2.51 - 3.5m [0.15]; MH ; depth: 2.51 - 3.5m [0.3]; MH ; depth: 2.51 - 3.5m with back drop less than 1.0 m [0.15]; MH ; depth: 1.51m - 2.5m [0.15] → MH ; depth: 0.0m - 1.5m [0.3]; MH ; depth: 1.51m - 2.5m [0.6]; MH ; depth: 2.51 - 3.5m [0.15]; MH ; depth: 2.51 - 3.5m [0.3]; MH ; depth: 2.51 - 3.5m with back drop less than 1.0 m [0.15]; MH ; depth: 1.51m - 2.5m [0.15] |
| CO-R14.S08-SD-190 | Install RC Footing Works for Manholes of Storm Drainage Network-[Road 14]-[SW-8] | 2025-10-27 → 2025-10-11 A (-16d) | 2025-10-27 → 2025-10-12 A (-15d) | 0% → 100% | 80d → none | CO-R14.S08-SD-180 → CO-R14.S08-SD-180, PRO-R14-SD-DL-100 |  |
| CO-R14.S08-SD-200 | Install RC Wall Rings & Slab Works for Manholes of Storm Drainage Network-[Road 14]-[SW-8] | 2025-10-28 → 2025-10-12 A (-16d) | 2025-11-01 → 2025-10-13 A (-19d) | 0% → 100% | 80d → none |  | resources MH ; depth: 0.0m - 1.5m [1]; MH ; depth: 1.51m - 2.5m [3.01]; MH ; depth: 2.51 - 3.5m [0.45]; MH ; depth: 2.51 - 3.5m [1]; MH ; depth: 2.51 - 3.5m with back drop less than 1.0 m [0.45]; MH ; depth: 1.51m - 2.5m [0.45] → MH ; depth: 0.0m - 1.5m [0.9]; MH ; depth: 1.51m - 2.5m [1.8]; MH ; depth: 2.51 - 3.5m [0.45]; MH ; depth: 2.51 - 3.5m [0.9]; MH ; depth: 2.51 - 3.5m with back drop less than 1.0 m [0.45]; MH ; depth: 1.51m - 2.5m [0.45] |
| CO-R14.S08-SD-220 | Backfilling Works for Manholes of Storm Drainage Network-[Road 14]-[SW-8] | 2025-11-03 → 2025-10-14 A (-20d) | 2025-11-10 → 2025-10-14 A (-27d) | 0% → 100% | 80d → none |  | resources MH ; depth: 0.0m - 1.5m [0.4]; MH ; depth: 1.51m - 2.5m [1]; MH ; depth: 2.51 - 3.5m [0.2]; MH ; depth: 2.51 - 3.5m [0.4]; MH ; depth: 2.51 - 3.5m with back drop less than 1.0 m [0.2]; MH ; depth: 1.51m - 2.5m [0.2] → MH ; depth: 0.0m - 1.5m [0.4]; MH ; depth: 1.51m - 2.5m [0.8]; MH ; depth: 2.51 - 3.5m [0.2]; MH ; depth: 2.51 - 3.5m [0.4]; MH ; depth: 2.51 - 3.5m with back drop less than 1.0 m [0.2]; MH ; depth: 1.51m - 2.5m [0.2] |
| CO-R14.S08-SD-210 | Testing Works for Manholes of Storm Drainage Network-[Road 14]-[SW-8] | 2025-11-02 → 2026-06-04 A (+214d) | 2025-11-02 → 2026-06-04 A (+214d) | 0% → 100% | 80d → none |  |  |
| CB | **Catch Basin Sections** | 2025-11-17 → 2026-06-04 (+199d) | 2025-12-14 → 2026-07-13 (+211d) |  |  |  |  |
| CO-R14.S08-SD-140 | Trench Excavation and Bedding Works for Catch Basins of Storm Drainage Network-[Road 14]-[SW-8] | 2025-11-17 → 2026-06-04 A (+199d) | 2025-11-23 → 2026-07-13 A (+232d) | 0% → 100% | 112d → none |  | resources Pipe with diameter 300mm ; depth: 0 - 1.5m [103.32]; Pipe with diameter 400mm ; depth: 0 - 1.5m [6.02] → Pipe with diameter 300mm ; depth: 0 - 1.5m [72.81]; Pipe with diameter 400mm ; depth: 0 - 1.5m [4.44] |
| CO-R14.S08-SD-150 | Installation and Pipes Laying Connection Works for Catch Basins of Storm Drainage Network-[Road 14]-[SW-8] | 2025-11-24 → 2026-06-04 A (+192d) | 2025-12-01 → 2026-07-13 A (+224d) | 0% → 100% | 203d → none |  | resources Pipe with diameter 300mm ; depth: 0 - 1.5m [308.97]; Pipe with diameter 400mm ; depth: 0 - 1.5m [18.06] → Pipe with diameter 300mm ; depth: 0 - 1.5m [218.44]; Pipe with diameter 400mm ; depth: 0 - 1.5m [13.32] |
| CO-R14.S08-SD-160 | Testing Works for Catch Basins of Storm Drainage Network-[Road 14]-[SW-8] | 2025-12-02 → 2026-06-04 A (+184d) | 2025-12-06 → 2026-07-13 A (+219d) | 0% → 100% | 203d → none |  | resources Pipe with diameter 300mm ; depth: 0 - 1.5m [69.22]; Pipe with diameter 400mm ; depth: 0 - 1.5m [4.01] → Pipe with diameter 300mm ; depth: 0 - 1.5m [48.54]; Pipe with diameter 400mm ; depth: 0 - 1.5m [2.96] |
| CO-R14.S08-SD-170 | Trench Backfilling and Compaction Works for Catch Basins of Storm Drainage Network-[Road 14]-[SW-8] | 2025-12-07 → 2026-06-04 A (+179d) | 2025-12-14 → 2026-07-13 A (+211d) | 0% → 100% | 203d → none |  | resources Pipe with diameter 300mm ; depth: 0 - 1.5m [137.43]; Pipe with diameter 400mm ; depth: 0 - 1.5m [8.03] → Pipe with diameter 300mm ; depth: 0 - 1.5m [97.09]; Pipe with diameter 400mm ; depth: 0 - 1.5m [5.92] |
| PW | **Potable Water Network** | 2026-02-08 → 2025-08-09 (-183d) | 2026-03-25 → 2026-10-29 (+218d) |  |  |  |  |
| ML | **Main Line Sections** | 2026-02-08 → 2025-08-09 (-183d) | 2026-03-25 → 2025-08-11 (-226d) |  |  |  |  |
| CO-R14.S08-PW-100 | Trench Excavation and Bedding Works for Main Lines of Potable Water Network-[Road 14]-[SW-8] | 2026-02-08 → 2025-08-09 A (-183d) | 2026-02-18 → 2025-08-09 A (-193d) | 0% → 100% | 6d → none |  | resources Pipe with diameter 355mm; in depth 0.0m - 1.5m [397.24]; Pipe with diameter 355mm; in depth 1.5m - 3.0m [28.09] → Pipe with diameter 355mm; in depth 0.0m - 1.5m [280]; Pipe with diameter 355mm; in depth 1.5m - 3.0m [20] |
| CO-R14.S08-PW-110 | Pipes Laying and accessories for Main Lines of Potable Water Network-[Road 14]-[SW-8] | 2026-02-19 → 2025-08-10 A (-193d) | 2026-03-02 → 2025-08-10 A (-204d) | 0% → 100% | 6d → none | CO-R14.S08-PW-100, CO-R11.S06-PW-110, PRO-R14-PW-DL-100 FF+3d, PRO-R14-PW-DL-110 FF+3d → CO-R14.S08-PW-100, PRO-R14-PW-DL-100 FF+3d | resources Pipe with diameter 355mm; in depth 0.0m - 1.5m [993.1]; Pipe with diameter 355mm; in depth 1.5m - 3.0m [71.22] → Pipe with diameter 355mm; in depth 0.0m - 1.5m [700]; Pipe with diameter 355mm; in depth 1.5m - 3.0m [50] |
| CO-R14.S08-PW-130 | Trench Backfilling and Compaction Works for Main Lines of Potable Water Network-[Road 14]-[SW-8] | 2026-03-11 → 2025-08-11 A (-212d) | 2026-03-25 → 2025-08-11 A (-226d) | 0% → 100% | 6d → none | CO-R14.S08-PW-110, CO-R11.S06-PW-130, CO-R14.S08-PW-220 FF, CO-R14.S08-PW-160 FF → CO-R14.S08-PW-110 | resources Pipe with diameter 355mm; in depth 0.0m - 1.5m [397.24]; Pipe with diameter 355mm; in depth 1.5m - 3.0m [28.09] → Pipe with diameter 355mm; in depth 0.0m - 1.5m [280]; Pipe with diameter 355mm; in depth 1.5m - 3.0m [20] |
| VC | **Valve Chamber** | 2026-03-03 → 2026-06-07 (+96d) | 2026-03-24 → 2026-06-17 (+85d) |  |  |  |  |
| CO-R14.S08-PW-170 | Excavation Works for Main Line Valves and Valve Chambers of Potable Water Network-[Road 14]-[SW-8] | 2026-03-03 → 2026-06-07 A (+96d) | 2026-03-03 → 2026-06-17 A (+106d) | 0% → 100% | 7d → none |  | resources In-situ, reinforced single concrete valve chambers on the pipeline, as defined and shown on the drawingss, and all necessary works and equipment (valve measured elsewhere), and supplies construction, cut and installation of pipe cutting, backfilling, in [3.01]; Air valve chamber on 355 mm dia pipeline Depth 1.5 - 3 m [0.1] → In-situ, reinforced single concrete valve chambers on the pipeline, as defined and shown on the drawingss, and all necessary works and equipment (valve measured elsewhere), and supplies construction, cut and installation of pipe cutting, backfilling, in [1.8]; Air valve chamber on 355 mm dia pipeline Depth 1.5 - 3 m [0.1] |
| CO-R14.S08-PW-180 | RC Footing Works for Main Line Valves and Valve Chambers of Potable Water Network-[Road 14]-[SW-8] | 2026-03-04 → 2026-06-07 A (+95d) | 2026-03-07 → 2026-06-17 A (+102d) | 0% → 100% | 7d → none |  | resources In-situ, reinforced single concrete valve chambers on the pipeline, as defined and shown on the drawingss, and all necessary works and equipment (valve measured elsewhere), and supplies construction, cut and installation of pipe cutting, backfilling, in [4.01]; Air valve chamber on 355 mm dia pipeline Depth 1.5 - 3 m [0.15] → In-situ, reinforced single concrete valve chambers on the pipeline, as defined and shown on the drawingss, and all necessary works and equipment (valve measured elsewhere), and supplies construction, cut and installation of pipe cutting, backfilling, in [2.7]; Air valve chamber on 355 mm dia pipeline Depth 1.5 - 3 m [0.15] |
| CO-R14.S08-PW-190 | RC Wall Works for Main Line Valves and Valve Chambers of Potable Water Network-[Road 14]-[SW-8] | 2026-03-08 → 2026-06-07 A (+91d) | 2026-03-14 → 2026-06-17 A (+95d) | 0% → 100% | 7d → none |  | resources In-situ, reinforced single concrete valve chambers on the pipeline, as defined and shown on the drawingss, and all necessary works and equipment (valve measured elsewhere), and supplies construction, cut and installation of pipe cutting, backfilling, in [8.03]; Air valve chamber on 355 mm dia pipeline Depth 1.5 - 3 m [0.35] → In-situ, reinforced single concrete valve chambers on the pipeline, as defined and shown on the drawingss, and all necessary works and equipment (valve measured elsewhere), and supplies construction, cut and installation of pipe cutting, backfilling, in [6.3]; Air valve chamber on 355 mm dia pipeline Depth 1.5 - 3 m [0.35] |
| CO-R14.S08-PW-200 | RC Slab Works for Main Line Valves and Valve Chambers of Potable Water Network-[Road 14]-[SW-8] | 2026-03-15 → 2026-06-07 A (+84d) | 2026-03-16 → 2026-06-17 A (+93d) | 0% → 100% | 7d → none |  | resources In-situ, reinforced single concrete valve chambers on the pipeline, as defined and shown on the drawingss, and all necessary works and equipment (valve measured elsewhere), and supplies construction, cut and installation of pipe cutting, backfilling, in [6.02]; Air valve chamber on 355 mm dia pipeline Depth 1.5 - 3 m [0.2] → In-situ, reinforced single concrete valve chambers on the pipeline, as defined and shown on the drawingss, and all necessary works and equipment (valve measured elsewhere), and supplies construction, cut and installation of pipe cutting, backfilling, in [3.6]; Air valve chamber on 355 mm dia pipeline Depth 1.5 - 3 m [0.2] |
| CO-R14.S08-PW-210 | Insulation Works for Main Line Valves and Valve Chambers of Potable Water Network-[Road 14]-[SW-8] | 2026-03-17 → 2026-06-07 A (+82d) | 2026-03-17 → 2026-06-17 A (+92d) | 0% → 100% | 7d → none | CO-R14.S08-PW-200 → CO-R14.S08-PW-200, PRO-R14-PW-DL-110 | resources Butterfly valves with dia (355)mm on pipes with dia (355)mm. [18.06]; Air valves with dia (65mm) mm on pipes with dia(355)mm. [1] → Butterfly valves with dia (355)mm on pipes with dia (355)mm. [13.46]; Air valves with dia (65mm) mm on pipes with dia(355)mm. [1] |
| CO-R14.S08-PW-220 | Backfilling Works for Main Line Valves and Valve Chambers of Potable Water Network-[Road 14]-[SW-8] | 2026-03-18 → 2026-06-07 A (+81d) | 2026-03-24 → 2026-06-17 A (+85d) | 0% → 100% | 7d → none |  | resources In-situ, reinforced single concrete valve chambers on the pipeline, as defined and shown on the drawingss, and all necessary works and equipment (valve measured elsewhere), and supplies construction, cut and installation of pipe cutting, backfilling, in [6.02]; Air valve chamber on 355 mm dia pipeline Depth 1.5 - 3 m [0.2] → In-situ, reinforced single concrete valve chambers on the pipeline, as defined and shown on the drawingss, and all necessary works and equipment (valve measured elsewhere), and supplies construction, cut and installation of pipe cutting, backfilling, in [3.6]; Air valve chamber on 355 mm dia pipeline Depth 1.5 - 3 m [0.2] |
| FH | **Fire Hydrant** | 2026-02-26 → 2026-10-06 (+222d) | 2026-03-25 → 2026-10-29 (+218d) |  |  |  |  |
| CO-R14.S08-PW-140 | Excavation Works for Fire Hydrants of Potable Water Network-[Road 14]-[SW-8] | 2026-02-26 → 2026-10-06 (+222d) | 2026-03-05 → 2026-10-13 (+222d) |  | 6d → -55d |  | resources 3-outlet fire hydrant (2 x 2.5 inch and 1 x 4 inch) in the form of a separate dry vacuum cylinder [1] → 3-outlet fire hydrant (2 x 2.5 inch and 1 x 4 inch) in the form of a separate dry vacuum cylinder [1.05] |
| CO-R14.S08-PW-150 | Installation Works for Fire Hydrant of Potable Water Network-[Road 14]-[SW-8] | 2026-03-07 → 2026-10-14 (+221d) | 2026-03-14 → 2026-10-21 (+221d) |  | 6d → -55d |  | resources 3-outlet fire hydrant (2 x 2.5 inch and 1 x 4 inch) in the form of a separate dry vacuum cylinder [7.02] → 3-outlet fire hydrant (2 x 2.5 inch and 1 x 4 inch) in the form of a separate dry vacuum cylinder [4.55] |
| CO-R14.S08-PW-160 | Trench Backfilling and Compaction Works for Fire Hydrants of Potable Water Network-[Road 14]-[SW-8] | 2026-03-15 → 2026-10-22 (+221d) | 2026-03-25 → 2026-10-29 (+218d) |  | 6d → -55d |  | resources 3-outlet fire hydrant (2 x 2.5 inch and 1 x 4 inch) in the form of a separate dry vacuum cylinder [1] → 3-outlet fire hydrant (2 x 2.5 inch and 1 x 4 inch) in the form of a separate dry vacuum cylinder [1.4] |
| SL | **Street Lighting Network** | 2026-03-26 → 2026-08-09 (+136d) | 2026-08-15 → 2027-05-29 (+287d) |  |  |  |  |
| LP | **Lighting Poles Works** | 2026-03-26 → 2026-09-01 (+159d) | 2026-08-09 → 2027-05-29 (+293d) |  |  |  |  |
| CO-R14.S08-SL-210 | Backfilling Works for Lighting Poles of Street Lighting Network-[Road 14]-[SW-8] | 2026-06-07 → 2026-09-01 A (+86d) | 2026-06-23 → 2026-09-08 A (+77d) | 0% → 100% | 57.5d → none |  | resources Lighting poles with one arm, including the power distribution box, screws, cables, 12 meters in height. [11.03] → Lighting poles with one arm, including the power distribution box, screws, cables, 12 meters in height. [8.4] |
| CO-R14.S08-SL-820 | Foundation Excavation Works for Lighting Poles of Street Lighting Network-[Road 14]-[SW-8] | 2026-03-26 → 2026-09-01 A (+159d) | 2026-04-08 → 2026-09-08 A (+153d) | 0% → 100% | 6d → none |  | resources Lighting poles with one arm, including the power distribution box, screws, cables, 12 meters in height. [3.01] → Lighting poles with one arm, including the power distribution box, screws, cables, 12 meters in height. [2.1] |
| CO-R14.S08-SL-830 | Installation Works for Lighting Poles Foundation of Street Lighting Network-[Road 14]-[SW-8] | 2026-04-11 → 2026-09-01 A (+143d) | 2026-04-21 → 2026-09-08 A (+140d) | 0% → 100% | 0d → none |  | resources Reinforced concrete foundation, for 12m high lighting columns With Drawpits [59.18] → Reinforced concrete foundation, for 12m high lighting columns With Drawpits [42] |
| CO-R14.S08-SL-840 | Installation Works for Lighting Poles of Street Lighting Network-[Road 14]-[SW-8] | 2026-04-16 → 2026-09-01 A (+138d) | 2026-04-27 → 2026-09-08 A (+134d) | 0% → 100% | 0d → none |  | resources Lighting poles with one arm, including the power distribution box, screws, cables, 12 meters in height. [33.1] → Lighting poles with one arm, including the power distribution box, screws, cables, 12 meters in height. [23.1] |
| CO-R14.S08-SL-200 | Testing Works for Lighting Poles of Street Lighting Network-[Road 14]-[SW-8] | 2026-06-24 → 2027-04-01 (+281d) | 2026-07-01 → 2027-04-08 (+281d) |  | 90d → -146d |  | resources Lighting poles with one arm, including the power distribution box, screws, cables, 12 meters in height. [11.03] → Lighting poles with one arm, including the power distribution box, screws, cables, 12 meters in height. [8.4] |

| ID | Task | Start | Finish | Complete | Total float | Predecessors | Other |
| --- | --- | --- | --- | --- | --- | --- | --- |
| CO-R14.S08-SL-850 | Installation Works for Lighting Fixtures With Drop Wire of Street Lighting Network-[Road 14]-[SW-8] | 2026-07-20 → 2027-05-03 (+287d) | 2026-08-09 → 2027-05-29 (+293d) |  | 57.5d → -183.5d |  | resources Street Lighting( LED) Luminaire,(Type C) complete with control gear and lamp, ?.17000 Lumen [59.18] → Street Lighting( LED) Luminaire,(Type C) complete with control gear and lamp, ?.17000 Lumen [42] |
| CW | **Cabling Works** | 2026-04-28 → 2026-08-09 (+103d) | 2026-06-06 → 2026-09-17 (+103d) |  |  |  |  |
| CO-R14.S08-SL-640 | Trench Excavation and Bedding Works for Street Lighting Network-[Road 14]-[SW-8] | 2026-04-28 → 2026-08-09 A (+103d) | 2026-05-09 → 2026-09-17 A (+131d) | 0% → 100% | 0d → none |  |  |
| CO-R14.S08-SL-650 | Cable Laying Works for Street Lighting Network-[Road 14]-[SW-8] | 2026-05-10 → 2026-08-09 A (+91d) | 2026-05-20 → 2026-09-17 A (+120d) | 0% → 100% | 0d → none |  | resources Supply, installation , test and operation of cables, Copper, (4Cx25mmï¿½,Cu/XLPE/SWA/PVC +1x16mmï¿½ PVC/PVC) [2286.14] → Supply, installation , test and operation of cables, Copper, (4Cx25mm²,Cu/XLPE/SWA/PVC +1x16mm² PVC/PVC) [1610.7] |
| CO-R14.S08-SL-660 | Trench Backfilling and Compaction Works for Street Lighting Network-[Road 14]-[SW-8] | 2026-05-21 → 2026-08-09 A (+80d) | 2026-06-06 → 2026-09-17 A (+103d) | 0% → 100% | 0d → none |  | resources Supply, installation , test and operation of cables, Copper, (4Cx25mmï¿½,Cu/XLPE/SWA/PVC +1x16mmï¿½ PVC/PVC) [175.55] → Supply, installation , test and operation of cables, Copper, (4Cx25mm²,Cu/XLPE/SWA/PVC +1x16mm² PVC/PVC) [123.9] |
| DPB | **Distrubution Panel Boards** | 2026-06-28 → 2027-02-15 (+232d) | 2026-08-15 → 2027-04-08 (+236d) |  |  |  |  |
| CO-R14.S08-SL-DB-640 | Foundation Excavation Works For Panel Boards of Street Lighting Network-[Road 14]-[SW-8] | 2026-06-28 → 2027-02-15 (+232d) | 2026-07-18 → 2027-03-08 (+233d) |  | 14d → -184d |  |  |
| CO-R14.S08-SL-220 | A wall of concrete blocks to install the KWH meter of Street Lighting Network-[Road 14]-[SW-8] | 2026-07-12 → 2027-03-02 (+233d) | 2026-08-09 → 2027-04-03 (+237d) |  | 5d → -193d |  | resources Road crossing ducts, 4 way (4 x 100mm PVC) [130.41]; Drawpit with medium duty steel cover, size 900x900x1200mm, Type 4 [8.03] → Road crossing ducts, 4 way (4 x 100mm PVC) [92.04]; Drawpit with medium duty steel cover, size 900x900x1200mm, Type 4 [6] |
| CO-R14.S08-SL-DB-650 | Installation Works for Panel Board Concrete Foundations of Street Lighting Network-[Road 14]-[SW-8] | 2026-07-12 → 2027-03-02 (+233d) | 2026-08-01 → 2027-03-25 (+236d) |  | 5d → -193d |  |  |
| CO-R14.S08-SL-DB-660 | Installation Works for Lighting Panel Boards of Street Lighting Network-[Road 14]-[SW-8] | 2026-07-26 → 2027-03-20 (+237d) | 2026-08-15 → 2027-04-08 (+236d) |  | 0d → -198d |  |  |
| TE | **Telecom Network** | 2026-06-07 → 2027-03-01 (+267d) | 2026-08-08 → 2027-04-28 (+263d) |  |  |  |  |
| PD | **Ducts Works** | 2026-06-07 → 2027-03-01 (+267d) | 2026-08-08 → 2027-04-20 (+255d) |  |  |  |  |
| CO-R14.S08-TE-100 | Trench Excavation and Bedding Works for Ducts of Telecom Network-[Road 14]-[SW-8] | 2026-06-07 → 2027-03-01 (+267d) | 2026-06-09 → 2027-03-03 (+267d) |  | 0d → -221d |  | resources 6-way ducts, 50mm dia. HDPE [54.17]; Road crossing ducts (6-way) [4.01] → 6-way ducts, 50mm dia. HDPE [38]; Road crossing ducts (6-way) [3] |
| CO-R14.S08-TE-110 | Pipes Laying Works for Ducts of Telecom Network-[Road 14]-[SW-8] | 2026-07-15 → 2027-03-28 (+256d) | 2026-07-22 → 2027-04-04 (+256d) |  | 0d → -199d |  | resources 6-way ducts, 50mm dia. HDPE [328.02]; Road crossing ducts (6-way) [28.09] → 6-way ducts, 50mm dia. HDPE [231]; Road crossing ducts (6-way) [20] |
| CO-R14.S08-TE-120 | Pouring Plain Concrete Above Ducts of Telecom Network-[Road 14]-[SW-8] | 2026-07-23 → 2027-04-05 (+256d) | 2026-07-30 → 2027-04-12 (+256d) |  | 0d → -199d |  | resources 6-way ducts, 50mm dia. HDPE [54.17]; Road crossing ducts (6-way) [4.01] → 6-way ducts, 50mm dia. HDPE [38]; Road crossing ducts (6-way) [3] |
| CO-R14.S08-TE-130 | Trench Backfilling and Compaction Works for Ducts of Telecom Network-[Road 14]-[SW-8] | 2026-08-01 → 2027-04-13 (+255d) | 2026-08-08 → 2027-04-20 (+255d) |  | 0d → -199d |  | resources 6-way ducts, 50mm dia. HDPE [109.34]; Road crossing ducts (6-way) [10.03] → 6-way ducts, 50mm dia. HDPE [77]; Road crossing ducts (6-way) [7] |
| MH | **Manholes Works** | 2026-07-15 → 2027-04-05 (+264d) | 2026-08-08 → 2027-04-28 (+263d) |  |  |  |  |
| CO-R14.S08-TE-140 | Excavation Works for Manholes of Telecom Network-[Road 14]-[SW-8] | 2026-07-15 → 2027-04-05 (+264d) | 2026-07-22 → 2027-04-12 (+264d) |  | 0d → -206d |  | resources Manhole Type 2 (2000x1000x1000) [1] → Manhole Type 2 (2000x1000x1000) [0.6] |
| CO-R14.S08-TE-150 | Installation Works for Manholes of Telecom Network-[Road 14]-[SW-8] | 2026-07-23 → 2027-04-13 (+264d) | 2026-07-30 → 2027-04-20 (+264d) |  | 0d → -206d |  | resources Manhole Type 1 (2000x1000x1000) [1]; Manhole Type 2 (2000x1000x1000) [3.01] → Manhole Type 1 (2000x1000x1000) [1]; Manhole Type 2 (2000x1000x1000) [1.8] |
| CO-R14.S08-TE-160 | Backfilling Works for Manholes of Telecom Network-[Road 14]-[SW-8] | 2026-08-01 → 2027-04-21 (+263d) | 2026-08-08 → 2027-04-28 (+263d) |  | 0d → -206d |  | resources Manhole Type 2 (2000x1000x1000) [1] → Manhole Type 2 (2000x1000x1000) [0.6] |
| MV | **Medium Voltage Network** | 2026-08-10 → 2025-09-01 (-343d) | 2026-08-27 → 2025-09-07 (-354d) |  |  |  |  |
| CW | **Cabling Works** | 2026-08-10 → 2025-09-01 (-343d) | 2026-08-27 → 2025-09-07 (-354d) |  |  |  |  |
| CO-R14.S08-MV-ML-640 | Trench Excavation and Bedding Works for Medium Voltage Network-[Road 14]-[SW-8] | 2026-08-10 → 2025-09-01 A (-343d) | 2026-08-20 → 2025-09-03 A (-351d) | 0% → 100% | 2d → none | CO-R14.S08-SD-170 SS+3d, CO-R14.S08-SD-170 FF+3d, CO-R14.S08-EW-110, CO-R14.S08-TE-130 SS+3d, CO-R14.S08-TE-130 FF+3d, CO-R11.S06-MV-100 → CO-R14.S08-EW-110 | resources Excavation for Trench size 40cm wide and 80cm deep ( Maximum 1 cable 33kv) [486.52]; Excavation for Trench size 60cm wide and 80cm deep ( for Max two cables 33 kv) [28.09]; Excavation for Trench size 90cm wide and 80cm deep ( Maximum 3 cable 33kv) [123.39]; Excavation for Trench size 120cm wide and 80cm deep ( Maximum 4cable 33kv) [42.13]; Excavation for Trench size 150cm wide and 80cm deep ( Maximum 4cable 33kv) [156.49]; Duct bank for (2) 33 kv cables [17.05]; Duct bank for (4) 33 kv cables [110.34]; Duct bank for (6) 33 kv cables [51.16] → Excavation for Trench size 40cm wide and 80cm deep ( Maximum 1 cable 33kv) [343.35]; Excavation for Trench size 60cm wide and 80cm deep ( for Max two cables 33 kv) [19.54]; Excavation for Trench size 90cm wide and 80cm deep ( Maximum 3 cable 33kv) [87.02]; Excavation for Trench size 120cm wide and 80cm deep ( Maximum 4cable 33kv) [29.6]; Excavation for Trench size 150cm wide and 80cm deep ( Maximum 4cable 33kv) [109.52]; Duct bank for (2) 33 kv cables [11.84]; Duct bank for (4) 33 kv cables [78.14]; Duct bank for (6) 33 kv cables [35.52] |
| CO-R14.S08-MV-ML-650 | Cable Laying Works for Medium Voltage Network-[Road 14]-[SW-8] | 2026-08-13 → 2025-09-02 A (-345d) | 2026-08-24 → 2025-09-04 A (-354d) | 0% → 100% | 2d → none | CO-R14.S08-MV-ML-640 SS+3d, CO-R14.S08-MV-ML-640 FF+3d, CO-R11.S06-MV-110, PRO-R14-MV-DL-100 FF+3d → CO-R14.S08-MV-ML-640 SS+3d, CO-R14.S08-MV-ML-640 FF+3d, PRO-R14-MV-DL-100 FF+3d | resources 33kv 3Cx400 mmï¿½ Al XLPE / LLDPE /PVC Cable [2293.16]; 33kv 3Cx400 mmï¿½ Al XLPE /LLDPE/PVC [7.02] → 33kv 3Cx400 mm² Al XLPE / LLDPE /PVC Cable [1616.12]; 33kv 3Cx400 mm² Al XLPE /LLDPE/PVC [4.9] |
| CO-R14.S08-MV-ML-660 | Trench Backfilling and Compaction Works for Medium Voltage Network-[Road 14]-[SW-8] | 2026-08-17 → 2025-09-06 A (-345d) | 2026-08-27 → 2025-09-07 A (-354d) | 0% → 100% | 2d → none | CO-R14.S08-MV-ML-650 SS+3d, CO-R14.S08-MV-ML-650 FF+3d, CO-R14.S08-PW-130 FF+3d, CO-R11.S06-MV-120 → CO-R14.S08-MV-ML-650 SS+3d, CO-R14.S08-MV-ML-650 FF+3d, CO-R14.S08-PW-130 FF+3d | resources 33kv 3Cx400 mmï¿½ Al XLPE / LLDPE /PVC Cable [983.07]; 33kv 3Cx400 mmï¿½ Al XLPE /LLDPE/PVC [3.01] → 33kv 3Cx400 mm² Al XLPE / LLDPE /PVC Cable [692.62]; 33kv 3Cx400 mm² Al XLPE /LLDPE/PVC [2.1] |
| RD | **Road Works** | 2026-08-20 → 2026-08-17 (-3d) | 2026-10-27 → 2027-08-14 (+291d) |  |  |  |  |
| RD | **Pre-Bituminous Construction** | 2026-08-20 → 2026-08-17 (-3d) | 2026-09-22 → 2027-05-29 (+249d) |  |  |  |  |
| CO-R14.S08-RD-P-100 | Capping and Subgrade Layer for Road Works-[Road 14]-[SW-8] | 2026-08-20 → 2026-08-17 A (-3d) | 2026-08-31 → 2026-08-22 A (-9d) | 0% → 100% | 2d → none |  | resources 300mm capping layer underneath subgrade , CBR?15% [4143.94]; 300mm thick Subgrade, including subgrade preparation, CBR?25% [4143.94] → 300mm capping layer underneath subgrade , CBR?15% [2920.26]; 300mm thick Subgrade, including subgrade preparation, CBR?25% [2920.26] |
| CO-R14.S08-RD-P-110 | Aggregate Base Course Layer for Road Works-[Road 14]-[SW-8] | 2026-09-02 → 2027-05-03 (+243d) | 2026-09-22 → 2027-05-29 (+249d) |  | 5d → -189d |  | resources Aggregate base course 200mm thick after compaction in two layers(Grading 1); CBR?80%; including watering, compaction and testing [2763.63] → Aggregate base course 200mm thick after compaction in two layers(Grading 1); CBR?80%; including watering, compaction and testing [1947.04] |
| LS | **Pavement Works** | 2026-09-06 → 2026-08-25 (-12d) | 2026-10-27 → 2027-08-14 (+291d) |  |  |  |  |
| CO-R14.S08-RD-P-120 | Fixing of Curbstone for Sidewalks Pavement-[Road 14]-[SW-8] | 2026-09-06 → 2026-08-25 A (-12d) | 2026-09-27 → 2026-08-31 A (-27d) | 0% → 100% | 5d → none |  | resources Precast Concrete Kerb, Type K1 [1528.78]; Precast Concrete Kerb, Type L1 [3034.48] → Precast Concrete Kerb, Type K1 [1077.41]; Precast Concrete Kerb, Type L1 [2137.72] |
| CO-R14.S08-RD-P-130 | Fixing of Interlock Tiles for Sidewalks Pavement-[Road 14]-[SW-8] | 2026-10-14 → 2026-08-25 A (-50d) | 2026-10-27 → 2027-08-14 (+291d) | 0% → 50% | 0d → -240d |  | resources Labor/Helper [6537.35 h]; Block Mason [6591.55 h]; Interlocking block pavers for sidewalk/footpath 60mm thick on and including 30mm Sand Bedding, 200mm Aggregate subbase, all in accordance with authority standards and complete as per specifications [2730.53]; Extraover for Pedestrian ramps [7.02] → Interlocking block pavers for sidewalk/footpath 60mm thick on and including 30mm Sand Bedding, 200mm Aggregate subbase, all in accordance with authority standards and complete as per specifications [1923.95]; Extraover for Pedestrian ramps [5] |
| 7 | **Road 15 Local 1 ( 556 LM )** | 2025-04-26 → 2025-04-13 (-13d) | 2026-11-08 → 2027-08-28 (+293d) |  |  |  |  |
| SW_9 | **SW_9** | 2025-04-26 → 2025-04-13 (-13d) | 2026-11-08 → 2027-08-28 (+293d) |  |  |  |  |
| EW | **Earthworks** | 2025-04-26 → 2025-04-13 (-13d) | 2025-05-20 → 2025-04-23 (-27d) |  |  |  |  |
| EW | **Earthworks** | 2025-04-26 → 2025-04-13 (-13d) | 2025-05-20 → 2025-04-23 (-27d) |  |  |  |  |
| CO-R15.S09-EW-110 | Embankments Works Upto Design Level for Earthworks-[Road 15]-[SW-9] | 2025-05-07 → 2025-04-13 A (-24d) | 2025-05-20 → 2025-04-16 A (-34d) | 0% → 100% | 23d → none |  | resources Labor/Helper [437.72 h]; Skilled Labor/Surveyor [54.71 h]; Foreman [54.71 h]; Water Tank [384 h]; Dozer [384 h]; Embankments to the ROW, with suitable material other than top soil or rock according to specifications [18735.5] → Labor/Helper [384 h]; Skilled Labor/Surveyor [48 h]; Foreman [48 h]; Water Tank [384 h]; Dozer [384 h]; Embankments to the ROW, with suitable material other than top soil or rock according to specifications [13200.8] |
| CO-R15.S09-EW-200 | Roadway Excavation Works Upto Design Level for Earthworks-[Road 15]-[SW-9] | 2025-04-26 → 2025-04-16 A (-10d) | 2025-05-06 → 2025-04-23 A (-13d) | 0% → 100% | 11d → none |  | resources Labor/Helper [218.86 h]; Skilled Labor/Surveyor [27.36 h]; Foreman [27.36 h]; Water Tank [192 h]; Dozer [192 h]; Roadway Excavation for cuttings; on any type of material for all depths including trimming and Preparation of excavated surfaces and disposal. [11129.8] → Labor/Helper [192 h]; Skilled Labor/Surveyor [24 h]; Foreman [24 h]; Water Tank [192 h]; Dozer [192 h]; Roadway Excavation for cuttings; on any type of material for all depths including trimming and Preparation of excavated surfaces and disposal. [7841.85] |
| SW | **Sewage Network** | 2025-05-21 → 2025-04-29 (-22d) | 2025-07-30 → 2025-09-21 (+53d) |  |  |  |  |
| ML | **Main Line Sections** | 2025-05-21 → 2025-04-29 (-22d) | 2025-07-30 → 2025-07-14 (-16d) |  |  |  |  |
| CO-R15.S09-SW-100 | Trench Excavation and Bedding Works for Main Lines of Sewage Network-[Road 15]-[SW-9] | 2025-05-21 → 2025-04-29 A (-22d) | 2025-06-03 → 2025-05-08 A (-26d) | 0% → 100% | 23d → none |  | resources Labor/Helper [109.43 h]; Foreman [109.43 h]; Excavator [96 h]; Nominal bore : 160mm; Depth : 0.0m - 1.5m [13.04]; Nominal bore : 200mm; Depth : 0.0m - 1.5m [4.01]; Nominal bore : 200mm; Depth : 1.5m - 2.5m [10.03]; Nominal bore : 200mm; Depth : 2.5m - 3.5m [23.07]; Nominal bore : 200mm; Depth : 3.5m - 4.5m [21.07]; Nominal bore : 200mm; Depth : 4.5m -5.5m [16.05]; Nominal bore : 200mm; Depth : 5.5m - 6.5m [11.03] → Labor/Helper [96 h]; Foreman [96 h]; Excavator [96 h]; Nominal bore : 160mm; Depth : 0.0m - 1.5m [9.4]; Nominal bore : 200mm; Depth : 0.0m - 1.5m [2.7]; Nominal bore : 200mm; Depth : 1.5m - 2.5m [7.06]; Nominal bore : 200mm; Depth : 2.5m - 3.5m [16.1]; Nominal bore : 200mm; Depth : 3.5m - 4.5m [15.12]; Nominal bore : 200mm; Depth : 4.5m -5.5m [11.13]; Nominal bore : 200mm; Depth : 5.5m - 6.5m [8.08] |
| CO-R15.S09-SW-120 | Pipes Laying Works for Main Lines of Sewage Network-[Road 15]-[SW-9] | 2025-06-04 → 2025-05-09 A (-26d) | 2025-06-22 → 2025-05-31 A (-22d) | 0% → 100% | 23d → none | CO-R15.S09-SW-100, PRO-R15-SW-DL-100 FF+3d → CO-R15.S09-SW-100 FF, PRO-R15-SW-DL-100 FF+3d | resources Labor/Helper [437.72 h]; Skilled Labor/Surveyor [22.8 h]; Foreman [22.8 h]; Plumber [218.86 h]; Excavator [192 h]; Nominal bore : 160mm; Depth : 0.0m - 1.5m [40.13]; Nominal bore : 200mm; Depth : 0.0m - 1.5m [11.03]; Nominal bore : 200mm; Depth : 1.5m - 2.5m [30.09]; Nominal bore : 200mm; Depth : 2.5m - 3.5m [68.21]; Nominal bore : 200mm; Depth : 3.5m - 4.5m [64.2]; Nominal bore : 200mm; Depth : 4.5m -5.5m [47.15]; Nominal bore : 200mm; Depth : 5.5m - 6.5m [34.11] → Labor/Helper [384 h]; Skilled Labor/Surveyor [20 h]; Foreman [20 h]; Plumber [192 h]; Excavator [192 h]; Nominal bore : 160mm; Depth : 0.0m - 1.5m [28.2]; Nominal bore : 200mm; Depth : 0.0m - 1.5m [8.11]; Nominal bore : 200mm; Depth : 1.5m - 2.5m [21.19]; Nominal bore : 200mm; Depth : 2.5m - 3.5m [48.31]; Nominal bore : 200mm; Depth : 3.5m - 4.5m [45.35]; Nominal bore : 200mm; Depth : 4.5m -5.5m [33.38]; Nominal bore : 200mm; Depth : 5.5m - 6.5m [24.23] |
| CO-R15.S09-SW-130 | Trench Backfilling and Compaction Works for Main Lines of Sewage Network-[Road 15]-[SW-9] | 2025-07-20 → 2025-07-11 A (-9d) | 2025-07-30 → 2025-07-14 A (-16d) | 0% → 100% | 0d → none | ENG-SH-SW-ML-A-110 FF, ENG-MS-SW-ML-A-110 FF, CO-R15.S09-SW-120, CO-R15.S09-SW-210 FF, CO-R16.S12-SW-130 → ENG-SH-SW-ML-A-110 FF, ENG-MS-SW-ML-A-110 FF, CO-R15.S09-SW-120, CO-R16.S12-SW-130 | resources Skilled Labor/Surveyor [11.4 h]; Foreman [11.4 h]; Excavator [96 h]; Nominal bore : 160mm; Depth : 0.0m - 1.5m [7.02]; Nominal bore : 200mm; Depth : 0.0m - 1.5m [1]; Nominal bore : 200mm; Depth : 1.5m - 2.5m [6.02]; Nominal bore : 200mm; Depth : 2.5m - 3.5m [11.03]; Nominal bore : 200mm; Depth : 3.5m - 4.5m [11.03]; Nominal bore : 200mm; Depth : 4.5m -5.5m [8.03]; Nominal bore : 200mm; Depth : 5.5m - 6.5m [6.02] → Skilled Labor/Surveyor [10 h]; Foreman [10 h]; Excavator [96 h]; Nominal bore : 160mm; Depth : 0.0m - 1.5m [4.7]; Nominal bore : 200mm; Depth : 0.0m - 1.5m [1.35]; Nominal bore : 200mm; Depth : 1.5m - 2.5m [3.53]; Nominal bore : 200mm; Depth : 2.5m - 3.5m [8.05]; Nominal bore : 200mm; Depth : 3.5m - 4.5m [7.56]; Nominal bore : 200mm; Depth : 4.5m -5.5m [5.56]; Nominal bore : 200mm; Depth : 5.5m - 6.5m [4.04] |
| 1 | **Manholes** | 2025-06-04 → 2025-05-10 (-25d) | 2025-06-23 → 2025-09-21 (+90d) |  |  |  |  |
| CO-R15.S09-SW-160 | Excavation Works for Main Line Manholes of Sewage Network-[Road 15]-[SW-9] | 2025-06-04 → 2025-05-10 A (-25d) | 2025-06-04 → 2025-05-15 A (-20d) | 0% → 100% | 32d → none |  | resources Labor/Helper [18.24 h]; Skilled Labor/Surveyor [9.12 h]; Excavator [16 h]; Depth: not exceeding 1.5m [0.3]; Depth: 1.5 - 2.5m [1]; Depth: 5.5 - 6.5m [0.45]; Depth:6.5 - 7.5m [0.3] → Labor/Helper [16 h]; Skilled Labor/Surveyor [8 h]; Excavator [16 h]; Depth: not exceeding 1.5m [0.3]; Depth: 1.5 - 2.5m [0.75]; Depth: 5.5 - 6.5m [0.45]; Depth:6.5 - 7.5m [0.3] |
| CO-R15.S09-SW-170 | Installation RC Footing Works for Main Line Manholes of Sewage Network-[Road 15]-[SW-9] | 2025-06-10 → 2025-06-15 A (+5d) | 2025-06-11 → 2025-06-30 A (+19d) | 0% → 100% | 32d → none |  | resources Cons. Carpenter [44.99 h]; Steel Fixer [36.48 h]; Depth: not exceeding 1.5m [0.2]; Depth: 1.5 - 2.5m [1]; Depth: 5.5 - 6.5m [0.3]; Depth:6.5 - 7.5m [0.2] → Cons. Carpenter [32 h]; Steel Fixer [32 h]; Depth: not exceeding 1.5m [0.2]; Depth: 1.5 - 2.5m [0.5]; Depth: 5.5 - 6.5m [0.3]; Depth:6.5 - 7.5m [0.2] |
| CO-R15.S09-SW-180 | Install Grp Liner Wall Works for Main Line Manholes of Sewage Network-[Road 15]-[SW-9] | 2025-06-12 → 2025-07-01 A (+19d) | 2025-06-16 → 2025-07-05 A (+19d) | 0% → 100% | 32d → none |  | resources Labor/Helper [36.48 h]; Plumber [36.48 h]; Depth: not exceeding 1.5m [1]; Depth: 1.5 - 2.5m [3.01]; Depth: 5.5 - 6.5m [1]; Depth:6.5 - 7.5m [1] → Labor/Helper [32 h]; Plumber [32 h]; Depth: not exceeding 1.5m [0.8]; Depth: 1.5 - 2.5m [2]; Depth: 5.5 - 6.5m [1.2]; Depth:6.5 - 7.5m [0.8] |
| CO-R15.S09-SW-190 | Pouring Grp Liner Wall Works for Main Line Manholes of Sewage Network-[Road 15]-[SW-9] | 2025-06-17 → 2025-09-16 A (+91d) | 2025-06-17 → 2025-09-16 A (+91d) | 0% → 100% | 32d → none |  | resources Cons. Carpenter [36.48 h]; Steel Fixer [36.48 h]; Depth: not exceeding 1.5m [0.1]; Depth: 1.5 - 2.5m [0.25]; Depth: 5.5 - 6.5m [0.15]; Depth:6.5 - 7.5m [0.1] → Cons. Carpenter [32 h]; Steel Fixer [32 h]; Depth: not exceeding 1.5m [0.1]; Depth: 1.5 - 2.5m [0.25]; Depth: 5.5 - 6.5m [0.15]; Depth:6.5 - 7.5m [0.1] |
| CO-R15.S09-SW-200 | Backfilling Works for Main Line Manholes of Sewage Network-[Road 15]-[SW-9] | 2025-06-18 → 2025-09-16 A (+90d) | 2025-06-22 → 2025-09-20 A (+90d) | 0% → 100% | 32d → none | CO-R15.S09-SW-190 → CO-R15.S09-SW-180 | resources Labor/Helper [36.48 h]; Skilled Labor/Surveyor [18.24 h]; Excavator [32 h]; Depth: not exceeding 1.5m [0.3]; Depth: 1.5 - 2.5m [1]; Depth: 5.5 - 6.5m [0.45]; Depth:6.5 - 7.5m [0.3] → Labor/Helper [32 h]; Skilled Labor/Surveyor [16 h]; Excavator [32 h]; Depth: not exceeding 1.5m [0.3]; Depth: 1.5 - 2.5m [0.75]; Depth: 5.5 - 6.5m [0.45]; Depth:6.5 - 7.5m [0.3] |
| CO-R15.S09-SW-210 | Testing Works for Main Line Manholes of Sewage Network-[Road 15]-[SW-9] | 2025-06-23 → 2025-09-21 A (+90d) | 2025-06-23 → 2025-09-21 A (+90d) | 0% → 100% | 32d → none | CO-R15.S09-SW-200 → CO-R15.S09-SW-200, CO-R15.S09-SW-190 | resources Labor/Helper [18.24 h]; Plumber [18.24 h]; Depth: not exceeding 1.5m [0.1]; Depth: 1.5 - 2.5m [0.25]; Depth: 5.5 - 6.5m [0.15]; Depth:6.5 - 7.5m [0.1] → Labor/Helper [16 h]; Plumber [16 h]; Depth: not exceeding 1.5m [0.1]; Depth: 1.5 - 2.5m [0.25]; Depth: 5.5 - 6.5m [0.15]; Depth:6.5 - 7.5m [0.1] |
| SD | **Storm Drainage Network** | 2025-07-23 → 2025-06-17 (-36d) | 2026-02-19 → 2026-07-13 (+144d) |  |  |  |  |
| ML | **Main Line Sections** | 2025-07-23 → 2025-07-11 (-12d) | 2026-02-19 → 2025-07-17 (-217d) |  |  |  |  |
| CO-R15.S09-SD-100 | Trench Excavation and Bedding Works for Main Lines of Storm Drainage Network-[Road 15]-[SW-9] | 2025-07-23 → 2025-07-11 A (-12d) | 2025-08-03 → 2025-07-14 A (-20d) | 0% → 100% | 42d → none |  | resources Skilled Labor/Surveyor [13.68 h]; Foreman [13.68 h]; Excavator [112 h]; Pipe with diameter 600mm ; depth: 1.51m - 2.5m [14.04]; Pipe with diameter 700mm ; depth: 1.51m - 2.5m [54.17]; Pipe with diameter 1000mm ; depth: 1.51m - 2.5m [20.06]; Pipe with diameter 1000mm ; depth: 2.51 - 3.5m [42.13] → Skilled Labor/Surveyor [12 h]; Foreman [12 h]; Excavator [112 h]; Pipe with diameter 600mm ; depth: 1.51m - 2.5m [9.65]; Pipe with diameter 700mm ; depth: 1.51m - 2.5m [37.71]; Pipe with diameter 1000mm ; depth: 1.51m - 2.5m [14]; Pipe with diameter 1000mm ; depth: 2.51 - 3.5m [30] |
| CO-R15.S09-SD-120 | Pipes Laying Works for Main Lines of Storm Drainage Network-[Road 15]-[SW-9] | 2025-08-04 → 2025-07-15 A (-20d) | 2025-08-20 → 2025-07-16 A (-35d) | 0% → 100% | 42d → none |  | resources Labor/Helper [273.57 h]; Skilled Labor/Surveyor [13.68 h]; Foreman [13.68 h]; Plumber [136.79 h]; Excavator [120 h]; Pipe with diameter 600mm ; depth: 1.51m - 2.5m [41.13]; Pipe with diameter 700mm ; depth: 1.51m - 2.5m [160.5]; Pipe with diameter 1000mm ; depth: 1.51m - 2.5m [59.18]; Pipe with diameter 1000mm ; depth: 2.51 - 3.5m [127.4] → Labor/Helper [240 h]; Skilled Labor/Surveyor [12 h]; Foreman [12 h]; Plumber [120 h]; Excavator [120 h]; Pipe with diameter 600mm ; depth: 1.51m - 2.5m [28.95]; Pipe with diameter 700mm ; depth: 1.51m - 2.5m [113.14]; Pipe with diameter 1000mm ; depth: 1.51m - 2.5m [42]; Pipe with diameter 1000mm ; depth: 2.51 - 3.5m [90] |
| CO-R15.S09-SD-130 | Trench Backfilling and Compaction Works for Main Lines of Storm Drainage Network-[Road 15]-[SW-9] | 2026-02-02 → 2025-07-17 A (-200d) | 2026-02-19 → 2025-07-17 A (-217d) | 0% → 100% | 23d → none | CO-R15.S09-SD-120 SS+3d, CO-R15.S09-SD-120 FF+3d, ENG-SH-SD-ML-A-110 FF, CO-R14.S07-SD-130, ENG-MS-SD-ML-A-110 FF, CO-R15.S09-SD-120, CO-R15.S09-SD-220 FF → ENG-SH-SD-ML-A-110 FF, ENG-MS-SD-ML-A-110 FF, CO-R15.S09-SD-120 | resources Skilled Labor/Surveyor [14.82 h]; Foreman [14.82 h]; Excavator [128 h]; Pipe with diameter 600mm ; depth: 1.51m - 2.5m [7.02]; Pipe with diameter 700mm ; depth: 1.51m - 2.5m [27.08]; Pipe with diameter 1000mm ; depth: 1.51m - 2.5m [10.03]; Pipe with diameter 1000mm ; depth: 2.51 - 3.5m [21.07] → Skilled Labor/Surveyor [13 h]; Foreman [13 h]; Excavator [128 h]; Pipe with diameter 600mm ; depth: 1.51m - 2.5m [4.83]; Pipe with diameter 700mm ; depth: 1.51m - 2.5m [18.86]; Pipe with diameter 1000mm ; depth: 1.51m - 2.5m [7]; Pipe with diameter 1000mm ; depth: 2.51 - 3.5m [15] |
| MH | **Manholes** | 2025-08-04 → 2025-06-17 (-48d) | 2025-08-19 → 2026-07-13 (+328d) |  |  |  |  |
| CO-R15.S09-SD-190 | Install RC Footing Works for Manholes of Storm Drainage Network-[Road 15]-[SW-9] | 2025-08-05 → 2025-06-17 A (-49d) | 2025-08-05 → 2025-07-17 A (-19d) | 0% → 100% | 42d → none |  | resources Cons. Carpenter [173.53 h]; Steel Fixer [55.24 h]; MH ; depth: 0.0m - 1.5m [0.05]; MH ; depth: 1.51m - 2.5m [0.1]; MH ; depth: 1.51m - 2.5m [0.15]; MH ; depth: 1.51m - 2.5m [0.05] → Cons. Carpenter [48 h]; Steel Fixer [48 h]; MH ; depth: 0.0m - 1.5m [0.05]; MH ; depth: 1.51m - 2.5m [0.1]; MH ; depth: 1.51m - 2.5m [0.15]; MH ; depth: 1.51m - 2.5m [0.05] |
| CO-R15.S09-SD-180 | Trench Excavation and Bedding Works for Manholes of Storm Drainage Network-[Road 15]-[SW-9] | 2025-08-04 → 2025-07-15 A (-20d) | 2025-08-04 → 2025-07-16 A (-19d) | 0% → 100% | 42d → none |  | resources Labor/Helper [27.36 h]; Skilled Labor/Surveyor [13.68 h]; Excavator [24 h]; MH ; depth: 0.0m - 1.5m [0.15]; MH ; depth: 1.51m - 2.5m [0.3]; MH ; depth: 1.51m - 2.5m [0.45]; MH ; depth: 1.51m - 2.5m [0.15] → Labor/Helper [24 h]; Skilled Labor/Surveyor [12 h]; Excavator [24 h]; MH ; depth: 0.0m - 1.5m [0.15]; MH ; depth: 1.51m - 2.5m [0.3]; MH ; depth: 1.51m - 2.5m [0.45]; MH ; depth: 1.51m - 2.5m [0.15] |
| CO-R15.S09-SD-200 | Install RC Wall Rings & Slab Works for Manholes of Storm Drainage Network-[Road 15]-[SW-9] | 2025-08-06 → 2025-07-18 A (-19d) | 2025-08-10 → 2025-07-18 A (-23d) | 0% → 100% | 42d → none |  | resources Cons. Carpenter [218.86 h]; Steel Fixer [218.86 h]; MH ; depth: 0.0m - 1.5m [0.45]; MH ; depth: 1.51m - 2.5m [1]; MH ; depth: 1.51m - 2.5m [0.45] → Cons. Carpenter [192 h]; Steel Fixer [192 h]; MH ; depth: 0.0m - 1.5m [0.45]; MH ; depth: 1.51m - 2.5m [0.9]; MH ; depth: 1.51m - 2.5m [1.35]; MH ; depth: 1.51m - 2.5m [0.45] |
| CO-R15.S09-SD-220 | Backfilling Works for Manholes of Storm Drainage Network-[Road 15]-[SW-9] | 2025-08-12 → 2025-07-19 A (-24d) | 2025-08-19 → 2025-07-19 A (-31d) | 0% → 100% | 42d → none | CO-R15.S09-SD-210 → CO-R15.S09-SD-200 | resources Labor/Helper [191.5 h]; Skilled Labor/Surveyor [95.75 h]; Excavator [168 h]; MH ; depth: 0.0m - 1.5m [0.2]; MH ; depth: 1.51m - 2.5m [0.4]; MH ; depth: 1.51m - 2.5m [1]; MH ; depth: 1.51m - 2.5m [0.2] → Labor/Helper [168 h]; Skilled Labor/Surveyor [84 h]; Excavator [168 h]; MH ; depth: 0.0m - 1.5m [0.2]; MH ; depth: 1.51m - 2.5m [0.4]; MH ; depth: 1.51m - 2.5m [0.6]; MH ; depth: 1.51m - 2.5m [0.2] |
| CO-R15.S09-SD-210 | Testing Works for Manholes of Storm Drainage Network-[Road 15]-[SW-9] | 2025-08-11 → 2026-06-04 A (+297d) | 2025-08-11 → 2026-07-13 A (+336d) | 0% → 100% | 42d → none |  | resources Labor/Helper [93.17 h]; Plumber [30.36 h]; MH ; depth: 0.0m - 1.5m [0.1]; MH ; depth: 1.51m - 2.5m [0.2]; MH ; depth: 1.51m - 2.5m [0.3]; MH ; depth: 1.51m - 2.5m [0.1] → Labor/Helper [24 h]; Plumber [24 h]; MH ; depth: 0.0m - 1.5m [0.1]; MH ; depth: 1.51m - 2.5m [0.2]; MH ; depth: 1.51m - 2.5m [0.3]; MH ; depth: 1.51m - 2.5m [0.1] |
| CB | **Catch Basin Sections** | 2025-08-20 → 2025-06-19 (-62d) | 2025-09-25 → 2026-07-13 (+291d) |  |  |  |  |
| CO-R15.S09-SD-140 | Trench Excavation and Bedding Works for Catch Basins of Storm Drainage Network-[Road 15]-[SW-9] | 2025-08-20 → 2025-06-19 A (-62d) | 2025-08-27 → 2025-06-23 A (-65d) | 0% → 100% | 42d → none |  | resources Skilled Labor/Surveyor [6.84 h]; Foreman [6.84 h]; Excavator [56 h]; Pipe with diameter 300mm ; depth: 0 - 1.5m [59.18]; Pipe with diameter 400mm ; depth: 0 - 1.5m [4.01] → Skilled Labor/Surveyor [6 h]; Foreman [6 h]; Excavator [56 h]; Pipe with diameter 300mm ; depth: 0 - 1.5m [41.53]; Pipe with diameter 400mm ; depth: 0 - 1.5m [2.53] |
| CO-R15.S09-SD-150 | Installation and Pipes Laying Connection Works for Catch Basins of Storm Drainage Network-[Road 15]-[SW-9] | 2025-08-28 → 2025-08-03 A (-25d) | 2025-09-04 → 2025-08-05 A (-30d) | 0% → 100% | 42d → none |  | resources Labor/Helper [182.38 h]; Skilled Labor/Surveyor [9.12 h]; Foreman [9.12 h]; Excavator [80 h]; Pipe with diameter 300mm ; depth: 0 - 1.5m [177.55]; Pipe with diameter 400mm ; depth: 0 - 1.5m [11.03] → Labor/Helper [160 h]; Skilled Labor/Surveyor [8 h]; Foreman [8 h]; Excavator [80 h]; Pipe with diameter 300mm ; depth: 0 - 1.5m [124.59]; Pipe with diameter 400mm ; depth: 0 - 1.5m [7.6] |
| CO-R15.S09-SD-170 | Trench Backfilling and Compaction Works for Catch Basins of Storm Drainage Network-[Road 15]-[SW-9] | 2025-09-14 → 2025-08-06 A (-39d) | 2025-09-25 → 2025-08-07 A (-49d) | 0% → 100% | 42d → none | CO-R15.S09-SD-160 → CO-R15.S09-SD-150 | resources Skilled Labor/Surveyor [9.12 h]; Foreman [9.12 h]; Excavator [80 h]; Pipe with diameter 300mm ; depth: 0 - 1.5m [78.24]; Pipe with diameter 400mm ; depth: 0 - 1.5m [4.01] → Skilled Labor/Surveyor [8 h]; Foreman [8 h]; Excavator [80 h]; Pipe with diameter 300mm ; depth: 0 - 1.5m [55.37]; Pipe with diameter 400mm ; depth: 0 - 1.5m [3.38] |
| CO-R15.S09-SD-160 | Testing Works for Catch Basins of Storm Drainage Network-[Road 15]-[SW-9] | 2025-09-06 → 2026-06-04 A (+271d) | 2025-09-13 → 2026-07-13 A (+303d) | 0% → 100% | 42d → none |  | resources Labor/Helper [127.67 h]; Skilled Labor/Surveyor [18.23 h]; Foreman [19.63 h]; Plumber [63.83 h]; Excavator [56 h]; Pipe with diameter 300mm ; depth: 0 - 1.5m [40.13]; Pipe with diameter 400mm ; depth: 0 - 1.5m [3.01] → Labor/Helper [112 h]; Skilled Labor/Surveyor [6 h]; Foreman [6 h]; Plumber [56 h]; Excavator [56 h]; Pipe with diameter 300mm ; depth: 0 - 1.5m [27.69]; Pipe with diameter 400mm ; depth: 0 - 1.5m [1.69] |
| IR | **Irrigation Network** | 2025-09-27 → 2025-04-28 (-152d) | 2025-11-04 → 2026-07-13 (+251d) |  |  |  |  |
| ML | **Main Line Pipes** | 2025-09-27 → 2025-04-28 (-152d) | 2025-11-04 → 2026-07-13 (+251d) |  |  |  |  |
| CO-R15.S09-IR-100 | Trench Excavation and Bedding Works for Main Lines of Irrigation Network-[Road 15]-[SW-9] | 2025-09-27 → 2025-04-28 A (-152d) | 2025-10-04 → 2025-05-05 A (-152d) | 0% → 100% | 42d → none | ENG-SH-IR-ML-A-110, CO-R15.S09-EW-110, CO-R15.S09-SD-170, ENG-MS-IR-ML-A-110 → ENG-SH-IR-ML-A-110, CO-R15.S09-EW-110, ENG-MS-IR-ML-A-110 | resources Skilled Labor/Surveyor [6.84 h]; Foreman [6.84 h]; Excavator [56 h]; 125 mm pipe; depth 0.0m - 1.5m [199.62] → Skilled Labor/Surveyor [6 h]; Foreman [6 h]; Excavator [56 h]; 125 mm pipe; depth 0.0m - 1.5m [141.13] |
| CO-R15.S09-IR-110 | Pipes Laying Works for Main Lines of Irrigation Network-[Road 15]-[SW-9] | 2025-10-05 → 2025-05-06 A (-152d) | 2025-10-15 → 2025-05-31 A (-137d) | 0% → 100% | 42d → none |  | resources Labor/Helper [182.38 h]; Skilled Labor/Surveyor [9.12 h]; Foreman [9.12 h]; Plumber [91.19 h]; Excavator [80 h]; 125 mm pipe; depth 0.0m - 1.5m [599.87] → Labor/Helper [160 h]; Skilled Labor/Surveyor [8 h]; Foreman [8 h]; Plumber [80 h]; Excavator [80 h]; 125 mm pipe; depth 0.0m - 1.5m [423.4] |

| ID | Task | Start | Finish | Complete | Total float | Predecessors | Other |
| --- | --- | --- | --- | --- | --- | --- | --- |
| CO-R15.S09-IR-130 | Trench Backfilling and Compaction Works for Main Lines of Irrigation Network-[Road 15]-[SW-9] | 2025-10-25 → 2025-06-01 A (-146d) | 2025-11-04 → 2025-06-12 A (-145d) | 0% → 100% | 42d → none | CO-R15.S09-IR-120, CO-R15.S09-IR-110 → CO-R15.S09-IR-110 | resources Skilled Labor/Surveyor [9.12 h]; Foreman [9.12 h]; Excavator [80 h]; 125 mm pipe; depth 0.0m - 1.5m [100.31] → Skilled Labor/Surveyor [8 h]; Foreman [8 h]; Excavator [80 h]; 125 mm pipe; depth 0.0m - 1.5m [70.57] |
| CO-R15.S09-IR-120 | Installation Works for Main Line Valves of Irrigation Network-[Road 15]-[SW-9] | 2025-10-16 → 2026-07-11 A (+268d) | 2025-10-23 → 2026-07-13 A (+263d) | 0% → 100% | 42d → none |  | resources Labor/Helper [125.62 h]; Skilled Labor/Surveyor [6.73 h]; Foreman [6.73 h]; Plumber [125.62 h]; Gate valves dia (90)mm on pipes with dia (125) mm. [8.03] → Labor/Helper [112 h]; Skilled Labor/Surveyor [6 h]; Foreman [6 h]; Plumber [112 h]; Gate valves dia (90)mm on pipes with dia (125) mm. [6] |
| TE | **Telecom Network** | 2025-12-16 → 2025-08-02 (-136d) | 2026-08-08 → 2025-08-28 (-345d) |  |  |  |  |
| PD | **Ducts Works** | 2025-12-16 → 2025-08-02 (-136d) | 2026-08-08 → 2025-08-19 (-354d) |  |  |  |  |
| CO-R15.S09-TE-100 | Trench Excavation and Bedding Works for Ducts of Telecom Network-[Road 15]-[SW-9] | 2025-12-16 → 2025-08-02 A (-136d) | 2025-12-23 → 2025-08-05 A (-140d) | 0% → 100% | 167d → none | CO-R15.S09-IR-130, CO-R16.S12-TE-100 → CO-R15.S09-IR-130 | resources Skilled Labor/Surveyor [6.84 h]; Foreman [6.84 h]; Excavator [56 h]; 6-way ducts, 50mm dia. HDPE [31.1]; Road crossing ducts (6-way) [3.01] → Skilled Labor/Surveyor [6 h]; Foreman [6 h]; Excavator [56 h]; 6-way ducts, 50mm dia. HDPE [22]; Road crossing ducts (6-way) [2] |
| CO-R15.S09-TE-110 | Pipes Laying Works for Ducts of Telecom Network-[Road 15]-[SW-9] | 2026-07-15 → 2025-08-06 A (-343d) | 2026-07-22 → 2025-08-09 A (-347d) | 0% → 100% | 0d → none | CO-R15.S09-TE-100, CO-R14.S07-TE-110 → CO-R15.S09-TE-100 | resources Labor/Helper [127.67 h]; Skilled Labor/Surveyor [6.84 h]; Foreman [6.84 h]; Plumber [63.83 h]; Excavator [56 h]; JCB [28 h]; Truck [56 h]; 6-way ducts, 50mm dia. HDPE [187.59]; Road crossing ducts (6-way) [16.05] → Labor/Helper [112 h]; Skilled Labor/Surveyor [6 h]; Foreman [6 h]; Plumber [56 h]; Excavator [56 h]; JCB [28 h]; Truck [56 h]; 6-way ducts, 50mm dia. HDPE [132]; Road crossing ducts (6-way) [11] |
| CO-R15.S09-TE-120 | Pouring Plain Concrete Above Ducts of Telecom Network-[Road 15]-[SW-9] | 2026-07-23 → 2025-08-10 A (-347d) | 2026-07-30 → 2025-08-13 A (-351d) | 0% → 100% | 0d → none | CO-R15.S09-TE-110, CO-R14.S07-TE-120 → CO-R15.S09-TE-110 | resources Skilled Labor/Surveyor [6.84 h]; Foreman [6.84 h]; Cons. Carpenter [127.67 h]; Block Mason [63.83 h]; 6-way ducts, 50mm dia. HDPE [31.1]; Road crossing ducts (6-way) [3.01] → Skilled Labor/Surveyor [6 h]; Foreman [6 h]; Cons. Carpenter [112 h]; Block Mason [56 h]; 6-way ducts, 50mm dia. HDPE [22]; Road crossing ducts (6-way) [2] |
| CO-R15.S09-TE-130 | Trench Backfilling and Compaction Works for Ducts of Telecom Network-[Road 15]-[SW-9] | 2026-08-01 → 2025-08-16 A (-350d) | 2026-08-08 → 2025-08-19 A (-354d) | 0% → 100% | 0d → none | CO-R15.S09-TE-120, CO-R14.S07-TE-130 → CO-R15.S09-TE-120 | resources Skilled Labor/Surveyor [6.84 h]; Foreman [6.84 h]; Excavator [56 h]; 6-way ducts, 50mm dia. HDPE [62.19]; Road crossing ducts (6-way) [6.02] → Skilled Labor/Surveyor [6 h]; Foreman [6 h]; Excavator [56 h]; 6-way ducts, 50mm dia. HDPE [44]; Road crossing ducts (6-way) [4] |
| MH | **Manholes Works** | 2026-07-15 → 2025-08-26 (-323d) | 2026-08-08 → 2025-08-28 (-345d) |  |  |  |  |
| CO-R15.S09-TE-140 | Excavation Works for Manholes of Telecom Network-[Road 15]-[SW-9] | 2026-07-15 → 2025-08-26 A (-323d) | 2026-07-22 → 2025-08-26 A (-330d) | 0% → 100% | 0d → none | CO-R14.S07-TE-140, CO-R15.S09-TE-100 → CO-R15.S09-TE-100 | resources Skilled Labor/Surveyor [6.84 h]; Foreman [6.84 h]; Excavator [56 h]; Manhole Type 2 (2000x1000x1000) [0.4] → Skilled Labor/Surveyor [6 h]; Foreman [6 h]; Excavator [56 h]; Manhole Type 2 (2000x1000x1000) [0.4] |
| CO-R15.S09-TE-150 | Installation Works for Manholes of Telecom Network-[Road 15]-[SW-9] | 2026-07-23 → 2025-08-27 A (-330d) | 2026-07-30 → 2025-08-27 A (-337d) | 0% → 100% | 7d → none | CO-R15.S09-TE-140, CO-R14.S07-TE-150 → CO-R15.S09-TE-140 | resources Skilled Labor/Surveyor [6.84 h]; Foreman [6.84 h]; Excavator [56 h]; Manhole Type 1 (2000x1000x1000) [1]; Manhole Type 2 (2000x1000x1000) [1] → Skilled Labor/Surveyor [6 h]; Foreman [6 h]; Excavator [56 h]; Manhole Type 1 (2000x1000x1000) [1]; Manhole Type 2 (2000x1000x1000) [1.2] |
| CO-R15.S09-TE-160 | Backfilling Works for Manholes of Telecom Network-[Road 15]-[SW-9] | 2026-08-01 → 2025-08-28 A (-338d) | 2026-08-08 → 2025-08-28 A (-345d) | 0% → 100% | 7d → none | CO-R15.S09-TE-150, CO-R14.S07-TE-160 → CO-R15.S09-TE-150 | resources Skilled Labor/Surveyor [6.84 h]; Foreman [6.84 h]; Excavator [56 h]; Manhole Type 2 (2000x1000x1000) [0.4] → Skilled Labor/Surveyor [6 h]; Foreman [6 h]; Excavator [56 h]; Manhole Type 2 (2000x1000x1000) [0.4] |
| MV | **Medium Voltage Network** | 2026-08-04 → 2025-08-08 (-361d) | 2026-08-31 → 2025-08-10 (-386d) |  |  |  |  |
| CW | **Cabling Works** | 2026-08-04 → 2025-08-08 (-361d) | 2026-08-31 → 2025-08-10 (-386d) |  |  |  |  |
| CO-R15.S09-MV-ML-250 | Trench Excavation and Bedding Works for Medium Voltage Network-[Road 15]-[SW-9] | 2026-08-04 → 2025-08-08 A (-361d) | 2026-08-24 → 2025-08-08 A (-381d) | 0% → 100% | 0d → none | ENG-SH-MV-A-110, CO-R15.S09-SD-170 SS+3d, CO-R15.S09-SD-170 FF+3d, CO-R15.S09-EW-110, CO-R15.S09-TE-130 SS+3d, CO-R15.S09-TE-130 FF+3d, ENG-MS-MV-A-110, CO-R15.S10-SL-160 → ENG-SH-MV-A-110, CO-R15.S09-SD-170 SS+3d, CO-R15.S09-SD-170 FF+3d, CO-R15.S09-EW-110, ENG-MS-MV-A-110 | resources Skilled Labor/Surveyor [17.1 h]; Foreman [17.1 h]; Excavator [144 h]; Excavation for Trench size 40cm wide and 80cm deep ( Maximum 1 cable 33kv) [277.87]; Excavation for Trench size 60cm wide and 80cm deep ( for Max two cables 33 kv) [16.05]; Excavation for Trench size 90cm wide and 80cm deep ( Maximum 3 cable 33kv) [71.22]; Excavation for Trench size 120cm wide and 80cm deep ( Maximum 4cable 33kv) [24.08]; Excavation for Trench size 150cm wide and 80cm deep ( Maximum 4cable 33kv) [88.28]; Duct bank for (2) 33 kv cables [10.03]; Duct bank for (4) 33 kv cables [64.2]; Duct bank for (6) 33 kv cables [28.09] → Skilled Labor/Surveyor [15 h]; Foreman [15 h]; Excavator [144 h]; Excavation for Trench size 40cm wide and 80cm deep ( Maximum 1 cable 33kv) [195.83]; Excavation for Trench size 60cm wide and 80cm deep ( for Max two cables 33 kv) [11.14]; Excavation for Trench size 90cm wide and 80cm deep ( Maximum 3 cable 33kv) [49.63]; Excavation for Trench size 120cm wide and 80cm deep ( Maximum 4cable 33kv) [16.88]; Excavation for Trench size 150cm wide and 80cm deep ( Maximum 4cable 33kv) [62.46]; Duct bank for (2) 33 kv cables [6.75]; Duct bank for (4) 33 kv cables [44.57]; Duct bank for (6) 33 kv cables [20.26] |
| CO-R15.S09-MV-ML-260 | Cable Laying Works for Medium Voltage Network-[Road 15]-[SW-9] | 2026-08-08 → 2025-08-09 A (-364d) | 2026-08-27 → 2025-08-09 A (-383d) | 0% → 100% | 0d → none |  | resources Labor/Helper [164.14 h]; Electrician [164.14 h]; Low Current Technician [164.14 h]; 33kv 3Cx400 mmï¿½ Al XLPE / LLDPE /PVC Cable [1308.09]; 33kv 3Cx400 mmï¿½ Al XLPE /LLDPE/PVC [4.01] → Labor/Helper [144 h]; Electrician [144 h]; Low Current Technician [144 h]; 33kv 3Cx400 mm² Al XLPE / LLDPE /PVC Cable [921.76]; 33kv 3Cx400 mm² Al XLPE /LLDPE/PVC [2.8] |
| CO-R15.S09-MV-ML-270 | Trench Backfilling and Compaction Works for Medium Voltage Network-[Road 15]-[SW-9] | 2026-08-11 → 2025-08-09 A (-367d) | 2026-08-31 → 2025-08-10 A (-386d) | 0% → 100% | 0d → none |  | resources Skilled Labor/Surveyor [17.1 h]; Foreman [17.1 h]; Excavator [144 h]; Water Tank [36 h]; 33kv 3Cx400 mmï¿½ Al XLPE / LLDPE /PVC Cable [560.75]; 33kv 3Cx400 mmï¿½ Al XLPE /LLDPE/PVC [1] → Skilled Labor/Surveyor [15 h]; Foreman [15 h]; Excavator [144 h]; Water Tank [36 h]; 33kv 3Cx400 mm² Al XLPE / LLDPE /PVC Cable [395.04]; 33kv 3Cx400 mm² Al XLPE /LLDPE/PVC [1.2] |
| RD | **Road Works** | 2026-08-15 → 2025-07-22 (-389d) | 2026-11-08 → 2027-08-28 (+293d) |  |  |  |  |
| RD | **Pre-Bituminous Construction** | 2026-08-15 → 2025-07-22 (-389d) | 2026-10-17 → 2025-10-07 (-375d) |  |  |  |  |
| CO-R15.S09-RD-P-100 | Capping and Subgrade Layer for Road Works-[Road 15]-[SW-9] | 2026-08-15 → 2025-07-22 A (-389d) | 2026-09-03 → 2025-07-27 A (-403d) | 0% → 100% | 13d → none | ENG-SH-RD-A-100, CO-R15.S09-SD-130, CO-R15.S09-SW-130, ENG-MS-RD-A-10, CO-R15.S09-TE-130, CO-R15.S09-TE-160, CO-R15.S09-MV-ML-270 SS+3d, CO-R15.S09-MV-ML-270 FF+3d → ENG-SH-RD-A-100, CO-R15.S09-SD-130, CO-R15.S09-SW-130, ENG-MS-RD-A-10 | resources Labor/Helper [328.29 h]; Skilled Labor/Surveyor [164.14 h]; Loader [144 h]; Grader [144 h]; Road Roller [144 h]; Water Tank [144 h]; 300mm capping layer underneath subgrade , CBR?15% [2364.39]; 300mm thick Subgrade, including subgrade preparation, CBR?25% [2364.39] → Labor/Helper [288 h]; Skilled Labor/Surveyor [144 h]; Loader [144 h]; Grader [144 h]; Road Roller [144 h]; Water Tank [144 h]; 300mm capping layer underneath subgrade , CBR?15% [1665.58]; 300mm thick Subgrade, including subgrade preparation, CBR?25% [1665.58] |
| CO-R15.S09-RD-P-110 | Aggregate Base Course Layer for Road Works-[Road 15]-[SW-9] | 2026-09-27 → 2025-10-01 A (-361d) | 2026-10-17 → 2025-10-07 A (-375d) | 0% → 100% | 3d → none |  | resources Labor/Helper [328.29 h]; Skilled Labor/Surveyor [164.14 h]; Foreman [164.14 h]; Loader [144 h]; Grader [144 h]; Road Roller [144 h]; Aggregate base course 200mm thick after compaction in two layers(Grading 1); CBR?80%; including watering, compaction and testing [1576.93] → Labor/Helper [288 h]; Skilled Labor/Surveyor [144 h]; Foreman [144 h]; Loader [144 h]; Grader [144 h]; Road Roller [144 h]; Aggregate base course 200mm thick after compaction in two layers(Grading 1); CBR?80%; including watering, compaction and testing [1110.5] |
| LS | **Pavement Works** | 2026-09-30 → 2026-08-25 (-36d) | 2026-11-08 → 2027-08-28 (+293d) |  |  |  |  |
| CO-R15.S09-RD-P-120 | Fixing of Curbstone for Sidewalks Pavement-[Road 15]-[SW-9] | 2026-09-30 → 2026-08-25 A (-36d) | 2026-10-20 → 2026-08-31 A (-50d) | 0% → 100% | 3d → none |  | resources Labor/Helper [328.29 h]; Block Mason [984.87 h]; Precast Concrete Kerb, Type K1 [872.73]; Precast Concrete Kerb, Type L1 [1730.41] → Labor/Helper [288 h]; Block Mason [864 h]; Precast Concrete Kerb, Type K1 [614.51]; Precast Concrete Kerb, Type L1 [1219.26] |
| CO-R15.S09-RD-P-130 | Fixing of Interlock Tiles for Sidewalks Pavement-[Road 15]-[SW-9] | 2026-10-26 → 2026-08-25 A (-62d) | 2026-11-08 → 2027-08-28 (+293d) | 0% → 90% | 0d → -229d |  | resources Labor/Helper [318.71 h]; Block Mason [724.49 h]; Interlocking block pavers for sidewalk/footpath 60mm thick on and including 30mm Sand Bedding, 200mm Aggregate subbase, all in accordance with authority standards and complete as per specifications [1556.86]; Extraover for Pedestrian ramps [4.01] → Labor/Helper [288 h]; Block Mason [864 h]; Interlocking block pavers for sidewalk/footpath 60mm thick on and including 30mm Sand Bedding, 200mm Aggregate subbase, all in accordance with authority standards and complete as per specifications [1097.33]; Extraover for Pedestrian ramps [3] |
| SW_10 | **SW_10** | 2025-05-07 → 2025-04-24 (-13d) | 2026-11-08 → 2027-08-25 (+290d) |  |  |  |  |
| EW | **Earthworks** | 2025-05-07 → 2025-04-24 (-13d) | 2025-06-01 → 2025-04-30 (-32d) |  |  |  |  |
| EW | **Earthworks** | 2025-05-07 → 2025-04-24 (-13d) | 2025-06-01 → 2025-04-30 (-32d) |  |  |  |  |
| CO-R15.S10-EW-100 | Roadway Excavation Works Upto Design Level for Earthworks-[Road 15]-[SW-10] | 2025-05-07 → 2025-04-24 A (-13d) | 2025-05-18 → 2025-04-26 A (-22d) | 0% → 100% | 11d → none |  | resources Labor/Helper [455.96 h]; Skilled Labor/Surveyor [56.99 h]; Foreman [56.99 h]; Dump Truck [800 h]; Water Tank [400 h]; Dozer [400 h]; Roadway Excavation for cuttings; on any type of material for all depths including trimming and Preparation of excavated surfaces and disposal. [11129.8] → Labor/Helper [400 h]; Skilled Labor/Surveyor [50 h]; Foreman [50 h]; Dump Truck [800 h]; Water Tank [400 h]; Dozer [400 h]; Roadway Excavation for cuttings; on any type of material for all depths including trimming and Preparation of excavated surfaces and disposal. [7841.85] |
| CO-R15.S10-EW-110 | Embankments Works Upto Design Level for Earthworks-[Road 15]-[SW-10] | 2025-05-19 → 2025-04-27 A (-22d) | 2025-06-01 → 2025-04-30 A (-32d) | 0% → 100% | 23d → none |  | resources Labor/Helper [437.72 h]; Skilled Labor/Surveyor [54.71 h]; Foreman [54.71 h]; Dump Truck [768 h]; Water Tank [384 h]; Dozer [384 h]; Embankments to the ROW, with suitable material other than top soil or rock according to specifications [18735.5] → Labor/Helper [384 h]; Skilled Labor/Surveyor [48 h]; Foreman [48 h]; Dump Truck [768 h]; Water Tank [384 h]; Dozer [384 h]; Embankments to the ROW, with suitable material other than top soil or rock according to specifications [13200.8] |
| SW | **Sewage Network** | 2025-06-02 → 2025-05-01 (-32d) | 2025-08-11 → 2026-10-06 (+421d) |  |  |  |  |
| ML | **Main Line Sections** | 2025-06-02 → 2025-05-01 (-32d) | 2025-08-11 → 2025-07-16 (-26d) |  |  |  |  |
| CO-R15.S10-SW-100 | Trench Excavation and Bedding Works for Main Lines of Sewage Network-[Road 15]-[SW-10] | 2025-06-02 → 2025-05-01 A (-32d) | 2025-06-19 → 2025-06-12 A (-7d) | 0% → 100% | 23d → none |  | resources Labor/Helper [109.43 h]; Foreman [109.43 h]; Excavator [96 h]; Nominal bore : 160mm; Depth : 0.0m - 1.5m [13.04]; Nominal bore : 200mm; Depth : 0.0m - 1.5m [4.01]; Nominal bore : 200mm; Depth : 1.5m - 2.5m [10.03]; Nominal bore : 200mm; Depth : 2.5m - 3.5m [23.07]; Nominal bore : 200mm; Depth : 3.5m - 4.5m [21.07]; Nominal bore : 200mm; Depth : 4.5m -5.5m [16.05]; Nominal bore : 200mm; Depth : 5.5m - 6.5m [11.03] → Labor/Helper [96 h]; Foreman [96 h]; Excavator [96 h]; Nominal bore : 160mm; Depth : 0.0m - 1.5m [9.4]; Nominal bore : 200mm; Depth : 0.0m - 1.5m [2.7]; Nominal bore : 200mm; Depth : 1.5m - 2.5m [7.06]; Nominal bore : 200mm; Depth : 2.5m - 3.5m [16.1]; Nominal bore : 200mm; Depth : 3.5m - 4.5m [15.12]; Nominal bore : 200mm; Depth : 4.5m -5.5m [11.13]; Nominal bore : 200mm; Depth : 5.5m - 6.5m [8.08] |
| CO-R15.S10-SW-120 | Pipes Laying Works for Main Lines of Sewage Network-[Road 15]-[SW-10] | 2025-06-21 → 2025-05-13 A (-39d) | 2025-07-03 → 2025-05-30 A (-34d) | 0% → 100% | 23d → none |  | resources Labor/Helper [437.72 h]; Skilled Labor/Surveyor [22.8 h]; Foreman [22.8 h]; Plumber [218.86 h]; Excavator [192 h]; Nominal bore : 160mm; Depth : 0.0m - 1.5m [40.13]; Nominal bore : 200mm; Depth : 0.0m - 1.5m [11.03]; Nominal bore : 200mm; Depth : 1.5m - 2.5m [30.09]; Nominal bore : 200mm; Depth : 2.5m - 3.5m [68.21]; Nominal bore : 200mm; Depth : 3.5m - 4.5m [64.2]; Nominal bore : 200mm; Depth : 4.5m -5.5m [47.15]; Nominal bore : 200mm; Depth : 5.5m - 6.5m [34.11] → Labor/Helper [384 h]; Skilled Labor/Surveyor [20 h]; Foreman [20 h]; Plumber [192 h]; Excavator [192 h]; Nominal bore : 160mm; Depth : 0.0m - 1.5m [28.2]; Nominal bore : 200mm; Depth : 0.0m - 1.5m [8.11]; Nominal bore : 200mm; Depth : 1.5m - 2.5m [21.19]; Nominal bore : 200mm; Depth : 2.5m - 3.5m [48.31]; Nominal bore : 200mm; Depth : 3.5m - 4.5m [45.35]; Nominal bore : 200mm; Depth : 4.5m -5.5m [33.38]; Nominal bore : 200mm; Depth : 5.5m - 6.5m [24.23] |
| CO-R15.S10-SW-130 | Trench Backfilling and Compaction Works for Main Lines of Sewage Network-[Road 15]-[SW-10] | 2025-07-31 → 2025-07-15 A (-16d) | 2025-08-11 → 2025-07-16 A (-26d) | 0% → 100% | 0d → none | CO-R15.S10-SW-120, CO-R15.S10-SW-210 FF, CO-R15.S09-SW-130 → CO-R15.S10-SW-120, CO-R15.S09-SW-130 | resources Skilled Labor/Surveyor [11.4 h]; Foreman [11.4 h]; Excavator [96 h]; Nominal bore : 160mm; Depth : 0.0m - 1.5m [7.02]; Nominal bore : 200mm; Depth : 0.0m - 1.5m [1]; Nominal bore : 200mm; Depth : 1.5m - 2.5m [6.02]; Nominal bore : 200mm; Depth : 2.5m - 3.5m [11.03]; Nominal bore : 200mm; Depth : 3.5m - 4.5m [11.03]; Nominal bore : 200mm; Depth : 4.5m -5.5m [8.03]; Nominal bore : 200mm; Depth : 5.5m - 6.5m [6.02] → Skilled Labor/Surveyor [10 h]; Foreman [10 h]; Excavator [96 h]; Nominal bore : 160mm; Depth : 0.0m - 1.5m [4.7]; Nominal bore : 200mm; Depth : 0.0m - 1.5m [1.35]; Nominal bore : 200mm; Depth : 1.5m - 2.5m [3.53]; Nominal bore : 200mm; Depth : 2.5m - 3.5m [8.05]; Nominal bore : 200mm; Depth : 3.5m - 4.5m [7.56]; Nominal bore : 200mm; Depth : 4.5m -5.5m [5.56]; Nominal bore : 200mm; Depth : 5.5m - 6.5m [4.04] |
| 1 | **Manholes** | 2025-06-21 → 2025-06-01 (-20d) | 2025-07-06 → 2026-10-06 (+457d) |  |  |  |  |
| CO-R15.S10-SW-160 | Excavation Works for Main Line Manholes of Sewage Network-[Road 15]-[SW-10] | 2025-06-21 → 2025-06-01 A (-20d) | 2025-06-21 → 2025-06-01 A (-20d) | 0% → 100% | 31.75d → none |  | resources Labor/Helper [9.12 h]; Skilled Labor/Surveyor [4.56 h]; Excavator [8 h]; Depth: not exceeding 1.5m [0.3]; Depth: 1.5 - 2.5m [0.3]; Depth: 2.5 - 3.5m [0.3]; Depth: 3.5 - 4.5m [0.15] → Labor/Helper [8 h]; Skilled Labor/Surveyor [4 h]; Excavator [8 h]; Depth: not exceeding 1.5m [0.3]; Depth: 1.5 - 2.5m [0.3]; Depth: 2.5 - 3.5m [0.3]; Depth: 3.5 - 4.5m [0.15] |
| CO-R15.S10-SW-170 | Installation RC Footing Works for Main Line Manholes of Sewage Network-[Road 15]-[SW-10] | 2025-06-22 → 2025-06-25 A (+3d) | 2025-06-24 → 2025-06-30 A (+6d) | 0% → 100% | 31.75d → none |  | resources Cons. Carpenter [41.04 h]; Steel Fixer [41.04 h]; Depth: not exceeding 1.5m [0.2]; Depth: 1.5 - 2.5m [0.2]; Depth: 2.5 - 3.5m [0.2]; Depth: 3.5 - 4.5m [0.1] → Cons. Carpenter [36 h]; Steel Fixer [36 h]; Depth: not exceeding 1.5m [0.2]; Depth: 1.5 - 2.5m [0.2]; Depth: 2.5 - 3.5m [0.2]; Depth: 3.5 - 4.5m [0.1] |
| CO-R15.S10-SW-180 | Install Grp Liner Wall Works for Main Line Manholes of Sewage Network-[Road 15]-[SW-10] | 2025-06-24 → 2025-07-01 A (+7d) | 2025-06-29 → 2025-07-08 A (+9d) | 0% → 100% | 31.75d → none |  | resources Labor/Helper [36.48 h]; Plumber [36.48 h]; Depth: not exceeding 1.5m [1]; Depth: 1.5 - 2.5m [1]; Depth: 2.5 - 3.5m [1]; Depth: 3.5 - 4.5m [0.4] → Labor/Helper [32 h]; Plumber [32 h]; Depth: not exceeding 1.5m [0.8]; Depth: 1.5 - 2.5m [0.8]; Depth: 2.5 - 3.5m [0.8]; Depth: 3.5 - 4.5m [0.4] |
| CO-R15.S10-SW-200 | Backfilling Works for Main Line Manholes of Sewage Network-[Road 15]-[SW-10] | 2025-06-30 → 2025-07-09 A (+9d) | 2025-07-05 → 2025-07-12 A (+7d) | 0% → 100% | 31.75d → none | CO-R15.S10-SW-190 → CO-R15.S10-SW-180 | resources Labor/Helper [36.48 h]; Skilled Labor/Surveyor [18.24 h]; Excavator [32 h]; Depth: not exceeding 1.5m [0.3]; Depth: 1.5 - 2.5m [0.3]; Depth: 2.5 - 3.5m [0.3]; Depth: 3.5 - 4.5m [0.15] → Labor/Helper [32 h]; Skilled Labor/Surveyor [16 h]; Excavator [32 h]; Depth: not exceeding 1.5m [0.3]; Depth: 1.5 - 2.5m [0.3]; Depth: 2.5 - 3.5m [0.3]; Depth: 3.5 - 4.5m [0.15] |
| CO-R15.S10-SW-190 | Pouring Grp Liner Wall Works for Main Line Manholes of Sewage Network-[Road 15]-[SW-10] | 2025-06-29 → 2026-07-01 A (+367d) | 2025-06-30 → 2026-07-07 A (+372d) | 0% → 100% | 31.75d → none |  | resources Cons. Carpenter [19.28 h]; Steel Fixer [18.24 h]; Depth: not exceeding 1.5m [0.1]; Depth: 1.5 - 2.5m [0.1]; Depth: 2.5 - 3.5m [0.1]; Depth: 3.5 - 4.5m [0.05] → Cons. Carpenter [16 h]; Steel Fixer [16 h]; Depth: not exceeding 1.5m [0.1]; Depth: 1.5 - 2.5m [0.1]; Depth: 2.5 - 3.5m [0.1]; Depth: 3.5 - 4.5m [0.05] |
| CO-R15.S10-SW-210 | Testing Works for Main Line Manholes of Sewage Network-[Road 15]-[SW-10] | 2025-07-05 → 2026-10-06 (+458d) | 2025-07-06 → 2026-10-06 (+457d) |  | 31.75d → -23d | CO-R15.S10-SW-200 → CO-R15.S10-SW-200, CO-R15.S10-SW-190 | resources Labor/Helper [9.12 h]; Plumber [9.12 h]; Depth: not exceeding 1.5m [0.1]; Depth: 1.5 - 2.5m [0.1]; Depth: 2.5 - 3.5m [0.1]; Depth: 3.5 - 4.5m [0.05] → Labor/Helper [8 h]; Plumber [8 h]; Depth: not exceeding 1.5m [0.1]; Depth: 1.5 - 2.5m [0.1]; Depth: 2.5 - 3.5m [0.1]; Depth: 3.5 - 4.5m [0.05] |
| SD | **Storm Drainage Network** | 2025-08-04 → 2025-07-15 (-20d) | 2026-02-24 → 2026-07-13 (+139d) |  |  |  |  |
| ML | **Main Line Sections** | 2025-08-04 → 2025-07-15 (-20d) | 2026-02-24 → 2025-07-19 (-220d) |  |  |  |  |
| CO-R15.S10-SD-100 | Trench Excavation and Bedding Works for Main Lines of Storm Drainage Network-[Road 15]-[SW-10] | 2025-08-04 → 2025-07-15 A (-20d) | 2025-08-14 → 2025-07-16 A (-29d) | 0% → 100% | 0d → none |  | resources Skilled Labor/Surveyor [13.68 h]; Foreman [13.68 h]; Excavator [112 h]; Pipe with diameter 400mm ; depth: 0.0m - 1.5m [57.18]; Pipe with diameter 400mm ; depth: 1.51m - 2.5m [123.39]; Pipe with diameter 500mm ; depth: 1.51m - 2.5m [113.35]; Pipe with diameter 600mm ; depth: 1.51m - 2.5m [14.04]; Pipe with diameter 700mm ; depth: 1.51m - 2.5m [54.17]; Pipe with diameter 800mm ; depth: 1.51m - 2.5m [42.13]; Pipe with diameter 900mm ; depth: 1.51m - 2.5m [45.14] → Skilled Labor/Surveyor [12 h]; Foreman [12 h]; Excavator [112 h]; Pipe with diameter 400mm ; depth: 0.0m - 1.5m [39.51]; Pipe with diameter 400mm ; depth: 1.51m - 2.5m [87.46]; Pipe with diameter 500mm ; depth: 1.51m - 2.5m [80.38]; Pipe with diameter 600mm ; depth: 1.51m - 2.5m [9.65]; Pipe with diameter 700mm ; depth: 1.51m - 2.5m [37.71]; Pipe with diameter 800mm ; depth: 1.51m - 2.5m [30.09]; Pipe with diameter 900mm ; depth: 1.51m - 2.5m [31.53] |
| CO-R15.S10-SD-120 | Pipes Laying Works for Main Lines of Storm Drainage Network-[Road 15]-[SW-10] | 2025-08-16 → 2025-07-17 A (-30d) | 2025-09-01 → 2025-07-17 A (-46d) | 0% → 100% | 65d → none |  | resources Labor/Helper [273.57 h]; Skilled Labor/Surveyor [13.68 h]; Foreman [13.68 h]; Plumber [136.79 h]; Excavator [120 h]; Pipe with diameter 400mm ; depth: 0.0m - 1.5m [168.53]; Pipe with diameter 400mm ; depth: 1.51m - 2.5m [372.16]; Pipe with diameter 500mm ; depth: 1.51m - 2.5m [342.07]; Pipe with diameter 600mm ; depth: 1.51m - 2.5m [41.13]; Pipe with diameter 700mm ; depth: 1.51m - 2.5m [160.5]; Pipe with diameter 800mm ; depth: 1.51m - 2.5m [127.4]; Pipe with diameter 900mm ; depth: 1.51m - 2.5m [134.42] → Labor/Helper [240 h]; Skilled Labor/Surveyor [12 h]; Foreman [12 h]; Plumber [120 h]; Excavator [120 h]; Pipe with diameter 400mm ; depth: 0.0m - 1.5m [118.54]; Pipe with diameter 400mm ; depth: 1.51m - 2.5m [262.37]; Pipe with diameter 500mm ; depth: 1.51m - 2.5m [241.15]; Pipe with diameter 600mm ; depth: 1.51m - 2.5m [28.95]; Pipe with diameter 700mm ; depth: 1.51m - 2.5m [113.14]; Pipe with diameter 800mm ; depth: 1.51m - 2.5m [90.28]; Pipe with diameter 900mm ; depth: 1.51m - 2.5m [94.6] |
| CO-R15.S10-SD-130 | Trench Backfilling and Compaction Works for Main Lines of Storm Drainage Network-[Road 15]-[SW-10] | 2026-02-08 → 2025-07-18 A (-205d) | 2026-02-24 → 2025-07-19 A (-220d) | 0% → 100% | 4d → none | CO-R15.S10-SD-120 SS+3d, CO-R15.S10-SD-120 FF+3d, CO-R14.S08-SD-130, CO-R15.S10-SD-120, CO-R15.S10-SD-220 FF → CO-R15.S10-SD-120 | resources Skilled Labor/Surveyor [13.68 h]; Foreman [13.68 h]; Excavator [120 h]; Pipe with diameter 400mm ; depth: 0.0m - 1.5m [28.09]; Pipe with diameter 400mm ; depth: 1.51m - 2.5m [99.31]; Pipe with diameter 600mm ; depth: 1.51m - 2.5m [7.02]; Pipe with diameter 700mm ; depth: 1.51m - 2.5m [27.08]; Pipe with diameter 800mm ; depth: 1.51m - 2.5m [21.07]; Pipe with diameter 900mm ; depth: 1.51m - 2.5m [23.07] → Skilled Labor/Surveyor [12 h]; Foreman [12 h]; Excavator [120 h]; Pipe with diameter 400mm ; depth: 0.0m - 1.5m [19.76]; Pipe with diameter 400mm ; depth: 1.51m - 2.5m [69.72]; Pipe with diameter 600mm ; depth: 1.51m - 2.5m [4.83]; Pipe with diameter 700mm ; depth: 1.51m - 2.5m [18.86]; Pipe with diameter 800mm ; depth: 1.51m - 2.5m [15.05]; Pipe with diameter 900mm ; depth: 1.51m - 2.5m [15.77] |
| MH | **Manholes** | 2025-08-16 → 2025-07-18 (-29d) | 2025-08-31 → 2026-07-13 (+316d) |  |  |  |  |
| CO-R15.S10-SD-180 | Trench Excavation and Bedding Works for Manholes of Storm Drainage Network-[Road 15]-[SW-10] | 2025-08-16 → 2025-07-18 A (-29d) | 2025-08-16 → 2025-07-18 A (-29d) | 0% → 100% | 82d → none |  | resources Labor/Helper [45.6 h]; Skilled Labor/Surveyor [22.8 h]; Excavator [40 h]; MH ; depth: 0.0m - 1.5m [0.15]; MH ; depth: 1.51m - 2.5m [0.3]; MH ; depth: 1.51m - 2.5m [0.45]; MH ; depth: 2.51 - 3.5m [0.15]; MH ; depth: 1.51m - 2.5m [0.15]; MH ; depth: 2.51 - 3.5m [0.3] → Labor/Helper [40 h]; Skilled Labor/Surveyor [20 h]; Excavator [40 h]; MH ; depth: 0.0m - 1.5m [0.15]; MH ; depth: 1.51m - 2.5m [0.3]; MH ; depth: 1.51m - 2.5m [0.45]; MH ; depth: 2.51 - 3.5m [0.15]; MH ; depth: 1.51m - 2.5m [0.15]; MH ; depth: 2.51 - 3.5m [0.3] |
| CO-R15.S10-SD-190 | Install RC Footing Works for Manholes of Storm Drainage Network-[Road 15]-[SW-10] | 2025-08-17 → 2025-07-18 A (-30d) | 2025-08-17 → 2025-07-18 A (-30d) | 0% → 100% | 82d → none |  | resources Cons. Carpenter [91.19 h]; Steel Fixer [91.19 h]; MH ; depth: 0.0m - 1.5m [0.05]; MH ; depth: 1.51m - 2.5m [0.1]; MH ; depth: 1.51m - 2.5m [0.15]; MH ; depth: 2.51 - 3.5m [0.05]; MH ; depth: 1.51m - 2.5m [0.05]; MH ; depth: 2.51 - 3.5m [0.1] → Cons. Carpenter [80 h]; Steel Fixer [80 h]; MH ; depth: 0.0m - 1.5m [0.05]; MH ; depth: 1.51m - 2.5m [0.1]; MH ; depth: 1.51m - 2.5m [0.15]; MH ; depth: 2.51 - 3.5m [0.05]; MH ; depth: 1.51m - 2.5m [0.05]; MH ; depth: 2.51 - 3.5m [0.1] |
| CO-R15.S10-SD-200 | Install RC Wall Rings & Slab Works for Manholes of Storm Drainage Network-[Road 15]-[SW-10] | 2025-08-18 → 2025-07-19 A (-30d) | 2025-08-21 → 2025-07-20 A (-32d) | 0% → 100% | 82d → none |  | resources Cons. Carpenter [145.91 h]; Steel Fixer [145.91 h]; MH ; depth: 0.0m - 1.5m [0.45]; MH ; depth: 1.51m - 2.5m [1]; MH ; depth: 2.51 - 3.5m [0.45]; MH ; depth: 1.51m - 2.5m [0.45]; MH ; depth: 2.51 - 3.5m [1] → Cons. Carpenter [128 h]; Steel Fixer [128 h]; MH ; depth: 0.0m - 1.5m [0.45]; MH ; depth: 1.51m - 2.5m [0.9]; MH ; depth: 1.51m - 2.5m [1.35]; MH ; depth: 2.51 - 3.5m [0.45]; MH ; depth: 1.51m - 2.5m [0.45]; MH ; depth: 2.51 - 3.5m [0.9] |
| CO-R15.S10-SD-220 | Backfilling Works for Manholes of Storm Drainage Network-[Road 15]-[SW-10] | 2025-08-24 → 2025-07-21 A (-34d) | 2025-08-31 → 2025-07-21 A (-41d) | 0% → 100% | 82d → none | CO-R15.S10-SD-210 → CO-R15.S10-SD-200 | resources Labor/Helper [127.67 h]; Skilled Labor/Surveyor [63.83 h]; Excavator [112 h]; MH ; depth: 0.0m - 1.5m [0.2]; MH ; depth: 1.51m - 2.5m [0.4]; MH ; depth: 1.51m - 2.5m [1]; MH ; depth: 2.51 - 3.5m [0.2]; MH ; depth: 1.51m - 2.5m [0.2]; MH ; depth: 2.51 - 3.5m [0.4] → Labor/Helper [112 h]; Skilled Labor/Surveyor [56 h]; Excavator [112 h]; MH ; depth: 0.0m - 1.5m [0.2]; MH ; depth: 1.51m - 2.5m [0.4]; MH ; depth: 1.51m - 2.5m [0.6]; MH ; depth: 2.51 - 3.5m [0.2]; MH ; depth: 1.51m - 2.5m [0.2]; MH ; depth: 2.51 - 3.5m [0.4] |
| CO-R15.S10-SD-210 | Testing Works for Manholes of Storm Drainage Network-[Road 15]-[SW-10] | 2025-08-23 → 2026-06-04 A (+285d) | 2025-08-23 → 2026-07-13 A (+324d) | 0% → 100% | 82d → none |  | resources Labor/Helper [93.17 h]; Plumber [45.6 h]; MH ; depth: 0.0m - 1.5m [0.1]; MH ; depth: 1.51m - 2.5m [0.2]; MH ; depth: 1.51m - 2.5m [0.3]; MH ; depth: 2.51 - 3.5m [0.1]; MH ; depth: 1.51m - 2.5m [0.1]; MH ; depth: 2.51 - 3.5m [0.2] → Labor/Helper [40 h]; Plumber [40 h]; MH ; depth: 0.0m - 1.5m [0.1]; MH ; depth: 1.51m - 2.5m [0.2]; MH ; depth: 1.51m - 2.5m [0.3]; MH ; depth: 2.51 - 3.5m [0.1]; MH ; depth: 1.51m - 2.5m [0.1]; MH ; depth: 2.51 - 3.5m [0.2] |
| CB | **Catch Basin Sections** | 2025-09-01 → 2025-08-02 (-30d) | 2025-10-02 → 2026-07-13 (+284d) |  |  |  |  |
| CO-R15.S10-SD-140 | Trench Excavation and Bedding Works for Catch Basins of Storm Drainage Network-[Road 15]-[SW-10] | 2025-09-01 → 2025-08-02 A (-30d) | 2025-09-08 → 2025-08-04 A (-35d) | 0% → 100% | 82d → none |  | resources Skilled Labor/Surveyor [6.84 h]; Foreman [6.84 h]; Excavator [56 h]; Pipe with diameter 300mm ; depth: 0 - 1.5m [59.18]; Pipe with diameter 400mm ; depth: 0 - 1.5m [4.01] → Skilled Labor/Surveyor [6 h]; Foreman [6 h]; Excavator [56 h]; Pipe with diameter 300mm ; depth: 0 - 1.5m [41.53]; Pipe with diameter 400mm ; depth: 0 - 1.5m [2.53] |
| CO-R15.S10-SD-150 | Installation and Pipes Laying Connection Works for Catch Basins of Storm Drainage Network-[Road 15]-[SW-10] | 2025-09-09 → 2025-08-05 A (-35d) | 2025-09-16 → 2025-08-09 A (-38d) | 0% → 100% | 82d → none |  | resources Labor/Helper [182.38 h]; Skilled Labor/Surveyor [9.12 h]; Foreman [9.12 h]; Excavator [80 h]; Pipe with diameter 300mm ; depth: 0 - 1.5m [177.55]; Pipe with diameter 400mm ; depth: 0 - 1.5m [11.03] → Labor/Helper [160 h]; Skilled Labor/Surveyor [8 h]; Foreman [8 h]; Excavator [80 h]; Pipe with diameter 300mm ; depth: 0 - 1.5m [124.59]; Pipe with diameter 400mm ; depth: 0 - 1.5m [7.6] |
| CO-R15.S10-SD-170 | Trench Backfilling and Compaction Works for Catch Basins of Storm Drainage Network-[Road 15]-[SW-10] | 2025-09-21 → 2025-08-10 A (-42d) | 2025-10-02 → 2025-08-13 A (-50d) | 0% → 100% | 309d → none | CO-R15.S10-SD-160 SS+3d, CO-R15.S10-SD-160 FF+3d → CO-R15.S10-SD-150 | resources Skilled Labor/Surveyor [9.12 h]; Foreman [9.12 h]; Excavator [80 h]; Pipe with diameter 300mm ; depth: 0 - 1.5m [78.24]; Pipe with diameter 400mm ; depth: 0 - 1.5m [4.01] → Skilled Labor/Surveyor [8 h]; Foreman [8 h]; Excavator [80 h]; Pipe with diameter 300mm ; depth: 0 - 1.5m [55.37]; Pipe with diameter 400mm ; depth: 0 - 1.5m [3.38] |
| CO-R15.S10-SD-160 | Testing Works for Catch Basins of Storm Drainage Network-[Road 15]-[SW-10] | 2025-09-17 → 2026-06-04 A (+260d) | 2025-09-21 → 2026-07-13 A (+295d) | 0% → 100% | 309d → none |  | resources Labor/Helper [93.17 h]; Skilled Labor/Surveyor [18.23 h]; Foreman [19.63 h]; Plumber [36.48 h]; Excavator [32 h]; Pipe with diameter 300mm ; depth: 0 - 1.5m [40.13]; Pipe with diameter 400mm ; depth: 0 - 1.5m [3.01] → Labor/Helper [64 h]; Skilled Labor/Surveyor [4 h]; Foreman [4 h]; Plumber [32 h]; Excavator [32 h]; Pipe with diameter 300mm ; depth: 0 - 1.5m [27.69]; Pipe with diameter 400mm ; depth: 0 - 1.5m [1.69] |
| SL | **Street Lighting Network** | 2025-06-02 → 2025-08-05 (+64d) | 2026-02-02 → 2026-12-27 (+328d) |  |  |  |  |
| LP | **Lighting Poles Works** | 2025-11-05 → 2025-08-05 (-92d) | 2026-02-02 → 2026-12-27 (+328d) |  |  |  |  |
| CO-R15.S10-SL-100 | Foundation Excavation Works for Lighting Poles of Street Lighting Network-[Road 15]-[SW-10] | 2025-11-05 → 2025-08-05 A (-92d) | 2025-11-18 → 2025-08-06 A (-104d) | 0% → 100% | 42d → none |  | resources Lighting poles with one arm, including the power distribution box, screws, cables, 12 meters in height. [1] → Lighting poles with one arm, including the power distribution box, screws, cables, 12 meters in height. [1.25] |
| CO-R15.S10-SL-110 | Installation Works for Lighting Poles Foundation of Street Lighting Network-[Road 15]-[SW-10] | 2025-11-19 → 2025-08-07 A (-104d) | 2025-12-02 → 2025-08-07 A (-117d) | 0% → 100% | 42d → none |  | resources Reinforced concrete foundation, for 12m high lighting columns With Drawpits [35.11] → Reinforced concrete foundation, for 12m high lighting columns With Drawpits [25] |
| CO-R15.S10-SL-120 | Installation Works for Lighting Poles of Street Lighting Network-[Road 15]-[SW-10] | 2026-01-07 → 2025-09-14 A (-115d) | 2026-01-27 → 2025-09-14 A (-135d) | 0% → 100% | 42d → none |  | resources Lighting poles with one arm, including the power distribution box, screws, cables, 12 meters in height. [20.06] → Lighting poles with one arm, including the power distribution box, screws, cables, 12 meters in height. [13.75] |
| CO-R15.S10-SL-210 | Backfilling Works for Lighting Poles of Street Lighting Network-[Road 15]-[SW-10] | 2026-01-13 → 2026-07-07 A (+175d) | 2026-01-27 → 2026-07-13 A (+167d) | 0% → 100% | 42d → none |  | resources Lighting poles with one arm, including the power distribution box, screws, cables, 12 meters in height. [7.02] → Lighting poles with one arm, including the power distribution box, screws, cables, 12 meters in height. [5] |
| CO-R15.S10-SL-200 | Testing Works for Lighting Poles of Street Lighting Network-[Road 15]-[SW-10] | 2026-01-27 → 2026-10-06 (+252d) | 2026-02-02 → 2026-10-11 (+251d) |  | 90.5d → -117d |  | resources Lighting poles with one arm, including the power distribution box, screws, cables, 12 meters in height. [7.02] → Lighting poles with one arm, including the power distribution box, screws, cables, 12 meters in height. [5] |
| CO-R15.S10-SL-130 | Installation Works for Lighting Fixtures With Drop Wire of Street Lighting Network-[Road 15]-[SW-10] | 2026-01-13 → 2026-12-07 (+328d) | 2026-02-02 → 2026-12-27 (+328d) |  | 90d → -183d |  | resources Street Lighting( LED) Luminaire,(Type C) complete with control gear and lamp, ?.17000 Lumen [35.11] → Street Lighting( LED) Luminaire,(Type C) complete with control gear and lamp, ?.17000 Lumen [25] |
| CW | **Cabling Works** | 2025-12-03 → 2025-08-08 (-117d) | 2026-01-06 → 2025-08-11 (-148d) |  |  |  |  |
| CO-R15.S10-SL-140 | Trench Excavation and Bedding Works for Street Lighting Network-[Road 15]-[SW-10] | 2025-12-03 → 2025-08-08 A (-117d) | 2025-12-14 → 2025-08-08 A (-128d) | 0% → 100% | 42d → none |  |  |
| CO-R15.S10-SL-150 | Cable Laying Works for Street Lighting Network-[Road 15]-[SW-10] | 2025-12-15 → 2025-08-10 A (-127d) | 2025-12-25 → 2025-08-10 A (-137d) | 0% → 100% | 42d → none |  | resources Supply, installation , test and operation of cables, Copper, (4Cx25mmï¿½,Cu/XLPE/SWA/PVC +1x16mmï¿½ PVC/PVC) [1317.11] → Supply, installation , test and operation of cables, Copper, (4Cx25mm²,Cu/XLPE/SWA/PVC +1x16mm² PVC/PVC) [928.2] |
| CO-R15.S10-SL-160 | Trench Backfilling and Compaction Works for Street Lighting Network-[Road 15]-[SW-10] | 2025-12-27 → 2025-08-11 A (-138d) | 2026-01-06 → 2025-08-11 A (-148d) | 0% → 100% | 42d → none |  | resources Supply, installation , test and operation of cables, Copper, (4Cx25mmï¿½,Cu/XLPE/SWA/PVC +1x16mmï¿½ PVC/PVC) [100.31] → Supply, installation , test and operation of cables, Copper, (4Cx25mm²,Cu/XLPE/SWA/PVC +1x16mm² PVC/PVC) [71.4] |
| DPB | **Distrubution Panel Boards** | 2025-06-02 → 2026-10-06 (+491d) | 2025-07-03 → 2026-11-02 (+487d) |  |  |  |  |

| ID | Task | Start | Finish | Complete | Total float | Predecessors | Other |
| --- | --- | --- | --- | --- | --- | --- | --- |
| CO-R15.S10-SL-170 | Foundation Excavation Works For Panel Boards of Street Lighting Network-[Road 15]-[SW-10] | 2025-06-02 → 2026-10-06 (+491d) | 2025-06-26 → 2026-10-26 (+487d) |  | 355d → -53d |  |  |
| CO-R15.S10-SL-180 | Installation Works for Panel Board Concrete Foundations of Street Lighting Network-[Road 15]-[SW-10] | 2025-06-10 → 2026-10-10 (+487d) | 2025-06-30 → 2026-10-29 (+486d) |  | 355d → -53d |  |  |
| CO-R15.S10-SL-220 | A wall of concrete blocks to install the KWH meter of Street Lighting Network-[Road 15]-[SW-10] | 2025-06-10 → 2026-10-10 (+487d) | 2025-06-30 → 2026-10-29 (+486d) |  | 358d → -50d |  | resources Road crossing ducts, 4 way (4 x 100mm PVC) [75.24]; Drawpit with medium duty steel cover, size 900x900x1200mm, Type 4 [6.02] → Road crossing ducts, 4 way (4 x 100mm PVC) [53.04]; Drawpit with medium duty steel cover, size 900x900x1200mm, Type 4 [4] |
| CO-R15.S10-SL-190 | Installation Works for Lighting Panel Boards of Street Lighting Network-[Road 15]-[SW-10] | 2025-06-14 → 2026-10-13 (+486d) | 2025-07-03 → 2026-11-02 (+487d) |  | 355d → -53d |  |  |
| PW | **Potable Water Network** | 2026-02-25 → 2025-07-01 (-239d) | 2026-03-31 → 2026-10-26 (+209d) |  |  |  |  |
| ML | **Main Line Sections** | 2026-02-25 → 2025-07-01 (-239d) | 2026-03-31 → 2025-07-17 (-257d) |  |  |  |  |
| CO-R15.S10-PW-100 | Trench Excavation and Bedding Works for Main Lines of Potable Water Network-[Road 15]-[SW-10] | 2026-02-25 → 2025-07-01 A (-239d) | 2026-03-03 → 2025-07-06 A (-240d) | 0% → 100% | 125d → none | CO-R15.S10-EW-110, CO-R15.S10-EW-100, CO-R15.S10-SW-130, CO-R15.S10-SD-130 → CO-R15.S10-EW-110, CO-R15.S10-EW-100 | resources Skilled Labor/Surveyor [5.7 h]; Foreman [5.7 h]; Excavator [48 h]; Pipe with diameter 200mm; in depth 0.0m - 1.5m [192.6] → Skilled Labor/Surveyor [5 h]; Foreman [5 h]; Excavator [48 h]; Pipe with diameter 200mm; in depth 0.0m - 1.5m [135.5] |
| CO-R15.S10-PW-110 | Pipes Laying and accessories for Main Lines of Potable Water Network-[Road 15]-[SW-10] | 2026-03-04 → 2025-07-07 A (-240d) | 2026-03-10 → 2025-07-12 A (-241d) | 0% → 100% | 125d → none | CO-R15.S10-PW-100, CO-R14.S08-PW-110 SS, PRO-R15-PW-DL-100 FF+3d, PRO-R15-PW-DL-110 FF+3d → CO-R15.S10-PW-100, PRO-R15-PW-DL-100 FF+3d | resources Labor/Helper [109.43 h]; Skilled Labor/Surveyor [5.7 h]; Foreman [5.7 h]; Plumber [54.71 h]; Excavator [48 h]; Pipe with diameter 200mm; in depth 0.0m - 1.5m [481.5] → Labor/Helper [96 h]; Skilled Labor/Surveyor [5 h]; Foreman [5 h]; Plumber [48 h]; Excavator [48 h]; Pipe with diameter 200mm; in depth 0.0m - 1.5m [338.75] |
| CO-R15.S10-PW-130 | Trench Backfilling and Compaction Works for Main Lines of Potable Water Network-[Road 15]-[SW-10] | 2026-03-25 → 2025-07-13 A (-255d) | 2026-03-31 → 2025-07-17 A (-257d) | 0% → 100% | 125d → none | CO-R15.S10-PW-110, CO-R14.S08-PW-130 SS, CO-R15.S10-PW-160 FF, CO-R15.S10-PW-210 FF → CO-R15.S10-PW-110 | resources Skilled Labor/Surveyor [5.7 h]; Foreman [5.7 h]; Eq. Operator [5.7 h]; Loader [48 h]; Compactor [48 h]; Water Tank [12 h]; Pipe with diameter 200mm; in depth 0.0m - 1.5m [192.6] → Skilled Labor/Surveyor [5 h]; Foreman [5 h]; Eq. Operator [5 h]; Loader [48 h]; Compactor [48 h]; Water Tank [12 h]; Pipe with diameter 200mm; in depth 0.0m - 1.5m [135.5] |
| VC | **Valve Chamber** | 2026-03-11 → 2026-07-09 (+120d) | 2026-03-17 → 2026-07-12 (+117d) |  |  |  |  |
| CO-R15.S10-PW-210 | Installation Works for Main Line Valves and Valve Chambers of Potable Water Network-[Road 15]-[SW-10] | 2026-03-11 → 2026-07-09 A (+120d) | 2026-03-17 → 2026-07-12 A (+117d) | 0% → 100% | 134d → none | CO-R15.S10-PW-110 → CO-R15.S10-PW-110, PRO-R15-PW-DL-110 FF | resources Labor/Helper [9.76 h]; Plumber [8.97 h]; Gate valves dia(200)mm on pipes with dia (200) mm. [8.03] → Labor/Helper [8 h]; Plumber [8 h]; Gate valves dia(200)mm on pipes with dia (200) mm. [6] |
| FH | **Fire Hydrant** | 2026-03-08 → 2026-10-06 (+212d) | 2026-03-31 → 2026-10-26 (+209d) |  |  |  |  |
| CO-R15.S10-PW-140 | Excavation Works for Fire Hydrants of Potable Water Network-[Road 15]-[SW-10] | 2026-03-08 → 2026-10-06 (+212d) | 2026-03-14 → 2026-10-12 (+212d) |  | 125d → -4d |  | resources Skilled Labor/Surveyor [5.61 h]; Foreman [5.61 h]; Excavator [48 h]; 3-outlet fire hydrant (2 x 2.5 inch and 1 x 4 inch) in the form of a separate dry vacuum cylinder [1] → Skilled Labor/Surveyor [5 h]; Foreman [5 h]; Excavator [48 h]; 3-outlet fire hydrant (2 x 2.5 inch and 1 x 4 inch) in the form of a separate dry vacuum cylinder [0.6] |
| CO-R15.S10-PW-150 | Installation Works for Fire Hydrant of Potable Water Network-[Road 15]-[SW-10] | 2026-03-15 → 2026-10-13 (+212d) | 2026-03-24 → 2026-10-19 (+209d) |  | 125d → -4d |  | resources Labor/Helper [107.67 h]; Skilled Labor/Surveyor [5.61 h]; Foreman [5.61 h]; Plumber [107.67 h]; 3-outlet fire hydrant (2 x 2.5 inch and 1 x 4 inch) in the form of a separate dry vacuum cylinder [4.01] → Labor/Helper [96 h]; Skilled Labor/Surveyor [5 h]; Foreman [5 h]; Plumber [96 h]; 3-outlet fire hydrant (2 x 2.5 inch and 1 x 4 inch) in the form of a separate dry vacuum cylinder [2.6] |
| CO-R15.S10-PW-160 | Trench Backfilling and Compaction Works for Fire Hydrants of Potable Water Network-[Road 15]-[SW-10] | 2026-03-25 → 2026-10-20 (+209d) | 2026-03-31 → 2026-10-26 (+209d) |  | 125d → -4d |  | resources Skilled Labor/Surveyor [5.61 h]; Foreman [5.61 h]; Excavator [48 h]; 3-outlet fire hydrant (2 x 2.5 inch and 1 x 4 inch) in the form of a separate dry vacuum cylinder [1] → Skilled Labor/Surveyor [5 h]; Foreman [5 h]; Excavator [48 h]; 3-outlet fire hydrant (2 x 2.5 inch and 1 x 4 inch) in the form of a separate dry vacuum cylinder [0.8] |
| TE | **Telecom Network** | 2026-01-05 → 2025-08-08 (-150d) | 2026-08-16 → 2025-08-28 (-353d) |  |  |  |  |
| PD | **Ducts Works** | 2026-01-05 → 2025-08-08 (-150d) | 2026-08-16 → 2025-08-11 (-370d) |  |  |  |  |
| CO-R15.S10-TE-100 | Trench Excavation and Bedding Works for Ducts of Telecom Network-[Road 15]-[SW-10] | 2026-01-05 → 2025-08-08 A (-150d) | 2026-01-12 → 2025-08-08 A (-157d) | 0% → 100% | 77d → none | CO-R15.S10-SL-160 SS+5d, CO-R15.S10-SL-160 FF+5d → CO-R15.S10-SL-140 SS, CO-R15.S10-SL-140 FF | resources Skilled Labor/Surveyor [6.84 h]; Foreman [6.84 h]; Excavator [56 h]; 6-way ducts, 50mm dia. HDPE [31.1]; Road crossing ducts (6-way) [3.01] → Skilled Labor/Surveyor [6 h]; Foreman [6 h]; Excavator [56 h]; 6-way ducts, 50mm dia. HDPE [22]; Road crossing ducts (6-way) [2] |
| CO-R15.S10-TE-110 | Pipes Laying Works for Ducts of Telecom Network-[Road 15]-[SW-10] | 2026-07-23 → 2025-08-09 A (-348d) | 2026-07-30 → 2025-08-09 A (-355d) | 0% → 100% | 0d → none | CO-R15.S10-TE-100, CO-R14.S08-TE-110, PRO-R15-TE-DL-100 FF+3d → CO-R15.S10-TE-100, PRO-R15-TE-DL-100 FF+3d | resources Labor/Helper [127.67 h]; Skilled Labor/Surveyor [6.84 h]; Foreman [6.84 h]; Plumber [63.83 h]; Excavator [56 h]; JCB [28 h]; Truck [56 h]; 6-way ducts, 50mm dia. HDPE [187.59]; Road crossing ducts (6-way) [16.05] → Labor/Helper [112 h]; Skilled Labor/Surveyor [6 h]; Foreman [6 h]; Plumber [56 h]; Excavator [56 h]; JCB [28 h]; Truck [56 h]; 6-way ducts, 50mm dia. HDPE [132]; Road crossing ducts (6-way) [11] |
| CO-R15.S10-TE-120 | Pouring Plain Concrete Above Ducts of Telecom Network-[Road 15]-[SW-10] | 2026-08-01 → 2025-08-10 A (-356d) | 2026-08-08 → 2025-08-10 A (-363d) | 0% → 100% | 0d → none | CO-R15.S10-TE-110, CO-R14.S08-TE-120 → CO-R15.S10-TE-110 | resources Skilled Labor/Surveyor [6.84 h]; Foreman [6.84 h]; Cons. Carpenter [127.67 h]; Block Mason [63.83 h]; 6-way ducts, 50mm dia. HDPE [31.1]; Road crossing ducts (6-way) [3.01] → Skilled Labor/Surveyor [6 h]; Foreman [6 h]; Cons. Carpenter [112 h]; Block Mason [56 h]; 6-way ducts, 50mm dia. HDPE [22]; Road crossing ducts (6-way) [2] |
| CO-R15.S10-TE-130 | Trench Backfilling and Compaction Works for Ducts of Telecom Network-[Road 15]-[SW-10] | 2026-08-09 → 2025-08-11 A (-363d) | 2026-08-16 → 2025-08-11 A (-370d) | 0% → 100% | 0d → none | CO-R15.S10-TE-120, CO-R14.S08-TE-130 → CO-R15.S10-TE-120 | resources Skilled Labor/Surveyor [6.84 h]; Foreman [6.84 h]; Excavator [56 h]; 6-way ducts, 50mm dia. HDPE [62.19]; Road crossing ducts (6-way) [6.02] → Skilled Labor/Surveyor [6 h]; Foreman [6 h]; Excavator [56 h]; 6-way ducts, 50mm dia. HDPE [44]; Road crossing ducts (6-way) [4] |
| MH | **Manholes Works** | 2026-07-23 → 2025-08-26 (-331d) | 2026-08-16 → 2025-08-28 (-353d) |  |  |  |  |
| CO-R15.S10-TE-140 | Excavation Works for Manholes of Telecom Network-[Road 15]-[SW-10] | 2026-07-23 → 2025-08-26 A (-331d) | 2026-07-30 → 2025-08-26 A (-338d) | 0% → 100% | 0d → none | CO-R14.S08-TE-140, CO-R15.S09-TE-140 SS, CO-R15.S10-TE-100 SS+6d, CO-R15.S10-TE-100 FF+6d → CO-R15.S09-TE-140 SS, CO-R15.S10-TE-100 SS+6d, CO-R15.S10-TE-100 FF+6d | resources Skilled Labor/Surveyor [6.84 h]; Foreman [6.84 h]; Excavator [56 h]; Manhole Type 2 (2000x1000x1000) [0.4] → Skilled Labor/Surveyor [6 h]; Foreman [6 h]; Excavator [56 h]; Manhole Type 2 (2000x1000x1000) [0.4] |
| CO-R15.S10-TE-150 | Installation Works for Manholes of Telecom Network-[Road 15]-[SW-10] | 2026-08-01 → 2025-08-27 A (-339d) | 2026-08-08 → 2025-08-27 A (-346d) | 0% → 100% | 0d → none | CO-R15.S10-TE-140, CO-R14.S08-TE-150, PRO-R15-TE-DL-110 FF+3d → CO-R15.S10-TE-140, PRO-R15-TE-DL-110 FF+3d | resources Skilled Labor/Surveyor [6.84 h]; Foreman [6.84 h]; Excavator [56 h]; Manhole Type 1 (2000x1000x1000) [1]; Manhole Type 2 (2000x1000x1000) [1] → Skilled Labor/Surveyor [6 h]; Foreman [6 h]; Excavator [56 h]; Manhole Type 1 (2000x1000x1000) [1]; Manhole Type 2 (2000x1000x1000) [1.2] |
| CO-R15.S10-TE-160 | Backfilling Works for Manholes of Telecom Network-[Road 15]-[SW-10] | 2026-08-09 → 2025-08-28 A (-346d) | 2026-08-16 → 2025-08-28 A (-353d) | 0% → 100% | 0d → none | CO-R15.S10-TE-150, CO-R14.S08-TE-160 → CO-R15.S10-TE-150 | resources Skilled Labor/Surveyor [6.84 h]; Foreman [6.84 h]; Excavator [56 h]; Manhole Type 2 (2000x1000x1000) [0.4] → Skilled Labor/Surveyor [6 h]; Foreman [6 h]; Excavator [56 h]; Manhole Type 2 (2000x1000x1000) [0.4] |
| RD | **Road Works** | 2026-08-17 → 2025-07-22 (-391d) | 2026-11-08 → 2027-08-25 (+290d) |  |  |  |  |
| RD | **Pre-Bituminous Construction** | 2026-08-17 → 2025-07-22 (-391d) | 2026-10-14 → 2026-08-09 (-66d) |  |  |  |  |
| CO-R15.S10-RD-P-100 | Capping and Subgrade Layer for Road Works-[Road 15]-[SW-10] | 2026-08-17 → 2025-07-22 A (-391d) | 2026-09-06 → 2025-07-27 A (-406d) | 0% → 100% | 11d → none | CO-R15.S10-SD-130, CO-R15.S10-SW-130, CO-R15.S10-PW-130, CO-R15.S10-PW-160, PRO-R15-RD-DL-100 FF+3d, CO-R15.S10-TE-130, CO-R15.S10-TE-160, CO-R15.S10-SL-160 SS+3d, CO-R15.S10-SL-160 FF+3d → CO-R15.S10-SD-130, CO-R15.S10-SW-130, PRO-R15-RD-DL-100 FF+3d, CO-R15.S10-PW-130 | resources Labor/Helper [328.29 h]; Skilled Labor/Surveyor [164.14 h]; Loader [144 h]; Grader [144 h]; Road Roller [144 h]; Water Tank [144 h]; 300mm capping layer underneath subgrade , CBR?15% [2364.39]; 300mm thick Subgrade, including subgrade preparation, CBR?25% [2364.39] → Labor/Helper [288 h]; Skilled Labor/Surveyor [144 h]; Loader [144 h]; Grader [144 h]; Road Roller [144 h]; Water Tank [144 h]; 300mm capping layer underneath subgrade , CBR?15% [1665.58]; 300mm thick Subgrade, including subgrade preparation, CBR?25% [1665.58] |
| CO-R15.S10-RD-P-110 | Aggregate Base Course Layer for Road Works-[Road 15]-[SW-10] | 2026-09-24 → 2026-08-01 A (-54d) | 2026-10-14 → 2026-08-09 A (-66d) | 0% → 100% | 5d → none |  | resources Labor/Helper [328.29 h]; Skilled Labor/Surveyor [164.14 h]; Foreman [164.14 h]; Loader [144 h]; Grader [144 h]; Road Roller [144 h]; Aggregate base course 200mm thick after compaction in two layers(Grading 1); CBR?80%; including watering, compaction and testing [1576.93] → Labor/Helper [288 h]; Skilled Labor/Surveyor [144 h]; Foreman [144 h]; Loader [144 h]; Grader [144 h]; Road Roller [144 h]; Aggregate base course 200mm thick after compaction in two layers(Grading 1); CBR?80%; including watering, compaction and testing [1110.5] |
| LS | **Pavement Works** | 2026-09-28 → 2026-08-25 (-34d) | 2026-11-08 → 2027-08-25 (+290d) |  |  |  |  |
| CO-R15.S10-RD-P-120 | Fixing of Curbstone for Sidewalks Pavement-[Road 15]-[SW-10] | 2026-09-28 → 2026-08-25 A (-34d) | 2026-10-18 → 2026-08-31 A (-48d) | 0% → 100% | 5d → none |  | resources Labor/Helper [328.29 h]; Block Mason [984.87 h]; Precast Concrete Kerb, Type K1 [872.73]; Precast Concrete Kerb, Type L1 [1730.41] → Labor/Helper [288 h]; Block Mason [864 h]; Precast Concrete Kerb, Type K1 [614.51]; Precast Concrete Kerb, Type L1 [1219.26] |
| CO-R15.S10-RD-P-130 | Fixing of Interlock Tiles for Sidewalks Pavement-[Road 15]-[SW-10] | 2026-10-28 → 2026-08-25 A (-64d) | 2026-11-08 → 2027-08-25 (+290d) | 0% → 50% | 0d → -227d |  | resources Labor/Helper [257.95 h]; Block Mason [700.69 h]; Interlocking block pavers for sidewalk/footpath 60mm thick on and including 30mm Sand Bedding, 200mm Aggregate subbase, all in accordance with authority standards and complete as per specifications [1556.86]; Extraover for Pedestrian ramps [4.01] → Labor/Helper [288 h]; Block Mason [864 h]; Interlocking block pavers for sidewalk/footpath 60mm thick on and including 30mm Sand Bedding, 200mm Aggregate subbase, all in accordance with authority standards and complete as per specifications [1097.33]; Extraover for Pedestrian ramps [3] |
| 8 | **Road 16 Local 1 ( 527 LM )** | 2025-03-29 → 2025-03-13 (-16d) | 2026-11-19 → 2027-09-06 (+291d) |  |  |  |  |
| SW_13 | **SW_11** | 2025-03-29 → 2025-03-27 (-2d) | 2026-11-16 → 2027-08-25 (+282d) |  |  |  |  |
| EW | **Earthworks** | 2025-03-29 → 2025-03-27 (-2d) | 2025-04-29 → 2025-04-19 (-10d) |  |  |  |  |
| EW | **Earthworks** | 2025-03-29 → 2025-03-27 (-2d) | 2025-04-29 → 2025-04-19 (-10d) |  |  |  |  |
| CO-R16.S11-EW-100 | Roadway Excavation Works Upto Design Level for Earthworks-[Road 16]-[SW-11] | 2025-03-29 → 2025-03-27 A (-2d) | 2025-04-13 → 2025-04-12 A (-1d) | 0% → 100% | 11d → none |  | resources Labor/Helper [273.57 h]; Skilled Labor/Surveyor [34.2 h]; Foreman [34.2 h]; Water Tank [240 h]; Dozer [240 h]; Roadway Excavation for cuttings; on any type of material for all depths including trimming and Preparation of excavated surfaces and disposal. [10607.1] → Labor/Helper [240 h]; Skilled Labor/Surveyor [30 h]; Foreman [30 h]; Water Tank [240 h]; Dozer [240 h]; Roadway Excavation for cuttings; on any type of material for all depths including trimming and Preparation of excavated surfaces and disposal. [7474.08] |
| CO-R16.S11-EW-110 | Embankments Works Upto Design Level for Earthworks-[Road 16]-[SW-11] | 2025-04-16 → 2025-04-13 A (-3d) | 2025-04-29 → 2025-04-19 A (-10d) | 0% → 100% | 19d → none |  | resources Labor/Helper [437.72 h]; Skilled Labor/Surveyor [54.71 h]; Foreman [54.71 h]; Dump Truck [768 h]; Water Tank [384 h]; Dozer [384 h]; Embankments to the ROW, with suitable material other than top soil or rock according to specifications [17856.8] → Labor/Helper [384 h]; Skilled Labor/Surveyor [48 h]; Foreman [48 h]; Dump Truck [768 h]; Water Tank [384 h]; Dozer [384 h]; Embankments to the ROW, with suitable material other than top soil or rock according to specifications [12581.7] |
| SW | **Sewage Network** | 2025-05-07 → 2025-06-05 (+29d) | 2025-07-07 → 2025-09-17 (+72d) |  |  |  |  |
| ML | **Main Line Sections** | 2025-05-07 → 2025-06-05 (+29d) | 2025-07-07 → 2025-07-08 (+1d) |  |  |  |  |
| CO-R16.S11-SW-100 | Trench Excavation and Bedding Works for Main Lines of Sewage Network-[Road 16]-[SW-11] | 2025-05-07 → 2025-06-05 A (+29d) | 2025-05-20 → 2025-06-15 A (+26d) | 0% → 100% | 13d → none |  | resources Labor/Helper [109.43 h]; Foreman [109.43 h]; Excavator [96 h]; Nominal bore : 200mm; Depth : 0.0m - 1.5m [4.01]; Nominal bore : 200mm; Depth : 1.5m - 2.5m [10.03]; Nominal bore : 200mm; Depth : 2.5m - 3.5m [14.04]; Nominal bore : 200mm; Depth : 3.5m - 4.5m [18.06]; Nominal bore : 200mm; Depth : 4.5m -5.5m [8.03]; Nominal bore : 200mm; Depth : 5.5m - 6.5m [8.03] → Labor/Helper [96 h]; Foreman [96 h]; Excavator [96 h]; Nominal bore : 200mm; Depth : 0.0m - 1.5m [2.97]; Nominal bore : 200mm; Depth : 1.5m - 2.5m [6.83]; Nominal bore : 200mm; Depth : 2.5m - 3.5m [9.72]; Nominal bore : 200mm; Depth : 3.5m - 4.5m [12.69]; Nominal bore : 200mm; Depth : 4.5m -5.5m [5.51]; Nominal bore : 200mm; Depth : 5.5m - 6.5m [6.19] |
| CO-R16.S11-SW-120 | Pipes Laying Works for Main Lines of Sewage Network-[Road 16]-[SW-11] | 2025-05-21 → 2025-06-16 A (+26d) | 2025-06-03 → 2025-06-21 A (+18d) | 0% → 100% | 15d → none |  | resources Labor/Helper [437.72 h]; Skilled Labor/Surveyor [22.8 h]; Foreman [22.8 h]; Plumber [218.86 h]; Excavator [192 h]; Nominal bore : 200mm; Depth : 0.0m - 1.5m [13.04]; Nominal bore : 200mm; Depth : 1.5m - 2.5m [28.09]; Nominal bore : 200mm; Depth : 2.5m - 3.5m [41.13]; Nominal bore : 200mm; Depth : 3.5m - 4.5m [54.17]; Nominal bore : 200mm; Depth : 4.5m -5.5m [24.08]; Nominal bore : 200mm; Depth : 5.5m - 6.5m [27.08] → Labor/Helper [384 h]; Skilled Labor/Surveyor [20 h]; Foreman [20 h]; Plumber [192 h]; Excavator [192 h]; Nominal bore : 200mm; Depth : 0.0m - 1.5m [8.92]; Nominal bore : 200mm; Depth : 1.5m - 2.5m [20.48]; Nominal bore : 200mm; Depth : 2.5m - 3.5m [29.17]; Nominal bore : 200mm; Depth : 3.5m - 4.5m [38.06]; Nominal bore : 200mm; Depth : 4.5m -5.5m [16.52]; Nominal bore : 200mm; Depth : 5.5m - 6.5m [18.58] |
| CO-R16.S11-SW-130 | Trench Backfilling and Compaction Works for Main Lines of Sewage Network-[Road 16]-[SW-11] | 2025-06-26 → 2025-07-06 A (+10d) | 2025-07-07 → 2025-07-08 A (+1d) | 0% → 100% | 0d → none | CO-R16.S11-SW-120 SS+3d, CO-R16.S11-SW-120 FF+3d, ENG-SH-SW-ML-A-110 FF, ENG-MS-SW-ML-A-110 FF, CO-R16.S11-SW-120, CO-R16.S11-SW-210 FF, CO-R17.S14-SW-130 → CO-R16.S11-SW-120 SS+3d, CO-R16.S11-SW-120 FF+3d, ENG-SH-SW-ML-A-110 FF, ENG-MS-SW-ML-A-110 FF, CO-R16.S11-SW-120, CO-R17.S14-SW-130 | resources Skilled Labor/Surveyor [11.4 h]; Foreman [11.4 h]; Excavator [96 h]; Nominal bore : 200mm; Depth : 0.0m - 1.5m [1]; Nominal bore : 200mm; Depth : 1.5m - 2.5m [4.01]; Nominal bore : 200mm; Depth : 2.5m - 3.5m [7.02]; Nominal bore : 200mm; Depth : 3.5m - 4.5m [8.03]; Nominal bore : 200mm; Depth : 4.5m -5.5m [4.01]; Nominal bore : 200mm; Depth : 5.5m - 6.5m [4.01] → Skilled Labor/Surveyor [10 h]; Foreman [10 h]; Excavator [96 h]; Nominal bore : 200mm; Depth : 0.0m - 1.5m [1.49]; Nominal bore : 200mm; Depth : 1.5m - 2.5m [3.41]; Nominal bore : 200mm; Depth : 2.5m - 3.5m [4.86]; Nominal bore : 200mm; Depth : 3.5m - 4.5m [6.34]; Nominal bore : 200mm; Depth : 4.5m -5.5m [2.75]; Nominal bore : 200mm; Depth : 5.5m - 6.5m [3.1] |
| 1 | **Manholes** | 2025-05-21 → 2025-06-17 (+27d) | 2025-06-04 → 2025-09-17 (+105d) |  |  |  |  |
| CO-R16.S11-SW-160 | Excavation Works for Main Line Manholes of Sewage Network-[Road 16]-[SW-11] | 2025-05-21 → 2025-06-17 A (+27d) | 2025-05-21 → 2025-06-17 A (+27d) | 0% → 100% | 24d → none |  | resources Labor/Helper [27.36 h]; Skilled Labor/Surveyor [13.68 h]; Excavator [24 h]; Depth: not exceeding 1.5m [0.15]; Depth: 1.5 - 2.5m [1]; Depth:6.5 - 7.5m [0.3] → Labor/Helper [24 h]; Skilled Labor/Surveyor [12 h]; Excavator [24 h]; Depth: not exceeding 1.5m [0.15]; Depth: 1.5 - 2.5m [0.6]; Depth:6.5 - 7.5m [0.3] |
| CO-R16.S11-SW-170 | Installation RC Footing Works for Main Line Manholes of Sewage Network-[Road 16]-[SW-11] | 2025-05-22 → 2025-06-18 A (+27d) | 2025-05-24 → 2025-06-25 A (+32d) | 0% → 100% | 24d → none |  | resources Cons. Carpenter [109.43 h]; Steel Fixer [109.43 h]; Depth: not exceeding 1.5m [0.1]; Depth: 1.5 - 2.5m [0.4]; Depth:6.5 - 7.5m [0.2] → Cons. Carpenter [96 h]; Steel Fixer [96 h]; Depth: not exceeding 1.5m [0.1]; Depth: 1.5 - 2.5m [0.4]; Depth:6.5 - 7.5m [0.2] |
| CO-R16.S11-SW-180 | Install Grp Liner Wall Works for Main Line Manholes of Sewage Network-[Road 16]-[SW-11] | 2025-05-25 → 2025-06-26 A (+32d) | 2025-05-28 → 2025-07-02 A (+35d) | 0% → 100% | 24d → none |  | resources Labor/Helper [109.43 h]; Plumber [109.43 h]; Depth: not exceeding 1.5m [0.4]; Depth: 1.5 - 2.5m [3.01]; Depth:6.5 - 7.5m [1] → Labor/Helper [96 h]; Plumber [96 h]; Depth: not exceeding 1.5m [0.4]; Depth: 1.5 - 2.5m [1.6]; Depth:6.5 - 7.5m [0.8] |
| CO-R16.S11-SW-200 | Backfilling Works for Main Line Manholes of Sewage Network-[Road 16]-[SW-11] | 2025-05-31 → 2025-07-22 A (+52d) | 2025-06-03 → 2025-07-24 A (+51d) | 0% → 100% | 24d → none | CO-R16.S11-SW-190 → CO-R16.S11-SW-180 | resources Labor/Helper [72.95 h]; Skilled Labor/Surveyor [36.48 h]; Excavator [64 h]; Depth: not exceeding 1.5m [0.15]; Depth: 1.5 - 2.5m [1]; Depth:6.5 - 7.5m [0.3] → Labor/Helper [64 h]; Skilled Labor/Surveyor [32 h]; Excavator [64 h]; Depth: not exceeding 1.5m [0.15]; Depth: 1.5 - 2.5m [0.6]; Depth:6.5 - 7.5m [0.3] |
| CO-R16.S11-SW-190 | Pouring Grp Liner Wall Works for Main Line Manholes of Sewage Network-[Road 16]-[SW-11] | 2025-05-29 → 2025-09-16 A (+110d) | 2025-05-29 → 2025-09-16 A (+110d) | 0% → 100% | 24d → none |  | resources Cons. Carpenter [54.71 h]; Steel Fixer [54.71 h]; Depth: not exceeding 1.5m [0.05]; Depth: 1.5 - 2.5m [0.2]; Depth:6.5 - 7.5m [0.1] → Cons. Carpenter [48 h]; Steel Fixer [48 h]; Depth: not exceeding 1.5m [0.05]; Depth: 1.5 - 2.5m [0.2]; Depth:6.5 - 7.5m [0.1] |
| CO-R16.S11-SW-210 | Testing Works for Main Line Manholes of Sewage Network-[Road 16]-[SW-11] | 2025-06-04 → 2025-09-17 A (+105d) | 2025-06-04 → 2025-09-17 A (+105d) | 0% → 100% | 24d → none | CO-R16.S11-SW-200 → CO-R16.S11-SW-190, CO-R16.S11-SW-200 | resources Labor/Helper [45.6 h]; Plumber [45.6 h]; Depth: not exceeding 1.5m [0.05]; Depth: 1.5 - 2.5m [0.2]; Depth:6.5 - 7.5m [0.1] → Labor/Helper [40 h]; Plumber [40 h]; Depth: not exceeding 1.5m [0.05]; Depth: 1.5 - 2.5m [0.2]; Depth:6.5 - 7.5m [0.1] |
| SD | **Storm Drainage Network** | 2025-06-30 → 2025-07-07 (+7d) | 2026-03-09 → 2026-07-13 (+126d) |  |  |  |  |
| ML | **Main Line Sections** | 2025-06-30 → 2025-07-07 (+7d) | 2026-03-09 → 2025-07-13 (-239d) |  |  |  |  |
| CO-R16.S11-SD-100 | Trench Excavation and Bedding Works for Main Lines of Storm Drainage Network-[Road 16]-[SW-11] | 2025-06-30 → 2025-07-07 A (+7d) | 2025-07-10 → 2025-07-09 A (-1d) | 0% → 100% | 213d → none |  | resources Skilled Labor/Surveyor [13.68 h]; Foreman [13.68 h]; Excavator [112 h]; Pipe with diameter 600mm ; depth: 1.51m - 2.5m [41.13]; Pipe with diameter 700mm ; depth: 1.51m - 2.5m [50.16]; Pipe with diameter 1000mm ; depth: 1.51m - 2.5m [17.05]; Pipe with diameter 1000mm ; depth: 2.51 - 3.5m [17.05] → Skilled Labor/Surveyor [12 h]; Foreman [12 h]; Excavator [112 h]; Pipe with diameter 600mm ; depth: 1.51m - 2.5m [29.2]; Pipe with diameter 700mm ; depth: 1.51m - 2.5m [34.68]; Pipe with diameter 1000mm ; depth: 1.51m - 2.5m [12.2]; Pipe with diameter 1000mm ; depth: 2.51 - 3.5m [12.2] |
| CO-R16.S11-SD-120 | Pipes Laying Works for Main Lines of Storm Drainage Network-[Road 16]-[SW-11] | 2025-07-12 → 2025-07-10 A (-2d) | 2025-07-28 → 2025-07-12 A (-16d) | 0% → 100% | 213d → none |  | resources Labor/Helper [273.57 h]; Skilled Labor/Surveyor [13.68 h]; Foreman [13.68 h]; Plumber [136.79 h]; Excavator [120 h]; Pipe with diameter 600mm ; depth: 1.51m - 2.5m [125.39]; Pipe with diameter 700mm ; depth: 1.51m - 2.5m [147.46]; Pipe with diameter 1000mm ; depth: 1.51m - 2.5m [52.16]; Pipe with diameter 1000mm ; depth: 2.51 - 3.5m [52.16] → Labor/Helper [240 h]; Skilled Labor/Surveyor [12 h]; Foreman [12 h]; Plumber [120 h]; Excavator [120 h]; Pipe with diameter 600mm ; depth: 1.51m - 2.5m [87.59]; Pipe with diameter 700mm ; depth: 1.51m - 2.5m [104.05]; Pipe with diameter 1000mm ; depth: 1.51m - 2.5m [36.6]; Pipe with diameter 1000mm ; depth: 2.51 - 3.5m [36.6] |
| CO-R16.S11-SD-130 | Trench Backfilling and Compaction Works for Main Lines of Storm Drainage Network-[Road 16]-[SW-11] | 2026-02-21 → 2025-07-13 A (-223d) | 2026-03-09 → 2025-07-13 A (-239d) | 0% → 100% | 147d → none | CO-R16.S11-SD-120 SS+3d, CO-R16.S11-SD-120 FF+3d, ENG-SH-SD-ML-A-110 FF, CO-R15.S09-SD-130, ENG-MS-SD-ML-A-110 FF, CO-R16.S11-SD-120, CO-R16.S11-SD-220 FF → CO-R16.S11-SD-120 SS+3d, CO-R16.S11-SD-120 FF+3d, ENG-SH-SD-ML-A-110 FF, ENG-MS-SD-ML-A-110 FF, CO-R16.S11-SD-120 | resources Skilled Labor/Surveyor [13.68 h]; Foreman [13.68 h]; Excavator [120 h]; Pipe with diameter 600mm ; depth: 1.51m - 2.5m [21.07]; Pipe with diameter 700mm ; depth: 1.51m - 2.5m [24.08]; Pipe with diameter 1000mm ; depth: 1.51m - 2.5m [8.03]; Pipe with diameter 1000mm ; depth: 2.51 - 3.5m [8.03] → Skilled Labor/Surveyor [12 h]; Foreman [12 h]; Excavator [120 h]; Pipe with diameter 600mm ; depth: 1.51m - 2.5m [14.6]; Pipe with diameter 700mm ; depth: 1.51m - 2.5m [17.34]; Pipe with diameter 1000mm ; depth: 1.51m - 2.5m [6.1]; Pipe with diameter 1000mm ; depth: 2.51 - 3.5m [6.1] |
| MH | **Manholes** | 2025-07-12 → 2025-07-11 (-1d) | 2025-07-27 → 2026-07-13 (+351d) |  |  |  |  |
| CO-R16.S11-SD-180 | Trench Excavation and Bedding Works for Manholes of Storm Drainage Network-[Road 16]-[SW-11] | 2025-07-12 → 2025-07-11 A (-1d) | 2025-07-12 A | 0% → 100% | 213d → none |  | resources Labor/Helper [45.6 h]; Skilled Labor/Surveyor [22.8 h]; Excavator [40 h]; MH ; depth: 0.0m - 1.5m [0.15]; MH ; depth: 1.51m - 2.5m [0.3]; MH ; depth: 1.51m - 2.5m [0.15] → Labor/Helper [40 h]; Skilled Labor/Surveyor [20 h]; Excavator [40 h]; MH ; depth: 0.0m - 1.5m [0.15]; MH ; depth: 1.51m - 2.5m [0.3]; MH ; depth: 1.51m - 2.5m [0.15] |
| CO-R16.S11-SD-190 | Install RC Footing Works for Manholes of Storm Drainage Network-[Road 16]-[SW-11] | 2025-07-13 A | 2025-07-13 A | 0% → 100% | 213d → none |  | resources Cons. Carpenter [91.19 h]; Steel Fixer [91.19 h]; MH ; depth: 0.0m - 1.5m [0.05]; MH ; depth: 1.51m - 2.5m [0.1]; MH ; depth: 1.51m - 2.5m [0.05] → Cons. Carpenter [80 h]; Steel Fixer [80 h]; MH ; depth: 0.0m - 1.5m [0.05]; MH ; depth: 1.51m - 2.5m [0.1]; MH ; depth: 1.51m - 2.5m [0.05] |
| CO-R16.S11-SD-200 | Install RC Wall Rings & Slab Works for Manholes of Storm Drainage Network-[Road 16]-[SW-11] | 2025-07-14 A | 2025-07-17 → 2025-07-15 A (-2d) | 0% → 100% | 213d → none |  | resources Cons. Carpenter [145.91 h]; Steel Fixer [145.91 h]; MH ; depth: 0.0m - 1.5m [0.45]; MH ; depth: 1.51m - 2.5m [1]; MH ; depth: 1.51m - 2.5m [0.45] → Cons. Carpenter [128 h]; Steel Fixer [128 h]; MH ; depth: 0.0m - 1.5m [0.45]; MH ; depth: 1.51m - 2.5m [0.9]; MH ; depth: 1.51m - 2.5m [0.45] |
| CO-R16.S11-SD-220 | Backfilling Works for Manholes of Storm Drainage Network-[Road 16]-[SW-11] | 2025-07-20 → 2025-07-16 A (-4d) | 2025-07-27 → 2025-07-16 A (-11d) | 0% → 100% | 213d → none | CO-R16.S11-SD-210 → CO-R16.S11-SD-200 | resources Labor/Helper [127.67 h]; Skilled Labor/Surveyor [63.83 h]; Excavator [112 h]; MH ; depth: 0.0m - 1.5m [0.2]; MH ; depth: 1.51m - 2.5m [0.4]; MH ; depth: 1.51m - 2.5m [0.2] → Labor/Helper [112 h]; Skilled Labor/Surveyor [56 h]; Excavator [112 h]; MH ; depth: 0.0m - 1.5m [0.2]; MH ; depth: 1.51m - 2.5m [0.4]; MH ; depth: 1.51m - 2.5m [0.2] |
| CO-R16.S11-SD-210 | Testing Works for Manholes of Storm Drainage Network-[Road 16]-[SW-11] | 2025-07-19 → 2026-06-04 A (+320d) | 2025-07-19 → 2026-07-13 A (+359d) | 0% → 100% | 213d → none |  | resources Labor/Helper [93.17 h]; Plumber [45.6 h]; MH ; depth: 0.0m - 1.5m [0.1]; MH ; depth: 1.51m - 2.5m [0.2]; MH ; depth: 1.51m - 2.5m [0.1] → Labor/Helper [40 h]; Plumber [40 h]; MH ; depth: 0.0m - 1.5m [0.1]; MH ; depth: 1.51m - 2.5m [0.2]; MH ; depth: 1.51m - 2.5m [0.1] |
| CB | **Catch Basin Sections** | 2025-07-28 → 2025-07-17 (-11d) | 2025-08-28 → 2026-07-13 (+319d) |  |  |  |  |
| CO-R16.S11-SD-140 | Trench Excavation and Bedding Works for Catch Basins of Storm Drainage Network-[Road 16]-[SW-11] | 2025-07-28 → 2025-07-17 A (-11d) | 2025-08-04 → 2025-07-17 A (-18d) | 0% → 100% | 213d → none |  | resources Skilled Labor/Surveyor [6.84 h]; Foreman [6.84 h]; Excavator [56 h]; Pipe with diameter 300mm ; depth: 0 - 1.5m [57.18]; Pipe with diameter 400mm ; depth: 0 - 1.5m [3.01] → Skilled Labor/Surveyor [6 h]; Foreman [6 h]; Excavator [56 h]; Pipe with diameter 300mm ; depth: 0 - 1.5m [39.58]; Pipe with diameter 400mm ; depth: 0 - 1.5m [2.41] |
| CO-R16.S11-SD-150 | Installation and Pipes Laying Connection Works for Catch Basins of Storm Drainage Network-[Road 16]-[SW-11] | 2025-08-05 → 2025-07-18 A (-18d) | 2025-08-12 → 2025-07-18 A (-25d) | 0% → 100% | 213d → none |  | resources Labor/Helper [182.38 h]; Skilled Labor/Surveyor [9.12 h]; Foreman [9.12 h]; Excavator [80 h]; Pipe with diameter 300mm ; depth: 0 - 1.5m [168.53]; Pipe with diameter 400mm ; depth: 0 - 1.5m [10.03] → Labor/Helper [160 h]; Skilled Labor/Surveyor [8 h]; Foreman [8 h]; Excavator [80 h]; Pipe with diameter 300mm ; depth: 0 - 1.5m [118.75]; Pipe with diameter 400mm ; depth: 0 - 1.5m [7.24] |
| CO-R16.S11-SD-170 | Trench Backfilling and Compaction Works for Catch Basins of Storm Drainage Network-[Road 16]-[SW-11] | 2025-08-18 → 2025-07-19 A (-30d) | 2025-08-28 → 2025-07-19 A (-40d) | 0% → 100% | 213d → none | CO-R16.S11-SD-160 → CO-R16.S11-SD-150, CO-R16.S11-IR-110 | resources Skilled Labor/Surveyor [9.12 h]; Foreman [9.12 h]; Excavator [80 h]; Pipe with diameter 300mm ; depth: 0 - 1.5m [75.24]; Pipe with diameter 400mm ; depth: 0 - 1.5m [4.01] → Skilled Labor/Surveyor [8 h]; Foreman [8 h]; Excavator [80 h]; Pipe with diameter 300mm ; depth: 0 - 1.5m [52.78]; Pipe with diameter 400mm ; depth: 0 - 1.5m [3.22] |
| CO-R16.S11-SD-160 | Testing Works for Catch Basins of Storm Drainage Network-[Road 16]-[SW-11] | 2025-08-13 → 2026-06-04 A (+295d) | 2025-08-17 → 2026-07-13 A (+330d) | 0% → 100% | 213d → none |  | resources Labor/Helper [93.17 h]; Skilled Labor/Surveyor [18.23 h]; Foreman [19.63 h]; Plumber [36.48 h]; Excavator [32 h]; Pipe with diameter 300mm ; depth: 0 - 1.5m [37.12]; Pipe with diameter 400mm ; depth: 0 - 1.5m [3.01] → Labor/Helper [64 h]; Skilled Labor/Surveyor [4 h]; Foreman [4 h]; Plumber [32 h]; Excavator [32 h]; Pipe with diameter 300mm ; depth: 0 - 1.5m [26.39]; Pipe with diameter 400mm ; depth: 0 - 1.5m [1.61] |
| IR | **Irrigation Network** | 2025-08-30 → 2025-07-19 (-42d) | 2025-10-08 → 2026-07-13 (+278d) |  |  |  |  |
| ML | **Main Line Pipes** | 2025-08-30 → 2025-07-19 (-42d) | 2025-10-08 → 2026-07-13 (+278d) |  |  |  |  |
| CO-R16.S11-IR-100 | Trench Excavation and Bedding Works for Main Lines of Irrigation Network-[Road 16]-[SW-11] | 2025-08-30 → 2025-07-19 A (-42d) | 2025-09-06 → 2025-07-21 A (-47d) | 0% → 100% | 213d → none | ENG-SH-IR-ML-A-110, CO-R16.S11-EW-110, CO-R16.S11-SD-170, ENG-MS-IR-ML-A-110 → ENG-SH-IR-ML-A-110, CO-R16.S11-EW-110, ENG-MS-IR-ML-A-110 | resources Skilled Labor/Surveyor [6.84 h]; Foreman [6.84 h]; Excavator [56 h]; 125 mm pipe; depth 0.0m - 1.5m [191.6] → Skilled Labor/Surveyor [6 h]; Foreman [6 h]; Excavator [56 h]; 125 mm pipe; depth 0.0m - 1.5m [134.52] |
| CO-R16.S11-IR-110 | Pipes Laying Works for Main Lines of Irrigation Network-[Road 16]-[SW-11] | 2025-09-07 → 2025-07-22 A (-47d) | 2025-09-17 → 2025-07-25 A (-54d) | 0% → 100% | 213d → none |  | resources Labor/Helper [182.38 h]; Skilled Labor/Surveyor [9.12 h]; Foreman [9.12 h]; Plumber [91.19 h]; Excavator [80 h]; 125 mm pipe; depth 0.0m - 1.5m [573.79] → Labor/Helper [160 h]; Skilled Labor/Surveyor [8 h]; Foreman [8 h]; Plumber [80 h]; Excavator [80 h]; 125 mm pipe; depth 0.0m - 1.5m [403.55] |

| ID | Task | Start | Finish | Complete | Total float | Predecessors | Other |
| --- | --- | --- | --- | --- | --- | --- | --- |
| CO-R16.S11-IR-130 | Trench Backfilling and Compaction Works for Main Lines of Irrigation Network-[Road 16]-[SW-11] | 2025-09-28 → 2025-07-26 A (-64d) | 2025-10-08 → 2025-07-27 A (-73d) | 0% → 100% | 213d → none | CO-R16.S11-IR-120, CO-R16.S11-IR-110 → CO-R16.S11-IR-110 | resources Skilled Labor/Surveyor [9.12 h]; Foreman [9.12 h]; Excavator [80 h]; 125 mm pipe; depth 0.0m - 1.5m [95.3] → Skilled Labor/Surveyor [8 h]; Foreman [8 h]; Excavator [80 h]; 125 mm pipe; depth 0.0m - 1.5m [67.26] |
| CO-R16.S11-IR-120 | Installation Works for Main Line Valves of Irrigation Network-[Road 16]-[SW-11] | 2025-09-18 → 2026-07-09 A (+294d) | 2025-09-27 → 2026-07-13 A (+289d) | 0% → 100% | 213d → none |  | resources Labor/Helper [125.62 h]; Skilled Labor/Surveyor [6.73 h]; Foreman [6.73 h]; Plumber [125.62 h]; Gate valves dia (90)mm on pipes with dia (125) mm. [8.03]; Air valves with dia (50mm) mm on pipes with dia(125)mm. [1]; Air valve chamber; on 125 mm dia pipeline Depth 1.5 - 3 m [1] → Labor/Helper [112 h]; Skilled Labor/Surveyor [6 h]; Foreman [6 h]; Plumber [112 h]; Gate valves dia (90)mm on pipes with dia (125) mm. [6]; Air valves with dia (50mm) mm on pipes with dia(125)mm. [1]; Air valve chamber; on 125 mm dia pipeline Depth 1.5 - 3 m [1] |
| TE | **Telecom Network** | 2025-11-24 → 2025-08-04 (-112d) | 2026-08-16 → 2025-08-30 (-351d) |  |  |  |  |
| PD | **Ducts Works** | 2025-11-24 → 2025-08-04 (-112d) | 2026-08-16 → 2025-08-21 (-360d) |  |  |  |  |
| CO-R16.S11-TE-100 | Trench Excavation and Bedding Works for Ducts of Telecom Network-[Road 16]-[SW-11] | 2025-11-24 → 2025-08-04 A (-112d) | 2025-12-07 → 2025-08-07 A (-122d) | 0% → 100% | 167d → none |  | resources Skilled Labor/Surveyor [11.4 h]; Foreman [11.4 h]; Excavator [96 h]; 6-way ducts, 50mm dia. HDPE [30.09]; Road crossing ducts (6-way) [3.01] → Skilled Labor/Surveyor [10 h]; Foreman [10 h]; Excavator [96 h]; 6-way ducts, 50mm dia. HDPE [21]; Road crossing ducts (6-way) [2] |
| CO-R16.S11-TE-110 | Pipes Laying Works for Ducts of Telecom Network-[Road 16]-[SW-11] | 2026-07-23 → 2025-08-10 A (-347d) | 2026-07-30 → 2025-08-14 A (-350d) | 0% → 100% | 7d → none |  | resources Labor/Helper [127.67 h]; Skilled Labor/Surveyor [6.84 h]; Foreman [6.84 h]; Plumber [63.83 h]; Excavator [56 h]; JCB [28 h]; Truck [56 h]; 6-way ducts, 50mm dia. HDPE [178.56]; Road crossing ducts (6-way) [16.05] → Labor/Helper [112 h]; Skilled Labor/Surveyor [6 h]; Foreman [6 h]; Plumber [56 h]; Excavator [56 h]; JCB [28 h]; Truck [56 h]; 6-way ducts, 50mm dia. HDPE [126]; Road crossing ducts (6-way) [11] |
| CO-R16.S11-TE-120 | Pouring Plain Concrete Above Ducts of Telecom Network-[Road 16]-[SW-11] | 2026-08-01 → 2025-08-16 A (-350d) | 2026-08-08 → 2025-08-19 A (-354d) | 0% → 100% | 7d → none |  | resources Skilled Labor/Surveyor [6.84 h]; Foreman [6.84 h]; Cons. Carpenter [127.67 h]; Block Mason [63.83 h]; 6-way ducts, 50mm dia. HDPE [30.09]; Road crossing ducts (6-way) [3.01] → Skilled Labor/Surveyor [6 h]; Foreman [6 h]; Cons. Carpenter [112 h]; Block Mason [56 h]; 6-way ducts, 50mm dia. HDPE [21]; Road crossing ducts (6-way) [2] |
| CO-R16.S11-TE-130 | Trench Backfilling and Compaction Works for Ducts of Telecom Network-[Road 16]-[SW-11] | 2026-08-09 → 2025-08-20 A (-354d) | 2026-08-16 → 2025-08-21 A (-360d) | 0% → 100% | 7d → none |  | resources Skilled Labor/Surveyor [6.84 h]; Foreman [6.84 h]; Excavator [56 h]; 6-way ducts, 50mm dia. HDPE [59.18]; Road crossing ducts (6-way) [6.02] → Skilled Labor/Surveyor [6 h]; Foreman [6 h]; Excavator [56 h]; 6-way ducts, 50mm dia. HDPE [42]; Road crossing ducts (6-way) [4] |
| MH | **Manholes Works** | 2026-07-23 → 2025-08-27 (-330d) | 2026-08-16 → 2025-08-30 (-351d) |  |  |  |  |
| CO-R16.S11-TE-140 | Excavation Works for Manholes of Telecom Network-[Road 16]-[SW-11] | 2026-07-23 → 2025-08-27 A (-330d) | 2026-07-30 → 2025-08-27 A (-337d) | 0% → 100% | 0d → none | CO-R15.S09-TE-140, CO-R16.S11-TE-100 → CO-R16.S11-TE-100 | resources Skilled Labor/Surveyor [6.84 h]; Foreman [6.84 h]; Excavator [56 h]; Manhole Type 2 (2000x1000x1000) [0.4] → Skilled Labor/Surveyor [6 h]; Foreman [6 h]; Excavator [56 h]; Manhole Type 2 (2000x1000x1000) [0.4] |
| CO-R16.S11-TE-150 | Installation Works for Manholes of Telecom Network-[Road 16]-[SW-11] | 2026-08-01 → 2025-08-28 A (-338d) | 2026-08-08 → 2025-08-28 A (-345d) | 0% → 100% | 7d → none | CO-R16.S11-TE-140, CO-R15.S09-TE-150 → CO-R16.S11-TE-140 | resources Skilled Labor/Surveyor [6.84 h]; Foreman [6.84 h]; Excavator [56 h]; Manhole Type 1 (2000x1000x1000) [1]; Manhole Type 2 (2000x1000x1000) [1] → Skilled Labor/Surveyor [6 h]; Foreman [6 h]; Excavator [56 h]; Manhole Type 1 (2000x1000x1000) [1]; Manhole Type 2 (2000x1000x1000) [1.2] |
| CO-R16.S11-TE-160 | Backfilling Works for Manholes of Telecom Network-[Road 16]-[SW-11] | 2026-08-09 → 2025-08-30 A (-344d) | 2026-08-16 → 2025-08-30 A (-351d) | 0% → 100% | 7d → none | CO-R16.S11-TE-150, CO-R15.S09-TE-160 → CO-R16.S11-TE-150 | resources Skilled Labor/Surveyor [6.84 h]; Foreman [6.84 h]; Excavator [56 h]; Manhole Type 2 (2000x1000x1000) [0.4] → Skilled Labor/Surveyor [6 h]; Foreman [6 h]; Excavator [56 h]; Manhole Type 2 (2000x1000x1000) [0.4] |
| MV | **Medium Voltage Network** | 2026-08-25 → 2025-08-11 (-379d) | 2026-09-21 → 2025-08-19 (-398d) |  |  |  |  |
| CW | **Cabling Works** | 2026-08-25 → 2025-08-11 (-379d) | 2026-09-21 → 2025-08-19 (-398d) |  |  |  |  |
| CO-R16.S11-MV-ML-280 | Trench Excavation and Bedding Works for Medium Voltage Network-[Road 16]-[SW-11] | 2026-08-25 → 2025-08-11 A (-379d) | 2026-09-14 → 2025-08-14 A (-396d) | 0% → 100% | 0d → none | ENG-SH-MV-A-110, CO-R16.S11-SD-170 SS+3d, CO-R16.S11-SD-170 FF+3d, CO-R16.S11-EW-110, CO-R16.S11-TE-130 SS+3d, CO-R16.S11-TE-130 FF+3d, CO-R15.S09-MV-ML-250, ENG-MS-MV-A-110 → ENG-SH-MV-A-110, CO-R16.S11-SD-170 SS+3d, CO-R16.S11-SD-170 FF+3d, CO-R16.S11-EW-110, CO-R15.S09-MV-ML-250, ENG-MS-MV-A-110 | resources Skilled Labor/Surveyor [17.1 h]; Foreman [17.1 h]; Excavator [144 h]; Excavation for Trench size 40cm wide and 80cm deep ( Maximum 1 cable 33kv) [265.83]; Excavation for Trench size 60cm wide and 80cm deep ( for Max two cables 33 kv) [16.05]; Excavation for Trench size 90cm wide and 80cm deep ( Maximum 3 cable 33kv) [66.21]; Excavation for Trench size 120cm wide and 80cm deep ( Maximum 4cable 33kv) [23.07]; Excavation for Trench size 150cm wide and 80cm deep ( Maximum 4cable 33kv) [85.27]; Duct bank for (2) 33 kv cables [8.03]; Duct bank for (4) 33 kv cables [59.18]; Duct bank for (6) 33 kv cables [27.08] → Skilled Labor/Surveyor [15 h]; Foreman [15 h]; Excavator [144 h]; Excavation for Trench size 40cm wide and 80cm deep ( Maximum 1 cable 33kv) [186.65]; Excavation for Trench size 60cm wide and 80cm deep ( for Max two cables 33 kv) [10.62]; Excavation for Trench size 90cm wide and 80cm deep ( Maximum 3 cable 33kv) [47.31]; Excavation for Trench size 120cm wide and 80cm deep ( Maximum 4cable 33kv) [16.09]; Excavation for Trench size 150cm wide and 80cm deep ( Maximum 4cable 33kv) [59.53]; Duct bank for (2) 33 kv cables [6.44]; Duct bank for (4) 33 kv cables [42.48]; Duct bank for (6) 33 kv cables [19.31] |
| CO-R16.S11-MV-ML-290 | Cable Laying Works for Medium Voltage Network-[Road 16]-[SW-11] | 2026-08-29 → 2025-08-12 A (-382d) | 2026-09-17 → 2025-08-17 A (-396d) | 0% → 100% | 0d → none |  | resources Labor/Helper [164.14 h]; Electrician [170.39 h]; Low Current Technician [164.14 h]; 33kv 3Cx400 mmï¿½ Al XLPE / LLDPE /PVC Cable [1247.9]; 33kv 3Cx400 mmï¿½ Al XLPE /LLDPE/PVC [4.01] → Labor/Helper [144 h]; Electrician [144 h]; Low Current Technician [144 h]; 33kv 3Cx400 mm² Al XLPE / LLDPE /PVC Cable [878.53]; 33kv 3Cx400 mm² Al XLPE /LLDPE/PVC [2.8] |
| CO-R16.S11-MV-ML-300 | Trench Backfilling and Compaction Works for Medium Voltage Network-[Road 16]-[SW-11] | 2026-09-01 → 2025-08-16 A (-381d) | 2026-09-21 → 2025-08-19 A (-398d) | 0% → 100% | 0d → none |  | resources Skilled Labor/Surveyor [17.1 h]; Foreman [17.1 h]; Excavator [144 h]; Water Tank [36 h]; 33kv 3Cx400 mmï¿½ Al XLPE / LLDPE /PVC Cable [534.67]; 33kv 3Cx400 mmï¿½ Al XLPE /LLDPE/PVC [1] → Skilled Labor/Surveyor [15 h]; Foreman [15 h]; Excavator [144 h]; Water Tank [36 h]; 33kv 3Cx400 mm² Al XLPE / LLDPE /PVC Cable [376.51]; 33kv 3Cx400 mm² Al XLPE /LLDPE/PVC [1.2] |
| RD | **Road Works** | 2026-09-05 → 2025-08-04 (-397d) | 2026-11-16 → 2027-08-25 (+282d) |  |  |  |  |
| RD | **Pre-Bituminous Construction** | 2026-09-05 → 2025-08-04 (-397d) | 2026-11-07 → 2025-10-20 (-383d) |  |  |  |  |
| CO-R16.S11-RD-P-100 | Capping and Subgrade Layer for Road Works-[Road 16]-[SW-11] | 2026-09-05 → 2025-08-04 A (-397d) | 2026-09-26 → 2025-08-11 A (-411d) | 0% → 100% | 7d → none | ENG-SH-RD-A-100, CO-R16.S11-SD-130, CO-R16.S11-SW-130, ENG-MS-RD-A-10, CO-R16.S11-TE-130, CO-R16.S11-TE-160, CO-R16.S11-MV-ML-300 SS+3d, CO-R16.S11-MV-ML-300 FF+3d → ENG-SH-RD-A-100, CO-R16.S11-SD-130, CO-R16.S11-SW-130, ENG-MS-RD-A-10 | resources Labor/Helper [328.29 h]; Skilled Labor/Surveyor [164.14 h]; Loader [144 h]; Grader [144 h]; Road Roller [144 h]; Water Tank [144 h]; 300mm capping layer underneath subgrade , CBR?15% [2252.03]; 300mm thick Subgrade, including subgrade preparation, CBR?25% [2252.03] → Labor/Helper [2788 h]; Skilled Labor/Surveyor [1394 h]; Loader [144 h]; Grader [144 h]; Road Roller [144 h]; Water Tank [144 h]; 300mm capping layer underneath subgrade , CBR?15% [1587.47]; 300mm thick Subgrade, including subgrade preparation, CBR?25% [1587.47] |
| CO-R16.S11-RD-P-110 | Aggregate Base Course Layer for Road Works-[Road 16]-[SW-11] | 2026-10-18 → 2025-09-17 A (-396d) | 2026-11-07 → 2025-10-20 A (-383d) | 0% → 100% | 3d → none |  | resources Labor/Helper [318.71 h]; Skilled Labor/Surveyor [159.35 h]; Foreman [159.35 h]; Loader [144 h]; Grader [144 h]; Road Roller [144 h]; Aggregate base course 200mm thick after compaction in two layers(Grading 1); CBR?80%; including watering, compaction and testing [1501.69] → Labor/Helper [288 h]; Skilled Labor/Surveyor [144 h]; Foreman [144 h]; Loader [144 h]; Grader [144 h]; Road Roller [144 h]; Aggregate base course 200mm thick after compaction in two layers(Grading 1); CBR?80%; including watering, compaction and testing [1058.42] |
| LS | **Pavement Works** | 2026-10-21 → 2026-08-25 (-57d) | 2026-11-16 → 2027-08-25 (+282d) |  |  |  |  |
| CO-R16.S11-RD-P-120 | Fixing of Curbstone for Sidewalks Pavement-[Road 16]-[SW-11] | 2026-10-21 → 2026-08-25 A (-57d) | 2026-11-10 → 2026-08-31 A (-71d) | 0% → 100% | 3d → none |  | resources Labor/Helper [318.71 h]; Block Mason [956.12 h]; Precast Concrete Kerb, Type K1 [831.6]; Precast Concrete Kerb, Type L1 [1649.15] → Labor/Helper [288 h]; Block Mason [864 h]; Precast Concrete Kerb, Type K1 [585.69]; Precast Concrete Kerb, Type L1 [1162.07] |
| CO-R16.S11-RD-P-130 | Fixing of Interlock Tiles for Sidewalks Pavement-[Road 16]-[SW-11] | 2026-11-05 → 2026-08-25 A (-72d) | 2026-11-16 → 2027-08-25 (+282d) | 0% → 90% | 3d → -217d |  | resources Labor/Helper [196.09 h]; Block Mason [439.23 h]; Interlocking block pavers for sidewalk/footpath 60mm thick on and including 30mm Sand Bedding, 200mm Aggregate subbase, all in accordance with authority standards and complete as per specifications [1484.64]; Extraover for Pedestrian ramps [4.01] → Labor/Helper [288 h]; Block Mason [864 h]; Interlocking block pavers for sidewalk/footpath 60mm thick on and including 30mm Sand Bedding, 200mm Aggregate subbase, all in accordance with authority standards and complete as per specifications [1045.87]; Extraover for Pedestrian ramps [3] |
| SW_14 | **SW_12** | 2025-04-14 → 2025-03-13 (-32d) | 2026-11-19 → 2027-09-06 (+291d) |  |  |  |  |
| EW | **Earthworks** | 2025-04-14 → 2025-03-13 (-32d) | 2025-05-08 → 2025-04-20 (-18d) |  |  |  |  |
| EW | **Earthworks** | 2025-04-14 → 2025-03-13 (-32d) | 2025-05-08 → 2025-04-20 (-18d) |  |  |  |  |
| CO-R16.S12-EW-100 | Roadway Excavation Works Upto Design Level for Earthworks-[Road 16]-[SW-12] | 2025-04-14 → 2025-03-13 A (-32d) | 2025-04-24 → 2025-04-15 A (-9d) | 0% → 100% | 11d → none |  | resources Labor/Helper [228.2 h]; Skilled Labor/Surveyor [27.36 h]; Foreman [29.89 h]; Dump Truck [384 h]; Water Tank [192 h]; Dozer [192 h]; Roadway Excavation for cuttings; on any type of material for all depths including trimming and Preparation of excavated surfaces and disposal. [10607.1] → Labor/Helper [192 h]; Skilled Labor/Surveyor [24 h]; Foreman [24 h]; Dump Truck [384 h]; Water Tank [192 h]; Dozer [192 h]; Roadway Excavation for cuttings; on any type of material for all depths including trimming and Preparation of excavated surfaces and disposal. [7474.08] |
| CO-R16.S12-EW-110 | Embankments Works Upto Design Level for Earthworks-[Road 16]-[SW-12] | 2025-04-26 → 2025-04-16 A (-10d) | 2025-05-08 → 2025-04-20 A (-18d) | 0% → 100% | 23d → none |  | resources Labor/Helper [437.72 h]; Skilled Labor/Surveyor [54.71 h]; Foreman [54.71 h]; Dump Truck [384 h]; Water Tank [384 h]; Dozer [384 h]; Embankments to the ROW, with suitable material other than top soil or rock according to specifications [17856.8] → Labor/Helper [384 h]; Skilled Labor/Surveyor [48 h]; Foreman [48 h]; Dump Truck [384 h]; Water Tank [384 h]; Dozer [384 h]; Embankments to the ROW, with suitable material other than top soil or rock according to specifications [12581.7] |
| SW | **Sewage Network** | 2025-05-21 → 2025-06-16 (+26d) | 2025-07-19 → 2025-09-17 (+60d) |  |  |  |  |
| ML | **Main Line Sections** | 2025-05-21 → 2025-06-16 (+26d) | 2025-07-19 → 2025-07-10 (-9d) |  |  |  |  |
| CO-R16.S12-SW-100 | Trench Excavation and Bedding Works for Main Lines of Sewage Network-[Road 16]-[SW-12] | 2025-05-21 → 2025-06-16 A (+26d) | 2025-06-03 → 2025-06-23 A (+20d) | 0% → 100% | 13d → none |  | resources Labor/Helper [109.43 h]; Foreman [109.43 h]; Excavator [96 h]; Nominal bore : 160mm; Depth : 0.0m - 1.5m [18.06]; Nominal bore : 200mm; Depth : 0.0m - 1.5m [4.01]; Nominal bore : 200mm; Depth : 1.5m - 2.5m [10.03]; Nominal bore : 200mm; Depth : 2.5m - 3.5m [14.04]; Nominal bore : 200mm; Depth : 3.5m - 4.5m [18.06]; Nominal bore : 200mm; Depth : 4.5m -5.5m [8.03]; Nominal bore : 200mm; Depth : 5.5m - 6.5m [8.03] → Labor/Helper [96 h]; Foreman [96 h]; Excavator [96 h]; Nominal bore : 160mm; Depth : 0.0m - 1.5m [13]; Nominal bore : 200mm; Depth : 0.0m - 1.5m [2.97]; Nominal bore : 200mm; Depth : 1.5m - 2.5m [6.83]; Nominal bore : 200mm; Depth : 2.5m - 3.5m [9.72]; Nominal bore : 200mm; Depth : 3.5m - 4.5m [12.69]; Nominal bore : 200mm; Depth : 4.5m -5.5m [5.51]; Nominal bore : 200mm; Depth : 5.5m - 6.5m [6.19] |
| CO-R16.S12-SW-120 | Pipes Laying Works for Main Lines of Sewage Network-[Road 16]-[SW-12] | 2025-06-04 → 2025-06-24 A (+20d) | 2025-06-22 → 2025-06-27 A (+5d) | 0% → 100% | 13d → none |  | resources Labor/Helper [437.72 h]; Skilled Labor/Surveyor [22.8 h]; Foreman [22.8 h]; Plumber [218.86 h]; Excavator [192 h]; Nominal bore : 160mm; Depth : 0.0m - 1.5m [55.17]; Nominal bore : 200mm; Depth : 0.0m - 1.5m [13.04]; Nominal bore : 200mm; Depth : 1.5m - 2.5m [28.09]; Nominal bore : 200mm; Depth : 2.5m - 3.5m [41.13]; Nominal bore : 200mm; Depth : 3.5m - 4.5m [54.17]; Nominal bore : 200mm; Depth : 4.5m -5.5m [24.08]; Nominal bore : 200mm; Depth : 5.5m - 6.5m [27.08] → Labor/Helper [384 h]; Skilled Labor/Surveyor [20 h]; Foreman [20 h]; Plumber [192 h]; Excavator [192 h]; Nominal bore : 160mm; Depth : 0.0m - 1.5m [39]; Nominal bore : 200mm; Depth : 0.0m - 1.5m [8.92]; Nominal bore : 200mm; Depth : 1.5m - 2.5m [20.48]; Nominal bore : 200mm; Depth : 2.5m - 3.5m [29.17]; Nominal bore : 200mm; Depth : 3.5m - 4.5m [38.06]; Nominal bore : 200mm; Depth : 4.5m -5.5m [16.52]; Nominal bore : 200mm; Depth : 5.5m - 6.5m [18.58] |
| CO-R16.S12-SW-130 | Trench Backfilling and Compaction Works for Main Lines of Sewage Network-[Road 16]-[SW-12] | 2025-07-08 → 2025-07-09 A (+1d) | 2025-07-19 → 2025-07-10 A (-9d) | 0% → 100% | 0d → none | CO-R16.S12-SW-120, CO-R16.S12-SW-210 FF, CO-R16.S11-SW-130 → CO-R16.S12-SW-120, CO-R16.S11-SW-130 | resources Skilled Labor/Surveyor [11.4 h]; Foreman [11.4 h]; Excavator [96 h]; Nominal bore : 160mm; Depth : 0.0m - 1.5m [10.03]; Nominal bore : 200mm; Depth : 0.0m - 1.5m [1]; Nominal bore : 200mm; Depth : 1.5m - 2.5m [4.01]; Nominal bore : 200mm; Depth : 2.5m - 3.5m [7.02]; Nominal bore : 200mm; Depth : 3.5m - 4.5m [8.03]; Nominal bore : 200mm; Depth : 4.5m -5.5m [4.01]; Nominal bore : 200mm; Depth : 5.5m - 6.5m [4.01] → Skilled Labor/Surveyor [10 h]; Foreman [10 h]; Excavator [96 h]; Nominal bore : 160mm; Depth : 0.0m - 1.5m [6.5]; Nominal bore : 200mm; Depth : 0.0m - 1.5m [1.49]; Nominal bore : 200mm; Depth : 1.5m - 2.5m [3.41]; Nominal bore : 200mm; Depth : 2.5m - 3.5m [4.86]; Nominal bore : 200mm; Depth : 3.5m - 4.5m [6.34]; Nominal bore : 200mm; Depth : 4.5m -5.5m [2.75]; Nominal bore : 200mm; Depth : 5.5m - 6.5m [3.1] |
| 1 | **Manholes** | 2025-06-04 → 2025-06-28 (+24d) | 2025-06-23 → 2025-09-17 (+86d) |  |  |  |  |
| CO-R16.S12-SW-160 | Excavation Works for Main Line Manholes of Sewage Network-[Road 16]-[SW-12] | 2025-06-04 → 2025-06-28 A (+24d) | 2025-06-04 → 2025-06-30 A (+26d) | 0% → 100% | 22d → none |  | resources Labor/Helper [45.6 h]; Skilled Labor/Surveyor [22.8 h]; Excavator [40 h]; Depth: not exceeding 1.5m [0.15]; Depth: 1.5 - 2.5m [0.15]; Depth: 2.5 - 3.5m [0.15]; Depth: 5.5 - 6.5m [0.15] → Labor/Helper [40 h]; Skilled Labor/Surveyor [20 h]; Excavator [40 h]; Depth: not exceeding 1.5m [0.15]; Depth: 1.5 - 2.5m [0.15]; Depth: 2.5 - 3.5m [0.15]; Depth: 5.5 - 6.5m [0.15] |
| CO-R16.S12-SW-170 | Installation RC Footing Works for Main Line Manholes of Sewage Network-[Road 16]-[SW-12] | 2025-06-10 → 2025-07-20 A (+40d) | 2025-06-11 → 2025-07-22 A (+41d) | 0% → 100% | 22d → none |  | resources Cons. Carpenter [182.38 h]; Steel Fixer [182.38 h]; Depth: not exceeding 1.5m [0.1]; Depth: 1.5 - 2.5m [0.1]; Depth: 2.5 - 3.5m [0.1]; Depth: 5.5 - 6.5m [0.1] → Cons. Carpenter [160 h]; Steel Fixer [160 h]; Depth: not exceeding 1.5m [0.1]; Depth: 1.5 - 2.5m [0.1]; Depth: 2.5 - 3.5m [0.1]; Depth: 5.5 - 6.5m [0.1] |
| CO-R16.S12-SW-180 | Install Grp Liner Wall Works for Main Line Manholes of Sewage Network-[Road 16]-[SW-12] | 2025-06-12 → 2025-07-23 A (+41d) | 2025-06-16 → 2025-07-24 A (+38d) | 0% → 100% | 22d → none |  | resources Labor/Helper [109.43 h]; Plumber [109.43 h]; Depth: not exceeding 1.5m [0.4]; Depth: 1.5 - 2.5m [0.4]; Depth: 2.5 - 3.5m [0.4]; Depth: 5.5 - 6.5m [0.4] → Labor/Helper [96 h]; Plumber [96 h]; Depth: not exceeding 1.5m [0.4]; Depth: 1.5 - 2.5m [0.4]; Depth: 2.5 - 3.5m [0.4]; Depth: 5.5 - 6.5m [0.4] |
| CO-R16.S12-SW-200 | Backfilling Works for Main Line Manholes of Sewage Network-[Road 16]-[SW-12] | 2025-06-18 → 2025-07-26 A (+38d) | 2025-06-22 → 2025-07-27 A (+35d) | 0% → 100% | 22d → none | CO-R16.S12-SW-190 → CO-R16.S12-SW-180 | resources Labor/Helper [182.38 h]; Skilled Labor/Surveyor [91.19 h]; Excavator [160 h]; Depth: not exceeding 1.5m [0.15]; Depth: 1.5 - 2.5m [0.15]; Depth: 2.5 - 3.5m [0.15]; Depth: 5.5 - 6.5m [0.15] → Labor/Helper [160 h]; Skilled Labor/Surveyor [80 h]; Excavator [160 h]; Depth: not exceeding 1.5m [0.15]; Depth: 1.5 - 2.5m [0.15]; Depth: 2.5 - 3.5m [0.15]; Depth: 5.5 - 6.5m [0.15] |
| CO-R16.S12-SW-190 | Pouring Grp Liner Wall Works for Main Line Manholes of Sewage Network-[Road 16]-[SW-12] | 2025-06-17 → 2025-09-16 A (+91d) | 2025-06-17 → 2025-09-16 A (+91d) | 0% → 100% | 22d → none |  | resources Cons. Carpenter [91.19 h]; Steel Fixer [91.19 h]; Depth: not exceeding 1.5m [0.05]; Depth: 1.5 - 2.5m [0.05]; Depth: 2.5 - 3.5m [0.05]; Depth: 5.5 - 6.5m [0.05] → Cons. Carpenter [80 h]; Steel Fixer [80 h]; Depth: not exceeding 1.5m [0.05]; Depth: 1.5 - 2.5m [0.05]; Depth: 2.5 - 3.5m [0.05]; Depth: 5.5 - 6.5m [0.05] |
| CO-R16.S12-SW-210 | Testing Works for Main Line Manholes of Sewage Network-[Road 16]-[SW-12] | 2025-06-23 → 2025-09-17 A (+86d) | 2025-06-23 → 2025-09-17 A (+86d) | 0% → 100% | 22d → none | CO-R16.S12-SW-200 → CO-R16.S12-SW-200, CO-R16.S12-SW-190 | resources Labor/Helper [45.6 h]; Plumber [45.6 h]; Depth: not exceeding 1.5m [0.05]; Depth: 1.5 - 2.5m [0.05]; Depth: 2.5 - 3.5m [0.05]; Depth: 5.5 - 6.5m [0.05] → Labor/Helper [40 h]; Plumber [40 h]; Depth: not exceeding 1.5m [0.05]; Depth: 1.5 - 2.5m [0.05]; Depth: 2.5 - 3.5m [0.05]; Depth: 5.5 - 6.5m [0.05] |
| SD | **Storm Drainage Network** | 2025-07-12 → 2025-07-10 (-2d) | 2026-03-14 → 2026-07-13 (+121d) |  |  |  |  |
| ML | **Main Line Sections** | 2025-07-12 → 2025-07-10 (-2d) | 2026-03-14 → 2025-07-19 (-238d) |  |  |  |  |
| CO-R16.S12-SD-100 | Trench Excavation and Bedding Works for Main Lines of Storm Drainage Network-[Road 16]-[SW-12] | 2025-07-12 → 2025-07-10 A (-2d) | 2025-07-22 → 2025-07-11 A (-11d) | 0% → 100% | 174d → none |  | resources Skilled Labor/Surveyor [13.68 h]; Foreman [13.68 h]; Excavator [112 h]; Pipe with diameter 400mm ; depth: 0.0m - 1.5m [61.19]; Pipe with diameter 400mm ; depth: 1.51m - 2.5m [57.18]; Pipe with diameter 500mm ; depth: 1.51m - 2.5m [82.26]; Pipe with diameter 600mm ; depth: 1.51m - 2.5m [13.04]; Pipe with diameter 700mm ; depth: 1.51m - 2.5m [52.16]; Pipe with diameter 800mm ; depth: 1.51m - 2.5m [45.14]; Pipe with diameter 900mm ; depth: 1.51m - 2.5m [7.02] → Skilled Labor/Surveyor [12 h]; Foreman [12 h]; Excavator [112 h]; Pipe with diameter 400mm ; depth: 0.0m - 1.5m [43.31]; Pipe with diameter 400mm ; depth: 1.51m - 2.5m [39.57]; Pipe with diameter 500mm ; depth: 1.51m - 2.5m [58.49]; Pipe with diameter 600mm ; depth: 1.51m - 2.5m [9.2]; Pipe with diameter 700mm ; depth: 1.51m - 2.5m [36.88]; Pipe with diameter 800mm ; depth: 1.51m - 2.5m [32.06]; Pipe with diameter 900mm ; depth: 1.51m - 2.5m [4.57] |
| CO-R16.S12-SD-120 | Pipes Laying Works for Main Lines of Storm Drainage Network-[Road 16]-[SW-12] | 2025-07-23 → 2025-07-12 A (-11d) | 2025-08-09 → 2025-07-13 A (-27d) | 0% → 100% | 174d → none |  | resources Labor/Helper [273.57 h]; Skilled Labor/Surveyor [13.68 h]; Foreman [13.68 h]; Plumber [136.79 h]; Excavator [120 h]; Pipe with diameter 400mm ; depth: 0.0m - 1.5m [184.58]; Pipe with diameter 400mm ; depth: 1.51m - 2.5m [168.53]; Pipe with diameter 500mm ; depth: 1.51m - 2.5m [248.78]; Pipe with diameter 600mm ; depth: 1.51m - 2.5m [40.13]; Pipe with diameter 700mm ; depth: 1.51m - 2.5m [157.49]; Pipe with diameter 800mm ; depth: 1.51m - 2.5m [136.43]; Pipe with diameter 900mm ; depth: 1.51m - 2.5m [20.06] → Labor/Helper [240 h]; Skilled Labor/Surveyor [12 h]; Foreman [12 h]; Plumber [120 h]; Excavator [120 h]; Pipe with diameter 400mm ; depth: 0.0m - 1.5m [129.92]; Pipe with diameter 400mm ; depth: 1.51m - 2.5m [118.71]; Pipe with diameter 500mm ; depth: 1.51m - 2.5m [175.46]; Pipe with diameter 600mm ; depth: 1.51m - 2.5m [27.59]; Pipe with diameter 700mm ; depth: 1.51m - 2.5m [110.65]; Pipe with diameter 800mm ; depth: 1.51m - 2.5m [96.19]; Pipe with diameter 900mm ; depth: 1.51m - 2.5m [13.71] |
| CO-R16.S12-SD-130 | Trench Backfilling and Compaction Works for Main Lines of Storm Drainage Network-[Road 16]-[SW-12] | 2026-02-25 → 2025-07-19 A (-221d) | 2026-03-14 → 2025-07-19 A (-238d) | 0% → 100% | 4d → none |  | resources Skilled Labor/Surveyor [13.68 h]; Foreman [13.68 h]; Excavator [120 h]; Pipe with diameter 400mm ; depth: 0.0m - 1.5m [31.1]; Pipe with diameter 400mm ; depth: 1.51m - 2.5m [28.09]; Pipe with diameter 500mm ; depth: 1.51m - 2.5m [41.13]; Pipe with diameter 600mm ; depth: 1.51m - 2.5m [7.02]; Pipe with diameter 700mm ; depth: 1.51m - 2.5m [25.08]; Pipe with diameter 800mm ; depth: 1.51m - 2.5m [23.07]; Pipe with diameter 900mm ; depth: 1.51m - 2.5m [3.01] → Skilled Labor/Surveyor [12 h]; Foreman [12 h]; Excavator [120 h]; Pipe with diameter 400mm ; depth: 0.0m - 1.5m [21.65]; Pipe with diameter 400mm ; depth: 1.51m - 2.5m [19.79]; Pipe with diameter 500mm ; depth: 1.51m - 2.5m [29.24]; Pipe with diameter 600mm ; depth: 1.51m - 2.5m [4.6]; Pipe with diameter 700mm ; depth: 1.51m - 2.5m [18.44]; Pipe with diameter 800mm ; depth: 1.51m - 2.5m [16.03]; Pipe with diameter 900mm ; depth: 1.51m - 2.5m [2.29] |
| MH | **Manholes** | 2025-07-23 → 2025-07-14 (-9d) | 2025-08-07 → 2026-07-13 (+340d) |  |  |  |  |
| CO-R16.S12-SD-180 | Trench Excavation and Bedding Works for Manholes of Storm Drainage Network-[Road 16]-[SW-12] | 2025-07-23 → 2025-07-14 A (-9d) | 2025-07-23 → 2025-07-15 A (-8d) | 0% → 100% | 190d → none |  | resources Labor/Helper [27.36 h]; Skilled Labor/Surveyor [13.68 h]; Excavator [24 h]; MH ; depth: 0.0m - 1.5m [0.15]; MH ; depth: 1.51m - 2.5m [0.3]; MH ; depth: 1.51m - 2.5m [0.15] → Labor/Helper [24 h]; Skilled Labor/Surveyor [12 h]; Excavator [24 h]; MH ; depth: 0.0m - 1.5m [0.15]; MH ; depth: 1.51m - 2.5m [0.3]; MH ; depth: 1.51m - 2.5m [0.15] |
| CO-R16.S12-SD-190 | Install RC Footing Works for Manholes of Storm Drainage Network-[Road 16]-[SW-12] | 2025-07-24 → 2025-07-16 A (-8d) | 2025-07-24 → 2025-07-16 A (-8d) | 0% → 100% | 190d → none |  | resources Cons. Carpenter [54.71 h]; Steel Fixer [54.71 h]; MH ; depth: 0.0m - 1.5m [0.05]; MH ; depth: 1.51m - 2.5m [0.1]; MH ; depth: 1.51m - 2.5m [0.05] → Cons. Carpenter [48 h]; Steel Fixer [48 h]; MH ; depth: 0.0m - 1.5m [0.05]; MH ; depth: 1.51m - 2.5m [0.1]; MH ; depth: 1.51m - 2.5m [0.05] |
| CO-R16.S12-SD-200 | Install RC Wall Rings & Slab Works for Manholes of Storm Drainage Network-[Road 16]-[SW-12] | 2025-07-26 → 2025-07-17 A (-9d) | 2025-07-29 → 2025-07-17 A (-12d) | 0% → 100% | 190d → none |  | resources Cons. Carpenter [218.86 h]; Steel Fixer [218.86 h]; MH ; depth: 0.0m - 1.5m [0.45]; MH ; depth: 1.51m - 2.5m [1]; MH ; depth: 1.51m - 2.5m [0.45] → Cons. Carpenter [192 h]; Steel Fixer [192 h]; MH ; depth: 0.0m - 1.5m [0.45]; MH ; depth: 1.51m - 2.5m [0.9]; MH ; depth: 1.51m - 2.5m [0.45] |
| CO-R16.S12-SD-220 | Backfilling Works for Manholes of Storm Drainage Network-[Road 16]-[SW-12] | 2025-07-31 → 2025-07-18 A (-13d) | 2025-08-07 → 2025-07-18 A (-20d) | 0% → 100% | 190d → none | CO-R16.S12-SD-210 → CO-R16.S12-SD-200 | resources Labor/Helper [191.5 h]; Skilled Labor/Surveyor [95.75 h]; Excavator [168 h]; MH ; depth: 0.0m - 1.5m [0.2]; MH ; depth: 1.51m - 2.5m [0.4]; MH ; depth: 1.51m - 2.5m [0.2] → Labor/Helper [168 h]; Skilled Labor/Surveyor [84 h]; Excavator [168 h]; MH ; depth: 0.0m - 1.5m [0.2]; MH ; depth: 1.51m - 2.5m [0.4]; MH ; depth: 1.51m - 2.5m [0.2] |
| CO-R16.S12-SD-210 | Testing Works for Manholes of Storm Drainage Network-[Road 16]-[SW-12] | 2025-07-30 → 2026-06-04 A (+309d) | 2025-07-30 → 2026-07-13 A (+348d) | 0% → 100% | 190d → none |  | resources Labor/Helper [93.17 h]; Plumber [30.36 h]; MH ; depth: 0.0m - 1.5m [0.1]; MH ; depth: 1.51m - 2.5m [0.2]; MH ; depth: 1.51m - 2.5m [0.1] → Labor/Helper [24 h]; Plumber [24 h]; MH ; depth: 0.0m - 1.5m [0.1]; MH ; depth: 1.51m - 2.5m [0.2]; MH ; depth: 1.51m - 2.5m [0.1] |
| CB | **Catch Basin Sections** | 2025-08-09 → 2025-07-19 (-21d) | 2025-09-09 → 2026-07-13 (+307d) |  |  |  |  |
| CO-R16.S12-SD-140 | Trench Excavation and Bedding Works for Catch Basins of Storm Drainage Network-[Road 16]-[SW-12] | 2025-08-09 → 2025-07-19 A (-21d) | 2025-08-16 → 2025-07-19 A (-28d) | 0% → 100% | 346d → none |  | resources Skilled Labor/Surveyor [6.84 h]; Foreman [6.84 h]; Excavator [56 h]; Pipe with diameter 300mm ; depth: 0 - 1.5m [57.18]; Pipe with diameter 400mm ; depth: 0 - 1.5m [3.01] → Skilled Labor/Surveyor [6 h]; Foreman [6 h]; Excavator [56 h]; Pipe with diameter 300mm ; depth: 0 - 1.5m [39.58]; Pipe with diameter 400mm ; depth: 0 - 1.5m [2.41] |
| CO-R16.S12-SD-150 | Installation and Pipes Laying Connection Works for Catch Basins of Storm Drainage Network-[Road 16]-[SW-12] | 2025-08-17 → 2025-07-20 A (-28d) | 2025-08-24 → 2025-07-20 A (-35d) | 0% → 100% | 346d → none |  | resources Labor/Helper [182.38 h]; Skilled Labor/Surveyor [9.12 h]; Foreman [9.12 h]; Excavator [80 h]; Pipe with diameter 300mm ; depth: 0 - 1.5m [168.53]; Pipe with diameter 400mm ; depth: 0 - 1.5m [10.03] → Labor/Helper [160 h]; Skilled Labor/Surveyor [8 h]; Foreman [8 h]; Excavator [80 h]; Pipe with diameter 300mm ; depth: 0 - 1.5m [118.75]; Pipe with diameter 400mm ; depth: 0 - 1.5m [7.24] |
| CO-R16.S12-SD-170 | Trench Backfilling and Compaction Works for Catch Basins of Storm Drainage Network-[Road 16]-[SW-12] | 2025-08-30 → 2025-07-21 A (-40d) | 2025-09-09 → 2025-07-21 A (-50d) | 0% → 100% | 346d → none | CO-R16.S12-SD-160 → CO-R16.S12-SD-150 | resources Skilled Labor/Surveyor [9.12 h]; Foreman [9.12 h]; Excavator [80 h]; Pipe with diameter 300mm ; depth: 0 - 1.5m [75.24]; Pipe with diameter 400mm ; depth: 0 - 1.5m [4.01] → Skilled Labor/Surveyor [8 h]; Foreman [8 h]; Excavator [80 h]; Pipe with diameter 300mm ; depth: 0 - 1.5m [52.78]; Pipe with diameter 400mm ; depth: 0 - 1.5m [3.22] |
| CO-R16.S12-SD-160 | Testing Works for Catch Basins of Storm Drainage Network-[Road 16]-[SW-12] | 2025-08-25 → 2026-06-04 A (+283d) | 2025-08-28 → 2026-07-13 A (+319d) | 0% → 100% | 346d → none |  | resources Labor/Helper [93.17 h]; Skilled Labor/Surveyor [18.23 h]; Foreman [19.63 h]; Plumber [36.48 h]; Excavator [32 h]; Pipe with diameter 300mm ; depth: 0 - 1.5m [37.12]; Pipe with diameter 400mm ; depth: 0 - 1.5m [3.01] → Labor/Helper [64 h]; Skilled Labor/Surveyor [4 h]; Foreman [4 h]; Plumber [32 h]; Excavator [32 h]; Pipe with diameter 300mm ; depth: 0 - 1.5m [26.39]; Pipe with diameter 400mm ; depth: 0 - 1.5m [1.61] |
| PW | **Potable Water Network** | 2026-03-15 → 2025-04-21 (-328d) | 2026-04-18 → 2026-11-02 (+198d) |  |  |  |  |
| ML | **Main Line Sections** | 2026-03-15 → 2025-04-21 (-328d) | 2026-04-07 → 2025-06-10 (-301d) |  |  |  |  |
| CO-R16.S12-PW-100 | Trench Excavation and Bedding Works for Main Lines of Potable Water Network-[Road 16]-[SW-12] | 2026-03-15 → 2025-04-21 A (-328d) | 2026-03-24 → 2025-04-26 A (-332d) | 0% → 100% | 122d → none | CO-R16.S12-EW-110, CO-R16.S12-EW-100, CO-R16.S12-SW-130, CO-R16.S12-SD-130 → CO-R16.S12-EW-110, CO-R16.S12-EW-100 | resources Skilled Labor/Surveyor [5.7 h]; Foreman [5.7 h]; Excavator [48 h]; Pipe with diameter 200mm; in depth 0.0m - 1.5m [184.58] → Skilled Labor/Surveyor [5 h]; Foreman [5 h]; Excavator [48 h]; Pipe with diameter 200mm; in depth 0.0m - 1.5m [130.08] |
| CO-R16.S12-PW-110 | Pipes Laying and accessories for Main Lines of Potable Water Network-[Road 16]-[SW-12] | 2026-03-25 → 2025-04-29 A (-330d) | 2026-03-31 → 2025-05-30 A (-305d) | 0% → 100% | 122d → none | CO-R16.S12-PW-100, CO-R15.S10-PW-110, PRO-R16-PW-DL-100 FF+3d, PRO-R16-PW-DL-110 FF+3d → CO-R16.S12-PW-100, PRO-R16-PW-DL-100 FF+3d | resources Labor/Helper [109.43 h]; Skilled Labor/Surveyor [5.7 h]; Foreman [5.7 h]; Plumber [75 h]; Excavator [48 h]; Pipe with diameter 200mm; in depth 0.0m - 1.5m [461.44] → Labor/Helper [96 h]; Skilled Labor/Surveyor [5 h]; Foreman [5 h]; Plumber [48 h]; Excavator [48 h]; Pipe with diameter 200mm; in depth 0.0m - 1.5m [325.21] |
| CO-R16.S12-PW-130 | Trench Backfilling and Compaction Works for Main Lines of Potable Water Network-[Road 16]-[SW-12] | 2026-04-01 → 2025-06-01 A (-304d) | 2026-04-07 → 2025-06-10 A (-301d) | 0% → 100% | 131d → none | CO-R16.S12-PW-110, CO-R15.S10-PW-130, CO-R16.S12-PW-210 FF → CO-R16.S12-PW-110 | resources Skilled Labor/Surveyor [5.7 h]; Foreman [5.7 h]; Eq. Operator [5.7 h]; Loader [46 h]; Compactor [46 h]; Water Tank [12 h]; Pipe with diameter 200mm; in depth 0.0m - 1.5m [184.58] → Skilled Labor/Surveyor [5 h]; Foreman [5 h]; Eq. Operator [5 h]; Loader [46 h]; Compactor [46 h]; Water Tank [12 h]; Pipe with diameter 200mm; in depth 0.0m - 1.5m [130.08] |
| VC | **Valve Chamber** | 2026-04-01 → 2026-07-09 (+99d) | 2026-04-07 → 2026-07-12 (+96d) |  |  |  |  |
| CO-R16.S12-PW-210 | Installation Works for Main Line Valves and Valve Chambers of Potable Water Network-[Road 16]-[SW-12] | 2026-04-01 → 2026-07-09 A (+99d) | 2026-04-07 → 2026-07-12 A (+96d) | 0% → 100% | 131d → none | CO-R16.S12-PW-110 → CO-R16.S12-PW-110, PRO-R16-PW-DL-110 | resources Labor/Helper [44.86 h]; Plumber [44.86 h]; Gate valves dia(200)mm on pipes with dia (200) mm. [7.02] → Labor/Helper [40 h]; Plumber [40 h]; Gate valves dia(200)mm on pipes with dia (200) mm. [5] |
| FH | **Fire Hydrant** | 2026-03-29 → 2026-10-06 (+191d) | 2026-04-18 → 2026-11-02 (+198d) |  |  |  |  |
| CO-R16.S12-PW-140 | Excavation Works for Fire Hydrants of Potable Water Network-[Road 16]-[SW-12] | 2026-03-29 → 2026-10-06 (+191d) | 2026-04-04 → 2026-10-12 (+191d) |  | 122d → 2d |  | resources Skilled Labor/Surveyor [5.61 h]; Foreman [5.61 h]; Excavator [48 h]; 3-outlet fire hydrant (2 x 2.5 inch and 1 x 4 inch) in the form of a separate dry vacuum cylinder [1] → Skilled Labor/Surveyor [5 h]; Foreman [5 h]; Excavator [48 h]; 3-outlet fire hydrant (2 x 2.5 inch and 1 x 4 inch) in the form of a separate dry vacuum cylinder [0.6] |
| CO-R16.S12-PW-150 | Installation Works for Fire Hydrant of Potable Water Network-[Road 16]-[SW-12] | 2026-04-05 → 2026-10-20 (+198d) | 2026-04-11 → 2026-10-26 (+198d) |  | 122d → -4d |  | resources Labor/Helper [107.67 h]; Skilled Labor/Surveyor [5.61 h]; Foreman [5.61 h]; Plumber [107.67 h]; 3-outlet fire hydrant (2 x 2.5 inch and 1 x 4 inch) in the form of a separate dry vacuum cylinder [4.01] → Labor/Helper [96 h]; Skilled Labor/Surveyor [5 h]; Foreman [5 h]; Plumber [96 h]; 3-outlet fire hydrant (2 x 2.5 inch and 1 x 4 inch) in the form of a separate dry vacuum cylinder [2.6] |
| CO-R16.S12-PW-160 | Trench Backfilling and Compaction Works for Fire Hydrants of Potable Water Network-[Road 16]-[SW-12] | 2026-04-12 → 2026-10-27 (+198d) | 2026-04-18 → 2026-11-02 (+198d) |  | 122d → -4d |  | resources Skilled Labor/Surveyor [5.61 h]; Foreman [5.61 h]; Excavator [48 h]; 3-outlet fire hydrant (2 x 2.5 inch and 1 x 4 inch) in the form of a separate dry vacuum cylinder [1] → Skilled Labor/Surveyor [5 h]; Foreman [5 h]; Excavator [48 h]; 3-outlet fire hydrant (2 x 2.5 inch and 1 x 4 inch) in the form of a separate dry vacuum cylinder [0.8] |
| TE | **Telecom Network** | 2025-12-08 → 2025-08-20 (-110d) | 2026-08-24 → 2025-09-01 (-357d) |  |  |  |  |
| PD | **Ducts Works** | 2025-12-08 → 2025-08-20 (-110d) | 2026-08-24 → 2025-09-01 (-357d) |  |  |  |  |

| ID | Task | Start | Finish | Complete | Total float | Predecessors | Other |
| --- | --- | --- | --- | --- | --- | --- | --- |
| CO-R16.S12-TE-100 | Trench Excavation and Bedding Works for Ducts of Telecom Network-[Road 16]-[SW-12] | 2025-12-08 → 2025-08-20 A (-110d) | 2025-12-15 → 2025-08-23 A (-114d) | 0% → 100% | 167d → none |  | resources Skilled Labor/Surveyor [6.84 h]; Foreman [6.84 h]; Excavator [56 h]; 6-way ducts, 50mm dia. HDPE [30.09]; Road crossing ducts (6-way) [3.01] → Skilled Labor/Surveyor [6 h]; Foreman [6 h]; Excavator [56 h]; 6-way ducts, 50mm dia. HDPE [21]; Road crossing ducts (6-way) [2] |
| CO-R16.S12-TE-110 | Pipes Laying Works for Ducts of Telecom Network-[Road 16]-[SW-12] | 2026-08-01 → 2025-08-24 A (-342d) | 2026-08-08 → 2025-08-26 A (-347d) | 0% → 100% | 0d → none |  | resources Labor/Helper [127.67 h]; Skilled Labor/Surveyor [6.84 h]; Foreman [6.84 h]; Plumber [63.83 h]; Excavator [56 h]; JCB [28 h]; Truck [56 h]; 6-way ducts, 50mm dia. HDPE [178.56]; Road crossing ducts (6-way) [16.05] → Labor/Helper [112 h]; Skilled Labor/Surveyor [6 h]; Foreman [6 h]; Plumber [56 h]; Excavator [56 h]; JCB [28 h]; Truck [56 h]; 6-way ducts, 50mm dia. HDPE [126]; Road crossing ducts (6-way) [11] |
| CO-R16.S12-TE-120 | Pouring Plain Concrete Above Ducts of Telecom Network-[Road 16]-[SW-12] | 2026-08-09 → 2025-08-27 A (-347d) | 2026-08-16 → 2025-08-30 A (-351d) | 0% → 100% | 0d → none |  | resources Skilled Labor/Surveyor [6.84 h]; Foreman [6.84 h]; Cons. Carpenter [127.67 h]; Block Mason [63.83 h]; 6-way ducts, 50mm dia. HDPE [30.09]; Road crossing ducts (6-way) [3.01] → Skilled Labor/Surveyor [6 h]; Foreman [6 h]; Cons. Carpenter [112 h]; Block Mason [56 h]; 6-way ducts, 50mm dia. HDPE [21]; Road crossing ducts (6-way) [2] |
| CO-R16.S12-TE-130 | Trench Backfilling and Compaction Works for Ducts of Telecom Network-[Road 16]-[SW-12] | 2026-08-17 → 2025-08-31 A (-351d) | 2026-08-24 → 2025-09-01 A (-357d) | 0% → 100% | 0d → none |  | resources Skilled Labor/Surveyor [6.84 h]; Foreman [6.84 h]; Excavator [56 h]; 6-way ducts, 50mm dia. HDPE [59.18]; Road crossing ducts (6-way) [6.02] → Skilled Labor/Surveyor [6 h]; Foreman [6 h]; Excavator [56 h]; 6-way ducts, 50mm dia. HDPE [42]; Road crossing ducts (6-way) [4] |
| MH | **Manholes Works** | 2026-08-01 → 2025-08-27 (-339d) | 2026-08-24 → 2025-08-30 (-359d) |  |  |  |  |
| CO-R16.S12-TE-140 | Excavation Works for Manholes of Telecom Network-[Road 16]-[SW-12] | 2026-08-01 → 2025-08-27 A (-339d) | 2026-08-08 → 2025-08-27 A (-346d) | 0% → 100% | 0d → none | CO-R15.S10-TE-140, CO-R16.S11-TE-140, CO-R16.S12-TE-100 → CO-R15.S10-TE-140, CO-R16.S11-TE-140 SS, CO-R16.S12-TE-100 | resources Skilled Labor/Surveyor [6.84 h]; Foreman [6.84 h]; Excavator [56 h]; Manhole Type 2 (2000x1000x1000) [0.4] → Skilled Labor/Surveyor [6 h]; Foreman [6 h]; Excavator [56 h]; Manhole Type 2 (2000x1000x1000) [0.4] |
| CO-R16.S12-TE-150 | Installation Works for Manholes of Telecom Network-[Road 16]-[SW-12] | 2026-08-09 → 2025-08-28 A (-346d) | 2026-08-16 → 2025-08-28 A (-353d) | 0% → 100% | 0d → none |  | resources Skilled Labor/Surveyor [6.84 h]; Foreman [6.84 h]; Excavator [56 h]; Manhole Type 1 (2000x1000x1000) [1]; Manhole Type 2 (2000x1000x1000) [1] → Skilled Labor/Surveyor [6 h]; Foreman [6 h]; Excavator [56 h]; Manhole Type 1 (2000x1000x1000) [1]; Manhole Type 2 (2000x1000x1000) [1.2] |
| CO-R16.S12-TE-160 | Backfilling Works for Manholes of Telecom Network-[Road 16]-[SW-12] | 2026-08-17 → 2025-08-30 A (-352d) | 2026-08-24 → 2025-08-30 A (-359d) | 0% → 100% | 0d → none |  | resources Skilled Labor/Surveyor [6.84 h]; Foreman [6.84 h]; Excavator [56 h]; Manhole Type 2 (2000x1000x1000) [0.4] → Skilled Labor/Surveyor [6 h]; Foreman [6 h]; Excavator [56 h]; Manhole Type 2 (2000x1000x1000) [0.4] |
| RD | **Road Works** | 2026-08-25 → 2025-08-04 (-386d) | 2026-11-19 → 2027-09-06 (+291d) |  |  |  |  |
| RD | **Pre-Bituminous Construction** | 2026-08-25 → 2025-08-04 (-386d) | 2026-11-04 → 2025-10-20 (-380d) |  |  |  |  |
| CO-R16.S12-RD-P-100 | Capping and Subgrade Layer for Road Works-[Road 16]-[SW-12] | 2026-08-25 → 2025-08-04 A (-386d) | 2026-09-14 → 2025-08-11 A (-399d) | 0% → 100% | 16d → none | CO-R16.S12-SD-130, CO-R16.S12-SW-130, CO-R16.S12-PW-130, CO-R16.S12-PW-160, PRO-R16-RD-DL-100 FF+3d, CO-R16.S12-TE-130, CO-R16.S12-TE-160 → CO-R16.S12-SD-130, CO-R16.S12-SW-130, CO-R16.S12-PW-130, PRO-R16-RD-DL-100 FF+3d | resources Labor/Helper [907.38 h]; Skilled Labor/Surveyor [453.69 h]; Loader [144 h]; Grader [144 h]; Road Roller [144 h]; Water Tank [144 h]; 300mm capping layer underneath subgrade , CBR?15% [2252.03]; 300mm thick Subgrade, including subgrade preparation, CBR?25% [2252.03] → Labor/Helper [288 h]; Skilled Labor/Surveyor [144 h]; Loader [144 h]; Grader [144 h]; Road Roller [144 h]; Water Tank [144 h]; 300mm capping layer underneath subgrade , CBR?15% [1587.47]; 300mm thick Subgrade, including subgrade preparation, CBR?25% [1587.47] |
| CO-R16.S12-RD-P-110 | Aggregate Base Course Layer for Road Works-[Road 16]-[SW-12] | 2026-10-15 → 2025-09-17 A (-393d) | 2026-11-04 → 2025-10-20 A (-380d) | 0% → 100% | 5d → none |  | resources Labor/Helper [660.67 h]; Skilled Labor/Surveyor [330.34 h]; Foreman [330.34 h]; Loader [144 h]; Grader [144 h]; Road Roller [144 h]; Aggregate base course 200mm thick after compaction in two layers(Grading 1); CBR?80%; including watering, compaction and testing [1501.69] → Labor/Helper [288 h]; Skilled Labor/Surveyor [144 h]; Foreman [144 h]; Loader [144 h]; Grader [144 h]; Road Roller [144 h]; Aggregate base course 200mm thick after compaction in two layers(Grading 1); CBR?80%; including watering, compaction and testing [1058.42] |
| LS | **Pavement Works** | 2026-10-19 → 2026-08-25 (-55d) | 2026-11-19 → 2027-09-06 (+291d) |  |  |  |  |
| CO-R16.S12-RD-P-120 | Fixing of Curbstone for Sidewalks Pavement-[Road 16]-[SW-12] | 2026-10-19 → 2026-08-25 A (-55d) | 2026-11-08 → 2026-08-31 A (-69d) | 0% → 100% | 5d → none |  | resources Labor/Helper [318.71 h]; Block Mason [956.12 h]; Precast Concrete Kerb, Type K1 [831.6]; Precast Concrete Kerb, Type L1 [1649.15] → Labor/Helper [288 h]; Block Mason [864 h]; Precast Concrete Kerb, Type K1 [585.69]; Precast Concrete Kerb, Type L1 [1162.07] |
| CO-R16.S12-RD-P-130 | Fixing of Interlock Tiles for Sidewalks Pavement-[Road 16]-[SW-12] | 2026-11-09 → 2026-08-25 A (-76d) | 2026-11-19 → 2027-09-06 (+291d) | 0% → 90% | 0d → -227d |  | resources Labor/Helper [196.09 h]; Block Mason [588.28 h]; Interlocking block pavers for sidewalk/footpath 60mm thick on and including 30mm Sand Bedding, 200mm Aggregate subbase, all in accordance with authority standards and complete as per specifications [1484.64]; Extraover for Pedestrian ramps [4.01] → Labor/Helper [288 h]; Block Mason [864 h]; Interlocking block pavers for sidewalk/footpath 60mm thick on and including 30mm Sand Bedding, 200mm Aggregate subbase, all in accordance with authority standards and complete as per specifications [1045.87]; Extraover for Pedestrian ramps [3] |
| 9 | **Road 17 Local 1 ( 500 LM )** | 2025-03-05 → 2025-02-27 (-6d) | 2026-12-01 → 2026-11-26 (-5d) |  |  |  |  |
| SW_15 | **SW_13** | 2025-03-05 → 2025-02-27 (-6d) | 2026-11-30 → 2026-09-19 (-72d) |  |  |  |  |
| EW | **Earthworks** | 2025-03-05 → 2025-02-27 (-6d) | 2025-04-03 → 2025-03-07 (-27d) |  |  |  |  |
| EW | **Earthworks** | 2025-03-05 → 2025-02-27 (-6d) | 2025-04-03 → 2025-03-07 (-27d) |  |  |  |  |
| CO-R17.S13-EW-100 | Roadway Excavation Works Upto Design Level for Earthworks-[Road 17]-[SW-13] | 2025-03-05 → 2025-02-27 A (-6d) | 2025-03-16 → 2025-03-03 A (-13d) | 0% → 100% | 11d → none |  | resources Labor/Helper [273.57 h]; Skilled Labor/Surveyor [34.2 h]; Foreman [34.2 h]; Dump Truck [480 h]; Water Tank [240 h]; Dozer [240 h]; Roadway Excavation for cuttings; on any type of material for all depths including trimming and Preparation of excavated surfaces and disposal. [10085.5] → Labor/Helper [240 h]; Skilled Labor/Surveyor [30 h]; Foreman [30 h]; Dump Truck [480 h]; Water Tank [240 h]; Dozer [240 h]; Roadway Excavation for cuttings; on any type of material for all depths including trimming and Preparation of excavated surfaces and disposal. [7106.31] |
| CO-R17.S13-EW-110 | Embankments Works Upto Design Level for Earthworks-[Road 17]-[SW-13] | 2025-03-17 → 2025-03-04 A (-13d) | 2025-04-03 → 2025-03-07 A (-27d) | 0% → 100% | 17d → none |  | resources Labor/Helper [547.15 h]; Skilled Labor/Surveyor [68.39 h]; Foreman [68.39 h]; Dump Truck [960 h]; Water Tank [480 h]; Dozer [480 h]; Embankments to the ROW, with suitable material other than top soil or rock according to specifications [16978] → Labor/Helper [480 h]; Skilled Labor/Surveyor [60 h]; Foreman [60 h]; Dump Truck [960 h]; Water Tank [480 h]; Dozer [480 h]; Embankments to the ROW, with suitable material other than top soil or rock according to specifications [11962.6] |
| SW | **Sewage Network** | 2025-04-09 → 2025-05-20 (+41d) | 2025-06-14 → 2025-09-17 (+95d) |  |  |  |  |
| ML | **Main Line Sections** | 2025-04-09 → 2025-05-20 (+41d) | 2025-06-14 → 2025-06-21 (+7d) |  |  |  |  |
| CO-R17.S13-SW-100 | Trench Excavation and Bedding Works for Main Lines of Sewage Network-[Road 17]-[SW-13] | 2025-04-09 → 2025-05-20 A (+41d) | 2025-04-22 → 2025-05-22 A (+30d) | 0% → 100% | 13d → none | CO-R17.S13-EW-110, ENG-MS-SW-ML-A-110, ENG-SH-SW-ML-A-110, CO-R18.S16-SW-220 → CO-R17.S13-EW-110, ENG-MS-SW-ML-A-110, ENG-SH-SW-ML-A-110, CO-R18.S16-SW-220 SS | resources Labor/Helper [109.43 h]; Foreman [109.43 h]; Excavator [96 h]; Nominal bore : 160mm; Depth : 1.5m - 2.5m [35.11]; Nominal bore : 200mm; Depth : 0.0m - 1.5m [3.01]; Nominal bore : 200mm; Depth : 1.5m - 2.5m [7.02]; Nominal bore : 200mm; Depth : 2.5m - 3.5m [16.05]; Nominal bore : 200mm; Depth : 3.5m - 4.5m [11.03]; Nominal bore : 200mm; Depth : 4.5m -5.5m [6.02]; Nominal bore : 200mm; Depth : 5.5m - 6.5m [8.03] → Labor/Helper [96 h]; Foreman [96 h]; Excavator [96 h]; Nominal bore : 160mm; Depth : 1.5m - 2.5m [25.4]; Nominal bore : 200mm; Depth : 0.0m - 1.5m [2.49]; Nominal bore : 200mm; Depth : 1.5m - 2.5m [4.59]; Nominal bore : 200mm; Depth : 2.5m - 3.5m [11.34]; Nominal bore : 200mm; Depth : 3.5m - 4.5m [8.46]; Nominal bore : 200mm; Depth : 4.5m -5.5m [4.28]; Nominal bore : 200mm; Depth : 5.5m - 6.5m [5.51] |
| CO-R17.S13-SW-120 | Pipes Laying Works for Main Lines of Sewage Network-[Road 17]-[SW-13] | 2025-04-30 → 2025-06-08 A (+39d) | 2025-05-13 → 2025-06-14 A (+32d) | 0% → 100% | 13d → none |  | resources Labor/Helper [218.86 h]; Skilled Labor/Surveyor [11.4 h]; Foreman [11.4 h]; Plumber [109.43 h]; Excavator [96 h]; Nominal bore : 160mm; Depth : 1.5m - 2.5m [108.34]; Nominal bore : 200mm; Depth : 0.0m - 1.5m [10.03]; Nominal bore : 200mm; Depth : 1.5m - 2.5m [20.06]; Nominal bore : 200mm; Depth : 2.5m - 3.5m [48.15]; Nominal bore : 200mm; Depth : 3.5m - 4.5m [35.11]; Nominal bore : 200mm; Depth : 4.5m -5.5m [18.06]; Nominal bore : 200mm; Depth : 5.5m - 6.5m [24.08] → Labor/Helper [192 h]; Skilled Labor/Surveyor [10 h]; Foreman [10 h]; Plumber [96 h]; Excavator [96 h]; Nominal bore : 160mm; Depth : 1.5m - 2.5m [76.2]; Nominal bore : 200mm; Depth : 0.0m - 1.5m [7.46]; Nominal bore : 200mm; Depth : 1.5m - 2.5m [13.77]; Nominal bore : 200mm; Depth : 2.5m - 3.5m [34.03]; Nominal bore : 200mm; Depth : 3.5m - 4.5m [25.39]; Nominal bore : 200mm; Depth : 4.5m -5.5m [12.85]; Nominal bore : 200mm; Depth : 5.5m - 6.5m [16.52] |
| CO-R17.S13-SW-130 | Trench Backfilling and Compaction Works for Main Lines of Sewage Network-[Road 17]-[SW-13] | 2025-05-29 → 2025-06-15 A (+17d) | 2025-06-14 → 2025-06-21 A (+7d) | 0% → 100% | 0d → none | ENG-SH-SW-ML-A-110 FF, ENG-MS-SW-ML-A-110 FF, CO-R17.S13-SW-120, CO-R17.S13-SW-210 FF, CO-R18.S16-SW-240 → ENG-SH-SW-ML-A-110 FF, ENG-MS-SW-ML-A-110 FF, CO-R17.S13-SW-120, CO-R18.S16-SW-240 | resources Skilled Labor/Surveyor [11.4 h]; Foreman [11.4 h]; Excavator [96 h]; Nominal bore : 160mm; Depth : 1.5m - 2.5m [18.06]; Nominal bore : 200mm; Depth : 0.0m - 1.5m [1]; Nominal bore : 200mm; Depth : 1.5m - 2.5m [3.01]; Nominal bore : 200mm; Depth : 2.5m - 3.5m [8.03]; Nominal bore : 200mm; Depth : 3.5m - 4.5m [6.02]; Nominal bore : 200mm; Depth : 4.5m -5.5m [3.01]; Nominal bore : 200mm; Depth : 5.5m - 6.5m [4.01] → Skilled Labor/Surveyor [10 h]; Foreman [10 h]; Excavator [96 h]; Nominal bore : 160mm; Depth : 1.5m - 2.5m [12.7]; Nominal bore : 200mm; Depth : 0.0m - 1.5m [1.24]; Nominal bore : 200mm; Depth : 1.5m - 2.5m [2.29]; Nominal bore : 200mm; Depth : 2.5m - 3.5m [5.67]; Nominal bore : 200mm; Depth : 3.5m - 4.5m [4.23]; Nominal bore : 200mm; Depth : 4.5m -5.5m [2.14]; Nominal bore : 200mm; Depth : 5.5m - 6.5m [2.75] |
| 1 | **Manholes** | 2025-04-30 → 2025-06-11 (+42d) | 2025-05-15 → 2025-09-17 (+125d) |  |  |  |  |
| CO-R17.S13-SW-160 | Excavation Works for Main Line Manholes of Sewage Network-[Road 17]-[SW-13] | 2025-04-30 → 2025-06-11 A (+42d) | 2025-04-30 → 2025-06-14 A (+45d) | 0% → 100% | 21.75d → none |  | resources Labor/Helper [45.6 h]; Skilled Labor/Surveyor [22.8 h]; Excavator [40 h]; Depth: not exceeding 1.5m [0.15]; Depth: 1.5 - 2.5m [0.45]; Depth: 2.5 - 3.5m [0.3]; Depth: 5.5 - 6.5m [0.15]; Depth:6.5 - 7.5m [0.15] → Labor/Helper [40 h]; Skilled Labor/Surveyor [20 h]; Excavator [40 h]; Depth: not exceeding 1.5m [0.15]; Depth: 1.5 - 2.5m [0.45]; Depth: 2.5 - 3.5m [0.3]; Depth: 5.5 - 6.5m [0.15]; Depth:6.5 - 7.5m [0.15] |
| CO-R17.S13-SW-170 | Installation RC Footing Works for Main Line Manholes of Sewage Network-[Road 17]-[SW-13] | 2025-05-01 → 2025-06-15 A (+45d) | 2025-05-04 → 2025-06-16 A (+43d) | 0% → 100% | 21.75d → none |  | resources Cons. Carpenter [205.18 h]; Steel Fixer [205.18 h]; Depth: not exceeding 1.5m [0.1]; Depth: 1.5 - 2.5m [0.3]; Depth: 2.5 - 3.5m [0.2]; Depth: 5.5 - 6.5m [0.1]; Depth:6.5 - 7.5m [0.1] → Cons. Carpenter [180 h]; Steel Fixer [180 h]; Depth: not exceeding 1.5m [0.1]; Depth: 1.5 - 2.5m [0.3]; Depth: 2.5 - 3.5m [0.2]; Depth: 5.5 - 6.5m [0.1]; Depth:6.5 - 7.5m [0.1] |
| CO-R17.S13-SW-180 | Install Grp Liner Wall Works for Main Line Manholes of Sewage Network-[Road 17]-[SW-13] | 2025-05-04 → 2025-06-17 A (+44d) | 2025-05-08 → 2025-06-18 A (+41d) | 0% → 100% | 21.75d → none |  | resources Labor/Helper [72.95 h]; Plumber [72.95 h]; Depth: not exceeding 1.5m [0.4]; Depth: 1.5 - 2.5m [1]; Depth: 2.5 - 3.5m [1]; Depth: 5.5 - 6.5m [0.4]; Depth:6.5 - 7.5m [0.4] → Labor/Helper [64 h]; Plumber [64 h]; Depth: not exceeding 1.5m [0.4]; Depth: 1.5 - 2.5m [1.2]; Depth: 2.5 - 3.5m [0.8]; Depth: 5.5 - 6.5m [0.4]; Depth:6.5 - 7.5m [0.4] |
| CO-R17.S13-SW-200 | Backfilling Works for Main Line Manholes of Sewage Network-[Road 17]-[SW-13] | 2025-05-10 → 2025-06-19 A (+40d) | 2025-05-14 → 2025-06-21 A (+38d) | 0% → 100% | 21.75d → none | CO-R17.S13-SW-190 → CO-R17.S13-SW-180 | resources Labor/Helper [72.95 h]; Skilled Labor/Surveyor [36.48 h]; Excavator [64 h]; Depth: not exceeding 1.5m [0.15]; Depth: 1.5 - 2.5m [0.45]; Depth: 2.5 - 3.5m [0.3]; Depth: 5.5 - 6.5m [0.15]; Depth:6.5 - 7.5m [0.15] → Labor/Helper [64 h]; Skilled Labor/Surveyor [32 h]; Excavator [64 h]; Depth: not exceeding 1.5m [0.15]; Depth: 1.5 - 2.5m [0.45]; Depth: 2.5 - 3.5m [0.3]; Depth: 5.5 - 6.5m [0.15]; Depth:6.5 - 7.5m [0.15] |
| CO-R17.S13-SW-190 | Pouring Grp Liner Wall Works for Main Line Manholes of Sewage Network-[Road 17]-[SW-13] | 2025-05-08 → 2025-09-16 A (+131d) | 2025-05-10 → 2025-09-16 A (+129d) | 0% → 100% | 21.75d → none |  | resources Cons. Carpenter [91.19 h]; Steel Fixer [91.19 h]; Depth: not exceeding 1.5m [0.05]; Depth: 1.5 - 2.5m [0.15]; Depth: 2.5 - 3.5m [0.1]; Depth: 5.5 - 6.5m [0.05]; Depth:6.5 - 7.5m [0.05] → Cons. Carpenter [80 h]; Steel Fixer [80 h]; Depth: not exceeding 1.5m [0.05]; Depth: 1.5 - 2.5m [0.15]; Depth: 2.5 - 3.5m [0.1]; Depth: 5.5 - 6.5m [0.05]; Depth:6.5 - 7.5m [0.05] |
| CO-R17.S13-SW-210 | Testing Works for Main Line Manholes of Sewage Network-[Road 17]-[SW-13] | 2025-05-14 → 2025-09-17 A (+126d) | 2025-05-15 → 2025-09-17 A (+125d) | 0% → 100% | 21.75d → none | CO-R17.S13-SW-200 → CO-R17.S13-SW-200, CO-R17.S13-SW-190 | resources Labor/Helper [45.6 h]; Plumber [45.6 h]; Depth: not exceeding 1.5m [0.05]; Depth: 1.5 - 2.5m [0.15]; Depth: 2.5 - 3.5m [0.1]; Depth: 5.5 - 6.5m [0.05]; Depth:6.5 - 7.5m [0.05] → Labor/Helper [40 h]; Plumber [40 h]; Depth: not exceeding 1.5m [0.05]; Depth: 1.5 - 2.5m [0.15]; Depth: 2.5 - 3.5m [0.1]; Depth: 5.5 - 6.5m [0.05]; Depth:6.5 - 7.5m [0.05] |
| SD | **Storm Drainage Network** | 2025-06-02 → 2025-06-03 (+1d) | 2026-04-05 → 2026-07-13 (+99d) |  |  |  |  |
| ML | **Main Line Sections** | 2025-06-02 → 2025-06-22 (+20d) | 2026-04-05 → 2025-06-30 (-279d) |  |  |  |  |
| CO-R17.S13-SD-100 | Trench Excavation and Bedding Works for Main Lines of Storm Drainage Network-[Road 17]-[SW-13] | 2025-06-02 → 2025-06-22 A (+20d) | 2025-06-17 → 2025-06-23 A (+6d) | 0% → 100% | 74d → none |  | resources Skilled Labor/Surveyor [13.68 h]; Foreman [13.68 h]; Excavator [112 h]; Pipe with diameter 600mm ; depth: 1.51m - 2.5m [13.04]; Pipe with diameter 700mm ; depth: 1.51m - 2.5m [27.08]; Pipe with diameter 1000mm ; depth: 1.51m - 2.5m [20.06]; Pipe with diameter 1000mm ; depth: 2.51 - 3.5m [20.06] → Skilled Labor/Surveyor [12 h]; Foreman [12 h]; Excavator [112 h]; Pipe with diameter 600mm ; depth: 1.51m - 2.5m [8.74]; Pipe with diameter 700mm ; depth: 1.51m - 2.5m [19.05]; Pipe with diameter 1000mm ; depth: 1.51m - 2.5m [14]; Pipe with diameter 1000mm ; depth: 2.51 - 3.5m [14] |
| CO-R17.S13-SD-120 | Pipes Laying Works for Main Lines of Storm Drainage Network-[Road 17]-[SW-13] | 2025-06-18 → 2025-06-24 A (+6d) | 2025-07-10 → 2025-06-28 A (-12d) | 0% → 100% | 74d → none |  | resources Labor/Helper [364.77 h]; Skilled Labor/Surveyor [18.24 h]; Foreman [18.24 h]; Plumber [182.38 h]; Excavator [160 h]; Pipe with diameter 600mm ; depth: 1.51m - 2.5m [37.12]; Pipe with diameter 700mm ; depth: 1.51m - 2.5m [81.25]; Pipe with diameter 1000mm ; depth: 1.51m - 2.5m [59.18]; Pipe with diameter 1000mm ; depth: 2.51 - 3.5m [59.18] → Labor/Helper [320 h]; Skilled Labor/Surveyor [16 h]; Foreman [16 h]; Plumber [160 h]; Excavator [160 h]; Pipe with diameter 600mm ; depth: 1.51m - 2.5m [26.23]; Pipe with diameter 700mm ; depth: 1.51m - 2.5m [57.16]; Pipe with diameter 1000mm ; depth: 1.51m - 2.5m [42]; Pipe with diameter 1000mm ; depth: 2.51 - 3.5m [42] |
| CO-R17.S13-SD-130 | Trench Backfilling and Compaction Works for Main Lines of Storm Drainage Network-[Road 17]-[SW-13] | 2026-03-10 → 2025-06-29 A (-254d) | 2026-04-05 → 2025-06-30 A (-279d) | 0% → 100% | 147d → none |  | resources Skilled Labor/Surveyor [18.24 h]; Foreman [18.24 h]; Excavator [160 h]; Pipe with diameter 600mm ; depth: 1.51m - 2.5m [6.02]; Pipe with diameter 700mm ; depth: 1.51m - 2.5m [14.04]; Pipe with diameter 1000mm ; depth: 1.51m - 2.5m [10.03]; Pipe with diameter 1000mm ; depth: 2.51 - 3.5m [10.03] → Skilled Labor/Surveyor [16 h]; Foreman [16 h]; Excavator [160 h]; Pipe with diameter 600mm ; depth: 1.51m - 2.5m [4.37]; Pipe with diameter 700mm ; depth: 1.51m - 2.5m [9.53]; Pipe with diameter 1000mm ; depth: 1.51m - 2.5m [7]; Pipe with diameter 1000mm ; depth: 2.51 - 3.5m [7] |
| MH | **Manholes** | 2025-06-18 → 2025-06-03 (-15d) | 2025-07-03 → 2026-07-13 (+375d) |  |  |  |  |
| CO-R17.S13-SD-220 | Backfilling Works for Manholes of Storm Drainage Network-[Road 17]-[SW-13] | 2025-06-26 → 2025-06-03 A (-23d) | 2025-07-03 → 2025-06-08 A (-25d) | 0% → 100% | 74d → none | CO-R17.S13-SD-210 → CO-R17.S13-SD-200 | resources Labor/Helper [191.5 h]; Skilled Labor/Surveyor [95.75 h]; Excavator [168 h]; MH ; depth: 0.0m - 1.5m [0.2]; MH ; depth: 1.51m - 2.5m [0.4]; MH ; depth: 2.51 - 3.5m [0.2]; MH ; depth: 1.51m - 2.5m [0.2] → Labor/Helper [168 h]; Skilled Labor/Surveyor [84 h]; Excavator [168 h]; MH ; depth: 0.0m - 1.5m [0.2]; MH ; depth: 1.51m - 2.5m [0.4]; MH ; depth: 2.51 - 3.5m [0.2]; MH ; depth: 1.51m - 2.5m [0.2] |
| CO-R17.S13-SD-180 | Trench Excavation and Bedding Works for Manholes of Storm Drainage Network-[Road 17]-[SW-13] | 2025-06-18 → 2025-06-29 A (+11d) | 2025-06-18 → 2025-06-29 A (+11d) | 0% → 100% | 74d → none |  | resources Labor/Helper [27.36 h]; Skilled Labor/Surveyor [13.68 h]; Excavator [24 h]; MH ; depth: 0.0m - 1.5m [0.15]; MH ; depth: 1.51m - 2.5m [0.3]; MH ; depth: 2.51 - 3.5m [0.15]; MH ; depth: 1.51m - 2.5m [0.15] → Labor/Helper [24 h]; Skilled Labor/Surveyor [12 h]; Excavator [24 h]; MH ; depth: 0.0m - 1.5m [0.15]; MH ; depth: 1.51m - 2.5m [0.3]; MH ; depth: 2.51 - 3.5m [0.15]; MH ; depth: 1.51m - 2.5m [0.15] |
| CO-R17.S13-SD-190 | Install RC Footing Works for Manholes of Storm Drainage Network-[Road 17]-[SW-13] | 2025-06-19 → 2025-06-30 A (+11d) | 2025-06-19 → 2025-06-30 A (+11d) | 0% → 100% | 74d → none |  | resources Cons. Carpenter [54.71 h]; Steel Fixer [54.71 h]; MH ; depth: 0.0m - 1.5m [0.05]; MH ; depth: 1.51m - 2.5m [0.1]; MH ; depth: 2.51 - 3.5m [0.05]; MH ; depth: 1.51m - 2.5m [0.05] → Cons. Carpenter [48 h]; Steel Fixer [48 h]; MH ; depth: 0.0m - 1.5m [0.05]; MH ; depth: 1.51m - 2.5m [0.1]; MH ; depth: 2.51 - 3.5m [0.05]; MH ; depth: 1.51m - 2.5m [0.05] |
| CO-R17.S13-SD-200 | Install RC Wall Rings & Slab Works for Manholes of Storm Drainage Network-[Road 17]-[SW-13] | 2025-06-21 → 2025-07-01 A (+10d) | 2025-06-24 → 2025-07-02 A (+8d) | 0% → 100% | 74d → none |  | resources Cons. Carpenter [218.86 h]; Steel Fixer [218.86 h]; MH ; depth: 0.0m - 1.5m [0.45]; MH ; depth: 1.51m - 2.5m [1]; MH ; depth: 2.51 - 3.5m [0.45]; MH ; depth: 1.51m - 2.5m [0.45] → Cons. Carpenter [192 h]; Steel Fixer [192 h]; MH ; depth: 0.0m - 1.5m [0.45]; MH ; depth: 1.51m - 2.5m [0.9]; MH ; depth: 2.51 - 3.5m [0.45]; MH ; depth: 1.51m - 2.5m [0.45] |
| CO-R17.S13-SD-210 | Testing Works for Manholes of Storm Drainage Network-[Road 17]-[SW-13] | 2025-06-25 → 2026-06-04 A (+344d) | 2025-06-25 → 2026-07-13 A (+383d) | 0% → 100% | 74d → none |  | resources Labor/Helper [93.17 h]; Plumber [30.36 h]; MH ; depth: 0.0m - 1.5m [0.1]; MH ; depth: 1.51m - 2.5m [0.2]; MH ; depth: 2.51 - 3.5m [0.1]; MH ; depth: 1.51m - 2.5m [0.1] → Labor/Helper [24 h]; Plumber [24 h]; MH ; depth: 0.0m - 1.5m [0.1]; MH ; depth: 1.51m - 2.5m [0.2]; MH ; depth: 2.51 - 3.5m [0.1]; MH ; depth: 1.51m - 2.5m [0.1] |
| CB | **Catch Basin Sections** | 2025-07-05 → 2025-06-07 (-28d) | 2025-08-06 → 2026-07-13 (+341d) |  |  |  |  |
| CO-R17.S13-SD-170 | Trench Backfilling and Compaction Works for Catch Basins of Storm Drainage Network-[Road 17]-[SW-13] | 2025-07-30 → 2025-06-07 A (-53d) | 2025-08-06 → 2025-06-10 A (-57d) | 0% → 100% | 73d → none | CO-R17.S13-SD-160 → CO-R17.S13-SD-150 | resources Skilled Labor/Surveyor [6.84 h]; Foreman [6.84 h]; Excavator [56 h]; Pipe with diameter 300mm ; depth: 0 - 1.5m [71.22]; Pipe with diameter 400mm ; depth: 0 - 1.5m [4.01] → Skilled Labor/Surveyor [6 h]; Foreman [6 h]; Excavator [56 h]; Pipe with diameter 300mm ; depth: 0 - 1.5m [50.18]; Pipe with diameter 400mm ; depth: 0 - 1.5m [3.06] |
| CO-R17.S13-SD-140 | Trench Excavation and Bedding Works for Catch Basins of Storm Drainage Network-[Road 17]-[SW-13] | 2025-07-05 → 2025-06-24 A (-11d) | 2025-07-12 → 2025-06-30 A (-12d) | 0% → 100% | 74d → none |  | resources Skilled Labor/Surveyor [6.84 h]; Foreman [6.84 h]; Excavator [56 h]; Pipe with diameter 300mm ; depth: 0 - 1.5m [54.17]; Pipe with diameter 400mm ; depth: 0 - 1.5m [3.01] → Skilled Labor/Surveyor [6 h]; Foreman [6 h]; Excavator [56 h]; Pipe with diameter 300mm ; depth: 0 - 1.5m [37.63]; Pipe with diameter 400mm ; depth: 0 - 1.5m [2.29] |
| CO-R17.S13-SD-150 | Installation and Pipes Laying Connection Works for Catch Basins of Storm Drainage Network-[Road 17]-[SW-13] | 2025-07-14 → 2025-07-01 A (-13d) | 2025-07-21 → 2025-07-06 A (-15d) | 0% → 100% | 73d → none |  | resources Labor/Helper [255.34 h]; Skilled Labor/Surveyor [13.68 h]; Foreman [13.68 h]; Excavator [112 h]; Pipe with diameter 300mm ; depth: 0 - 1.5m [160.5]; Pipe with diameter 400mm ; depth: 0 - 1.5m [10.03] → Labor/Helper [224 h]; Skilled Labor/Surveyor [12 h]; Foreman [12 h]; Excavator [112 h]; Pipe with diameter 300mm ; depth: 0 - 1.5m [112.91]; Pipe with diameter 400mm ; depth: 0 - 1.5m [6.88] |
| CO-R17.S13-SD-160 | Testing Works for Catch Basins of Storm Drainage Network-[Road 17]-[SW-13] | 2025-07-22 → 2026-06-04 A (+317d) | 2025-07-29 → 2026-07-13 A (+349d) | 0% → 100% | 73d → none |  | resources Labor/Helper [127.67 h]; Skilled Labor/Surveyor [18.23 h]; Foreman [19.63 h]; Plumber [63.83 h]; Excavator [56 h]; Pipe with diameter 300mm ; depth: 0 - 1.5m [35.11]; Pipe with diameter 400mm ; depth: 0 - 1.5m [3.01] → Labor/Helper [112 h]; Skilled Labor/Surveyor [6 h]; Foreman [6 h]; Plumber [56 h]; Excavator [56 h]; Pipe with diameter 300mm ; depth: 0 - 1.5m [25.09]; Pipe with diameter 400mm ; depth: 0 - 1.5m [1.53] |
| IR | **Irrigation Network** | 2025-08-07 → 2025-05-01 (-98d) | 2025-09-14 → 2026-07-12 (+301d) |  |  |  |  |
| ML | **Main Line Pipes** | 2025-08-07 → 2025-05-01 (-98d) | 2025-09-14 → 2026-07-12 (+301d) |  |  |  |  |
| CO-R17.S13-IR-100 | Trench Excavation and Bedding Works for Main Lines of Irrigation Network-[Road 17]-[SW-13] | 2025-08-07 → 2025-05-01 A (-98d) | 2025-08-14 → 2025-05-10 A (-96d) | 0% → 100% | 73d → none | ENG-SH-IR-ML-A-110, CO-R17.S13-EW-110, CO-R17.S13-SD-170, ENG-MS-IR-ML-A-110 → ENG-SH-IR-ML-A-110, CO-R17.S13-EW-110, ENG-MS-IR-ML-A-110 | resources Skilled Labor/Surveyor [6.84 h]; Foreman [6.84 h]; Excavator [56 h]; 125 mm pipe; depth 0.0m - 1.5m [181.57] → Skilled Labor/Surveyor [6 h]; Foreman [6 h]; Excavator [56 h]; 125 mm pipe; depth 0.0m - 1.5m [127.9] |
| CO-R17.S13-IR-110 | Pipes Laying Works for Main Lines of Irrigation Network-[Road 17]-[SW-13] | 2025-08-16 → 2025-05-21 A (-87d) | 2025-08-26 → 2025-05-27 A (-91d) | 0% → 100% | 73d → none |  | resources Labor/Helper [182.38 h]; Skilled Labor/Surveyor [9.12 h]; Foreman [9.12 h]; Plumber [91.19 h]; Excavator [80 h]; 125 mm pipe; depth 0.0m - 1.5m [544.7] → Labor/Helper [160 h]; Skilled Labor/Surveyor [8 h]; Foreman [8 h]; Plumber [80 h]; Excavator [80 h]; 125 mm pipe; depth 0.0m - 1.5m [383.69] |
| CO-R17.S13-IR-130 | Trench Backfilling and Compaction Works for Main Lines of Irrigation Network-[Road 17]-[SW-13] | 2025-09-04 → 2025-06-29 A (-67d) | 2025-09-14 → 2025-07-07 A (-69d) | 0% → 100% | 73d → none | CO-R17.S13-IR-120, CO-R17.S13-IR-110 → CO-R17.S13-IR-110 | resources Skilled Labor/Surveyor [9.12 h]; Foreman [9.12 h]; Excavator [72 h]; 125 mm pipe; depth 0.0m - 1.5m [91.29] → Skilled Labor/Surveyor [8 h]; Foreman [8 h]; Excavator [72 h]; 125 mm pipe; depth 0.0m - 1.5m [63.95] |
| CO-R17.S13-IR-120 | Installation Works for Main Line Valves of Irrigation Network-[Road 17]-[SW-13] | 2025-08-27 → 2026-07-09 A (+316d) | 2025-09-03 → 2026-07-12 A (+312d) | 0% → 100% | 73d → none |  | resources Labor/Helper [125.62 h]; Skilled Labor/Surveyor [6.73 h]; Foreman [6.73 h]; Plumber [125.62 h]; Gate valves dia (90)mm on pipes with dia (125) mm. [7.02] → Labor/Helper [112 h]; Skilled Labor/Surveyor [6 h]; Foreman [6 h]; Plumber [112 h]; Gate valves dia (90)mm on pipes with dia (125) mm. [5] |
| TE | **Telecom Network** | 2025-11-08 → 2025-07-14 (-117d) | 2026-08-24 → 2025-07-27 (-393d) |  |  |  |  |
| PD | **Ducts Works** | 2025-11-08 → 2025-07-14 (-117d) | 2026-08-24 → 2025-07-25 (-395d) |  |  |  |  |
| CO-R17.S13-TE-100 | Trench Excavation and Bedding Works for Ducts of Telecom Network-[Road 17]-[SW-13] | 2025-11-08 → 2025-07-14 A (-117d) | 2025-11-15 → 2025-07-17 A (-121d) | 0% → 100% | 167d → none |  | resources Skilled Labor/Surveyor [6.84 h]; Foreman [6.84 h]; Excavator [56 h]; 6-way ducts, 50mm dia. HDPE [28.09]; Road crossing ducts (6-way) [3.01] → Skilled Labor/Surveyor [6 h]; Foreman [6 h]; Excavator [56 h]; 6-way ducts, 50mm dia. HDPE [20]; Road crossing ducts (6-way) [2] |
| CO-R17.S13-TE-110 | Pipes Laying Works for Ducts of Telecom Network-[Road 17]-[SW-13] | 2026-08-01 → 2025-07-18 A (-379d) | 2026-08-08 → 2025-07-21 A (-383d) | 0% → 100% | 7d → none | CO-R17.S13-TE-100, CO-R16.S11-TE-110 → CO-R17.S13-TE-100 | resources Labor/Helper [127.67 h]; Skilled Labor/Surveyor [6.84 h]; Foreman [6.84 h]; Plumber [63.83 h]; Excavator [56 h]; JCB [28 h]; Truck [56 h]; 6-way ducts, 50mm dia. HDPE [168.53]; Road crossing ducts (6-way) [14.04] → Labor/Helper [112 h]; Skilled Labor/Surveyor [6 h]; Foreman [6 h]; Plumber [56 h]; Excavator [56 h]; JCB [28 h]; Truck [56 h]; 6-way ducts, 50mm dia. HDPE [119]; Road crossing ducts (6-way) [10] |
| CO-R17.S13-TE-120 | Pouring Plain Concrete Above Ducts of Telecom Network-[Road 17]-[SW-13] | 2026-08-09 → 2025-07-22 A (-383d) | 2026-08-16 → 2025-07-22 A (-390d) | 0% → 100% | 7d → none | CO-R17.S13-TE-110, CO-R16.S11-TE-120 → CO-R17.S13-TE-110 | resources Skilled Labor/Surveyor [6.84 h]; Foreman [6.84 h]; Cons. Carpenter [127.67 h]; Block Mason [63.83 h]; 6-way ducts, 50mm dia. HDPE [28.09]; Road crossing ducts (6-way) [3.01] → Skilled Labor/Surveyor [6 h]; Foreman [6 h]; Cons. Carpenter [112 h]; Block Mason [56 h]; 6-way ducts, 50mm dia. HDPE [20]; Road crossing ducts (6-way) [2] |
| CO-R17.S13-TE-130 | Trench Backfilling and Compaction Works for Ducts of Telecom Network-[Road 17]-[SW-13] | 2026-08-17 → 2025-07-23 A (-390d) | 2026-08-24 → 2025-07-25 A (-395d) | 0% → 100% | 7d → none | CO-R17.S13-TE-120, CO-R16.S11-TE-130 → CO-R17.S13-TE-120 | resources Skilled Labor/Surveyor [6.84 h]; Foreman [6.84 h]; Excavator [56 h]; 6-way ducts, 50mm dia. HDPE [57.18]; Road crossing ducts (6-way) [4.01] → Skilled Labor/Surveyor [6 h]; Foreman [6 h]; Excavator [56 h]; 6-way ducts, 50mm dia. HDPE [40]; Road crossing ducts (6-way) [3] |
| MH | **Manholes Works** | 2026-08-01 → 2025-07-19 (-378d) | 2026-08-24 → 2025-07-27 (-393d) |  |  |  |  |
| CO-R17.S13-TE-140 | Excavation Works for Manholes of Telecom Network-[Road 17]-[SW-13] | 2026-08-01 → 2025-07-19 A (-378d) | 2026-08-08 → 2025-07-22 A (-382d) | 0% → 100% | 0d → none | CO-R16.S11-TE-140, CO-R17.S13-TE-100 → CO-R17.S13-TE-100 | resources Skilled Labor/Surveyor [6.84 h]; Foreman [6.84 h]; Excavator [56 h]; Manhole Type 2 (2000x1000x1000) [0.2] → Skilled Labor/Surveyor [6 h]; Foreman [6 h]; Excavator [56 h]; Manhole Type 2 (2000x1000x1000) [0.2] |
| CO-R17.S13-TE-150 | Installation Works for Manholes of Telecom Network-[Road 17]-[SW-13] | 2026-08-09 → 2025-07-23 A (-382d) | 2026-08-16 → 2025-07-24 A (-388d) | 0% → 100% | 7d → none | CO-R17.S13-TE-140, CO-R16.S11-TE-150 → CO-R17.S13-TE-140 | resources Skilled Labor/Surveyor [6.84 h]; Foreman [6.84 h]; Excavator [56 h]; Manhole Type 1 (2000x1000x1000) [1]; Manhole Type 2 (2000x1000x1000) [1] → Skilled Labor/Surveyor [6 h]; Foreman [6 h]; Excavator [56 h]; Manhole Type 1 (2000x1000x1000) [1]; Manhole Type 2 (2000x1000x1000) [0.6] |
| CO-R17.S13-TE-160 | Backfilling Works for Manholes of Telecom Network-[Road 17]-[SW-13] | 2026-08-17 → 2025-07-26 A (-387d) | 2026-08-24 → 2025-07-27 A (-393d) | 0% → 100% | 7d → none | CO-R17.S13-TE-150, CO-R16.S11-TE-160 → CO-R17.S13-TE-150 | resources Skilled Labor/Surveyor [6.84 h]; Foreman [6.84 h]; Excavator [56 h]; Manhole Type 2 (2000x1000x1000) [0.2] → Skilled Labor/Surveyor [6 h]; Foreman [6 h]; Excavator [56 h]; Manhole Type 2 (2000x1000x1000) [0.2] |
| MV | **Medium Voltage Network** | 2025-04-05 → 2025-07-23 (+109d) | 2026-10-13 → 2026-07-13 (-92d) |  |  |  |  |
| CW | **Cabling Works** | 2026-09-15 → 2025-07-23 (-419d) | 2026-10-13 → 2025-07-26 (-444d) |  |  |  |  |
| CO-R17.S13-MV-ML-310 | Trench Excavation and Bedding Works for Medium Voltage Network-[Road 17]-[SW-13] | 2026-09-15 → 2025-07-23 A (-419d) | 2026-10-06 → 2025-07-25 A (-438d) | 0% → 100% | 0d → none | ENG-SH-MV-A-110, CO-R17.S13-SD-170 SS+3d, CO-R17.S13-SD-170 FF+3d, CO-R17.S13-EW-110, CO-R17.S13-TE-130 SS+3d, CO-R17.S13-TE-130 FF+3d, CO-R16.S11-MV-ML-280, ENG-MS-MV-A-110, CO-R17.S14-SL-160 → ENG-SH-MV-A-110, CO-R17.S13-SD-170 SS+3d, CO-R17.S13-SD-170 FF+3d, CO-R17.S13-EW-110, CO-R17.S13-TE-130 SS+3d, CO-R17.S13-TE-130 FF+3d, ENG-MS-MV-A-110, CO-R17.S14-SL-160 | resources Skilled Labor/Surveyor [17.1 h]; Foreman [17.1 h]; Excavator [144 h]; Excavation for Trench size 40cm wide and 80cm deep ( Maximum 1 cable 33kv) [250.78]; Excavation for Trench size 60cm wide and 80cm deep ( for Max two cables 33 kv) [14.04]; Excavation for Trench size 90cm wide and 80cm deep ( Maximum 3 cable 33kv) [64.2]; Excavation for Trench size 120cm wide and 80cm deep ( Maximum 4cable 33kv) [21.07]; Excavation for Trench size 150cm wide and 80cm deep ( Maximum 4cable 33kv) [81.25]; Duct bank for (2) 33 kv cables [8.03]; Duct bank for (4) 33 kv cables [57.18]; Duct bank for (6) 33 kv cables [25.08] → Skilled Labor/Surveyor [15 h]; Foreman [15 h]; Excavator [144 h]; Excavation for Trench size 40cm wide and 80cm deep ( Maximum 1 cable 33kv) [177.46]; Excavation for Trench size 60cm wide and 80cm deep ( for Max two cables 33 kv) [10.1]; Excavation for Trench size 90cm wide and 80cm deep ( Maximum 3 cable 33kv) [44.98]; Excavation for Trench size 120cm wide and 80cm deep ( Maximum 4cable 33kv) [15.3]; Excavation for Trench size 150cm wide and 80cm deep ( Maximum 4cable 33kv) [56.6]; Duct bank for (2) 33 kv cables [6.12]; Duct bank for (4) 33 kv cables [40.39]; Duct bank for (6) 33 kv cables [18.36] |
| CO-R17.S13-MV-ML-320 | Cable Laying Works for Medium Voltage Network-[Road 17]-[SW-13] | 2026-09-19 → 2025-07-23 A (-423d) | 2026-10-10 → 2025-07-25 A (-442d) | 0% → 100% | 0d → none | CO-R17.S13-MV-ML-310 SS+3d, CO-R17.S13-MV-ML-310 FF+3d, CO-R16.S11-MV-ML-290, PRO-R17-MV-DL-100 FF+3d → CO-R17.S13-MV-ML-310 SS+3d, CO-R17.S13-MV-ML-310 FF+3d, PRO-R17-MV-DL-100 FF+3d | resources Labor/Helper [656.58 h]; Electrician [656.58 h]; Low Current Technician [656.58 h]; 33kv 3Cx400 mmï¿½ Al XLPE / LLDPE /PVC Cable [1184.7]; 33kv 3Cx400 mmï¿½ Al XLPE /LLDPE/PVC [4.01] → Labor/Helper [576 h]; Electrician [576 h]; Low Current Technician [576 h]; 33kv 3Cx400 mm² Al XLPE / LLDPE /PVC Cable [835.3]; 33kv 3Cx400 mm² Al XLPE /LLDPE/PVC [2.8] |
| CO-R17.S13-MV-ML-330 | Trench Backfilling and Compaction Works for Medium Voltage Network-[Road 17]-[SW-13] | 2026-09-22 → 2025-07-24 A (-425d) | 2026-10-13 → 2025-07-26 A (-444d) | 0% → 100% | 0d → none | CO-R17.S13-MV-ML-320 SS+3d, CO-R17.S13-MV-ML-320 FF+3d, CO-R16.S11-MV-ML-300 → CO-R17.S13-MV-ML-320 SS+3d, CO-R17.S13-MV-ML-320 FF+3d | resources Skilled Labor/Surveyor [17.1 h]; Foreman [17.1 h]; Excavator [144 h]; Water Tank [36 h]; 33kv 3Cx400 mmï¿½ Al XLPE / LLDPE /PVC Cable [508.59]; 33kv 3Cx400 mmï¿½ Al XLPE /LLDPE/PVC [1] → Skilled Labor/Surveyor [15 h]; Foreman [15 h]; Excavator [144 h]; Water Tank [36 h]; 33kv 3Cx400 mm² Al XLPE / LLDPE /PVC Cable [357.99]; 33kv 3Cx400 mm² Al XLPE /LLDPE/PVC [1.2] |

| ID | Task | Start | Finish | Complete | Total float | Predecessors | Other |
| --- | --- | --- | --- | --- | --- | --- | --- |
| SS | **RMU Works** | 2025-04-05 → 2026-07-07 (+458d) | 2026-09-16 → 2026-07-13 (-65d) |  |  |  |  |
| CO-R17.S13-MV-130 | Foundation Excavation Works for RMU of Medium Voltage Network-[Road 17]-[SW-13] | 2025-04-05 → 2026-07-07 A (+458d) | 2025-04-10 → 2026-07-13 A (+459d) | 0% → 100% | 424d → none |  |  |
| CO-R17.S13-MV-150 | Installation Works for RMU Concrete Foundations of Medium Voltage Network-[Road 17]-[SW-13] | 2026-08-22 → 2026-07-07 A (-46d) | 2026-08-30 → 2026-07-13 A (-48d) | 0% → 100% | 10d → none |  |  |
| CO-R17.S13-MV-170 | Installation Works for RMU of Medium Voltage Network-[Road 17]-[SW-13] | 2026-08-31 → 2026-07-07 A (-55d) | 2026-09-05 → 2026-07-13 A (-54d) | 0% → 100% | 10d → none |  |  |
| CO-R17.S13-MV-SS-150 | Termination Works for RMU of Medium Voltage Network-[Road 17]-[SW-13] | 2026-09-06 → 2026-07-07 A (-61d) | 2026-09-10 → 2026-07-13 A (-59d) | 0% → 100% | 28d → none |  |  |
| CO-R17.S13-MV-SS-160 | Testing Works for RMU of Medium Voltage Network-[Road 17]-[SW-13] | 2026-09-12 → 2026-07-07 A (-67d) | 2026-09-16 → 2026-07-13 A (-65d) | 0% → 100% | 28d → none |  |  |
| RD | **Road Works** | 2026-09-30 → 2025-06-22 (-465d) | 2026-11-30 → 2026-09-19 (-72d) |  |  |  |  |
| RD | **Pre-Bituminous Construction** | 2026-09-30 → 2025-06-22 (-465d) | 2026-11-21 → 2025-09-14 (-433d) |  |  |  |  |
| CO-R17.S13-RD-P-100 | Capping and Subgrade Layer for Road Works-[Road 17]-[SW-13] | 2026-09-30 → 2025-06-22 A (-465d) | 2026-10-17 → 2025-07-05 A (-469d) | 0% → 100% | 0d → none | ENG-SH-RD-A-100, CO-R17.S13-SD-130, CO-R17.S13-SW-130, ENG-MS-RD-A-10, CO-R17.S13-TE-130, CO-R17.S13-TE-160, CO-R17.S13-MV-ML-330 SS+3d, CO-R17.S13-MV-ML-330 FF+3d → ENG-SH-RD-A-100, CO-R17.S13-SD-130, CO-R17.S13-SW-130, ENG-MS-RD-A-10 | resources Labor/Helper [273.57 h]; Skilled Labor/Surveyor [136.79 h]; Loader [120 h]; Grader [120 h]; Road Roller [120 h]; Water Tank [120 h]; 300mm capping layer underneath subgrade , CBR?15% [2141.69]; 300mm thick Subgrade, including subgrade preparation, CBR?25% [2141.69] → Labor/Helper [240 h]; Skilled Labor/Surveyor [120 h]; Loader [120 h]; Grader [120 h]; Road Roller [120 h]; Water Tank [120 h]; 300mm capping layer underneath subgrade , CBR?15% [1509.36]; 300mm thick Subgrade, including subgrade preparation, CBR?25% [1509.36] |
| CO-R17.S13-RD-P-110 | Aggregate Base Course Layer for Road Works-[Road 17]-[SW-13] | 2026-11-08 → 2025-09-13 A (-421d) | 2026-11-21 → 2025-09-14 A (-433d) | 0% → 100% | 3d → none | CO-R17.S13-RD-P-100 SS+3d, CO-R17.S13-RD-P-100 FF+3d, CO-R17.S13-SD-170 SS+3d, CO-R17.S13-SD-170 FF+3d, CO-R16.S11-RD-P-110 → CO-R17.S13-RD-P-100 SS+3d, CO-R17.S13-RD-P-100 FF+3d, CO-R17.S13-SD-170 SS+3d, CO-R17.S13-SD-170 FF+3d | resources Labor/Helper [196.09 h]; Skilled Labor/Surveyor [98.05 h]; Foreman [98.05 h]; Loader [144 h]; Grader [144 h]; Road Roller [144 h]; Aggregate base course 200mm thick after compaction in two layers(Grading 1); CBR?80%; including watering, compaction and testing [1427.46] → Labor/Helper [288 h]; Skilled Labor/Surveyor [144 h]; Foreman [144 h]; Loader [144 h]; Grader [144 h]; Road Roller [144 h]; Aggregate base course 200mm thick after compaction in two layers(Grading 1); CBR?80%; including watering, compaction and testing [1006.34] |
| LS | **Pavement Works** | 2026-11-11 → 2026-08-25 (-78d) | 2026-11-30 → 2026-09-19 (-72d) |  |  |  |  |
| CO-R17.S13-RD-P-120 | Fixing of Curbstone for Sidewalks Pavement-[Road 17]-[SW-13] | 2026-11-11 → 2026-08-25 A (-78d) | 2026-11-24 → 2026-08-31 A (-85d) | 0% → 100% | 3d → none |  | resources Labor/Helper [196.09 h]; Block Mason [588.28 h]; Precast Concrete Kerb, Type K1 [790.47]; Precast Concrete Kerb, Type L1 [1567.9] → Labor/Helper [288 h]; Block Mason [864 h]; Precast Concrete Kerb, Type K1 [556.87]; Precast Concrete Kerb, Type L1 [1104.89] |
| CO-R17.S13-RD-P-130 | Fixing of Interlock Tiles for Sidewalks Pavement-[Road 17]-[SW-13] | 2026-11-19 → 2026-08-25 A (-86d) | 2026-11-30 → 2026-09-19 A (-72d) | 0% → 100% | 1d → none |  | resources Labor/Helper [196.09 h]; Block Mason [588.28 h]; Interlocking block pavers for sidewalk/footpath 60mm thick on and including 30mm Sand Bedding, 200mm Aggregate subbase, all in accordance with authority standards and complete as per specifications [1410.41]; Extraover for Pedestrian ramps [3.01] → Labor/Helper [288 h]; Block Mason [864 h]; Interlocking block pavers for sidewalk/footpath 60mm thick on and including 30mm Sand Bedding, 200mm Aggregate subbase, all in accordance with authority standards and complete as per specifications [994.41]; Extraover for Pedestrian ramps [2] |
| SW_16 | **SW_14** | 2025-03-17 → 2025-03-04 (-13d) | 2026-12-01 → 2026-11-26 (-5d) |  |  |  |  |
| EW | **Earthworks** | 2025-03-17 → 2025-03-04 (-13d) | 2025-04-15 → 2025-03-27 (-19d) |  |  |  |  |
| EW | **Earthworks** | 2025-03-17 → 2025-03-04 (-13d) | 2025-04-15 → 2025-03-27 (-19d) |  |  |  |  |
| CO-R17.S14-EW-100 | Roadway Excavation Works Upto Design Level for Earthworks-[Road 17]-[SW-14] | 2025-03-17 → 2025-03-04 A (-13d) | 2025-03-27 → 2025-03-15 A (-12d) | 0% → 100% | 11d → none |  | resources Labor/Helper [218.86 h]; Skilled Labor/Surveyor [27.36 h]; Foreman [27.36 h]; Dump Truck [192 h]; Water Tank [192 h]; Dozer [192 h]; Roadway Excavation for cuttings; on any type of material for all depths including trimming and Preparation of excavated surfaces and disposal. [10085.5] → Labor/Helper [192 h]; Skilled Labor/Surveyor [24 h]; Foreman [24 h]; Dump Truck [192 h]; Water Tank [192 h]; Dozer [192 h]; Roadway Excavation for cuttings; on any type of material for all depths including trimming and Preparation of excavated surfaces and disposal. [7106.31] |
| CO-R17.S14-EW-110 | Embankments Works Upto Design Level for Earthworks-[Road 17]-[SW-14] | 2025-03-29 → 2025-03-16 A (-13d) | 2025-04-15 → 2025-03-27 A (-19d) | 0% → 100% | 19d → none |  | resources Labor/Helper [683.93 h]; Skilled Labor/Surveyor [85.49 h]; Foreman [85.49 h]; Dump Truck [600 h]; Water Tank [600 h]; Dozer [600 h]; Embankments to the ROW, with suitable material other than top soil or rock according to specifications [16978] → Labor/Helper [600 h]; Skilled Labor/Surveyor [75 h]; Foreman [75 h]; Dump Truck [600 h]; Water Tank [600 h]; Dozer [600 h]; Embankments to the ROW, with suitable material other than top soil or rock according to specifications [11962.6] |
| SW | **Sewage Network** | 2025-04-23 → 2025-05-23 (+30d) | 2025-06-25 → 2026-10-06 (+468d) |  |  |  |  |
| ML | **Main Line Sections** | 2025-04-23 → 2025-05-23 (+30d) | 2025-06-25 → 2025-07-05 (+10d) |  |  |  |  |
| CO-R17.S14-SW-100 | Trench Excavation and Bedding Works for Main Lines of Sewage Network-[Road 17]-[SW-14] | 2025-04-23 → 2025-05-23 A (+30d) | 2025-05-06 → 2025-05-25 A (+19d) | 0% → 100% | 13d → none |  | resources Labor/Helper [109.43 h]; Foreman [109.43 h]; Excavator [96 h]; Nominal bore : 160mm; Depth : 0.0m - 1.5m [6.02]; Nominal bore : 160mm; Depth : 1.5m - 2.5m [24.08]; Nominal bore : 200mm; Depth : 0.0m - 1.5m [3.01]; Nominal bore : 200mm; Depth : 1.5m - 2.5m [7.02]; Nominal bore : 200mm; Depth : 2.5m - 3.5m [16.05]; Nominal bore : 200mm; Depth : 3.5m - 4.5m [11.03]; Nominal bore : 200mm; Depth : 4.5m -5.5m [6.02]; Nominal bore : 200mm; Depth : 5.5m - 6.5m [8.03] → Labor/Helper [96 h]; Foreman [96 h]; Excavator [96 h]; Nominal bore : 160mm; Depth : 0.0m - 1.5m [3.8]; Nominal bore : 160mm; Depth : 1.5m - 2.5m [17]; Nominal bore : 200mm; Depth : 0.0m - 1.5m [2.49]; Nominal bore : 200mm; Depth : 1.5m - 2.5m [4.59]; Nominal bore : 200mm; Depth : 2.5m - 3.5m [11.34]; Nominal bore : 200mm; Depth : 3.5m - 4.5m [8.46]; Nominal bore : 200mm; Depth : 4.5m -5.5m [4.28]; Nominal bore : 200mm; Depth : 5.5m - 6.5m [5.51] |
| CO-R17.S14-SW-120 | Pipes Laying Works for Main Lines of Sewage Network-[Road 17]-[SW-14] | 2025-05-07 → 2025-05-26 A (+19d) | 2025-05-20 → 2025-06-12 A (+23d) | 0% → 100% | 17d → none |  | resources Labor/Helper [218.86 h]; Skilled Labor/Surveyor [11.4 h]; Foreman [11.4 h]; Plumber [109.43 h]; Excavator [96 h]; Nominal bore : 160mm; Depth : 0.0m - 1.5m [16.05]; Nominal bore : 160mm; Depth : 1.5m - 2.5m [72.23]; Nominal bore : 200mm; Depth : 0.0m - 1.5m [10.03]; Nominal bore : 200mm; Depth : 1.5m - 2.5m [20.06]; Nominal bore : 200mm; Depth : 2.5m - 3.5m [48.15]; Nominal bore : 200mm; Depth : 3.5m - 4.5m [35.11]; Nominal bore : 200mm; Depth : 4.5m -5.5m [18.06]; Nominal bore : 200mm; Depth : 5.5m - 6.5m [24.08] → Labor/Helper [192 h]; Skilled Labor/Surveyor [10 h]; Foreman [10 h]; Plumber [96 h]; Excavator [96 h]; Nominal bore : 160mm; Depth : 0.0m - 1.5m [11.4]; Nominal bore : 160mm; Depth : 1.5m - 2.5m [51]; Nominal bore : 200mm; Depth : 0.0m - 1.5m [7.46]; Nominal bore : 200mm; Depth : 1.5m - 2.5m [13.77]; Nominal bore : 200mm; Depth : 2.5m - 3.5m [34.03]; Nominal bore : 200mm; Depth : 3.5m - 4.5m [25.39]; Nominal bore : 200mm; Depth : 4.5m -5.5m [12.85]; Nominal bore : 200mm; Depth : 5.5m - 6.5m [16.52] |
| CO-R17.S14-SW-130 | Trench Backfilling and Compaction Works for Main Lines of Sewage Network-[Road 17]-[SW-14] | 2025-06-15 → 2025-06-22 A (+7d) | 2025-06-25 → 2025-07-05 A (+10d) | 0% → 100% | 0d → none | CO-R17.S14-SW-120, CO-R17.S14-SW-210 FF, CO-R17.S13-SW-130 → CO-R17.S14-SW-120, CO-R17.S13-SW-130 | resources Skilled Labor/Surveyor [54.44 h]; Foreman [54.44 h]; Excavator [96 h]; Nominal bore : 160mm; Depth : 0.0m - 1.5m [3.01]; Nominal bore : 160mm; Depth : 1.5m - 2.5m [13.04]; Nominal bore : 200mm; Depth : 0.0m - 1.5m [1]; Nominal bore : 200mm; Depth : 1.5m - 2.5m [3.01]; Nominal bore : 200mm; Depth : 2.5m - 3.5m [8.03]; Nominal bore : 200mm; Depth : 3.5m - 4.5m [6.02]; Nominal bore : 200mm; Depth : 4.5m -5.5m [3.01]; Nominal bore : 200mm; Depth : 5.5m - 6.5m [4.01] → Skilled Labor/Surveyor [10 h]; Foreman [10 h]; Excavator [96 h]; Nominal bore : 160mm; Depth : 0.0m - 1.5m [1.9]; Nominal bore : 160mm; Depth : 1.5m - 2.5m [8.5]; Nominal bore : 200mm; Depth : 0.0m - 1.5m [1.24]; Nominal bore : 200mm; Depth : 1.5m - 2.5m [2.29]; Nominal bore : 200mm; Depth : 2.5m - 3.5m [5.67]; Nominal bore : 200mm; Depth : 3.5m - 4.5m [4.23]; Nominal bore : 200mm; Depth : 4.5m -5.5m [2.14]; Nominal bore : 200mm; Depth : 5.5m - 6.5m [2.75] |
| 1 | **Manholes** | 2025-05-07 → 2025-06-13 (+37d) | 2025-05-21 → 2026-10-06 (+503d) |  |  |  |  |
| CO-R17.S14-SW-160 | Excavation Works for Main Line Manholes of Sewage Network-[Road 17]-[SW-14] | 2025-05-07 → 2025-06-13 A (+37d) | 2025-05-07 → 2025-06-13 A (+37d) | 0% → 100% | 26d → none |  | resources Labor/Helper [18.24 h]; Skilled Labor/Surveyor [9.12 h]; Excavator [16 h]; Depth: not exceeding 1.5m [0.15]; Depth: 1.5 - 2.5m [0.3]; Depth: 2.5 - 3.5m [0.15] → Labor/Helper [16 h]; Skilled Labor/Surveyor [8 h]; Excavator [16 h]; Depth: not exceeding 1.5m [0.15]; Depth: 1.5 - 2.5m [0.3]; Depth: 2.5 - 3.5m [0.15] |
| CO-R17.S14-SW-170 | Installation RC Footing Works for Main Line Manholes of Sewage Network-[Road 17]-[SW-14] | 2025-05-08 → 2025-06-14 A (+37d) | 2025-05-10 → 2025-06-15 A (+36d) | 0% → 100% | 26d → none |  | resources Cons. Carpenter [72.95 h]; Steel Fixer [72.95 h]; Depth: not exceeding 1.5m [0.1]; Depth: 1.5 - 2.5m [0.2]; Depth: 2.5 - 3.5m [0.1] → Cons. Carpenter [64 h]; Steel Fixer [64 h]; Depth: not exceeding 1.5m [0.1]; Depth: 1.5 - 2.5m [0.2]; Depth: 2.5 - 3.5m [0.1] |
| CO-R17.S14-SW-180 | Install Grp Liner Wall Works for Main Line Manholes of Sewage Network-[Road 17]-[SW-14] | 2025-05-11 → 2025-06-16 A (+36d) | 2025-05-14 → 2025-06-20 A (+37d) | 0% → 100% | 26d → none |  | resources Labor/Helper [72.95 h]; Plumber [72.95 h]; Depth: not exceeding 1.5m [0.4]; Depth: 1.5 - 2.5m [1]; Depth: 2.5 - 3.5m [0.4] → Labor/Helper [64 h]; Plumber [64 h]; Depth: not exceeding 1.5m [0.4]; Depth: 1.5 - 2.5m [0.8]; Depth: 2.5 - 3.5m [0.4] |
| CO-R17.S14-SW-190 | Pouring Grp Liner Wall Works for Main Line Manholes of Sewage Network-[Road 17]-[SW-14] | 2025-05-15 → 2025-06-21 A (+37d) | 2025-05-15 → 2025-06-21 A (+37d) | 0% → 100% | 26d → none |  | resources Cons. Carpenter [36.48 h]; Steel Fixer [36.48 h]; Depth: not exceeding 1.5m [0.05]; Depth: 1.5 - 2.5m [0.1]; Depth: 2.5 - 3.5m [0.05] → Cons. Carpenter [32 h]; Steel Fixer [32 h]; Depth: not exceeding 1.5m [0.05]; Depth: 1.5 - 2.5m [0.1]; Depth: 2.5 - 3.5m [0.05] |
| CO-R17.S14-SW-200 | Backfilling Works for Main Line Manholes of Sewage Network-[Road 17]-[SW-14] | 2025-05-17 → 2025-06-22 A (+36d) | 2025-05-20 → 2025-06-28 A (+39d) | 0% → 100% | 26d → none |  | resources Labor/Helper [72.95 h]; Skilled Labor/Surveyor [36.48 h]; Excavator [64 h]; Depth: not exceeding 1.5m [0.15]; Depth: 1.5 - 2.5m [0.3]; Depth: 2.5 - 3.5m [0.15] → Labor/Helper [64 h]; Skilled Labor/Surveyor [32 h]; Excavator [64 h]; Depth: not exceeding 1.5m [0.15]; Depth: 1.5 - 2.5m [0.3]; Depth: 2.5 - 3.5m [0.15] |
| CO-R17.S14-SW-210 | Testing Works for Main Line Manholes of Sewage Network-[Road 17]-[SW-14] | 2025-05-21 → 2026-10-06 (+503d) | 2025-05-21 → 2026-10-06 (+503d) |  | 26d → 1d |  | resources Labor/Helper [18.24 h]; Plumber [18.24 h]; Depth: not exceeding 1.5m [0.05]; Depth: 1.5 - 2.5m [0.1]; Depth: 2.5 - 3.5m [0.05] → Labor/Helper [16 h]; Plumber [16 h]; Depth: not exceeding 1.5m [0.05]; Depth: 1.5 - 2.5m [0.1]; Depth: 2.5 - 3.5m [0.05] |
| SD | **Storm Drainage Network** | 2025-06-18 → 2025-06-23 (+5d) | 2026-04-09 → 2026-07-13 (+95d) |  |  |  |  |
| ML | **Main Line Sections** | 2025-06-18 → 2025-06-23 (+5d) | 2026-04-09 → 2025-07-10 (-273d) |  |  |  |  |
| CO-R17.S14-SD-100 | Trench Excavation and Bedding Works for Main Lines of Storm Drainage Network-[Road 17]-[SW-14] | 2025-06-18 → 2025-06-23 A (+5d) | 2025-06-29 → 2025-07-06 A (+7d) | 0% → 100% | 217d → none |  | resources Skilled Labor/Surveyor [170.13 h]; Foreman [170.13 h]; Excavator [112 h]; Pipe with diameter 400mm ; depth: 0.0m - 1.5m [42.13]; Pipe with diameter 400mm ; depth: 1.51m - 2.5m [64.2]; Pipe with diameter 500mm ; depth: 1.51m - 2.5m [109.34]; Pipe with diameter 600mm ; depth: 1.51m - 2.5m [13.04]; Pipe with diameter 700mm ; depth: 1.51m - 2.5m [27.08]; Pipe with diameter 800mm ; depth: 1.51m - 2.5m [24.08]; Pipe with diameter 900mm ; depth: 1.51m - 2.5m [7.02] → Skilled Labor/Surveyor [12 h]; Foreman [12 h]; Excavator [112 h]; Pipe with diameter 400mm ; depth: 0.0m - 1.5m [29.7]; Pipe with diameter 400mm ; depth: 1.51m - 2.5m [44.88]; Pipe with diameter 500mm ; depth: 1.51m - 2.5m [76.59]; Pipe with diameter 600mm ; depth: 1.51m - 2.5m [8.74]; Pipe with diameter 700mm ; depth: 1.51m - 2.5m [19.05]; Pipe with diameter 800mm ; depth: 1.51m - 2.5m [16.63]; Pipe with diameter 900mm ; depth: 1.51m - 2.5m [4.57] |
| CO-R17.S14-SD-120 | Pipes Laying Works for Main Lines of Storm Drainage Network-[Road 17]-[SW-14] | 2025-06-30 → 2025-07-07 A (+7d) | 2025-07-22 → 2025-07-10 A (-12d) | 0% → 100% | 217d → none |  | resources Labor/Helper [357.28 h]; Skilled Labor/Surveyor [17.86 h]; Foreman [17.86 h]; Plumber [178.64 h]; Excavator [160 h]; Pipe with diameter 400mm ; depth: 0.0m - 1.5m [126.39]; Pipe with diameter 400mm ; depth: 1.51m - 2.5m [191.6]; Pipe with diameter 500mm ; depth: 1.51m - 2.5m [326.02]; Pipe with diameter 600mm ; depth: 1.51m - 2.5m [37.12]; Pipe with diameter 700mm ; depth: 1.51m - 2.5m [81.25]; Pipe with diameter 800mm ; depth: 1.51m - 2.5m [71.22]; Pipe with diameter 900mm ; depth: 1.51m - 2.5m [20.06] → Labor/Helper [320 h]; Skilled Labor/Surveyor [16 h]; Foreman [16 h]; Plumber [160 h]; Excavator [160 h]; Pipe with diameter 400mm ; depth: 0.0m - 1.5m [89.09]; Pipe with diameter 400mm ; depth: 1.51m - 2.5m [134.65]; Pipe with diameter 500mm ; depth: 1.51m - 2.5m [229.78]; Pipe with diameter 600mm ; depth: 1.51m - 2.5m [26.23]; Pipe with diameter 700mm ; depth: 1.51m - 2.5m [57.16]; Pipe with diameter 800mm ; depth: 1.51m - 2.5m [49.9]; Pipe with diameter 900mm ; depth: 1.51m - 2.5m [13.71] |
| CO-R17.S14-SD-130 | Trench Backfilling and Compaction Works for Main Lines of Storm Drainage Network-[Road 17]-[SW-14] | 2026-03-15 → 2025-07-08 A (-250d) | 2026-04-09 → 2025-07-10 A (-273d) | 0% → 100% | 113d → none | CO-R17.S14-SD-120 SS+3d, CO-R17.S14-SD-120 FF+3d, CO-R16.S12-SD-130, CO-R17.S14-SD-120, CO-R17.S14-SD-220 FF → CO-R17.S14-SD-120 SS+3d, CO-R17.S14-SD-120 FF+3d | resources Skilled Labor/Surveyor [34.03 h]; Foreman [34.03 h]; Excavator [160 h]; Pipe with diameter 400mm ; depth: 0.0m - 1.5m [21.07]; Pipe with diameter 400mm ; depth: 1.51m - 2.5m [31.1]; Pipe with diameter 500mm ; depth: 1.51m - 2.5m [54.17]; Pipe with diameter 600mm ; depth: 1.51m - 2.5m [6.02]; Pipe with diameter 700mm ; depth: 1.51m - 2.5m [14.04]; Pipe with diameter 800mm ; depth: 1.51m - 2.5m [11.03]; Pipe with diameter 900mm ; depth: 1.51m - 2.5m [3.01] → Skilled Labor/Surveyor [16 h]; Foreman [16 h]; Excavator [160 h]; Pipe with diameter 400mm ; depth: 0.0m - 1.5m [14.85]; Pipe with diameter 400mm ; depth: 1.51m - 2.5m [22.44]; Pipe with diameter 500mm ; depth: 1.51m - 2.5m [38.3]; Pipe with diameter 600mm ; depth: 1.51m - 2.5m [4.37]; Pipe with diameter 700mm ; depth: 1.51m - 2.5m [9.53]; Pipe with diameter 800mm ; depth: 1.51m - 2.5m [8.32]; Pipe with diameter 900mm ; depth: 1.51m - 2.5m [2.29] |
| MH | **Manholes** | 2025-06-30 → 2025-07-08 (+8d) | 2025-07-15 → 2026-07-13 (+363d) |  |  |  |  |
| CO-R17.S14-SD-180 | Trench Excavation and Bedding Works for Manholes of Storm Drainage Network-[Road 17]-[SW-14] | 2025-06-30 → 2025-07-08 A (+8d) | 2025-06-30 → 2025-07-11 A (+11d) | 0% → 100% | 217d → none |  | resources Labor/Helper [27.36 h]; Skilled Labor/Surveyor [13.68 h]; Excavator [24 h]; MH ; depth: 0.0m - 1.5m [0.15]; MH ; depth: 1.51m - 2.5m [0.3]; MH ; depth: 1.51m - 2.5m [0.15] → Labor/Helper [24 h]; Skilled Labor/Surveyor [12 h]; Excavator [24 h]; MH ; depth: 0.0m - 1.5m [0.15]; MH ; depth: 1.51m - 2.5m [0.3]; MH ; depth: 1.51m - 2.5m [0.15] |
| CO-R17.S14-SD-190 | Install RC Footing Works for Manholes of Storm Drainage Network-[Road 17]-[SW-14] | 2025-07-01 → 2025-07-12 A (+11d) | 2025-07-01 → 2025-07-12 A (+11d) | 0% → 100% | 217d → none |  | resources Cons. Carpenter [54.71 h]; Steel Fixer [54.71 h]; MH ; depth: 0.0m - 1.5m [0.05]; MH ; depth: 1.51m - 2.5m [0.1]; MH ; depth: 1.51m - 2.5m [0.05] → Cons. Carpenter [48 h]; Steel Fixer [48 h]; MH ; depth: 0.0m - 1.5m [0.05]; MH ; depth: 1.51m - 2.5m [0.1]; MH ; depth: 1.51m - 2.5m [0.05] |
| CO-R17.S14-SD-200 | Install RC Wall Rings & Slab Works for Manholes of Storm Drainage Network-[Road 17]-[SW-14] | 2025-07-02 → 2025-07-13 A (+11d) | 2025-07-06 → 2025-07-14 A (+8d) | 0% → 100% | 217d → none |  | resources Cons. Carpenter [218.86 h]; Steel Fixer [218.86 h]; MH ; depth: 0.0m - 1.5m [0.45]; MH ; depth: 1.51m - 2.5m [1]; MH ; depth: 1.51m - 2.5m [0.45] → Cons. Carpenter [192 h]; Steel Fixer [192 h]; MH ; depth: 0.0m - 1.5m [0.45]; MH ; depth: 1.51m - 2.5m [0.9]; MH ; depth: 1.51m - 2.5m [0.45] |
| CO-R17.S14-SD-220 | Backfilling Works for Manholes of Storm Drainage Network-[Road 17]-[SW-14] | 2025-07-08 → 2025-07-15 A (+7d) | 2025-07-15 A | 0% → 100% | 217d → none | CO-R17.S14-SD-210 → CO-R17.S14-SD-200 | resources Labor/Helper [191.5 h]; Skilled Labor/Surveyor [95.75 h]; Excavator [168 h]; MH ; depth: 0.0m - 1.5m [0.2]; MH ; depth: 1.51m - 2.5m [0.4]; MH ; depth: 1.51m - 2.5m [0.2] → Labor/Helper [168 h]; Skilled Labor/Surveyor [84 h]; Excavator [168 h]; MH ; depth: 0.0m - 1.5m [0.2]; MH ; depth: 1.51m - 2.5m [0.4]; MH ; depth: 1.51m - 2.5m [0.2] |
| CO-R17.S14-SD-210 | Testing Works for Manholes of Storm Drainage Network-[Road 17]-[SW-14] | 2025-07-07 → 2026-06-04 A (+332d) | 2025-07-07 → 2026-07-13 A (+371d) | 0% → 100% | 217d → none |  | resources Labor/Helper [93.17 h]; Plumber [30.36 h]; MH ; depth: 0.0m - 1.5m [0.1]; MH ; depth: 1.51m - 2.5m [0.2]; MH ; depth: 1.51m - 2.5m [0.1] → Labor/Helper [24 h]; Plumber [24 h]; MH ; depth: 0.0m - 1.5m [0.1]; MH ; depth: 1.51m - 2.5m [0.2]; MH ; depth: 1.51m - 2.5m [0.1] |
| CB | **Catch Basin Sections** |  | 2025-08-12 → 2026-07-13 (+335d) |  |  |  |  |
| CO-R17.S14-SD-140 | Trench Excavation and Bedding Works for Catch Basins of Storm Drainage Network-[Road 17]-[SW-14] | 2025-07-16 A | 2025-07-22 → 2025-07-16 A (-6d) | 0% → 100% | 217d → none |  | resources Skilled Labor/Surveyor [5.7 h]; Foreman [5.7 h]; Excavator [48 h]; Pipe with diameter 300mm ; depth: 0 - 1.5m [54.17]; Pipe with diameter 400mm ; depth: 0 - 1.5m [3.01] → Skilled Labor/Surveyor [5 h]; Foreman [5 h]; Excavator [48 h]; Pipe with diameter 300mm ; depth: 0 - 1.5m [37.63]; Pipe with diameter 400mm ; depth: 0 - 1.5m [2.29] |
| CO-R17.S14-SD-150 | Installation and Pipes Laying Connection Works for Catch Basins of Storm Drainage Network-[Road 17]-[SW-14] | 2025-07-23 → 2025-07-17 A (-6d) | 2025-07-30 → 2025-07-17 A (-13d) | 0% → 100% | 217d → none |  | resources Labor/Helper [255.34 h]; Skilled Labor/Surveyor [13.68 h]; Foreman [13.68 h]; Excavator [112 h]; Pipe with diameter 300mm ; depth: 0 - 1.5m [160.5]; Pipe with diameter 400mm ; depth: 0 - 1.5m [10.03] → Labor/Helper [224 h]; Skilled Labor/Surveyor [12 h]; Foreman [12 h]; Excavator [112 h]; Pipe with diameter 300mm ; depth: 0 - 1.5m [112.91]; Pipe with diameter 400mm ; depth: 0 - 1.5m [6.88] |
| CO-R17.S14-SD-170 | Trench Backfilling and Compaction Works for Catch Basins of Storm Drainage Network-[Road 17]-[SW-14] | 2025-08-05 → 2025-07-18 A (-18d) | 2025-08-12 → 2025-07-18 A (-25d) | 0% → 100% | 385d → none | CO-R17.S14-SD-160 → CO-R17.S14-SD-150 | resources Skilled Labor/Surveyor [6.84 h]; Foreman [6.84 h]; Excavator [56 h]; Pipe with diameter 300mm ; depth: 0 - 1.5m [71.22]; Pipe with diameter 400mm ; depth: 0 - 1.5m [4.01] → Skilled Labor/Surveyor [6 h]; Foreman [6 h]; Excavator [56 h]; Pipe with diameter 300mm ; depth: 0 - 1.5m [50.18]; Pipe with diameter 400mm ; depth: 0 - 1.5m [3.06] |
| CO-R17.S14-SD-160 | Testing Works for Catch Basins of Storm Drainage Network-[Road 17]-[SW-14] | 2025-07-31 → 2026-06-04 A (+308d) | 2025-08-04 → 2026-07-13 A (+343d) | 0% → 100% | 385d → none |  | resources Labor/Helper [93.17 h]; Skilled Labor/Surveyor [18.23 h]; Foreman [19.63 h]; Plumber [36.48 h]; Excavator [32 h]; Pipe with diameter 300mm ; depth: 0 - 1.5m [35.11]; Pipe with diameter 400mm ; depth: 0 - 1.5m [3.01] → Labor/Helper [64 h]; Skilled Labor/Surveyor [4 h]; Foreman [4 h]; Plumber [32 h]; Excavator [32 h]; Pipe with diameter 300mm ; depth: 0 - 1.5m [25.09]; Pipe with diameter 400mm ; depth: 0 - 1.5m [1.53] |
| SL | **Street Lighting Network** | 2025-04-16 → 2025-07-08 (+83d) | 2025-12-14 → 2026-11-26 (+347d) |  |  |  |  |
| LP | **Lighting Poles Works** | 2025-09-15 → 2025-07-08 (-69d) | 2025-12-14 → 2026-11-26 (+347d) |  |  |  |  |
| CO-R17.S14-SL-100 | Foundation Excavation Works for Lighting Poles of Street Lighting Network-[Road 17]-[SW-14] | 2025-09-15 → 2025-07-08 A (-69d) | 2025-09-29 → 2025-07-11 A (-80d) | 0% → 100% | 73d → none |  | resources Lighting poles with one arm, including the power distribution box, screws, cables, 12 meters in height. [3.01] → Lighting poles with one arm, including the power distribution box, screws, cables, 12 meters in height. [2.25] |
| CO-R17.S14-SL-110 | Installation Works for Lighting Poles Foundation of Street Lighting Network-[Road 17]-[SW-14] | 2025-09-30 → 2025-07-12 A (-80d) | 2025-10-13 → 2025-07-14 A (-91d) | 0% → 100% | 73d → none |  | resources Reinforced concrete foundation, for 12m high lighting columns With Drawpits [64.2] → Reinforced concrete foundation, for 12m high lighting columns With Drawpits [45] |
| CO-R17.S14-SL-120 | Installation Works for Lighting Poles of Street Lighting Network-[Road 17]-[SW-14] | 2025-11-18 → 2025-09-11 A (-68d) | 2025-12-08 → 2025-09-11 A (-88d) | 0% → 100% | 73d → none |  | resources Lighting poles with one arm, including the power distribution box, screws, cables, 12 meters in height. [35.11] → Lighting poles with one arm, including the power distribution box, screws, cables, 12 meters in height. [24.75] |
| CO-R17.S14-SL-210 | Backfilling Works for Lighting Poles of Street Lighting Network-[Road 17]-[SW-14] | 2025-11-24 → 2025-09-11 A (-74d) | 2025-12-08 → 2025-09-11 A (-88d) | 0% → 100% | 73d → none |  | resources Lighting poles with one arm, including the power distribution box, screws, cables, 12 meters in height. [13.04] → Lighting poles with one arm, including the power distribution box, screws, cables, 12 meters in height. [9] |
| CO-R17.S14-SL-200 | Testing Works for Lighting Poles of Street Lighting Network-[Road 17]-[SW-14] | 2025-12-08 → 2026-10-06 (+302d) | 2025-12-14 → 2026-10-11 (+301d) |  | 218.5d → -32d |  | resources Lighting poles with one arm, including the power distribution box, screws, cables, 12 meters in height. [13.04] → Lighting poles with one arm, including the power distribution box, screws, cables, 12 meters in height. [9] |
| CO-R17.S14-SL-130 | Installation Works for Lighting Fixtures With Drop Wire of Street Lighting Network-[Road 17]-[SW-14] | 2025-11-24 → 2026-11-07 (+348d) | 2025-12-14 → 2026-11-26 (+347d) |  | 218d → -72d |  | resources Street Lighting( LED) Luminaire,(Type C) complete with control gear and lamp, ?.17000 Lumen [64.2] → Street Lighting( LED) Luminaire,(Type C) complete with control gear and lamp, ?.17000 Lumen [45] |
| CW | **Cabling Works** | 2025-10-14 → 2025-07-15 (-91d) | 2025-11-17 → 2025-07-20 (-120d) |  |  |  |  |
| CO-R17.S14-SL-140 | Trench Excavation and Bedding Works for Street Lighting Network-[Road 17]-[SW-14] | 2025-10-14 → 2025-07-15 A (-91d) | 2025-10-25 → 2025-07-16 A (-101d) | 0% → 100% | 73d → none |  |  |
| CO-R17.S14-SL-150 | Cable Laying Works for Street Lighting Network-[Road 17]-[SW-14] | 2025-10-26 → 2025-07-17 A (-101d) | 2025-11-05 → 2025-07-18 A (-110d) | 0% → 100% | 73d → none |  | resources Supply, installation , test and operation of cables, Copper, (4Cx25mmï¿½,Cu/XLPE/SWA/PVC +1x16mmï¿½ PVC/PVC) [2421.56] → Supply, installation , test and operation of cables, Copper, (4Cx25mm²,Cu/XLPE/SWA/PVC +1x16mm² PVC/PVC) [1706.25] |
| CO-R17.S14-SL-160 | Trench Backfilling and Compaction Works for Street Lighting Network-[Road 17]-[SW-14] | 2025-11-06 → 2025-07-19 A (-110d) | 2025-11-17 → 2025-07-20 A (-120d) | 0% → 100% | 73d → none |  | resources Supply, installation , test and operation of cables, Copper, (4Cx25mmï¿½,Cu/XLPE/SWA/PVC +1x16mmï¿½ PVC/PVC) [185.58] → Supply, installation , test and operation of cables, Copper, (4Cx25mm²,Cu/XLPE/SWA/PVC +1x16mm² PVC/PVC) [131.25] |
| DPB | **Distrubution Panel Boards** | 2025-04-16 → 2026-10-06 (+538d) | 2025-05-13 → 2026-11-02 (+538d) |  |  |  |  |
| CO-R17.S14-SL-170 | Foundation Excavation Works For Panel Boards of Street Lighting Network-[Road 17]-[SW-14] | 2025-04-16 → 2026-10-06 (+538d) | 2025-05-06 → 2026-10-26 (+538d) |  | 419d → -29d |  |  |
| CO-R17.S14-SL-180 | Installation Works for Panel Board Concrete Foundations of Street Lighting Network-[Road 17]-[SW-14] | 2025-04-20 → 2026-10-10 (+538d) | 2025-05-10 → 2026-10-29 (+537d) |  | 419d → -29d |  |  |
| CO-R17.S14-SL-220 | A wall of concrete blocks to install the KWH meter of Street Lighting Network-[Road 17]-[SW-14] | 2025-04-20 → 2026-10-10 (+538d) | 2025-05-10 → 2026-10-29 (+537d) |  | 422d → -26d |  | resources Road crossing ducts, 4 way (4 x 100mm PVC) [139.44]; Drawpit with medium duty steel cover, size 900x900x1200mm, Type 4 [8.03] → Road crossing ducts, 4 way (4 x 100mm PVC) [98]; Drawpit with medium duty steel cover, size 900x900x1200mm, Type 4 [6] |
| CO-R17.S14-SL-190 | Installation Works for Lighting Panel Boards of Street Lighting Network-[Road 17]-[SW-14] | 2025-04-23 → 2026-10-13 (+538d) | 2025-05-13 → 2026-11-02 (+538d) |  | 419d → -29d |  |  |
| PW | **Potable Water Network** | 2026-04-11 → 2025-07-11 (-274d) | 2026-05-11 → 2026-11-09 (+182d) |  |  |  |  |
| ML | **Main Line Sections** | 2026-04-11 → 2025-07-11 (-274d) | 2026-04-30 → 2025-07-17 (-287d) |  |  |  |  |
| CO-R17.S14-PW-100 | Trench Excavation and Bedding Works for Main Lines of Potable Water Network-[Road 17]-[SW-14] | 2026-04-11 → 2025-07-11 A (-274d) | 2026-04-16 → 2025-07-12 A (-278d) | 0% → 100% | 113d → none | CO-R17.S14-EW-110, CO-R17.S14-EW-100, CO-R17.S14-SW-130, CO-R17.S14-SD-130 → CO-R17.S14-EW-110, CO-R17.S14-EW-100, CO-R17.S14-SW-130 FF, CO-R17.S14-SD-130 | resources Skilled Labor/Surveyor [5.7 h]; Foreman [5.7 h]; Excavator [48 h]; Pipe with diameter 200mm; in depth 0.0m - 1.5m [177.55] → Skilled Labor/Surveyor [5 h]; Foreman [5 h]; Excavator [48 h]; Pipe with diameter 200mm; in depth 0.0m - 1.5m [124.67] |
| CO-R17.S14-PW-110 | Pipes Laying and accessories for Main Lines of Potable Water Network-[Road 17]-[SW-14] | 2026-04-18 → 2025-07-13 A (-279d) | 2026-04-23 → 2025-07-16 A (-281d) | 0% → 100% | 113d → none | CO-R17.S14-PW-100, CO-R16.S12-PW-110, PRO-R17-PW-DL-100 FF+3d, PRO-R17-PW-DL-110 FF+3d → CO-R17.S14-PW-100, CO-R16.S12-PW-110, PRO-R17-PW-DL-100 FF+3d | resources Labor/Helper [104.87 h]; Skilled Labor/Surveyor [5.7 h]; Foreman [5.7 h]; Plumber [52.44 h]; Excavator [46 h]; Pipe with diameter 200mm; in depth 0.0m - 1.5m [442.38] → Labor/Helper [92 h]; Skilled Labor/Surveyor [5 h]; Foreman [5 h]; Plumber [46 h]; Excavator [46 h]; Pipe with diameter 200mm; in depth 0.0m - 1.5m [311.67] |
| CO-R17.S14-PW-130 | Trench Backfilling and Compaction Works for Main Lines of Potable Water Network-[Road 17]-[SW-14] | 2026-04-23 → 2025-07-14 A (-283d) | 2026-04-30 → 2025-07-17 A (-287d) | 0% → 100% | 122.25d → none | CO-R17.S14-PW-110 SS+3d, CO-R17.S14-PW-110 FF+3d, CO-R16.S12-PW-130, CO-R17.S14-PW-210 FF → CO-R17.S14-PW-110 SS+3d, CO-R17.S14-PW-110 FF+3d | resources Skilled Labor/Surveyor [5.7 h]; Foreman [5.7 h]; Eq. Operator [5.7 h]; Loader [48 h]; Compactor [48 h]; Water Tank [12 h]; Pipe with diameter 200mm; in depth 0.0m - 1.5m [177.55] → Skilled Labor/Surveyor [5 h]; Foreman [5 h]; Eq. Operator [5 h]; Loader [48 h]; Compactor [48 h]; Water Tank [12 h]; Pipe with diameter 200mm; in depth 0.0m - 1.5m [124.67] |
| VC | **Valve Chamber** | 2026-04-23 → 2026-07-07 (+75d) | 2026-04-30 → 2026-07-13 (+74d) |  |  |  |  |
| CO-R17.S14-PW-210 | Installation Works for Main Line Valves and Valve Chambers of Potable Water Network-[Road 17]-[SW-14] | 2026-04-23 → 2026-07-07 A (+75d) | 2026-04-30 → 2026-07-13 A (+74d) | 0% → 100% | 122.25d → none | CO-R17.S14-PW-110 → CO-R17.S14-PW-130 | resources Labor/Helper [19.51 h]; Plumber [17.95 h]; Gate valves dia(200)mm on pipes with dia (200) mm. [10.03] → Labor/Helper [16 h]; Plumber [16 h]; Gate valves dia(200)mm on pipes with dia (200) mm. [7] |

| ID | Task | Start | Finish | Duration | Complete | Total float | Predecessors | Other |
| --- | --- | --- | --- | --- | --- | --- | --- | --- |
| FH | **Fire Hydrant** | 2026-04-21 → 2026-10-06 (+168d) | 2026-05-11 → 2026-11-09 (+182d) |  |  |  |  |  |
| CO-R17.S14-PW-140 | Excavation Works for Fire Hydrants of Potable Water Network-[Road 17]-[SW-14] | 2026-04-21 → 2026-10-06 (+168d) | 2026-04-27 → 2026-10-12 (+168d) |  |  | 113d → 8d |  | resources Skilled Labor/Surveyor [5.61 h]; Foreman [5.61 h]; Excavator [48 h]; 3-outlet fire hydrant (2 x 2.5 inch and 1 x 4 inch) in the form of a separate dry vacuum cylinder [0.45] → Skilled Labor/Surveyor [5 h]; Foreman [5 h]; Excavator [48 h]; 3-outlet fire hydrant (2 x 2.5 inch and 1 x 4 inch) in the form of a separate dry vacuum cylinder [0.45] |
| CO-R17.S14-PW-150 | Installation Works for Fire Hydrant of Potable Water Network-[Road 17]-[SW-14] | 2026-04-28 → 2026-10-27 (+182d) | 2026-05-04 → 2026-11-02 (+182d) |  |  | 113d → -4d |  | resources Labor/Helper [107.67 h]; Skilled Labor/Surveyor [5.61 h]; Foreman [5.61 h]; Plumber [107.67 h]; 3-outlet fire hydrant (2 x 2.5 inch and 1 x 4 inch) in the form of a separate dry vacuum cylinder [3.01] → Labor/Helper [96 h]; Skilled Labor/Surveyor [5 h]; Foreman [5 h]; Plumber [96 h]; 3-outlet fire hydrant (2 x 2.5 inch and 1 x 4 inch) in the form of a separate dry vacuum cylinder [1.95] |
| CO-R17.S14-PW-160 | Trench Backfilling and Compaction Works for Fire Hydrants of Potable Water Network-[Road 17]-[SW-14] | 2026-05-05 → 2026-11-03 (+182d) | 2026-05-11 → 2026-11-09 (+182d) |  |  | 113d → -4d |  | resources Skilled Labor/Surveyor [5.61 h]; Foreman [5.61 h]; Excavator [48 h]; 3-outlet fire hydrant (2 x 2.5 inch and 1 x 4 inch) in the form of a separate dry vacuum cylinder [1] → Skilled Labor/Surveyor [5 h]; Foreman [5 h]; Excavator [48 h]; 3-outlet fire hydrant (2 x 2.5 inch and 1 x 4 inch) in the form of a separate dry vacuum cylinder [0.6] |
| TE | **Telecom Network** | 2025-11-16 → 2025-07-20 (-119d) | 2026-09-01 → 2026-10-29 (+58d) |  |  |  |  |  |
| PD | **Ducts Works** | 2025-11-16 → 2025-07-20 (-119d) | 2026-09-01 → 2025-07-27 (-401d) |  |  |  |  |  |
| CO-R17.S14-TE-100 | Trench Excavation and Bedding Works for Ducts of Telecom Network-[Road 17]-[SW-14] | 2025-11-16 → 2025-07-20 A (-119d) | 2025-11-23 → 2025-07-22 A (-124d) |  | 0% → 100% | 167d → none | CO-R17.S14-EW-110, CO-R17.S14-SL-160 SS+5d, CO-R17.S14-SL-160 FF+5d, CO-R17.S13-TE-100 → CO-R17.S14-EW-110, CO-R17.S13-TE-100 SS | resources Skilled Labor/Surveyor [6.84 h]; Foreman [6.84 h]; Excavator [56 h]; 6-way ducts, 50mm dia. HDPE [28.09]; Road crossing ducts (6-way) [3.01] → Skilled Labor/Surveyor [6 h]; Foreman [6 h]; Excavator [56 h]; 6-way ducts, 50mm dia. HDPE [20]; Road crossing ducts (6-way) [2] |
| CO-R17.S14-TE-110 | Pipes Laying Works for Ducts of Telecom Network-[Road 17]-[SW-14] | 2026-08-09 → 2025-07-23 A (-382d) | 2026-08-16 → 2025-07-24 A (-388d) |  | 0% → 100% | 0d → none | CO-R17.S14-TE-100, CO-R16.S12-TE-110, PRO-R17-TE-DL-100 FF+3d → CO-R17.S14-TE-100, PRO-R17-TE-DL-100 FF+3d | resources Labor/Helper [127.67 h]; Skilled Labor/Surveyor [6.84 h]; Foreman [6.84 h]; Plumber [63.83 h]; Excavator [56 h]; JCB [28 h]; Truck [56 h]; 6-way ducts, 50mm dia. HDPE [168.53]; Road crossing ducts (6-way) [14.04] → Labor/Helper [112 h]; Skilled Labor/Surveyor [6 h]; Foreman [6 h]; Plumber [56 h]; Excavator [56 h]; JCB [28 h]; Truck [56 h]; 6-way ducts, 50mm dia. HDPE [119]; Road crossing ducts (6-way) [10] |
| CO-R17.S14-TE-120 | Pouring Plain Concrete Above Ducts of Telecom Network-[Road 17]-[SW-14] | 2026-08-17 → 2025-07-26 A (-387d) | 2026-08-24 → 2025-07-26 A (-394d) |  | 0% → 100% | 0d → none | CO-R17.S14-TE-110, CO-R16.S12-TE-120 → CO-R17.S14-TE-110 | resources Skilled Labor/Surveyor [6.84 h]; Foreman [6.84 h]; Cons. Carpenter [127.67 h]; Block Mason [63.83 h]; 6-way ducts, 50mm dia. HDPE [28.09]; Road crossing ducts (6-way) [3.01] → Skilled Labor/Surveyor [6 h]; Foreman [6 h]; Cons. Carpenter [112 h]; Block Mason [56 h]; 6-way ducts, 50mm dia. HDPE [20]; Road crossing ducts (6-way) [2] |
| CO-R17.S14-TE-130 | Trench Backfilling and Compaction Works for Ducts of Telecom Network-[Road 17]-[SW-14] | 2026-08-25 → 2025-07-27 A (-394d) | 2026-09-01 → 2025-07-27 A (-401d) |  | 0% → 100% | 0d → none | CO-R17.S14-TE-120, CO-R16.S12-TE-130 → CO-R17.S14-TE-120 | resources Skilled Labor/Surveyor [6.84 h]; Foreman [6.84 h]; Excavator [56 h]; 6-way ducts, 50mm dia. HDPE [57.18]; Road crossing ducts (6-way) [4.01] → Skilled Labor/Surveyor [6 h]; Foreman [6 h]; Excavator [56 h]; 6-way ducts, 50mm dia. HDPE [40]; Road crossing ducts (6-way) [3] |
| MH | **Manholes Works** | 2026-08-09 → 2026-10-06 (+58d) | 2026-09-01 → 2026-10-29 (+58d) |  |  |  |  |  |
| CO-R17.S14-TE-140 | Excavation Works for Manholes of Telecom Network-[Road 17]-[SW-14] | 2026-08-09 → 2026-10-06 (+58d) | 2026-08-16 → 2026-10-13 (+58d) |  |  | 0d → -49d |  | resources Skilled Labor/Surveyor [6.73 h]; Foreman [6.73 h]; Excavator [56 h]; Manhole Type 2 (2000x1000x1000) [0.2] → Skilled Labor/Surveyor [6 h]; Foreman [6 h]; Excavator [56 h]; Manhole Type 2 (2000x1000x1000) [0.2] |
| CO-R17.S14-TE-150 | Installation Works for Manholes of Telecom Network-[Road 17]-[SW-14] | 2026-08-17 → 2026-10-14 (+58d) | 2026-08-24 → 2026-10-21 (+58d) |  |  | 0d → -49d |  | resources Skilled Labor/Surveyor [6.73 h]; Foreman [6.73 h]; Excavator [56 h]; Manhole Type 1 (2000x1000x1000) [1]; Manhole Type 2 (2000x1000x1000) [1] → Skilled Labor/Surveyor [6 h]; Foreman [6 h]; Excavator [56 h]; Manhole Type 1 (2000x1000x1000) [1]; Manhole Type 2 (2000x1000x1000) [0.6] |
| CO-R17.S14-TE-160 | Backfilling Works for Manholes of Telecom Network-[Road 17]-[SW-14] | 2026-08-25 → 2026-10-22 (+58d) | 2026-09-01 → 2026-10-29 (+58d) |  |  | 0d → -49d |  | resources Skilled Labor/Surveyor [6.73 h]; Foreman [6.73 h]; Excavator [56 h]; Manhole Type 2 (2000x1000x1000) [0.2] → Skilled Labor/Surveyor [6 h]; Foreman [6 h]; Excavator [56 h]; Manhole Type 2 (2000x1000x1000) [0.2] |
| RD | **Road Works** | 2026-09-02 → 2025-07-06 (-423d) | 2026-12-01 → 2026-09-17 (-75d) |  |  |  |  |  |
| RD | **Pre-Bituminous Construction** | 2026-09-02 → 2025-07-06 (-423d) | 2026-11-18 → 2025-09-14 (-430d) |  |  |  |  |  |
| CO-R17.S14-RD-P-100 | Capping and Subgrade Layer for Road Works-[Road 17]-[SW-14] | 2026-09-02 → 2025-07-06 A (-423d) | 2026-09-22 → 2025-07-16 A (-433d) |  | 0% → 100% | 20d → none | CO-R17.S14-SD-130, CO-R17.S14-SW-130, CO-R17.S14-PW-130, CO-R17.S14-PW-160, PRO-R17-RD-DL-120 FF+3d, CO-R17.S14-TE-130, CO-R17.S14-TE-160, CO-R17.S14-SL-160 SS+3d, CO-R17.S14-SL-160 FF+3d → CO-R17.S14-SD-130, CO-R17.S14-SW-130, CO-R17.S14-PW-130, PRO-R17-RD-DL-120 FF+3d | resources Labor/Helper [725.9 h]; Skilled Labor/Surveyor [362.95 h]; Loader [144 h]; Grader [144 h]; Road Roller [144 h]; Water Tank [144 h]; 300mm capping layer underneath subgrade , CBR?15% [2141.69]; 300mm thick Subgrade, including subgrade preparation, CBR?25% [2141.69] → Labor/Helper [288 h]; Skilled Labor/Surveyor [144 h]; Loader [144 h]; Grader [144 h]; Road Roller [144 h]; Water Tank [144 h]; 300mm capping layer underneath subgrade , CBR?15% [1509.36]; 300mm thick Subgrade, including subgrade preparation, CBR?25% [1509.36] |
| CO-R17.S14-RD-P-110 | Aggregate Base Course Layer for Road Works-[Road 17]-[SW-14] | 2026-11-05 → 2025-09-13 A (-418d) | 2026-11-18 → 2025-09-14 A (-430d) |  | 0% → 100% | 5d → none | CO-R17.S14-RD-P-100 SS+3d, CO-R17.S14-RD-P-100 FF+3d, CO-R17.S14-SD-170 SS+3d, CO-R17.S14-SD-170 FF+3d, CO-R16.S12-RD-P-110, PRO-R17-RD-DL-130 FF+3d → CO-R17.S14-RD-P-100 SS+3d, CO-R17.S14-RD-P-100 FF+3d, CO-R17.S14-SD-170 SS+3d, CO-R17.S14-SD-170 FF+3d, PRO-R17-RD-DL-130 FF+3d | resources Labor/Helper [325.2 h]; Skilled Labor/Surveyor [162.6 h]; Foreman [162.6 h]; Loader [144 h]; Grader [144 h]; Road Roller [144 h]; Aggregate base course 200mm thick after compaction in two layers(Grading 1); CBR?80%; including watering, compaction and testing [1427.46] → Labor/Helper [288 h]; Skilled Labor/Surveyor [144 h]; Foreman [144 h]; Loader [144 h]; Grader [144 h]; Road Roller [144 h]; Aggregate base course 200mm thick after compaction in two layers(Grading 1); CBR?80%; including watering, compaction and testing [1006.34] |
| LS | **Pavement Works** | 2026-11-09 → 2026-08-25 (-76d) | 2026-12-01 → 2026-09-17 (-75d) |  |  |  |  |  |
| CO-R17.S14-RD-P-120 | Fixing of Curbstone for Sidewalks Pavement-[Road 17]-[SW-14] | 2026-11-09 → 2026-08-25 A (-76d) | 2026-11-22 → 2026-08-31 A (-83d) |  | 0% → 100% | 5d → none |  | resources Labor/Helper [102.13 h]; Block Mason [354.06 h]; Precast Concrete Kerb, Type K1 [790.47]; Precast Concrete Kerb, Type L1 [1567.9] → Labor/Helper [288 h]; Block Mason [864 h]; Precast Concrete Kerb, Type K1 [556.87]; Precast Concrete Kerb, Type L1 [1104.89] |
| CO-R17.S14-RD-P-130 | Fixing of Interlock Tiles for Sidewalks Pavement-[Road 17]-[SW-14] | 2026-11-21 → 2026-08-25 A (-88d) | 2026-12-01 → 2026-09-17 A (-75d) |  | 0% → 100% | 0d → none |  | resources Labor/Helper [196.09 h]; Block Mason [588.28 h]; Interlocking block pavers for sidewalk/footpath 60mm thick on and including 30mm Sand Bedding, 200mm Aggregate subbase, all in accordance with authority standards and complete as per specifications [1410.41]; Extraover for Pedestrian ramps [3.01] → Labor/Helper [288 h]; Block Mason [864 h]; Interlocking block pavers for sidewalk/footpath 60mm thick on and including 30mm Sand Bedding, 200mm Aggregate subbase, all in accordance with authority standards and complete as per specifications [994.41]; Extraover for Pedestrian ramps [2] |
| 1 | **Road 18 Local 1 ( 479 LM )** | 2025-02-09 → 2025-02-11 (+2d) | 2026-01-01 → 2026-11-02 (+305d) |  |  |  |  |  |
| SW_15 | **SW_15** | 2025-02-09 → 2025-02-11 (+2d) | 2025-12-16 → 2026-09-20 (+278d) |  |  |  |  |  |
| EW | **Earthworks** | 2025-02-09 → 2025-02-11 (+2d) | 2025-03-06 → 2025-02-25 (-9d) |  |  |  |  |  |
| EW | **Earthworks** | 2025-02-09 → 2025-02-11 (+2d) | 2025-03-06 → 2025-02-25 (-9d) |  |  |  |  |  |
| CO-R18.S15-EW-120 | Roadway Excavation Works Upto Design Level for Earthworks-[Road 18]-[SW-15] | 2025-02-09 → 2025-02-11 A (+2d) | 2025-02-19 → 2025-02-20 A (+1d) |  | 0% → 100% | 11d → none |  | resources Labor/Helper [544.43 h]; Skilled Labor/Surveyor [68.05 h]; Foreman [68.05 h]; Dump Truck [480 h]; Water Tank [240 h]; Dozer [240 h]; Roadway Excavation for cuttings; on any type of material for all depths including trimming and Preparation of excavated surfaces and disposal. [9753.47] → Labor/Helper [240 h]; Skilled Labor/Surveyor [30 h]; Foreman [30 h]; Dump Truck [480 h]; Water Tank [240 h]; Dozer [240 h]; Roadway Excavation for cuttings; on any type of material for all depths including trimming and Preparation of excavated surfaces and disposal. [6871.97] |
| CO-R18.S15-EW-130 | Embankments Works Upto Design Level for Earthworks-[Road 18]-[SW-15] | 2025-02-20 → 2025-02-21 A (+1d) | 2025-03-06 → 2025-02-25 A (-9d) |  | 0% → 100% | 13d → none |  | resources Labor/Helper [1088.85 h]; Skilled Labor/Surveyor [136.11 h]; Foreman [136.11 h]; Dump Truck [960 h]; Water Tank [480 h]; Dozer [480 h]; Embankments to the ROW, with suitable material other than top soil or rock according to specifications [16418.3] → Labor/Helper [480 h]; Skilled Labor/Surveyor [60 h]; Foreman [60 h]; Dump Truck [960 h]; Water Tank [480 h]; Dozer [480 h]; Embankments to the ROW, with suitable material other than top soil or rock according to specifications [11568.1] |
| SW | **Sewage Network** | 2025-03-08 → 2025-04-29 (+52d) | 2025-05-17 → 2025-09-17 (+123d) |  |  |  |  |  |
| ML | **Main Line Sections** | 2025-03-08 → 2025-04-29 (+52d) | 2025-05-17 → 2025-05-20 (+3d) |  |  |  |  |  |
| CO-R18.S15-SW-220 | Trench Excavation and Bedding Works for Main Lines of Sewage Network-[Road 18]-[SW-15] | 2025-03-08 → 2025-04-29 A (+52d) | 2025-03-20 → 2025-05-09 A (+50d) | 12d → 6d | 0% → 100% | 13d → none |  | resources Labor/Helper [544.43 h]; Foreman [544.43 h]; Excavator [96 h]; Nominal bore : 160mm; Depth : 1.5m - 2.5m [25.08]; Nominal bore : 200mm; Depth : 0.0m - 1.5m [3.01]; Nominal bore : 200mm; Depth : 1.5m - 2.5m [6.02]; Nominal bore : 200mm; Depth : 2.5m - 3.5m [16.05]; Nominal bore : 200mm; Depth : 3.5m - 4.5m [11.03]; Nominal bore : 200mm; Depth : 4.5m -5.5m [6.02]; Nominal bore : 200mm; Depth : 5.5m - 6.5m [7.02] → Labor/Helper [96 h]; Foreman [96 h]; Excavator [96 h]; Nominal bore : 160mm; Depth : 1.5m - 2.5m [17.6]; Nominal bore : 200mm; Depth : 0.0m - 1.5m [2.37]; Nominal bore : 200mm; Depth : 1.5m - 2.5m [4.44]; Nominal bore : 200mm; Depth : 2.5m - 3.5m [11.1]; Nominal bore : 200mm; Depth : 3.5m - 4.5m [8.19]; Nominal bore : 200mm; Depth : 4.5m -5.5m [4.14]; Nominal bore : 200mm; Depth : 5.5m - 6.5m [5.33] |
| CO-R18.S15-SW-230 | Pipes Laying Works for Main Lines of Sewage Network-[Road 18]-[SW-15] | 2025-04-24 → 2025-05-10 A (+16d) | 2025-05-05 → 2025-05-16 A (+11d) |  | 0% → 100% | 0d → none |  | resources Labor/Helper [1357.53 h]; Skilled Labor/Surveyor [70.7 h]; Foreman [70.7 h]; Plumber [678.76 h]; Excavator [96 h]; Nominal bore : 160mm; Depth : 1.5m - 2.5m [75.24]; Nominal bore : 200mm; Depth : 0.0m - 1.5m [10.03]; Nominal bore : 200mm; Depth : 1.5m - 2.5m [18.06]; Nominal bore : 200mm; Depth : 2.5m - 3.5m [47.15]; Nominal bore : 200mm; Depth : 3.5m - 4.5m [35.11]; Nominal bore : 200mm; Depth : 4.5m -5.5m [17.05]; Nominal bore : 200mm; Depth : 5.5m - 6.5m [23.07] → Labor/Helper [192 h]; Skilled Labor/Surveyor [10 h]; Foreman [10 h]; Plumber [96 h]; Excavator [96 h]; Nominal bore : 160mm; Depth : 1.5m - 2.5m [52.8]; Nominal bore : 200mm; Depth : 0.0m - 1.5m [7.1]; Nominal bore : 200mm; Depth : 1.5m - 2.5m [13.31]; Nominal bore : 200mm; Depth : 2.5m - 3.5m [33.31]; Nominal bore : 200mm; Depth : 3.5m - 4.5m [24.56]; Nominal bore : 200mm; Depth : 4.5m -5.5m [12.43]; Nominal bore : 200mm; Depth : 5.5m - 6.5m [15.98] |
| CO-R18.S15-SW-240 | Trench Backfilling and Compaction Works for Main Lines of Sewage Network-[Road 18]-[SW-15] | 2025-05-06 → 2025-05-17 A (+11d) | 2025-05-17 → 2025-05-20 A (+3d) |  | 0% → 100% | 0d → none | CO-R18.S15-SW-230, CO-R18.S15-SW-300 FF → CO-R18.S15-SW-230 | resources Skilled Labor/Surveyor [544.43 h]; Foreman [544.43 h]; Excavator [96 h]; Nominal bore : 160mm; Depth : 1.5m - 2.5m [13.04]; Nominal bore : 200mm; Depth : 0.0m - 1.5m [1]; Nominal bore : 200mm; Depth : 1.5m - 2.5m [3.01]; Nominal bore : 200mm; Depth : 2.5m - 3.5m [8.03]; Nominal bore : 200mm; Depth : 3.5m - 4.5m [6.02]; Nominal bore : 200mm; Depth : 4.5m -5.5m [3.01]; Nominal bore : 200mm; Depth : 5.5m - 6.5m [4.01] → Skilled Labor/Surveyor [10 h]; Foreman [10 h]; Excavator [96 h]; Nominal bore : 160mm; Depth : 1.5m - 2.5m [8.8]; Nominal bore : 200mm; Depth : 0.0m - 1.5m [1.18]; Nominal bore : 200mm; Depth : 1.5m - 2.5m [2.22]; Nominal bore : 200mm; Depth : 2.5m - 3.5m [5.55]; Nominal bore : 200mm; Depth : 3.5m - 4.5m [4.09]; Nominal bore : 200mm; Depth : 4.5m -5.5m [2.07]; Nominal bore : 200mm; Depth : 5.5m - 6.5m [2.66] |
| 1 | **Manholes** | 2025-04-24 → 2025-05-25 (+31d) | 2025-05-10 → 2025-09-17 (+130d) |  |  |  |  |  |
| CO-R18.S15-SW-250 | Excavation Works for Main Line Manholes of Sewage Network-[Road 18]-[SW-15] | 2025-04-24 → 2025-05-25 A (+31d) | 2025-04-24 → 2025-05-26 A (+32d) |  | 0% → 100% | 6.75d → none |  | resources Labor/Helper [45.6 h]; Skilled Labor/Surveyor [22.8 h]; Excavator [40 h]; Depth: not exceeding 1.5m [0.15]; Depth: 1.5 - 2.5m [1]; Depth: 2.5 - 3.5m [0.15]; Depth: 5.5 - 6.5m [0.3]; Depth:6.5 - 7.5m [0.15] → Labor/Helper [40 h]; Skilled Labor/Surveyor [20 h]; Excavator [40 h]; Depth: not exceeding 1.5m [0.15]; Depth: 1.5 - 2.5m [0.9]; Depth: 2.5 - 3.5m [0.15]; Depth: 5.5 - 6.5m [0.3]; Depth:6.5 - 7.5m [0.15] |
| CO-R18.S15-SW-260 | Installation RC Footing Works for Main Line Manholes of Sewage Network-[Road 18]-[SW-15] | 2025-04-26 → 2025-05-31 A (+35d) | 2025-04-28 → 2025-06-02 A (+35d) |  | 0% → 100% | 6.75d → none |  | resources Cons. Carpenter [205.18 h]; Steel Fixer [205.18 h]; Depth: not exceeding 1.5m [0.1]; Depth: 1.5 - 2.5m [1]; Depth: 2.5 - 3.5m [0.1]; Depth: 5.5 - 6.5m [0.2]; Depth:6.5 - 7.5m [0.1] → Cons. Carpenter [180 h]; Steel Fixer [180 h]; Depth: not exceeding 1.5m [0.1]; Depth: 1.5 - 2.5m [0.6]; Depth: 2.5 - 3.5m [0.1]; Depth: 5.5 - 6.5m [0.2]; Depth:6.5 - 7.5m [0.1] |
| CO-R18.S15-SW-270 | Install Grp Liner Wall Works for Main Line Manholes of Sewage Network-[Road 18]-[SW-15] | 2025-04-28 → 2025-06-01 A (+34d) | 2025-05-03 → 2025-06-03 A (+31d) |  | 0% → 100% | 6.75d → none |  | resources Labor/Helper [72.95 h]; Plumber [72.95 h]; Depth: not exceeding 1.5m [0.4]; Depth: 1.5 - 2.5m [3.01]; Depth: 2.5 - 3.5m [0.4]; Depth: 5.5 - 6.5m [1]; Depth:6.5 - 7.5m [0.4] → Labor/Helper [64 h]; Plumber [64 h]; Depth: not exceeding 1.5m [0.4]; Depth: 1.5 - 2.5m [2.4]; Depth: 2.5 - 3.5m [0.4]; Depth: 5.5 - 6.5m [0.8]; Depth:6.5 - 7.5m [0.4] |
| CO-R18.S15-SW-290 | Backfilling Works for Main Line Manholes of Sewage Network-[Road 18]-[SW-15] | 2025-05-04 → 2025-06-17 A (+44d) | 2025-05-08 → 2025-06-21 A (+44d) |  | 0% → 100% | 6.75d → none | CO-R18.S15-SW-280 → CO-R18.S15-SW-270 | resources Labor/Helper [72.95 h]; Skilled Labor/Surveyor [36.48 h]; Excavator [64 h]; Depth: not exceeding 1.5m [0.15]; Depth: 1.5 - 2.5m [1]; Depth: 2.5 - 3.5m [0.15]; Depth: 5.5 - 6.5m [0.3]; Depth:6.5 - 7.5m [0.15] → Labor/Helper [64 h]; Skilled Labor/Surveyor [32 h]; Excavator [64 h]; Depth: not exceeding 1.5m [0.15]; Depth: 1.5 - 2.5m [0.9]; Depth: 2.5 - 3.5m [0.15]; Depth: 5.5 - 6.5m [0.3]; Depth:6.5 - 7.5m [0.15] |
| CO-R18.S15-SW-280 | Pouring Grp Liner Wall Works for Main Line Manholes of Sewage Network-[Road 18]-[SW-15] | 2025-05-03 → 2025-09-16 A (+136d) | 2025-05-04 → 2025-09-16 A (+135d) |  | 0% → 100% | 6.75d → none |  | resources Cons. Carpenter [91.19 h]; Steel Fixer [91.19 h]; Depth: not exceeding 1.5m [0.05]; Depth: 1.5 - 2.5m [0.3]; Depth: 2.5 - 3.5m [0.05]; Depth: 5.5 - 6.5m [0.1]; Depth:6.5 - 7.5m [0.05] → Cons. Carpenter [80 h]; Steel Fixer [80 h]; Depth: not exceeding 1.5m [0.05]; Depth: 1.5 - 2.5m [0.3]; Depth: 2.5 - 3.5m [0.05]; Depth: 5.5 - 6.5m [0.1]; Depth:6.5 - 7.5m [0.05] |
| CO-R18.S15-SW-300 | Testing Works for Main Line Manholes of Sewage Network-[Road 18]-[SW-15] | 2025-05-08 → 2025-09-17 A (+132d) | 2025-05-10 → 2025-09-17 A (+130d) |  | 0% → 100% | 6.75d → none | CO-R18.S15-SW-290 → CO-R18.S15-SW-290, CO-R18.S15-SW-280 | resources Labor/Helper [45.6 h]; Plumber [45.6 h]; Depth: not exceeding 1.5m [0.05]; Depth: 1.5 - 2.5m [0.3]; Depth: 2.5 - 3.5m [0.05]; Depth: 5.5 - 6.5m [0.1]; Depth:6.5 - 7.5m [0.05] → Labor/Helper [40 h]; Plumber [40 h]; Depth: not exceeding 1.5m [0.05]; Depth: 1.5 - 2.5m [0.3]; Depth: 2.5 - 3.5m [0.05]; Depth: 5.5 - 6.5m [0.1]; Depth:6.5 - 7.5m [0.05] |
| SD | **Storm Drainage Network** | 2025-05-18 → 2025-04-30 (-18d) | 2025-07-21 → 2026-07-13 (+357d) |  |  |  |  |  |
| ML | **Main Line Sections** | 2025-05-18 → 2025-04-30 (-18d) | 2025-07-19 → 2025-05-24 (-56d) |  |  |  |  |  |
| CO-R18.S15-SD-230 | Trench Excavation and Bedding Works for Main Lines of Storm Drainage Network-[Road 18]-[SW-15] | 2025-05-18 → 2025-04-30 A (-18d) | 2025-05-28 → 2025-05-22 A (-6d) |  | 0% → 100% | 73d → none | CO-R18.S15-EW-130, CO-R18.S15-EW-120, CO-R18.S15-SW-240, CO-R18.S15-SW-240 FF+3d → CO-R18.S15-EW-130, CO-R18.S15-EW-120 | resources Skilled Labor/Surveyor [544.43 h]; Foreman [544.43 h]; Excavator [112 h]; Pipe with diameter 600mm ; depth: 1.51m - 2.5m [45.14]; Pipe with diameter 700mm ; depth: 1.51m - 2.5m [23.07]; Pipe with diameter 1000mm ; depth: 1.51m - 2.5m [14.04]; Pipe with diameter 1000mm ; depth: 2.51 - 3.5m [14.04] → Skilled Labor/Surveyor [12 h]; Foreman [12 h]; Excavator [112 h]; Pipe with diameter 600mm ; depth: 1.51m - 2.5m [32.06]; Pipe with diameter 700mm ; depth: 1.51m - 2.5m [15.52]; Pipe with diameter 1000mm ; depth: 1.51m - 2.5m [10]; Pipe with diameter 1000mm ; depth: 2.51 - 3.5m [10] |
| CO-R18.S15-SD-240 | Pipes Laying Works for Main Lines of Storm Drainage Network-[Road 18]-[SW-15] | 2025-05-29 → 2025-05-01 A (-28d) | 2025-06-25 → 2025-05-24 A (-32d) |  | 0% → 100% | 73d → none |  | resources Labor/Helper [1361.06 h]; Skilled Labor/Surveyor [68.05 h]; Foreman [68.05 h]; Plumber [680.53 h]; Excavator [160 h]; Pipe with diameter 600mm ; depth: 1.51m - 2.5m [136.43]; Pipe with diameter 700mm ; depth: 1.51m - 2.5m [66.21]; Pipe with diameter 1000mm ; depth: 1.51m - 2.5m [42.13]; Pipe with diameter 1000mm ; depth: 2.51 - 3.5m [42.13] → Labor/Helper [320 h]; Skilled Labor/Surveyor [16 h]; Foreman [16 h]; Plumber [160 h]; Excavator [160 h]; Pipe with diameter 600mm ; depth: 1.51m - 2.5m [96.17]; Pipe with diameter 700mm ; depth: 1.51m - 2.5m [46.57]; Pipe with diameter 1000mm ; depth: 1.51m - 2.5m [30]; Pipe with diameter 1000mm ; depth: 2.51 - 3.5m [30] |
| CO-R18.S15-SD-250 | Trench Backfilling and Compaction Works for Main Lines of Storm Drainage Network-[Road 18]-[SW-15] | 2025-06-26 → 2025-05-15 A (-42d) | 2025-07-19 → 2025-05-24 A (-56d) |  | 0% → 100% | 364d → none |  | resources Skilled Labor/Surveyor [544.43 h]; Foreman [544.43 h]; Excavator [160 h]; Pipe with diameter 600mm ; depth: 1.51m - 2.5m [23.07]; Pipe with diameter 700mm ; depth: 1.51m - 2.5m [11.03]; Pipe with diameter 1000mm ; depth: 1.51m - 2.5m [7.02]; Pipe with diameter 1000mm ; depth: 2.51 - 3.5m [7.02] → Skilled Labor/Surveyor [16 h]; Foreman [16 h]; Excavator [160 h]; Pipe with diameter 600mm ; depth: 1.51m - 2.5m [15.83]; Pipe with diameter 700mm ; depth: 1.51m - 2.5m [7.76]; Pipe with diameter 1000mm ; depth: 1.51m - 2.5m [5]; Pipe with diameter 1000mm ; depth: 2.51 - 3.5m [5] |
| MH | **Manholes** | 2025-05-29 → 2025-05-13 (-16d) | 2025-06-18 → 2026-07-13 (+390d) |  |  |  |  |  |
| CO-R18.S15-SD-300 | Trench Excavation and Bedding Works for Manholes of Storm Drainage Network-[Road 18]-[SW-15] | 2025-05-29 → 2025-05-13 A (-16d) | 2025-05-29 → 2025-05-22 A (-7d) |  | 0% → 100% | 73d → none |  | resources Labor/Helper [45.37 h]; Skilled Labor/Surveyor [22.68 h]; Excavator [24 h]; MH ; depth: 0.0m - 1.5m [0.15]; MH ; depth: 1.51m - 2.5m [0.3]; MH ; depth: 2.51 - 3.5m [0.3] → Labor/Helper [24 h]; Skilled Labor/Surveyor [12 h]; Excavator [24 h]; MH ; depth: 0.0m - 1.5m [0.15]; MH ; depth: 1.51m - 2.5m [0.3]; MH ; depth: 2.51 - 3.5m [0.3] |
| CO-R18.S15-SD-310 | Install RC Footing Works for Manholes of Storm Drainage Network-[Road 18]-[SW-15] | 2025-05-31 → 2025-05-21 A (-10d) | 2025-05-31 → 2025-05-22 A (-9d) |  | 0% → 100% | 73d → none |  | resources Cons. Carpenter [81.66 h]; Steel Fixer [81.66 h]; MH ; depth: 0.0m - 1.5m [0.05]; MH ; depth: 1.51m - 2.5m [0.1]; MH ; depth: 2.51 - 3.5m [0.1] → Cons. Carpenter [48 h]; Steel Fixer [48 h]; MH ; depth: 0.0m - 1.5m [0.05]; MH ; depth: 1.51m - 2.5m [0.1]; MH ; depth: 2.51 - 3.5m [0.1] |
| CO-R18.S15-SD-320 | Install RC Wall Rings & Slab Works for Manholes of Storm Drainage Network-[Road 18]-[SW-15] | 2025-06-01 A | 2025-06-04 A |  | 0% → 100% | 73d → none |  | resources Cons. Carpenter [353.88 h]; Steel Fixer [353.88 h]; MH ; depth: 0.0m - 1.5m [0.45]; MH ; depth: 1.51m - 2.5m [1]; MH ; depth: 2.51 - 3.5m [1] → Cons. Carpenter [192 h]; Steel Fixer [192 h]; MH ; depth: 0.0m - 1.5m [0.45]; MH ; depth: 1.51m - 2.5m [0.9]; MH ; depth: 2.51 - 3.5m [0.9] |
| CO-R18.S15-SD-340 | Backfilling Works for Manholes of Storm Drainage Network-[Road 18]-[SW-15] | 2025-06-11 → 2025-06-08 A (-3d) | 2025-06-18 → 2025-06-14 A (-4d) |  | 0% → 100% | 73d → none | CO-R18.S15-SD-330 → CO-R18.S15-SD-320 | resources Labor/Helper [317.58 h]; Skilled Labor/Surveyor [158.79 h]; Excavator [168 h]; MH ; depth: 0.0m - 1.5m [0.2]; MH ; depth: 1.51m - 2.5m [0.4]; MH ; depth: 2.51 - 3.5m [0.4] → Labor/Helper [168 h]; Skilled Labor/Surveyor [84 h]; Excavator [168 h]; MH ; depth: 0.0m - 1.5m [0.2]; MH ; depth: 1.51m - 2.5m [0.4]; MH ; depth: 2.51 - 3.5m [0.4] |
| CO-R18.S15-SD-330 | Testing Works for Manholes of Storm Drainage Network-[Road 18]-[SW-15] | 2025-06-10 → 2026-06-04 A (+359d) | 2025-06-10 → 2026-07-13 A (+398d) |  | 0% → 100% | 73d → none |  | resources Labor/Helper [93.17 h]; Plumber [61.25 h]; MH ; depth: 0.0m - 1.5m [0.1]; MH ; depth: 1.51m - 2.5m [0.2]; MH ; depth: 2.51 - 3.5m [0.2] → Labor/Helper [24 h]; Plumber [24 h]; MH ; depth: 0.0m - 1.5m [0.1]; MH ; depth: 1.51m - 2.5m [0.2]; MH ; depth: 2.51 - 3.5m [0.2] |
| CB | **Catch Basin Sections** | 2025-06-19 → 2025-05-18 (-32d) | 2025-07-21 → 2026-07-13 (+357d) |  |  |  |  |  |
| CO-R18.S15-SD-260 | Trench Excavation and Bedding Works for Catch Basins of Storm Drainage Network-[Road 18]-[SW-15] | 2025-06-19 → 2025-05-18 A (-32d) | 2025-06-26 → 2025-05-22 A (-35d) |  | 0% → 100% | 73d → none |  | resources Skilled Labor/Surveyor [6.84 h]; Foreman [6.84 h]; Excavator [56 h]; Pipe with diameter 300mm ; depth: 0 - 1.5m [51.16]; Pipe with diameter 400mm ; depth: 0 - 1.5m [3.01] → Skilled Labor/Surveyor [6 h]; Foreman [6 h]; Excavator [56 h]; Pipe with diameter 300mm ; depth: 0 - 1.5m [36.39]; Pipe with diameter 400mm ; depth: 0 - 1.5m [2.22] |
| CO-R18.S15-SD-270 | Installation and Pipes Laying Connection Works for Catch Basins of Storm Drainage Network-[Road 18]-[SW-15] | 2025-06-28 → 2025-05-24 A (-35d) | 2025-07-05 → 2025-06-03 A (-32d) |  | 0% → 100% | 73d → none |  | resources Labor/Helper [255.34 h]; Skilled Labor/Surveyor [13.68 h]; Foreman [13.68 h]; Excavator [112 h]; Pipe with diameter 300mm ; depth: 0 - 1.5m [154.48]; Pipe with diameter 400mm ; depth: 0 - 1.5m [10.03] → Labor/Helper [224 h]; Skilled Labor/Surveyor [12 h]; Foreman [12 h]; Excavator [112 h]; Pipe with diameter 300mm ; depth: 0 - 1.5m [109.18]; Pipe with diameter 400mm ; depth: 0 - 1.5m [6.66] |
| CO-R18.S15-SD-290 | Trench Backfilling and Compaction Works for Catch Basins of Storm Drainage Network-[Road 18]-[SW-15] | 2025-07-14 → 2025-06-04 A (-40d) | 2025-07-21 → 2025-06-09 A (-42d) |  | 0% → 100% | 75d → none | CO-R18.S15-SD-280 → CO-R18.S15-SD-270 | resources Skilled Labor/Surveyor [6.84 h]; Foreman [6.84 h]; Excavator [56 h]; Pipe with diameter 300mm ; depth: 0 - 1.5m [69.22]; Pipe with diameter 400mm ; depth: 0 - 1.5m [4.01] → Skilled Labor/Surveyor [6 h]; Foreman [6 h]; Excavator [56 h]; Pipe with diameter 300mm ; depth: 0 - 1.5m [48.52]; Pipe with diameter 400mm ; depth: 0 - 1.5m [2.96] |
| CO-R18.S15-SD-280 | Testing Works for Catch Basins of Storm Drainage Network-[Road 18]-[SW-15] | 2025-07-06 → 2026-06-04 A (+333d) | 2025-07-13 → 2026-07-13 A (+365d) |  | 0% → 100% | 75d → none |  | resources Labor/Helper [127.67 h]; Skilled Labor/Surveyor [18.23 h]; Foreman [19.63 h]; Plumber [63.83 h]; Excavator [56 h]; Pipe with diameter 300mm ; depth: 0 - 1.5m [34.11]; Pipe with diameter 400mm ; depth: 0 - 1.5m [1] → Labor/Helper [112 h]; Skilled Labor/Surveyor [6 h]; Foreman [6 h]; Plumber [56 h]; Excavator [56 h]; Pipe with diameter 300mm ; depth: 0 - 1.5m [24.26]; Pipe with diameter 400mm ; depth: 0 - 1.5m [1.48] |
| IR | **Irrigation Network** | 2025-07-22 → 2025-06-16 (-36d) | 2025-08-28 → 2026-07-13 (+319d) |  |  |  |  |  |
| ML | **Main Line Pipes** | 2025-07-22 → 2025-06-16 (-36d) | 2025-08-28 → 2026-07-13 (+319d) |  |  |  |  |  |
| CO-R18.S15-IR-140 | Trench Excavation and Bedding Works for Main Lines of Irrigation Network-[Road 18]-[SW-15] | 2025-07-22 → 2025-06-16 A (-36d) | 2025-07-29 → 2025-07-07 A (-22d) |  | 0% → 100% | 75d → none |  | resources Skilled Labor/Surveyor [6.84 h]; Foreman [6.84 h]; Excavator [56 h]; 125 mm pipe; depth 0.0m - 1.5m [175.55] → Skilled Labor/Surveyor [6 h]; Foreman [6 h]; Excavator [56 h]; 125 mm pipe; depth 0.0m - 1.5m [123.68] |
| CO-R18.S15-IR-150 | Pipes Laying Works for Main Lines of Irrigation Network-[Road 18]-[SW-15] | 2025-07-30 → 2025-06-19 A (-41d) | 2025-08-10 → 2025-07-07 A (-34d) |  | 0% → 100% | 75d → none |  | resources Labor/Helper [182.38 h]; Skilled Labor/Surveyor [9.12 h]; Foreman [9.12 h]; Plumber [91.19 h]; Excavator [80 h]; 125 mm pipe; depth 0.0m - 1.5m [526.65] → Labor/Helper [160 h]; Skilled Labor/Surveyor [8 h]; Foreman [8 h]; Plumber [80 h]; Excavator [80 h]; 125 mm pipe; depth 0.0m - 1.5m [371.03] |
| CO-R18.S15-IR-170 | Trench Backfilling and Compaction Works for Main Lines of Irrigation Network-[Road 18]-[SW-15] | 2025-08-19 → 2025-07-02 A (-48d) | 2025-08-28 → 2025-07-07 A (-52d) |  | 0% → 100% | 75d → none | CO-R18.S15-IR-160, CO-R18.S15-IR-150 → CO-R18.S15-IR-150 | resources Skilled Labor/Surveyor [9.12 h]; Foreman [9.12 h]; Excavator [72 h]; 125 mm pipe; depth 0.0m - 1.5m [88.28] → Skilled Labor/Surveyor [8 h]; Foreman [8 h]; Excavator [72 h]; 125 mm pipe; depth 0.0m - 1.5m [61.84] |
| CO-R18.S15-IR-160 | Installation Works for Main Line Valves of Irrigation Network-[Road 18]-[SW-15] | 2025-08-11 → 2026-07-11 A (+334d) | 2025-08-18 → 2026-07-13 A (+329d) |  | 0% → 100% | 75d → none |  | resources Labor/Helper [125.62 h]; Skilled Labor/Surveyor [6.73 h]; Foreman [6.73 h]; Plumber [125.62 h]; Gate valves dia (90)mm on pipes with dia (125) mm. [7.02]; Wash out valve with dia (100)mm on pipes with dia (125) mm [1]; Wash out chamber; on 125 mm dia pipeline Depth 1.5 - 3m [1] → Labor/Helper [112 h]; Skilled Labor/Surveyor [6 h]; Foreman [6 h]; Plumber [112 h]; Gate valves dia (90)mm on pipes with dia (125) mm. [5]; Wash out valve with dia (100)mm on pipes with dia (125) mm [1]; Wash out chamber; on 125 mm dia pipeline Depth 1.5 - 3m [1] |
| TE | **Telecom Network** | 2025-08-30 → 2025-07-08 (-53d) | 2025-10-01 → 2025-07-30 (-63d) |  |  |  |  |  |
| PD | **Ducts Works** | 2025-08-30 → 2025-07-08 (-53d) | 2025-10-01 → 2025-07-21 (-72d) |  |  |  |  |  |
| CO-R18.S15-TE-170 | Trench Excavation and Bedding Works for Ducts of Telecom Network-[Road 18]-[SW-15] | 2025-08-30 → 2025-07-08 A (-53d) | 2025-09-06 → 2025-07-10 A (-58d) |  | 0% → 100% | 212d → none |  | resources Skilled Labor/Surveyor [6.84 h]; Foreman [6.84 h]; Excavator [56 h]; 6-way ducts, 50mm dia. HDPE [27.08]; Road crossing ducts (6-way) [3.01] → Skilled Labor/Surveyor [6 h]; Foreman [6 h]; Excavator [56 h]; 6-way ducts, 50mm dia. HDPE [19]; Road crossing ducts (6-way) [2] |
| CO-R18.S15-TE-180 | Pipes Laying Works for Ducts of Telecom Network-[Road 18]-[SW-15] | 2025-09-07 → 2025-07-11 A (-58d) | 2025-09-14 → 2025-07-15 A (-61d) |  | 0% → 100% | 292d → none |  | resources Labor/Helper [127.67 h]; Skilled Labor/Surveyor [6.84 h]; Foreman [6.84 h]; Plumber [63.83 h]; Excavator [56 h]; JCB [28 h]; Truck [56 h]; 6-way ducts, 50mm dia. HDPE [163.51]; Road crossing ducts (6-way) [14.04] → Labor/Helper [112 h]; Skilled Labor/Surveyor [6 h]; Foreman [6 h]; Plumber [56 h]; Excavator [56 h]; JCB [28 h]; Truck [56 h]; 6-way ducts, 50mm dia. HDPE [115]; Road crossing ducts (6-way) [10] |
| CO-R18.S15-TE-190 | Trench Backfilling and Compaction Works for Ducts of Telecom Network-[Road 18]-[SW-15] | 2025-09-24 → 2025-07-16 A (-70d) | 2025-10-01 → 2025-07-17 A (-76d) |  | 0% → 100% | 292d → none |  | resources Skilled Labor/Surveyor [6.84 h]; Foreman [6.84 h]; Excavator [56 h]; 6-way ducts, 50mm dia. HDPE [54.17]; Road crossing ducts (6-way) [4.01] → Skilled Labor/Surveyor [6 h]; Foreman [6 h]; Excavator [56 h]; 6-way ducts, 50mm dia. HDPE [38]; Road crossing ducts (6-way) [3] |
| CO-R18.S15-TE-230 | Pouring Plain Concrete Above Ducts of Telecom Network-[Road 18]-[SW-15] | 2025-09-15 → 2025-07-18 A (-59d) | 2025-09-22 → 2025-07-21 A (-63d) |  | 0% → 100% | 292d → none |  | resources Skilled Labor/Surveyor [6.84 h]; Foreman [6.84 h]; Cons. Carpenter [127.67 h]; Block Mason [63.83 h]; 6-way ducts, 50mm dia. HDPE [27.08]; Road crossing ducts (6-way) [3.01] → Skilled Labor/Surveyor [6 h]; Foreman [6 h]; Cons. Carpenter [112 h]; Block Mason [56 h]; 6-way ducts, 50mm dia. HDPE [19]; Road crossing ducts (6-way) [2] |
| MH | **Manholes Works** | 2025-09-07 → 2025-07-20 (-49d) | 2025-10-01 → 2025-07-30 (-63d) |  |  |  |  |  |
| CO-R18.S15-TE-200 | Excavation Works for Manholes of Telecom Network-[Road 18]-[SW-15] | 2025-09-07 → 2025-07-20 A (-49d) | 2025-09-14 → 2025-07-22 A (-54d) |  | 0% → 100% | 301d → none |  | resources Skilled Labor/Surveyor [6.84 h]; Foreman [6.84 h]; Excavator [56 h]; Manhole Type 2 (2000x1000x1000) [0.4] → Skilled Labor/Surveyor [6 h]; Foreman [6 h]; Excavator [56 h]; Manhole Type 2 (2000x1000x1000) [0.4] |
| CO-R18.S15-TE-210 | Installation Works for Manholes of Telecom Network-[Road 18]-[SW-15] | 2025-09-15 → 2025-07-23 A (-54d) | 2025-09-22 → 2025-07-26 A (-58d) |  | 0% → 100% | 301d → none |  | resources Skilled Labor/Surveyor [6.84 h]; Foreman [6.84 h]; Excavator [56 h]; Manhole Type 1 (2000x1000x1000) [1]; Manhole Type 2 (2000x1000x1000) [1] → Skilled Labor/Surveyor [6 h]; Foreman [6 h]; Excavator [56 h]; Manhole Type 1 (2000x1000x1000) [1]; Manhole Type 2 (2000x1000x1000) [1.2] |

| ID | Task | Start | Finish | Duration | Complete | Total float | Predecessors | Other |
| --- | --- | --- | --- | --- | --- | --- | --- | --- |
| CO-R18.S15-TE-220 | Backfilling Works for Manholes of Telecom Network-[Road 18]-[SW-15] | 2025-09-24 → 2025-07-27 A (-59d) | 2025-10-01 → 2025-07-30 A (-63d) |  | 0% → 100% | 301d → none |  | resources Skilled Labor/Surveyor [6.84 h]; Foreman [6.84 h]; Excavator [56 h]; Manhole Type 2 (2000x1000x1000) [0.4] → Skilled Labor/Surveyor [6 h]; Foreman [6 h]; Excavator [56 h]; Manhole Type 2 (2000x1000x1000) [0.4] |
| MV | **Medium Voltage Network** | 2025-11-02 → 2025-07-22 (-103d) | 2025-11-29 → 2025-07-24 (-128d) |  |  |  |  |  |
| CW | **Cabling Works** | 2025-11-02 → 2025-07-22 (-103d) | 2025-11-29 → 2025-07-24 (-128d) |  |  |  |  |  |
| CO-R18.S15-MV-ML-340 | Trench Excavation and Bedding Works for Medium Voltage Network-[Road 18]-[SW-15] | 2025-11-02 → 2025-07-22 A (-103d) | 2025-11-22 → 2025-07-23 A (-122d) |  | 0% → 100% | 262d → none | CO-R18.S15-SD-290 SS+3d, CO-R18.S15-SD-290 FF+3d, CO-R18.S15-EW-130, CO-R18.S15-TE-190 SS+3d, CO-R18.S15-TE-190 FF+3d, CO-R18.S16-SL-160 → CO-R18.S15-SD-290 SS+3d, CO-R18.S15-SD-290 FF+3d, CO-R18.S15-EW-130, CO-R18.S15-TE-190 SS+3d, CO-R18.S16-SL-160 | resources Skilled Labor/Surveyor [17.1 h]; Foreman [17.1 h]; Excavator [144 h]; Excavation for Trench size 40cm wide and 80cm deep ( Maximum 1 cable 33kv) [243.76]; Excavation for Trench size 60cm wide and 80cm deep ( for Max two cables 33 kv) [14.04]; Excavation for Trench size 90cm wide and 80cm deep ( Maximum 3 cable 33kv) [61.19]; Excavation for Trench size 120cm wide and 80cm deep ( Maximum 4cable 33kv) [21.07]; Excavation for Trench size 150cm wide and 80cm deep ( Maximum 4cable 33kv) [78.24]; Duct bank for (2) 33 kv cables [8.03]; Duct bank for (4) 33 kv cables [55.17]; Duct bank for (6) 33 kv cables [25.08] → Skilled Labor/Surveyor [15 h]; Foreman [15 h]; Excavator [144 h]; Excavation for Trench size 40cm wide and 80cm deep ( Maximum 1 cable 33kv) [171.61]; Excavation for Trench size 60cm wide and 80cm deep ( for Max two cables 33 kv) [9.76]; Excavation for Trench size 90cm wide and 80cm deep ( Maximum 3 cable 33kv) [43.49]; Excavation for Trench size 120cm wide and 80cm deep ( Maximum 4cable 33kv) [14.79]; Excavation for Trench size 150cm wide and 80cm deep ( Maximum 4cable 33kv) [54.74]; Duct bank for (2) 33 kv cables [5.92]; Duct bank for (4) 33 kv cables [39.06]; Duct bank for (6) 33 kv cables [17.75] |
| CO-R18.S15-MV-ML-350 | Cable Laying Works for Medium Voltage Network-[Road 18]-[SW-15] | 2025-11-05 → 2025-07-22 A (-106d) | 2025-11-25 → 2025-07-23 A (-125d) |  | 0% → 100% | 262d → none |  | resources Labor/Helper [164.14 h]; Electrician [164.14 h]; Low Current Technician [164.14 h]; 33kv 3Cx400 mmï¿½ Al XLPE / LLDPE /PVC Cable [1146.58]; 33kv 3Cx400 mmï¿½ Al XLPE /LLDPE/PVC [4.01] → Labor/Helper [576 h]; Electrician [576 h]; Low Current Technician [576 h]; 33kv 3Cx400 mm² Al XLPE / LLDPE /PVC Cable [807.76]; 33kv 3Cx400 mm² Al XLPE /LLDPE/PVC [2.8] |
| CO-R18.S15-MV-ML-360 | Trench Backfilling and Compaction Works for Medium Voltage Network-[Road 18]-[SW-15] | 2025-11-09 → 2025-07-23 A (-109d) | 2025-11-29 → 2025-07-24 A (-128d) |  | 0% → 100% | 262d → none |  | resources Skilled Labor/Surveyor [17.1 h]; Foreman [17.1 h]; Excavator [144 h]; Water Tank [36 h]; 33kv 3Cx400 mmï¿½ Al XLPE / LLDPE /PVC Cable [491.54]; 33kv 3Cx400 mmï¿½ Al XLPE /LLDPE/PVC [1] → Skilled Labor/Surveyor [15 h]; Foreman [15 h]; Excavator [144 h]; Water Tank [36 h]; 33kv 3Cx400 mm² Al XLPE / LLDPE /PVC Cable [346.18]; 33kv 3Cx400 mm² Al XLPE /LLDPE/PVC [1.2] |
| RD | **Road Works** | 2025-11-16 → 2025-07-10 (-129d) | 2025-12-16 → 2026-09-20 (+278d) |  |  |  |  |  |
| RD | **Pre-Bituminous Construction** | 2025-11-16 → 2025-07-10 (-129d) | 2025-12-09 → 2025-08-31 (-100d) |  |  |  |  |  |
| CO-R18.S15-RD-P-160 | Capping and Subgrade Layer for Road Works-[Road 18]-[SW-15] | 2025-11-16 → 2025-07-10 A (-129d) | 2025-12-02 → 2025-07-21 A (-134d) |  | 0% → 100% | 263d → none | CO-R18.S15-SD-250, CO-R18.S15-SW-240, CO-R18.S15-TE-190, CO-R18.S15-TE-220, CO-R18.S15-MV-ML-360 SS+3d, CO-R18.S15-MV-ML-360 FF+3d, PRO-R18-RD-DL-220 → CO-R18.S15-SD-250, CO-R18.S15-SW-240, PRO-R18-RD-DL-220 | resources Labor/Helper [273.57 h]; Skilled Labor/Surveyor [136.79 h]; Loader [120 h]; Grader [120 h]; Road Roller [120 h]; Water Tank [120 h]; 300mm capping layer underneath subgrade , CBR?15% [2072.47]; 300mm thick Subgrade, including subgrade preparation, CBR?25% [2072.47] → Labor/Helper [240 h]; Skilled Labor/Surveyor [120 h]; Loader [120 h]; Grader [120 h]; Road Roller [120 h]; Water Tank [120 h]; 300mm capping layer underneath subgrade , CBR?15% [1459.58]; 300mm thick Subgrade, including subgrade preparation, CBR?25% [1459.58] |
| CO-R18.S15-RD-P-170 | Aggregate Base Course Layer for Road Works-[Road 18]-[SW-15] | 2025-11-19 → 2025-08-27 A (-84d) | 2025-12-09 → 2025-08-31 A (-100d) |  | 0% → 100% | 263d → none |  | resources Labor/Helper [328.29 h]; Skilled Labor/Surveyor [164.14 h]; Foreman [164.14 h]; Loader [144 h]; Grader [144 h]; Road Roller [144 h]; Aggregate base course 200mm thick after compaction in two layers(Grading 1); CBR?80%; including watering, compaction and testing [1381.31] → Labor/Helper [288 h]; Skilled Labor/Surveyor [144 h]; Foreman [144 h]; Loader [144 h]; Grader [144 h]; Road Roller [144 h]; Aggregate base course 200mm thick after compaction in two layers(Grading 1); CBR?80%; including watering, compaction and testing [973.16] |
| LS | **Pavement Works** | 2025-11-23 → 2026-08-25 (+275d) | 2025-12-16 → 2026-09-20 (+278d) |  |  |  |  |  |
| CO-R18.S15-RD-P-140 | Fixing of Curbstone for Sidewalks Pavement-[Road 18]-[SW-15] | 2025-11-23 → 2026-08-25 A (+275d) | 2025-12-13 → 2026-08-31 A (+261d) |  | 0% → 100% | 263d → none |  | resources Labor/Helper [328.29 h]; Block Mason [984.87 h]; Precast Concrete Kerb, Type K1 [765.39]; Precast Concrete Kerb, Type L1 [1515.73] → Labor/Helper [288 h]; Block Mason [864 h]; Precast Concrete Kerb, Type K1 [538.5]; Precast Concrete Kerb, Type L1 [1068.46] |
| CO-R18.S15-RD-P-150 | Fixing of Interlock Tiles for Sidewalks Pavement-[Road 18]-[SW-15] | 2025-11-26 → 2026-08-25 A (+272d) | 2025-12-16 → 2026-09-20 A (+278d) |  | 0% → 100% | 315d → none |  | resources Labor/Helper [328.29 h]; Block Mason [984.87 h]; Interlocking block pavers for sidewalk/footpath 60mm thick on and including 30mm Sand Bedding, 200mm Aggregate subbase, all in accordance with authority standards and complete as per specifications [1365.26]; Extraover for Pedestrian ramps [4.01] → Labor/Helper [288 h]; Block Mason [864 h]; Interlocking block pavers for sidewalk/footpath 60mm thick on and including 30mm Sand Bedding, 200mm Aggregate subbase, all in accordance with authority standards and complete as per specifications [961.62]; Extraover for Pedestrian ramps [3] |
| SW_16 | **SW_16** | 2025-02-20 → 2025-02-21 (+1d) | 2026-01-01 → 2026-11-02 (+305d) |  |  |  |  |  |
| EW | **Earthworks** | 2025-02-20 → 2025-02-21 (+1d) | 2025-03-18 → 2025-03-02 (-16d) |  |  |  |  |  |
| EW | **Earthworks** | 2025-02-20 → 2025-02-21 (+1d) | 2025-03-18 → 2025-03-02 (-16d) |  |  |  |  |  |
| CO-R18.S16-EW-120 | Roadway Excavation Works Upto Design Level for Earthworks-[Road 18]-[SW-16] | 2025-02-20 → 2025-02-21 A (+1d) | 2025-03-04 → 2025-02-26 A (-6d) |  | 0% → 100% | 11d → none |  | resources Labor/Helper [218.86 h]; Skilled Labor/Surveyor [27.36 h]; Foreman [27.36 h]; Dump Truck [192 h]; Water Tank [192 h]; Dozer [192 h]; Roadway Excavation for cuttings; on any type of material for all depths including trimming and Preparation of excavated surfaces and disposal. [9753.47] → Labor/Helper [192 h]; Skilled Labor/Surveyor [24 h]; Foreman [24 h]; Dump Truck [192 h]; Water Tank [192 h]; Dozer [192 h]; Roadway Excavation for cuttings; on any type of material for all depths including trimming and Preparation of excavated surfaces and disposal. [6871.97] |
| CO-R18.S16-EW-130 | Embankments Works Upto Design Level for Earthworks-[Road 18]-[SW-16] | 2025-03-05 → 2025-02-27 A (-6d) | 2025-03-18 → 2025-03-02 A (-16d) |  | 0% → 100% | 15d → none |  | resources Labor/Helper [683.93 h]; Skilled Labor/Surveyor [85.49 h]; Foreman [85.49 h]; Dump Truck [600 h]; Water Tank [600 h]; Dozer [600 h]; Embankments to the ROW, with suitable material other than top soil or rock according to specifications [16418.3] → Labor/Helper [600 h]; Skilled Labor/Surveyor [75 h]; Foreman [75 h]; Dump Truck [600 h]; Water Tank [600 h]; Dozer [600 h]; Embankments to the ROW, with suitable material other than top soil or rock according to specifications [11568.1] |
| SW | **Sewage Network** | 2025-03-22 → 2025-04-29 (+38d) | 2025-05-28 → 2025-09-17 (+112d) |  |  |  |  |  |
| ML | **Main Line Sections** | 2025-03-22 → 2025-04-29 (+38d) | 2025-05-28 → 2025-05-19 (-9d) |  |  |  |  |  |
| CO-R18.S16-SW-220 | Trench Excavation and Bedding Works for Main Lines of Sewage Network-[Road 18]-[SW-16] | 2025-03-22 → 2025-04-29 A (+38d) | 2025-04-08 → 2025-05-19 A (+41d) | 12d → 6d | 0% → 100% | 13d → none | CO-R18.S16-EW-130, ENG-MS-SW-ML-A-110, ENG-SH-SW-ML-A-110, CO-R18.S15-SW-220 → CO-R18.S16-EW-130, ENG-MS-SW-ML-A-110, ENG-SH-SW-ML-A-110, CO-R18.S15-SW-220 SS | resources Labor/Helper [109.43 h]; Foreman [109.43 h]; Excavator [96 h]; Nominal bore : 200mm; Depth : 0.0m - 1.5m [3.01]; Nominal bore : 200mm; Depth : 1.5m - 2.5m [6.02]; Nominal bore : 200mm; Depth : 2.5m - 3.5m [16.05]; Nominal bore : 200mm; Depth : 3.5m - 4.5m [11.03]; Nominal bore : 200mm; Depth : 4.5m -5.5m [6.02]; Nominal bore : 200mm; Depth : 5.5m - 6.5m [7.02] → Labor/Helper [96 h]; Foreman [96 h]; Excavator [96 h]; Nominal bore : 200mm; Depth : 0.0m - 1.5m [2.37]; Nominal bore : 200mm; Depth : 1.5m - 2.5m [4.44]; Nominal bore : 200mm; Depth : 2.5m - 3.5m [11.1]; Nominal bore : 200mm; Depth : 3.5m - 4.5m [8.19]; Nominal bore : 200mm; Depth : 4.5m -5.5m [4.14]; Nominal bore : 200mm; Depth : 5.5m - 6.5m [5.33] |
| CO-R18.S16-SW-230 | Pipes Laying Works for Main Lines of Sewage Network-[Road 18]-[SW-16] | 2025-04-24 → 2025-04-30 A (+6d) | 2025-05-07 → 2025-05-19 A (+12d) |  | 0% → 100% | 8d → none |  | resources Labor/Helper [218.86 h]; Skilled Labor/Surveyor [11.4 h]; Foreman [11.4 h]; Plumber [109.43 h]; Excavator [96 h]; Nominal bore : 200mm; Depth : 0.0m - 1.5m [10.03]; Nominal bore : 200mm; Depth : 1.5m - 2.5m [18.06]; Nominal bore : 200mm; Depth : 2.5m - 3.5m [47.15]; Nominal bore : 200mm; Depth : 3.5m - 4.5m [35.11]; Nominal bore : 200mm; Depth : 4.5m -5.5m [17.05]; Nominal bore : 200mm; Depth : 5.5m - 6.5m [23.07] → Labor/Helper [192 h]; Skilled Labor/Surveyor [10 h]; Foreman [10 h]; Plumber [96 h]; Excavator [96 h]; Nominal bore : 200mm; Depth : 0.0m - 1.5m [7.1]; Nominal bore : 200mm; Depth : 1.5m - 2.5m [13.31]; Nominal bore : 200mm; Depth : 2.5m - 3.5m [33.31]; Nominal bore : 200mm; Depth : 3.5m - 4.5m [24.56]; Nominal bore : 200mm; Depth : 4.5m -5.5m [12.43]; Nominal bore : 200mm; Depth : 5.5m - 6.5m [15.98] |
| CO-R18.S16-SW-240 | Trench Backfilling and Compaction Works for Main Lines of Sewage Network-[Road 18]-[SW-16] | 2025-05-18 → 2025-05-03 A (-15d) | 2025-05-28 → 2025-05-17 A (-11d) |  | 0% → 100% | 0d → none | CO-R18.S16-SW-230, CO-R18.S16-SW-300 FF, CO-R18.S15-SW-240 → CO-R18.S16-SW-230 | resources Skilled Labor/Surveyor [11.4 h]; Foreman [11.4 h]; Excavator [96 h]; Nominal bore : 200mm; Depth : 0.0m - 1.5m [1]; Nominal bore : 200mm; Depth : 1.5m - 2.5m [3.01]; Nominal bore : 200mm; Depth : 2.5m - 3.5m [8.03]; Nominal bore : 200mm; Depth : 3.5m - 4.5m [6.02]; Nominal bore : 200mm; Depth : 4.5m -5.5m [3.01]; Nominal bore : 200mm; Depth : 5.5m - 6.5m [4.01] → Skilled Labor/Surveyor [10 h]; Foreman [10 h]; Excavator [96 h]; Nominal bore : 200mm; Depth : 0.0m - 1.5m [1.18]; Nominal bore : 200mm; Depth : 1.5m - 2.5m [2.22]; Nominal bore : 200mm; Depth : 2.5m - 3.5m [5.55]; Nominal bore : 200mm; Depth : 3.5m - 4.5m [4.09]; Nominal bore : 200mm; Depth : 4.5m -5.5m [2.07]; Nominal bore : 200mm; Depth : 5.5m - 6.5m [2.66] |
| 1 | **Manholes** | 2025-04-24 → 2025-06-10 (+47d) | 2025-05-08 → 2025-09-17 (+132d) |  |  |  |  |  |
| CO-R18.S16-SW-250 | Excavation Works for Main Line Manholes of Sewage Network-[Road 18]-[SW-16] | 2025-04-24 → 2025-06-10 A (+47d) | 2025-04-24 → 2025-06-10 A (+47d) |  | 0% → 100% | 17d → none |  | resources Labor/Helper [18.24 h]; Skilled Labor/Surveyor [9.12 h]; Excavator [16 h]; Depth: 1.5 - 2.5m [1] → Labor/Helper [16 h]; Skilled Labor/Surveyor [8 h]; Excavator [16 h]; Depth: 1.5 - 2.5m [0.6] |
| CO-R18.S16-SW-260 | Installation RC Footing Works for Main Line Manholes of Sewage Network-[Road 18]-[SW-16] | 2025-04-26 → 2025-06-11 A (+46d) | 2025-04-27 → 2025-06-12 A (+46d) |  | 0% → 100% | 17d → none |  | resources Cons. Carpenter [72.95 h]; Steel Fixer [72.95 h]; Depth: 1.5 - 2.5m [0.4] → Cons. Carpenter [64 h]; Steel Fixer [64 h]; Depth: 1.5 - 2.5m [0.4] |
| CO-R18.S16-SW-270 | Install Grp Liner Wall Works for Main Line Manholes of Sewage Network-[Road 18]-[SW-16] | 2025-04-28 → 2025-06-17 A (+50d) | 2025-05-01 → 2025-06-22 A (+52d) |  | 0% → 100% | 17d → none |  | resources Labor/Helper [72.95 h]; Plumber [72.95 h]; Depth: 1.5 - 2.5m [3.01] → Labor/Helper [64 h]; Plumber [64 h]; Depth: 1.5 - 2.5m [1.6] |
| CO-R18.S16-SW-290 | Backfilling Works for Main Line Manholes of Sewage Network-[Road 18]-[SW-16] | 2025-05-04 → 2025-06-24 A (+51d) | 2025-05-07 → 2025-06-28 A (+52d) |  | 0% → 100% | 17d → none | CO-R18.S16-SW-280 → CO-R18.S16-SW-270 | resources Labor/Helper [72.95 h]; Skilled Labor/Surveyor [36.48 h]; Excavator [64 h]; Depth: 1.5 - 2.5m [1] → Labor/Helper [64 h]; Skilled Labor/Surveyor [32 h]; Excavator [64 h]; Depth: 1.5 - 2.5m [0.6] |
| CO-R18.S16-SW-280 | Pouring Grp Liner Wall Works for Main Line Manholes of Sewage Network-[Road 18]-[SW-16] | 2025-05-03 → 2025-09-16 A (+136d) | 2025-05-03 → 2025-09-16 A (+136d) |  | 0% → 100% | 17d → none |  | resources Cons. Carpenter [36.48 h]; Steel Fixer [36.48 h]; Depth: 1.5 - 2.5m [0.2] → Cons. Carpenter [32 h]; Steel Fixer [32 h]; Depth: 1.5 - 2.5m [0.2] |
| CO-R18.S16-SW-300 | Testing Works for Main Line Manholes of Sewage Network-[Road 18]-[SW-16] | 2025-05-08 → 2025-09-17 A (+132d) | 2025-05-08 → 2025-09-17 A (+132d) |  | 0% → 100% | 17d → none | CO-R18.S16-SW-290 → CO-R18.S16-SW-290, CO-R18.S16-SW-280 | resources Labor/Helper [18.24 h]; Plumber [18.24 h]; Depth: 1.5 - 2.5m [0.2] → Labor/Helper [16 h]; Plumber [16 h]; Depth: 1.5 - 2.5m [0.2] |
| SD | **Storm Drainage Network** | 2025-05-21 → 2025-05-01 (-20d) | 2025-08-11 → 2026-07-13 (+336d) |  |  |  |  |  |
| ML | **Main Line Sections** | 2025-05-21 → 2025-05-01 (-20d) | 2025-08-11 → 2025-06-04 (-68d) |  |  |  |  |  |
| CO-R18.S16-SD-240 | Pipes Laying Works for Main Lines of Storm Drainage Network-[Road 18]-[SW-16] | 2025-06-02 → 2025-05-01 A (-32d) | 2025-06-29 → 2025-06-02 A (-27d) |  | 0% → 100% | 78d → none |  | resources Labor/Helper [364.77 h]; Skilled Labor/Surveyor [18.24 h]; Foreman [18.24 h]; Plumber [182.38 h]; Excavator [160 h]; Pipe with diameter 400mm ; depth: 0.0m - 1.5m [208.65]; Pipe with diameter 400mm ; depth: 1.51m - 2.5m [222.7]; Pipe with diameter 500mm ; depth: 1.51m - 2.5m [522.63]; Pipe with diameter 600mm ; depth: 1.51m - 2.5m [38.12]; Pipe with diameter 700mm ; depth: 1.51m - 2.5m [66.21]; Pipe with diameter 900mm ; depth: 1.51m - 2.5m [212.66]; Pipe with diameter 900mm ; depth: 2.51 - 3.5m [48.15] → Labor/Helper [320 h]; Skilled Labor/Surveyor [16 h]; Foreman [16 h]; Plumber [160 h]; Excavator [160 h]; Pipe with diameter 400mm ; depth: 0.0m - 1.5m [146.56]; Pipe with diameter 400mm ; depth: 1.51m - 2.5m [157.39]; Pipe with diameter 500mm ; depth: 1.51m - 2.5m [367.89]; Pipe with diameter 600mm ; depth: 1.51m - 2.5m [26.57]; Pipe with diameter 700mm ; depth: 1.51m - 2.5m [46.57]; Pipe with diameter 900mm ; depth: 1.51m - 2.5m [150.32]; Pipe with diameter 900mm ; depth: 2.51 - 3.5m [34.2] |
| CO-R18.S16-SD-230 | Trench Excavation and Bedding Works for Main Lines of Storm Drainage Network-[Road 18]-[SW-16] | 2025-05-21 → 2025-05-03 A (-18d) | 2025-06-01 → 2025-05-15 A (-17d) |  | 0% → 100% | 78d → none |  | resources Skilled Labor/Surveyor [13.68 h]; Foreman [13.68 h]; Excavator [112 h]; Pipe with diameter 400mm ; depth: 0.0m - 1.5m [69.22]; Pipe with diameter 400mm ; depth: 1.51m - 2.5m [74.23]; Pipe with diameter 500mm ; depth: 1.51m - 2.5m [106.33]; Pipe with diameter 600mm ; depth: 1.51m - 2.5m [13.04]; Pipe with diameter 700mm ; depth: 1.51m - 2.5m [23.07]; Pipe with diameter 900mm ; depth: 1.51m - 2.5m [71.22]; Pipe with diameter 900mm ; depth: 2.51 - 3.5m [16.05] → Skilled Labor/Surveyor [12 h]; Foreman [12 h]; Excavator [112 h]; Pipe with diameter 400mm ; depth: 0.0m - 1.5m [48.85]; Pipe with diameter 400mm ; depth: 1.51m - 2.5m [52.46]; Pipe with diameter 500mm ; depth: 1.51m - 2.5m [75.39]; Pipe with diameter 600mm ; depth: 1.51m - 2.5m [8.86]; Pipe with diameter 700mm ; depth: 1.51m - 2.5m [15.52]; Pipe with diameter 900mm ; depth: 1.51m - 2.5m [50.11]; Pipe with diameter 900mm ; depth: 2.51 - 3.5m [11.4] |
| CO-R18.S16-SD-250 | Trench Backfilling and Compaction Works for Main Lines of Storm Drainage Network-[Road 18]-[SW-16] | 2025-07-20 → 2025-05-19 A (-62d) | 2025-08-11 → 2025-06-04 A (-68d) |  | 0% → 100% | 369d → none |  | resources Skilled Labor/Surveyor [18.24 h]; Foreman [18.24 h]; Excavator [160 h]; Pipe with diameter 400mm ; depth: 0.0m - 1.5m [34.11]; Pipe with diameter 600mm ; depth: 1.51m - 2.5m [6.02]; Pipe with diameter 700mm ; depth: 1.51m - 2.5m [11.03]; Pipe with diameter 900mm ; depth: 1.51m - 2.5m [35.11]; Pipe with diameter 900mm ; depth: 2.51 - 3.5m [8.03] → Skilled Labor/Surveyor [16 h]; Foreman [16 h]; Excavator [160 h]; Pipe with diameter 400mm ; depth: 0.0m - 1.5m [24.26]; Pipe with diameter 600mm ; depth: 1.51m - 2.5m [4.43]; Pipe with diameter 700mm ; depth: 1.51m - 2.5m [7.76]; Pipe with diameter 900mm ; depth: 1.51m - 2.5m [24.85]; Pipe with diameter 900mm ; depth: 2.51 - 3.5m [5.7] |
| MH | **Manholes** | 2025-06-02 → 2025-06-01 (-1d) | 2025-06-22 → 2026-07-13 (+386d) |  |  |  |  |  |
| CO-R18.S16-SD-300 | Trench Excavation and Bedding Works for Manholes of Storm Drainage Network-[Road 18]-[SW-16] | 2025-06-02 → 2025-06-01 A (-1d) | 2025-06-02 A |  | 0% → 100% | 78d → none |  | resources Labor/Helper [27.36 h]; Skilled Labor/Surveyor [13.68 h]; Excavator [24 h]; MH ; depth: 0.0m - 1.5m [0.15]; MH ; depth: 1.51m - 2.5m [0.3]; MH ; depth: 1.51m - 2.5m [0.15]; MH ; depth: 2.51 - 3.5m [0.3] → Labor/Helper [24 h]; Skilled Labor/Surveyor [12 h]; Excavator [24 h]; MH ; depth: 0.0m - 1.5m [0.15]; MH ; depth: 1.51m - 2.5m [0.3]; MH ; depth: 1.51m - 2.5m [0.15]; MH ; depth: 2.51 - 3.5m [0.3] |
| CO-R18.S16-SD-310 | Install RC Footing Works for Manholes of Storm Drainage Network-[Road 18]-[SW-16] | 2025-06-03 → 2025-06-02 A (-1d) | 2025-06-03 A |  | 0% → 100% | 78d → none |  | resources Cons. Carpenter [54.71 h]; Steel Fixer [54.71 h]; MH ; depth: 0.0m - 1.5m [0.05]; MH ; depth: 1.51m - 2.5m [0.1]; MH ; depth: 1.51m - 2.5m [0.05]; MH ; depth: 2.51 - 3.5m [0.1] → Cons. Carpenter [48 h]; Steel Fixer [48 h]; MH ; depth: 0.0m - 1.5m [0.05]; MH ; depth: 1.51m - 2.5m [0.1]; MH ; depth: 1.51m - 2.5m [0.05]; MH ; depth: 2.51 - 3.5m [0.1] |
| CO-R18.S16-SD-320 | Install RC Wall Rings & Slab Works for Manholes of Storm Drainage Network-[Road 18]-[SW-16] | 2025-06-04 → 2025-06-03 A (-1d) | 2025-06-12 → 2025-06-04 A (-8d) |  | 0% → 100% | 78d → none |  | resources Cons. Carpenter [218.86 h]; Steel Fixer [218.86 h]; MH ; depth: 0.0m - 1.5m [0.45]; MH ; depth: 1.51m - 2.5m [1]; MH ; depth: 1.51m - 2.5m [0.45]; MH ; depth: 2.51 - 3.5m [1] → Cons. Carpenter [192 h]; Steel Fixer [192 h]; MH ; depth: 0.0m - 1.5m [0.45]; MH ; depth: 1.51m - 2.5m [0.9]; MH ; depth: 1.51m - 2.5m [0.45]; MH ; depth: 2.51 - 3.5m [0.9] |
| CO-R18.S16-SD-340 | Backfilling Works for Manholes of Storm Drainage Network-[Road 18]-[SW-16] | 2025-06-15 → 2025-06-11 A (-4d) | 2025-06-22 → 2025-06-14 A (-8d) |  | 0% → 100% | 78d → none | CO-R18.S16-SD-330 → CO-R18.S16-SD-320 | resources Labor/Helper [191.5 h]; Skilled Labor/Surveyor [95.75 h]; Excavator [168 h]; MH ; depth: 0.0m - 1.5m [0.2]; MH ; depth: 1.51m - 2.5m [0.4]; MH ; depth: 1.51m - 2.5m [0.2]; MH ; depth: 2.51 - 3.5m [0.4] → Labor/Helper [168 h]; Skilled Labor/Surveyor [84 h]; Excavator [168 h]; MH ; depth: 0.0m - 1.5m [0.2]; MH ; depth: 1.51m - 2.5m [0.4]; MH ; depth: 1.51m - 2.5m [0.2]; MH ; depth: 2.51 - 3.5m [0.4] |
| CO-R18.S16-SD-330 | Testing Works for Manholes of Storm Drainage Network-[Road 18]-[SW-16] | 2025-06-14 → 2026-06-04 A (+355d) | 2025-06-14 → 2026-07-13 A (+394d) |  | 0% → 100% | 78d → none |  | resources Labor/Helper [93.17 h]; Plumber [30.36 h]; MH ; depth: 0.0m - 1.5m [0.1]; MH ; depth: 1.51m - 2.5m [0.2]; MH ; depth: 1.51m - 2.5m [0.1]; MH ; depth: 2.51 - 3.5m [0.2] → Labor/Helper [24 h]; Plumber [24 h]; MH ; depth: 0.0m - 1.5m [0.1]; MH ; depth: 1.51m - 2.5m [0.2]; MH ; depth: 1.51m - 2.5m [0.1]; MH ; depth: 2.51 - 3.5m [0.2] |
| CB | **Catch Basin Sections** | 2025-06-23 → 2025-06-10 (-13d) | 2025-07-26 → 2026-07-13 (+352d) |  |  |  |  |  |
| CO-R18.S16-SD-260 | Trench Excavation and Bedding Works for Catch Basins of Storm Drainage Network-[Road 18]-[SW-16] | 2025-06-23 → 2025-06-10 A (-13d) | 2025-06-29 → 2025-06-12 A (-17d) |  | 0% → 100% | 78d → none |  | resources Skilled Labor/Surveyor [5.7 h]; Foreman [5.7 h]; Excavator [48 h]; Pipe with diameter 300mm ; depth: 0 - 1.5m [51.16]; Pipe with diameter 400mm ; depth: 0 - 1.5m [3.01] → Skilled Labor/Surveyor [5 h]; Foreman [5 h]; Excavator [48 h]; Pipe with diameter 300mm ; depth: 0 - 1.5m [36.39]; Pipe with diameter 400mm ; depth: 0 - 1.5m [2.22] |
| CO-R18.S16-SD-290 | Trench Backfilling and Compaction Works for Catch Basins of Storm Drainage Network-[Road 18]-[SW-16] | 2025-07-19 → 2025-06-15 A (-34d) | 2025-07-26 → 2025-06-23 A (-33d) |  | 0% → 100% | 417d → none | CO-R18.S16-SD-280 → CO-R18.S16-SD-270 | resources Skilled Labor/Surveyor [6.84 h]; Foreman [6.84 h]; Excavator [56 h]; Pipe with diameter 300mm ; depth: 0 - 1.5m [69.22]; Pipe with diameter 400mm ; depth: 0 - 1.5m [4.01] → Skilled Labor/Surveyor [6 h]; Foreman [6 h]; Excavator [56 h]; Pipe with diameter 300mm ; depth: 0 - 1.5m [48.52]; Pipe with diameter 400mm ; depth: 0 - 1.5m [2.96] |
| CO-R18.S16-SD-270 | Installation and Pipes Laying Connection Works for Catch Basins of Storm Drainage Network-[Road 18]-[SW-16] | 2025-07-06 → 2025-06-17 A (-19d) | 2025-07-13 → 2025-06-22 A (-21d) |  | 0% → 100% | 73d → none |  | resources Labor/Helper [255.34 h]; Skilled Labor/Surveyor [13.68 h]; Foreman [13.68 h]; Excavator [112 h]; Pipe with diameter 300mm ; depth: 0 - 1.5m [154.48]; Pipe with diameter 400mm ; depth: 0 - 1.5m [10.03] → Labor/Helper [224 h]; Skilled Labor/Surveyor [12 h]; Foreman [12 h]; Excavator [112 h]; Pipe with diameter 300mm ; depth: 0 - 1.5m [109.18]; Pipe with diameter 400mm ; depth: 0 - 1.5m [6.66] |
| CO-R18.S16-SD-280 | Testing Works for Catch Basins of Storm Drainage Network-[Road 18]-[SW-16] | 2025-07-14 → 2026-06-04 A (+325d) | 2025-07-17 → 2026-07-13 A (+361d) |  | 0% → 100% | 417d → none |  | resources Labor/Helper [93.17 h]; Skilled Labor/Surveyor [18.23 h]; Foreman [19.63 h]; Plumber [36.48 h]; Excavator [32 h]; Pipe with diameter 300mm ; depth: 0 - 1.5m [34.11]; Pipe with diameter 400mm ; depth: 0 - 1.5m [1] → Labor/Helper [64 h]; Skilled Labor/Surveyor [4 h]; Foreman [4 h]; Plumber [32 h]; Excavator [32 h]; Pipe with diameter 300mm ; depth: 0 - 1.5m [24.26]; Pipe with diameter 400mm ; depth: 0 - 1.5m [1.48] |
| SL | **Street Lighting Network** | 2025-03-19 → 2025-07-08 (+111d) | 2025-11-27 → 2026-11-02 (+340d) |  |  |  |  |  |
| LP | **Lighting Poles Works** | 2025-08-30 → 2025-07-08 (-53d) | 2025-11-27 → 2026-10-27 (+334d) |  |  |  |  |  |
| CO-R18.S16-SL-100 | Foundation Excavation Works for Lighting Poles of Street Lighting Network-[Road 18]-[SW-16] | 2025-08-30 → 2025-07-08 A (-53d) | 2025-09-11 → 2025-07-10 A (-63d) |  | 0% → 100% | 75d → none |  | resources Lighting poles with one arm, including the power distribution box, screws, cables, 12 meters in height. [1] → Lighting poles with one arm, including the power distribution box, screws, cables, 12 meters in height. [1.05] |
| CO-R18.S16-SL-110 | Installation Works for Lighting Poles Foundation of Street Lighting Network-[Road 18]-[SW-16] | 2025-09-13 → 2025-07-11 A (-64d) | 2025-09-27 → 2025-07-13 A (-76d) |  | 0% → 100% | 75d → none |  | resources Reinforced concrete foundation, for 12m high lighting columns With Drawpits [30.09] → Reinforced concrete foundation, for 12m high lighting columns With Drawpits [21] |
| CO-R18.S16-SL-120 | Installation Works for Lighting Poles of Street Lighting Network-[Road 18]-[SW-16] | 2025-11-02 → 2025-09-10 A (-53d) | 2025-11-22 → 2025-09-10 A (-73d) |  | 0% → 100% | 75d → none |  | resources Lighting poles with one arm, including the power distribution box, screws, cables, 12 meters in height. [17.05] → Lighting poles with one arm, including the power distribution box, screws, cables, 12 meters in height. [11.55] |
| CO-R18.S16-SL-210 | Backfilling Works for Lighting Poles of Street Lighting Network-[Road 18]-[SW-16] | 2025-11-08 → 2025-09-10 A (-59d) | 2025-11-22 → 2025-09-10 A (-73d) |  | 0% → 100% | 75d → none |  | resources Lighting poles with one arm, including the power distribution box, screws, cables, 12 meters in height. [6.02] → Lighting poles with one arm, including the power distribution box, screws, cables, 12 meters in height. [4.2] |
| CO-R18.S16-SL-200 | Testing Works for Lighting Poles of Street Lighting Network-[Road 18]-[SW-16] | 2025-11-22 → 2026-10-06 (+318d) | 2025-11-27 → 2026-10-11 (+318d) |  |  | 256.25d → -8.25d |  | resources Lighting poles with one arm, including the power distribution box, screws, cables, 12 meters in height. [6.02] → Lighting poles with one arm, including the power distribution box, screws, cables, 12 meters in height. [4.2] |
| CO-R18.S16-SL-130 | Installation Works for Lighting Fixtures With Drop Wire of Street Lighting Network-[Road 18]-[SW-16] | 2025-11-08 → 2026-10-07 (+333d) | 2025-11-27 → 2026-10-27 (+334d) |  |  | 255.75d → -22.25d |  | resources Street Lighting( LED) Luminaire,(Type C) complete with control gear and lamp, ?.17000 Lumen [30.09] → Street Lighting( LED) Luminaire,(Type C) complete with control gear and lamp, ?.17000 Lumen [21] |
| CW | **Cabling Works** | 2025-09-28 → 2025-07-14 (-76d) | 2025-11-01 → 2025-07-21 (-103d) |  |  |  |  |  |
| CO-R18.S16-SL-140 | Trench Excavation and Bedding Works for Street Lighting Network-[Road 18]-[SW-16] | 2025-09-28 → 2025-07-14 A (-76d) | 2025-10-08 → 2025-07-16 A (-84d) |  | 0% → 100% | 75d → none |  |  |
| CO-R18.S16-SL-150 | Cable Laying Works for Street Lighting Network-[Road 18]-[SW-16] | 2025-10-09 → 2025-07-17 A (-84d) | 2025-10-20 → 2025-07-18 A (-94d) |  | 0% → 100% | 75d → none |  | resources Supply, installation , test and operation of cables, Copper, (4Cx25mmï¿½,Cu/XLPE/SWA/PVC +1x16mmï¿½ PVC/PVC) [1142.57] → Supply, installation , test and operation of cables, Copper, (4Cx25mm²,Cu/XLPE/SWA/PVC +1x16mm² PVC/PVC) [805.35] |
| CO-R18.S16-SL-160 | Trench Backfilling and Compaction Works for Street Lighting Network-[Road 18]-[SW-16] | 2025-10-21 → 2025-07-19 A (-94d) | 2025-11-01 → 2025-07-21 A (-103d) |  | 0% → 100% | 75d → none |  | resources Supply, installation , test and operation of cables, Copper, (4Cx25mmï¿½,Cu/XLPE/SWA/PVC +1x16mmï¿½ PVC/PVC) [88.28] → Supply, installation , test and operation of cables, Copper, (4Cx25mm²,Cu/XLPE/SWA/PVC +1x16mm² PVC/PVC) [61.95] |
| DPB | **Distrubution Panel Boards** | 2025-03-19 → 2026-10-06 (+566d) | 2025-04-20 → 2026-11-02 (+561d) |  |  |  |  |  |
| CO-R18.S16-SL-170 | Foundation Excavation Works For Panel Boards of Street Lighting Network-[Road 18]-[SW-16] | 2025-03-19 → 2026-10-06 (+566d) | 2025-04-13 → 2026-10-26 (+561d) |  |  | 439d → -29d |  |  |
| CO-R18.S16-SL-180 | Installation Works for Panel Board Concrete Foundations of Street Lighting Network-[Road 18]-[SW-16] | 2025-03-23 → 2026-10-10 (+566d) | 2025-04-16 → 2026-10-29 (+561d) |  |  | 439d → -29d |  |  |
| CO-R18.S16-SL-220 | A wall of concrete blocks to install the KWH meter of Street Lighting Network-[Road 18]-[SW-16] | 2025-03-23 → 2026-10-10 (+566d) | 2025-04-16 → 2026-10-29 (+561d) |  |  | 442d → -26d |  | resources Road crossing ducts, 4 way (4 x 100mm PVC) [65.2]; Drawpit with medium duty steel cover, size 900x900x1200mm, Type 4 [6.02] → Road crossing ducts, 4 way (4 x 100mm PVC) [46.02]; Drawpit with medium duty steel cover, size 900x900x1200mm, Type 4 [4] |
| CO-R18.S16-SL-190 | Installation Works for Lighting Panel Boards of Street Lighting Network-[Road 18]-[SW-16] | 2025-03-26 → 2026-10-13 (+566d) | 2025-04-20 → 2026-11-02 (+561d) |  |  | 439d → -29d |  |  |
| PW | **Potable Water Network** | 2025-08-12 → 2025-06-19 (-54d) | 2025-09-11 → 2026-10-26 (+410d) |  |  |  |  |  |
| ML | **Main Line Sections** | 2025-08-12 → 2025-06-19 (-54d) | 2025-09-01 → 2025-07-07 (-56d) |  |  |  |  |  |
| CO-R18.S16-PW-230 | Trench Excavation and Bedding Works for Main Lines of Potable Water Network-[Road 18]-[SW-16] | 2025-08-12 → 2025-06-19 A (-54d) | 2025-08-18 → 2025-07-07 A (-42d) |  | 0% → 100% | 369d → none |  | resources Skilled Labor/Surveyor [5.7 h]; Foreman [5.7 h]; Excavator [48 h]; Pipe with diameter 200mm; in depth 0.0m - 1.5m [199.62] → Skilled Labor/Surveyor [5 h]; Foreman [5 h]; Excavator [48 h]; Pipe with diameter 200mm; in depth 0.0m - 1.5m [141.22] |
| CO-R18.S16-PW-240 | Pipes Laying and accessories for Main Lines of Potable Water Network-[Road 18]-[SW-16] | 2025-08-19 → 2025-06-21 A (-59d) | 2025-08-25 → 2025-07-07 A (-49d) |  | 0% → 100% | 369d → none | CO-R18.S16-PW-230, PRO-R18-PW-DL-150 FF+3d, PRO-R18-PW-DL-140 FF+3d → CO-R18.S16-PW-230, PRO-R18-PW-DL-140 FF+3d | resources Labor/Helper [104.87 h]; Skilled Labor/Surveyor [5.7 h]; Foreman [5.7 h]; Plumber [52.44 h]; Excavator [46 h]; Pipe with diameter 200mm; in depth 0.0m - 1.5m [500.56] → Labor/Helper [92 h]; Skilled Labor/Surveyor [5 h]; Foreman [5 h]; Plumber [46 h]; Excavator [46 h]; Pipe with diameter 200mm; in depth 0.0m - 1.5m [353.04] |
| CO-R18.S16-PW-280 | Trench Backfilling and Compaction Works for Main Lines of Potable Water Network-[Road 18]-[SW-16] | 2025-08-25 → 2025-06-22 A (-64d) | 2025-09-01 → 2025-07-07 A (-56d) |  | 0% → 100% | 378.25d → none | CO-R18.S16-PW-240 SS+3d, CO-R18.S16-PW-240 FF+3d, CO-R18.S16-PW-330 FF → CO-R18.S16-PW-240 SS+3d, CO-R18.S16-PW-240 FF+3d | resources Skilled Labor/Surveyor [5.7 h]; Foreman [5.7 h]; Eq. Operator [5.7 h]; Loader [48 h]; Compactor [48 h]; Water Tank [12 h]; Pipe with diameter 200mm; in depth 0.0m - 1.5m [199.62] → Skilled Labor/Surveyor [5 h]; Foreman [5 h]; Eq. Operator [5 h]; Loader [48 h]; Compactor [48 h]; Water Tank [12 h]; Pipe with diameter 200mm; in depth 0.0m - 1.5m [141.22] |
| VC | **Valve Chamber** | 2025-08-25 → 2026-07-07 (+316d) | 2025-09-01 → 2026-07-13 (+315d) |  |  |  |  |  |
| CO-R18.S16-PW-330 | Installation Works for Main Line Valves and Valve Chambers of Potable Water Network-[Road 18]-[SW-16] | 2025-08-25 → 2026-07-07 A (+316d) | 2025-09-01 → 2026-07-13 A (+315d) |  | 0% → 100% | 378.25d → none | CO-R18.S16-PW-240 → CO-R18.S16-PW-280, PRO-R18-PW-DL-150 | resources Labor/Helper [19.51 h]; Plumber [17.95 h]; Gate valves dia(200)mm on pipes with dia (200) mm. [10.03] → Labor/Helper [16 h]; Plumber [16 h]; Gate valves dia(200)mm on pipes with dia (200) mm. [7] |

| ID | Task | Start | Finish | Complete | Total float | Predecessors | Other |
| --- | --- | --- | --- | --- | --- | --- | --- |
| FH | **Fire Hydrant** | 2025-08-23 → 2026-10-06 (+409d) | 2025-09-11 → 2026-10-26 (+410d) |  |  |  |  |
| CO-R18.S16-PW-250 | Excavation Works for Fire Hydrants of Potable Water Network-[Road 18]-[SW-16] | 2025-08-23 → 2026-10-06 (+409d) | 2025-08-28 → 2026-10-12 (+410d) |  | 369d → 8d |  | resources Skilled Labor/Surveyor [5.61 h]; Foreman [5.61 h]; Excavator [48 h]; 3-outlet fire hydrant (2 x 2.5 inch and 1 x 4 inch) in the form of a separate dry vacuum cylinder [0.3] → Skilled Labor/Surveyor [5 h]; Foreman [5 h]; Excavator [48 h]; 3-outlet fire hydrant (2 x 2.5 inch and 1 x 4 inch) in the form of a separate dry vacuum cylinder [0.3] |
| CO-R18.S16-PW-260 | Installation Works for Fire Hydrant of Potable Water Network-[Road 18]-[SW-16] | 2025-08-30 → 2026-10-13 (+409d) | 2025-09-04 → 2026-10-19 (+410d) |  | 369d → 8d |  | resources Labor/Helper [107.67 h]; Skilled Labor/Surveyor [5.61 h]; Foreman [5.61 h]; Plumber [107.67 h]; 3-outlet fire hydrant (2 x 2.5 inch and 1 x 4 inch) in the form of a separate dry vacuum cylinder [1] → Labor/Helper [96 h]; Skilled Labor/Surveyor [5 h]; Foreman [5 h]; Plumber [96 h]; 3-outlet fire hydrant (2 x 2.5 inch and 1 x 4 inch) in the form of a separate dry vacuum cylinder [1.3] |
| CO-R18.S16-PW-270 | Trench Backfilling and Compaction Works for Fire Hydrants of Potable Water Network-[Road 18]-[SW-16] | 2025-09-06 → 2026-10-20 (+409d) | 2025-09-11 → 2026-10-26 (+410d) |  | 369d → 8d |  | resources Skilled Labor/Surveyor [5.61 h]; Foreman [5.61 h]; Excavator [48 h]; 3-outlet fire hydrant (2 x 2.5 inch and 1 x 4 inch) in the form of a separate dry vacuum cylinder [0.4] → Skilled Labor/Surveyor [5 h]; Foreman [5 h]; Excavator [48 h]; 3-outlet fire hydrant (2 x 2.5 inch and 1 x 4 inch) in the form of a separate dry vacuum cylinder [0.4] |
| TE | **Telecom Network** | 2025-10-30 → 2025-07-11 (-111d) | 2025-12-01 → 2025-07-31 (-123d) |  |  |  |  |
| PD | **Ducts Works** | 2025-10-30 → 2025-07-11 (-111d) | 2025-12-01 → 2025-07-21 (-133d) |  |  |  |  |
| CO-R18.S16-TE-170 | Trench Excavation and Bedding Works for Ducts of Telecom Network-[Road 18]-[SW-16] | 2025-10-30 → 2025-07-11 A (-111d) | 2025-11-06 → 2025-07-13 A (-116d) | 0% → 100% | 167d → none | CO-R18.S16-EW-130, CO-R18.S16-SL-160 SS+5d, CO-R18.S16-SL-160 FF+5d, CO-R18.S15-TE-170 → CO-R18.S16-EW-130, CO-R18.S15-TE-170 | resources Skilled Labor/Surveyor [6.84 h]; Foreman [6.84 h]; Excavator [56 h]; 6-way ducts, 50mm dia. HDPE [27.08]; Road crossing ducts (6-way) [3.01] → Skilled Labor/Surveyor [6 h]; Foreman [6 h]; Excavator [56 h]; 6-way ducts, 50mm dia. HDPE [19]; Road crossing ducts (6-way) [2] |
| CO-R18.S16-TE-180 | Pipes Laying Works for Ducts of Telecom Network-[Road 18]-[SW-16] | 2025-11-08 → 2025-07-14 A (-117d) | 2025-11-15 → 2025-07-17 A (-121d) | 0% → 100% | 301d → none |  | resources Labor/Helper [127.67 h]; Skilled Labor/Surveyor [6.84 h]; Foreman [6.84 h]; Plumber [63.83 h]; Excavator [56 h]; JCB [28 h]; Truck [56 h]; 6-way ducts, 50mm dia. HDPE [163.51]; Road crossing ducts (6-way) [14.04] → Labor/Helper [112 h]; Skilled Labor/Surveyor [6 h]; Foreman [6 h]; Plumber [56 h]; Excavator [56 h]; JCB [28 h]; Truck [56 h]; 6-way ducts, 50mm dia. HDPE [115]; Road crossing ducts (6-way) [10] |
| CO-R18.S16-TE-230 | Pouring Plain Concrete Above Ducts of Telecom Network-[Road 18]-[SW-16] | 2025-11-16 → 2025-07-18 A (-121d) | 2025-11-23 → 2025-07-18 A (-128d) | 0% → 100% | 301d → none |  | resources Skilled Labor/Surveyor [6.84 h]; Foreman [6.84 h]; Cons. Carpenter [127.67 h]; Block Mason [63.83 h]; 6-way ducts, 50mm dia. HDPE [27.08]; Road crossing ducts (6-way) [3.01] → Skilled Labor/Surveyor [6 h]; Foreman [6 h]; Cons. Carpenter [112 h]; Block Mason [56 h]; 6-way ducts, 50mm dia. HDPE [19]; Road crossing ducts (6-way) [2] |
| CO-R18.S16-TE-190 | Trench Backfilling and Compaction Works for Ducts of Telecom Network-[Road 18]-[SW-16] | 2025-11-24 → 2025-07-19 A (-128d) | 2025-12-01 → 2025-07-21 A (-133d) | 0% → 100% | 301d → none |  | resources Skilled Labor/Surveyor [6.84 h]; Foreman [6.84 h]; Excavator [56 h]; 6-way ducts, 50mm dia. HDPE [54.17]; Road crossing ducts (6-way) [4.01] → Skilled Labor/Surveyor [6 h]; Foreman [6 h]; Excavator [56 h]; 6-way ducts, 50mm dia. HDPE [38]; Road crossing ducts (6-way) [3] |
| MH | **Manholes Works** | 2025-11-08 → 2025-07-23 (-108d) | 2025-12-01 → 2025-07-31 (-123d) |  |  |  |  |
| CO-R18.S16-TE-200 | Excavation Works for Manholes of Telecom Network-[Road 18]-[SW-16] | 2025-11-08 → 2025-07-23 A (-108d) | 2025-11-15 → 2025-07-24 A (-114d) | 0% → 100% | 301d → none |  | resources Skilled Labor/Surveyor [6.84 h]; Foreman [6.84 h]; Excavator [56 h]; Manhole Type 2 (2000x1000x1000) [0.4]; Manhole Type 3 (2000x1000x1000) [0.2] → Skilled Labor/Surveyor [6 h]; Foreman [6 h]; Excavator [56 h]; Manhole Type 2 (2000x1000x1000) [0.4]; Manhole Type 3 (2000x1000x1000) [0.2] |
| CO-R18.S16-TE-210 | Installation Works for Manholes of Telecom Network-[Road 18]-[SW-16] | 2025-11-16 → 2025-07-26 A (-113d) | 2025-11-23 → 2025-07-28 A (-118d) | 0% → 100% | 301d → none |  | resources Skilled Labor/Surveyor [6.84 h]; Foreman [6.84 h]; Excavator [56 h]; Manhole Type 1 (2000x1000x1000) [1]; Manhole Type 2 (2000x1000x1000) [1]; Manhole Type 3 (2000x1000x1000) [1] → Skilled Labor/Surveyor [6 h]; Foreman [6 h]; Excavator [56 h]; Manhole Type 1 (2000x1000x1000) [1]; Manhole Type 2 (2000x1000x1000) [1.2]; Manhole Type 3 (2000x1000x1000) [0.6] |
| CO-R18.S16-TE-220 | Backfilling Works for Manholes of Telecom Network-[Road 18]-[SW-16] | 2025-11-24 → 2025-07-29 A (-118d) | 2025-12-01 → 2025-07-31 A (-123d) | 0% → 100% | 301d → none |  | resources Skilled Labor/Surveyor [6.84 h]; Foreman [6.84 h]; Excavator [56 h]; Manhole Type 2 (2000x1000x1000) [0.4]; Manhole Type 3 (2000x1000x1000) [0.2] → Skilled Labor/Surveyor [6 h]; Foreman [6 h]; Excavator [56 h]; Manhole Type 2 (2000x1000x1000) [0.4]; Manhole Type 3 (2000x1000x1000) [0.2] |
| RD | **Road Works** | 2025-12-02 → 2025-07-10 (-145d) | 2026-01-01 → 2026-09-06 (+248d) |  |  |  |  |
| RD | **Pre-Bituminous Construction** | 2025-12-02 → 2025-07-10 (-145d) | 2025-12-25 → 2025-08-31 (-116d) |  |  |  |  |
| CO-R18.S16-RD-P-160 | Capping and Subgrade Layer for Road Works-[Road 18]-[SW-16] | 2025-12-02 → 2025-07-10 A (-145d) | 2025-12-22 → 2025-07-21 A (-154d) | 0% → 100% | 301d → none | CO-R18.S16-SD-250, CO-R18.S16-SW-240, CO-R18.S16-PW-280, CO-R18.S16-PW-270, CO-R18.S16-TE-190, CO-R18.S16-TE-220, CO-R18.S16-SL-160 SS+3d, CO-R18.S16-SL-160 FF+3d → CO-R18.S16-SD-250, CO-R18.S16-SW-240, CO-R18.S16-PW-280 | resources Labor/Helper [328.29 h]; Skilled Labor/Surveyor [164.14 h]; Loader [144 h]; Grader [144 h]; Road Roller [144 h]; Water Tank [144 h]; 300mm capping layer underneath subgrade , CBR?15% [2072.47]; 300mm thick Subgrade, including subgrade preparation, CBR?25% [2072.47] → Labor/Helper [288 h]; Skilled Labor/Surveyor [144 h]; Loader [144 h]; Grader [144 h]; Road Roller [144 h]; Water Tank [144 h]; 300mm capping layer underneath subgrade , CBR?15% [1459.58]; 300mm thick Subgrade, including subgrade preparation, CBR?25% [1459.58] |
| CO-R18.S16-RD-P-170 | Aggregate Base Course Layer for Road Works-[Road 18]-[SW-16] | 2025-12-06 → 2025-08-27 A (-101d) | 2025-12-25 → 2025-08-31 A (-116d) | 0% → 100% | 301d → none |  | resources Labor/Helper [328.29 h]; Skilled Labor/Surveyor [164.14 h]; Foreman [164.14 h]; Loader [144 h]; Grader [144 h]; Road Roller [144 h]; Aggregate base course 200mm thick after compaction in two layers(Grading 1); CBR?80%; including watering, compaction and testing [1381.31] → Labor/Helper [288 h]; Skilled Labor/Surveyor [144 h]; Foreman [144 h]; Loader [144 h]; Grader [144 h]; Road Roller [144 h]; Aggregate base course 200mm thick after compaction in two layers(Grading 1); CBR?80%; including watering, compaction and testing [973.16] |
| LS | **Pavement Works** | 2025-12-09 → 2026-08-25 (+259d) | 2026-01-01 → 2026-09-06 (+248d) |  |  |  |  |
| CO-R18.S16-RD-P-140 | Fixing of Curbstone for Sidewalks Pavement-[Road 18]-[SW-16] | 2025-12-09 → 2026-08-25 A (+259d) | 2025-12-29 → 2026-08-31 A (+245d) | 0% → 100% | 301d → none |  | resources Labor/Helper [328.29 h]; Block Mason [984.87 h]; Precast Concrete Kerb, Type K1 [765.39]; Precast Concrete Kerb, Type L1 [1515.73] → Labor/Helper [288 h]; Block Mason [864 h]; Precast Concrete Kerb, Type K1 [538.5]; Precast Concrete Kerb, Type L1 [1068.46] |
| CO-R18.S16-RD-P-150 | Fixing of Interlock Tiles for Sidewalks Pavement-[Road 18]-[SW-16] | 2025-12-13 → 2026-08-25 A (+255d) | 2026-01-01 → 2026-09-06 A (+248d) | 0% → 100% | 301d → none |  | resources Labor/Helper [328.29 h]; Block Mason [984.87 h]; Interlocking block pavers for sidewalk/footpath 60mm thick on and including 30mm Sand Bedding, 200mm Aggregate subbase, all in accordance with authority standards and complete as per specifications [1365.26]; Extraover for Pedestrian ramps [4.01] → Labor/Helper [288 h]; Block Mason [864 h]; Interlocking block pavers for sidewalk/footpath 60mm thick on and including 30mm Sand Bedding, 200mm Aggregate subbase, all in accordance with authority standards and complete as per specifications [961.62]; Extraover for Pedestrian ramps [3] |
| 3 | **Finishes for Infrastructure Networks** | 2026-05-04 → 2025-09-20 (-226d) | 2026-12-28 → 2027-10-25 (+301d) |  |  |  |  |
| 1 | **Phase 2 Block "J"** | 2026-05-04 → 2025-09-20 (-226d) | 2026-12-28 → 2027-10-25 (+301d) |  |  |  |  |
| 2 | **Road 09 Local 2 ( 2278 LM )** | 2026-06-02 → 2026-06-01 (-1d) | 2026-11-30 → 2027-10-06 (+310d) |  |  |  |  |
| 10 | **Sewage Network** | 2026-07-19 → 2026-06-01 (-48d) | 2026-08-18 → 2027-05-31 (+286d) |  |  |  |  |
| TF | **Testing and Finishes** | 2026-07-19 → 2026-06-01 (-48d) | 2026-08-18 → 2027-05-31 (+286d) |  |  |  |  |
| CO-R09-SW-TF-100 | Final Testing For Main Line of Sewage Network-[Road 09] | 2026-07-19 → 2026-06-01 A (-48d) | 2026-08-01 → 2027-05-08 (+280d) | 0% → 95% | 0d → -235d |  | resources Labor/Helper [639.08 h]; Plumber [639.08 h]; Pipe Fitter [1171.72 h]; Nominal bore : 160mm; Depth : 1.5m - 2.5m [28.09]; Nominal bore : 200mm; Depth : 0.0m - 1.5m [16.05]; Nominal bore : 200mm; Depth : 1.5m - 2.5m [42.13]; Nominal bore : 200mm; Depth : 2.5m - 3.5m [62.19]; Nominal bore : 200mm; Depth : 3.5m - 4.5m [72.23]; Nominal bore : 200mm; Depth : 4.5m -5.5m [37.12]; Nominal bore : 200mm; Depth : 5.5m - 6.5m [47.15]; Nominal bore : 250mm; Depth : 4.5m -5.5m [31.1]; Nominal bore : 250mm; Depth : 5.5m - 6.5m [25.08]; Nominal bore : 315mm; Depth : 4.5m -5.5m [25.08]; Nominal bore : 315mm; Depth : 6.5m - 7.5m [28.09]; Depth : 6.5 -7.5m [35.11]; Depth :more than 7.5m [85.27] → Labor/Helper [576 h]; Plumber [576 h]; Pipe Fitter [576 h]; Nominal bore : 160mm; Depth : 1.5m - 2.5m [20]; Nominal bore : 200mm; Depth : 0.0m - 1.5m [11.34]; Nominal bore : 200mm; Depth : 1.5m - 2.5m [30.16]; Nominal bore : 200mm; Depth : 2.5m - 3.5m [44.14]; Nominal bore : 200mm; Depth : 3.5m - 4.5m [51.17]; Nominal bore : 200mm; Depth : 4.5m -5.5m [25.61]; Nominal bore : 200mm; Depth : 5.5m - 6.5m [33.06]; Nominal bore : 250mm; Depth : 4.5m -5.5m [22]; Nominal bore : 250mm; Depth : 5.5m - 6.5m [18]; Nominal bore : 315mm; Depth : 4.5m -5.5m [18]; Nominal bore : 315mm; Depth : 6.5m - 7.5m [20]; Depth : 6.5 -7.5m [25]; Depth :more than 7.5m [60] |
| CO-R09-SW-TF-110 | Install Manhole Cover Works for External Finishes of Sewage Network-[Road 09] | 2026-08-02 → 2027-05-09 (+280d) | 2026-08-15 → 2027-05-27 (+285d) |  | 14d → -221d |  | resources Labor/Helper [17.86 h]; Plumber [17.86 h]; Pipe Fitter [17.86 h]; Depth: 1.5 - 2.5m [0.4]; Depth: 3.5 - 4.5m [0.1]; Depth: 4.5 - 5.5m [0.15]; Depth:6.5 - 7.5m [0.35]; Depth: more than 7.5m [0.1]; Depth: 2.5 - 3.5m [0.25]; Depth: 3.5 - 4.5m [0.15]; Depth: 4.5 - 5.5m [0.1]; Depth: 5.5 - 6.5m [0.1] → Labor/Helper [96 h]; Plumber [96 h]; Pipe Fitter [96 h]; Depth: 1.5 - 2.5m [0.4]; Depth: 3.5 - 4.5m [0.1]; Depth: 4.5 - 5.5m [0.15]; Depth:6.5 - 7.5m [0.35]; Depth: more than 7.5m [0.1]; Depth: 2.5 - 3.5m [0.25]; Depth: 3.5 - 4.5m [0.15]; Depth: 4.5 - 5.5m [0.1]; Depth: 5.5 - 6.5m [0.1] |
| CO-R09-SW-TF-120 | Main Manhole Internal Finishes (Benching + Insulation) of Sewage Network-[Road 09] | 2026-08-05 → 2027-05-12 (+280d) | 2026-08-18 → 2027-05-31 (+286d) |  | 27d → -208d |  | resources Labor/Helper [17.86 h]; Plumber [17.86 h]; Pipe Fitter [17.86 h]; Depth: 1.5 - 2.5m [0.4]; Depth: 3.5 - 4.5m [0.1]; Depth: 4.5 - 5.5m [0.15]; Depth:6.5 - 7.5m [0.35]; Depth: more than 7.5m [0.1]; Depth: 2.5 - 3.5m [0.25]; Depth: 3.5 - 4.5m [0.15]; Depth: 4.5 - 5.5m [0.1]; Depth: 5.5 - 6.5m [0.1] → Labor/Helper [96 h]; Plumber [96 h]; Pipe Fitter [96 h]; Depth: 1.5 - 2.5m [0.4]; Depth: 3.5 - 4.5m [0.1]; Depth: 4.5 - 5.5m [0.15]; Depth:6.5 - 7.5m [0.35]; Depth: more than 7.5m [0.1]; Depth: 2.5 - 3.5m [0.25]; Depth: 3.5 - 4.5m [0.15]; Depth: 4.5 - 5.5m [0.1]; Depth: 5.5 - 6.5m [0.1] |
| 11 | **Storm Drainage Network** | 2026-07-15 → 2026-06-17 (-28d) | 2026-09-02 → 2027-06-15 (+286d) |  |  |  |  |
| TF | **Testing and Finishes** | 2026-07-15 → 2026-06-17 (-28d) | 2026-09-02 → 2027-06-15 (+286d) |  |  |  |  |
| CO-R09-SD-TF-100 | Testing Work for Pipes of Storm Drainage Network-[Road 09] | 2026-07-19 → 2026-06-17 A (-32d) | 2026-08-01 → 2027-05-09 (+281d) | 0% → 75% | 0d → -235d | CO-R09.S01-SD-130 SS+3d, PRO-SD-1DL-140, PRO-R09-SD-DL-140 FF+3d, CO-R09.S01-RD-P-100 SS+3d, CO-R09.S01-RD-P-100 FF+3d, CO-R09.S01-SD-130 FF+3d, CO-R09.S01-SD-120 SS, CO-R09.S01-SD-120, ENG-SH-SD-ML-A-110, ENG-MS-SD-ML-A-110, CO-R09.S02-RD-P-100 SS+3d, CO-R09.S02-RD-P-100 FF+3d → CO-R09.S01-SD-130 SS+3d, PRO-SD-1DL-140, PRO-R09-SD-DL-140 FF+3d, CO-R09.S01-RD-P-100 SS+3d, CO-R09.S01-RD-P-100 FF+3d, CO-R09.S01-SD-130 FF+3d, CO-R09.S01-SD-120 SS, CO-R09.S01-SD-120, ENG-SH-SD-ML-A-110, ENG-MS-SD-ML-A-110, CO-R09.S02-RD-P-100 SS+3d, CO-R09.S02-RD-P-100 FF+3d, CO-R10.S03-ES-SD-210 | resources Labor/Helper [358.79 h]; Plumber [340.81 h]; Pipe with diameter 400mm ; depth: 0.0m - 1.5m [13.04]; Pipe with diameter 400mm ; depth: 1.51m - 2.5m [13.04]; Pipe with diameter 600mm ; depth: 0.0m - 1.5m [7.02]; Pipe with diameter 700mm ; depth: 1.51m - 2.5m [14.04]; Pipe with diameter 700mm ; depth: 2.51m - 3.5m [7.02]; Pipe with diameter 800mm ; depth: 1.51m - 2.5m [8.03]; Pipe with diameter 1100mm ; depth: 1.51m - 2.5m [95.3]; Pipe with diameter 1100mm ; depth: 2.51 - 3.5m [24.08]; Pipe with diameter 1200mm ; depth: 1.51m - 2.5m [23.07] → Labor/Helper [384 h]; Plumber [384 h]; Pipe with diameter 400mm ; depth: 0.0m - 1.5m [9.28]; Pipe with diameter 400mm ; depth: 1.51m - 2.5m [9.28]; Pipe with diameter 600mm ; depth: 0.0m - 1.5m [5]; Pipe with diameter 700mm ; depth: 1.51m - 2.5m [10.11]; Pipe with diameter 700mm ; depth: 2.51m - 3.5m [5]; Pipe with diameter 800mm ; depth: 1.51m - 2.5m [5.6]; Pipe with diameter 1100mm ; depth: 1.51m - 2.5m [66.7]; Pipe with diameter 1100mm ; depth: 2.51 - 3.5m [17.4]; Pipe with diameter 1200mm ; depth: 1.51m - 2.5m [15.5] |
| CO-R09-SD-TF-110 | Install Catch Basin Cover Works for External Finishes of Storm Drainage Network-[Road 09] | 2026-07-15 → 2026-06-20 A (-25d) | 2026-08-02 → 2027-05-09 (+280d) | 0% → 20% | 25d → -210d |  | resources Labor/Helper [457.47 h]; Foreman [457.47 h]; Pipe with diameter 300mm ; depth: 0 - 1.5m [158.5]; Pipe with diameter 400mm ; depth: 0 - 1.5m [10.03] → Labor/Helper [384 h]; Foreman [384 h]; Pipe with diameter 300mm ; depth: 0 - 1.5m [112.41]; Pipe with diameter 400mm ; depth: 0 - 1.5m [6.85] |
| CO-R09-SD-TF-120 | Main Manhole Internal Finishes (Benching + Insulation ) for Storm Drainage Network-[Road 09] | 2026-08-16 → 2026-06-21 A (-56d) | 2026-09-02 → 2027-06-15 (+286d) | 0% → 85% | 14d → -221d |  | resources Labor/Helper [468.72 h]; MH ; depth: 0.0m - 1.5m [0.3]; MH ; depth: 1.51m - 2.5m [1]; MH ; depth: 2.51 - 3.5m [0.2]; MH ; depth: 0.0m - 1.5m [0.2]; MH ; depth: 2.51 - 3.5m [0.1]; MH ; depth: 1.51m - 2.5m [0.4]; MH ; depth: 2.51 - 3.5m [0.4]; Access opening with dimensions 1000*1000 mm [18.06]; Single Catch basin [110.34]; Double Catch basin [35.11] → MH ; depth: 0.0m - 1.5m [0.3]; MH ; depth: 1.51m - 2.5m [0.8]; MH ; depth: 2.51 - 3.5m [0.2]; MH ; depth: 0.0m - 1.5m [0.2]; MH ; depth: 2.51 - 3.5m [0.1]; MH ; depth: 1.51m - 2.5m [0.4]; MH ; depth: 2.51 - 3.5m [0.4]; Access opening with dimensions 1000*1000 mm [13]; Single Catch basin [78]; Double Catch basin [25] |
| CO-R09-SD-TF-130 | Catch Basin Internal Finishes (Benching + Insulation ) for Storm Drainage Network-[Road 09] | 2026-08-16 → 2026-06-22 A (-55d) | 2026-09-02 → 2027-06-15 (+286d) | 0% → 20% | 69d → -162d |  | resources Labor/Helper [285.64 h]; Foreman [112.92 h]; Pipe with diameter 300mm ; depth: 0 - 1.5m [158.5]; Pipe with diameter 400mm ; depth: 0 - 1.5m [10.03] → Labor/Helper [384 h]; Foreman [384 h]; Pipe with diameter 300mm ; depth: 0 - 1.5m [112.41]; Pipe with diameter 400mm ; depth: 0 - 1.5m [6.85] |
| 9 | **Potable Water Network** | 2026-08-02 → 2027-05-09 (+280d) | 2026-09-08 → 2027-06-21 (+286d) |  |  |  |  |
| TF | **Testing and Finishes** | 2026-08-02 → 2027-05-09 (+280d) | 2026-09-08 → 2027-06-21 (+286d) |  |  |  |  |
| CO-R09-PW-TF-110 | Testing Work for Main Line of Potable Water Network-[Road 09] | 2026-08-02 → 2027-05-09 (+280d) | 2026-08-11 → 2027-05-24 (+286d) |  | 0d → -235d |  | resources Labor/Helper [26.78 h]; Plumber [26.78 h]; Pipe with diameter 160 mm; in depth 1.5m - 3.0m [7.02]; Pipe with diameter 200mm; in depth 0.0m - 1.5m [360.12]; Pipe with diameter 200mm; in depth 1.5m - 3.0m [14.04] → Labor/Helper [72 h]; Plumber [72 h]; Pipe with diameter 160 mm; in depth 1.5m - 3.0m [5]; Pipe with diameter 200mm; in depth 0.0m - 1.5m [254.47]; Pipe with diameter 200mm; in depth 1.5m - 3.0m [10] |
| CO-R09-PW-TF-100 | Final Finishes works and Covers for Valves and Valve Chambers of Potable Water Network-[Road 09] | 2026-08-12 → 2027-05-25 (+286d) | 2026-08-25 → 2027-06-07 (+286d) |  | 9d → -226d |  | resources Labor/Helper [26.78 h]; Plumber [26.78 h] → Labor/Helper [288 h]; Plumber [288 h] |
| CO-R09-PW-TF-120 | Fire Hydrant Finishies (S.Box + Safety + Marker Post ) of Potable Water Network-[Road 09] | 2026-08-26 → 2027-06-08 (+286d) | 2026-09-08 → 2027-06-21 (+286d) |  | 9d → -226d |  |  |
| 13 | **Irrigation Network** | 2026-07-29 → 2027-05-05 (+280d) | 2026-08-16 → 2027-05-29 (+286d) |  |  |  |  |
| TF | **Testing and Finishes** | 2026-07-29 → 2027-05-05 (+280d) | 2026-08-16 → 2027-05-29 (+286d) |  |  |  |  |
| CO-R09-IR-TF-100 | Final Testing (pressure tests) of Irrigation Network-[Road 09] | 2026-07-29 → 2027-05-05 (+280d) | 2026-08-16 → 2027-05-29 (+286d) |  | 29d → -206d | CO-R09.S01-IR-140, CO-R09.S01-RD-P-100, CO-R09.S02-RD-P-100 → CO-R09.S01-IR-140, CO-R09.S01-RD-P-100, CO-R09.S02-RD-P-100, CO-R18.S15-IR-160 | resources Labor/Helper [17.86 h]; Plumber [17.86 h]; Pipe Fitter [17.86 h]; 125 mm pipe; depth 0.0m - 1.5m [407.27] → Labor/Helper [384 h]; Plumber [384 h]; Pipe Fitter [384 h]; 125 mm pipe; depth 0.0m - 1.5m [286.5] |
| 12 | **Street Lighting Network** | 2026-06-02 → 2027-04-03 (+305d) | 2026-09-09 → 2027-07-17 (+311d) |  |  |  |  |
| TR | **Termination and Testing Works** | 2026-06-02 → 2027-04-03 (+305d) | 2026-09-07 → 2027-07-14 (+310d) |  |  |  |  |
| CO-R09-SL-TF-100 | Termination Works For Lighting Poles Cables of Street Lighting Network-[Road 09] | 2026-06-02 → 2027-04-03 (+305d) | 2026-06-15 → 2027-04-15 (+304d) |  | 8.5d → -247.5d |  | resources Labor/Helper [17.86 h]; Electrician [17.86 h]; Low Current Technician [17.86 h]; Supply, installation , test and operation of cables, Copper, (4Cx25mmï¿½,Cu/XLPE/SWA/PVC +1x16mmï¿½ PVC/PVC) [2449.65] → Labor/Helper [96 h]; Electrician [96 h]; Low Current Technician [96 h]; Supply, installation , test and operation of cables, Copper, (4Cx25mm²,Cu/XLPE/SWA/PVC +1x16mm² PVC/PVC) [1726.2] |
| CO-R09-SL-TF-110 | Termination Works For Panel Board Cables of Street Lighting Network-[Road 09] | 2026-08-15 → 2027-06-21 (+310d) | 2026-08-26 → 2027-07-03 (+311d) |  | 8.5d → -247.5d |  | resources Package Substation 33000/400V, 500kVA with RMU [1] → Package Substation 33000/400V, 500kVA with RMU [0.6] |
| CO-R09-SL-TF-380 | Testing Works For Panel Board Cables of Street Lighting Network-[Road 09] | 2026-08-26 → 2027-07-03 (+311d) | 2026-09-07 → 2027-07-14 (+310d) |  | 30.5d → -225.5d |  |  |
| ES | **Earthing System Works** | 2026-06-16 → 2027-04-17 (+305d) | 2026-09-09 → 2027-07-17 (+311d) |  |  |  |  |
| CO-R09-SL-ES-100 | Install Earthing System Works for Lighting Poles of Street Lighting Network-[Road 09] | 2026-06-16 → 2027-04-17 (+305d) | 2026-06-29 → 2027-04-29 (+304d) |  | 8.5d → -247.5d |  | resources Labor/Helper [17.86 h]; Electrician [17.86 h]; Low Current Technician [17.86 h]; Earthing installation, for Street lighting circuits, including earth rod in plastic chamber [35.11]; Earthing installation Lighting Panales [4.01] → Labor/Helper [96 h]; Electrician [96 h]; Low Current Technician [96 h]; Earthing installation, for Street lighting circuits, including earth rod in plastic chamber [25]; Earthing installation Lighting Panales [3] |
| CO-R09-SL-ES-110 | Install Earthing System Works for Lighting Panel Boards of Street Lighting Network-[Road 09] | 2026-08-26 → 2027-07-03 (+311d) | 2026-09-09 → 2027-07-17 (+311d) |  | 8.5d → -247.5d |  | resources Labor/Helper [17.86 h]; Electrician [17.86 h]; Low Current Technician [17.86 h]; Earthing installation, lighting plants. [4.01] → Labor/Helper [96 h]; Electrician [96 h]; Low Current Technician [96 h]; Earthing installation, lighting plants. [3] |
| 14 | **Medium Voltage Network** | 2026-06-21 → 2027-06-01 (+345d) | 2026-07-08 → 2027-06-19 (+346d) |  |  |  |  |
| TT | **Termination and Testing Works** | 2026-06-21 → 2027-06-01 (+345d) | 2026-07-08 → 2027-06-19 (+346d) |  |  |  |  |
| CO-R09-MV-TF-100 | Termination Works of Medium Voltage Network-[Road 09] | 2026-06-21 → 2027-06-01 (+345d) | 2026-07-08 → 2027-06-19 (+346d) |  | 62d → -224d |  | resources Labor/Helper [17.86 h]; Electrician [17.86 h]; Low Current Technician [17.86 h] → Labor/Helper [128 h]; Electrician [128 h]; Low Current Technician [128 h] |
| 1 | **Road Works** | 2026-09-24 → 2027-07-31 (+310d) | 2026-11-30 → 2027-10-06 (+310d) |  |  |  |  |
| 1 | **Bituminous Construction** | 2026-09-24 → 2027-07-31 (+310d) | 2026-10-26 → 2027-08-31 (+309d) |  |  |  |  |
| CO-R09-S1-RD-F-100 | Application of Prime Coat Layer for Road Works - S.W 01-[Road 09] | 2026-09-24 → 2027-07-31 (+310d) | 2026-10-08 → 2027-08-14 (+310d) |  | 8.5d → -247.5d |  | resources Labor/Helper [26.78 h]; Insulation Worker [26.78 h]; Bituminous base course(Grading I - Class A), 70mm thick after compaction including Prime Coat (MC1) [2240] → Labor/Helper [144 h]; Insulation Worker [144 h]; Bituminous base course(Grading I - Class A), 70mm thick after compaction including Prime Coat (MC1) [1577.85] |
| CO-R09-S1-RD-F-120 | Bituminous Base & Wearing Courses Layers for Road Works- S.W 01-[Road 09] | 2026-09-28 → 2027-08-03 (+309d) | 2026-10-12 → 2027-08-17 (+309d) |  | 8.5d → -247.5d |  | resources Labor/Helper [26.78 h]; Eq. Operator [26.78 h]; Asphalt Cutter [144 h]; Asphalt Paver [144 h]; Bituminous concrete wearing course, 50 mm thick, after compaction(Grading I - Class A), including tack coat (RC) [1598.99] → Labor/Helper [144 h]; Eq. Operator [144 h]; Asphalt Cutter [144 h]; Asphalt Paver [144 h]; Bituminous concrete wearing course, 50 mm thick, after compaction(Grading I - Class A), including tack coat (RC) [1127.12] |
| CO-R09-S2-RD-F-110 | Application of Prime Coat Layer for Road Works- S.W 02-[Road 09] | 2026-10-01 → 2027-08-07 (+310d) | 2026-10-22 → 2027-08-28 (+310d) |  | 9.5d → -246.5d |  | resources Labor/Helper [26.78 h]; Insulation Worker [26.78 h]; Bituminous base course(Grading I - Class A), 70mm thick after compaction including Prime Coat (MC1) [2240] → Labor/Helper [144 h]; Insulation Worker [144 h]; Bituminous base course(Grading I - Class A), 70mm thick after compaction including Prime Coat (MC1) [1577.85] |
| CO-R09-S2-RD-F-130 | Bituminous Base & Wearing Courses Layers for Road Works- S.W 02-[Road 09] | 2026-10-05 → 2027-08-10 (+309d) | 2026-10-26 → 2027-08-31 (+309d) |  | 9.5d → -246.5d |  | resources Labor/Helper [26.78 h]; Eq. Operator [26.78 h]; Asphalt Cutter [144 h]; Asphalt Paver [144 h]; Bituminous concrete wearing course, 50 mm thick, after compaction(Grading I - Class A), including tack coat (RC) [1598.99] → Labor/Helper [144 h]; Eq. Operator [144 h]; Asphalt Cutter [144 h]; Asphalt Paver [144 h]; Bituminous concrete wearing course, 50 mm thick, after compaction(Grading I - Class A), including tack coat (RC) [1127.12] |
| TS | **Traffic Signs Boards and Roads Marking** | 2026-10-12 → 2027-08-17 (+309d) | 2026-11-30 → 2027-10-06 (+310d) |  |  |  |  |
| CO-R09-S1-RD-F-140 | Application of Road Marking Works For Road Works- S.W 01-[Road 09] | 2026-10-12 → 2027-08-17 (+309d) | 2026-10-26 → 2027-08-31 (+309d) |  | 8.5d → -247.5d |  | resources Labor/Helper [26.78 h]; Painter [26.78 h]; Retroreflective Thermoplastic White, Traffic lines [1206.77]; Retroreflective Thermoplastic Yellow, Traffic lines [184.58]; Retroreflective raised pavement markers(Type A) [235.74] → Labor/Helper [480 h]; Painter [480 h]; Retroreflective Thermoplastic White, Traffic lines [849.93]; Retroreflective Thermoplastic Yellow, Traffic lines [130.23]; Retroreflective raised pavement markers(Type A) [166.15] |
| CO-R09-S1-RD-F-150 | Installation Works of Traffic Signs Boards For Road Works- S.W 01-[Road 09] | 2026-10-26 → 2027-08-31 (+309d) | 2026-11-09 → 2027-09-14 (+309d) |  | 8.5d → -247.5d |  | resources Labor/Helper [26 h]; Painter [26 h]; Traffic signs, ground mounted, Sheet Alumenium, (breakaway) Single post, with all accessories [16.05]; Straight Arrow [37.12]; Right or Left Arrow [3.01]; Straight-Left Arrow [3.01] → Labor/Helper [288 h]; Painter [288 h]; Traffic signs, ground mounted, Sheet Alumenium, (breakaway) Single post, with all accessories [11]; Straight Arrow [26]; Right or Left Arrow [2]; Straight-Left Arrow [2] |
| CO-R09-S2-RD-F-160 | Application of Road Marking Works For Road Works- S.W 02-[Road 09] | 2026-10-26 → 2027-08-31 (+309d) | 2026-11-12 → 2027-09-18 (+310d) |  | 9.5d → -246.5d |  | resources Labor/Helper [26 h]; Painter [26 h]; Retroreflective Thermoplastic White, Traffic lines [1206.77]; Retroreflective Thermoplastic Yellow, Traffic lines [184.58]; Retroreflective raised pavement markers(Type A) [235.74] → Labor/Helper [120 h]; Painter [120 h]; Retroreflective Thermoplastic White, Traffic lines [849.93]; Retroreflective Thermoplastic Yellow, Traffic lines [130.23]; Retroreflective raised pavement markers(Type A) [166.15] |
| CO-R09-S2-RD-F-170 | Installation Works of Traffic Signs Boards For Road Works- S.W 02-[Road 09] | 2026-11-12 → 2027-09-18 (+310d) | 2026-11-30 → 2027-10-06 (+310d) |  | 9.5d → -246.5d |  | resources Labor/Helper [16 h]; Painter [16 h]; Traffic signs, ground mounted, Sheet Alumenium, (breakaway) Single post, with all accessories [16.05]; Straight Arrow [37.12]; Right or Left Arrow [3.01]; Straight-Left Arrow [3.01] → Labor/Helper [360 h]; Painter [360 h]; Traffic signs, ground mounted, Sheet Alumenium, (breakaway) Single post, with all accessories [11]; Straight Arrow [26]; Right or Left Arrow [2]; Straight-Left Arrow [2] |
| 4 | **Road 10 Local 2 ( 2352 LM )** | 2026-05-04 → 2026-06-15 (+42d) | 2026-10-31 → 2027-07-20 (+262d) |  |  |  |  |
| 10 | **Sewage Network** | 2026-07-29 → 2027-04-19 (+264d) | 2026-08-29 → 2027-05-25 (+269d) |  |  |  |  |
| TF | **Testing and Finishes** | 2026-07-29 → 2027-04-19 (+264d) | 2026-08-29 → 2027-05-25 (+269d) |  |  |  |  |
| CO-R10-SW-TF-100 | Final Testing For Main Line of Sewage Network-[Road 10] | 2026-07-29 → 2027-04-19 (+264d) | 2026-08-11 → 2027-05-02 (+264d) |  | 0d → -221d | CO-R10.S03-ES-RD-100 SS+3d, CO-R10.S03-ES-RD-100 FF+3d, CO-R10.S04-ES-RD-100 SS+3d, CO-R10.S04-ES-RD-100 FF+3d, CO-R09.S02-SW-130, CO-R10.S03-WE-RD-100 SS+3d, CO-R10.S03-WE-RD-100 FF+3d, CO-R10.S04-WE-RD-100 SS+3d, CO-R10.S04-WE-RD-100 FF+3d → CO-R10.S03-ES-RD-100 SS+3d, CO-R10.S03-ES-RD-100 FF+3d, CO-R10.S04-ES-RD-100 SS+3d, CO-R10.S04-ES-RD-100 FF+3d, CO-R09.S02-SW-130, CO-R10.S03-WE-RD-100 SS+3d, CO-R10.S03-WE-RD-100 FF+3d, CO-R10.S04-WE-RD-100 SS+3d, CO-R10.S04-WE-RD-100 FF+3d, CO-R10.S04-ES-SW-210, CO-R10.S04-WE-SW-210 | resources Labor/Helper [17.86 h]; Plumber [17.86 h]; Pipe Fitter [17.86 h]; Depth : 1.5 - 2.5m [21.07]; Depth : 2.5 - 3.5m [13.04]; Depth : 3.5 - 4.5m [13.04]; Depth : 5.5 - 6.5m [71.22]; Depth : 6.5 -7.5m [57.18]; Depth : 6.5 -7.5m [21.07]; Depth :more than 7.5m [14.04] → Labor/Helper [288 h]; Plumber [288 h]; Pipe Fitter [288 h]; Depth : 1.5 - 2.5m [15]; Depth : 2.5 - 3.5m [8.89]; Depth : 3.5 - 4.5m [8.89]; Depth : 5.5 - 6.5m [50]; Depth : 6.5 -7.5m [40]; Depth : 6.5 -7.5m [15]; Depth :more than 7.5m [10] |
| CO-R10-SW-TF-110 | Install Manhole Cover Works for External Finishes of Sewage Network-[Road 10] | 2026-08-12 → 2027-05-03 (+264d) | 2026-08-25 → 2027-05-22 (+270d) |  | 0d → -221d |  | resources Labor/Helper [17.86 h]; Plumber [17.86 h]; Pipe Fitter [17.86 h]; Depth: 1.5 - 2.5m [0.2]; Depth: 2.5 - 3.5m [1]; Depth: 3.5 - 4.5m [0.05]; Depth: 4.5 - 5.5m [0.1]; Depth: 5.5 - 6.5m [0.15]; Depth:6.5 - 7.5m [0.2]; Depth: more than 7.5m [0.05] → Labor/Helper [192 h]; Plumber [192 h]; Pipe Fitter [192 h]; Depth: 1.5 - 2.5m [0.2]; Depth: 2.5 - 3.5m [0.5]; Depth: 3.5 - 4.5m [0.05]; Depth: 4.5 - 5.5m [0.1]; Depth: 5.5 - 6.5m [0.15]; Depth:6.5 - 7.5m [0.2]; Depth: more than 7.5m [0.05] |

| ID | Task | Start | Finish | Complete | Total float | Predecessors | Other |
| --- | --- | --- | --- | --- | --- | --- | --- |
| CO-R10-SW-TF-130 | Main Manhole Internal Finishes (Benching + Insulation) of Sewage Network-[Road 10] | 2026-08-16 → 2027-05-06 (+263d) | 2026-08-29 → 2027-05-25 (+269d) |  | 0d → -221d |  | resources Labor/Helper [17.86 h]; Plumber [17.86 h]; Pipe Fitter [17.86 h]; Depth: 1.5 - 2.5m [0.2]; Depth: 2.5 - 3.5m [1]; Depth: 3.5 - 4.5m [0.05]; Depth: 4.5 - 5.5m [0.1]; Depth: 5.5 - 6.5m [0.15]; Depth:6.5 - 7.5m [0.2]; Depth: more than 7.5m [0.05] → Labor/Helper [192 h]; Plumber [192 h]; Pipe Fitter [192 h]; Depth: 1.5 - 2.5m [0.2]; Depth: 2.5 - 3.5m [0.5]; Depth: 3.5 - 4.5m [0.05]; Depth: 4.5 - 5.5m [0.1]; Depth: 5.5 - 6.5m [0.15]; Depth:6.5 - 7.5m [0.2]; Depth: more than 7.5m [0.05] |
| 11 | **Storm Drainage Network** | 2026-07-27 → 2026-06-15 (-42d) | 2026-09-13 → 2027-06-09 (+269d) |  |  |  |  |
| TF | **Testing and Finishes** | 2026-07-27 → 2026-06-15 (-42d) | 2026-09-13 → 2027-06-09 (+269d) |  |  |  |  |
| CO-R10-SD-TF-100 | Testing Work for Pipes of Storm Drainage Network-[Road 10] | 2026-07-27 → 2026-06-15 A (-42d) | 2026-08-13 → 2026-08-08 A (-5d) | 0% → 100% | 7d → none | CO-R10.S03-ES-SD-130 SS+3d, CO-R10.S03-ES-RD-100 SS+3d, CO-R10.S03-ES-RD-100 FF+3d, CO-R10.S03-ES-SD-130 FF+3d, CO-R10.S03-ES-SD-120 SS, CO-R10.S03-ES-SD-120, ENG-SH-SD-ML-A-110, ENG-MS-SD-ML-A-110, PRO-R10-SD-DL-140 FF+3d, CO-R10.S04-ES-RD-100 SS+3d, CO-R10.S04-ES-RD-100 FF+3d, CO-R10.S03-WE-SD-130 SS+3d, CO-R10.S03-WE-RD-100 SS+3d, CO-R10.S03-WE-RD-100 FF+3d, CO-R10.S03-WE-SD-130 FF+3d, CO-R10.S03-WE-SD-120 SS, CO-R10.S03-WE-SD-120, CO-R10.S04-WE-RD-100 SS+3d, CO-R10.S04-WE-RD-100 FF+3d → CO-R10.S03-ES-SD-130 SS+3d, CO-R10.S03-ES-RD-100 SS+3d, CO-R10.S03-ES-RD-100 FF+3d, CO-R10.S03-ES-SD-130 FF+3d, CO-R10.S03-ES-SD-120 SS, CO-R10.S03-ES-SD-120, ENG-SH-SD-ML-A-110, ENG-MS-SD-ML-A-110, PRO-R10-SD-DL-140 FF+3d, CO-R10.S04-ES-RD-100 SS+3d, CO-R10.S04-ES-RD-100 FF+3d, CO-R10.S03-WE-SD-130 SS+3d, CO-R10.S03-WE-RD-100 SS+3d, CO-R10.S03-WE-RD-100 FF+3d, CO-R10.S03-WE-SD-130 FF+3d, CO-R10.S03-WE-SD-120 SS, CO-R10.S03-WE-SD-120, CO-R10.S04-WE-RD-100 SS+3d, CO-R10.S04-WE-RD-100 FF+3d, CO-R10.S03-ES-SD-160, CO-R10.S04-ES-SD-210, CO-R10.S04-ES-SD-160, CO-R10.S03-WE-SD-210 | resources Labor/Helper [128.8 h]; Plumber [102.08 h]; Pipe with diameter 400mm ; depth: 0.0m - 1.5m [62.19]; Pipe with diameter 400mm ; depth: 1.51m - 2.5m [79.25]; Pipe with diameter 500mm ; depth: 0.0m - 1.5m [7.02]; Pipe with diameter 500mm ; depth: 1.51m - 2.5m [34.11]; Pipe with diameter 600mm ; depth: 1.51m - 2.5m [55.17]; Pipe with diameter 600mm ; depth: 2.51m - 3.5m [24.08]; Pipe with diameter 700mm ; depth: 0.0m - 1.5m [7.02]; Pipe with diameter 700mm ; depth: 1.51m - 2.5m [130.41]; Pipe with diameter 800mm ; depth: 1.51m - 2.5m [64.2]; Pipe with diameter 900mm ; depth: 1.51m - 2.5m [33.1]; Pipe with diameter 1000mm ; depth: 0.0m - 1.5m [7.02]; Pipe with diameter 1100mm ; depth: 0.0m - 1.5m [7.02] → Labor/Helper [128 h]; Plumber [128 h]; Pipe with diameter 400mm ; depth: 0.0m - 1.5m [43.8]; Pipe with diameter 400mm ; depth: 1.51m - 2.5m [55.9]; Pipe with diameter 500mm ; depth: 0.0m - 1.5m [5]; Pipe with diameter 500mm ; depth: 1.51m - 2.5m [24.2]; Pipe with diameter 600mm ; depth: 1.51m - 2.5m [39.29]; Pipe with diameter 600mm ; depth: 2.51m - 3.5m [17.3]; Pipe with diameter 700mm ; depth: 0.0m - 1.5m [5]; Pipe with diameter 700mm ; depth: 1.51m - 2.5m [92.12]; Pipe with diameter 800mm ; depth: 1.51m - 2.5m [44.74]; Pipe with diameter 900mm ; depth: 1.51m - 2.5m [23.18]; Pipe with diameter 1000mm ; depth: 0.0m - 1.5m [5]; Pipe with diameter 1100mm ; depth: 0.0m - 1.5m [5] |
| CO-R10-SD-TF-110 | Install Catch Basin Cover Works for External Finishes of Storm Drainage Network-[Road 10] | 2026-08-04 → 2026-06-17 A (-48d) | 2026-08-22 → 2027-05-10 (+261d) | 0% → 20% | 3d → -209d |  | resources Labor/Helper [299.94 h]; Foreman [84.57 h]; Pipe with diameter 300mm ; depth: 0 - 1.5m [160.5]; Pipe with diameter 400mm ; depth: 0 - 1.5m [10.03] → Labor/Helper [384 h]; Foreman [384 h]; Pipe with diameter 300mm ; depth: 0 - 1.5m [112.72]; Pipe with diameter 400mm ; depth: 0 - 1.5m [6.87] |
| CO-R10-SD-TF-120 | Main Manhole Internal Finishes (Benching + Insulation ) for Storm Drainage Network-[Road 10] | 2026-08-26 → 2026-06-18 A (-69d) | 2026-09-08 → 2027-06-05 (+270d) | 0% → 85% | 1d → -214d |  | resources Labor/Helper [474.28 h]; MH ; depth: 0.0m - 1.5m [0.3]; MH ; depth: 1.51m - 2.5m [1]; MH ; depth: 0.0m - 1.5m [0.2]; MH ; depth: 1.51m - 2.5m with back drop less than 1.0 m [0.05]; MH ; depth: 0.0m - 1.5m [0.1]; MH ; depth: 1.51m - 2.5m [0.3]; MH ; depth: 2.51 - 3.5m [0.4]; MH ; depth: 3.51 - 4.5m [0.25]; Single Catch basin [113.35]; Double Catch basin [28.09]; Pipe encasement dia 300 mm [64.2]; Pipe encasement dia 400 mm [33.1]; Pipe encasement dia 500 mm [24.08]; Pipe encasement dia 600 mm [11.03]; Pipe encasement dia 700 mm [21.07]; Pipe encasement dia 800 mm [10.03]; Pipe encasement dia 900 mm [7.02]; Pipe encasement dia 1000 mm [7.02]; Pipe encasement dia 1100 mm [7.02]; Pipe encasement dia 1200 mm [4.01] → MH ; depth: 0.0m - 1.5m [0.3]; MH ; depth: 1.51m - 2.5m [0.8]; MH ; depth: 0.0m - 1.5m [0.2]; MH ; depth: 1.51m - 2.5m with back drop less than 1.0 m [0.05]; MH ; depth: 0.0m - 1.5m [0.1]; MH ; depth: 1.51m - 2.5m [0.3]; MH ; depth: 2.51 - 3.5m [0.4]; MH ; depth: 3.51 - 4.5m [0.25]; Single Catch basin [80]; Double Catch basin [20]; Pipe encasement dia 300 mm [45.1]; Pipe encasement dia 400 mm [23.1]; Pipe encasement dia 500 mm [16.78]; Pipe encasement dia 600 mm [8.24]; Pipe encasement dia 700 mm [14.58]; Pipe encasement dia 800 mm [7.42]; Pipe encasement dia 900 mm [4.94]; Pipe encasement dia 1000 mm [5.22]; Pipe encasement dia 1100 mm [4.68]; Pipe encasement dia 1200 mm [2.74] |
| CO-R10-SD-TF-130 | Catch Basin Internal Finishes (Benching + Insulation ) for Storm Drainage Network-[Road 10] | 2026-08-26 → 2026-06-22 A (-65d) | 2026-09-13 → 2027-06-09 (+269d) | 0% → 35% | 0d → -201d |  | resources Labor/Helper [289.03 h]; Foreman [149.06 h]; Pipe with diameter 300mm ; depth: 0 - 1.5m [160.5]; Pipe with diameter 400mm ; depth: 0 - 1.5m [10.03] → Labor/Helper [384 h]; Foreman [384 h]; Pipe with diameter 300mm ; depth: 0 - 1.5m [112.73]; Pipe with diameter 400mm ; depth: 0 - 1.5m [6.87] |
| 9 | **Potable Water Network** | 2026-08-08 → 2027-04-26 (+261d) | 2026-09-03 → 2027-06-07 (+277d) |  |  |  |  |
| TF | **Testing and Finishes** | 2026-08-08 → 2027-04-26 (+261d) | 2026-09-03 → 2027-06-07 (+277d) |  |  |  |  |
| CO-R10-PW-TF-100 | Final Finishes works and Covers for Valves and Valve Chambers of Potable Water Network-[Road 10] | 2026-08-08 → 2027-04-26 (+261d) | 2026-08-20 → 2027-05-09 (+262d) |  | 4d → -215d |  | resources Labor/Helper [23.94 h]; Plumber [29.63 h] → Labor/Helper [96 h]; Plumber [96 h] |
| CO-R10-PW-TF-120 | Fire Hydrant Finishies (S.Box + Safety + Marker Post ) of Potable Water Network-[Road 10] | 2026-08-22 → 2027-05-10 (+261d) | 2026-09-03 → 2027-05-29 (+268d) |  | 4d → -215d |  |  |
| CO-R10-PW-TF-110 | Testing Work for Main Line of Potable Water Network-[Road 10] | 2026-08-12 → 2027-05-25 (+286d) | 2026-08-25 → 2027-06-07 (+286d) |  | 0d → -235d | CO-R10.S03-ES-PW-130, CO-R09-PW-TF-110, CO-R10.S03-WE-PW-130 → CO-R10.S03-ES-PW-130, CO-R09-PW-TF-110, CO-R10.S03-WE-PW-130, CO-R10.S03-ES-PW-220, CO-R10.S03-WE-PW-220 | resources Labor/Helper [26.78 h]; Plumber [26.78 h]; Pipe with diameter 200mm; in depth 0.0m - 1.5m [362.13]; Pipe with diameter 560mm; in depth 1.5m - 3.0m [170.53]; Pipe with diameter 630mm; in depth 1.5m - 3.0m [296.93] → Labor/Helper [96 h]; Plumber [96 h]; Pipe with diameter 200mm; in depth 0.0m - 1.5m [255.13]; Pipe with diameter 560mm; in depth 1.5m - 3.0m [120]; Pipe with diameter 630mm; in depth 1.5m - 3.0m [209] |
| 13 | **Irrigation Network** | 2026-08-09 → 2027-04-29 (+263d) | 2026-08-19 → 2027-05-10 (+264d) |  |  |  |  |
| TF | **Testing and Finishes** | 2026-08-09 → 2027-04-29 (+263d) | 2026-08-19 → 2027-05-10 (+264d) |  |  |  |  |
| CO-R10-IR-TF-120 | Final Testing (pressure tests) of Irrigation Network-[Road 10] | 2026-08-09 → 2027-04-29 (+263d) | 2026-08-19 → 2027-05-10 (+264d) |  | 9d → -212d | CO-R10.S03-ES-IR-130, CO-R10.S03-ES-RD-100, CO-R10.S04-ES-RD-100, CO-R10.S03-WE-IR-130, CO-R10.S03-WE-RD-100, CO-R10.S04-WE-RD-100 → CO-R10.S03-ES-IR-130, CO-R10.S03-ES-RD-100, CO-R10.S04-ES-RD-100, CO-R10.S03-WE-IR-130, CO-R10.S03-WE-RD-100, CO-R10.S04-WE-RD-100, CO-R10.S03-ES-IR-120, CO-R10.S03-WE-IR-120 | resources Labor/Helper [17.86 h]; Plumber [17.86 h]; Pipe Fitter [17.86 h]; 125 mm pipe; depth 0.0m - 1.5m [407.27]; 355 mm pipe; depth 1.5m - 3.0m [141.44]; 400 mm pipe; depth 1.5m - 3.0m [141.44] → Labor/Helper [256 h]; Plumber [256 h]; Pipe Fitter [256 h]; 125 mm pipe; depth 0.0m - 1.5m [287.31]; 355 mm pipe; depth 1.5m - 3.0m [100]; 400 mm pipe; depth 1.5m - 3.0m [100] |
| 12 | **Street Lighting Network** | 2026-05-04 → 2027-01-02 (+243d) | 2026-07-23 → 2027-04-08 (+259d) |  |  |  |  |
| TR | **Termination and Testing Works** | 2026-05-04 → 2027-01-02 (+243d) | 2026-07-23 → 2027-04-08 (+259d) |  |  |  |  |
| CO-R10-SL-TF-140 | Termination Works For Lighting Poles Cables of Street Lighting Network-[Road 10] | 2026-05-04 → 2027-01-02 (+243d) | 2026-05-17 → 2027-01-14 (+242d) |  | 16d → -187d |  | resources Labor/Helper [17.86 h]; Electrician [17.86 h]; Low Current Technician [17.86 h]; Supply, installation , test and operation of cables, Copper, (4Cx25mmï¿½,Cu/XLPE/SWA/PVC +1x16mmï¿½ PVC/PVC) [2459.68] → Labor/Helper [96 h]; Electrician [96 h]; Low Current Technician [96 h]; Supply, installation , test and operation of cables, Copper, (4Cx25mm²,Cu/XLPE/SWA/PVC +1x16mm² PVC/PVC) [1732.5] |
| CO-R10-SL-TF-150 | Termination Works For Panel Board Cables of Street Lighting Network-[Road 10] | 2026-07-08 → 2027-03-24 (+259d) | 2026-07-21 → 2027-04-06 (+259d) |  | 9d → -208d |  | resources Labor/Helper [17.86 h]; Electrician [17.86 h]; Low Current Technician [17.86 h]; Package Substation 33000/400V, 500kVA with RMU [1] → Labor/Helper [96 h]; Electrician [96 h]; Low Current Technician [96 h]; Package Substation 33000/400V, 500kVA with RMU [0.6] |
| CO-R10-SL-TF-380 | Testing Works For Panel Board Cables of Street Lighting Network-[Road 10] | 2026-07-22 → 2027-04-07 (+259d) | 2026-07-23 → 2027-04-08 (+259d) |  | 29d → -188d |  | resources Labor/Helper [26.78 h]; Electrician [26.78 h]; Package Substation 33000/400V, 500kVA with RMU [0.3] → Labor/Helper [16 h]; Electrician [16 h]; Package Substation 33000/400V, 500kVA with RMU [0.3] |
| ES | **Earthing System Works** | 2026-05-18 → 2027-01-16 (+243d) | 2026-06-22 → 2027-02-15 (+238d) |  |  |  |  |
| CO-R10-SL-ES-140 | Install Earthing System Works for Lighting Poles of Street Lighting Network-[Road 10] | 2026-05-18 → 2027-01-16 (+243d) | 2026-06-04 → 2027-01-28 (+238d) |  | 16d → -187d |  | resources Labor/Helper [17.86 h]; Electrician [17.86 h]; Low Current Technician [17.86 h]; Earthing installation, for Street lighting circuits, including earth rod in plastic chamber [35.11]; Earthing installation Lighting Panales [4.01] → Labor/Helper [96 h]; Electrician [96 h]; Low Current Technician [96 h]; Earthing installation, for Street lighting circuits, including earth rod in plastic chamber [25]; Earthing installation Lighting Panales [3] |
| CO-R10-SL-ES-150 | Install Earthing System Works for Lighting Panel Boards of Street Lighting Network-[Road 10] | 2026-06-09 → 2027-02-02 (+238d) | 2026-06-22 → 2027-02-15 (+238d) |  | 16d → -187d |  | resources Labor/Helper [17.86 h]; Electrician [17.86 h]; Low Current Technician [17.86 h]; Earthing installation, lighting plants. [4.01] → Labor/Helper [96 h]; Electrician [96 h]; Low Current Technician [96 h]; Earthing installation, lighting plants. [3] |
| 14 | **Medium Voltage Network** | 2026-09-09 → 2027-04-19 (+222d) | 2026-09-16 → 2027-04-26 (+222d) |  |  |  |  |
| TT | **Termination and Testing Works** | 2026-09-09 → 2027-04-19 (+222d) | 2026-09-16 → 2027-04-26 (+222d) |  |  |  |  |
| CO-R10-MV-TF-140 | Termination Works of Medium Voltage Network-[Road 10] | 2026-09-09 → 2027-04-19 (+222d) | 2026-09-16 → 2027-04-26 (+222d) |  | 0d → -185d |  | resources Labor/Helper [17.86 h]; Electrician [17.86 h]; Low Current Technician [17.86 h] → Labor/Helper [128 h]; Electrician [128 h]; Low Current Technician [128 h] |
| 1 | **Road Works** | 2026-09-30 → 2027-06-20 (+263d) | 2026-10-31 → 2027-07-20 (+262d) |  |  |  |  |
| 1 | **Bituminous Construction** | 2026-09-30 → 2027-06-20 (+263d) | 2026-10-17 → 2027-07-06 (+262d) |  |  |  |  |
| CO-R10-S03-RD-F-110 | Application of Prime Coat Layer for Road Works- S.W 05-[Road 10] | 2026-09-30 → 2027-06-20 (+263d) | 2026-10-11 → 2027-06-30 (+262d) |  | 0d → -216d |  | resources Labor/Helper [26.78 h]; Insulation Worker [26.78 h]; Bituminous base course(Grading I - Class A), 70mm thick after compaction including Prime Coat (MC1) [2245.01] → Labor/Helper [144 h]; Insulation Worker [144 h]; Bituminous base course(Grading I - Class A), 70mm thick after compaction including Prime Coat (MC1) [1582.3] |
| CO-R10-S04-RD-F-140 | Application of Prime Coat Layer for Road Works- S.W 06-[Road 10] | 2026-10-03 → 2027-06-22 (+262d) | 2026-10-13 → 2027-07-03 (+263d) |  | 0d → -216d |  | resources Labor/Helper [26.78 h]; Insulation Worker [26.78 h]; Bituminous base course(Grading I - Class A), 70mm thick after compaction including Prime Coat (MC1) [2245.01] → Labor/Helper [144 h]; Insulation Worker [144 h]; Bituminous base course(Grading I - Class A), 70mm thick after compaction including Prime Coat (MC1) [1582.3] |
| CO-R10-S03-RD-F-120 | Bituminous Base & Wearing Courses Layers for Road Works- S.W 05-[Road 10] | 2026-10-04 → 2027-06-23 (+262d) | 2026-10-14 → 2027-07-04 (+263d) |  | 0d → -216d |  | resources Labor/Helper [26.78 h]; Eq. Operator [26.78 h]; Asphalt Cutter [144 h]; Asphalt Paver [144 h]; Bituminous concrete wearing course, 50 mm thick, after compaction(Grading I - Class A), including tack coat (RC) [1604.01] → Labor/Helper [144 h]; Eq. Operator [144 h]; Asphalt Cutter [144 h]; Asphalt Paver [144 h]; Bituminous concrete wearing course, 50 mm thick, after compaction(Grading I - Class A), including tack coat (RC) [1130.3] |
| CO-R10-S04-RD-F-150 | Bituminous Base & Wearing Courses Layers for Road Works- S.W 06-[Road 10] | 2026-10-06 → 2027-06-26 (+263d) | 2026-10-17 → 2027-07-06 (+262d) |  | 0d → -216d |  | resources Labor/Helper [26.78 h]; Eq. Operator [26.78 h]; Asphalt Cutter [144 h]; Asphalt Paver [144 h]; Bituminous concrete wearing course, 50 mm thick, after compaction(Grading I - Class A), including tack coat (RC) [1604.01] → Labor/Helper [144 h]; Eq. Operator [144 h]; Asphalt Cutter [144 h]; Asphalt Paver [144 h]; Bituminous concrete wearing course, 50 mm thick, after compaction(Grading I - Class A), including tack coat (RC) [1130.3] |
| TS | **Traffic Signs Boards and Roads Marking** | 2026-10-15 → 2027-07-05 (+263d) | 2026-10-31 → 2027-07-20 (+262d) |  |  |  |  |
| CO-R10-S03-RD-F-100 | Installation Works of Traffic Signs Boards For Road Works- S.W 05-[Road 10] | 2026-10-15 → 2027-07-05 (+263d) | 2026-10-28 → 2027-07-18 (+263d) |  | 0d → -216d |  | resources Labor/Helper [26 h]; Painter [26 h]; Traffic signs, ground mounted, Sheet Alumenium, (breakaway) Single post, with all accessories [16.05]; Straight Arrow [37.12]; Right or Left Arrow [3.01]; Straight-Right Arrow [1]; Straight-Left Arrow [3.01] → Labor/Helper [96 h]; Painter [96 h]; Traffic signs, ground mounted, Sheet Alumenium, (breakaway) Single post, with all accessories [11]; Straight Arrow [26]; Right or Left Arrow [2]; Straight-Right Arrow [1]; Straight-Left Arrow [2] |
| CO-R10-S03-RD-F-160 | Application of Road Marking Works For Road Works- S.W 05-[Road 10] | 2026-10-15 → 2027-07-05 (+263d) | 2026-10-28 → 2027-07-18 (+263d) |  | 0d → -216d |  | resources Labor/Helper [26 h]; Painter [26 h]; Retroreflective Thermoplastic White, Traffic lines [1208.78]; Retroreflective Thermoplastic Yellow, Traffic lines [185.58]; Retroreflective raised pavement markers(Type A) [236.74] → Labor/Helper [96 h]; Painter [96 h]; Retroreflective Thermoplastic White, Traffic lines [852.32]; Retroreflective Thermoplastic Yellow, Traffic lines [130.6]; Retroreflective raised pavement markers(Type A) [166.62] |
| CO-R10-S04-RD-F-170 | Application of Road Marking Works For Road Works- S.W 06-[Road 10] | 2026-10-18 → 2027-07-07 (+262d) | 2026-10-31 → 2027-07-20 (+262d) |  | 0d → -216d |  | resources Labor/Helper [26 h]; Painter [26 h]; Retroreflective Thermoplastic White, Traffic lines [1208.78]; Retroreflective Thermoplastic Yellow, Traffic lines [185.58]; Retroreflective raised pavement markers(Type A) [236.74] → Labor/Helper [96 h]; Painter [96 h]; Retroreflective Thermoplastic White, Traffic lines [852.32]; Retroreflective Thermoplastic Yellow, Traffic lines [130.6]; Retroreflective raised pavement markers(Type A) [166.62] |
| CO-R10-S04-RD-F-130 | Installation Works of Traffic Signs Boards For Road Works- S.W 06-[Road 10] | 2026-10-20 → 2027-07-10 (+263d) | 2026-10-31 → 2027-07-20 (+262d) |  | 1d → -215d |  | resources Labor/Helper [26 h]; Painter [26 h]; Traffic signs, ground mounted, Sheet Alumenium, (breakaway) Single post, with all accessories [16.05]; Straight Arrow [37.12]; Right or Left Arrow [3.01]; Straight-Right Arrow [1]; Straight-Left Arrow [3.01] → Labor/Helper [120 h]; Painter [120 h]; Traffic signs, ground mounted, Sheet Alumenium, (breakaway) Single post, with all accessories [11]; Straight Arrow [26]; Right or Left Arrow [2]; Straight-Right Arrow [1]; Straight-Left Arrow [2] |
| 5 | **Road 11 Local 1 ( 670 LM )** | 2026-05-18 → 2026-06-22 (+35d) | 2026-11-11 → 2027-08-30 (+292d) |  |  |  |  |
| 10 | **Sewage Network** | 2026-08-12 → 2027-05-03 (+264d) | 2026-09-12 → 2027-06-08 (+269d) |  |  |  |  |
| TF | **Testing and Finishes** | 2026-08-12 → 2027-05-03 (+264d) | 2026-09-12 → 2027-06-08 (+269d) |  |  |  |  |
| CO-R11-SW-TF-100 | Final Testing For Main Line of Sewage Network-[Road 11] | 2026-08-12 → 2027-05-03 (+264d) | 2026-08-25 → 2027-05-22 (+270d) |  | 0d → -221d | CO-R11.S05-SW-130, CO-R11.S05-RD-P-100 SS+3d, CO-R11.S05-RD-P-100 FF+3d, CO-R10-SW-TF-100, CO-R11.S06-RD-P-100 SS+3d, CO-R11.S06-RD-P-100 FF+3d, CO-R11.S06-SW-130 → CO-R11.S05-SW-130, CO-R11.S05-RD-P-100 SS+3d, CO-R11.S05-RD-P-100 FF+3d, CO-R10-SW-TF-100, CO-R11.S06-RD-P-100 SS+3d, CO-R11.S06-RD-P-100 FF+3d, CO-R11.S06-SW-130, CO-R11.S05-SW-210 | resources Labor/Helper [18.15 h]; Plumber [18.15 h]; Pipe Fitter [18.15 h]; Nominal bore : 160mm; Depth : 1.5m - 2.5m [21.07]; Nominal bore : 200mm; Depth : 0.0m - 1.5m [10.03]; Nominal bore : 200mm; Depth : 1.5m - 2.5m [14.04]; Nominal bore : 200mm; Depth : 2.5m - 3.5m [11.03]; Nominal bore : 200mm; Depth : 3.5m - 4.5m [28.09]; Nominal bore : 200mm; Depth : 4.5m -5.5m [10.03]; Nominal bore : 200mm; Depth : 5.5m - 6.5m [23.07]; Depth : 1.5 - 2.5m [7.02]; Depth : 2.5 - 3.5m [8.03]; Depth : 3.5 - 4.5m [8.03]; Depth : 4.5 - 5.5m [14.04]; Depth : 5.5 - 6.5m [14.04]; Depth : 6.5 -7.5m [42.13]; Depth : 6.5 -7.5m [50.16]; Depth :more than 7.5m [99.31] → Labor/Helper [288 h]; Plumber [288 h]; Pipe Fitter [288 h]; Nominal bore : 160mm; Depth : 1.5m - 2.5m [15]; Nominal bore : 200mm; Depth : 0.0m - 1.5m [6.71]; Nominal bore : 200mm; Depth : 1.5m - 2.5m [9.82]; Nominal bore : 200mm; Depth : 2.5m - 3.5m [7.61]; Nominal bore : 200mm; Depth : 3.5m - 4.5m [19.73]; Nominal bore : 200mm; Depth : 4.5m -5.5m [7.42]; Nominal bore : 200mm; Depth : 5.5m - 6.5m [15.52]; Depth : 1.5 - 2.5m [5]; Depth : 2.5 - 3.5m [6.11]; Depth : 3.5 - 4.5m [6.11]; Depth : 4.5 - 5.5m [10]; Depth : 5.5 - 6.5m [10]; Depth : 6.5 -7.5m [30]; Depth : 6.5 -7.5m [35]; Depth :more than 7.5m [70] |
| CO-R11-SW-TF-110 | Install Manhole Cover Works for External Finishes of Sewage Network-[Road 11] | 2026-08-26 → 2027-05-23 (+270d) | 2026-09-08 → 2027-06-05 (+270d) |  | 0d → -221d |  | resources Labor/Helper [17.86 h]; Plumber [17.86 h]; Pipe Fitter [17.86 h]; Depth: not exceeding 1.5m [0.1]; Depth: 1.5 - 2.5m [0.3]; Depth: 2.5 - 3.5m [0.1]; Depth: 3.5 - 4.5m [0.05]; Depth: 4.5 - 5.5m [0.05]; Depth: 5.5 - 6.5m [0.2]; Depth:6.5 - 7.5m [0.15] → Labor/Helper [192 h]; Plumber [192 h]; Pipe Fitter [192 h]; Depth: not exceeding 1.5m [0.1]; Depth: 1.5 - 2.5m [0.3]; Depth: 2.5 - 3.5m [0.1]; Depth: 3.5 - 4.5m [0.05]; Depth: 4.5 - 5.5m [0.05]; Depth: 5.5 - 6.5m [0.2]; Depth:6.5 - 7.5m [0.15] |
| CO-R11-SW-TF-130 | Main Manhole Internal Finishes (Benching + Insulation) of Sewage Network-[Road 11] | 2026-08-30 → 2027-05-26 (+269d) | 2026-09-12 → 2027-06-08 (+269d) |  | 0d → -221d |  | resources Labor/Helper [17.86 h]; Plumber [17.86 h]; Pipe Fitter [17.86 h]; Depth: not exceeding 1.5m [0.1]; Depth: 1.5 - 2.5m [0.3]; Depth: 2.5 - 3.5m [0.1]; Depth: 3.5 - 4.5m [0.05]; Depth: 4.5 - 5.5m [0.05]; Depth: 5.5 - 6.5m [0.2]; Depth:6.5 - 7.5m [0.15] → Labor/Helper [192 h]; Plumber [192 h]; Pipe Fitter [192 h]; Depth: not exceeding 1.5m [0.1]; Depth: 1.5 - 2.5m [0.3]; Depth: 2.5 - 3.5m [0.1]; Depth: 3.5 - 4.5m [0.05]; Depth: 4.5 - 5.5m [0.05]; Depth: 5.5 - 6.5m [0.2]; Depth:6.5 - 7.5m [0.15] |
| 11 | **Storm Drainage Network** | 2026-08-15 → 2026-06-22 (-54d) | 2026-10-03 → 2027-06-28 (+268d) |  |  |  |  |
| TF | **Testing and Finishes** | 2026-08-15 → 2026-06-22 (-54d) | 2026-10-03 → 2027-06-28 (+268d) |  |  |  |  |
| CO-R11-SD-TF-130 | Catch Basin Internal Finishes (Benching + Insulation ) for Storm Drainage Network-[Road 11] | 2026-09-14 → 2026-06-22 A (-84d) | 2026-10-03 → 2027-06-28 (+268d) | 0% → 20% | 0d → -201d |  | resources Labor/Helper [289.03 h]; Foreman [82.27 h]; Pipe with diameter 300mm ; depth: 0 - 1.5m [47.15]; Pipe with diameter 400mm ; depth: 0 - 1.5m [3.01] → Labor/Helper [384 h]; Foreman [384 h]; Pipe with diameter 300mm ; depth: 0 - 1.5m [32.89]; Pipe with diameter 400mm ; depth: 0 - 1.5m [2.01] |
| CO-R11-SD-TF-120 | Main Manhole Internal Finishes (Benching + Insulation ) for Storm Drainage Network-[Road 11] | 2026-09-09 → 2026-06-23 A (-78d) | 2026-09-22 → 2027-06-19 (+270d) | 0% → 85% | 1d → -214d |  | resources Labor/Helper [474.28 h]; MH ; depth: 0.0m - 1.5m [0.1]; MH ; depth: 1.51m - 2.5m [0.3]; MH ; depth: 2.51 - 3.5m [0.1]; MH ; depth: 1.51m - 2.5m [0.2]; MH ; depth: 2.51 - 3.5m [0.25]; MH ; depth: 2.51 - 3.5m [0.2]; Single Catch basin [31.1]; Double Catch basin [28.09]; Pipe encasement dia 300 mm [18.06]; Pipe encasement dia 400 mm [10.03]; Pipe encasement dia 500 mm [7.02]; Pipe encasement dia 600 mm [3.01]; Pipe encasement dia 700 mm [6.02]; Pipe encasement dia 800 mm [3.01]; Pipe encasement dia 900 mm [1]; Pipe encasement dia 1000 mm [3.01]; Pipe encasement dia 1100 mm [1]; Pipe encasement dia 1200 mm [1] → MH ; depth: 0.0m - 1.5m [0.1]; MH ; depth: 1.51m - 2.5m [0.3]; MH ; depth: 2.51 - 3.5m [0.1]; MH ; depth: 1.51m - 2.5m [0.2]; MH ; depth: 2.51 - 3.5m [0.25]; MH ; depth: 2.51 - 3.5m [0.2]; Single Catch basin [22]; Double Catch basin [20]; Pipe encasement dia 300 mm [13.16]; Pipe encasement dia 400 mm [6.74]; Pipe encasement dia 500 mm [4.9]; Pipe encasement dia 600 mm [2.4]; Pipe encasement dia 700 mm [4.26]; Pipe encasement dia 800 mm [2.16]; Pipe encasement dia 900 mm [1.44]; Pipe encasement dia 1000 mm [1.52]; Pipe encasement dia 1100 mm [1.36]; Pipe encasement dia 1200 mm [0.8] |
| CO-R11-SD-TF-100 | Testing Work for Pipes of Storm Drainage Network-[Road 11] | 2026-08-15 → 2026-06-24 A (-52d) | 2026-09-01 → 2026-07-05 A (-58d) | 0% → 100% | 7d → none |  | resources Labor/Helper [291.81 h]; Plumber [291.81 h]; Pipe with diameter 600mm ; depth: 1.51m - 2.5m [30.09]; Pipe with diameter 700mm ; depth: 1.51m - 2.5m [30.09]; Pipe with diameter 800mm ; depth: 0.0m - 1.5m [7.02]; Pipe with diameter 800mm ; depth: 1.51m - 2.5m [58.18]; Pipe with diameter 800mm ; depth: 2.51m - 3.5m [10.03]; Pipe with diameter 900mm ; depth: 0.0m - 1.5m [7.02]; Pipe with diameter 900mm ; depth: 1.51m - 2.5m [24.08]; Pipe with diameter 1000mm ; depth: 1.51m - 2.5m [25.08]; Pipe with diameter 1000mm ; depth: 2.51 - 3.5m [25.08] → Labor/Helper [256 h]; Plumber [256 h]; Pipe with diameter 600mm ; depth: 1.51m - 2.5m [21.46]; Pipe with diameter 700mm ; depth: 1.51m - 2.5m [21.04]; Pipe with diameter 800mm ; depth: 0.0m - 1.5m [5]; Pipe with diameter 800mm ; depth: 1.51m - 2.5m [41.02]; Pipe with diameter 800mm ; depth: 2.51m - 3.5m [7]; Pipe with diameter 900mm ; depth: 0.0m - 1.5m [5]; Pipe with diameter 900mm ; depth: 1.51m - 2.5m [16.85]; Pipe with diameter 1000mm ; depth: 1.51m - 2.5m [17.6]; Pipe with diameter 1000mm ; depth: 2.51 - 3.5m [17.6] |
| CO-R11-SD-TF-110 | Install Catch Basin Cover Works for External Finishes of Storm Drainage Network-[Road 11] | 2026-08-23 → 2026-06-27 A (-57d) | 2026-09-05 → 2027-05-30 (+267d) | 0% → 20% | 4d → -209d |  | resources Labor/Helper [278.11 h]; Foreman [114.26 h]; Pipe with diameter 300mm ; depth: 0 - 1.5m [47.15]; Pipe with diameter 400mm ; depth: 0 - 1.5m [3.01] → Labor/Helper [384 h]; Foreman [384 h]; Pipe with diameter 300mm ; depth: 0 - 1.5m [32.89]; Pipe with diameter 400mm ; depth: 0 - 1.5m [2.01] |
| 9 | **Potable Water Network** | 2026-08-26 → 2027-05-10 (+257d) | 2026-09-22 → 2027-06-21 (+272d) |  |  |  |  |
| TF | **Testing and Finishes** | 2026-08-26 → 2027-05-10 (+257d) | 2026-09-22 → 2027-06-21 (+272d) |  |  |  |  |
| CO-R11-PW-TF-100 | Final Finishes works and Covers for Valves and Valve Chambers of Potable Water Network-[Road 11] | 2026-08-26 → 2027-05-10 (+257d) | 2026-09-08 → 2027-05-29 (+263d) |  | 0d → -215d |  | resources Labor/Helper [26.78 h]; Plumber [26.78 h] → Labor/Helper [96 h]; Plumber [96 h] |
| CO-R11-PW-TF-120 | Fire Hydrant Finishies (S.Box + Safety + Marker Post ) of Potable Water Network-[Road 11] | 2026-09-09 → 2027-05-30 (+263d) | 2026-09-22 → 2027-06-12 (+263d) |  | 0d → -215d |  |  |
| CO-R11-PW-TF-110 | Testing Work for Main Line of Potable Water Network-[Road 11] | 2026-08-26 → 2027-06-08 (+286d) | 2026-09-08 → 2027-06-21 (+286d) |  | 0d → -235d | CO-R10-PW-TF-110 → CO-R10-PW-TF-110, CO-R11.S06-PW-210 | resources Labor/Helper [26.78 h]; Plumber [26.78 h]; Pipe with diameter 200mm; in depth 0.0m - 1.5m [113.35] → Labor/Helper [96 h]; Plumber [96 h]; Pipe with diameter 200mm; in depth 0.0m - 1.5m [79.91] |
| 13 | **Irrigation Network** | 2026-08-23 → 2027-05-11 (+261d) | 2026-09-02 → 2027-05-27 (+267d) |  |  |  |  |
| TF | **Testing and Finishes** | 2026-08-23 → 2027-05-11 (+261d) | 2026-09-02 → 2027-05-27 (+267d) |  |  |  |  |
| CO-R11-IR-TF-130 | Final Testing (pressure tests) of Irrigation Network-[Road 11] | 2026-08-23 → 2027-05-11 (+261d) | 2026-09-02 → 2027-05-27 (+267d) |  | 7d → -212d |  | resources Labor/Helper [16.77 h]; Plumber [17.79 h]; Pipe Fitter [19 h]; 125 mm pipe; depth 0.0m - 1.5m [119.37] → Labor/Helper [256 h]; Plumber [256 h]; Pipe Fitter [256 h]; 125 mm pipe; depth 0.0m - 1.5m [83.84] |
| 12 | **Street Lighting Network** | 2026-05-18 → 2027-04-07 (+324d) | 2026-08-10 → 2027-07-14 (+338d) |  |  |  |  |
| TR | **Termination and Testing Works** | 2026-05-18 → 2027-04-07 (+324d) | 2026-08-10 → 2027-07-14 (+338d) |  |  |  |  |
| CO-R11-SL-TF-160 | Termination Works For Lighting Poles Cables of Street Lighting Network-[Road 11] | 2026-05-18 → 2027-04-07 (+324d) | 2026-06-04 → 2027-04-20 (+320d) |  | 65d → -204d |  | resources Labor/Helper [17.86 h]; Electrician [17.86 h]; Low Current Technician [17.86 h]; Supply, installation , test and operation of cables, Copper, (4Cx25mmï¿½,Cu/XLPE/SWA/PVC +1x16mmï¿½ PVC/PVC) [724.26] → Labor/Helper [96 h]; Electrician [96 h]; Low Current Technician [96 h]; Supply, installation , test and operation of cables, Copper, (4Cx25mm²,Cu/XLPE/SWA/PVC +1x16mm² PVC/PVC) [510.3] |
| CO-R11-SL-TF-170 | Termination Works For Panel Board Cables of Street Lighting Network-[Road 11] | 2026-07-26 → 2027-06-29 (+338d) | 2026-08-08 → 2027-07-12 (+338d) |  | 6d → -274d |  |  |
| CO-R11-SL-TF-380 | Testing Works For Panel Board Cables of Street Lighting Network-[Road 11] | 2026-08-09 → 2027-07-13 (+338d) | 2026-08-10 → 2027-07-14 (+338d) |  | 16d → -264d |  |  |
| 14 | **Medium Voltage Network** | 2026-09-17 → 2027-07-12 (+298d) | 2026-09-26 → 2027-07-19 (+296d) |  |  |  |  |
| TT | **Termination and Testing Works** | 2026-09-17 → 2027-07-12 (+298d) | 2026-09-26 → 2027-07-19 (+296d) |  |  |  |  |
| CO-R11-MV-TF-160 | Termination Works of Medium Voltage Network-[Road 11] | 2026-09-17 → 2027-07-12 (+298d) | 2026-09-26 → 2027-07-19 (+296d) |  | 0d → -245d |  | resources Labor/Helper [17.86 h]; Electrician [17.86 h]; Low Current Technician [17.86 h] → Labor/Helper [96 h]; Electrician [96 h]; Low Current Technician [96 h] |
| 1 | **Road Works** | 2026-10-12 → 2026-08-12 (-61d) | 2026-11-11 → 2027-08-30 (+292d) |  |  |  |  |
| 1 | **Bituminous Construction** | 2026-10-12 → 2026-08-12 (-61d) | 2026-10-31 → 2027-08-18 (+291d) |  |  |  |  |
| CO-R11-S05-RD-F-110 | Application of Prime Coat Layer for Road Works- S.W 07-[Road 11] | 2026-10-12 → 2026-08-12 A (-61d) | 2026-10-22 → 2026-08-15 A (-68d) | 0% → 100% | 0d → none |  | resources Labor/Helper [612.48 h]; Insulation Worker [612.48 h]; Bituminous base course(Grading I - Class A), 70mm thick after compaction including Prime Coat (MC1) [656.05] → Labor/Helper [96 h]; Insulation Worker [96 h]; Bituminous base course(Grading I - Class A), 70mm thick after compaction including Prime Coat (MC1) [461.72] |
| CO-R11-S06-RD-F-140 | Application of Prime Coat Layer for Road Works- S.W 08-[Road 11] | 2026-10-14 → 2026-08-13 A (-62d) | 2026-10-27 → 2026-08-15 A (-73d) | 0% → 100% | 0d → none |  | resources Labor/Helper [594.6 h]; Insulation Worker [594.6 h]; Bituminous base course(Grading I - Class A), 70mm thick after compaction including Prime Coat (MC1) [656.05] → Labor/Helper [144 h]; Insulation Worker [144 h]; Bituminous base course(Grading I - Class A), 70mm thick after compaction including Prime Coat (MC1) [461.72] |
| CO-R11-S05-RD-F-120 | Bituminous Base & Wearing Courses Layers for Road Works- S.W 07-[Road 11] | 2026-10-15 → 2027-08-05 (+294d) | 2026-10-28 → 2027-08-18 (+294d) |  | 0d → -243d |  | resources Labor/Helper [26 h]; Eq. Operator [26 h]; Asphalt Cutter [96 h]; Asphalt Paver [96 h]; Bituminous concrete wearing course, 50 mm thick, after compaction(Grading I - Class A), including tack coat (RC) [468.46] → Labor/Helper [96 h]; Eq. Operator [96 h]; Asphalt Cutter [96 h]; Asphalt Paver [96 h]; Bituminous concrete wearing course, 50 mm thick, after compaction(Grading I - Class A), including tack coat (RC) [329.83] |

| ID | Task | Start | Finish | Complete | Total float | Predecessors | Other |
| --- | --- | --- | --- | --- | --- | --- | --- |
| CO-R11-S06-RD-F-150 | Bituminous Base & Wearing Courses Layers for Road Works- S.W 08-[Road 11] | 2026-10-18 → 2027-08-05 (+291d) | 2026-10-31 → 2027-08-18 (+291d) |  | 0d → -241d |  | resources Labor/Helper [26.07 h]; Eq. Operator [25.94 h]; Asphalt Cutter [144 h]; Asphalt Paver [144 h]; Bituminous concrete wearing course, 50 mm thick, after compaction(Grading I - Class A), including tack coat (RC) [468.46] → Labor/Helper [144 h]; Eq. Operator [144 h]; Asphalt Cutter [144 h]; Asphalt Paver [144 h]; Bituminous concrete wearing course, 50 mm thick, after compaction(Grading I - Class A), including tack coat (RC) [329.83] |
| TS | **Traffic Signs Boards and Roads Marking** | 2026-10-29 → 2027-08-19 (+294d) | 2026-11-11 → 2027-08-30 (+292d) |  |  |  |  |
| CO-R11-S05-RD-F-100 | Installation Works of Traffic Signs Boards For Road Works- S.W 07-[Road 11] | 2026-10-29 → 2027-08-19 (+294d) | 2026-11-09 → 2027-08-30 (+294d) |  | 0d → -243d |  | resources Labor/Helper [16 h]; Painter [16 h]; Traffic signs, ground mounted, Sheet Alumenium, (breakaway) Single post, with all accessories [4.01]; Straight Arrow [11.03]; Straight-Left Arrow [1] → Labor/Helper [96 h]; Painter [96 h]; Traffic signs, ground mounted, Sheet Alumenium, (breakaway) Single post, with all accessories [3]; Straight Arrow [8]; Straight-Left Arrow [1] |
| CO-R11-S05-RD-F-160 | Application of Road Marking Works For Road Works- S.W 07-[Road 11] | 2026-10-29 → 2027-08-19 (+294d) | 2026-11-09 → 2027-08-30 (+294d) |  | 0d → -243d |  | resources Labor/Helper [16 h]; Painter [16 h]; Retroreflective Thermoplastic White, Traffic lines [353.1]; Retroreflective Thermoplastic Yellow, Traffic lines [54.17]; Retroreflective raised pavement markers(Type A) [69.22] → Labor/Helper [96 h]; Painter [96 h]; Retroreflective Thermoplastic White, Traffic lines [248.71]; Retroreflective Thermoplastic Yellow, Traffic lines [38.11]; Retroreflective raised pavement markers(Type A) [48.62] |
| CO-R11-S06-RD-F-130 | Installation Works of Traffic Signs Boards For Road Works- S.W 08-[Road 11] | 2026-11-01 → 2027-08-19 (+291d) | 2026-11-11 → 2027-08-30 (+292d) |  | 1d → -240d |  | resources Labor/Helper [16 h]; Painter [16 h]; Traffic signs, ground mounted, Sheet Alumenium, (breakaway) Single post, with all accessories [4.01]; Straight Arrow [11.03]; Straight-Left Arrow [1] → Labor/Helper [96 h]; Painter [96 h]; Traffic signs, ground mounted, Sheet Alumenium, (breakaway) Single post, with all accessories [3]; Straight Arrow [8]; Straight-Left Arrow [1] |
| CO-R11-S06-RD-F-170 | Application of Road Marking Works For Road Works- S.W 08-[Road 11] | 2026-11-01 → 2027-08-19 (+291d) | 2026-11-11 → 2027-08-30 (+292d) |  | 0d → -241d |  | resources Labor/Helper [16 h]; Painter [16 h]; Retroreflective Thermoplastic White, Traffic lines [353.1]; Retroreflective Thermoplastic Yellow, Traffic lines [54.17]; Retroreflective raised pavement markers(Type A) [69.22] → Labor/Helper [96 h]; Painter [96 h]; Retroreflective Thermoplastic White, Traffic lines [248.71]; Retroreflective Thermoplastic Yellow, Traffic lines [38.11]; Retroreflective raised pavement markers(Type A) [48.62] |
| 6 | **Road 14 Local 1 ( 584 LM )** | 2026-06-13 → 2026-04-08 (-66d) | 2026-11-23 → 2027-09-13 (+294d) |  |  |  |  |
| 10 | **Sewage Network** | 2026-08-26 → 2027-05-23 (+270d) | 2026-09-27 → 2027-06-22 (+268d) |  |  |  |  |
| TF | **Testing and Finishes** | 2026-08-26 → 2027-05-23 (+270d) | 2026-09-27 → 2027-06-22 (+268d) |  |  |  |  |
| CO-R14-SW-TF-100 | Final Testing For Main Line of Sewage Network-[Road 14] | 2026-08-26 → 2027-05-23 (+270d) | 2026-09-08 → 2027-06-05 (+270d) |  | 0d → -221d | CO-R14.S07-SW-130, CO-R14.S07-RD-P-100 SS+3d, CO-R14.S07-RD-P-100 FF+3d, CO-R11-SW-TF-100, CO-R14.S08-RD-P-100 SS+3d, CO-R14.S08-RD-P-100 FF+3d, CO-R14.S08-SW-130 → CO-R14.S07-SW-130, CO-R14.S07-RD-P-100 SS+3d, CO-R14.S07-RD-P-100 FF+3d, CO-R11-SW-TF-100, CO-R14.S08-RD-P-100 SS+3d, CO-R14.S08-RD-P-100 FF+3d, CO-R14.S08-SW-130, CO-R14.S08-SW-210, CO-R14.S07-SW-210 | resources Labor/Helper [18.15 h]; Plumber [18.15 h]; Pipe Fitter [18.15 h]; Nominal bore : 160mm; Depth : 0.0m - 1.5m [10.03]; Nominal bore : 200mm; Depth : 0.0m - 1.5m [17.05]; Nominal bore : 200mm; Depth : 1.5m - 2.5m [17.05]; Nominal bore : 200mm; Depth : 2.5m - 3.5m [28.09]; Nominal bore : 200mm; Depth : 3.5m - 4.5m [28.09]; Nominal bore : 200mm; Depth : 4.5m -5.5m [17.05]; Nominal bore : 200mm; Depth : 5.5m - 6.5m [24.08] → Labor/Helper [192 h]; Plumber [192 h]; Pipe Fitter [192 h]; Nominal bore : 160mm; Depth : 0.0m - 1.5m [7.2]; Nominal bore : 200mm; Depth : 0.0m - 1.5m [11.74]; Nominal bore : 200mm; Depth : 1.5m - 2.5m [12.08]; Nominal bore : 200mm; Depth : 2.5m - 3.5m [20.01]; Nominal bore : 200mm; Depth : 3.5m - 4.5m [19.78]; Nominal bore : 200mm; Depth : 4.5m -5.5m [12.29]; Nominal bore : 200mm; Depth : 5.5m - 6.5m [16.66] |
| CO-R14-SW-TF-110 | Install Manhole Cover Works for External Finishes of Sewage Network-[Road 14] | 2026-09-09 → 2027-06-06 (+270d) | 2026-09-22 → 2027-06-19 (+270d) |  | 0d → -221d |  | resources Labor/Helper [17.86 h]; Plumber [17.86 h]; Pipe Fitter [17.86 h]; Depth: not exceeding 1.5m [0.2]; Depth: 1.5 - 2.5m [0.3]; Depth: 3.5 - 4.5m [0.05]; Depth: 4.5 - 5.5m [0.05]; Depth: 5.5 - 6.5m [0.1]; Depth:6.5 - 7.5m [0.05] → Labor/Helper [192 h]; Plumber [192 h]; Pipe Fitter [192 h]; Depth: not exceeding 1.5m [0.2]; Depth: 1.5 - 2.5m [0.3]; Depth: 3.5 - 4.5m [0.05]; Depth: 4.5 - 5.5m [0.05]; Depth: 5.5 - 6.5m [0.1]; Depth:6.5 - 7.5m [0.05] |
| CO-R14-SW-TF-130 | Main Manhole Internal Finishes (Benching + Insulation) of Sewage Network-[Road 14] | 2026-09-13 → 2027-06-09 (+269d) | 2026-09-27 → 2027-06-22 (+268d) |  | 0d → -221d |  | resources Labor/Helper [14.09 h]; Plumber [19.09 h]; Pipe Fitter [20.39 h]; Depth: not exceeding 1.5m [0.2]; Depth: 1.5 - 2.5m [0.3]; Depth: 3.5 - 4.5m [0.05]; Depth: 4.5 - 5.5m [0.05]; Depth: 5.5 - 6.5m [0.1]; Depth:6.5 - 7.5m [0.05] → Labor/Helper [192 h]; Plumber [192 h]; Pipe Fitter [192 h]; Depth: not exceeding 1.5m [0.2]; Depth: 1.5 - 2.5m [0.3]; Depth: 3.5 - 4.5m [0.05]; Depth: 4.5 - 5.5m [0.05]; Depth: 5.5 - 6.5m [0.1]; Depth:6.5 - 7.5m [0.05] |
| 11 | **Storm Drainage Network** | 2026-08-10 → 2026-04-08 (-124d) | 2026-10-21 → 2026-04-18 (-186d) |  |  |  |  |
| TF | **Testing and Finishes** | 2026-08-10 → 2026-04-08 (-124d) | 2026-10-21 → 2026-04-18 (-186d) |  |  |  |  |
| CO-R14-SD-TF-100 | Testing Work for Pipes of Storm Drainage Network-[Road 14] | 2026-08-10 → 2026-04-08 A (-124d) | 2026-08-20 → 2026-04-18 A (-124d) | 0% → 100% | 17d → none | CO-R14.S07-SD-120 SS+2d, CO-R14.S08-SD-120 SS+2d, CO-R14.S07-SD-130, CO-R14.S07-RD-P-100 SS, CO-R14.S07-RD-P-100 FF → CO-R14.S07-SD-120 SS+2d, CO-R14.S08-SD-120 SS+2d, CO-R14.S07-SD-130, CO-R14.S07-RD-P-100 SS, CO-R14.S07-RD-P-100 FF, CO-R14.S07-SD-210 | resources Pipe with diameter 400mm ; depth: 0.0m - 1.5m [37.12]; Pipe with diameter 400mm ; depth: 1.51m - 2.5m [37.12]; Pipe with diameter 400mm ; depth: 2.51m - 3.5m [7.02]; Pipe with diameter 500mm ; depth: 1.51m - 2.5m [92.29]; Pipe with diameter 600mm ; depth: 1.51m - 2.5m [34.11]; Pipe with diameter 700mm ; depth: 1.51m - 2.5m [44.14]; Pipe with diameter 1200mm ; depth: 2.51 - 3.5m [68.21] → Pipe with diameter 400mm ; depth: 0.0m - 1.5m [25.56]; Pipe with diameter 400mm ; depth: 1.51m - 2.5m [25.97]; Pipe with diameter 400mm ; depth: 2.51m - 3.5m [5]; Pipe with diameter 500mm ; depth: 1.51m - 2.5m [65.4]; Pipe with diameter 600mm ; depth: 1.51m - 2.5m [24.12]; Pipe with diameter 700mm ; depth: 1.51m - 2.5m [31.06]; Pipe with diameter 1200mm ; depth: 2.51 - 3.5m [48.3] |
| CO-R14-SD-TF-110 | Install Catch Basin Cover Works for External Finishes of Storm Drainage Network-[Road 14] | 2026-09-06 → 2026-04-08 A (-151d) | 2026-09-19 → 2026-04-18 A (-154d) | 0% → 100% | 4d → none |  | resources Labor/Helper [476.37 h]; Foreman [476.37 h]; Pipe with diameter 300mm ; depth: 0 - 1.5m [69.22]; Pipe with diameter 400mm ; depth: 0 - 1.5m [4.01] → Labor/Helper [384 h]; Foreman [384 h]; Pipe with diameter 300mm ; depth: 0 - 1.5m [48.54]; Pipe with diameter 400mm ; depth: 0 - 1.5m [2.96] |
| CO-R14-SD-TF-120 | Main Manhole Internal Finishes (Benching + Insulation ) for Storm Drainage Network-[Road 14] | 2026-09-24 → 2026-04-08 A (-169d) | 2026-10-07 → 2026-04-18 A (-172d) | 0% → 100% | 1d → none | PRO-R14-SD-DL-160 FF+3d, CO-R14-SD-TF-110 SS, CO-R14-SD-TF-110, CO-R14-SD-TF-110 FF, CO-R14-SW-TF-110 SS, CO-R14-SW-TF-110, CO-R14-SW-TF-110 FF, ENG-SH-RD-A-100, ENG-SH-RD-A-100 FF, CO-R11-SD-TF-120, ENG-MS-RD-A-10, ENG-MS-RD-A-10 FF, CO-R14.S07-SD-220, PRO-R14-SD-DL-100 FF+3d → PRO-R14-SD-DL-160 FF+3d, CO-R14-SD-TF-110 SS, CO-R14-SD-TF-110, CO-R14-SD-TF-110 FF, CO-R14-SW-TF-110 SS, CO-R14-SW-TF-110, CO-R14-SW-TF-110 FF, ENG-SH-RD-A-100, ENG-SH-RD-A-100 FF, CO-R11-SD-TF-120, ENG-MS-RD-A-10, ENG-MS-RD-A-10 FF, CO-R14.S07-SD-220 | resources Labor/Helper [108.89 h]; MH ; depth: 0.0m - 1.5m [0.2]; MH ; depth: 1.51m - 2.5m [0.4]; MH ; depth: 2.51 - 3.5m [0.05]; MH ; depth: 2.51 - 3.5m [0.1]; MH ; depth: 2.51 - 3.5m with back drop less than 1.0 m [0.05]; MH ; depth: 1.51m - 2.5m [0.1]; Single Catch basin [42.13]; Double Catch basin [34.11]; Pipe encasement dia 300 mm [27.08]; Pipe encasement dia 400 mm [14.04]; Pipe encasement dia 500 mm [10.03]; Pipe encasement dia 600 mm [6.02]; Pipe encasement dia 700 mm [8.03]; Pipe encasement dia 800 mm [4.01]; Pipe encasement dia 900 mm [3.01]; Pipe encasement dia 1000 mm [3.01]; Pipe encasement dia 1100 mm [3.01]; Pipe encasement dia 1200 mm [1] → MH ; depth: 0.0m - 1.5m [0.2]; MH ; depth: 1.51m - 2.5m [0.4]; MH ; depth: 2.51 - 3.5m [0.05]; MH ; depth: 2.51 - 3.5m [0.1]; MH ; depth: 2.51 - 3.5m with back drop less than 1.0 m [0.05]; MH ; depth: 1.51m - 2.5m [0.1]; Single Catch basin [30]; Double Catch basin [24]; Pipe encasement dia 300 mm [19.4]; Pipe encasement dia 400 mm [9.92]; Pipe encasement dia 500 mm [7.22]; Pipe encasement dia 600 mm [3.56]; Pipe encasement dia 700 mm [6.28]; Pipe encasement dia 800 mm [3.2]; Pipe encasement dia 900 mm [2.14]; Pipe encasement dia 1000 mm [2.24]; Pipe encasement dia 1100 mm [2.02]; Pipe encasement dia 1200 mm [1.18] |
| CO-R14-SD-TF-130 | Catch Basin Internal Finishes (Benching + Insulation ) for Storm Drainage Network-[Road 14] | 2026-10-04 → 2026-04-08 A (-179d) | 2026-10-21 → 2026-04-18 A (-186d) | 0% → 100% | 0d → none |  | resources Labor/Helper [476.37 h]; Foreman [476.37 h]; Pipe with diameter 300mm ; depth: 0 - 1.5m [69.22]; Pipe with diameter 400mm ; depth: 0 - 1.5m [4.01] → Labor/Helper [384 h]; Foreman [384 h]; Pipe with diameter 300mm ; depth: 0 - 1.5m [48.54]; Pipe with diameter 400mm ; depth: 0 - 1.5m [2.96] |
| 9 | **Potable Water Network** | 2026-09-09 → 2027-05-30 (+263d) | 2026-10-07 → 2027-07-05 (+271d) |  |  |  |  |
| TF | **Testing and Finishes** | 2026-09-09 → 2027-05-30 (+263d) | 2026-10-07 → 2027-07-05 (+271d) |  |  |  |  |
| CO-R14-PW-TF-100 | Final Finishes works and Covers for Valves and Valve Chambers of Potable Water Network-[Road 14] | 2026-09-09 → 2027-05-30 (+263d) | 2026-09-22 → 2027-06-12 (+263d) |  | 0d → -215d | CO-R14.S07-RD-P-100 FS+3d, CO-R11-PW-TF-100, PRO-R14-PW-DL-130 FF+3d → CO-R14.S07-RD-P-100 FS+3d, CO-R11-PW-TF-100, PRO-R14-PW-DL-130 FF+3d, CO-R14.S08-PW-220 | resources Labor/Helper [26.78 h]; Plumber [26.78 h] → Labor/Helper [96 h]; Plumber [96 h] |
| CO-R14-PW-TF-120 | Fire Hydrant Finishies (S.Box + Safety + Marker Post ) of Potable Water Network-[Road 14] | 2026-09-24 → 2027-06-13 (+262d) | 2026-10-07 → 2027-06-26 (+262d) |  | 0d → -215d |  |  |
| CO-R14-PW-TF-110 | Testing Work for Main Line of Potable Water Network-[Road 14] | 2026-09-09 → 2027-06-22 (+286d) | 2026-09-22 → 2027-07-05 (+286d) |  | 0d → -235d |  | resources Labor/Helper [26.78 h]; Plumber [26.78 h]; Pipe with diameter 355mm; in depth 0.0m - 1.5m [198.62]; Pipe with diameter 355mm; in depth 1.5m - 3.0m [14.04] → Labor/Helper [96 h]; Plumber [96 h]; Pipe with diameter 355mm; in depth 0.0m - 1.5m [140]; Pipe with diameter 355mm; in depth 1.5m - 3.0m [10] |
| 13 | **Irrigation Network** | 2026-09-03 → 2027-05-29 (+268d) | 2026-09-14 → 2027-06-08 (+267d) |  |  |  |  |
| TF | **Testing and Finishes** | 2026-09-03 → 2027-05-29 (+268d) | 2026-09-14 → 2027-06-08 (+267d) |  |  |  |  |
| CO-R11-IR-TF-140 | Final Testing (pressure tests) of Irrigation Network-[Road 14] | 2026-09-03 → 2027-05-29 (+268d) | 2026-09-14 → 2027-06-08 (+267d) |  | 7d → -212d |  | resources Labor/Helper [17.86 h]; Plumber [17.86 h]; Pipe Fitter [17.86 h]; 125 mm pipe; depth 0.0m - 1.5m [175.55]; 280 mm pipe; depth 0.0m - 1.5m [68.21]; 280 mm pipe; depth 1.5m - 3.0m [7.02] → Labor/Helper [256 h]; Plumber [256 h]; Pipe Fitter [256 h]; 125 mm pipe; depth 0.0m - 1.5m [123.72]; 280 mm pipe; depth 0.0m - 1.5m [47.5]; 280 mm pipe; depth 1.5m - 3.0m [5] |
| 12 | **Street Lighting Network** | 2026-06-13 → 2027-04-21 (+312d) | 2026-08-31 → 2027-07-28 (+331d) |  |  |  |  |
| TR | **Termination and Testing Works** | 2026-06-13 → 2027-04-21 (+312d) | 2026-08-31 → 2027-07-28 (+331d) |  |  |  |  |
| CO-R11-SL-TF-180 | Termination Works For Lighting Poles Cables of Street Lighting Network-[Road 14] | 2026-06-13 → 2027-04-21 (+312d) | 2026-06-25 → 2027-05-04 (+313d) |  | 59d → -204d |  | resources Labor/Helper [17.86 h]; Electrician [17.86 h]; Low Current Technician [17.86 h]; Supply, installation , test and operation of cables, Copper, (4Cx25mmï¿½,Cu/XLPE/SWA/PVC +1x16mmï¿½ PVC/PVC) [1054.29] → Labor/Helper [96 h]; Electrician [96 h]; Low Current Technician [96 h]; Supply, installation , test and operation of cables, Copper, (4Cx25mm²,Cu/XLPE/SWA/PVC +1x16mm² PVC/PVC) [743.4] |
| CO-R11-SL-TF-190 | Termination Works For Panel Board Cables of Street Lighting Network-[Road 14] | 2026-08-16 → 2027-07-13 (+331d) | 2026-08-29 → 2027-07-26 (+331d) |  | 0d → -274d |  | resources Labor/Helper [17.86 h]; Electrician [17.86 h]; Low Current Technician [17.86 h] → Labor/Helper [96 h]; Electrician [96 h]; Low Current Technician [96 h] |
| CO-R14-SL-TF-380 | Testing Works For Panel Board Cables of Street Lighting Network-[Road 14] | 2026-08-30 → 2027-07-27 (+331d) | 2026-08-31 → 2027-07-28 (+331d) |  | 0d → -274d |  | resources Labor/Helper [26.78 h]; Electrician [26.78 h] → Labor/Helper [16 h]; Electrician [16 h] |
| 14 | **Medium Voltage Network** | 2026-09-27 → 2027-07-20 (+296d) | 2026-10-04 → 2027-07-27 (+296d) |  |  |  |  |
| TT | **Termination and Testing Works** | 2026-09-27 → 2027-07-20 (+296d) | 2026-10-04 → 2027-07-27 (+296d) |  |  |  |  |
| CO-R11-MV-TF-180 | Termination Works of Medium Voltage Network-[Road 14] | 2026-09-27 → 2027-07-20 (+296d) | 2026-10-04 → 2027-07-27 (+296d) |  | 0d → -245d |  | resources Labor/Helper [17.86 h]; Electrician [17.86 h]; Low Current Technician [17.86 h] → Labor/Helper [96 h]; Electrician [96 h]; Low Current Technician [96 h] |
| 1 | **Road Works** | 2026-10-26 → 2027-08-15 (+293d) | 2026-11-23 → 2027-09-13 (+294d) |  |  |  |  |
| 1 | **Bituminous Construction** | 2026-10-26 → 2027-08-15 (+293d) | 2026-11-11 → 2027-08-31 (+293d) |  |  |  |  |
| CO-R11-S07-RD-F-110 | Application of Prime Coat Layer for Road Works- S.W 09-[Road 14] | 2026-10-26 → 2027-08-15 (+293d) | 2026-11-08 → 2027-08-28 (+293d) |  | 0d → -242d |  | resources Labor/Helper [26 h]; Insulation Worker [26 h]; Bituminous base course(Grading I - Class A), 70mm thick after compaction including Prime Coat (MC1) [966.02] → Labor/Helper [96 h]; Insulation Worker [96 h]; Bituminous base course(Grading I - Class A), 70mm thick after compaction including Prime Coat (MC1) [681.37] |
| CO-R11-S08-RD-F-140 | Application of Prime Coat Layer for Road Works- S.W 10-[Road 14] | 2026-10-28 → 2027-08-15 (+291d) | 2026-11-08 → 2027-08-25 (+290d) |  | 0d → -240d |  | resources Labor/Helper [16 h]; Insulation Worker [16 h]; Bituminous base course(Grading I - Class A), 70mm thick after compaction including Prime Coat (MC1) [966.02] → Labor/Helper [144 h]; Insulation Worker [144 h]; Bituminous base course(Grading I - Class A), 70mm thick after compaction including Prime Coat (MC1) [681.37] |
| CO-R11-S07-RD-F-120 | Bituminous Base & Wearing Courses Layers for Road Works- S.W 09-[Road 14] | 2026-11-01 → 2027-08-21 (+293d) | 2026-11-11 → 2027-08-31 (+293d) |  | 0d → -242d |  | resources Labor/Helper [16 h]; Eq. Operator [16 h]; Asphalt Cutter [96 h]; Asphalt Paver [96 h]; Bituminous concrete wearing course, 50 mm thick, after compaction(Grading I - Class A), including tack coat (RC) [691.16] → Labor/Helper [96 h]; Eq. Operator [96 h]; Asphalt Cutter [96 h]; Asphalt Paver [96 h]; Bituminous concrete wearing course, 50 mm thick, after compaction(Grading I - Class A), including tack coat (RC) [486.73] |
| CO-R11-S08-RD-F-150 | Bituminous Base & Wearing Courses Layers for Road Works- S.W 10-[Road 14] | 2026-11-01 → 2027-08-21 (+293d) | 2026-11-11 → 2027-08-31 (+293d) |  | 0d → -242d |  | resources Labor/Helper [16.04 h]; Eq. Operator [15.96 h]; Asphalt Cutter [144 h]; Asphalt Paver [144 h]; Bituminous concrete wearing course, 50 mm thick, after compaction(Grading I - Class A), including tack coat (RC) [691.16] → Labor/Helper [144 h]; Eq. Operator [144 h]; Asphalt Cutter [144 h]; Asphalt Paver [144 h]; Bituminous concrete wearing course, 50 mm thick, after compaction(Grading I - Class A), including tack coat (RC) [486.73] |
| TS | **Traffic Signs Boards and Roads Marking** | 2026-11-10 → 2027-08-31 (+294d) | 2026-11-23 → 2027-09-13 (+294d) |  |  |  |  |
| CO-R11-S07-RD-F-100 | Installation Works of Traffic Signs Boards For Road Works- S.W 09-[Road 14] | 2026-11-10 → 2027-08-31 (+294d) | 2026-11-23 → 2027-09-13 (+294d) |  | 0d → -243d |  | resources Labor/Helper [16 h]; Painter [16 h]; Traffic signs, ground mounted, Sheet Alumenium, (breakaway) Single post, with all accessories [7.02]; Straight Arrow [16.05]; Straight-Right Arrow [1]; Straight-Left Arrow [1] → Labor/Helper [96 h]; Painter [96 h]; Traffic signs, ground mounted, Sheet Alumenium, (breakaway) Single post, with all accessories [5]; Straight Arrow [11]; Straight-Right Arrow [1]; Straight-Left Arrow [1] |
| CO-R11-S07-RD-F-160 | Application of Road Marking Works For Road Works- S.W 09-[Road 14] | 2026-11-12 → 2027-09-01 (+293d) | 2026-11-23 → 2027-09-12 (+293d) |  | 0d → -242d |  | resources Labor/Helper [16 h]; Painter [16 h]; Retroreflective Thermoplastic White, Traffic lines [520.63]; Retroreflective Thermoplastic Yellow, Traffic lines [79.25]; Retroreflective raised pavement markers(Type A) [102.32] → Labor/Helper [96 h]; Painter [96 h]; Retroreflective Thermoplastic White, Traffic lines [367.03]; Retroreflective Thermoplastic Yellow, Traffic lines [56.24]; Retroreflective raised pavement markers(Type A) [71.75] |
| CO-R11-S08-RD-F-130 | Installation Works of Traffic Signs Boards For Road Works- S.W 10-[Road 14] | 2026-11-12 → 2027-09-01 (+293d) | 2026-11-23 → 2027-09-12 (+293d) |  | 1d → -241d |  | resources Labor/Helper [16 h]; Painter [16 h]; Traffic signs, ground mounted, Sheet Alumenium, (breakaway) Single post, with all accessories [7.02]; Straight Arrow [16.05]; Straight-Right Arrow [1]; Straight-Left Arrow [1] → Labor/Helper [96 h]; Painter [96 h]; Traffic signs, ground mounted, Sheet Alumenium, (breakaway) Single post, with all accessories [5]; Straight Arrow [11]; Straight-Right Arrow [1]; Straight-Left Arrow [1] |
| CO-R11-S08-RD-F-170 | Application of Road Marking Works For Road Works- S.W 10-[Road 14] | 2026-11-12 → 2027-09-01 (+293d) | 2026-11-23 → 2027-09-12 (+293d) |  | 0d → -242d |  | resources Labor/Helper [16 h]; Painter [16 h]; Retroreflective Thermoplastic White, Traffic lines [520.63]; Retroreflective Thermoplastic Yellow, Traffic lines [79.25]; Retroreflective raised pavement markers(Type A) [102.32] → Labor/Helper [96 h]; Painter [96 h]; Retroreflective Thermoplastic White, Traffic lines [367.03]; Retroreflective Thermoplastic Yellow, Traffic lines [56.24]; Retroreflective raised pavement markers(Type A) [71.75] |
| 7 | **Road 15 Local 1 ( 556 LM )** | 2026-06-27 → 2026-04-01 (-87d) | 2026-12-07 → 2027-09-27 (+294d) |  |  |  |  |
| 10 | **Sewage Network** | 2026-09-09 → 2027-06-06 (+270d) | 2026-10-11 → 2027-07-06 (+268d) |  |  |  |  |
| TF | **Testing and Finishes** | 2026-09-09 → 2027-06-06 (+270d) | 2026-10-11 → 2027-07-06 (+268d) |  |  |  |  |
| CO-R15-SW-TF-100 | Final Testing For Main Line of Sewage Network-[Road 15] | 2026-09-09 → 2027-06-06 (+270d) | 2026-09-22 → 2027-06-19 (+270d) |  | 0d → -221d | CO-R15.S09-SW-130, CO-R15.S09-RD-P-100 SS+3d, CO-R15.S09-RD-P-100 FF+3d, CO-R14-SW-TF-100, CO-R15.S10-RD-P-100 SS+3d, CO-R15.S10-RD-P-100 FF+3d → CO-R15.S09-SW-130, CO-R15.S09-RD-P-100 SS+3d, CO-R15.S09-RD-P-100 FF+3d, CO-R14-SW-TF-100, CO-R15.S10-RD-P-100 SS+3d, CO-R15.S10-RD-P-100 FF+3d, CO-R15.S09-SW-210, CO-R15.S10-SW-210 | resources Labor/Helper [12.71 h]; Plumber [17.22 h]; Pipe Fitter [24.52 h]; Nominal bore : 160mm; Depth : 0.0m - 1.5m [13.04]; Nominal bore : 200mm; Depth : 0.0m - 1.5m [4.01]; Nominal bore : 200mm; Depth : 1.5m - 2.5m [10.03]; Nominal bore : 200mm; Depth : 2.5m - 3.5m [23.07]; Nominal bore : 200mm; Depth : 3.5m - 4.5m [21.07]; Nominal bore : 200mm; Depth : 4.5m -5.5m [16.05]; Nominal bore : 200mm; Depth : 5.5m - 6.5m [11.03] → Labor/Helper [384 h]; Plumber [384 h]; Pipe Fitter [384 h]; Nominal bore : 160mm; Depth : 0.0m - 1.5m [9.4]; Nominal bore : 200mm; Depth : 0.0m - 1.5m [2.74]; Nominal bore : 200mm; Depth : 1.5m - 2.5m [7.06]; Nominal bore : 200mm; Depth : 2.5m - 3.5m [16.1]; Nominal bore : 200mm; Depth : 3.5m - 4.5m [15.12]; Nominal bore : 200mm; Depth : 4.5m -5.5m [11.13]; Nominal bore : 200mm; Depth : 5.5m - 6.5m [8.08] |
| CO-R15-SW-TF-110 | Install Manhole Cover Works for External Finishes of Sewage Network-[Road 15] | 2026-09-24 → 2027-06-20 (+269d) | 2026-10-07 → 2027-07-03 (+269d) |  | 0d → -221d |  | resources Labor/Helper [12.5 h]; Plumber [16.94 h]; Pipe Fitter [24.13 h]; Depth: not exceeding 1.5m [0.2]; Depth: 1.5 - 2.5m [0.35]; Depth: 2.5 - 3.5m [0.1]; Depth: 3.5 - 4.5m [0.05]; Depth: 5.5 - 6.5m [0.15]; Depth:6.5 - 7.5m [0.1] → Labor/Helper [192 h]; Plumber [192 h]; Pipe Fitter [192 h]; Depth: not exceeding 1.5m [0.2]; Depth: 1.5 - 2.5m [0.35]; Depth: 2.5 - 3.5m [0.1]; Depth: 3.5 - 4.5m [0.05]; Depth: 5.5 - 6.5m [0.15]; Depth:6.5 - 7.5m [0.1] |
| CO-R15-SW-TF-130 | Main Manhole Internal Finishes (Benching + Insulation) of Sewage Network-[Road 15] | 2026-09-28 → 2027-06-23 (+268d) | 2026-10-11 → 2027-07-06 (+268d) |  | 0d → -221d |  | resources Labor/Helper [14.09 h]; Plumber [19.09 h]; Pipe Fitter [20.39 h]; Depth: not exceeding 1.5m [0.2]; Depth: 1.5 - 2.5m [0.35]; Depth: 2.5 - 3.5m [0.1]; Depth: 3.5 - 4.5m [0.05]; Depth: 5.5 - 6.5m [0.15]; Depth:6.5 - 7.5m [0.1] → Labor/Helper [192 h]; Plumber [192 h]; Pipe Fitter [192 h]; Depth: not exceeding 1.5m [0.2]; Depth: 1.5 - 2.5m [0.35]; Depth: 2.5 - 3.5m [0.1]; Depth: 3.5 - 4.5m [0.05]; Depth: 5.5 - 6.5m [0.15]; Depth:6.5 - 7.5m [0.1] |
| 11 | **Storm Drainage Network** | 2026-08-23 → 2026-04-15 (-130d) | 2026-11-09 → 2027-07-21 (+254d) |  |  |  |  |
| TF | **Testing and Finishes** | 2026-08-23 → 2026-04-15 (-130d) | 2026-11-09 → 2027-07-21 (+254d) |  |  |  |  |
| CO-R15-SD-TF-100 | Testing Work for Pipes of Storm Drainage Network-[Road 15] | 2026-08-23 → 2026-04-15 A (-130d) | 2026-09-09 → 2026-04-18 A (-144d) | 0% → 100% | 16d → none | CO-R15.S09-SD-130 SS+3d, PRO-R15-SD-DL-140 FF+3d, CO-R15.S09-RD-P-100 SS+3d, CO-R15.S09-RD-P-100 FF+3d, CO-R15.S09-SD-130 FF+3d, CO-R15.S09-SD-120 SS, CO-R15.S09-SD-120, ENG-SH-SD-ML-A-110, ENG-MS-SD-ML-A-110, CO-R15.S10-RD-P-100 SS+3d, CO-R15.S10-RD-P-100 FF+3d → CO-R15.S09-SD-130 SS+3d, PRO-R15-SD-DL-140 FF+3d, CO-R15.S09-RD-P-100 SS+3d, CO-R15.S09-RD-P-100 FF+3d, CO-R15.S09-SD-130 FF+3d, CO-R15.S09-SD-120 SS, CO-R15.S09-SD-120, ENG-SH-SD-ML-A-110, ENG-MS-SD-ML-A-110, CO-R15.S10-RD-P-100 SS+3d, CO-R15.S10-RD-P-100 FF+3d, CO-R15.S09-SD-210, CO-R15.S10-SD-210, CO-R15.S09-SD-160, CO-R15.S10-SD-160 | resources Labor/Helper [145.91 h]; Plumber [145.91 h]; Pipe with diameter 400mm ; depth: 0.0m - 1.5m [28.09]; Pipe with diameter 400mm ; depth: 1.51m - 2.5m [62.19]; Pipe with diameter 500mm ; depth: 1.51m - 2.5m [57.18]; Pipe with diameter 600mm ; depth: 1.51m - 2.5m [14.04]; Pipe with diameter 700mm ; depth: 1.51m - 2.5m [54.17]; Pipe with diameter 800mm ; depth: 1.51m - 2.5m [21.07]; Pipe with diameter 900mm ; depth: 1.51m - 2.5m [23.07]; Pipe with diameter 1000mm ; depth: 1.51m - 2.5m [10.03]; Pipe with diameter 1000mm ; depth: 2.51 - 3.5m [21.07] → Labor/Helper [128 h]; Plumber [128 h]; Pipe with diameter 400mm ; depth: 0.0m - 1.5m [19.76]; Pipe with diameter 400mm ; depth: 1.51m - 2.5m [43.73]; Pipe with diameter 500mm ; depth: 1.51m - 2.5m [40.19]; Pipe with diameter 600mm ; depth: 1.51m - 2.5m [9.65]; Pipe with diameter 700mm ; depth: 1.51m - 2.5m [37.71]; Pipe with diameter 800mm ; depth: 1.51m - 2.5m [15.05]; Pipe with diameter 900mm ; depth: 1.51m - 2.5m [15.77]; Pipe with diameter 1000mm ; depth: 1.51m - 2.5m [7]; Pipe with diameter 1000mm ; depth: 2.51 - 3.5m [15] |
| CO-R15-SD-TF-120 | Main Manhole Internal Finishes (Benching + Insulation ) for Storm Drainage Network-[Road 15] | 2026-10-08 → 2026-04-19 A (-172d) | 2026-10-21 → 2026-06-17 A (-126d) | 0% → 100% | 1d → none |  | resources Labor/Helper [646.51 h]; MH ; depth: 0.0m - 1.5m [0.1]; MH ; depth: 1.51m - 2.5m [0.2]; MH ; depth: 1.51m - 2.5m [0.3]; MH ; depth: 2.51 - 3.5m [0.05]; MH ; depth: 1.51m - 2.5m [0.1]; MH ; depth: 2.51 - 3.5m [0.1]; Single Catch basin [31.1]; Double Catch basin [14.04]; Pipe encasement dia 300 mm [16.05]; Pipe encasement dia 400 mm [8.03]; Pipe encasement dia 500 mm [6.02]; Pipe encasement dia 600 mm [3.01]; Pipe encasement dia 700 mm [6.02]; Pipe encasement dia 800 mm [3.01]; Pipe encasement dia 900 mm [1]; Pipe encasement dia 1000 mm [1]; Pipe encasement dia 1100 mm [1]; Pipe encasement dia 1200 mm [1] → MH ; depth: 0.0m - 1.5m [0.1]; MH ; depth: 1.51m - 2.5m [0.2]; MH ; depth: 1.51m - 2.5m [0.3]; MH ; depth: 2.51 - 3.5m [0.05]; MH ; depth: 1.51m - 2.5m [0.1]; MH ; depth: 2.51 - 3.5m [0.1]; Single Catch basin [22]; Double Catch basin [10]; Pipe encasement dia 300 mm [11.08]; Pipe encasement dia 400 mm [5.68]; Pipe encasement dia 500 mm [4.12]; Pipe encasement dia 600 mm [2.02]; Pipe encasement dia 700 mm [3.54]; Pipe encasement dia 800 mm [1.82]; Pipe encasement dia 900 mm [1.22]; Pipe encasement dia 1000 mm [1.32]; Pipe encasement dia 1100 mm [1.14]; Pipe encasement dia 1200 mm [0.68] |
| CO-R15-SD-TF-110 | Install Catch Basin Cover Works for External Finishes of Storm Drainage Network-[Road 15] | 2026-09-20 → 2027-05-31 (+253d) | 2026-10-04 → 2027-06-13 (+252d) |  | 4d → -188d |  | resources Labor/Helper [26.78 h]; Foreman [26.78 h]; Pipe with diameter 300mm ; depth: 0 - 1.5m [40.13]; Pipe with diameter 400mm ; depth: 0 - 1.5m [3.01] → Labor/Helper [384 h]; Foreman [384 h]; Pipe with diameter 300mm ; depth: 0 - 1.5m [27.69]; Pipe with diameter 400mm ; depth: 0 - 1.5m [1.69] |
| CO-R15-SD-TF-130 | Catch Basin Internal Finishes (Benching + Insulation ) for Storm Drainage Network-[Road 15] | 2026-10-22 → 2027-07-04 (+255d) | 2026-11-09 → 2027-07-21 (+254d) |  | 0d → -205d |  | resources Labor/Helper [26 h]; Foreman [26 h]; Pipe with diameter 300mm ; depth: 0 - 1.5m [40.13]; Pipe with diameter 400mm ; depth: 0 - 1.5m [3.01] → Labor/Helper [384 h]; Foreman [384 h]; Pipe with diameter 300mm ; depth: 0 - 1.5m [27.69]; Pipe with diameter 400mm ; depth: 0 - 1.5m [1.69] |
| 9 | **Potable Water Network** | 2026-09-24 → 2027-06-13 (+262d) | 2026-10-21 → 2027-07-19 (+271d) |  |  |  |  |
| TF | **Testing and Finishes** | 2026-09-24 → 2027-06-13 (+262d) | 2026-10-21 → 2027-07-19 (+271d) |  |  |  |  |
| CO-R15-PW-TF-100 | Final Finishes works and Covers for Valves and Valve Chambers of Potable Water Network-[Road 15] | 2026-09-24 → 2027-06-13 (+262d) | 2026-10-07 → 2027-06-26 (+262d) |  | 0d → -215d |  | resources Labor/Helper [26.78 h]; Plumber [26.78 h] → Labor/Helper [96 h]; Plumber [96 h] |
| CO-R15-PW-TF-120 | Fire Hydrant Finishies (S.Box + Safety + Marker Post ) of Potable Water Network-[Road 15] | 2026-10-08 → 2027-06-27 (+262d) | 2026-10-21 → 2027-07-10 (+262d) |  | 0d → -215d |  |  |
| CO-R15-PW-TF-110 | Testing Work for Main Line of Potable Water Network-[Road 15] | 2026-09-24 → 2027-07-06 (+285d) | 2026-10-07 → 2027-07-19 (+285d) |  | 0d → -235d | CO-R14-PW-TF-110 → CO-R14-PW-TF-110, CO-R15.S10-PW-210 | resources Labor/Helper [26.78 h]; Plumber [26.78 h]; Pipe with diameter 200mm; in depth 0.0m - 1.5m [96.3] → Labor/Helper [96 h]; Plumber [96 h]; Pipe with diameter 200mm; in depth 0.0m - 1.5m [67.7] |
| 13 | **Irrigation Network** | 2026-09-15 → 2027-06-09 (+267d) | 2026-09-27 → 2027-06-20 (+266d) |  |  |  |  |
| TF | **Testing and Finishes** | 2026-09-15 → 2027-06-09 (+267d) | 2026-09-27 → 2027-06-20 (+266d) |  |  |  |  |
| CO-R15-IR-TF-150 | Final Testing (pressure tests) of Irrigation Network-[Road 15] | 2026-09-15 → 2027-06-09 (+267d) | 2026-09-27 → 2027-06-20 (+266d) |  | 7d → -212d | CO-R15.S09-IR-130, CO-R15.S09-RD-P-100, CO-R11-IR-TF-140, CO-R15.S10-RD-P-100 → CO-R15.S09-IR-130, CO-R15.S09-RD-P-100, CO-R11-IR-TF-140, CO-R15.S10-RD-P-100, CO-R15.S09-IR-120 | resources Labor/Helper [17.86 h]; Plumber [17.86 h]; Pipe Fitter [17.86 h]; 125 mm pipe; depth 0.0m - 1.5m [100.31] → Labor/Helper [256 h]; Plumber [256 h]; Pipe Fitter [256 h]; 125 mm pipe; depth 0.0m - 1.5m [70.57] |
| 12 | **Street Lighting Network** | 2026-06-27 → 2027-05-05 (+312d) | 2026-10-04 → 2027-08-30 (+330d) |  |  |  |  |
| TR | **Termination and Testing Works** | 2026-06-27 → 2027-05-05 (+312d) | 2026-10-04 → 2027-08-30 (+330d) |  |  |  |  |
| CO-R15-SL-TF-200 | Termination Works For Lighting Poles Cables of Street Lighting Network-[Road 15] | 2026-06-27 → 2027-05-05 (+312d) | 2026-07-09 → 2027-05-24 (+319d) |  | 59d → -204d |  | resources Labor/Helper [17.86 h]; Electrician [17.86 h]; Low Current Technician [17.86 h]; Supply, installation , test and operation of cables, Copper, (4Cx25mmï¿½,Cu/XLPE/SWA/PVC +1x16mmï¿½ PVC/PVC) [607.9] → Labor/Helper [96 h]; Electrician [96 h]; Low Current Technician [96 h]; Supply, installation , test and operation of cables, Copper, (4Cx25mm²,Cu/XLPE/SWA/PVC +1x16mm² PVC/PVC) [428.4] |
| CO-R15-SL-TF-210 | Termination Works For Panel Board Cables of Street Lighting Network-[Road 15] | 2026-09-01 → 2027-07-29 (+331d) | 2026-09-14 → 2027-08-11 (+331d) |  | 0d → -274d |  | resources Labor/Helper [17.86 h]; Electrician [17.86 h]; Low Current Technician [17.86 h] → Labor/Helper [96 h]; Electrician [96 h]; Low Current Technician [96 h] |
| CO-R15-SL-TF-380 | Testing Works For Panel Board Cables of Street Lighting Network-[Road 15] | 2026-09-15 → 2027-08-12 (+331d) | 2026-10-04 → 2027-08-30 (+330d) |  | 6d → -268d |  | resources Labor/Helper [26.78 h]; Electrician [26.78 h] → Labor/Helper [128 h]; Electrician [128 h] |

| ID | Task | Start | Finish | Complete | Total float | Predecessors | Other |
| --- | --- | --- | --- | --- | --- | --- | --- |
| 14 | **Medium Voltage Network** | 2026-10-05 → 2027-07-28 (+296d) | 2026-10-12 → 2027-08-04 (+296d) |  |  |  |  |
| TT | **Termination and Testing Works** | 2026-10-05 → 2027-07-28 (+296d) | 2026-10-12 → 2027-08-04 (+296d) |  |  |  |  |
| CO-R15-MV-TF-200 | Termination Works of Medium Voltage Network-[Road 15] | 2026-10-05 → 2027-07-28 (+296d) | 2026-10-12 → 2027-08-04 (+296d) |  | 0d → -245d |  | resources Labor/Helper [17.86 h]; Electrician [17.86 h]; Low Current Technician [17.86 h] → Labor/Helper [96 h]; Electrician [96 h]; Low Current Technician [96 h] |
| 1 | **Road Works** | 2026-11-09 → 2026-04-01 (-222d) | 2026-12-07 → 2027-09-27 (+294d) |  |  |  |  |
| 1 | **Bituminous Construction** | 2026-11-09 → 2026-04-01 (-222d) | 2026-11-23 → 2026-04-11 (-226d) |  |  |  |  |
| CO-R15-S09-RD-F-110 | Application of Prime Coat Layer for Road Works- S.W 11-[Road 15] | 2026-11-09 → 2026-04-01 A (-222d) | 2026-11-19 → 2026-04-11 A (-222d) | 0% → 100% | 0d → none |  | resources Labor/Helper [65.36 h]; Insulation Worker [65.36 h]; Bituminous base course(Grading I - Class A), 70mm thick after compaction including Prime Coat (MC1) [551.72] → Labor/Helper [96 h]; Insulation Worker [96 h]; Bituminous base course(Grading I - Class A), 70mm thick after compaction including Prime Coat (MC1) [388.62] |
| CO-R15-S09-RD-F-120 | Bituminous Base & Wearing Courses Layers for Road Works- S.W 11-[Road 15] | 2026-11-12 → 2026-04-01 A (-225d) | 2026-11-23 → 2026-04-11 A (-226d) | 0% → 100% | 0d → none |  | resources Labor/Helper [65.36 h]; Eq. Operator [65.36 h]; Asphalt Cutter [96 h]; Asphalt Paver [96 h]; Bituminous concrete wearing course, 50 mm thick, after compaction(Grading I - Class A), including tack coat (RC) [394.23] → Labor/Helper [96 h]; Eq. Operator [96 h]; Asphalt Cutter [96 h]; Asphalt Paver [96 h]; Bituminous concrete wearing course, 50 mm thick, after compaction(Grading I - Class A), including tack coat (RC) [277.61] |
| CO-R15-S10-RD-F-140 | Application of Prime Coat Layer for Road Works- S.W 12-[Road 15] | 2026-11-09 → 2026-04-01 A (-222d) | 2026-11-19 → 2026-04-11 A (-222d) | 0% → 100% | 0d → none |  | resources Labor/Helper [98.05 h]; Insulation Worker [98.05 h]; Bituminous base course(Grading I - Class A), 70mm thick after compaction including Prime Coat (MC1) [551.72] → Labor/Helper [144 h]; Insulation Worker [144 h]; Bituminous base course(Grading I - Class A), 70mm thick after compaction including Prime Coat (MC1) [388.62] |
| CO-R15-S10-RD-F-150 | Bituminous Base & Wearing Courses Layers for Road Works- S.W 12-[Road 15] | 2026-11-12 → 2026-04-01 A (-225d) | 2026-11-23 → 2026-04-11 A (-226d) | 0% → 100% | 0d → none |  | resources Labor/Helper [98.05 h]; Eq. Operator [98.05 h]; Asphalt Cutter [144 h]; Asphalt Paver [144 h]; Bituminous concrete wearing course, 50 mm thick, after compaction(Grading I - Class A), including tack coat (RC) [394.23] → Labor/Helper [144 h]; Eq. Operator [144 h]; Asphalt Cutter [144 h]; Asphalt Paver [144 h]; Bituminous concrete wearing course, 50 mm thick, after compaction(Grading I - Class A), including tack coat (RC) [277.61] |
| TS | **Traffic Signs Boards and Roads Marking** | 2026-11-24 → 2027-09-13 (+293d) | 2026-12-07 → 2027-09-27 (+294d) |  |  |  |  |
| CO-R15-S09-RD-F-160 | Application of Road Marking Works For Road Works- S.W 11-[Road 15] | 2026-11-24 → 2027-09-13 (+293d) | 2026-12-05 → 2027-09-25 (+294d) |  | 0d → -242d |  | resources Labor/Helper [16 h]; Painter [16 h]; Retroreflective Thermoplastic White, Traffic lines [296.93]; Retroreflective Thermoplastic Yellow, Traffic lines [45.14]; Retroreflective raised pavement markers(Type A) [58.18] → Labor/Helper [96 h]; Painter [96 h]; Retroreflective Thermoplastic White, Traffic lines [209.34]; Retroreflective Thermoplastic Yellow, Traffic lines [32.08]; Retroreflective raised pavement markers(Type A) [40.92] |
| CO-R15-S10-RD-F-130 | Installation Works of Traffic Signs Boards For Road Works- S.W 12-[Road 15] | 2026-11-24 → 2027-09-13 (+293d) | 2026-12-07 → 2027-09-27 (+294d) |  | 1d → -241d |  | resources Labor/Helper [16 h]; Painter [16 h]; Traffic signs, ground mounted, Sheet Alumenium, (breakaway) Single post, with all accessories [6.02]; Straight Arrow [8.03]; Straight-Right Arrow [1] → Labor/Helper [96 h]; Painter [96 h]; Traffic signs, ground mounted, Sheet Alumenium, (breakaway) Single post, with all accessories [4]; Straight Arrow [6]; Straight-Right Arrow [1] |
| CO-R15-S10-RD-F-170 | Application of Road Marking Works For Road Works- S.W 12-[Road 15] | 2026-11-24 → 2027-09-13 (+293d) | 2026-12-05 → 2027-09-25 (+294d) |  | 0d → -242d |  | resources Labor/Helper [16 h]; Painter [16 h]; Retroreflective Thermoplastic White, Traffic lines [296.93]; Retroreflective Thermoplastic Yellow, Traffic lines [45.14]; Retroreflective raised pavement markers(Type A) [58.18] → Labor/Helper [96 h]; Painter [96 h]; Retroreflective Thermoplastic White, Traffic lines [209.34]; Retroreflective Thermoplastic Yellow, Traffic lines [32.08]; Retroreflective raised pavement markers(Type A) [40.92] |
| CO-R15-S09-RD-F-100 | Installation Works of Traffic Signs Boards For Road Works- S.W 11-[Road 15] | 2026-11-24 → 2027-09-14 (+294d) | 2026-12-05 → 2027-09-26 (+295d) |  | 0d → -243d |  | resources Labor/Helper [16 h]; Painter [16 h]; Traffic signs, ground mounted, Sheet Alumenium, (breakaway) Single post, with all accessories [4.01]; Straight Arrow [8.03]; Straight-Right Arrow [1] → Labor/Helper [96 h]; Painter [96 h]; Traffic signs, ground mounted, Sheet Alumenium, (breakaway) Single post, with all accessories [3]; Straight Arrow [6]; Straight-Right Arrow [1] |
| 8 | **Road 16 Local 1 ( 527 LM )** | 2026-07-11 → 2025-10-13 (-271d) | 2026-12-19 → 2027-10-09 (+294d) |  |  |  |  |
| 10 | **Sewage Network** | 2026-09-24 → 2027-06-20 (+269d) | 2026-10-25 → 2027-07-20 (+268d) |  |  |  |  |
| TF | **Testing and Finishes** | 2026-09-24 → 2027-06-20 (+269d) | 2026-10-25 → 2027-07-20 (+268d) |  |  |  |  |
| CO-R16-SW-TF-100 | Final Testing For Main Line of Sewage Network-[Road 16] | 2026-09-24 → 2027-06-20 (+269d) | 2026-10-07 → 2027-07-03 (+269d) |  | 0d → -221d | CO-R16.S11-SW-130, CO-R16.S11-RD-P-100 SS+3d, CO-R16.S11-RD-P-100 FF+3d, CO-R15-SW-TF-100, CO-R16.S12-RD-P-100 SS+3d, CO-R16.S12-RD-P-100 FF+3d → CO-R16.S11-SW-130, CO-R16.S11-RD-P-100 SS+3d, CO-R16.S11-RD-P-100 FF+3d, CO-R15-SW-TF-100, CO-R16.S12-RD-P-100 SS+3d, CO-R16.S12-RD-P-100 FF+3d, CO-R16.S11-SW-210, CO-R16.S12-SW-210 | resources Labor/Helper [12.71 h]; Plumber [17.22 h]; Pipe Fitter [24.52 h]; Nominal bore : 160mm; Depth : 0.0m - 1.5m [10.03]; Nominal bore : 200mm; Depth : 0.0m - 1.5m [4.01]; Nominal bore : 200mm; Depth : 1.5m - 2.5m [10.03]; Nominal bore : 200mm; Depth : 2.5m - 3.5m [14.04]; Nominal bore : 200mm; Depth : 3.5m - 4.5m [18.06]; Nominal bore : 200mm; Depth : 4.5m -5.5m [8.03]; Nominal bore : 200mm; Depth : 5.5m - 6.5m [8.03] → Labor/Helper [288 h]; Plumber [288 h]; Pipe Fitter [288 h]; Nominal bore : 160mm; Depth : 0.0m - 1.5m [6.5]; Nominal bore : 200mm; Depth : 0.0m - 1.5m [2.97]; Nominal bore : 200mm; Depth : 1.5m - 2.5m [6.85]; Nominal bore : 200mm; Depth : 2.5m - 3.5m [9.72]; Nominal bore : 200mm; Depth : 3.5m - 4.5m [12.69]; Nominal bore : 200mm; Depth : 4.5m -5.5m [5.51]; Nominal bore : 200mm; Depth : 5.5m - 6.5m [6.19] |
| CO-R16-SW-TF-110 | Install Manhole Cover Works for External Finishes of Sewage Network-[Road 16] | 2026-10-08 → 2027-07-04 (+269d) | 2026-10-21 → 2027-07-17 (+269d) |  | 0d → -221d |  | resources Labor/Helper [17.86 h]; Plumber [17.86 h]; Pipe Fitter [17.86 h]; Depth: not exceeding 1.5m [0.1]; Depth: 1.5 - 2.5m [0.25]; Depth: 2.5 - 3.5m [0.05]; Depth: 5.5 - 6.5m [0.05]; Depth:6.5 - 7.5m [0.1] → Labor/Helper [192 h]; Plumber [192 h]; Pipe Fitter [192 h]; Depth: not exceeding 1.5m [0.1]; Depth: 1.5 - 2.5m [0.25]; Depth: 2.5 - 3.5m [0.05]; Depth: 5.5 - 6.5m [0.05]; Depth:6.5 - 7.5m [0.1] |
| CO-R16-SW-TF-130 | Main Manhole Internal Finishes (Benching + Insulation) of Sewage Network-[Road 16] | 2026-10-12 → 2027-07-07 (+268d) | 2026-10-25 → 2027-07-20 (+268d) |  | 0d → -221d |  | resources Labor/Helper [14.09 h]; Plumber [19.09 h]; Pipe Fitter [20.39 h]; Depth: not exceeding 1.5m [0.1]; Depth: 1.5 - 2.5m [0.25]; Depth: 2.5 - 3.5m [0.05]; Depth: 5.5 - 6.5m [0.05]; Depth:6.5 - 7.5m [0.1] → Labor/Helper [192 h]; Plumber [192 h]; Pipe Fitter [192 h]; Depth: not exceeding 1.5m [0.1]; Depth: 1.5 - 2.5m [0.25]; Depth: 2.5 - 3.5m [0.05]; Depth: 5.5 - 6.5m [0.05]; Depth:6.5 - 7.5m [0.1] |
| 11 | **Storm Drainage Network** | 2026-09-10 → 2026-05-31 (-102d) | 2026-11-28 → 2027-08-09 (+254d) |  |  |  |  |
| TF | **Testing and Finishes** | 2026-09-10 → 2026-05-31 (-102d) | 2026-11-28 → 2027-08-09 (+254d) |  |  |  |  |
| CO-R16-SD-TF-120 | Main Manhole Internal Finishes (Benching + Insulation ) for Storm Drainage Network-[Road 16] | 2026-10-22 → 2026-05-31 A (-144d) | 2026-11-04 → 2026-06-26 A (-131d) | 0% → 100% | 1d → none |  | resources Labor/Helper [528.54 h]; MH ; depth: 0.0m - 1.5m [0.1]; MH ; depth: 1.51m - 2.5m [0.2]; MH ; depth: 1.51m - 2.5m [0.1]; Single Catch basin [28.09]; Double Catch basin [8.03]; Pipe encasement dia 300 mm [16.05]; Pipe encasement dia 400 mm [7.02]; Pipe encasement dia 500 mm [6.02]; Pipe encasement dia 600 mm [3.01]; Pipe encasement dia 700 mm [4.01]; Pipe encasement dia 800 mm [3.01]; Pipe encasement dia 900 mm [1]; Pipe encasement dia 1000 mm [1]; Pipe encasement dia 1100 mm [1]; Pipe encasement dia 1200 mm [1] → MH ; depth: 0.0m - 1.5m [0.1]; MH ; depth: 1.51m - 2.5m [0.2]; MH ; depth: 1.51m - 2.5m [0.1]; Single Catch basin [20]; Double Catch basin [6]; Pipe encasement dia 300 mm [10.56]; Pipe encasement dia 400 mm [5.4]; Pipe encasement dia 500 mm [3.92]; Pipe encasement dia 600 mm [1.94]; Pipe encasement dia 700 mm [3.42]; Pipe encasement dia 800 mm [1.74]; Pipe encasement dia 900 mm [1.16]; Pipe encasement dia 1000 mm [1.22]; Pipe encasement dia 1100 mm [1.1]; Pipe encasement dia 1200 mm [0.64] |
| CO-R16-SD-TF-100 | Testing Work for Pipes of Storm Drainage Network-[Road 16] | 2026-09-10 → 2026-11-21 (+72d) | 2026-09-29 → 2026-12-08 (+70d) |  | 16d → -21d | CO-R16.S11-SD-130 SS+3d, PRO-R16-SD-DL-140 FF+3d, CO-R16.S11-RD-P-100 SS+3d, CO-R16.S11-RD-P-100 FF+3d, CO-R16.S11-SD-130 FF+3d, CO-R16.S11-SD-120 SS, CO-R16.S11-SD-120, ENG-SH-SD-ML-A-110, CO-R15-SD-TF-100, ENG-MS-SD-ML-A-110, CO-R16.S12-RD-P-100 SS+3d, CO-R16.S12-RD-P-100 FF+3d → CO-R16.S11-SD-130 SS+3d, PRO-R16-SD-DL-140 FF+3d, CO-R16.S11-RD-P-100 SS+3d, CO-R16.S11-RD-P-100 FF+3d, CO-R16.S11-SD-130 FF+3d, CO-R16.S11-SD-120 SS, CO-R16.S11-SD-120, ENG-SH-SD-ML-A-110, CO-R15-SD-TF-100, ENG-MS-SD-ML-A-110, CO-R16.S12-RD-P-100 SS+3d, CO-R16.S12-RD-P-100 FF+3d, CO-R16.S11-SD-210, CO-R16.S11-SD-160, CO-R16.S12-SD-210, CO-R16.S12-SD-160 | resources Labor/Helper [26.78 h]; Plumber [26.78 h]; Pipe with diameter 400mm ; depth: 0.0m - 1.5m [31.1]; Pipe with diameter 400mm ; depth: 1.51m - 2.5m [28.09]; Pipe with diameter 500mm ; depth: 1.51m - 2.5m [41.13]; Pipe with diameter 600mm ; depth: 1.51m - 2.5m [27.08]; Pipe with diameter 700mm ; depth: 1.51m - 2.5m [51.16]; Pipe with diameter 800mm ; depth: 1.51m - 2.5m [23.07]; Pipe with diameter 900mm ; depth: 1.51m - 2.5m [3.01]; Pipe with diameter 1000mm ; depth: 1.51m - 2.5m [8.03]; Pipe with diameter 1000mm ; depth: 2.51 - 3.5m [8.03] → Labor/Helper [256 h]; Plumber [256 h]; Pipe with diameter 400mm ; depth: 0.0m - 1.5m [21.65]; Pipe with diameter 400mm ; depth: 1.51m - 2.5m [19.79]; Pipe with diameter 500mm ; depth: 1.51m - 2.5m [29.24]; Pipe with diameter 600mm ; depth: 1.51m - 2.5m [19.2]; Pipe with diameter 700mm ; depth: 1.51m - 2.5m [35.78]; Pipe with diameter 800mm ; depth: 1.51m - 2.5m [16.03]; Pipe with diameter 900mm ; depth: 1.51m - 2.5m [2.29]; Pipe with diameter 1000mm ; depth: 1.51m - 2.5m [6.1]; Pipe with diameter 1000mm ; depth: 2.51 - 3.5m [6.1] |
| CO-R16-SD-TF-110 | Install Catch Basin Cover Works for External Finishes of Storm Drainage Network-[Road 16] | 2026-10-05 → 2027-06-14 (+252d) | 2026-10-18 → 2027-06-27 (+252d) |  | 4d → -184d |  | resources Labor/Helper [26.78 h]; Foreman [26.78 h]; Pipe with diameter 300mm ; depth: 0 - 1.5m [37.12]; Pipe with diameter 400mm ; depth: 0 - 1.5m [3.01] → Labor/Helper [384 h]; Foreman [384 h]; Pipe with diameter 300mm ; depth: 0 - 1.5m [26.39]; Pipe with diameter 400mm ; depth: 0 - 1.5m [1.61] |
| CO-R16-SD-TF-130 | Catch Basin Internal Finishes (Benching + Insulation ) for Storm Drainage Network-[Road 16] | 2026-11-10 → 2027-07-22 (+254d) | 2026-11-28 → 2027-08-09 (+254d) |  | 0d → -205d |  | resources Labor/Helper [16 h]; Foreman [16 h]; Pipe with diameter 300mm ; depth: 0 - 1.5m [37.12]; Pipe with diameter 400mm ; depth: 0 - 1.5m [3.01] → Labor/Helper [384 h]; Foreman [384 h]; Pipe with diameter 300mm ; depth: 0 - 1.5m [26.39]; Pipe with diameter 400mm ; depth: 0 - 1.5m [1.61] |
| 9 | **Potable Water Network** | 2026-10-08 → 2027-06-27 (+262d) | 2026-11-04 → 2027-08-02 (+271d) |  |  |  |  |
| TF | **Testing and Finishes** | 2026-10-08 → 2027-06-27 (+262d) | 2026-11-04 → 2027-08-02 (+271d) |  |  |  |  |
| CO-R16-PW-TF-100 | Final Finishes works and Covers for Valves and Valve Chambers of Potable Water Network-[Road 16] | 2026-10-08 → 2027-06-27 (+262d) | 2026-10-21 → 2027-07-10 (+262d) |  | 0d → -215d |  | resources Labor/Helper [26.78 h]; Plumber [26.78 h] → Labor/Helper [96 h]; Plumber [96 h] |
| CO-R16-PW-TF-120 | Fire Hydrant Finishies (S.Box + Safety + Marker Post ) of Potable Water Network-[Road 16] | 2026-10-22 → 2027-07-11 (+262d) | 2026-11-04 → 2027-07-24 (+262d) |  | 0d → -215d |  |  |
| CO-R16-PW-TF-110 | Testing Work for Main Line of Potable Water Network-[Road 16] | 2026-10-08 → 2027-07-20 (+285d) | 2026-10-21 → 2027-08-02 (+285d) |  | 0d → -235d | CO-R15-PW-TF-110 → CO-R15-PW-TF-110, CO-R16.S12-PW-210 | resources Labor/Helper [26.78 h]; Plumber [26.78 h]; Pipe with diameter 200mm; in depth 0.0m - 1.5m [92.29] → Labor/Helper [96 h]; Plumber [96 h]; Pipe with diameter 200mm; in depth 0.0m - 1.5m [65.04] |
| 13 | **Irrigation Network** | 2026-09-28 → 2027-06-21 (+266d) | 2026-10-08 → 2027-07-01 (+266d) |  |  |  |  |
| TF | **Testing and Finishes** | 2026-09-28 → 2027-06-21 (+266d) | 2026-10-08 → 2027-07-01 (+266d) |  |  |  |  |
| CO-R16-IR-TF-160 | Final Testing (pressure tests) of Irrigation Network-[Road 16] | 2026-09-28 → 2027-06-21 (+266d) | 2026-10-08 → 2027-07-01 (+266d) |  | 7d → -212d | CO-R16.S11-IR-130, CO-R16.S11-RD-P-100, CO-R15-IR-TF-150, CO-R16.S12-RD-P-100 → CO-R16.S11-IR-130, CO-R16.S11-RD-P-100, CO-R15-IR-TF-150, CO-R16.S12-RD-P-100, CO-R16.S11-IR-120 | resources Labor/Helper [15 h]; Plumber [15.91 h]; Pipe Fitter [22.66 h]; 125 mm pipe; depth 0.0m - 1.5m [95.3] → Labor/Helper [256 h]; Plumber [256 h]; Pipe Fitter [256 h]; 125 mm pipe; depth 0.0m - 1.5m [67.26] |
| 12 | **Street Lighting Network** | 2026-07-11 → 2027-05-25 (+318d) | 2026-10-06 → 2027-09-01 (+330d) |  |  |  |  |
| TR | **Termination and Testing Works** | 2026-07-11 → 2027-05-25 (+318d) | 2026-10-06 → 2027-09-01 (+330d) |  |  |  |  |
| CO-R16-SL-TF-220 | Termination Works For Lighting Poles Cables of Street Lighting Network-[Road 16] | 2026-07-11 → 2027-05-25 (+318d) | 2026-07-23 → 2027-06-07 (+319d) |  | 59d → -204d |  | resources Labor/Helper [17.86 h]; Electrician [17.86 h]; Low Current Technician [17.86 h]; Supply, installation , test and operation of cables, Copper, (4Cx25mmï¿½,Cu/XLPE/SWA/PVC +1x16mmï¿½ PVC/PVC) [571.79] → Labor/Helper [96 h]; Electrician [96 h]; Low Current Technician [96 h]; Supply, installation , test and operation of cables, Copper, (4Cx25mm²,Cu/XLPE/SWA/PVC +1x16mm² PVC/PVC) [403.2] |
| CO-R16-SL-TF-230 | Termination Works For Panel Board Cables of Street Lighting Network-[Road 16] | 2026-09-15 → 2027-08-12 (+331d) | 2026-09-29 → 2027-08-25 (+330d) |  | 0d → -274d |  |  |
| CO-R16-SL-TF-380 | Testing Works For Panel Board Cables of Street Lighting Network-[Road 16] | 2026-10-05 → 2027-08-31 (+330d) | 2026-10-06 → 2027-09-01 (+330d) |  | 6d → -268d |  |  |
| 14 | **Medium Voltage Network** | 2026-10-13 → 2027-08-05 (+296d) | 2026-10-20 → 2027-08-12 (+296d) |  |  |  |  |
| TT | **Termination and Testing Works** | 2026-10-13 → 2027-08-05 (+296d) | 2026-10-20 → 2027-08-12 (+296d) |  |  |  |  |
| CO-R16-MV-TF-220 | Termination Works of Medium Voltage Network-[Road 16] | 2026-10-13 → 2027-08-05 (+296d) | 2026-10-20 → 2027-08-12 (+296d) |  | 0d → -245d |  | resources Labor/Helper [17.86 h]; Electrician [17.86 h]; Low Current Technician [17.86 h] → Labor/Helper [96 h]; Electrician [96 h]; Low Current Technician [96 h] |
| 1 | **Road Works** | 2026-11-21 → 2025-10-13 (-404d) | 2026-12-19 → 2027-10-09 (+294d) |  |  |  |  |
| 1 | **Bituminous Construction** | 2026-11-21 → 2025-10-13 (-404d) | 2026-12-05 → 2026-08-16 (-111d) |  |  |  |  |
| CO-R16-S11-RD-F-110 | Application of Prime Coat Layer for Road Works - S.W 13-[Road 16] | 2026-11-21 → 2025-10-13 A (-404d) | 2026-12-01 → 2025-10-14 A (-413d) | 0% → 100% | 0d → none |  | resources Labor/Helper [65.36 h]; Insulation Worker [65.36 h]; Bituminous base course(Grading I - Class A), 70mm thick after compaction including Prime Coat (MC1) [524.64] → Labor/Helper [96 h]; Insulation Worker [96 h]; Bituminous base course(Grading I - Class A), 70mm thick after compaction including Prime Coat (MC1) [370.4] |
| CO-R16-S12-RD-F-140 | Application of Prime Coat Layer for Road Works- S.W 14-[Road 16] | 2026-11-21 → 2025-10-13 A (-404d) | 2026-12-01 → 2025-10-14 A (-413d) | 0% → 100% | 0d → none |  | resources Labor/Helper [98.05 h]; Insulation Worker [98.05 h]; Bituminous base course(Grading I - Class A), 70mm thick after compaction including Prime Coat (MC1) [524.64] → Labor/Helper [144 h]; Insulation Worker [144 h]; Bituminous base course(Grading I - Class A), 70mm thick after compaction including Prime Coat (MC1) [370.4] |
| CO-R16-S11-RD-F-120 | Bituminous Base & Wearing Courses Layers for Road Works- S.W 13-[Road 16] | 2026-11-24 → 2026-05-12 A (-196d) | 2026-12-05 → 2026-05-16 A (-203d) | 0% → 100% | 0d → none |  | resources Labor/Helper [65.36 h]; Eq. Operator [65.36 h]; Asphalt Cutter [96 h]; Asphalt Paver [96 h]; Bituminous concrete wearing course, 50 mm thick, after compaction(Grading I - Class A), including tack coat (RC) [376.18] → Labor/Helper [96 h]; Eq. Operator [96 h]; Asphalt Cutter [96 h]; Asphalt Paver [96 h]; Bituminous concrete wearing course, 50 mm thick, after compaction(Grading I - Class A), including tack coat (RC) [264.59] |
| CO-R16-S12-RD-F-150 | Bituminous Base & Wearing Courses Layers for Road Works- S.W 14-[Road 16] | 2026-11-24 → 2026-08-12 A (-104d) | 2026-12-05 → 2026-08-16 A (-111d) | 0% → 100% | 0d → none |  | resources Labor/Helper [98.05 h]; Eq. Operator [98.05 h]; Asphalt Cutter [144 h]; Asphalt Paver [144 h]; Bituminous concrete wearing course, 50 mm thick, after compaction(Grading I - Class A), including tack coat (RC) [376.18] → Labor/Helper [144 h]; Eq. Operator [144 h]; Asphalt Cutter [144 h]; Asphalt Paver [144 h]; Bituminous concrete wearing course, 50 mm thick, after compaction(Grading I - Class A), including tack coat (RC) [264.59] |
| TS | **Traffic Signs Boards and Roads Marking** | 2026-12-06 → 2027-09-26 (+294d) | 2026-12-19 → 2027-10-09 (+294d) |  |  |  |  |
| CO-R16-S11-RD-F-160 | Application of Road Marking Works For Road Works- S.W 13-[Road 16] | 2026-12-06 → 2027-09-26 (+294d) | 2026-12-16 → 2027-10-06 (+294d) |  | 0d → -242d |  | resources Labor/Helper [16 h]; Painter [16 h]; Retroreflective Thermoplastic White, Traffic lines [283.89]; Retroreflective Thermoplastic Yellow, Traffic lines [44.14]; Retroreflective raised pavement markers(Type A) [55.17] → Labor/Helper [96 h]; Painter [96 h]; Retroreflective Thermoplastic White, Traffic lines [199.52]; Retroreflective Thermoplastic Yellow, Traffic lines [30.57]; Retroreflective raised pavement markers(Type A) [39] |
| CO-R16-S12-RD-F-170 | Application of Road Marking Works For Road Works- S.W 14-[Road 16] | 2026-12-06 → 2027-09-26 (+294d) | 2026-12-16 → 2027-10-06 (+294d) |  | 0d → -242d |  | resources Labor/Helper [16 h]; Painter [16 h]; Retroreflective Thermoplastic White, Traffic lines [283.89]; Retroreflective Thermoplastic Yellow, Traffic lines [44.14]; Retroreflective raised pavement markers(Type A) [55.17] → Labor/Helper [96 h]; Painter [96 h]; Retroreflective Thermoplastic White, Traffic lines [199.52]; Retroreflective Thermoplastic Yellow, Traffic lines [30.57]; Retroreflective raised pavement markers(Type A) [39] |
| CO-R16-S11-RD-F-100 | Installation Works of Traffic Signs Boards For Road Works- S.W 13-[Road 16] | 2026-12-06 → 2027-09-27 (+295d) | 2026-12-16 → 2027-10-07 (+295d) |  | 0d → -243d |  | resources Labor/Helper [16 h]; Painter [16 h]; Traffic signs, ground mounted, Sheet Alumenium, (breakaway) Single post, with all accessories [4.01]; Straight Arrow [8.03]; Right or Left Arrow [1]; Straight-Right Arrow [1] → Labor/Helper [96 h]; Painter [96 h]; Traffic signs, ground mounted, Sheet Alumenium, (breakaway) Single post, with all accessories [3]; Straight Arrow [6]; Right or Left Arrow [1]; Straight-Right Arrow [1] |
| CO-R16-S12-RD-F-130 | Installation Works of Traffic Signs Boards For Road Works- S.W 14-[Road 16] | 2026-12-08 → 2027-09-28 (+294d) | 2026-12-19 → 2027-10-09 (+294d) |  | 1d → -241d |  | resources Labor/Helper [16 h]; Painter [16 h]; Traffic signs, ground mounted, Sheet Alumenium, (breakaway) Single post, with all accessories [4.01]; Straight Arrow [8.03]; Right or Left Arrow [1]; Straight-Right Arrow [1] → Labor/Helper [96 h]; Painter [96 h]; Traffic signs, ground mounted, Sheet Alumenium, (breakaway) Single post, with all accessories [3]; Straight Arrow [6]; Right or Left Arrow [1]; Straight-Right Arrow [1] |
| 9 | **Road 17 Local 1 ( 500 LM )** | 2026-07-25 → 2025-09-20 (-308d) | 2026-12-28 → 2027-10-19 (+295d) |  |  |  |  |
| 10 | **Sewage Network** | 2026-10-08 → 2027-07-04 (+269d) | 2026-11-08 → 2027-08-03 (+268d) |  |  |  |  |
| TF | **Testing and Finishes** | 2026-10-08 → 2027-07-04 (+269d) | 2026-11-08 → 2027-08-03 (+268d) |  |  |  |  |
| CO-R17-SW-TF-100 | Final Testing For Main Line of Sewage Network-[Road 17] | 2026-10-08 → 2027-07-04 (+269d) | 2026-10-21 → 2027-07-17 (+269d) |  | 0d → -221d | CO-R17.S13-SW-130, CO-R17.S13-RD-P-100 SS+3d, CO-R17.S13-RD-P-100 FF+3d, CO-R16-SW-TF-100, CO-R17.S14-RD-P-100 SS+3d, CO-R17.S14-RD-P-100 FF+3d → CO-R17.S13-SW-130, CO-R17.S13-RD-P-100 SS+3d, CO-R17.S13-RD-P-100 FF+3d, CO-R16-SW-TF-100, CO-R17.S14-RD-P-100 SS+3d, CO-R17.S14-RD-P-100 FF+3d, CO-R17.S13-SW-210, CO-R17.S14-SW-210 | resources Labor/Helper [12.71 h]; Plumber [17.22 h]; Pipe Fitter [24.52 h]; Nominal bore : 160mm; Depth : 0.0m - 1.5m [3.01]; Nominal bore : 160mm; Depth : 1.5m - 2.5m [30.09]; Nominal bore : 200mm; Depth : 0.0m - 1.5m [3.01]; Nominal bore : 200mm; Depth : 1.5m - 2.5m [7.02]; Nominal bore : 200mm; Depth : 2.5m - 3.5m [16.05]; Nominal bore : 200mm; Depth : 3.5m - 4.5m [11.03]; Nominal bore : 200mm; Depth : 4.5m -5.5m [6.02]; Nominal bore : 200mm; Depth : 5.5m - 6.5m [8.03] → Labor/Helper [288 h]; Plumber [288 h]; Pipe Fitter [288 h]; Nominal bore : 160mm; Depth : 0.0m - 1.5m [1.9]; Nominal bore : 160mm; Depth : 1.5m - 2.5m [21.2]; Nominal bore : 200mm; Depth : 0.0m - 1.5m [2.49]; Nominal bore : 200mm; Depth : 1.5m - 2.5m [4.59]; Nominal bore : 200mm; Depth : 2.5m - 3.5m [11.34]; Nominal bore : 200mm; Depth : 3.5m - 4.5m [8.48]; Nominal bore : 200mm; Depth : 4.5m -5.5m [4.28]; Nominal bore : 200mm; Depth : 5.5m - 6.5m [5.51] |
| CO-R17-SW-TF-110 | Install Manhole Cover Works for External Finishes of Sewage Network-[Road 17] | 2026-10-22 → 2027-07-18 (+269d) | 2026-11-04 → 2027-07-31 (+269d) |  | 0d → -221d |  | resources Labor/Helper [13.68 h]; Plumber [18.53 h]; Pipe Fitter [19.8 h]; Depth: not exceeding 1.5m [0.1]; Depth: 1.5 - 2.5m [0.25]; Depth: 2.5 - 3.5m [0.15]; Depth: 5.5 - 6.5m [0.05]; Depth:6.5 - 7.5m [0.05] → Labor/Helper [192 h]; Plumber [192 h]; Pipe Fitter [192 h]; Depth: not exceeding 1.5m [0.1]; Depth: 1.5 - 2.5m [0.25]; Depth: 2.5 - 3.5m [0.15]; Depth: 5.5 - 6.5m [0.05]; Depth:6.5 - 7.5m [0.05] |
| CO-R17-SW-TF-130 | Main Manhole Internal Finishes (Benching + Insulation) of Sewage Network-[Road 17] | 2026-10-26 → 2027-07-21 (+268d) | 2026-11-08 → 2027-08-03 (+268d) |  | 0d → -221d |  | resources Labor/Helper [13.68 h]; Plumber [18.53 h]; Pipe Fitter [19.8 h]; Depth: not exceeding 1.5m [0.1]; Depth: 1.5 - 2.5m [0.25]; Depth: 2.5 - 3.5m [0.15]; Depth: 5.5 - 6.5m [0.05]; Depth:6.5 - 7.5m [0.05] → Labor/Helper [192 h]; Plumber [192 h]; Pipe Fitter [192 h]; Depth: not exceeding 1.5m [0.1]; Depth: 1.5 - 2.5m [0.25]; Depth: 2.5 - 3.5m [0.15]; Depth: 5.5 - 6.5m [0.05]; Depth:6.5 - 7.5m [0.05] |
| 11 | **Storm Drainage Network** | 2026-10-04 → 2026-05-31 (-126d) | 2026-12-12 → 2027-08-23 (+254d) |  |  |  |  |
| TF | **Testing and Finishes** | 2026-10-04 → 2026-05-31 (-126d) | 2026-12-12 → 2027-08-23 (+254d) |  |  |  |  |
| CO-R17-SD-TF-120 | Main Manhole Internal Finishes (Benching + Insulation ) for Storm Drainage Network-[Road 17] | 2026-11-05 → 2026-05-31 A (-158d) | 2026-11-18 → 2026-06-18 A (-153d) | 0% → 100% | 1d → none |  | resources Labor/Helper [325.2 h]; MH ; depth: 0.0m - 1.5m [0.1]; MH ; depth: 1.51m - 2.5m [0.2]; MH ; depth: 2.51 - 3.5m [0.05]; MH ; depth: 1.51m - 2.5m [0.1]; Single Catch basin [28.09]; Double Catch basin [14.04]; Pipe encasement dia 300 mm [14.04]; Pipe encasement dia 400 mm [7.02]; Pipe encasement dia 500 mm [6.02]; Pipe encasement dia 600 mm [3.01]; Pipe encasement dia 700 mm [4.01]; Pipe encasement dia 800 mm [3.01]; Pipe encasement dia 900 mm [1]; Pipe encasement dia 1000 mm [1]; Pipe encasement dia 1100 mm [1]; Pipe encasement dia 1200 mm [1] → MH ; depth: 0.0m - 1.5m [0.1]; MH ; depth: 1.51m - 2.5m [0.2]; MH ; depth: 2.51 - 3.5m [0.05]; MH ; depth: 1.51m - 2.5m [0.1]; Single Catch basin [20]; Double Catch basin [10]; Pipe encasement dia 300 mm [10.04]; Pipe encasement dia 400 mm [5.14]; Pipe encasement dia 500 mm [3.74]; Pipe encasement dia 600 mm [1.84]; Pipe encasement dia 700 mm [3.24]; Pipe encasement dia 800 mm [1.66]; Pipe encasement dia 900 mm [1.1]; Pipe encasement dia 1000 mm [1.16]; Pipe encasement dia 1100 mm [1.04]; Pipe encasement dia 1200 mm [0.62] |
| CO-R17-SD-TF-100 | Testing Work for Pipes of Storm Drainage Network-[Road 17] | 2026-10-04 → 2026-12-09 (+66d) | 2026-10-21 → 2026-12-27 (+67d) |  | 13d → -21d | CO-R17.S13-SD-130 SS+3d, PRO-R17-SD-DL-140 FF+3d, CO-R17.S13-RD-P-100 SS+3d, CO-R17.S13-RD-P-100 FF+3d, CO-R17.S13-SD-130 FF+3d, CO-R17.S13-SD-120 SS, CO-R17.S13-SD-120, ENG-SH-SD-ML-A-110, CO-R16-SD-TF-100, ENG-MS-SD-ML-A-110, CO-R17.S14-RD-P-100 SS+3d, CO-R17.S14-RD-P-100 FF+3d → CO-R17.S13-SD-130 SS+3d, PRO-R17-SD-DL-140 FF+3d, CO-R17.S13-RD-P-100 SS+3d, CO-R17.S13-RD-P-100 FF+3d, CO-R17.S13-SD-130 FF+3d, CO-R17.S13-SD-120 SS, CO-R17.S13-SD-120, ENG-SH-SD-ML-A-110, CO-R16-SD-TF-100, ENG-MS-SD-ML-A-110, CO-R17.S14-RD-P-100 SS+3d, CO-R17.S14-RD-P-100 FF+3d, CO-R17.S13-SD-210, CO-R17.S13-SD-160, CO-R17.S14-SD-210 | resources Labor/Helper [26.78 h]; Plumber [26.78 h]; Pipe with diameter 400mm ; depth: 0.0m - 1.5m [21.07]; Pipe with diameter 400mm ; depth: 1.51m - 2.5m [31.1]; Pipe with diameter 500mm ; depth: 1.51m - 2.5m [54.17]; Pipe with diameter 600mm ; depth: 1.51m - 2.5m [13.04]; Pipe with diameter 700mm ; depth: 1.51m - 2.5m [27.08]; Pipe with diameter 800mm ; depth: 1.51m - 2.5m [11.03]; Pipe with diameter 900mm ; depth: 1.51m - 2.5m [3.01]; Pipe with diameter 1000mm ; depth: 1.51m - 2.5m [10.03]; Pipe with diameter 1000mm ; depth: 2.51 - 3.5m [10.03] → Labor/Helper [256 h]; Plumber [256 h]; Pipe with diameter 400mm ; depth: 0.0m - 1.5m [14.83]; Pipe with diameter 400mm ; depth: 1.51m - 2.5m [22.44]; Pipe with diameter 500mm ; depth: 1.51m - 2.5m [38.3]; Pipe with diameter 600mm ; depth: 1.51m - 2.5m [8.72]; Pipe with diameter 700mm ; depth: 1.51m - 2.5m [19.07]; Pipe with diameter 800mm ; depth: 1.51m - 2.5m [8.29]; Pipe with diameter 900mm ; depth: 1.51m - 2.5m [2.26]; Pipe with diameter 1000mm ; depth: 1.51m - 2.5m [7]; Pipe with diameter 1000mm ; depth: 2.51 - 3.5m [7] |
| CO-R17-SD-TF-110 | Install Catch Basin Cover Works for External Finishes of Storm Drainage Network-[Road 17] | 2026-10-19 → 2027-06-28 (+252d) | 2026-11-01 → 2027-07-11 (+252d) |  | 4d → -180d |  | resources Labor/Helper [26 h]; Foreman [26 h]; Pipe with diameter 300mm ; depth: 0 - 1.5m [35.11]; Pipe with diameter 400mm ; depth: 0 - 1.5m [3.01] → Labor/Helper [384 h]; Foreman [384 h]; Pipe with diameter 300mm ; depth: 0 - 1.5m [25.09]; Pipe with diameter 400mm ; depth: 0 - 1.5m [1.53] |
| CO-R17-SD-TF-130 | Catch Basin Internal Finishes (Benching + Insulation ) for Storm Drainage Network-[Road 17] | 2026-11-29 → 2027-08-10 (+254d) | 2026-12-12 → 2027-08-23 (+254d) |  | 0d → -205d | CO-R17-SD-TF-110 SS+3d, CO-R17-SD-TF-110 FF+3d, PRO-R17-SD-DL-160 FF+3d, CO-R17-SD-TF-100 SS, CO-R17-SD-TF-100, CO-R17-SD-TF-100 FF, CO-R17-SD-TF-110, CO-R17-SW-TF-110 SS, CO-R17-SW-TF-110, CO-R17-SW-TF-110 FF, ENG-SH-RD-A-100, ENG-SH-RD-A-100 FF, CO-R16-SD-TF-130, ENG-MS-RD-A-10, ENG-MS-RD-A-10 FF → CO-R17-SD-TF-110 SS+3d, CO-R17-SD-TF-110 FF+3d, PRO-R17-SD-DL-160 FF+3d, CO-R17-SD-TF-100 SS, CO-R17-SD-TF-100, CO-R17-SD-TF-100 FF, CO-R17-SD-TF-110, CO-R17-SW-TF-110 SS, CO-R17-SW-TF-110, CO-R17-SW-TF-110 FF, ENG-SH-RD-A-100, ENG-SH-RD-A-100 FF, CO-R16-SD-TF-130, ENG-MS-RD-A-10, ENG-MS-RD-A-10 FF, CO-R17.S14-SD-160 | resources Labor/Helper [16 h]; Foreman [16 h]; Pipe with diameter 300mm ; depth: 0 - 1.5m [35.11]; Pipe with diameter 400mm ; depth: 0 - 1.5m [3.01] → Labor/Helper [384 h]; Foreman [384 h]; Pipe with diameter 300mm ; depth: 0 - 1.5m [25.09]; Pipe with diameter 400mm ; depth: 0 - 1.5m [1.53] |
| 9 | **Potable Water Network** | 2026-10-22 → 2027-07-11 (+262d) | 2026-11-18 → 2027-08-16 (+271d) |  |  |  |  |
| TF | **Testing and Finishes** | 2026-10-22 → 2027-07-11 (+262d) | 2026-11-18 → 2027-08-16 (+271d) |  |  |  |  |
| CO-R17-PW-TF-100 | Final Finishes works and Covers for Valves and Valve Chambers of Potable Water Network-[Road 17] | 2026-10-22 → 2027-07-11 (+262d) | 2026-11-04 → 2027-07-24 (+262d) |  | 0d → -215d |  | resources Labor/Helper [26 h]; Plumber [26 h] → Labor/Helper [192 h]; Plumber [192 h] |
| CO-R17-PW-TF-120 | Fire Hydrant Finishies (S.Box + Safety + Marker Post ) of Potable Water Network-[Road 17] | 2026-11-05 → 2027-07-25 (+262d) | 2026-11-18 → 2027-08-07 (+262d) |  | 0d → -215d | CO-R17-PW-TF-100, CO-R16-PW-TF-120, PRO-R17-PW-DL-130 FF+3d → CO-R17-PW-TF-100, CO-R16-PW-TF-120, PRO-R17-PW-DL-130 FF+3d, CO-R17.S14-PW-160 |  |
| CO-R17-PW-TF-110 | Testing Work for Main Line of Potable Water Network-[Road 17] | 2026-10-22 → 2027-08-03 (+285d) | 2026-11-04 → 2027-08-16 (+285d) |  | 0d → -235d | CO-R16-PW-TF-110 → CO-R16-PW-TF-110, CO-R17.S14-PW-210 | resources Labor/Helper [23.24 h]; Plumber [28.76 h]; Pipe with diameter 200mm; in depth 0.0m - 1.5m [88.28] → Labor/Helper [192 h]; Plumber [192 h]; Pipe with diameter 200mm; in depth 0.0m - 1.5m [62.33] |

| ID | Task | Start | Finish | Complete | Total float | Predecessors | Other |
| --- | --- | --- | --- | --- | --- | --- | --- |
| 13 | **Irrigation Network** | 2026-10-18 → 2027-07-03 (+258d) | 2026-10-28 → 2027-07-13 (+258d) |  |  |  |  |
| TF | **Testing and Finishes** | 2026-10-18 → 2027-07-03 (+258d) | 2026-10-28 → 2027-07-13 (+258d) |  |  |  |  |
| CO-R17-IR-TF-170 | Final Testing (pressure tests) of Irrigation Network-[Road 17] | 2026-10-18 → 2027-07-03 (+258d) | 2026-10-28 → 2027-07-13 (+258d) |  | 0d → -212d | CO-R17.S13-IR-130, CO-R17.S13-RD-P-100, CO-R16-IR-TF-160, CO-R17.S14-RD-P-100 → CO-R17.S13-IR-130, CO-R17.S13-RD-P-100, CO-R16-IR-TF-160, CO-R17.S14-RD-P-100, CO-R17.S13-IR-120 | resources Labor/Helper [17.33 h]; Plumber [17.33 h]; Pipe Fitter [17.33 h]; 125 mm pipe; depth 0.0m - 1.5m [91.29] → Labor/Helper [256 h]; Plumber [256 h]; Pipe Fitter [256 h]; 125 mm pipe; depth 0.0m - 1.5m [63.95] |
| 12 | **Street Lighting Network** | 2026-07-25 → 2027-06-08 (+318d) | 2026-10-15 → 2027-09-11 (+331d) |  |  |  |  |
| TR | **Termination and Testing Works** | 2026-07-25 → 2027-06-08 (+318d) | 2026-10-15 → 2027-09-11 (+331d) |  |  |  |  |
| CO-R17-SL-TF-240 | Termination Works For Lighting Poles Cables of Street Lighting Network-[Road 17] | 2026-07-25 → 2027-06-08 (+318d) | 2026-08-06 → 2027-06-21 (+319d) |  | 59d → -204d |  | resources Labor/Helper [17.86 h]; Electrician [17.86 h]; Low Current Technician [17.86 h]; Supply, installation , test and operation of cables, Copper, (4Cx25mmï¿½,Cu/XLPE/SWA/PVC +1x16mmï¿½ PVC/PVC) [544.7] → Labor/Helper [96 h]; Electrician [96 h]; Low Current Technician [96 h]; Supply, installation , test and operation of cables, Copper, (4Cx25mm²,Cu/XLPE/SWA/PVC +1x16mm² PVC/PVC) [384.3] |
| CO-R17-SL-TF-250 | Termination Works For Panel Board Cables of Street Lighting Network-[Road 17] | 2026-09-30 → 2027-08-26 (+330d) | 2026-10-13 → 2027-09-08 (+330d) |  | 0d → -274d |  | resources Labor/Helper [17.86 h]; Electrician [17.86 h]; Low Current Technician [17.86 h] → Labor/Helper [96 h]; Electrician [96 h]; Low Current Technician [96 h] |
| CO-R17-SL-TF-380 | Testing Works For Panel Board Cables of Street Lighting Network-[Road 17] | 2026-10-14 → 2027-09-09 (+330d) | 2026-10-15 → 2027-09-11 (+331d) |  | 0d → -274d |  | resources Labor/Helper [26.78 h]; Electrician [26.78 h] → Labor/Helper [16 h]; Electrician [16 h] |
| 14 | **Medium Voltage Network** | 2026-10-21 → 2027-08-14 (+297d) | 2026-10-28 → 2027-08-21 (+297d) |  |  |  |  |
| TT | **Termination and Testing Works** | 2026-10-21 → 2027-08-14 (+297d) | 2026-10-28 → 2027-08-21 (+297d) |  |  |  |  |
| CO-R17-MV-TF-240 | Termination Works of Medium Voltage Network-[Road 17] | 2026-10-21 → 2027-08-14 (+297d) | 2026-10-28 → 2027-08-21 (+297d) |  | 0d → -245d |  | resources Labor/Helper [17.33 h]; Electrician [17.33 h]; Low Current Technician [17.33 h] → Labor/Helper [192 h]; Electrician [192 h]; Low Current Technician [192 h] |
| 1 | **Road Works** | 2026-12-02 → 2025-09-20 (-438d) | 2026-12-28 → 2027-10-19 (+295d) |  |  |  |  |
| 1 | **Bituminous Construction** | 2026-12-02 → 2025-09-20 (-438d) | 2026-12-16 → 2025-10-13 (-429d) |  |  |  |  |
| CO-R17-S13-RD-F-110 | Application of Prime Coat Layer for Road Works- S.W 15-[Road 17] | 2026-12-02 → 2025-09-20 A (-438d) | 2026-12-13 → 2025-09-25 A (-444d) | 0% → 100% | 0d → none |  | resources Labor/Helper [65.36 h]; Insulation Worker [65.36 h]; Bituminous base course(Grading I - Class A), 70mm thick after compaction including Prime Coat (MC1) [499.56] → Labor/Helper [96 h]; Insulation Worker [96 h]; Bituminous base course(Grading I - Class A), 70mm thick after compaction including Prime Coat (MC1) [352.17] |
| CO-R17-S14-RD-F-140 | Application of Prime Coat Layer for Road Works- S.W 16-[Road 17] | 2026-12-02 → 2025-09-20 A (-438d) | 2026-12-13 → 2025-09-25 A (-444d) | 0% → 100% | 0d → none |  | resources Labor/Helper [98.05 h]; Insulation Worker [98.05 h]; Bituminous base course(Grading I - Class A), 70mm thick after compaction including Prime Coat (MC1) [499.56] → Labor/Helper [144 h]; Insulation Worker [144 h]; Bituminous base course(Grading I - Class A), 70mm thick after compaction including Prime Coat (MC1) [352.17] |
| CO-R17-S13-RD-F-120 | Bituminous Base & Wearing Courses Layers for Road Works- S.W 15-[Road 17] | 2026-12-06 → 2025-10-09 A (-423d) | 2026-12-16 → 2025-10-13 A (-429d) | 0% → 100% | 0d → none |  | resources Labor/Helper [65.36 h]; Eq. Operator [65.36 h]; Asphalt Cutter [96 h]; Asphalt Paver [96 h]; Bituminous concrete wearing course, 50 mm thick, after compaction(Grading I - Class A), including tack coat (RC) [358.12] → Labor/Helper [96 h]; Eq. Operator [96 h]; Asphalt Cutter [96 h]; Asphalt Paver [96 h]; Bituminous concrete wearing course, 50 mm thick, after compaction(Grading I - Class A), including tack coat (RC) [251.57] |
| CO-R17-S14-RD-F-150 | Bituminous Base & Wearing Courses Layers for Road Works- S.W 16-[Road 17] | 2026-12-06 → 2025-10-09 A (-423d) | 2026-12-16 → 2025-10-13 A (-429d) | 0% → 100% | 0d → none |  | resources Labor/Helper [98.05 h]; Eq. Operator [98.05 h]; Asphalt Cutter [144 h]; Asphalt Paver [144 h]; Bituminous concrete wearing course, 50 mm thick, after compaction(Grading I - Class A), including tack coat (RC) [358.12] → Labor/Helper [144 h]; Eq. Operator [144 h]; Asphalt Cutter [144 h]; Asphalt Paver [144 h]; Bituminous concrete wearing course, 50 mm thick, after compaction(Grading I - Class A), including tack coat (RC) [251.57] |
| TS | **Traffic Signs Boards and Roads Marking** | 2026-12-17 → 2027-10-07 (+294d) | 2026-12-28 → 2027-10-19 (+295d) |  |  |  |  |
| CO-R17-S13-RD-F-160 | Application of Road Marking Works For Road Works- S.W 15-[Road 17] | 2026-12-17 → 2027-10-07 (+294d) | 2026-12-28 → 2027-10-18 (+294d) |  | 0d → -242d |  | resources Labor/Helper [16 h]; Painter [16 h]; Retroreflective Thermoplastic White, Traffic lines [269.84]; Retroreflective Thermoplastic Yellow, Traffic lines [41.13]; Retroreflective raised pavement markers(Type A) [52.16] → Labor/Helper [96 h]; Painter [96 h]; Retroreflective Thermoplastic White, Traffic lines [189.7]; Retroreflective Thermoplastic Yellow, Traffic lines [29.07]; Retroreflective raised pavement markers(Type A) [37.08] |
| CO-R17-S14-RD-F-170 | Application of Road Marking Works For Road Works- S.W 16-[Road 17] | 2026-12-17 → 2027-10-07 (+294d) | 2026-12-28 → 2027-10-18 (+294d) |  | 0d → -242d |  | resources Labor/Helper [16 h]; Painter [16 h]; Retroreflective Thermoplastic White, Traffic lines [269.84]; Retroreflective Thermoplastic Yellow, Traffic lines [41.13]; Retroreflective raised pavement markers(Type A) [52.16] → Labor/Helper [384 h]; Painter [384 h]; Retroreflective Thermoplastic White, Traffic lines [189.7]; Retroreflective Thermoplastic Yellow, Traffic lines [29.07]; Retroreflective raised pavement markers(Type A) [37.08] |
| CO-R17-S13-RD-F-100 | Installation Works of Traffic Signs Boards For Road Works- S.W 15-[Road 17] | 2026-12-17 → 2027-10-09 (+296d) | 2026-12-28 → 2027-10-19 (+295d) |  | 0d → -243d |  | resources Labor/Helper [16 h]; Painter [16 h]; Traffic signs, ground mounted, Sheet Alumenium, (breakaway) Single post, with all accessories [3.01]; Straight Arrow [8.03]; Straight-Right Arrow [1]; Straight-Left Arrow [1] → Labor/Helper [96 h]; Painter [96 h]; Traffic signs, ground mounted, Sheet Alumenium, (breakaway) Single post, with all accessories [2]; Straight Arrow [6]; Straight-Right Arrow [1]; Straight-Left Arrow [1] |
| CO-R17-S14-RD-F-130 | Installation Works of Traffic Signs Boards For Road Works- S.W 16-[Road 17] | 2026-12-21 → 2027-10-11 (+294d) | 2026-12-28 → 2027-10-18 (+294d) |  | 0d → -242d |  | resources Labor/Helper [16 h]; Painter [16 h]; Traffic signs, ground mounted, Sheet Alumenium, (breakaway) Single post, with all accessories [3.01]; Straight Arrow [8.03]; Straight-Right Arrow [1]; Straight-Left Arrow [1] → Labor/Helper [192 h]; Painter [192 h]; Traffic signs, ground mounted, Sheet Alumenium, (breakaway) Single post, with all accessories [2]; Straight Arrow [6]; Straight-Right Arrow [1]; Straight-Left Arrow [1] |
| 3 | **Road 18 Local 1 ( 479 LM )** | 2026-06-16 → 2025-09-23 (-266d) | 2026-12-19 → 2027-10-25 (+310d) |  |  |  |  |
| 10 | **Sewage Network** | 2026-08-20 → 2027-05-09 (+262d) | 2026-09-16 → 2027-06-14 (+271d) |  |  |  |  |
| TF | **Testing and Finishes** | 2026-08-20 → 2027-05-09 (+262d) | 2026-09-16 → 2027-06-14 (+271d) |  |  |  |  |
| CO-R18-SW-TF-100 | Final Testing For Main Line of Sewage Network-[Road 18] | 2026-08-20 → 2027-05-09 (+262d) | 2026-09-02 → 2027-05-27 (+267d) |  | 44d → -175d | CO-R09-SW-TF-100, CO-R11.S06-RD-P-100, CO-R18.S15-RD-P-160 SS, CO-R18.S15-RD-P-160 FF → CO-R09-SW-TF-100, CO-R11.S06-RD-P-100, CO-R18.S15-RD-P-160 SS, CO-R18.S15-RD-P-160 FF, CO-R18.S15-SW-300, CO-R18.S16-SW-300 | resources Labor/Helper [13.31 h]; Plumber [18.03 h]; Pipe Fitter [23.11 h]; Nominal bore : 160mm; Depth : 1.5m - 2.5m [13.04]; Nominal bore : 200mm; Depth : 0.0m - 1.5m [3.01]; Nominal bore : 200mm; Depth : 1.5m - 2.5m [6.02]; Nominal bore : 200mm; Depth : 2.5m - 3.5m [16.05]; Nominal bore : 200mm; Depth : 3.5m - 4.5m [11.03]; Nominal bore : 200mm; Depth : 4.5m -5.5m [6.02]; Nominal bore : 200mm; Depth : 5.5m - 6.5m [7.02] → Labor/Helper [576 h]; Plumber [576 h]; Pipe Fitter [576 h]; Nominal bore : 160mm; Depth : 1.5m - 2.5m [8.8]; Nominal bore : 200mm; Depth : 0.0m - 1.5m [2.37]; Nominal bore : 200mm; Depth : 1.5m - 2.5m [4.44]; Nominal bore : 200mm; Depth : 2.5m - 3.5m [11.11]; Nominal bore : 200mm; Depth : 3.5m - 4.5m [8.19]; Nominal bore : 200mm; Depth : 4.5m -5.5m [4.19]; Nominal bore : 200mm; Depth : 5.5m - 6.5m [5.37] |
| CO-R18-SW-TF-110 | Install Manhole Cover Works for External Finishes of Sewage Network-[Road 18] | 2026-09-03 → 2027-05-29 (+268d) | 2026-09-16 → 2027-06-10 (+267d) |  | 44d → -175d |  | resources Depth: not exceeding 1.5m [0.05]; Depth: 1.5 - 2.5m [1]; Depth: 2.5 - 3.5m [0.05]; Depth: 5.5 - 6.5m [0.1]; Depth:6.5 - 7.5m [0.05] → Depth: not exceeding 1.5m [0.05]; Depth: 1.5 - 2.5m [0.5]; Depth: 2.5 - 3.5m [0.05]; Depth: 5.5 - 6.5m [0.1]; Depth:6.5 - 7.5m [0.05] |
| CO-R18-SW-TF-130 | Main Manhole Internal Finishes (Benching + Insulation) of Sewage Network-[Road 18] | 2026-09-03 → 2027-06-01 (+271d) | 2026-09-16 → 2027-06-14 (+271d) |  | 44d → -178d |  | resources Depth: not exceeding 1.5m [0.05]; Depth: 1.5 - 2.5m [1]; Depth: 2.5 - 3.5m [0.05]; Depth: 5.5 - 6.5m [0.1]; Depth:6.5 - 7.5m [0.05] → Depth: not exceeding 1.5m [0.05]; Depth: 1.5 - 2.5m [0.5]; Depth: 2.5 - 3.5m [0.05]; Depth: 5.5 - 6.5m [0.1]; Depth:6.5 - 7.5m [0.05] |
| 11 | **Storm Drainage Network** | 2026-08-03 → 2026-06-20 (-44d) | 2026-11-09 → 2027-07-04 (+237d) |  |  |  |  |
| TF | **Testing and Finishes** | 2026-08-03 → 2026-06-20 (-44d) | 2026-11-09 → 2027-07-04 (+237d) |  |  |  |  |
| CO-R18-SD-TF-120 | Main Manhole Internal Finishes (Benching + Insulation ) for Storm Drainage Network-[Road 18] | 2026-10-22 → 2026-06-20 A (-124d) | 2026-11-09 → 2026-06-27 A (-135d) | 0% → 100% | 28d → none |  | resources MH ; depth: 0.0m - 1.5m [0.1]; MH ; depth: 1.51m - 2.5m [0.2]; MH ; depth: 1.51m - 2.5m [0.05]; MH ; depth: 2.51 - 3.5m [0.2]; Single Catch basin [25.08]; Double Catch basin [14.04]; Pipe encasement dia 300 mm [14.04]; Pipe encasement dia 400 mm [7.02]; Pipe encasement dia 500 mm [6.02]; Pipe encasement dia 600 mm [3.01]; Pipe encasement dia 700 mm [4.01]; Pipe encasement dia 800 mm [3.01]; Pipe encasement dia 900 mm [1]; Pipe encasement dia 1000 mm [1]; Pipe encasement dia 1100 mm [1]; Pipe encasement dia 1200 mm [1] → MH ; depth: 0.0m - 1.5m [0.1]; MH ; depth: 1.51m - 2.5m [0.2]; MH ; depth: 1.51m - 2.5m [0.05]; MH ; depth: 2.51 - 3.5m [0.2]; Single Catch basin [18]; Double Catch basin [10]; Pipe encasement dia 300 mm [9.7]; Pipe encasement dia 400 mm [4.98]; Pipe encasement dia 500 mm [3.6]; Pipe encasement dia 600 mm [1.78]; Pipe encasement dia 700 mm [3.14]; Pipe encasement dia 800 mm [1.6]; Pipe encasement dia 900 mm [1.06]; Pipe encasement dia 1000 mm [1.12]; Pipe encasement dia 1100 mm [1]; Pipe encasement dia 1200 mm [0.6] |
| CO-R18-SD-TF-100 | Testing Work for Pipes of Storm Drainage Network-[Road 18] | 2026-10-04 → 2027-05-09 (+217d) | 2026-10-21 → 2027-06-01 (+223d) |  | 28d → -150d | ENG-SH-SD-ML-A-110, CO-R09-SD-TF-100, ENG-MS-SD-ML-A-110, CO-R17.S13-RD-P-100 SS+3d, CO-R17.S13-RD-P-100 FF+3d → ENG-SH-SD-ML-A-110, CO-R09-SD-TF-100, ENG-MS-SD-ML-A-110, CO-R17.S13-RD-P-100 SS+3d, CO-R17.S13-RD-P-100 FF+3d, CO-R18.S15-SD-280, CO-R18.S15-SD-330, CO-R18.S16-SD-280, CO-R18.S16-SD-330 | resources Labor/Helper [35.77 h]; Plumber [17.79 h]; Pipe with diameter 400mm ; depth: 0.0m - 1.5m [34.11]; Pipe with diameter 400mm ; depth: 1.51m - 2.5m [37.12]; Pipe with diameter 500mm ; depth: 1.51m - 2.5m [54.17]; Pipe with diameter 600mm ; depth: 1.51m - 2.5m [28.09]; Pipe with diameter 700mm ; depth: 1.51m - 2.5m [23.07]; Pipe with diameter 900mm ; depth: 1.51m - 2.5m [35.11]; Pipe with diameter 900mm ; depth: 2.51 - 3.5m [8.03]; Pipe with diameter 1000mm ; depth: 1.51m - 2.5m [7.02]; Pipe with diameter 1000mm ; depth: 2.51 - 3.5m [7.02] → Labor/Helper [256 h]; Plumber [256 h]; Pipe with diameter 400mm ; depth: 0.0m - 1.5m [24.43]; Pipe with diameter 400mm ; depth: 1.51m - 2.5m [26.2]; Pipe with diameter 500mm ; depth: 1.51m - 2.5m [37.68]; Pipe with diameter 600mm ; depth: 1.51m - 2.5m [20.46]; Pipe with diameter 700mm ; depth: 1.51m - 2.5m [15.52]; Pipe with diameter 900mm ; depth: 1.51m - 2.5m [25.05]; Pipe with diameter 900mm ; depth: 2.51 - 3.5m [5.7]; Pipe with diameter 1000mm ; depth: 1.51m - 2.5m [5]; Pipe with diameter 1000mm ; depth: 2.51 - 3.5m [5] |
| CO-R18-SD-TF-110 | Install Catch Basin Cover Works for External Finishes of Storm Drainage Network-[Road 18] | 2026-08-03 → 2027-05-10 (+280d) | 2026-08-20 → 2027-06-02 (+286d) |  | 80d → -151d |  | resources Labor/Helper [26.78 h]; Foreman [26.78 h]; Pipe with diameter 300mm ; depth: 0 - 1.5m [34.11]; Pipe with diameter 400mm ; depth: 0 - 1.5m [1] → Labor/Helper [384 h]; Foreman [384 h]; Pipe with diameter 300mm ; depth: 0 - 1.5m [24.26]; Pipe with diameter 400mm ; depth: 0 - 1.5m [1.48] |
| CO-R18-SD-TF-130 | Catch Basin Internal Finishes (Benching + Insulation ) for Storm Drainage Network-[Road 18] | 2026-10-22 → 2027-06-16 (+237d) | 2026-11-09 → 2027-07-04 (+237d) |  | 28d → -162d |  | resources Labor/Helper [26 h]; Foreman [26 h]; Pipe with diameter 300mm ; depth: 0 - 1.5m [34.11]; Pipe with diameter 400mm ; depth: 0 - 1.5m [1] → Labor/Helper [384 h]; Foreman [384 h]; Pipe with diameter 300mm ; depth: 0 - 1.5m [24.26]; Pipe with diameter 400mm ; depth: 0 - 1.5m [1.48] |
| 9 | **Potable Water Network** | 2026-08-26 → 2027-06-08 (+286d) | 2026-11-18 → 2027-08-30 (+285d) |  |  |  |  |
| TF | **Testing and Finishes** | 2026-08-26 → 2027-06-08 (+286d) | 2026-11-18 → 2027-08-30 (+285d) |  |  |  |  |
| CO-R18-PW-TF-100 | Final Finishes works and Covers for Valves and Valve Chambers of Potable Water Network-[Road 18] | 2026-08-26 → 2027-06-08 (+286d) | 2026-09-08 → 2027-06-21 (+286d) |  | 48d → -187d |  | resources Labor/Helper [23.94 h]; Plumber [29.63 h] → Labor/Helper [192 h]; Plumber [192 h] |
| CO-R18-PW-TF-120 | Fire Hydrant Finishies (S.Box + Safety + Marker Post ) of Potable Water Network-[Road 18] | 2026-09-09 → 2027-06-22 (+286d) | 2026-09-22 → 2027-07-05 (+286d) |  | 48d → -187d | CO-R18-PW-TF-100, CO-R09-PW-TF-120 → CO-R18-PW-TF-100, CO-R09-PW-TF-120, CO-R18.S16-PW-270 |  |
| CO-R18-PW-TF-110 | Testing Work for Main Line of Potable Water Network-[Road 18] | 2026-11-05 → 2027-08-17 (+285d) | 2026-11-18 → 2027-08-30 (+285d) |  | 0d → -235d | CO-R09-PW-TF-110, CO-R17-PW-TF-110, PRO-R18-PW-DL-170 → CO-R09-PW-TF-110, CO-R17-PW-TF-110, PRO-R18-PW-DL-170, CO-R18.S16-PW-330 | resources Labor/Helper [14.3 h]; Plumber [17.7 h]; Pipe with diameter 200mm; in depth 0.0m - 1.5m [100.31] → Labor/Helper [96 h]; Plumber [96 h]; Pipe with diameter 200mm; in depth 0.0m - 1.5m [70.61] |
| 13 | **Irrigation Network** | 2026-08-17 → 2027-05-30 (+286d) | 2026-09-03 → 2027-06-16 (+286d) |  |  |  |  |
| TF | **Testing and Finishes** | 2026-08-17 → 2027-05-30 (+286d) | 2026-09-03 → 2027-06-16 (+286d) |  |  |  |  |
| CO-R18-IR-TF-110 | Final Testing (pressure tests) of Irrigation Network-[Road 18] | 2026-08-17 → 2027-05-30 (+286d) | 2026-09-03 → 2027-06-16 (+286d) |  | 46d → -189d |  | resources Labor/Helper [16.77 h]; Plumber [17.79 h]; Pipe Fitter [19 h]; 125 mm pipe; depth 0.0m - 1.5m [88.28] → Labor/Helper [384 h]; Plumber [384 h]; Pipe Fitter [384 h]; 125 mm pipe; depth 0.0m - 1.5m [61.84] |
| 12 | **Street Lighting Network** | 2026-06-16 → 2027-04-17 (+305d) | 2026-09-12 → 2027-07-19 (+310d) |  |  |  |  |
| TR | **Termination and Testing Works** | 2026-06-16 → 2027-04-17 (+305d) | 2026-09-12 → 2027-07-19 (+310d) |  |  |  |  |
| CO-R18-SL-TF-120 | Termination Works For Lighting Poles Cables of Street Lighting Network-[Road 18] | 2026-06-16 → 2027-04-17 (+305d) | 2026-06-30 → 2027-05-01 (+305d) |  | 91.75d → -164.25d |  | resources Labor/Helper [17.86 h]; Electrician [17.86 h]; Low Current Technician [17.86 h]; Supply, installation , test and operation of cables, Copper, (4Cx25mmï¿½,Cu/XLPE/SWA/PVC +1x16mmï¿½ PVC/PVC) [527.65] → Labor/Helper [196 h]; Electrician [196 h]; Low Current Technician [196 h]; Supply, installation , test and operation of cables, Copper, (4Cx25mm²,Cu/XLPE/SWA/PVC +1x16mm² PVC/PVC) [371.7] |
| CO-R18-SL-TF-130 | Termination Works For Panel Board Cables of Street Lighting Network-[Road 18] | 2026-08-26 → 2027-07-03 (+311d) | 2026-09-09 → 2027-07-17 (+311d) |  | 28.5d → -227.5d |  |  |
| CO-R18-SL-TF-380 | Testing Works For Panel Board Cables of Street Lighting Network-[Road 18] | 2026-09-09 → 2027-07-17 (+311d) | 2026-09-12 → 2027-07-19 (+310d) |  | 28.5d → -227.5d |  |  |
| 14 | **Medium Voltage Network** | 2026-07-09 → 2027-06-20 (+346d) | 2026-07-27 → 2027-07-07 (+345d) |  |  |  |  |
| TT | **Termination and Testing Works** | 2026-07-09 → 2027-06-20 (+346d) | 2026-07-27 → 2027-07-07 (+345d) |  |  |  |  |
| CO-R18-MV-TF-120 | Termination Works of Medium Voltage Network-[Road 18] | 2026-07-09 → 2027-06-20 (+346d) | 2026-07-27 → 2027-07-07 (+345d) |  | 79d → -207d |  | resources Labor/Helper [17.86 h]; Electrician [17.86 h]; Low Current Technician [17.86 h] → Labor/Helper [128 h]; Electrician [128 h]; Low Current Technician [128 h] |
| 1 | **Road Works** | 2026-10-08 → 2025-09-23 (-380d) | 2026-12-19 → 2027-10-25 (+310d) |  |  |  |  |
| 1 | **Bituminous Construction** | 2026-10-08 → 2025-09-23 (-380d) | 2026-11-16 → 2025-10-13 (-399d) |  |  |  |  |
| CO-R18-S15-RD-F-100 | Application of Prime Coat Layer for Road Works- S.W 03-[Road 18] | 2026-10-08 → 2025-09-23 A (-380d) | 2026-10-29 → 2025-09-28 A (-396d) | 0% → 100% | 14.5d → none |  | resources Labor/Helper [159.35 h]; Insulation Worker [159.35 h]; Bituminous base course(Grading I - Class A), 70mm thick after compaction including Prime Coat (MC1) [483.51] → Labor/Helper [144 h]; Insulation Worker [144 h]; Bituminous base course(Grading I - Class A), 70mm thick after compaction including Prime Coat (MC1) [340.56] |
| CO-R18-S15-RD-F-110 | Bituminous Base & Wearing Courses Layers for Road Works- S.W 03-[Road 18] | 2026-10-12 → 2025-09-23 A (-384d) | 2026-11-02 → 2025-09-28 A (-400d) | 0% → 100% | 14.5d → none |  | resources Labor/Helper [159.35 h]; Eq. Operator [159.35 h]; Asphalt Cutter [144 h]; Asphalt Paver [144 h]; Bituminous concrete wearing course, 50 mm thick, after compaction(Grading I - Class A), including tack coat (RC) [345.08] → Labor/Helper [144 h]; Eq. Operator [144 h]; Asphalt Cutter [144 h]; Asphalt Paver [144 h]; Bituminous concrete wearing course, 50 mm thick, after compaction(Grading I - Class A), including tack coat (RC) [243.27] |
| CO-R18-S16-RD-F-150 | Application of Prime Coat Layer for Road Works- S.W 04-[Road 18] | 2026-10-22 → 2025-10-09 A (-378d) | 2026-11-12 → 2025-10-13 A (-395d) | 0% → 100% | 21.5d → none |  | resources Labor/Helper [159.35 h]; Insulation Worker [159.35 h]; Bituminous base course(Grading I - Class A), 70mm thick after compaction including Prime Coat (MC1) [483.51] → Labor/Helper [144 h]; Insulation Worker [144 h]; Bituminous base course(Grading I - Class A), 70mm thick after compaction including Prime Coat (MC1) [340.56] |
| CO-R18-S16-RD-F-170 | Bituminous Base & Wearing Courses Layers for Road Works- S.W 04-[Road 18] | 2026-10-26 → 2025-10-09 A (-382d) | 2026-11-16 → 2025-10-11 A (-401d) | 0% → 100% | 21.5d → none |  | resources Labor/Helper [159.35 h]; Eq. Operator [159.35 h]; Asphalt Cutter [144 h]; Asphalt Paver [144 h]; Bituminous concrete wearing course, 50 mm thick, after compaction(Grading I - Class A), including tack coat (RC) [345.08] → Labor/Helper [144 h]; Eq. Operator [144 h]; Asphalt Cutter [144 h]; Asphalt Paver [144 h]; Bituminous concrete wearing course, 50 mm thick, after compaction(Grading I - Class A), including tack coat (RC) [243.27] |
| TS | **Traffic Signs Boards and Roads Marking** | 2026-11-09 → 2027-09-14 (+309d) | 2026-12-19 → 2027-10-25 (+310d) |  |  |  |  |
| CO-R18-S15-RD-F-120 | Application of Road Marking Works For Road Works- S.W 03-[Road 18] | 2026-11-09 → 2027-09-14 (+309d) | 2026-11-23 → 2027-09-29 (+310d) |  | 8.5d → -247.5d |  | resources Labor/Helper [16 h]; Painter [16 h]; Retroreflective Thermoplastic White, Traffic lines [259.81]; Retroreflective Thermoplastic Yellow, Traffic lines [40.13]; Retroreflective raised pavement markers(Type A) [51.16] → Labor/Helper [480 h]; Painter [480 h]; Retroreflective Thermoplastic White, Traffic lines [183.45]; Retroreflective Thermoplastic Yellow, Traffic lines [28.11]; Retroreflective raised pavement markers(Type A) [35.86] |
| CO-R18-S15-RD-F-130 | Installation Works of Traffic Signs Boards For Road Works- S.W 03-[Road 18] | 2026-11-23 → 2027-09-29 (+310d) | 2026-12-07 → 2027-10-13 (+310d) |  | 8.5d → -247.5d |  | resources Labor/Helper [16 h]; Painter [16 h]; Traffic signs, ground mounted, Sheet Alumenium, (breakaway) Single post, with all accessories [4.01]; Straight Arrow [8.03]; Straight-Right Arrow [1] → Labor/Helper [288 h]; Painter [288 h]; Traffic signs, ground mounted, Sheet Alumenium, (breakaway) Single post, with all accessories [3]; Straight Arrow [6]; Straight-Right Arrow [1] |
| CO-R18-S16-RD-F-140 | Application of Road Marking Works For Road Works- S.W 04-[Road 18] | 2026-11-30 → 2027-10-06 (+310d) | 2026-12-17 → 2027-10-24 (+311d) |  | 9.5d → -246.5d |  | resources Labor/Helper [16 h]; Painter [16 h]; Retroreflective Thermoplastic White, Traffic lines [259.81]; Retroreflective Thermoplastic Yellow, Traffic lines [40.13]; Retroreflective raised pavement markers(Type A) [51.16] → Labor/Helper [600 h]; Painter [600 h]; Retroreflective Thermoplastic White, Traffic lines [183.45]; Retroreflective Thermoplastic Yellow, Traffic lines [28.11]; Retroreflective raised pavement markers(Type A) [35.86] |
| CO-R18-S16-RD-F-160 | Installation Works of Traffic Signs Boards For Road Works- S.W 04-[Road 18] | 2026-12-07 → 2027-10-13 (+310d) | 2026-12-19 → 2027-10-25 (+310d) |  | 8.5d → -247.5d |  | resources Labor/Helper [16 h]; Painter [16 h]; Traffic signs, ground mounted, Sheet Alumenium, (breakaway) Single post, with all accessories [4.01]; Straight Arrow [8.03]; Straight-Right Arrow [1] → Labor/Helper [360 h]; Painter [360 h]; Traffic signs, ground mounted, Sheet Alumenium, (breakaway) Single post, with all accessories [3]; Straight Arrow [6]; Straight-Right Arrow [1] |
| GEN | **Independent Works** | 2026-01-21 → 2025-05-19 (-247d) | 2026-12-28 → 2027-10-25 (+301d) |  |  |  |  |
| CON | **Tie In To Existing Networks** | 2026-09-02 → 2027-04-29 (+239d) | 2026-12-28 → 2027-10-25 (+301d) |  |  |  |  |
| 1 | **Phase 2 Block "J"** | 2026-09-02 → 2027-04-29 (+239d) | 2026-12-28 → 2027-10-25 (+301d) |  |  |  |  |
| 2 | **Road 09 Local 2 ( 2278 LM )** | 2026-10-17 → 2027-07-14 (+270d) | 2026-12-20 → 2027-10-03 (+287d) |  |  |  |  |
| 15 | **Storm Drainage Network** | 2026-12-13 → 2027-08-24 (+254d) | 2026-12-20 → 2027-08-31 (+254d) |  |  |  |  |
| TIE-SD-R09 | TIE IN Existing Network For Storm Drainage Network | 2026-12-13 → 2027-08-24 (+254d) | 2026-12-20 → 2027-08-31 (+254d) |  | 4d → -205d |  |  |
| 16 | **Sewage Network** | 2026-11-09 → 2027-08-04 (+268d) | 2026-11-22 → 2027-08-17 (+268d) |  |  |  |  |
| TIE-SW-R09 | TIE IN Existing Network For Sewage Network | 2026-11-09 → 2027-08-04 (+268d) | 2026-11-22 → 2027-08-17 (+268d) |  | 26d → -195d |  |  |
| 17 | **Potable Water Network** | 2026-11-19 → 2027-08-31 (+285d) | 2026-12-02 → 2027-09-13 (+285d) |  |  |  |  |

| ID | Task | Start | Finish | Total float |
| --- | --- | --- | --- | --- |
| TIE-PW-R09 | TIE IN Existing Network For Potable Water Network | 2026-11-19 → 2027-08-31 (+285d) | 2026-12-02 → 2027-09-13 (+285d) | 17d → -218d |
| 1 | **Irrigation Network** | 2026-10-29 → 2027-07-14 (+258d) | 2026-11-11 → 2027-07-27 (+258d) |  |
| TIE-IR-R09 | TIE IN Existing Network For Irrigation Network | 2026-10-29 → 2027-07-14 (+258d) | 2026-11-11 → 2027-07-27 (+258d) | 35d → -177d |
| 18 | **Meduim Voltage Network** | 2026-10-29 → 2027-08-22 (+297d) | 2026-11-18 → 2027-09-11 (+297d) |  |
| TIE-R09-MV | TIE IN Existing Network For Medium Voltage Network | 2026-10-29 → 2027-08-22 (+297d) | 2026-11-18 → 2027-09-11 (+297d) | 26d → -219d |
| 2 | **Street Lighting Network** | 2026-10-17 → 2027-09-12 (+330d) | 2026-11-05 → 2027-10-03 (+332d) |  |
| TIE-R09-SL | TIE IN Existing Network For Street Lighting Network | 2026-10-17 → 2027-09-12 (+330d) | 2026-11-05 → 2027-10-03 (+332d) | 34d → -240d |
| 3 | **Telecom Network** | 2026-10-29 → 2027-08-22 (+297d) | 2026-11-09 → 2027-09-01 (+296d) |  |
| TIE-R09-TE | TIE IN Existing Network For Telecom Network | 2026-10-29 → 2027-08-22 (+297d) | 2026-11-09 → 2027-09-01 (+296d) | 24d → -221d |
| 4 | **Road 10 Local 2 ( 2352 LM )** | 2026-10-17 → 2027-07-14 (+270d) | 2026-12-28 → 2027-10-25 (+301d) |  |
| 15 | **Storm Drainage Network** | 2026-12-13 → 2027-08-24 (+254d) | 2026-12-20 → 2027-08-31 (+254d) |  |
| TIE-SD-R10 | TIE IN Existing Network For Storm Drainage Network | 2026-12-13 → 2027-08-24 (+254d) | 2026-12-20 → 2027-08-31 (+254d) | 4d → -205d |
| 16 | **Sewage Network** | 2026-11-09 → 2027-08-04 (+268d) | 2026-11-22 → 2027-08-17 (+268d) |  |
| TIE-SW-R10 | TIE IN Existing Network For Sewage Network | 2026-11-09 → 2027-08-04 (+268d) | 2026-11-22 → 2027-08-17 (+268d) | 26d → -195d |
| 17 | **Potable Water Network** | 2026-11-19 → 2027-08-31 (+285d) | 2026-12-02 → 2027-09-13 (+285d) |  |
| TIE-PW-R10 | TIE IN Existing Network For Potable Water Network | 2026-11-19 → 2027-08-31 (+285d) | 2026-12-02 → 2027-09-13 (+285d) | 17d → -218d |
| 1 | **Irrigation Network** | 2026-10-29 → 2027-07-14 (+258d) | 2026-11-11 → 2027-07-27 (+258d) |  |
| TIE-IR-R10 | TIE IN Existing Network For Irrigation Network | 2026-10-29 → 2027-07-14 (+258d) | 2026-11-11 → 2027-07-27 (+258d) | 35d → -177d |
| 18 | **Meduim Voltage Network** | 2026-10-29 → 2027-08-22 (+297d) | 2026-11-18 → 2027-09-11 (+297d) |  |
| TIE-R10-MV | TIE IN Existing Network For Medium Voltage Network | 2026-10-29 → 2027-08-22 (+297d) | 2026-11-18 → 2027-09-11 (+297d) | 26d → -219d |
| 2 | **Street Lighting Network** | 2026-10-17 → 2027-09-12 (+330d) | 2026-11-05 → 2027-10-03 (+332d) |  |
| TIE-R10-SL | TIE IN Existing Network For Street Lighting Network | 2026-10-17 → 2027-09-12 (+330d) | 2026-11-05 → 2027-10-03 (+332d) | 34d → -240d |
| 4 | **Telecom Network** | 2026-10-29 → 2027-08-22 (+297d) | 2026-11-09 → 2027-09-01 (+296d) |  |
| TIE-R10-TE | TIE IN Existing Network For Telecom Network | 2026-10-29 → 2027-08-22 (+297d) | 2026-11-09 → 2027-09-01 (+296d) | 24d → -221d |
| 3 | **Road Works** | 2026-12-23 → 2027-10-19 (+300d) | 2026-12-28 → 2027-10-25 (+301d) |  |
| TIE-R10-RD | TIE IN Existing Network For Road Works | 2026-12-23 → 2027-10-19 (+300d) | 2026-12-28 → 2027-10-25 (+301d) | 2d → -245.5d |
| 5 | **Road 11 Local 1 ( 670 LM )** | 2026-10-17 → 2027-07-14 (+270d) | 2026-12-28 → 2027-10-25 (+301d) |  |
| 15 | **Storm Drainage Network** | 2026-12-13 → 2027-08-24 (+254d) | 2026-12-20 → 2027-08-31 (+254d) |  |
| TIE-SD-R11 | TIE IN Existing Network For Storm Drainage Network | 2026-12-13 → 2027-08-24 (+254d) | 2026-12-20 → 2027-08-31 (+254d) | 4d → -205d |
| 16 | **Sewage Network** | 2026-11-09 → 2027-08-04 (+268d) | 2026-11-22 → 2027-08-17 (+268d) |  |
| TIE-SW-R11 | TIE IN Existing Network For Sewage Network | 2026-11-09 → 2027-08-04 (+268d) | 2026-11-22 → 2027-08-17 (+268d) | 26d → -195d |
| 17 | **Potable Water Network** | 2026-11-19 → 2027-08-31 (+285d) | 2026-12-02 → 2027-09-13 (+285d) |  |
| TIE-PW-R11 | TIE IN Existing Network For Potable Water Network | 2026-11-19 → 2027-08-31 (+285d) | 2026-12-02 → 2027-09-13 (+285d) | 17d → -218d |
| 1 | **Irrigation Network** | 2026-10-29 → 2027-07-14 (+258d) | 2026-11-11 → 2027-07-27 (+258d) |  |
| TIE-IR-R11 | TIE IN Existing Network For Irrigation Network | 2026-10-29 → 2027-07-14 (+258d) | 2026-11-11 → 2027-07-27 (+258d) | 35d → -177d |
| 18 | **Meduim Voltage Network** | 2026-10-29 → 2027-08-22 (+297d) | 2026-11-18 → 2027-09-11 (+297d) |  |
| TIE-R11-MV | TIE IN Existing Network For Medium Voltage Network | 2026-10-29 → 2027-08-22 (+297d) | 2026-11-18 → 2027-09-11 (+297d) | 26d → -219d |
| 2 | **Street Lighting Network** | 2026-10-17 → 2027-09-12 (+330d) | 2026-11-05 → 2027-10-03 (+332d) |  |
| TIE-R11-SL | TIE IN Existing Network For Street Lighting Network | 2026-10-17 → 2027-09-12 (+330d) | 2026-11-05 → 2027-10-03 (+332d) | 34d → -240d |
| 4 | **Telecom Network** | 2026-10-29 → 2027-08-22 (+297d) | 2026-11-09 → 2027-09-01 (+296d) |  |
| TIE-R11-TE | TIE IN Existing Network For Telecom Network | 2026-10-29 → 2027-08-22 (+297d) | 2026-11-09 → 2027-09-01 (+296d) | 24d → -221d |
| 3 | **Road Works** | 2026-12-23 → 2027-10-19 (+300d) | 2026-12-28 → 2027-10-25 (+301d) |  |
| TIE-R11-RD | TIE IN Existing Network For Road Works | 2026-12-23 → 2027-10-19 (+300d) | 2026-12-28 → 2027-10-25 (+301d) | 2d → -245.5d |
| 6 | **Road 14 Local 1 ( 584 LM )** | 2026-10-17 → 2027-07-14 (+270d) | 2026-12-28 → 2027-10-25 (+301d) |  |
| 15 | **Storm Drainage Network** | 2026-12-13 → 2027-08-24 (+254d) | 2026-12-20 → 2027-08-31 (+254d) |  |
| TIE-SD-R14 | TIE IN Existing Network For Storm Drainage Network | 2026-12-13 → 2027-08-24 (+254d) | 2026-12-20 → 2027-08-31 (+254d) | 4d → -205d |
| 16 | **Sewage Network** | 2026-11-09 → 2027-08-04 (+268d) | 2026-11-22 → 2027-08-17 (+268d) |  |
| TIE-SW-R14 | TIE IN Existing Network For Sewage Network | 2026-11-09 → 2027-08-04 (+268d) | 2026-11-22 → 2027-08-17 (+268d) | 26d → -195d |
| 17 | **Potable Water Network** | 2026-11-19 → 2027-08-31 (+285d) | 2026-12-02 → 2027-09-13 (+285d) |  |
| TIE-PW-R14 | TIE IN Existing Network For Potable Water Network | 2026-11-19 → 2027-08-31 (+285d) | 2026-12-02 → 2027-09-13 (+285d) | 17d → -218d |
| 1 | **Irrigation Network** | 2026-10-29 → 2027-07-14 (+258d) | 2026-11-11 → 2027-07-27 (+258d) |  |
| TIE-IR-R14 | TIE IN Existing Network For Irrigation Network | 2026-10-29 → 2027-07-14 (+258d) | 2026-11-11 → 2027-07-27 (+258d) | 35d → -177d |
| 18 | **Meduim Voltage Network** | 2026-10-29 → 2027-08-22 (+297d) | 2026-11-18 → 2027-09-11 (+297d) |  |
| TIE-R14-MV | TIE IN Existing Network For Medium Voltage Network | 2026-10-29 → 2027-08-22 (+297d) | 2026-11-18 → 2027-09-11 (+297d) | 26d → -219d |
| 2 | **Street Lighting Network** | 2026-10-17 → 2027-09-12 (+330d) | 2026-11-05 → 2027-10-03 (+332d) |  |
| TIE-R14-SL | TIE IN Existing Network For Street Lighting Network | 2026-10-17 → 2027-09-12 (+330d) | 2026-11-05 → 2027-10-03 (+332d) | 34d → -240d |
| 4 | **Telecom Network** | 2026-10-29 → 2027-08-22 (+297d) | 2026-11-09 → 2027-09-01 (+296d) |  |
| TIE-R14-TE | TIE IN Existing Network For Telecom Network | 2026-10-29 → 2027-08-22 (+297d) | 2026-11-09 → 2027-09-01 (+296d) | 24d → -221d |
| 3 | **Road Works** | 2026-12-23 → 2027-10-19 (+300d) | 2026-12-28 → 2027-10-25 (+301d) |  |
| TIE-R14-RD | TIE IN Existing Network For Road Works | 2026-12-23 → 2027-10-19 (+300d) | 2026-12-28 → 2027-10-25 (+301d) | 2d → -245.5d |
| 7 | **Road 15 Local 1 ( 556 LM )** | 2026-10-17 → 2027-07-14 (+270d) | 2026-12-20 → 2027-10-03 (+287d) |  |
| 15 | **Storm Drainage Network** | 2026-12-13 → 2027-08-24 (+254d) | 2026-12-20 → 2027-08-31 (+254d) |  |
| TIE-SD-R15 | TIE IN Existing Network For Storm Drainage Network | 2026-12-13 → 2027-08-24 (+254d) | 2026-12-20 → 2027-08-31 (+254d) | 4d → -205d |
| 16 | **Sewage Network** | 2026-11-09 → 2027-08-04 (+268d) | 2026-11-22 → 2027-08-17 (+268d) |  |
| TIE-SW-R15 | TIE IN Existing Network For Sewage Network | 2026-11-09 → 2027-08-04 (+268d) | 2026-11-22 → 2027-08-17 (+268d) | 26d → -195d |
| 17 | **Potable Water Network** | 2026-11-19 → 2027-08-31 (+285d) | 2026-12-02 → 2027-09-13 (+285d) |  |
| TIE-PW-R15 | TIE IN Existing Network For Potable Water Network | 2026-11-19 → 2027-08-31 (+285d) | 2026-12-02 → 2027-09-13 (+285d) | 17d → -218d |
| 1 | **Irrigation Network** | 2026-10-29 → 2027-07-14 (+258d) | 2026-11-11 → 2027-07-27 (+258d) |  |
| TIE-IR-R15 | TIE IN Existing Network For Irrigation Network | 2026-10-29 → 2027-07-14 (+258d) | 2026-11-11 → 2027-07-27 (+258d) | 35d → -177d |
| 18 | **Meduim Voltage Network** | 2026-10-29 → 2027-08-22 (+297d) | 2026-11-18 → 2027-09-11 (+297d) |  |

| ID | Task | Start | Finish | Complete | Total float | Predecessors | Other |
| --- | --- | --- | --- | --- | --- | --- | --- |
| TIE-R15-MV | TIE IN Existing Network For Medium Voltage Network | 2026-10-29 → 2027-08-22 (+297d) | 2026-11-18 → 2027-09-11 (+297d) |  | 26d → -219d |  |  |
| 2 | **Street Lighting Network** | 2026-10-17 → 2027-09-12 (+330d) | 2026-11-05 → 2027-10-03 (+332d) |  |  |  |  |
| TIE-R15-SL | TIE IN Existing Network For Street Lighting Network | 2026-10-17 → 2027-09-12 (+330d) | 2026-11-05 → 2027-10-03 (+332d) |  | 34d → -240d |  |  |
| 3 | **Telecom Network** | 2026-10-29 → 2027-08-22 (+297d) | 2026-11-09 → 2027-09-01 (+296d) |  |  |  |  |
| TIE-R15-TE | TIE IN Existing Network For Telecom Network | 2026-10-29 → 2027-08-22 (+297d) | 2026-11-09 → 2027-09-01 (+296d) |  | 24d → -221d |  |  |
| 8 | **Road 16 Local 1 ( 527 LM )** | 2026-10-17 → 2027-07-14 (+270d) | 2026-12-20 → 2027-10-03 (+287d) |  |  |  |  |
| 15 | **Storm Drainage Network** | 2026-12-13 → 2027-08-24 (+254d) | 2026-12-20 → 2027-08-31 (+254d) |  |  |  |  |
| TIE-SD-R16 | TIE IN Existing Network For Storm Drainage Network | 2026-12-13 → 2027-08-24 (+254d) | 2026-12-20 → 2027-08-31 (+254d) |  | 4d → -205d |  |  |
| 16 | **Sewage Network** | 2026-11-09 → 2027-08-04 (+268d) | 2026-11-22 → 2027-08-17 (+268d) |  |  |  |  |
| TIE-SW-R16 | TIE IN Existing Network For Sewage Network | 2026-11-09 → 2027-08-04 (+268d) | 2026-11-22 → 2027-08-17 (+268d) |  | 26d → -195d |  |  |
| 17 | **Potable Water Network** | 2026-11-19 → 2027-08-31 (+285d) | 2026-12-02 → 2027-09-13 (+285d) |  |  |  |  |
| TIE-PW-R16 | TIE IN Existing Network For Potable Water Network | 2026-11-19 → 2027-08-31 (+285d) | 2026-12-02 → 2027-09-13 (+285d) |  | 17d → -218d |  |  |
| 1 | **Irrigation Network** | 2026-10-29 → 2027-07-14 (+258d) | 2026-11-11 → 2027-07-27 (+258d) |  |  |  |  |
| TIE-IR-R16 | TIE IN Existing Network For Irrigation Network | 2026-10-29 → 2027-07-14 (+258d) | 2026-11-11 → 2027-07-27 (+258d) |  | 35d → -177d |  |  |
| 18 | **Meduim Voltage Network** | 2026-10-29 → 2027-08-22 (+297d) | 2026-11-18 → 2027-09-11 (+297d) |  |  |  |  |
| TIE-R16-MV | TIE IN Existing Network For Medium Voltage Network | 2026-10-29 → 2027-08-22 (+297d) | 2026-11-18 → 2027-09-11 (+297d) |  | 26d → -219d |  |  |
| 2 | **Street Lighting Network** | 2026-10-17 → 2027-09-12 (+330d) | 2026-11-05 → 2027-10-03 (+332d) |  |  |  |  |
| TIE-R16-SL | TIE IN Existing Network For Street Lighting Network | 2026-10-17 → 2027-09-12 (+330d) | 2026-11-05 → 2027-10-03 (+332d) |  | 34d → -240d |  |  |
| 3 | **Telecom Network** | 2026-10-29 → 2027-08-22 (+297d) | 2026-11-09 → 2027-09-01 (+296d) |  |  |  |  |
| TIE-R16-TE | TIE IN Existing Network For Telecom Network | 2026-10-29 → 2027-08-22 (+297d) | 2026-11-09 → 2027-09-01 (+296d) |  | 24d → -221d |  |  |
| 9 | **Road 17 Local 1 ( 500 LM )** | 2026-10-17 → 2027-07-14 (+270d) | 2026-12-20 → 2027-10-03 (+287d) |  |  |  |  |
| 15 | **Storm Drainage Network** | 2026-12-13 → 2027-08-24 (+254d) | 2026-12-20 → 2027-08-31 (+254d) |  |  |  |  |
| TIE-SD-R17 | TIE IN Existing Network For Storm Drainage Network | 2026-12-13 → 2027-08-24 (+254d) | 2026-12-20 → 2027-08-31 (+254d) |  | 4d → -205d |  |  |
| 16 | **Sewage Network** | 2026-11-09 → 2027-08-04 (+268d) | 2026-11-22 → 2027-08-17 (+268d) |  |  |  |  |
| TIE-SW-R17 | TIE IN Existing Network For Sewage Network | 2026-11-09 → 2027-08-04 (+268d) | 2026-11-22 → 2027-08-17 (+268d) |  | 26d → -195d |  |  |
| 17 | **Potable Water Network** | 2026-11-19 → 2027-08-31 (+285d) | 2026-12-02 → 2027-09-13 (+285d) |  |  |  |  |
| TIE-PW-R17 | TIE IN Existing Network For Potable Water Network | 2026-11-19 → 2027-08-31 (+285d) | 2026-12-02 → 2027-09-13 (+285d) |  | 17d → -218d |  |  |
| 1 | **Irrigation Network** | 2026-10-29 → 2027-07-14 (+258d) | 2026-11-11 → 2027-07-27 (+258d) |  |  |  |  |
| TIE-IR-R17 | TIE IN Existing Network For Irrigation Network | 2026-10-29 → 2027-07-14 (+258d) | 2026-11-11 → 2027-07-27 (+258d) |  | 35d → -177d |  |  |
| 18 | **Meduim Voltage Network** | 2026-10-29 → 2027-08-22 (+297d) | 2026-11-18 → 2027-09-11 (+297d) |  |  |  |  |
| TIE-R17-MV | TIE IN Existing Network For Medium Voltage Network | 2026-10-29 → 2027-08-22 (+297d) | 2026-11-18 → 2027-09-11 (+297d) |  | 26d → -219d |  |  |
| 2 | **Street Lighting Network** | 2026-10-17 → 2027-09-12 (+330d) | 2026-11-05 → 2027-10-03 (+332d) |  |  |  |  |
| TIE-R17-SL | TIE IN Existing Network For Street Lighting Network | 2026-10-17 → 2027-09-12 (+330d) | 2026-11-05 → 2027-10-03 (+332d) |  | 34d → -240d |  |  |
| 3 | **Telecom Network** | 2026-10-29 → 2027-08-22 (+297d) | 2026-11-09 → 2027-09-01 (+296d) |  |  |  |  |
| TIE-R17-TE | TIE IN Existing Network For Telecom Network | 2026-10-29 → 2027-08-22 (+297d) | 2026-11-09 → 2027-09-01 (+296d) |  | 24d → -221d |  |  |
| 1 | **Road 18 Local 1 ( 479 LM )** | 2026-09-02 → 2027-04-29 (+239d) | 2026-12-20 → 2027-10-03 (+287d) |  |  |  |  |
| 15 | **Storm Drainage Network** | 2026-12-13 → 2027-08-24 (+254d) | 2026-12-20 → 2027-08-31 (+254d) |  |  |  |  |
| TIE-SD-R18 | TIE IN Existing Network For Storm Drainage Network | 2026-12-13 → 2027-08-24 (+254d) | 2026-12-20 → 2027-08-31 (+254d) |  | 4d → -205d |  |  |
| 16 | **Sewage Network** | 2026-11-09 → 2027-08-04 (+268d) | 2026-11-22 → 2027-08-17 (+268d) |  |  |  |  |
| TIE-SW-R18 | TIE IN Existing Network For Sewage Network | 2026-11-09 → 2027-08-04 (+268d) | 2026-11-22 → 2027-08-17 (+268d) |  | 26d → -195d |  |  |
| 17 | **Potable Water Network** | 2026-11-19 → 2027-08-31 (+285d) | 2026-12-02 → 2027-09-13 (+285d) |  |  |  |  |
| TIE-PW-R18 | TIE IN Existing Network For Potable Water Network | 2026-11-19 → 2027-08-31 (+285d) | 2026-12-02 → 2027-09-13 (+285d) |  | 17d → -218d |  |  |
| 1 | **Irrigation Network** | 2026-10-29 → 2027-07-14 (+258d) | 2026-11-11 → 2027-07-27 (+258d) |  |  |  |  |
| TIE-IR-R18 | TIE IN Existing Network For Irrigation Network | 2026-10-29 → 2027-07-14 (+258d) | 2026-11-11 → 2027-07-27 (+258d) |  | 35d → -177d |  |  |
| 18 | **Meduim Voltage Network** | 2026-10-29 → 2027-08-22 (+297d) | 2026-11-18 → 2027-09-11 (+297d) |  |  |  |  |
| TIE-R18-MV10 | TIE IN Existing Network For Medium Voltage Network | 2026-10-29 → 2027-08-22 (+297d) | 2026-11-18 → 2027-09-11 (+297d) |  | 26d → -219d |  |  |
| 2 | **Street Lighting Network** | 2026-10-17 → 2027-09-12 (+330d) | 2026-11-05 → 2027-10-03 (+332d) |  |  |  |  |
| TIE-R18-SL10 | TIE IN Existing Network For Street Lighting Network | 2026-10-17 → 2027-09-12 (+330d) | 2026-11-05 → 2027-10-03 (+332d) |  | 34d → -240d |  |  |
| 3 | **Telecom Network** | 2026-09-02 → 2027-04-29 (+239d) | 2026-09-15 → 2027-05-12 (+239d) |  |  |  |  |
| TIE-R18-TE10 | TIE IN Existing Network For Telecom Network | 2026-09-02 → 2027-04-29 (+239d) | 2026-09-15 → 2027-05-12 (+239d) |  | 70d → -130d | MS-CF-TE → MS-CF-TE, CO-R18.S15-TE-220, CO-R18.S16-TE-190, CO-R18.S16-TE-220 |  |
| 2 | **Sewage Pump Stations** | 2026-03-15 → 2026-09-01 (+170d) | 2026-12-01 → 2027-07-25 (+236d) |  |  |  |  |
| 1 | **Sewage Pump Station ( PS 06 )** | 2026-03-15 → 2026-09-01 (+170d) | 2026-12-01 → 2027-07-25 (+236d) |  |  |  |  |
| 1 | **Pump Station Main Building** | 2026-03-15 → 2026-09-01 (+170d) | 2026-10-06 → 2027-06-17 (+254d) |  |  |  |  |
| CO-SW-PS7-MB-100 | Excavation Main Bulding | 2026-03-15 → 2026-09-01 A (+170d) | 2026-04-04 → 2026-09-06 A (+155d) | 0% → 100% | 4d → none |  |  |
| CO-SW-PS7-MB-110 | Concrete Works of Superstrucure | 2026-04-05 → 2026-09-16 A (+164d) | 2026-05-09 → 2026-12-26 (+231d) |  | 4d → -189d |  | resources Valve chamber [1] → Valve chamber [0.7] |
| CO-SW-PS7-MB-120 | Internal Finishes Works of Superstrucure | 2026-05-10 → 2026-12-27 (+231d) | 2026-06-17 → 2027-01-30 (+227d) |  | 4d → -189d |  |  |
| CO-SW-PS7-MB-130 | Internal Electrical Works | 2026-06-18 → 2027-01-31 (+227d) | 2026-07-22 → 2027-03-07 (+228d) |  | 41d → -152d |  | resources Gate valves for the pump station [4.01]; Non return valves for the pump station [4.01]; Penstok for the pump station [1] → Gate valves for the pump station [3]; Non return valves for the pump station [3]; Penstok for the pump station [1] |
| CO-SW-PS7-MB-140 | Internal Mechanical Works | 2026-07-23 → 2027-03-08 (+228d) | 2026-08-26 → 2027-04-14 (+231d) |  | 41d → -152d |  |  |
| CO-SW-PS7-MB-150 | Electromechanical Main Works | 2026-09-01 → 2027-05-09 (+250d) | 2026-10-06 → 2027-06-17 (+254d) |  | 37d → -172d |  | resources Labor/Helper [595.11 h]; Electrician [403.77 h]; Odour control system [1] → Labor/Helper [800 h]; Electrician [800 h]; Odour control system [1] |
| 2 | **Generator With Umbrella Tank** | 2026-06-18 → 2027-01-31 (+227d) | 2026-09-13 → 2027-05-02 (+231d) |  |  |  |  |
| CO-SW-PS7-GN-100 | Concrete Works of Base | 2026-06-18 → 2027-01-31 (+227d) | 2026-07-01 → 2027-02-13 (+227d) |  | 4d → -189d |  | resources Standby Diesel Generator Set 400/230KVA, 3P, 60Hz in Sound Attenuated Enclosure KVA rating by contractor as per total load onsite after pumps selection [0.2]; Supply, install, test and commission of manually operated fuel pump, The pump should be supplied with all accessories as specified. [0.2]; Supply, install, test and commission of Fuel pump with capacity of not less than 1 hour to fill the daily tank of generator at required head. [0.2]; supply, install, test & commission Automatic Transfer Switch ATS panel including all accessories & works required. [0.2]; Supply, install, test and commission under ground fuel tank for 3 days of continuous operation of the standby generator at full load. The tank should be supplied with all accessories such as black steel pipes, float switches with two contactors ï¿½etc. as [0.2] → Standby Diesel Generator Set 400/230KVA, 3P, 60Hz in Sound Attenuated Enclosure KVA rating by contractor as per total load onsite after pumps selection [0.2]; Supply, install, test and commission of manually operated fuel pump, The pump should be supplied with all accessories as specified. [0.2]; Supply, install, test and commission of Fuel pump with capacity of not less than 1 hour to fill the daily tank of generator at required head. [0.2]; supply, install, test & commission Automatic Transfer Switch ATS panel including all accessories & works required. [0.2]; Supply, install, test and commission under ground fuel tank for 3 days of continuous operation of the standby generator at full load. The tank should be supplied with all accessories such as black steel pipes, float switches with two contactors …etc. as s [0.2] |
| CO-SW-PS7-GN-110 | Install Manually Operated Fuel Pump | 2026-07-02 → 2027-02-14 (+227d) | 2026-07-26 → 2027-03-14 (+231d) |  | 4d → -189d |  | resources Standby Diesel Generator Set 400/230KVA, 3P, 60Hz in Sound Attenuated Enclosure KVA rating by contractor as per total load onsite after pumps selection [1]; Supply, install, test and commission of manually operated fuel pump, The pump should be supplied with all accessories as specified. [1]; Supply, install, test and commission of Fuel pump with capacity of not less than 1 hour to fill the daily tank of generator at required head. [1]; supply, install, test & commission Automatic Transfer Switch ATS panel including all accessories & works required. [1]; Supply, install, test and commission under ground fuel tank for 3 days of continuous operation of the standby generator at full load. The tank should be supplied with all accessories such as black steel pipes, float switches with two contactors ï¿½etc. as [1] → Standby Diesel Generator Set 400/230KVA, 3P, 60Hz in Sound Attenuated Enclosure KVA rating by contractor as per total load onsite after pumps selection [0.5]; Supply, install, test and commission of manually operated fuel pump, The pump should be supplied with all accessories as specified. [0.5]; Supply, install, test and commission of Fuel pump with capacity of not less than 1 hour to fill the daily tank of generator at required head. [0.5]; supply, install, test & commission Automatic Transfer Switch ATS panel including all accessories & works required. [0.5]; Supply, install, test and commission under ground fuel tank for 3 days of continuous operation of the standby generator at full load. The tank should be supplied with all accessories such as black steel pipes, float switches with two contactors …etc. as s [0.5] |
| CO-SW-PS7-GN-120 | Install Ground Fuel Tank | 2026-07-27 → 2027-03-15 (+231d) | 2026-08-19 → 2027-04-07 (+231d) |  | 4d → -189d |  | resources Standby Diesel Generator Set 400/230KVA, 3P, 60Hz in Sound Attenuated Enclosure KVA rating by contractor as per total load onsite after pumps selection [0.2]; Supply, install, test and commission of manually operated fuel pump, The pump should be supplied with all accessories as specified. [0.2]; Supply, install, test and commission of Fuel pump with capacity of not less than 1 hour to fill the daily tank of generator at required head. [0.2]; supply, install, test & commission Automatic Transfer Switch ATS panel including all accessories & works required. [0.2]; Supply, install, test and commission under ground fuel tank for 3 days of continuous operation of the standby generator at full load. The tank should be supplied with all accessories such as black steel pipes, float switches with two contactors ï¿½etc. as [0.2] → Standby Diesel Generator Set 400/230KVA, 3P, 60Hz in Sound Attenuated Enclosure KVA rating by contractor as per total load onsite after pumps selection [0.2]; Supply, install, test and commission of manually operated fuel pump, The pump should be supplied with all accessories as specified. [0.2]; Supply, install, test and commission of Fuel pump with capacity of not less than 1 hour to fill the daily tank of generator at required head. [0.2]; supply, install, test & commission Automatic Transfer Switch ATS panel including all accessories & works required. [0.2]; Supply, install, test and commission under ground fuel tank for 3 days of continuous operation of the standby generator at full load. The tank should be supplied with all accessories such as black steel pipes, float switches with two contactors …etc. as s [0.2] |
| CO-SW-PS7-GN-130 | Fix Steel Structure for Umbrella | 2026-08-20 → 2027-04-08 (+231d) | 2026-09-13 → 2027-05-02 (+231d) |  | 4d → -189d |  | resources Standby Diesel Generator Set 400/230KVA, 3P, 60Hz in Sound Attenuated Enclosure KVA rating by contractor as per total load onsite after pumps selection [0.1]; Supply, install, test and commission of manually operated fuel pump, The pump should be supplied with all accessories as specified. [0.1]; Supply, install, test and commission of Fuel pump with capacity of not less than 1 hour to fill the daily tank of generator at required head. [0.1]; supply, install, test & commission Automatic Transfer Switch ATS panel including all accessories & works required. [0.1]; Supply, install, test and commission under ground fuel tank for 3 days of continuous operation of the standby generator at full load. The tank should be supplied with all accessories such as black steel pipes, float switches with two contactors ï¿½etc. as [0.1] → Standby Diesel Generator Set 400/230KVA, 3P, 60Hz in Sound Attenuated Enclosure KVA rating by contractor as per total load onsite after pumps selection [0.1]; Supply, install, test and commission of manually operated fuel pump, The pump should be supplied with all accessories as specified. [0.1]; Supply, install, test and commission of Fuel pump with capacity of not less than 1 hour to fill the daily tank of generator at required head. [0.1]; supply, install, test & commission Automatic Transfer Switch ATS panel including all accessories & works required. [0.1]; Supply, install, test and commission under ground fuel tank for 3 days of continuous operation of the standby generator at full load. The tank should be supplied with all accessories such as black steel pipes, float switches with two contactors …etc. as s [0.1] |
| 5 | **Motor Control Centre Building** | 2026-05-10 → 2026-12-27 (+231d) | 2026-10-03 → 2027-06-07 (+247d) |  |  |  |  |
| CO-SW-PS7-MCC-100 | Excavation Main Bulding | 2026-05-10 → 2026-12-27 (+231d) | 2026-06-01 → 2027-01-13 (+226d) |  | 40d → -153d |  | resources Skilled Labor/Surveyor [100.94 h]; Foreman [100.94 h]; Excavator [896 h]; Plain concrete foundation [0.2] → Skilled Labor/Surveyor [90 h]; Foreman [90 h]; Excavator [896 h]; Plain concrete foundation [0.2] |
| CO-SW-PS7-MCC-110 | Concrete Works of Superstrucure | 2026-06-02 → 2027-01-14 (+226d) | 2026-06-25 → 2027-02-07 (+227d) |  | 40d → -153d |  | resources Skilled Labor/Surveyor [8.78 h]; Foreman [8.78 h]; Cons. Carpenter [122.89 h]; Block Mason [61.44 h]; Plain concrete foundation [1]; Reinfirced concrete foundation [11.03]; Reinforced concrete columns [14.04]; Reinfirced concrete SOG [30.09]; Reinfirced concrete slab [51.16]; CMU walls with thickness 200mm [212.66]; Waterproofing for foundation [85.27]; Roof Insulation [64.2] → Skilled Labor/Surveyor [72 h]; Foreman [72 h]; Cons. Carpenter [1440 h]; Block Mason [720 h]; Plain concrete foundation [0.8]; Reinfirced concrete foundation [8]; Reinforced concrete columns [10]; Reinfirced concrete SOG [21]; Reinfirced concrete slab [36]; CMU walls with thickness 200mm [150]; Waterproofing for foundation [60]; Roof Insulation [45] |
| CO-SW-PS7-MCC-120 | Internal Finishes Works of Superstrucure | 2026-06-27 → 2027-02-08 (+226d) | 2026-07-20 → 2027-03-04 (+227d) |  | 40d → -153d |  | resources Labor/Helper [50.47 h]; Block Mason [50.47 h]; Plasterer [50.47 h]; Painter [50.47 h]; Acrylic paint on elevations including plastering [212.66]; Acrylic paint on internal wallsand ceiling including plastering [269.84]; Epoxy paint on floors [57.18]; Supply and install 2000*3000 mm double leaf manufacturer label shall pass the test requirements complete with accessories as per door schedule and material as approved by the Client. [1]; Plinth for odour control system [28.09] → Labor/Helper [720 h]; Block Mason [720 h]; Plasterer [720 h]; Painter [720 h]; Acrylic paint on elevations including plastering [150]; Acrylic paint on internal wallsand ceiling including plastering [190]; Epoxy paint on floors [40]; Supply and install 2000*3000 mm double leaf manufacturer label shall pass the test requirements complete with accessories as per door schedule and material as approved by the Client. [1]; Plinth for odour control system [20] |
| CO-SW-PS7-MCC-130 | Internal Electrical Works | 2026-07-21 → 2027-03-06 (+228d) | 2026-08-13 → 2027-04-01 (+231d) |  | 40d → -153d |  | resources Labor/Helper [100.94 h]; Electrician [100.94 h]; 4Cx 185mm2 Cu/XLPE//PVC from nearest power supply (SEC) and generator to the ATS and from ATS to MCC-SPS [851.66]; 4Cx 95mm2 Cu/XLPE//PVC from nearest power supply (SEC) and generator to the ATS and from ATS to MCC-SPS [567.77]; 4Cx 10mm2 Cu/XLPE/SWA/PVC from MCC-SPS to ELP [71.22]; 4Cx 150mm2 + 1Cx25mm2 SUBMERGED RUBBER INSULATED FLEXIBLE CABLE from MCC to PUMP1& PUMP2. [297.93]; 4Cx 10mm2 + 1Cx10mm2 Cu/XLPE/PVC FROM MCC-SPS to DB-SPS [71.22]; 4Cx 10mm2 + 1Cx10mm2 Cu/XLPE/PVC FROM MCC-SPS to Penstok [141.44]; 4Cx 10mm2 + 1Cx10mm2 Cu/XLPE/PVC FROM MCC-SPS to Odor Control Unit [141.44]; 4Cx 6mm2 + 1Cx6mm2 Cu/XLPE/PVC FROM MCC-SPS to the mechanical bar screen [113.35]; 3Cx 6mm2 Cu/XLPE/PVC FROM MCC-SPS to the two fuel pumps. [141.44]; 3Cx 4mm2 Cu/XLPE/PVC to the AC. [113.35]; 13A DOUBLE SWITCH SOCKET OUTLET (WEATHER PROOF) [11.03]; 20A SWITCH SOCKET OUTLET (FOR SPLIT UNIT), (WEATHER PROOF) [11.03]; Supply, install and test the following grounding and lightning system including ground wires, ground rods, inspection pits, terminations, bonding/clamping, civil works and all materials and accessories required to complete the work according to specificat [3.01] → Labor/Helper [320 h]; Electrician [320 h]; 4Cx 185mm2 Cu/XLPE//PVC from nearest power supply (SEC) and generator to the ATS and from ATS to MCC-SPS [600]; 4Cx 95mm2 Cu/XLPE//PVC from nearest power supply (SEC) and generator to the ATS and from ATS to MCC-SPS [400]; 4Cx 10mm2 Cu/XLPE/SWA/PVC from MCC-SPS to ELP [50]; 4Cx 150mm2 + 1Cx25mm2 SUBMERGED RUBBER INSULATED FLEXIBLE CABLE from MCC to PUMP1& PUMP2. [210]; 4Cx 10mm2 + 1Cx10mm2 Cu/XLPE/PVC FROM MCC-SPS to DB-SPS [50]; 4Cx 10mm2 + 1Cx10mm2 Cu/XLPE/PVC FROM MCC-SPS to Penstok [100]; 4Cx 10mm2 + 1Cx10mm2 Cu/XLPE/PVC FROM MCC-SPS to Odor Control Unit [100]; 4Cx 6mm2 + 1Cx6mm2 Cu/XLPE/PVC FROM MCC-SPS to the mechanical bar screen [80]; 3Cx 6mm2 Cu/XLPE/PVC FROM MCC-SPS to the two fuel pumps. [100]; 3Cx 4mm2 Cu/XLPE/PVC to the AC. [80]; 13A DOUBLE SWITCH SOCKET OUTLET (WEATHER PROOF) [8]; 20A SWITCH SOCKET OUTLET (FOR SPLIT UNIT), (WEATHER PROOF) [8]; Supply, install and test the following grounding and lightning system including ground wires, ground rods, inspection pits, terminations, bonding/clamping, civil works and all materials and accessories required to complete the work according to specificat [2] |
| CO-SW-PS7-MCC-140 | Internal Mechanical Works | 2026-08-15 → 2027-04-03 (+231d) | 2026-09-07 → 2027-04-26 (+231d) |  | 40d → -153d |  | resources Labor/Helper [100.94 h]; Electrician [100.94 h]; MCC [1] → Labor/Helper [640 h]; Electrician [640 h]; MCC [1] |

| ID | Task | Start | Finish | Complete | Total float | Predecessors | Other |
| --- | --- | --- | --- | --- | --- | --- | --- |
| CO-SW-PS7-MCC-150 | Electromechanical Main Works | 2026-09-08 → 2027-05-09 (+243d) | 2026-10-03 → 2027-06-07 (+247d) |  | 40d → -163d |  | resources Labor/Helper [100.94 h]; Electrician [100.94 h]; Surge protection system study [1]; Surge protection system [1]; Local Control Panel, IP 65 [6.02]; Isolator/disconnect switches IP65 [23.07]; DB-SPS Panel [6.02]; ELP Panel: phtocell , timer,40 Ampere, 3P, IP66,60Hz incomer MCCB & 5ways outgoing MCCB [6.02]; Electrical Hand Hole 600mm x 600mm x 800mm concrete hand hole with hot dip galvanized heavy duty steel cover [14.04]; Electrical Hand Hole 400mm x 400mm x 600mm concrete hand hole with hot dip galvanized heavy duty steel cover [14.04]; Supply and install telephone and fire alarm system including smoke detector, cabinet, control panel, cables, conduits, switches, and other accessories to complete as per drawings and specifications. [1]; Supply, installation, testing and commissioning of all control, instrumentation( as shown on the P & ID drawings cable schedule) including all installation accessories such as termination kits, lugs, glands, cable containments, junction boxes , conduits, [3.01]; Supply, installation, testing and commissioning of all field instruments such as hydrostatic level meter, level switches, flow switch, and all necessary instruments including all installation accessories, etc. all as per specifications and design drawings [3.01]; Earth pits [1]; Cable draw pit, 600x600mm [1]; Supply, installation, testing and commissioning of PLC system, [3.01] → Labor/Helper [320 h]; Electrician [320 h]; Surge protection system study [1]; Surge protection system [1]; Local Control Panel, IP 65 [4]; Isolator/disconnect switches IP65 [16]; DB-SPS Panel [4]; ELP Panel: phtocell , timer,40 Ampere, 3P, IP66,60Hz incomer MCCB & 5ways outgoing MCCB [4]; Electrical Hand Hole 600mm x 600mm x 800mm concrete hand hole with hot dip galvanized heavy duty steel cover [10]; Electrical Hand Hole 400mm x 400mm x 600mm concrete hand hole with hot dip galvanized heavy duty steel cover [10]; Supply and install telephone and fire alarm system including smoke detector, cabinet, control panel, cables, conduits, switches, and other accessories to complete as per drawings and specifications. [1]; Supply, installation, testing and commissioning of all control, instrumentation( as shown on the P & ID drawings cable schedule) including all installation accessories such as termination kits, lugs, glands, cable containments, junction boxes , conduits, [2]; Supply, installation, testing and commissioning of all field instruments such as hydrostatic level meter, level switches, flow switch, and all necessary instruments including all installation accessories, etc. all as per specifications and design drawings [2]; Earth pits [1]; Cable draw pit, 600x600mm [1]; Supply, installation, testing and commissioning of PLC system, [2] |
| 6 | **Simple Building Works** | 2026-09-14 → 2027-05-03 (+231d) | 2026-11-11 → 2027-07-05 (+236d) |  |  |  |  |
| CO-SW-PS7-SBL-100 | Perimeter Fencing | 2026-09-14 → 2027-05-03 (+231d) | 2026-10-11 → 2027-06-03 (+235d) |  | 4d → -189d |  | resources Skilled Labor/Surveyor [25.24 h]; Foreman [25.24 h]; Cons. Carpenter [502.03 h]; Block Mason [184.36 h]; Double leaf swing or sliding main entrance gate [1]; 1.8m high Chainlink Fence (mesh opening size 60mm x 60mm) [360.12]; Single leaf personal access gate [1] → Skilled Labor/Surveyor [37 h]; Foreman [37 h]; Cons. Carpenter [736 h]; Block Mason [368 h]; Double leaf swing or sliding main entrance gate [1]; 1.8m high Chainlink Fence (mesh opening size 60mm x 60mm) [254]; Single leaf personal access gate [1] |
| CO-SW-PS7-SBL-110 | Outside Lighting | 2026-10-12 → 2027-06-05 (+236d) | 2026-11-11 → 2027-07-05 (+236d) |  | 6d → -187d |  | resources Labor/Helper [487.54 h]; Electrician [487.54 h]; Surfaced Mounted Light [11.03]; Flood lights shall be high pole with 250 watt HPS luminaire [6.02] → Labor/Helper [216 h]; Electrician [216 h]; Surfaced Mounted Light [8]; Flood lights shall be high pole with 250 watt HPS luminaire [4] |
| CO-SW-PS7-SBL-120 | Outside Duct Works | 2026-10-12 → 2027-06-05 (+236d) | 2026-11-07 → 2027-06-30 (+235d) |  | 4d → -189d |  | resources Labor/Helper [234.02 h]; Electrician [195.99 h]; DX wall mounted Split/AC [3.01]; CO2 fire extinguishers [3.01]; Powder fire extinguishers [3.01]; 1 - way duct - not exceeding 1.5m deep [1]; 2 - way duct - not exceeding 1.5m deep [1]; 8 - way duct - not exceeding 1.5m deep [1] → Labor/Helper [184 h]; Electrician [184 h]; DX wall mounted Split/AC [2]; CO2 fire extinguishers [2]; Powder fire extinguishers [2]; 1 - way duct - not exceeding 1.5m deep [1]; 2 - way duct - not exceeding 1.5m deep [1]; 8 - way duct - not exceeding 1.5m deep [1] |
| CO-SW-PS7-SBL-130 | Rectangular Wet Wells | 2026-10-12 → 2027-06-05 (+236d) | 2026-11-11 → 2027-07-05 (+236d) |  | 6d → -187d |  | resources Skilled Labor/Surveyor [35.13 h]; Foreman [35.13 h]; Cons. Carpenter [689.88 h]; Block Mason [344.94 h]; Wet well structure internal size (5.5*4.0m) at 11.0m depth [1] → Skilled Labor/Surveyor [22 h]; Foreman [22 h]; Cons. Carpenter [432 h]; Block Mason [216 h]; Wet well structure internal size (5.5*4.0m) at 11.0m depth [1] |
| CO-SW-PS7-SBL-140 | Round Wet Well Structure for basket screen | 2026-10-12 → 2027-06-05 (+236d) | 2026-11-11 → 2027-07-05 (+236d) |  | 6d → -187d |  | resources Skilled Labor/Surveyor [11.78 h]; Foreman [11.78 h]; Cons. Carpenter [235.64 h]; Block Mason [117.82 h]; for the pump station [1] → Skilled Labor/Surveyor [108 h]; Foreman [108 h]; Cons. Carpenter [2160 h]; Block Mason [1080 h]; for the pump station [1] |
| CO-SW-PS7-SBL-150 | Motorized basket screen | 2026-10-12 → 2027-06-05 (+236d) | 2026-11-11 → 2027-07-05 (+236d) |  | 6d → -187d |  | resources Labor/Helper [130.01 h]; Electrician [130.01 h]; basket screen [1] → Labor/Helper [1080 h]; Electrician [1080 h]; basket screen [1] |
| 7 | **Site Work and Service Road** | 2026-11-08 → 2027-07-01 (+235d) | 2026-12-01 → 2027-07-25 (+236d) |  |  |  |  |
| CO-SW-PS7-SWS-100 | Outside Strom Drainage System | 2026-11-08 → 2027-07-01 (+235d) | 2026-11-14 → 2027-07-07 (+235d) |  | 4d → -189d |  | resources Skilled Labor/Surveyor [32.16 h]; Foreman [32.16 h]; Plumber [32.16 h]; Excavator [48 h]; surface drainage channel [212.66] → Skilled Labor/Surveyor [48 h]; Foreman [48 h]; Plumber [48 h]; Excavator [48 h]; surface drainage channel [150] |
| CO-SW-PS7-SWS-110 | Bituminous Works | 2026-11-15 → 2027-07-08 (+235d) | 2026-12-01 → 2027-07-25 (+236d) |  | 4d → -189d |  | resources Labor/Helper [88.87 h]; Insulation Worker [151.99 h]; Site Preparation (including survey, removal and disposal of unsuitable materials, placement and compaction fill material to bring the pump station site to proposed grades) [1]; Supply and install 300mm thick Subgrade as per drawings and specifications. [425.33]; Supply and install 200mm thick Aggregate base course [283.89]; Supply and install Bituminous base course (Grading I - Class A), including Prime Coat (MC1) as per drawings and specifications. [99.31]; Supply and install Bituminous concrete wearing course, (Grading I - Class A), including tack coat (RC2) as per drawings and specifications. [71.22]; Supply and install Precast Concrete Kerb [506.58]; Supply and install 60mm thick - Interlocking block pavers for sidewalk/footpath as per drawings and specifications. [639]; Supply and install Traffic signs, ground mounted, Sheet Alumenium, (breakaway)Single post, with all accessories as per drawings and specifications. [7.02]; Supply and install thermoplastic pavement road markings as per drawings and specifications. [1] → Labor/Helper [600 h]; Insulation Worker [600 h]; Site Preparation (including survey, removal and disposal of unsuitable materials, placement and compaction fill material to bring the pump station site to proposed grades) [1]; Supply and install 300mm thick Subgrade as per drawings and specifications. [300]; Supply and install 200mm thick Aggregate base course [200]; Supply and install Bituminous base course (Grading I - Class A), including Prime Coat (MC1) as per drawings and specifications. [70]; Supply and install Bituminous concrete wearing course, (Grading I - Class A), including tack coat (RC2) as per drawings and specifications. [50]; Supply and install Precast Concrete Kerb [357]; Supply and install 60mm thick - Interlocking block pavers for sidewalk/footpath as per drawings and specifications. [450]; Supply and install Traffic signs, ground mounted, Sheet Alumenium, (breakaway)Single post, with all accessories as per drawings and specifications. [5]; Supply and install thermoplastic pavement road markings as per drawings and specifications. [1] |
| 1 | **Storm Drainage Ponds** | 2026-01-21 → 2025-05-19 (-247d) | 2026-08-24 → 2027-08-04 (+345d) |  |  |  |  |
| 1 | **Storm Drainage Pond ( PO-J1)** | 2026-01-21 → 2025-05-19 (-247d) | 2026-07-30 → 2027-03-17 (+230d) |  |  |  |  |
| CO-SD-PO-K1-100-P1 | Excavation & Filling Works - PART 1 | 2026-01-21 → 2025-05-19 A (-247d) | 2026-02-14 → 2025-06-03 A (-256d) | 0% → 100% | 40d → none | CO-R10.S04-ES-SD-130, PRO-DPO-CV-1DL-10, ENG-SH-DPO-A-110, ENG-MS-DPO-A-110, ENG-MT-DPO-CV-A-110, CO-R11.S06-SD-130, CO-R10.S04-WE-SD-130 → ENG-SH-DPO-A-110, ENG-MS-DPO-A-110, ENG-MT-DPO-CV-A-110 | resources Skilled Labor/Surveyor [204.16 h]; Foreman [204.16 h]; Excavator [1008 h]; Excavation in all type of soil for any depth including levelling, compaction and disposal of surplus material [17725.4] → Skilled Labor/Surveyor [101 h]; Foreman [101 h]; Excavator [1008 h]; Excavation in all type of soil for any depth including levelling, compaction and disposal of surplus material [12488.8] |
| CO-SD-PO-K1-100-P2 | Excavation & Filling Works - PART 2 | 2026-02-15 → 2025-06-04 A (-256d) | 2026-03-10 → 2025-06-28 A (-255d) | 0% → 100% | 51d → none |  | resources Skilled Labor/Surveyor [204.16 h]; Foreman [204.16 h]; Excavator [1008 h]; Excavation in all type of soil for any depth including levelling, compaction and disposal of surplus material [17725.4] → Skilled Labor/Surveyor [101 h]; Foreman [101 h]; Excavator [1008 h]; Excavation in all type of soil for any depth including levelling, compaction and disposal of surplus material [12488.8] |
| CO-SD-PO-K1-100-P3 | Excavation & Filling Works - PART 3 | 2026-03-11 → 2025-07-01 A (-253d) | 2026-04-07 → 2025-07-15 A (-266d) | 0% → 100% | 51d → none | CO-SD-PO-K1-100-P2, PRO-DPO-CV-DL-10 → CO-SD-PO-K1-100-P2 | resources Skilled Labor/Surveyor [204.16 h]; Foreman [204.16 h]; Excavator [1008 h]; Excavation in all type of soil for any depth including levelling, compaction and disposal of surplus material [17725.4] → Skilled Labor/Surveyor [101 h]; Foreman [101 h]; Excavator [1008 h]; Excavation in all type of soil for any depth including levelling, compaction and disposal of surplus material [12488.8] |
| CO-SD-PO-K1-100-P4 | Excavation & Filling Works - PART 4 | 2026-04-08 → 2025-07-16 A (-266d) | 2026-05-02 → 2025-07-21 A (-285d) | 0% → 100% | 51d → none |  | resources Skilled Labor/Surveyor [204.16 h]; Foreman [204.16 h]; Excavator [1008 h]; Excavation in all type of soil for any depth including levelling, compaction and disposal of surplus material [17725.4] → Skilled Labor/Surveyor [101 h]; Foreman [101 h]; Excavator [1008 h]; Excavation in all type of soil for any depth including levelling, compaction and disposal of surplus material [12488.8] |
| CO-SD-PO-K1-110-P1 | Finished Grouted Riprap - PART 1 | 2026-02-15 → 2026-10-06 (+233d) | 2026-03-10 → 2026-10-29 (+233d) |  | 51d → -141d |  | resources Skilled Labor/Surveyor [113.28 h]; Foreman [113.28 h]; Excavator [1008 h]; Reinforced Concrete lining including blinding concrete, construction, isolation layers and expansion joints as shown in drawings. [11.03] → Skilled Labor/Surveyor [101 h]; Foreman [101 h]; Excavator [1008 h]; Reinforced Concrete lining including blinding concrete, construction, isolation layers and expansion joints as shown in drawings. [8] |
| CO-SD-PO-K1-110-P2 | Finished Grouted Riprap - PART 2 | 2026-03-11 → 2026-10-31 (+234d) | 2026-04-07 → 2026-11-23 (+230d) |  | 51d → -141d |  | resources Skilled Labor/Surveyor [113.28 h]; Foreman [113.28 h]; Excavator [1008 h]; Reinforced Concrete lining including blinding concrete, construction, isolation layers and expansion joints as shown in drawings. [11.03] → Skilled Labor/Surveyor [101 h]; Foreman [101 h]; Excavator [1008 h]; Reinforced Concrete lining including blinding concrete, construction, isolation layers and expansion joints as shown in drawings. [8] |
| CO-SD-PO-K1-110-P3 | Finished Grouted Riprap - PART 3 | 2026-04-08 → 2026-11-24 (+230d) | 2026-05-02 → 2026-12-17 (+229d) |  | 51d → -141d |  | resources Skilled Labor/Surveyor [113.28 h]; Foreman [113.28 h]; Excavator [1008 h]; Reinforced Concrete lining including blinding concrete, construction, isolation layers and expansion joints as shown in drawings. [11.03] → Skilled Labor/Surveyor [101 h]; Foreman [101 h]; Excavator [1008 h]; Reinforced Concrete lining including blinding concrete, construction, isolation layers and expansion joints as shown in drawings. [8] |
| CO-SD-PO-K1-110-P4 | Finished Grouted Riprap - PART 4 | 2026-05-03 → 2026-12-19 (+230d) | 2026-05-31 → 2027-01-11 (+225d) |  | 51d → -141d |  | resources Reinforced Concrete lining including blinding concrete, construction, isolation layers and expansion joints as shown in drawings. [11.03] → Reinforced Concrete lining including blinding concrete, construction, isolation layers and expansion joints as shown in drawings. [8] |
| CO-SD-PO-K1-120 | Outfall structure | 2026-06-01 → 2027-01-12 (+225d) | 2026-06-30 → 2027-02-10 (+225d) |  | 51d → -141d |  | resources Skilled Labor/Surveyor [94.21 h]; Foreman [94.21 h]; Cons. Carpenter [1369.21 h]; Block Mason [933.15 h]; Reinforced Concrete lining including blinding concrete, construction, isolation layers and expansion joints as shown in drawings. [6.02] → Skilled Labor/Surveyor [84 h]; Foreman [84 h]; Cons. Carpenter [1664 h]; Block Mason [832 h]; Reinforced Concrete lining including blinding concrete, construction, isolation layers and expansion joints as shown in drawings. [4] |
| CO-SD-PO-K1-130 | Acess Entrace Ramp | 2026-07-01 → 2027-02-11 (+225d) | 2026-07-30 → 2027-03-17 (+230d) |  | 51d → -141d |  | resources Skilled Labor/Surveyor [94.21 h]; Foreman [94.21 h]; Excavator [832 h]; Reinforced Concrete lining including blinding concrete, construction, isolation layers and expansion joints as shown in drawings. [6.02] → Skilled Labor/Surveyor [84 h]; Foreman [84 h]; Excavator [832 h]; Reinforced Concrete lining including blinding concrete, construction, isolation layers and expansion joints as shown in drawings. [4] |
| 2 | **Storm Drainage Pond ( PO-J2)** | 2026-02-15 → 2026-12-22 (+310d) | 2026-08-24 → 2027-08-04 (+345d) |  |  |  |  |
| CO-SD-PO-K2-100-P1 | Excavation & Filling Works - PART 1 | 2026-02-15 → 2026-12-22 (+310d) | 2026-03-10 → 2027-01-14 (+310d) |  | 40d → -215d | CO-SD-PO-K1-100-P1, CO-R11.S06-SD-130, PRO-DPO-CV-1DL-20, ENG-SH-DPO-A-110, ENG-MS-DPO-A-110, ENG-MT-DPO-CV-A-110 → CO-SD-PO-K1-100-P1, PRO-DPO-CV-1DL-20, ENG-SH-DPO-A-110, ENG-MS-DPO-A-110, ENG-MT-DPO-CV-A-110 | resources Skilled Labor/Surveyor [113.28 h]; Foreman [113.28 h]; Excavator [1008 h]; Excavation in all type of soil to increase the depth of the existing pond for any depth including levelling, compaction and disposal of surplus material [7246.64] → Skilled Labor/Surveyor [101 h]; Foreman [101 h]; Excavator [1008 h]; Excavation in all type of soil to increase the depth of the existing pond for any depth including levelling, compaction and disposal of surplus material [5106.25] |
| CO-SD-PO-K2-100-P2 | Excavation & Filling Works - PART 2 | 2026-03-11 → 2027-01-16 (+311d) | 2026-04-07 → 2027-02-08 (+307d) |  | 40d → -215d |  | resources Skilled Labor/Surveyor [113.28 h]; Foreman [113.28 h]; Excavator [1008 h]; Excavation in all type of soil to increase the depth of the existing pond for any depth including levelling, compaction and disposal of surplus material [7246.64] → Skilled Labor/Surveyor [101 h]; Foreman [101 h]; Excavator [1008 h]; Excavation in all type of soil to increase the depth of the existing pond for any depth including levelling, compaction and disposal of surplus material [5106.25] |
| CO-SD-PO-K2-110-P1 | Finished Grouted Riprap - PART 1 | 2026-03-11 → 2027-01-16 (+311d) | 2026-04-07 → 2027-02-08 (+307d) |  | 40d → -215d |  | resources Skilled Labor/Surveyor [97.58 h]; Foreman [97.58 h]; Excavator [864 h]; Reinforced Concrete lining including blinding concrete, construction, isolation layers and expansion joints as shown in drawings. [6.02] → Skilled Labor/Surveyor [87 h]; Foreman [87 h]; Excavator [864 h]; Reinforced Concrete lining including blinding concrete, construction, isolation layers and expansion joints as shown in drawings. [3.6] |
| CO-SD-PO-K2-110-P2 | Finished Grouted Riprap - PART 2 | 2026-04-08 → 2027-02-09 (+307d) | 2026-05-02 → 2027-03-06 (+308d) |  | 40d → -215d |  | resources Skilled Labor/Surveyor [97.58 h]; Foreman [97.58 h]; Excavator [864 h]; Reinforced Concrete lining including blinding concrete, construction, isolation layers and expansion joints as shown in drawings. [6.02] → Skilled Labor/Surveyor [87 h]; Foreman [87 h]; Excavator [864 h]; Reinforced Concrete lining including blinding concrete, construction, isolation layers and expansion joints as shown in drawings. [3.6] |
| CO-SD-PO-K2-100-P3 | Excavation & Filling Works - PART 3 | 2026-04-08 → 2027-03-18 (+344d) | 2026-05-02 → 2027-04-11 (+344d) |  | 40d → -243d |  | resources Skilled Labor/Surveyor [113.28 h]; Foreman [113.28 h]; Excavator [1008 h]; Excavation in all type of soil to increase the depth of the existing pond for any depth including levelling, compaction and disposal of surplus material [7246.64] → Skilled Labor/Surveyor [101 h]; Foreman [101 h]; Excavator [1008 h]; Excavation in all type of soil to increase the depth of the existing pond for any depth including levelling, compaction and disposal of surplus material [5106.25] |
| CO-SD-PO-K2-100-P4 | Excavation & Filling Works - PART 4 | 2026-05-03 → 2027-04-12 (+344d) | 2026-05-31 → 2027-05-05 (+339d) |  | 40d → -243d |  | resources Skilled Labor/Surveyor [113.28 h]; Foreman [113.28 h]; Excavator [1008 h]; Excavation in all type of soil to increase the depth of the existing pond for any depth including levelling, compaction and disposal of surplus material [7246.64] → Skilled Labor/Surveyor [101 h]; Foreman [101 h]; Excavator [1008 h]; Excavation in all type of soil to increase the depth of the existing pond for any depth including levelling, compaction and disposal of surplus material [5106.25] |
| CO-SD-PO-K2-110-P3 | Finished Grouted Riprap - PART 3 | 2026-05-03 → 2027-04-12 (+344d) | 2026-05-31 → 2027-05-05 (+339d) |  | 40d → -243d |  | resources Skilled Labor/Surveyor [97.58 h]; Foreman [97.58 h]; Excavator [864 h]; Reinforced Concrete lining including blinding concrete, construction, isolation layers and expansion joints as shown in drawings. [6.02] → Skilled Labor/Surveyor [87 h]; Foreman [87 h]; Excavator [864 h]; Reinforced Concrete lining including blinding concrete, construction, isolation layers and expansion joints as shown in drawings. [3.6] |
| CO-SD-PO-K2-110-P4 | Finished Grouted Riprap - PART 4 | 2026-06-01 → 2027-05-06 (+339d) | 2026-06-24 → 2027-06-05 (+346d) |  | 40d → -243d |  | resources Skilled Labor/Surveyor [97.58 h]; Foreman [97.58 h]; Excavator [864 h]; Reinforced Concrete lining including blinding concrete, construction, isolation layers and expansion joints as shown in drawings. [6.02] → Skilled Labor/Surveyor [87 h]; Foreman [87 h]; Excavator [864 h]; Reinforced Concrete lining including blinding concrete, construction, isolation layers and expansion joints as shown in drawings. [3.6] |
| CO-SD-PO-K2-120 | Outfall structure | 2026-06-25 → 2027-06-06 (+346d) | 2026-07-25 → 2027-07-05 (+345d) |  | 40d → -243d |  | resources Skilled Labor/Surveyor [23.55 h]; Foreman [23.55 h]; Cons. Carpenter [466.58 h]; Block Mason [233.29 h]; Reinforced Concrete lining including blinding concrete, construction, isolation layers and expansion joints as shown in drawings. [3.01] → Skilled Labor/Surveyor [21 h]; Foreman [21 h]; Cons. Carpenter [416 h]; Block Mason [208 h]; Reinforced Concrete lining including blinding concrete, construction, isolation layers and expansion joints as shown in drawings. [1.8] |
| CO-SD-PO-K2-130 | Acess Entrace Ramp | 2026-07-26 → 2027-07-06 (+345d) | 2026-08-24 → 2027-08-04 (+345d) |  | 40d → -243d |  | resources Skilled Labor/Surveyor [89.81 h]; Foreman [94.21 h]; Excavator [832 h]; Reinforced Concrete lining including blinding concrete, construction, isolation layers and expansion joints as shown in drawings. [3.01] → Skilled Labor/Surveyor [84 h]; Foreman [84 h]; Excavator [832 h]; Reinforced Concrete lining including blinding concrete, construction, isolation layers and expansion joints as shown in drawings. [1.8] |
| TC | **Testing and Comissioning** | 2026-08-25 → 2026-06-01 (-85d) | 2027-01-03 → 2027-10-31 (+301d) |  |  |  |  |
| INF | **Infrastructure Networks** | 2026-11-07 → 2026-06-01 (-159d) | 2027-01-03 → 2027-10-31 (+301d) |  |  |  |  |
| PW1 | **Irrigation Network** | 2026-11-12 → 2026-06-05 (-160d) | 2026-11-25 → 2027-08-10 (+258d) |  |  |  |  |
| T/C-IR | Testing and Commissioning of Irrigation Network | 2026-11-12 → 2026-06-05 A (-160d) | 2026-11-25 → 2027-08-10 (+258d) | 0% → 25% | 35d → -177d |  | resources Labor/Helper [2950.4 h] → 125 mm pipe; depth 0.0m - 1.5m [10460.4]; 280 mm pipe; depth 0.0m - 1.5m [475]; 280 mm pipe; depth 1.5m - 3.0m [50]; 355 mm pipe; depth 1.5m - 3.0m [1000]; 400 mm pipe; depth 1.5m - 3.0m [1000]; 500. mm pipe; depth 1.5m - 3.0m [2800]; Gate valves dia (90)mm on pipes with dia (125) mm. [82]; Gate valves dia (200)mm on pipes with dia (280) mm. [8]; Butterfly valves with dia (355)mm on pipes with dia (355)mm. [2]; Butterfly valves with dia (400)mm on pipes with dia (400)mm. [2]; Butterfly valves with dia (500)mm on pipes with dia (500)mm. [6]; Wash out valve with dia (100)mm on pipes with dia (125) mm [3]; Wash out valve with dia (100)mm on pipes with dia (355) mm [1]; Wash out valve with dia (150)mm on pipes with dia (400) mm [2]; Wash out valve with dia (150)mm on pipes with dia (500) mm [5]; Air valves with dia (50mm) mm on pipes with dia(125)mm. [4]; Air valves with dia (65mm) mm on pipes with dia(280)mm. [1]; Air valves with dia (65mm) mm on pipes with dia(400)mm. [1]; Air valves with dia (65mm) mm on pipes with dia(500)mm. [6] |
| PW | **Potable Water Network** | 2026-12-03 → 2026-07-01 (-155d) | 2026-12-16 → 2027-09-28 (+286d) |  |  |  |  |
| T/C-PW | Testing and Commissioning of Potable Water Network | 2026-12-03 → 2026-07-01 A (-155d) | 2026-12-16 → 2027-09-28 (+286d) | 0% → 55% | 17d → -218d |  | resources Labor/Helper [4339.84 h] → Pipe with diameter 160 mm; in depth 1.5m - 3.0m [50]; Pipe with diameter 200mm; in depth 0.0m - 1.5m [8552]; Pipe with diameter 200mm; in depth 1.5m - 3.0m [100]; Pipe with diameter 355mm; in depth 0.0m - 1.5m [1400]; Pipe with diameter 355mm; in depth 1.5m - 3.0m [100]; Pipe with diameter 560mm; in depth 1.5m - 3.0m [1200]; Pipe with diameter 630mm; in depth 1.5m - 3.0m [2090]; Gate valves dia(200)mm on pipes with dia (200) mm. [75]; Butterfly valves with dia (355)mm on pipes with dia (355)mm. [18]; Butterfly valves with dia (560)mm on pipes with dia (560)mm. [2]; Butterfly valves with dia (630)mm on pipes with dia (630)mm. [5]; Wash out valve with dia (100)mm on pipes with dia (200) mm [2]; Wash out valve with dia (150)mm on pipes with dia (560) mm [1]; Wash out valve with dia (150)mm on pipes with dia (630) mm [3]; Air valves with dia (50mm) mm on pipes with dia(200)mm. [3]; Air valves with dia (65mm) mm on pipes with dia(355)mm. [1]; Air valves with dia (65mm) mm on pipes with dia(560)mm. [2]; Air valves with dia (65mm) mm on pipes with dia(630)mm. [4]; 3-outlet fire hydrant (2 x 2.5 inch and 1 x 4 inch) in the form of a separate dry vacuum cylinder [55]; In-situ, reinforced single concrete valve chambers on the pipeline, as defined and shown on the drawingss, and all necessary works and equipment (valve measured elsewhere), and supplies construction, cut and installation of pipe cutting, backfilling, in [18]; Wash out chamber; on 200 mm dia pipeline Depth 1.5 - 3m [2]; Wash out chamber; on 560 mm dia pipeline Depth 1.5 - 3m [1]; Wash out chamber; on 630 mm dia pipeline Depth 1.5 - 3m [3]; Air valve chamber; on 200 mm dia pipeline Depth 1.5 - 3 m [3]; Air valve chamber on 355 mm dia pipeline Depth 1.5 - 3 m [1]; Air valve chamber on 560 mm dia pipeline Depth 1.5 - 3 m [2]; Air valve chamber on 630 mm dia pipeline Depth 1.5 - 3 m [4] |
| SW | **Sewage Network** | 2026-12-19 → 2026-06-01 (-201d) | 2026-12-31 → 2027-10-10 (+283d) |  |  |  |  |
| T/C-SW | Testing and Commissioning of Sewage Network | 2026-12-19 → 2026-06-01 A (-201d) | 2026-12-31 → 2027-10-10 (+283d) | 0% → 80% | 4d → -228d |  | resources Labor/Helper [10343.6 h] → Nominal bore : 160mm; Depth : 0.0m - 1.5m [250]; Nominal bore : 160mm; Depth : 1.5m - 2.5m [650]; Nominal bore : 200mm; Depth : 0.0m - 1.5m [400]; Nominal bore : 200mm; Depth : 1.5m - 2.5m [750]; Nominal bore : 200mm; Depth : 2.5m - 3.5m [1200]; Nominal bore : 200mm; Depth : 3.5m - 4.5m [1350]; Nominal bore : 200mm; Depth : 4.5m -5.5m [700]; Nominal bore : 200mm; Depth : 5.5m - 6.5m [900]; Nominal bore : 250mm; Depth : 4.5m -5.5m [220]; Nominal bore : 250mm; Depth : 5.5m - 6.5m [180]; Nominal bore : 315mm; Depth : 4.5m -5.5m [180]; Nominal bore : 315mm; Depth : 6.5m - 7.5m [200]; Depth : 1.5 - 2.5m [200]; Depth : 2.5 - 3.5m [150]; Depth : 3.5 - 4.5m [150]; Depth : 4.5 - 5.5m [100]; Depth : 5.5 - 6.5m [600]; Depth : 6.5 -7.5m [700]; Depth : 6.5 -7.5m [500]; Depth :more than 7.5m [800]; Depth : 6.5 -7.5m [250]; Depth :more than 7.5m [600]; HDPE force main DN 800mm diameter, in trenches depth: 0- 1.5m [100]; HDPE force main DN 800mm diameter, in trenches depth: 1.51- 2.5m [2237]; Washout valve 200mm, on 800mm dia. pipe [2]; Air release valve 110 mm dia, on 800mm dia. pipe [3]; Washout valve chamber [2]; Air release valve chamber [3]; Depth: not exceeding 1.5m [13]; Depth: 1.5 - 2.5m [45]; Depth: 2.5 - 3.5m [10]; Depth: 3.5 - 4.5m [4]; Depth: 4.5 - 5.5m [5]; Depth: 5.5 - 6.5m [10]; Depth:6.5 - 7.5m [15]; Depth: more than 7.5m [1]; Depth: 2.5 - 3.5m [5]; Depth: 3.5 - 4.5m [3]; Depth: 4.5 - 5.5m [2]; Depth: 5.5 - 6.5m [2]; Depth:6.5 - 7.5m [7]; Constant speed drive, sewage pumps, centrifugal submersible type; 2 duty / 1 standby capable of delivering a flow rate of flow 424 l/s against a total head of 22m, rate includes provision of MCC [1]; Odour control system [1]; Gate valves for the pump station [3]; Non return valves for the pump station [3]; Penstok for the pump station [1]; Wet well structure internal size (5.5*4.0m) at 11.0m depth [1]; Valve chamber [1]; for the pump station [1]; basket screen [1]; Standby Diesel Generator Set 400/230KVA, 3P, 60Hz in Sound Attenuated Enclosure KVA rating by contractor as per total load onsite after pumps selection [1]; Supply, install, test and commission of manually operated fuel pump, The pump should be supplied with all accessories as specified. [1]; Supply, install, test and commission of Fuel pump with capacity of not less than 1 hour to fill the daily tank of generator at required head. [1]; supply, install, test & commission Automatic Transfer Switch ATS panel including all accessories & works required. [1]; Supply, install, test and commission under ground fuel tank for 3 days of continuous operation of the standby generator at full load. The tank should be supplied with all accessories such as black steel pipes, float switches with two contactors …etc. as s [1]; Plain concrete foundation [1]; Reinfirced concrete foundation [8]; Reinforced concrete columns [5]; Reinfirced concrete SOG [7]; Reinfirced concrete slab [9]; CMU walls with thickness 200mm [150]; Waterproofing for foundation [60]; Roof Insulation [45]; Acrylic paint on elevations including plastering [150]; Acrylic paint on internal wallsand ceiling including plastering [190]; Epoxy paint on floors [40]; Supply and install 2000*3000 mm double leaf manufacturer label shall pass the test requirements complete with accessories as per door schedule and material as approved by the Client. [1]; Plinth for odour control system [20]; 4Cx 185mm2 Cu/XLPE//PVC from nearest power supply (SEC) and generator to the ATS and from ATS to MCC-SPS [600]; 4Cx 95mm2 Cu/XLPE//PVC from nearest power supply (SEC) and generator to the ATS and from ATS to MCC-SPS [400]; 4Cx 10mm2 Cu/XLPE/SWA/PVC from MCC-SPS to ELP [50]; 4Cx 150mm2 + 1Cx25mm2 SUBMERGED RUBBER INSULATED FLEXIBLE CABLE from MCC to PUMP1& PUMP2. [210]; 4Cx 10mm2 + 1Cx10mm2 Cu/XLPE/PVC FROM MCC-SPS to DB-SPS [50]; 4Cx 10mm2 + 1Cx10mm2 Cu/XLPE/PVC FROM MCC-SPS to Penstok [100]; 4Cx 10mm2 + 1Cx10mm2 Cu/XLPE/PVC FROM MCC-SPS to Odor Control Unit [100]; 4Cx 6mm2 + 1Cx6mm2 Cu/XLPE/PVC FROM MCC-SPS to the mechanical bar screen [80]; 3Cx 6mm2 Cu/XLPE/PVC FROM MCC-SPS to the two fuel pumps. [100]; 3Cx 4mm2 Cu/XLPE/PVC to the AC. [80]; MCC [1]; Pump lifting arrangement with davit sockets, gantry and hoist, to be determined by the contractor to suit actual weight of pumps and as per drawings and specification. [2]; Surge protection system study [1]; Surge protection system [1]; Local Control Panel, IP 65 [4]; Isolator/disconnect switches IP65 [16]; DB-SPS Panel [4]; ELP Panel: phtocell , timer,40 Ampere, 3P, IP66,60Hz incomer MCCB & 5ways outgoing MCCB [4]; Electrical Hand Hole 600mm x 600mm x 800mm concrete hand hole with hot dip galvanized heavy duty steel cover [10]; Electrical Hand Hole 400mm x 400mm x 600mm concrete hand hole with hot dip galvanized heavy duty steel cover [10]; Surfaced Mounted Light [8]; 13A DOUBLE SWITCH SOCKET OUTLET (WEATHER PROOF) [8]; 20A SWITCH SOCKET OUTLET (FOR SPLIT UNIT), (WEATHER PROOF) [8]; Supply, install and test the following grounding and lightning system including ground wires, ground rods, inspection pits, terminations, bonding/clamping, civil works and all materials and accessories required to complete the work according to specificat [2]; Supply and install telephone and fire alarm system including smoke detector, cabinet, control panel, cables, conduits, switches, and other accessories to complete as per drawings and specifications. [1]; Supply, installation, testing and commissioning of all control, instrumentation( as shown on the P & ID drawings cable schedule) including all installation accessories such as termination kits, lugs, glands, cable containments, junction boxes , conduits, [2]; Supply, installation, testing and commissioning of all field instruments such as hydrostatic level meter, level switches, flow switch, and all necessary instruments including all installation accessories, etc. all as per specifications and design drawings [2]; DX wall mounted Split/AC [2]; CO2 fire extinguishers [2]; Powder fire extinguishers [2]; Double leaf swing or sliding main entrance gate [1]; 1.8m high Chainlink Fence (mesh opening size 60mm x 60mm) [254]; Single leaf personal access gate [1]; Flood lights shall be high pole with 250 watt HPS luminaire [4]; 1 - way duct - not exceeding 1.5m deep [1]; 2 - way duct - not exceeding 1.5m deep [1]; 8 - way duct - not exceeding 1.5m deep [1]; Earth pits [1]; Cable draw pit, 600x600mm [1]; Supply, installation, testing and commissioning of PLC system [2] |
| SD | **Storm Drainage Network** | 2026-12-21 → 2026-06-10 (-194d) | 2026-12-31 → 2027-09-12 (+255d) |  |  |  |  |
| T/C-SD | Testing and Commissioning of Storm Drainage Network | 2026-12-21 → 2026-06-10 A (-194d) | 2026-12-31 → 2027-09-12 (+255d) | 0% → 80% | 4d → -205d | TIE-SD-R09, TIE-SD-R10, TIE-SD-R11, TIE-SD-R14, TIE-SD-R15, TIE-SD-R16, TIE-SD-R17, T/C-DPO FF, TIE-SD-R18 → TIE-SD-R09, TIE-SD-R10, TIE-SD-R11, TIE-SD-R14, TIE-SD-R15, TIE-SD-R16, TIE-SD-R17, T/C-DPO FF, TIE-SD-R18, CO-R10.S03-WE-SD-160 | resources Labor/Helper [15661.2 h] → Pipe with diameter 400mm ; depth: 0.0m - 1.5m [1593]; Pipe with diameter 400mm ; depth: 1.51m - 2.5m [2033]; Pipe with diameter 400mm ; depth: 2.51m - 3.5m [50]; Pipe with diameter 500mm ; depth: 0.0m - 1.5m [50]; Pipe with diameter 500mm ; depth: 1.51m - 2.5m [2990]; Pipe with diameter 600mm ; depth: 0.0m - 1.5m [50]; Pipe with diameter 600mm ; depth: 1.51m - 2.5m [1429]; Pipe with diameter 600mm ; depth: 2.51m - 3.5m [173]; Pipe with diameter 700mm ; depth: 0.0m - 1.5m [50]; Pipe with diameter 700mm ; depth: 1.51m - 2.5m [2623]; Pipe with diameter 700mm ; depth: 2.51m - 3.5m [50]; Pipe with diameter 800mm ; depth: 0.0m - 1.5m [50]; Pipe with diameter 800mm ; depth: 1.51m - 2.5m [1310]; Pipe with diameter 800mm ; depth: 2.51m - 3.5m [70]; Pipe with diameter 900mm ; depth: 0.0m - 1.5m [50]; Pipe with diameter 900mm ; depth: 1.51m - 2.5m [854]; Pipe with diameter 900mm ; depth: 2.51 - 3.5m [57]; Pipe with diameter 1000mm ; depth: 0.0m - 1.5m [50]; Pipe with diameter 1000mm ; depth: 1.51m - 2.5m [427]; Pipe with diameter 1000mm ; depth: 2.51 - 3.5m [507]; Pipe with diameter 1100mm ; depth: 0.0m - 1.5m [50]; Pipe with diameter 1100mm ; depth: 1.51m - 2.5m [667]; Pipe with diameter 1100mm ; depth: 2.51 - 3.5m [174]; Pipe with diameter 1200mm ; depth: 1.51m - 2.5m [155]; Pipe with diameter 1200mm ; depth: 2.51 - 3.5m [483]; Pipe with diameter 300mm ; depth: 0 - 1.5m [8200]; Pipe with diameter 400mm ; depth: 0 - 1.5m [500]; MH ; depth: 0.0m - 1.5m [26]; MH ; depth: 1.51m - 2.5m [62]; MH ; depth: 2.51 - 3.5m [5]; MH ; depth: 0.0m - 1.5m [10]; MH ; depth: 1.51m - 2.5m [64]; MH ; depth: 1.51m - 2.5m with back drop less than 1.0 m [1]; MH ; depth: 2.51 - 3.5m [8]; MH ; depth: 2.51 - 3.5m with back drop less than 1.0 m [1]; MH ; depth: 1.51m - 2.5m [27]; MH ; depth: 2.51 - 3.5m [30]; MH ; depth: 2.51 - 3.5m [4]; MH ; depth: 3.51 - 4.5m [5]; Access opening with dimensions 1000*1000 mm [13]; Single Catch basin [290]; Double Catch basin [125]; Pipe encasement dia 300 mm [125]; Pipe encasement dia 400 mm [125]; Pipe encasement dia 500 mm [125]; Pipe encasement dia 600 mm [125]; Pipe encasement dia 700 mm [125]; Pipe encasement dia 800 mm [125]; Pipe encasement dia 900 mm [125]; Pipe encasement dia 1000 mm [125]; Pipe encasement dia 1100 mm [125]; Pipe encasement dia 1200 mm [125]; Box Conduit with dimensions 1200*1200 mm ; depth: 0.0m - 1.5m [125]; Box Conduit with dimensions 1200*1200 mm ; depth: 2.51m - 3.5m [125]; Box Conduit with dimensions 1500*1200 mm ; depth: 2.51m - 3.5m [125]; Box Conduit with dimensions 1500*1500 mm ; depth: 2.51m - 3.5m [125]; Box Conduit with dimensions 2000*1200 mm ; depth: 2.51m - 3.5m [125]; Concrete Outfall structure [125] |
| SL | **Street Lighting Network** | 2026-11-07 → 2026-09-05 (-63d) | 2026-11-26 → 2027-10-24 (+332d) |  |  |  |  |
| T/C-SL | Testing and Commissioning of Street Lighting Network | 2026-11-07 → 2026-09-05 A (-63d) | 2026-11-26 → 2027-10-24 (+332d) | 0% → 32% | 34d → -240d |  | resources Labor/Helper [1955.5 h] → Package Substation 33000/400V, 500kVA with RMU [6]; Supply, installation , test and operation of cables, Copper, (4Cx25mm²,Cu/XLPE/SWA/PVC +1x16mm² PVC/PVC) [21000]; Lighting poles with one arm, including the power distribution box, screws, cables, 12 meters in height. [355]; Lighting poles complete with two arms, including the power distribution box, screws, cables, 12 meters in height. [4]; Street Lighting( LED) Luminaire,(Type C) complete with control gear and lamp, ?.17000 Lumen [355]; Street Lighting( LED) Luminaire,(Type B) complete with control gear and lamp, ?.40600 Lumen [8]; Reinforced concrete foundation, for 12m high lighting columns With Drawpits [359]; Reinforced concrete base With fence for Distribution substation in accordance with SEC Specifications [6]; Earthing installation, lighting plants. [6]; Earthing installation, for Street lighting circuits, including earth rod in plastic chamber [50]; Earthing installation Lighting Panales [6]; Road crossing ducts, 4 way (4 x 100mm PVC) [780]; Drawpit with medium duty steel cover, size 600x600x1000mm, Type 18 [6]; Drawpit with medium duty steel cover, size 900x900x1200mm, Type 4 [64]; Street Lighting Feeder pillars , Includes foundation and draw pits [6] |
| TE | **Telecom Network** | 2026-11-10 → 2026-09-05 (-66d) | 2026-11-21 → 2027-09-20 (+303d) |  |  |  |  |
| T/C-TE | Testing and Commissioning of Telecom Network | 2026-11-10 → 2026-09-05 A (-66d) | 2026-11-21 → 2027-09-20 (+303d) | 0% → 32% | 24d → -227d |  | resources Labor/Helper [754.75 h] → 6-way ducts, 50mm dia. HDPE [6500]; Road crossing ducts (6-way) [550]; Manhole Type 1 (2000x1000x1000) [25]; Manhole Type 2 (2000x1000x1000) [52]; Manhole Type 3 (2000x1000x1000) [4] |
| MV | **Medium Voltage Network** | 2026-11-22 → 2026-09-05 (-78d) | 2026-12-02 → 2027-10-03 (+305d) |  |  |  |  |
| T/C-MV | Testing and Commissioning of Medium Voltage Network | 2026-11-22 → 2026-09-05 A (-78d) | 2026-12-02 → 2027-10-03 (+305d) | 0% → 50% | 24d → -227d |  | resources Labor/Helper [2006.96 h] → Excavation for Trench size 40cm wide and 80cm deep ( Maximum 1 cable 33kv) [2900]; Excavation for Trench size 60cm wide and 80cm deep ( for Max two cables 33 kv) [165]; Excavation for Trench size 90cm wide and 80cm deep ( Maximum 3 cable 33kv) [735]; Excavation for Trench size 120cm wide and 80cm deep ( Maximum 4cable 33kv) [250]; Excavation for Trench size 150cm wide and 80cm deep ( Maximum 4cable 33kv) [925]; Duct bank for (2) 33 kv cables [100]; Duct bank for (4) 33 kv cables [660]; Duct bank for (6) 33 kv cables [300]; 33kv 3Cx400 mm² Al XLPE / LLDPE /PVC Cable [19500]; 33kv 3Cx400 mm² Al XLPE /LLDPE/PVC [60]; 33kv 3Cx400 mm² Al XLPE/LLDPE Cable Termination [20]; Supply & installation of (33) kv MV Switch (RMU) for Normally-open Points (NOP) according to the Saudi Electric Company specification [3] |
| RD | **Road Works** | 2026-12-29 → 2026-08-16 (-135d) | 2027-01-03 → 2027-10-31 (+301d) |  |  |  |  |
| T/C-RD | Testing and Commissioning of Road Works | 2026-12-29 → 2026-08-16 A (-135d) | 2027-01-03 → 2027-10-31 (+301d) | 0% → 55% | 2d → -245.5d |  | resources Labor/Helper [14323.2 h] → Roadway Excavation for cuttings; on any type of material for all depths including trimming and Preparation of excavated surfaces and disposal. [232254]; Embankments to the ROW, with suitable material other than top soil or rock according to specifications [390972]; 300mm capping layer underneath subgrade , CBR?15% [49330]; 300mm thick Subgrade, including subgrade preparation, CBR?25% [49330]; Aggregate base course 200mm thick after compaction in two layers(Grading 1); CBR?80%; including watering, compaction and testing [32890]; Bituminous base course(Grading I - Class A), 70mm thick after compaction including Prime Coat (MC1) [11510]; Bituminous concrete wearing course, 50 mm thick, after compaction(Grading I - Class A), including tack coat (RC) [8222]; Interlocking block pavers for sidewalk/footpath 60mm thick on and including 30mm Sand Bedding, 200mm Aggregate subbase, all in accordance with authority standards and complete as per specifications [32500]; Extraover for Pedestrian ramps [82]; Precast Concrete Kerb, Type K1 [18200]; Precast Concrete Kerb, Type L1 [36111]; Retroreflective Thermoplastic White, Traffic lines [6200]; Retroreflective Thermoplastic Yellow, Traffic lines [950]; Retroreflective raised pavement markers(Type A) [1212]; Traffic signs, ground mounted, Sheet Alumenium, (breakaway) Single post, with all accessories [83]; Straight Arrow [190]; Right or Left Arrow [10]; Straight-Right Arrow [12]; Straight-Left Arrow [14] |
| 1 | **Independent Works** | 2026-08-25 → 2027-08-05 (+345d) | 2026-12-31 → 2027-10-10 (+283d) |  |  |  |  |
| T/C-DPO | Testing and Commissioning of Storm Drainage Ponds | 2026-08-25 → 2027-08-05 (+345d) | 2026-09-29 → 2027-09-08 (+344d) |  | 58d → -228d |  | resources Excavation in all type of soil for any depth including levelling, compaction and disposal of surplus material; Reinforced Concrete lining including blinding concrete, construction, isolation layers and expansion joints as shown in drawings.; Excavation in all type of soil to increase the depth of the existing pond for any depth including levelling, compaction and disposal of surplus material → Excavation in all type of soil for any depth including levelling, compaction and disposal of surplus material [49955]; Reinforced Concrete lining including blinding concrete, construction, isolation layers and expansion joints as shown in drawings. [40]; Excavation in all type of soil to increase the depth of the existing pond for any depth including levelling, compaction and disposal of surplus material [20425]; Reinforced Concrete lining including blinding concrete, construction, isolation layers and expansion joints as shown in drawings. [18] |
| T/C-SPS | Testing and Commissioning of Sewage Pump Stations | 2026-12-02 → 2027-09-09 (+281d) | 2026-12-31 → 2027-10-10 (+283d) |  | 4d → -228d |  | resources Site Preparation (including survey, removal and disposal of unsuitable materials, placement and compaction fill material to bring the pump station site to proposed grades); Supply and install 300mm thick Subgrade as per drawings and specifications.; Supply and install 200mm thick Aggregate base course; Supply and install Bituminous base course (Grading I - Class A), including Prime Coat (MC1) as per drawings and specifications.; Supply and install Bituminous concrete wearing course, (Grading I - Class A), including tack coat (RC2) as per drawings and specifications.; Supply and install Precast Concrete Kerb; Supply and install 60mm thick - Interlocking block pavers for sidewalk/footpath as per drawings and specifications.; Supply and install Traffic signs, ground mounted, Sheet Alumenium, (breakaway)Single post, with all accessories as per drawings and specifications.; Supply and install thermoplastic pavement road markings as per drawings and specifications.; surface drainage channel → Site Preparation (including survey, removal and disposal of unsuitable materials, placement and compaction fill material to bring the pump station site to proposed grades) [1]; Supply and install 300mm thick Subgrade as per drawings and specifications. [300]; Supply and install 200mm thick Aggregate base course [200]; Supply and install Bituminous base course (Grading I - Class A), including Prime Coat (MC1) as per drawings and specifications. [70]; Supply and install Bituminous concrete wearing course, (Grading I - Class A), including tack coat (RC2) as per drawings and specifications. [50]; Supply and install Precast Concrete Kerb [357]; Supply and install 60mm thick - Interlocking block pavers for sidewalk/footpath as per drawings and specifications. [450]; Supply and install Traffic signs, ground mounted, Sheet Alumenium, (breakaway)Single post, with all accessories as per drawings and specifications. [5]; Supply and install thermoplastic pavement road markings as per drawings and specifications. [1]; surface drainage channel [150] |
| 1 | **Handing over and close out** | 2026-10-17 → 2027-07-14 (+270d) | 2027-01-11 → 2027-11-08 (+301d) |  |  |  |  |
| 2 | **As-Built** | 2026-10-17 → 2027-07-14 (+270d) | 2027-01-05 → 2027-11-02 (+301d) |  |  |  |  |
| HO-180 | Submission As-Built Drawing For Irrigation Network | 2026-10-29 → 2027-07-14 (+258d) | 2026-11-11 → 2027-07-27 (+258d) |  | 33d → -179d |  |  |
| HO-210 | Submission As-Built Drawing For Pump station | 2026-12-02 → 2027-07-26 (+236d) | 2026-12-15 → 2027-08-08 (+236d) |  | 16d → -177d |  |  |
| HO-160 | Submission As-Built Drawing For Telecom Network | 2026-11-12 → 2027-07-28 (+258d) | 2026-11-25 → 2027-08-10 (+258d) |  | 33d → -179d |  |  |
| HO-130 | Submission As-Built Drawing For Pond | 2026-11-12 → 2027-08-05 (+266d) | 2026-11-25 → 2027-08-18 (+266d) |  | 33d → -186d |  |  |
| HO-170 | Submission As-Built Drawing For Medium Voltage Network | 2026-11-12 → 2027-08-22 (+283d) | 2026-11-25 → 2027-09-04 (+283d) |  | 33d → -200d |  |  |
| HO-200 | Submission As-Built Drawing For Storm Network | 2026-12-13 → 2027-08-24 (+254d) | 2026-12-26 → 2027-09-06 (+254d) |  | 7d → -202d |  |  |
| HO-190 | As-Built Drawing For Potable Water Network | 2026-11-19 → 2027-08-31 (+285d) | 2026-12-02 → 2027-09-13 (+285d) |  | 27d → -208d |  |  |
| HO-150 | Submission As-Built Drawing For Street Lighting Network | 2026-10-17 → 2027-09-12 (+330d) | 2026-10-29 → 2027-09-26 (+332d) |  | 56d → -218d |  |  |
| HO-100 | Submission As-Built Drawing For Sewage Network | 2026-12-29 → 2027-10-25 (+300d) | 2027-01-05 → 2027-11-02 (+301d) |  | 3d → -244.5d |  |  |
| HO-140 | Submission As-Built Drawing For Roads Network | 2026-12-29 → 2027-10-25 (+300d) | 2027-01-03 → 2027-10-31 (+301d) |  | 0d → -247.5d |  |  |
| 1 | **De-Mobilization Works** | 2027-01-04 → 2027-10-31 (+300d) | 2027-01-09 → 2027-11-06 (+301d) |  |  |  |  |
| HO-120 | Remove material stock & Storage area | 2027-01-04 → 2027-10-31 (+300d) | 2027-01-09 → 2027-11-06 (+301d) |  | 2d → -245.5d |  |  |
| HO-220 | Removing Portable Caravan | 2027-01-04 → 2027-10-31 (+300d) | 2027-01-09 → 2027-11-06 (+301d) |  | 2d → -245.5d |  |  |

| ID | Task | Start | Finish | Total float |
| --- | --- | --- | --- | --- |
| HO-230 | Remove Temporary Car Shades | 2027-01-04 → 2027-10-31 (+300d) | 2027-01-09 → 2027-11-06 (+301d) | 2d → -245.5d |
| 3 | **Handing Over** | 2027-01-04 → 2027-10-31 (+300d) | 2027-01-11 → 2027-11-08 (+301d) |  |
| HO-110 | Final Testing Work | 2027-01-04 → 2027-10-31 (+300d) | 2027-01-09 → 2027-11-06 (+301d) | 2d → -245.5d |
| HO-250 | Review B.O.Q Qty. to ensure compliance with the actual status | 2027-01-04 → 2027-10-31 (+300d) | 2027-01-09 → 2027-11-06 (+301d) | 0d → -247.5d |
| HO-260 | Review FIR Approval to ensure compliance with the actual status | 2027-01-04 → 2027-10-31 (+300d) | 2027-01-09 → 2027-11-06 (+301d) | 0d → -247.5d |
| HO-270 | Review the sample drawing to ensure compliance with the actual status | 2027-01-04 → 2027-10-31 (+300d) | 2027-01-09 → 2027-11-06 (+301d) | 0d → -247.5d |
| HO-240 | Final Walkthrough and Inspection | 2027-01-10 → 2027-11-06 (+300d) | 2027-01-11 → 2027-11-08 (+301d) | 0d → -247.5d |
| HO-280 | Punch List Completion | 2027-01-10 → 2027-11-06 (+300d) | 2027-01-11 → 2027-11-08 (+301d) | 0d → -247.5d |
