# Infrastructure Works of Area J -3rd Industrial City-Dammam-Phase 2 - Update 03-11-2026

How a schedule from Primavera P6 changed from version to version. A marks actual dates.

## Version 7 (data date 2026-11-03, saved 2026-11-04, file 03.DAM3-02-007-UPS Level 5 -03-11-2026.xer)

| ID | WBS | Task | Duration | Start | Finish | Predecessors | Complete | Total float | Constraint |
| --- | --- | --- | --- | --- | --- | --- | --- | --- | --- |
|  | MS | **Key Milestones** |  | 2025-01-12 | 2027-11-20 |  |  |  |  |
|  | CM | **Contractual Milestones** |  | 2025-01-12 | 2027-11-20 |  |  |  |  |
| MS-CS-PS |  | Project Commencement Date ( Site Handover ) | 0d | 2025-01-12 A | 2025-01-12 A |  | 100% |  |  |
| MS-CF-MOB |  | Completion of Mobilization Works | 0d | 2025-03-09 A | 2025-03-09 A | MOB-30, MOB-40, MOB-50, MOB-60, MOB-70, MOB-80 FF | 100% |  | finish on or before 2025-03-09 |
| MS-CF-EBL |  | Completion of Work Plan and Baseline Schedule | 0d | 2025-03-10 A | 2025-03-10 A | PRE-CON-MDC-20 FF, PRE-CON-MDC-30 FF, PRE-CON-MDC-40 FF, PRE-CON-MDC-50 FF, PRE-CON-MDC-60 FF, PRE-CON-MDC-70 FF, PRE-CON-MDC-80 FF | 100% |  | finish on or before 2025-02-11 |
| MS-CF-ENG |  | Completion of Submitting and Approval of Shopdrwing and Material | 0d | 2025-05-24 A | 2025-05-24 A | ENG-SH-PW-ML-A-110 FF, ENG-SH-SW-ML-A-110 FF, ENG-SH-SD-ML-A-110 FF, ENG-SH-SD-CB-A-110 FF, ENG-SH-IR-ML-A-110 FF, ENG-SH-IR-LL-A-110 FF, ENG-SH-SL-A-110 FF, ENG-SH-TE-A-110 FF, ENG-SH-MV-A-110 FF, ENG-SH-RD-A-130 FF, ENG-SH-MRK-A-110 FF, ENG-SH-HS-A-110 FF, ENG-SH-RD-A-110 FF, ENG-SH-RD-A-120 FF, ENG-MS-PW-ML-A-110 FF, ENG-MS-SW-ML-A-110 FF, ENG-MS-SD-ML-A-110 FF, ENG-MS-SD-CB-A-110 FF, ENG-MS-IR-ML-A-110 FF, ENG-MS-IR-LL-A-110 FF, ENG-MS-SL-A-110 FF, ENG-MS-TE-A-110 FF, ENG-MS-MV-A-110 FF, ENG-MS-RD-A-40 FF, ENG-MS-MRK-A-10 FF, ENG-MS-HS-A-10 FF, ENG-MS-RD-A-20 FF, ENG-MS-RD-A-30 FF, ENG-SH-PW-FH-A-110 FF, ENG-MT-SW-ML-A-110 FF, ENG-MT-SW-ML-A-100 FF, ENG-MT-SW-TF-A-100 FF, ENG-MT-SW-TF-A-120 FF, ENG-MT-SD-ML-A-100 FF, ENG-MT-SD-ML-A-110 FF, ENG-MT-SD-CB-A-110 FF, ENG-MT-SD-CB-A-100 FF, ENG-MT-SD-TF-A-100 FF, ENG-MT-SD-TF-A-110 FF, ENG-MT-SD-TF-A-120 FF, ENG-MT-PW-ML-A-100 FF, ENG-MT-PW-ML-A-110 FF, ENG-MT-PW-FH-A-100 FF, ENG-MT-PW-TF-A-100 FF, ENG-MT-IR-ML-A-100 FF, ENG-MT-IR-ML-A-110 FF, ENG-MT-MV-ML-A-100 FF, ENG-MT-MV-SS-A-100 FF, ENG-MT-MV-TF-A-100 FF, ENG-MT-SL-ML-A-100 FF, ENG-MT-SL-A-100 FF, ENG-MT-SL-A-110 FF, ENG-MT-SL-A-120 FF, ENG-MT-SL-DB-A-100 FF, ENG-MT-SL-TF-A-100 FF, ENG-MT-SL-TF-A-110 FF, ENG-MT-SL-ES-A-100 FF, ENG-MT-TE-A-100 FF, ENG-MT-TE-A-110 FF, ENG-MT-SPS-CV-A-110 FF, ENG-MT-DPO-CV-A-110 FF, ENG-MT-MV-A-10 FF, ENG-MT-SPS-MC-A-110 FF, ENG-MS-CTV-A-110 FF, ENG-SH-CTV-A-110 FF | 100% |  | finish on or before 2025-02-11 |
| MS-CF-TE |  | Completion of Construction Works for Telecom Network | 0d | 2027-06-05 | 2027-06-05 | CO-R09.S01-TE-130, CO-R09.S01-TE-160, CO-R10.S03-ES-TE-130, CO-R10.S03-ES-TE-160, CO-R11.S05-TE-130, CO-R11.S05-TE-160, CO-R14.S07-TE-130, CO-R14.S07-TE-160, CO-R15.S09-TE-130, CO-R15.S09-TE-160, CO-R16.S11-TE-130, CO-R16.S11-TE-160, CO-R17.S13-TE-130, CO-R17.S13-TE-160, CO-R17.S14-TE-160 FF, CO-R17.S14-TE-130 FF, CO-R16.S12-TE-160 FF, CO-R16.S12-TE-130 FF, CO-R15.S10-TE-160 FF, CO-R15.S10-TE-130 FF, CO-R14.S08-TE-160 FF, CO-R14.S08-TE-130 FF, CO-R11.S06-TE-160 FF, CO-R11.S06-TE-130 FF, CO-R10.S04-ES-TE-130 FF, CO-R10.S04-ES-TE-160 FF, CO-R09.S02-TE-160 FF, CO-R10.S03-WE-TE-130, CO-R10.S03-WE-TE-160, CO-R10.S04-WE-TE-130 FF, CO-R10.S04-WE-TE-160 FF |  | -227d | finish on or before 2026-09-01 |
| MS-CF-MV |  | Completion of Construction Works for Medium Voltage Network | 0d | 2027-06-24 | 2027-06-24 | CO-R09.S01-MV-120, CO-R09-MV-TF-100, ENG-SH-MV-A-110, CO-R09.S01-EW-100, CO-R09.S01-EW-110, CO-R18-MV-TF-120, CO-R10.S03-ES-MV-120, CO-R10-MV-TF-140, CO-R10.S03-ES-EW-100, CO-R10.S03-ES-EW-110, CO-R11.S05-MV-120, CO-R11-MV-TF-160, CO-R11.S05-EW-100, CO-R11.S05-EW-110, CO-R11-MV-TF-180, CO-R14.S07-EW-100, CO-R14.S07-EW-110, CO-R15.S09-MV-ML-270, CO-R15-MV-TF-200, CO-R15.S09-EW-200, CO-R15.S09-EW-110, CO-R16.S11-MV-ML-300, CO-R16-MV-TF-220, CO-R16.S11-EW-100, CO-R16.S11-EW-110, CO-R17.S13-MV-ML-330, CO-R17-MV-TF-240, CO-R17.S13-EW-100, CO-R17.S13-EW-110, ENG-MS-MV-A-110, CO-R10.S03-WE-MV-120, CO-R10.S03-WE-EW-100, CO-R10.S03-WE-EW-110 |  | -196d | finish on or before 2026-10-28 |
| MS-CF-IR |  | Completion of Construction Works for Irrigation Network | 0d | 2027-08-05 | 2027-08-05 | CO-R09.S01-IR-140, CO-R09-IR-TF-100, CO-R18-IR-TF-110, CO-R10.S03-ES-IR-130, CO-R10-IR-TF-120, CO-R11.S05-IR-130, CO-R11-IR-TF-130, CO-R14.S07-IR-130, CO-R11-IR-TF-140, CO-R15.S09-IR-130, CO-R15-IR-TF-150, CO-R16.S11-IR-130, CO-R16-IR-TF-160, CO-R17.S13-IR-130, CO-R17-IR-TF-170, CO-R10.S03-WE-IR-130 |  | -232d | finish on or before 2026-10-28 |
| MS-CF-SL |  | Completion of Construction Works for Street Lighting Network | 0d | 2027-08-11 | 2027-08-11 | CO-R09.S01-SL-120, CO-R09.S01-SL-130, CO-R09.S01-SL-160, CO-R09.S01-SL-180, CO-R09.S01-SL-190, CO-R09-SL-TF-100, CO-R09-SL-TF-110, CO-R09-SL-ES-100, CO-R09-SL-ES-110, CO-R18-SL-TF-120, CO-R18-SL-TF-130, CO-R10.S03-ES-SL-120, CO-R10.S03-ES-SL-130, CO-R10.S03-ES-SL-160, CO-R10.S03-ES-SL-180, CO-R10.S03-ES-SL-190, CO-R10-SL-TF-140, CO-R10-SL-TF-150, CO-R10-SL-ES-140, CO-R10-SL-ES-150, CO-R11-SL-TF-160, CO-R11-SL-TF-170, CO-R14.S07-SL-120, CO-R14.S07-SL-130, CO-R14.S07-SL-160, CO-R14.S07-SL-180, CO-R14.S07-SL-190, CO-R11-SL-TF-180, CO-R11-SL-TF-190, CO-R15-SL-TF-200, CO-R15-SL-TF-210, CO-R16-SL-TF-220, CO-R16-SL-TF-230, CO-R17-SL-TF-240, CO-R17-SL-TF-250, CO-R14.S08-SL-850 FF, CO-R09-SL-TF-380, CO-R10-SL-TF-380, CO-R11-SL-TF-380, CO-R14-SL-TF-380, CO-R15-SL-TF-380, CO-R16-SL-TF-380, CO-R17-SL-TF-380, CO-R18-SL-TF-380, CO-R15.S10-SL-130 FF, CO-R15.S10-SL-160 FF, CO-R15.S10-SL-190 FF, CO-R17.S14-SL-130 FF, CO-R17.S14-SL-160 FF, CO-R17.S14-SL-190 FF, CO-R18.S16-SL-130 FF, CO-R18.S16-SL-160 FF, CO-R18.S16-SL-190 FF, CO-R09.S02-SL-130 FF, CO-R10.S03-WE-SL-120, CO-R10.S03-WE-SL-130, CO-R10.S03-WE-SL-160, CO-R10.S03-WE-SL-180, CO-R10.S03-WE-SL-190 |  | -248d | finish on or before 2026-10-15 |
| MS-CF-SW |  | Completion of Construction Works for Sewage Network | 0d | 2027-08-26 | 2027-08-26 | CO-R09.S01-SW-130, CO-R09-SW-TF-100, CO-R09-SW-TF-110, CO-R09-SW-TF-120, CO-R18-SW-TF-100, CO-R18-SW-TF-110, CO-R18-SW-TF-130, CO-R10-SW-TF-100, CO-R10-SW-TF-110, CO-R10-SW-TF-130, CO-R11.S05-SW-130, CO-R11-SW-TF-100, CO-R11-SW-TF-110, CO-R11-SW-TF-130, CO-R14.S07-SW-130, CO-R14-SW-TF-100, CO-R14-SW-TF-110, CO-R14-SW-TF-130, CO-R15.S09-SW-130, CO-R15-SW-TF-100, CO-R15-SW-TF-110, CO-R15-SW-TF-130, CO-R16.S11-SW-130, CO-R16-SW-TF-100, CO-R16-SW-TF-110, CO-R16-SW-TF-130, CO-R17.S13-SW-130, CO-R17-SW-TF-100, CO-R17-SW-TF-110, CO-R17-SW-TF-130, CO-R11.S06-SW-130 FF, CO-R14.S08-SW-130 FF, CO-R09.S02-SW-130 FF |  | -241d | finish on or before 2026-11-08 |
| MS-CF-SD |  | Completion of Construction Works for Storm Drainage Network | 0d | 2027-09-15 | 2027-09-15 | CO-R09.S01-SD-130, CO-R09.S01-SD-170, CO-R09-SD-TF-100, CO-R09-SD-TF-110, CO-R09-SD-TF-120, CO-R09-SD-TF-130, CO-R18-SD-TF-100, CO-R18-SD-TF-110, CO-R18-SD-TF-120, CO-R18-SD-TF-130, CO-R10.S03-ES-SD-130, CO-R10.S03-ES-SD-170, CO-R10-SD-TF-100, CO-R10-SD-TF-110, CO-R10-SD-TF-120, CO-R10-SD-TF-130, CO-R11.S05-SD-130, CO-R11.S05-SD-170, CO-R11-SD-TF-100, CO-R11-SD-TF-110, CO-R11-SD-TF-120, CO-R11-SD-TF-130, CO-R14.S07-SD-130, CO-R14.S07-SD-170, CO-R14-SD-TF-110, CO-R14-SD-TF-120, CO-R14-SD-TF-130, CO-R15.S09-SD-130, CO-R15.S09-SD-170, CO-R15-SD-TF-100, CO-R15-SD-TF-110, CO-R15-SD-TF-120, CO-R15-SD-TF-130, CO-R16.S11-SD-130, CO-R16.S11-SD-170, CO-R16-SD-TF-100, CO-R16-SD-TF-110, CO-R16-SD-TF-120, CO-R16-SD-TF-130, CO-R17.S13-SD-130, CO-R17.S13-SD-170, CO-R17-SD-TF-100, CO-R17-SD-TF-110, CO-R17-SD-TF-120, CO-R17-SD-TF-130, CO-R14-SD-TF-100, CO-R10.S03-WE-SD-130, CO-R10.S03-WE-SD-170 |  | -232d | finish on or before 2026-12-12 |
| MS-CF-PW |  | Completion of Construction Works for Potable Water Network | 0d | 2027-09-26 | 2027-09-26 | CO-R09-PW-TF-100, CO-R09-PW-TF-110, CO-R09-PW-TF-120, CO-R18-PW-TF-100, CO-R18-PW-TF-110, CO-R18-PW-TF-120, CO-R10.S03-ES-PW-130, CO-R10.S03-ES-PW-160, CO-R10-PW-TF-100, CO-R10-PW-TF-110, CO-R10-PW-TF-120, CO-R11-PW-TF-100, CO-R11-PW-TF-110, CO-R11-PW-TF-120, CO-R14-PW-TF-100, CO-R14-PW-TF-110, CO-R14-PW-TF-120, CO-R15-PW-TF-100, CO-R15-PW-TF-110, CO-R15-PW-TF-120, CO-R16-PW-TF-100, CO-R16-PW-TF-110, CO-R16-PW-TF-120, CO-R17-PW-TF-100, CO-R17-PW-TF-110, CO-R17-PW-TF-120, CO-R10.S03-WE-PW-130, CO-R10.S03-WE-PW-160 |  | -257d | finish on or before 2026-11-18 |
| MS-CF-RD |  | Completion of Construction Works for Road Works | 0d | 2027-10-25 | 2027-10-25 | CO-R09-S1-RD-F-150 FF, CO-R09-S2-RD-F-170 FF, CO-R18-S15-RD-F-130 FF, CO-R18-S16-RD-F-160 FF, CO-R10-S03-RD-F-100 FF, CO-R10-S04-RD-F-130 FF, CO-R11-S05-RD-F-100 FF, CO-R11-S06-RD-F-130 FF, CO-R11-S07-RD-F-100 FF, CO-R11-S08-RD-F-130 FF, CO-R15-S09-RD-F-100 FF, CO-R15-S10-RD-F-130 FF, CO-R16-S11-RD-F-100 FF, CO-R16-S12-RD-F-130 FF, CO-R17-S13-RD-F-100 FF, CO-R17-S14-RD-F-130 FF, CO-R09-S1-RD-F-140 FF, CO-R09-S2-RD-F-160 FF, CO-R18-S15-RD-F-120 FF, CO-R18-S16-RD-F-140 FF, CO-R10-S03-RD-F-160 FF, CO-R10-S04-RD-F-170 FF, CO-R11-S05-RD-F-160 FF, CO-R11-S06-RD-F-170 FF, CO-R11-S07-RD-F-160 FF, CO-R11-S08-RD-F-170 FF, CO-R15-S09-RD-F-160 FF, CO-R15-S10-RD-F-170 FF, CO-R16-S11-RD-F-160 FF, CO-R16-S12-RD-F-170 FF, CO-R17-S13-RD-F-160 FF, CO-R17-S14-RD-F-170 FF, CO-R18.S15-RD-P-150 FF, CO-R18.S16-RD-P-150 FF |  | -258d |  |
| MS-CF-PF |  | Project Completion Date | 0d | 2027-11-20 | 2027-11-20 | MS-CF-IR, MS-CF-SL, MS-CF-TE, MS-CF-RD, HO-120 FF, HO-230 FF, HO-220 FF, HO-280 FF, CO-RM-SW-310 FF |  | -258d |  |
|  | CM1 | **Control Milestones** |  | 2025-04-29 | 2027-01-27 |  |  |  |  |
| MS-CS-SW |  | The Employer Approval NOC for Sewage Network | 0d | 2025-04-29 A | 2025-04-29 A | CO-R09.S01-SW-100 SS | 100% |  |  |
| MS-CS-SD |  | The Employer Approval NOC for Storm Drainage Network | 0d | 2025-04-30 A | 2025-04-30 A | CO-R09.S01-SD-100 SS | 100% |  |  |
| MS-CS-IR |  | The Employer Approval NOC for Irrigation Network | 0d | 2025-06-16 A | 2025-06-16 A | CO-R09.S01-IR-100 SS | 100% |  |  |
| MS-CS-PW |  | The Employer Approval NOC for Potable Water Network | 0d | 2025-06-19 A | 2025-06-19 A | CO-R09.S02-PW-100 SS | 100% |  |  |
| MS-CS-SL |  | The Employer Approval NOC for Street Lighting Network | 0d | 2025-07-08 A | 2025-07-08 A | CO-R09.S01-SL-100 SS | 100% |  |  |
| MS-CS-TE |  | The Employer Approval NOC for Telecom Network | 0d | 2025-07-08 A | 2025-07-08 A | CO-R09.S01-TE-100 SS | 100% |  |  |
| MS-CS-RD |  | The Employer Approval NOC for Roads Works | 0d | 2025-07-10 A | 2025-07-10 A | CO-R09.S01-RD-P-100 SS | 100% |  |  |
| MS-CS-MV |  | The Employer Approval NOC for Medium Voltage Network | 0d | 2027-01-27 | 2027-01-27 | CO-R09.S01-MV-100 SS |  | -257d |  |
|  | MM | **Intermediate Milestones** |  | 2027-05-22 | 2027-10-25 |  |  |  |  |
| MS-MO-20 |  | Completion of Storm Drainage Ponds | 0d | 2027-05-22 | 2027-05-22 | CO-SD-PO-K2-130 |  | -122d |  |
| MS-MO-10 |  | Completion of Sewage Pump Stations | 0d | 2027-06-12 | 2027-06-12 | CO-SW-PS7-SWS-110 |  | -140d |  |
| MS-MO-30 |  | Completion of Tie In To Existing Networks | 0d | 2027-10-25 | 2027-10-25 | TIE-SD-R09 FF, TIE-SW-R09 FF, TIE-PW-R09 FF, TIE-IR-R09 FF, TIE-R09-MV FF, TIE-R09-SL FF, TIE-R09-TE FF, TIE-SD-R10 FF, TIE-SW-R10 FF, TIE-PW-R10 FF, TIE-IR-R10 FF, TIE-R10-MV FF, TIE-R10-SL FF, TIE-R10-TE FF, TIE-R10-RD FF, TIE-SD-R11 FF, TIE-SW-R11 FF, TIE-PW-R11 FF, TIE-IR-R11 FF, TIE-R11-MV FF, TIE-R11-SL FF, TIE-R11-TE FF, TIE-SD-R14 FF, TIE-SW-R14 FF, TIE-PW-R14 FF, TIE-IR-R14 FF, TIE-R14-MV FF, TIE-R14-SL FF, TIE-R14-TE FF, TIE-R14-RD FF, TIE-SD-R15 FF, TIE-SW-R15 FF, TIE-PW-R15 FF, TIE-IR-R15 FF, TIE-R15-MV FF, TIE-R15-SL FF, TIE-R15-TE FF, TIE-SD-R16 FF, TIE-SW-R16 FF, TIE-PW-R16 FF, TIE-IR-R16 FF, TIE-R16-MV FF, TIE-R16-SL FF, TIE-R16-TE FF, TIE-SD-R17 FF, TIE-SW-R17 FF, TIE-PW-R17 FF, TIE-IR-R17 FF, TIE-R17-MV FF, TIE-R17-SL FF, TIE-R17-TE FF |  | -245d |  |
|  | MOB | **Preliminaries and Mobilization Works** |  | 2025-01-12 | 2025-03-12 |  |  |  |  |
|  | MOB | **Mobilization Works** |  | 2025-01-12 | 2025-03-12 |  |  |  |  |
| MOB-10 |  | Clear and Grub for Offices and Access Roads | 24d | 2025-01-12 A | 2025-03-12 A | MS-CS-PS SS | 100% |  |  |
| MOB-20 |  | Project Site Layout Plan Approval | 24d | 2025-01-12 A | 2025-03-12 A | MS-CS-PS SS | 100% |  |  |
| MOB-30 |  | Supply & Install of Project Supervision Offices | 24d | 2025-02-09 A | 2025-03-12 A | MS-CS-PS SS, MOB-20, MOB-10 | 100% |  |  |
| MOB-40 |  | Construction Project Store & Temporary Fence | 24d | 2025-02-09 A | 2025-03-12 A | MOB-10 | 100% |  |  |
| MOB-50 |  | Mobilization of Major Manpower | 24d | 2025-02-09 A | 2025-03-12 A | MOB-20 | 100% |  |  |
| MOB-60 |  | Mobilization of Major Equipments | 24d | 2025-02-09 A | 2025-03-12 A | MOB-20 | 100% |  |  |
| MOB-70 |  | Installation Project Sign Board | 24d | 2025-02-09 A | 2025-03-12 A | MOB-10 | 100% |  |  |
| MOB-80 |  | Construction Site Access Roads | 24d | 2025-02-09 A | 2025-03-12 A | MOB-10 | 100% |  |  |
|  | 2 | **Project Documents Provision From The Employer** |  | 2025-01-12 | 2025-02-12 |  |  |  |  |
| PRE-EMP-MDC-10 |  | Receive of Approved Project Master Plans of works (IFC) From The Employer | 0d | 2025-01-12 A | 2025-01-12 A | PRE-EMP-MDC-20 SS | 100% |  |  |
| PRE-EMP-MDC-20 |  | Receive of Site Benchmark Coordinates (Original Point) From The Employer | 0d | 2025-02-12 A | 2025-02-12 A | MS-CS-PS SS | 100% |  |  |
| PRE-EMP-MDC-30 |  | Receive of Site Surveying Details From The Employer | 0d | 2025-02-12 A | 2025-02-12 A | PRE-EMP-MDC-20 SS | 100% |  |  |
|  | 1 | **Project Main Documents From The Contractor** |  | 2025-01-12 | 2025-03-02 |  |  |  |  |
| PRE-CON-MDC-20 |  | Submission Project Baseline Schedule | 26d | 2025-01-12 A | 2025-03-01 A | MS-CS-PS SS | 100% |  |  |
| PRE-CON-MDC-30 |  | Submission Project Health & Safety Plan | 26d | 2025-01-12 A | 2025-03-02 A | MS-CS-PS SS | 100% |  |  |
| PRE-CON-MDC-40 |  | Submission Project Quality Control Plan | 26d | 2025-01-12 A | 2025-03-02 A | MS-CS-PS SS | 100% |  |  |
| PRE-CON-MDC-50 |  | Submission Project Surveying Report | 26d | 2025-01-12 A | 2025-03-02 A | MS-CS-PS SS | 100% |  |  |
| PRE-CON-MDC-60 |  | Submission Project Geotechnical Soil Report | 26d | 2025-01-12 A | 2025-03-02 A | MS-CS-PS SS | 100% |  |  |
| PRE-CON-MDC-70 |  | Submission Project Environmental Plan | 26d | 2025-01-12 A | 2025-03-02 A | MS-CS-PS SS | 100% |  |  |
| PRE-CON-MDC-80 |  | Submission Project Organization Chart and Communications Plan | 26d | 2025-01-12 A | 2025-03-02 A | MS-CS-PS SS | 100% |  |  |
|  | ENG | **Engineering Works** |  | 2025-01-12 | 2025-06-02 |  |  |  |  |
|  | DS | **Design Reviews** |  | 2025-01-12 | 2025-01-21 |  |  |  |  |
|  | INF | **Infrastructure Networks** |  | 2025-01-12 | 2025-01-21 |  |  |  |  |
|  | RD | **Road Works** |  | 2025-01-12 | 2025-01-21 |  |  |  |  |
| ENG-DS-RD-S-100 |  | Receive of Design Drawing Package for Road Works from Modon | 6d | 2025-01-12 A | 2025-01-18 A | PRE-EMP-MDC-10, PRE-EMP-MDC-20, PRE-EMP-MDC-30 | 100% |  |  |
| ENG-DS-RD-A-110 |  | Review and Comment of Design Drawings for Road Works by Contractor | 6d | 2025-01-15 A | 2025-01-21 A | ENG-DS-RD-S-100 FF+3d, ENG-DS-RD-S-100 SS+3d | 100% |  |  |
|  | SW | **Sewage Network** |  | 2025-01-12 | 2025-01-21 |  |  |  |  |
| ENG-DS-SW-S-100 |  | Receive of Design Drawing Package for Sewage Network from Modon | 6d | 2025-01-12 A | 2025-01-18 A | PRE-EMP-MDC-10, PRE-EMP-MDC-20, PRE-EMP-MDC-30 | 100% |  |  |
| ENG-DS-SW-A-110 |  | Review and Comment of Design Drawings for Sewage Network by Contractor | 6d | 2025-01-15 A | 2025-01-21 A | ENG-DS-SW-S-100 FF+3d, ENG-DS-SW-S-100 SS+3d | 100% |  |  |
|  | SD | **Storm Drainage Network** |  | 2025-01-12 | 2025-01-21 |  |  |  |  |
| ENG-DS-SD-S-100 |  | Receive of Design Drawing Package for Storm Drainage Network from Modon | 6d | 2025-01-12 A | 2025-01-18 A | PRE-EMP-MDC-10, PRE-EMP-MDC-20, PRE-EMP-MDC-30 | 100% |  |  |
| ENG-DS-SD-A-110 |  | Review and Comment of Design Drawings for Storm Drainage Network by Contractor | 6d | 2025-01-15 A | 2025-01-21 A | ENG-DS-SD-S-100 FF+3d, ENG-DS-SD-S-100 SS+3d | 100% |  |  |
|  | PW | **Potable Water Network** |  | 2025-01-12 | 2025-01-21 |  |  |  |  |
| ENG-DS-PW-S-100 |  | Receive of Design Drawing Package for Potable Water Network from Modon | 6d | 2025-01-12 A | 2025-01-18 A | PRE-EMP-MDC-10, PRE-EMP-MDC-20 | 100% |  |  |
| ENG-DS-PW-A-110 |  | Review and Comment of Design Drawings for Potable Water Network by Contractor | 6d | 2025-01-15 A | 2025-01-21 A | ENG-DS-PW-S-100 FF+3d, ENG-DS-PW-S-100 SS+3d | 100% |  |  |
|  | IR | **Irrigation Network** |  | 2025-01-12 | 2025-01-21 |  |  |  |  |
| ENG-DS-IR-S-100 |  | Receive of Design Drawing Package for Irrigation Network from Modon | 6d | 2025-01-12 A | 2025-01-18 A | PRE-EMP-MDC-10, PRE-EMP-MDC-20, PRE-EMP-MDC-30 | 100% |  |  |
| ENG-DS-IR-A-110 |  | Review and Comment of Design Drawings for Irrigation Network by Contractor | 6d | 2025-01-15 A | 2025-01-21 A | ENG-DS-IR-S-100 FF+3d, ENG-DS-IR-S-100 SS+3d | 100% |  |  |
|  | MV | **Medium Voltage Network** |  | 2025-01-12 | 2025-01-21 |  |  |  |  |
| ENG-DS-MV-S-100 |  | Receive of Design Drawing Package for Medium Voltage Network from Modon | 6d | 2025-01-12 A | 2025-01-18 A | PRE-EMP-MDC-10, PRE-EMP-MDC-20, PRE-EMP-MDC-30 | 100% |  |  |

| ID | WBS | Task | Duration | Start | Finish | Predecessors | Complete |
| --- | --- | --- | --- | --- | --- | --- | --- |
| ENG-DS-MV-A-110 |  | Review and Comment of Design Drawings for Medium Voltage Network by Contractor | 6d | 2025-01-15 A | 2025-01-21 A | ENG-DS-MV-S-100 FF+3d, ENG-DS-MV-S-100 SS+3d | 100% |
|  | SL | **Street Lighting Network** |  | 2025-01-12 | 2025-01-21 |  |  |
| ENG-DS-SL-S-100 |  | Receive of Design Drawing Package for Street Lighting Network from Modon | 6d | 2025-01-12 A | 2025-01-18 A | PRE-EMP-MDC-10, PRE-EMP-MDC-20, PRE-EMP-MDC-30 | 100% |
| ENG-DS-SL-A-110 |  | Review and Comment of Design Drawings for Street Lighting Network by Contractor | 6d | 2025-01-15 A | 2025-01-21 A | ENG-DS-SL-S-100 FF+3d, ENG-DS-SL-S-100 SS+3d | 100% |
|  | TE | **Telecom Network** |  | 2025-01-12 | 2025-01-21 |  |  |
| ENG-DS-TE-S-100 |  | Receive of Design Drawing Package for Telecom Network from Modon | 6d | 2025-01-12 A | 2025-01-18 A | PRE-EMP-MDC-10, PRE-EMP-MDC-20, PRE-EMP-MDC-30 | 100% |
| ENG-DS-TE-A-110 |  | Review and Comment of Design Drawings for Telecom Network by Contractor | 6d | 2025-01-15 A | 2025-01-21 A | ENG-DS-TE-S-100 FF+3d, ENG-DS-TE-S-100 SS+3d | 100% |
|  | 1 | **Superstructure Works** |  | 2025-01-12 | 2025-01-21 |  |  |
|  | SL | **Sewage Pump Stations ( PS06 )** |  | 2025-01-12 | 2025-01-21 |  |  |
| ENG-DS-SPS-S-100 |  | Receive of Design Drawing Package for Sewage Pump Stations from Modon | 6d | 2025-01-12 A | 2025-01-18 A | PRE-EMP-MDC-10, PRE-EMP-MDC-20, PRE-EMP-MDC-30 | 100% |
| ENG-DS-SPS-A-110 |  | Review and Comment of Design Drawings for Sewage Pump Stations by Contractor | 6d | 2025-01-15 A | 2025-01-21 A | ENG-DS-SPS-S-100 FF+3d, ENG-DS-SPS-S-100 SS | 100% |
|  | TE | **Storm Drainage Ponds ( PO-J1 , PO-J2 )** |  | 2025-01-12 | 2025-01-21 |  |  |
| ENG-DS-DPO-S-100 |  | Receive of Design Drawing Package for Storm Drainage Ponds from Modon | 6d | 2025-01-12 A | 2025-01-18 A | PRE-EMP-MDC-10, PRE-EMP-MDC-20, PRE-EMP-MDC-30 | 100% |
| ENG-DS-DPO-A-110 |  | Review and Comment of Design Drawings for Storm Drainage Ponds by Contractor | 6d | 2025-01-15 A | 2025-01-21 A | ENG-DS-DPO-S-100 FF+3d, ENG-DS-DPO-S-100 SS | 100% |
|  | SD | **Shop Drawings** |  | 2025-01-22 | 2025-05-19 |  |  |
|  | INF | **Infrastructure Networks** |  | 2025-01-22 | 2025-05-19 |  |  |
|  | 10 | **Road Works** |  | 2025-01-22 | 2025-05-19 |  |  |
|  | 1 | **Road Pavement Works** |  | 2025-01-22 | 2025-05-19 |  |  |
| ENG-SH-RD-S-100 |  | Submission Shop Drawings for Plan and Profile of Road Works | 7d | 2025-01-22 A | 2025-01-29 A | ENG-DS-RD-A-110 | 100% |
| ENG-SH-RD-S-110 |  | Submission Shop Drawings for Roads Typical Sections and Pavement Details | 7d | 2025-01-22 A | 2025-01-29 A | ENG-DS-RD-A-110 | 100% |
| ENG-SH-RD-S-120 |  | Submission Shop Drawings of Extraover for Pedestrian ramps | 7d | 2025-01-22 A | 2025-01-29 A | ENG-DS-RD-A-110 | 100% |
| ENG-SH-RD-S-130 |  | Submission Shop Drawings for Intersections of Road Works | 7d | 2025-01-22 A | 2025-01-29 A | ENG-DS-RD-A-110 | 100% |
| ENG-SH-RD-A-100 |  | Approval Shop Drawings for Plan and Profile of Road Works | 8d | 2025-01-29 A | 2025-02-09 A | ENG-SH-RD-S-100 | 100% |
| ENG-SH-RD-A-110 |  | Approval Shop Drawings for Roads Typical Sections and Pavement Details | 10d | 2025-01-30 A | 2025-03-19 A | ENG-SH-RD-S-110 | 100% |
| ENG-SH-RD-A-120 |  | Approval Shop Drawings of Extraover for Pedestrian ramps | 10d | 2025-01-30 A | 2025-03-19 A | ENG-SH-RD-S-120 | 100% |
| ENG-SH-RD-A-130 |  | Approval Shop Drawings for Intersections of Road Works | 10d | 2025-01-30 A | 2025-05-19 A | ENG-SH-RD-S-130, ENG-SH-RD-A-100 FF | 100% |
|  | 10 | **Pavement Works** |  | 2025-01-22 | 2025-03-19 |  |  |
| ENG-SH-HS-S-100 |  | Submission Shop Drawings for Hardscaping Works | 6d | 2025-01-22 A | 2025-01-28 A | ENG-DS-RD-A-110 | 100% |
| ENG-SH-HS-A-110 |  | Approval Shop Drawings for Hardscaping Works | 10d | 2025-01-29 A | 2025-03-19 A | ENG-SH-HS-S-100 | 100% |
|  | 11 | **Traffic Sign Boards and Road Marking** |  | 2025-01-22 | 2025-03-19 |  |  |
| ENG-SH-MRK-S-110 |  | Submission Shop Drawings for Roads Markings | 6d | 2025-01-22 A | 2025-01-28 A | ENG-DS-RD-A-110 | 100% |
| ENG-SH-TSB-S-100 |  | Submission Shop Drawings for Traffic Signs Boards | 6d | 2025-01-22 A | 2025-01-29 A | ENG-DS-RD-A-110 | 100% |
| ENG-SH-MRK-A-110 |  | Approval Shop Drawings for Roads Markings | 10d | 2025-01-29 A | 2025-03-19 A | ENG-SH-MRK-S-110, ENG-SH-TSB-A-100 FF | 100% |
| ENG-SH-TSB-A-100 |  | Approval Shop Drawings for Traffic Signs Boards | 10d | 2025-01-29 A | 2025-03-19 A | ENG-SH-TSB-S-100 | 100% |
|  | 2 | **Sewage Network** |  | 2025-01-22 | 2025-04-28 |  |  |
|  | 1 | **Main Line Sections** |  | 2025-01-22 | 2025-04-28 |  |  |
| ENG-SH-SW-ML-S-100 |  | Submission Shop Drawings for Main Line of Sewage Network | 5d | 2025-01-22 A | 2025-01-27 A | ENG-DS-SW-A-110 | 100% |
| ENG-SH-SW-ML-A-110 |  | Approval Shop Drawings for Main Line of Sewage Network | 7d | 2025-01-28 A | 2025-04-28 A | ENG-SH-SW-ML-S-100 | 100% |
|  | 9 | **Storm Drainage Network** |  | 2025-01-22 | 2025-02-09 |  |  |
|  | 1 | **Main Line Sections** |  | 2025-01-22 | 2025-02-09 |  |  |
| ENG-SH-SD-ML-S-100 |  | Submission Shop Drawings for Main Line of Storm Drainage Network | 6d | 2025-01-22 A | 2025-01-28 A | ENG-DS-SD-A-110 | 100% |
| ENG-SH-SD-ML-A-110 |  | Approval Shop Drawings for Main Line of Storm Drainage Network | 10d | 2025-01-29 A | 2025-02-09 A | ENG-SH-SD-ML-S-100 | 100% |
|  | 2 | **Catch Basin Sections** |  | 2025-01-22 | 2025-02-09 |  |  |
| ENG-SH-SD-CB-S-100 |  | Submission Shop Drawings for Catch Basin of Storm Drainage Network | 6d | 2025-01-22 A | 2025-01-28 A | ENG-DS-SD-A-110 | 100% |
| ENG-SH-SD-CB-A-110 |  | Approval Shop Drawings for Catch Basin of Storm Drainage Network | 10d | 2025-01-29 A | 2025-02-09 A | ENG-SH-SD-CB-S-100 | 100% |
|  | 3 | **Potable Water Network** |  | 2025-01-22 | 2025-05-13 |  |  |
|  | 1 | **Main Line Sections** |  | 2025-01-22 | 2025-05-13 |  |  |
| ENG-SH-PW-ML-S-100 |  | Submission Shop Drawings for Main Line of Potable Water Network | 5d | 2025-01-22 A | 2025-01-27 A | ENG-DS-PW-A-110 | 100% |
| ENG-SH-PW-ML-A-110 |  | Approval Shop Drawings for Main Line of Potable Water Network | 10d | 2025-01-28 A | 2025-05-13 A | ENG-SH-PW-ML-S-100 | 100% |
|  | 1 | **Main Line Sections** |  |  |  |  |  |
|  | 2 | **Fire Hydrant** |  | 2025-01-22 | 2025-04-02 |  |  |
| ENG-SH-PW-FH-S-100 |  | Submission Shop Drawings for Fire Hydrant Network | 5d | 2025-01-22 A | 2025-01-27 A | ENG-DS-PW-A-110 | 100% |
| ENG-SH-PW-FH-A-110 |  | Approval Shop Drawings for Fire Hydrant Network | 10d | 2025-01-28 A | 2025-04-02 A | ENG-SH-PW-FH-S-100 | 100% |
|  | 1 | **Main Line Sections** |  |  |  |  |  |
|  | 4 | **Irrigation Network** |  | 2025-01-22 | 2025-04-28 |  |  |
|  | 1 | **Main Line Sections** |  | 2025-01-22 | 2025-04-27 |  |  |
| ENG-SH-IR-ML-S-100 |  | Submission Shop Drawings for Main Line of Irrigation Network | 6d | 2025-01-22 A | 2025-01-28 A | ENG-DS-IR-A-110 | 100% |
| ENG-SH-IR-ML-A-110 |  | Approval Shop Drawings for Main Line of Irrigation Network | 10d | 2025-01-29 A | 2025-04-27 A | ENG-SH-IR-ML-S-100 | 100% |
|  | 2 | **Lateral Line Sections** |  | 2025-01-22 | 2025-04-28 |  |  |
| ENG-SH-IR-LL-S-100 |  | Submission Shop Drawings for Lateral Line of Irrigation Network | 6d | 2025-01-22 A | 2025-01-28 A | ENG-DS-IR-A-110 | 100% |
| ENG-SH-IR-LL-A-110 |  | Approval Shop Drawings for Lateral Line of Irrigation Network | 10d | 2025-01-29 A | 2025-04-28 A | ENG-SH-IR-LL-S-100 | 100% |
|  | 5 | **Medium Voltage Network** |  | 2025-01-22 | 2025-02-09 |  |  |
| ENG-SH-MV-S-100 |  | Submission Shop Drawings for Medium Voltage Network | 6d | 2025-01-22 A | 2025-01-28 A | ENG-DS-MV-A-110 | 100% |
| ENG-SH-MV-A-110 |  | Approval Shop Drawings for Medium Voltage Network | 10d | 2025-01-29 A | 2025-02-09 A | ENG-SH-MV-S-100 | 100% |
|  | 7 | **Street Lighting Network** |  | 2025-01-22 | 2025-02-09 |  |  |
| ENG-SH-SL-S-100 |  | Submission Shop Drawings for Street Lighting Network | 6d | 2025-01-22 A | 2025-01-28 A | ENG-DS-SL-A-110 | 100% |
| ENG-SH-SL-A-110 |  | Approval Shop Drawings for Street Lighting Network | 10d | 2025-01-29 A | 2025-02-09 A | ENG-SH-SL-S-100 | 100% |
|  | 8 | **Telecom Network** |  | 2025-01-22 | 2025-02-09 |  |  |
| ENG-SH-CTV-S-100 |  | Submission Shop Drawings for CCTV Complete System | 6d | 2025-01-22 A | 2025-01-28 A | ENG-DS-TE-A-110 | 100% |
| ENG-SH-TE-S-100 |  | Submission Shop Drawings for Telecom Network | 6d | 2025-01-22 A | 2025-01-28 A | ENG-DS-TE-A-110 | 100% |

| ID | WBS | Task | Duration | Start | Finish | Predecessors | Complete |
| --- | --- | --- | --- | --- | --- | --- | --- |
| ENG-SH-CTV-A-110 |  | Approval Shop Drawings for CCTV Complete System | 10d | 2025-01-29 A | 2025-02-09 A | ENG-SH-CTV-S-100 | 100% |
| ENG-SH-TE-A-110 |  | Approval Shop Drawings for Telecom Network | 10d | 2025-01-29 A | 2025-02-09 A | ENG-SH-TE-S-100 | 100% |
|  | 1 | **Superstructure Works** |  | 2025-01-22 | 2025-02-10 |  |  |
|  | SL | **Sewage Pump Stations ( PS 06 )** |  | 2025-01-22 | 2025-02-10 |  |  |
| ENG-SH-SPS-S-110 |  | Submission Shop Drawings Package for Sewage Pump Stations | 7d | 2025-01-22 A | 2025-01-29 A | ENG-DS-SPS-A-110 | 100% |
| ENG-SH-SPS-A-110 |  | Approval Shop Drawings Package for Sewage Pump Stations | 10d | 2025-01-30 A | 2025-02-10 A | ENG-SH-SPS-S-110 | 100% |
|  | TE | **Storm Drainage Ponds ( PO-J1 , PO-J2 )** |  | 2025-01-22 | 2025-02-10 |  |  |
| ENG-SH-DPO-S-100 |  | Submission Shop Drawings Package for Storm Drainage Ponds | 7d | 2025-01-22 A | 2025-01-29 A | ENG-DS-DPO-A-110 | 100% |
| ENG-SH-DPO-A-110 |  | Approval Shop Drawings Package for Storm Drainage Ponds | 10d | 2025-01-30 A | 2025-02-10 A | ENG-SH-DPO-S-100 | 100% |
|  | SD1 | **Method Statements** |  | 2025-01-22 | 2025-02-10 |  |  |
|  | INF | **Infrastructure Networks** |  | 2025-01-22 | 2025-02-10 |  |  |
|  | 10 | **Road Works** |  | 2025-01-22 | 2025-02-10 |  |  |
|  | 1 | **Road Pavement Works** |  | 2025-01-22 | 2025-02-10 |  |  |
| ENG-MS-RD-S-10 |  | Submission Method Statement for Plan and Profile of Road Works | 7d | 2025-01-22 A | 2025-01-29 A | ENG-DS-RD-A-110 | 100% |
| ENG-MS-RD-S-20 |  | Submission Method Statement for Roads Typical Sections and Pavement Details | 7d | 2025-01-22 A | 2025-01-29 A | ENG-DS-RD-A-110 | 100% |
| ENG-MS-RD-S-30 |  | Submission Method Statement of Extraover for Pedestrian ramps | 7d | 2025-01-22 A | 2025-01-29 A | ENG-DS-RD-A-110 | 100% |
| ENG-MS-RD-S-40 |  | Submission Method Statement for Intersections of Road Works | 7d | 2025-01-22 A | 2025-01-29 A | ENG-DS-RD-A-110 | 100% |
| ENG-MS-RD-A-10 |  | Approval Method Statement for Plan and Profile of Road Works | 8d | 2025-01-30 A | 2025-02-10 A | ENG-MS-RD-S-10 | 100% |
| ENG-MS-RD-A-20 |  | Approval Method Statement for Roads Typical Sections and Pavement Details | 10d | 2025-01-30 A | 2025-02-10 A | ENG-MS-RD-S-20 | 100% |
| ENG-MS-RD-A-30 |  | Approval Method Statement of Extraover for Pedestrian ramps | 10d | 2025-01-30 A | 2025-02-10 A | ENG-MS-RD-S-30 | 100% |
| ENG-MS-RD-A-40 |  | Approval Method Statement for Intersections of Road Works | 10d | 2025-01-30 A | 2025-02-10 A | ENG-MS-RD-S-40, ENG-MS-RD-A-10 FF | 100% |
|  | 10 | **Pavement Works** |  | 2025-01-22 | 2025-02-10 |  |  |
| ENG-MS-HS-S-10 |  | Submission Method Statement for Hardscaping Works | 7d | 2025-01-22 A | 2025-01-29 A | ENG-DS-RD-A-110 | 100% |
| ENG-MS-HS-A-10 |  | Approval Method Statement for Hardscaping Works | 10d | 2025-01-30 A | 2025-02-10 A | ENG-MS-HS-S-10 | 100% |
|  | 11 | **Traffic Sign Boards and Road Marking** |  | 2025-01-22 | 2025-02-10 |  |  |
| ENG-MS-MRK-S-10 |  | Submission Method Statement for Roads Markings | 7d | 2025-01-22 A | 2025-01-29 A | ENG-DS-RD-A-110 | 100% |
| ENG-MS-TSB-S-10 |  | Submission Method Statement for Traffic Signs Boards | 7d | 2025-01-22 A | 2025-01-29 A | ENG-DS-RD-A-110 | 100% |
| ENG-MS-MRK-A-10 |  | Approval Method Statement for Roads Markings | 10d | 2025-01-30 A | 2025-02-10 A | ENG-MS-MRK-S-10, ENG-MS-TSB-A-10 FF | 100% |
| ENG-MS-TSB-A-10 |  | Approval Method Statement for Traffic Signs Boards | 10d | 2025-01-30 A | 2025-02-10 A | ENG-MS-TSB-S-10 | 100% |
|  | 2 | **Sewage Network** |  | 2025-01-22 | 2025-02-08 |  |  |
|  | 1 | **Main Line Sections** |  | 2025-01-22 | 2025-02-08 |  |  |
| ENG-MS-SW-ML-S-100 |  | Submission Method Statement for Main Line of Sewage Network | 5d | 2025-01-22 A | 2025-01-27 A | ENG-DS-SW-A-110 | 100% |
| ENG-MS-SW-ML-A-110 |  | Approval Method Statement for Main Line of Sewage Network | 7d | 2025-01-28 A | 2025-02-08 A | ENG-MS-SW-ML-S-100 | 100% |
|  | 9 | **Storm Drainage Network** |  | 2025-01-22 | 2025-02-09 |  |  |
|  | 1 | **Main Line Sections** |  | 2025-01-22 | 2025-02-09 |  |  |
| ENG-MS-SD-ML-S-100 |  | Submission Method Statement for Main Line of Storm Drainage Network | 6d | 2025-01-22 A | 2025-01-28 A | ENG-DS-SD-A-110 | 100% |
| ENG-MS-SD-ML-A-110 |  | Approval Method Statement for Main Line of Storm Drainage Network | 10d | 2025-01-29 A | 2025-02-09 A | ENG-MS-SD-ML-S-100 | 100% |
|  | 2 | **Catch Basin Sections** |  | 2025-01-22 | 2025-02-09 |  |  |
| ENG-MS-SD-CB-S-100 |  | Submission Method Statement for Catch Basin of Storm Drainage Network | 6d | 2025-01-22 A | 2025-01-28 A | ENG-DS-SD-A-110 | 100% |
| ENG-MS-SD-CB-A-110 |  | Approval Method Statement for Catch Basin of Storm Drainage Network | 10d | 2025-01-29 A | 2025-02-09 A | ENG-MS-SD-CB-S-100 | 100% |
|  | 3 | **Potable Water Network** |  | 2025-01-22 | 2025-02-08 |  |  |
|  | 1 | **Main Line Sections** |  | 2025-01-22 | 2025-02-08 |  |  |
| ENG-MS-PW-ML-S-100 |  | Submission Method Statement for Main Line of Potable Water Network | 5d | 2025-01-22 A | 2025-01-27 A | ENG-DS-PW-A-110 | 100% |
| ENG-MS-PW-ML-A-110 |  | Approval Method Statement for Main Line of Potable Water Network | 10d | 2025-01-28 A | 2025-02-08 A | ENG-MS-PW-ML-S-100 | 100% |
|  | 4 | **Irrigation Network** |  | 2025-01-22 | 2025-02-09 |  |  |
|  | 1 | **Main Line Sections** |  | 2025-01-22 | 2025-02-09 |  |  |
| ENG-MS-IR-ML-S-100 |  | Submission Method Statement for Main Line of Irrigation Network | 6d | 2025-01-22 A | 2025-01-28 A | ENG-DS-IR-A-110 | 100% |
| ENG-MS-IR-ML-A-110 |  | Approval Method Statement for Main Line of Irrigation Network | 10d | 2025-01-29 A | 2025-02-09 A | ENG-MS-IR-ML-S-100 | 100% |
|  | 2 | **Lateral Line Sections** |  | 2025-01-22 | 2025-02-09 |  |  |
| ENG-MS-IR-LL-S-100 |  | Submission Method Statement for Lateral Line of Irrigation Network | 6d | 2025-01-22 A | 2025-01-28 A | ENG-DS-IR-A-110 | 100% |
| ENG-MS-IR-LL-A-110 |  | Approval Method Statement for Lateral Line of Irrigation Network | 10d | 2025-01-29 A | 2025-02-09 A | ENG-MS-IR-LL-S-100 | 100% |
|  | 5 | **Medium Voltage Network** |  | 2025-01-22 | 2025-02-09 |  |  |
| ENG-MS-MV-S-100 |  | Submission Method Statement for Medium Voltage Network | 6d | 2025-01-22 A | 2025-01-28 A | ENG-DS-MV-A-110 | 100% |
| ENG-MS-MV-A-110 |  | Approval Method Statement for Medium Voltage Network | 10d | 2025-01-29 A | 2025-02-09 A | ENG-MS-MV-S-100 | 100% |
|  | 7 | **Street Lighting Network** |  | 2025-01-22 | 2025-02-09 |  |  |
| ENG-MS-SL-S-100 |  | Submission Method Statement for Street Lighting Network | 6d | 2025-01-22 A | 2025-01-28 A | ENG-DS-SL-A-110 | 100% |
| ENG-MS-SL-A-110 |  | Approval Method Statement for Street Lighting Network | 10d | 2025-01-29 A | 2025-02-09 A | ENG-MS-SL-S-100 | 100% |
|  | 8 | **Telecom Network** |  | 2025-01-22 | 2025-02-09 |  |  |
| ENG-MS-CTV-S-100 |  | Submission Method Statement for CCTV Complete System | 6d | 2025-01-22 A | 2025-01-28 A | ENG-DS-TE-A-110 | 100% |
| ENG-MS-TE-S-100 |  | Submission Method Statement for Telecom Network | 6d | 2025-01-22 A | 2025-01-28 A | ENG-DS-TE-A-110 | 100% |
| ENG-MS-CTV-A-110 |  | Approval Method Statement for CCTV Complete System | 10d | 2025-01-29 A | 2025-02-09 A | ENG-MS-CTV-S-100 | 100% |
| ENG-MS-TE-A-110 |  | Approval Method Statement for Telecom Network | 10d | 2025-01-29 A | 2025-02-09 A | ENG-MS-TE-S-100 | 100% |
|  | 1 | **Superstructure Works** |  | 2025-01-22 | 2025-02-10 |  |  |
|  | SL | **Sewage Pump Stations ( PS 06 )** |  | 2025-01-22 | 2025-02-10 |  |  |
| ENG-MS-SPS-S-100 |  | Submission Method Statement Package for Sewage Pump Stations | 7d | 2025-01-22 A | 2025-01-29 A | ENG-DS-SPS-A-110 | 100% |
| ENG-MS-SPS-A-110 |  | Approval Method Statement Package for Sewage Pump Stations | 10d | 2025-01-30 A | 2025-02-10 A | ENG-MS-SPS-S-100 | 100% |
|  | TE | **Storm Drainage Ponds ( PO-J1 , PO-J2 )** |  | 2025-01-22 | 2025-02-10 |  |  |
| ENG-MS-DPO-S-100 |  | Submission Method Statement Package for Storm Drainage Ponds | 7d | 2025-01-22 A | 2025-01-29 A | ENG-DS-DPO-A-110 | 100% |
| ENG-MS-DPO-A-110 |  | Approval Method Statement Package for Storm Drainage Ponds | 10d | 2025-01-30 A | 2025-02-10 A | ENG-MS-DPO-S-100 | 100% |
|  | SD11 | **Material Submittals** |  | 2025-01-22 | 2025-06-02 |  |  |

| ID | WBS | Task | Duration | Start | Finish | Predecessors | Complete |
| --- | --- | --- | --- | --- | --- | --- | --- |
|  | 2 | **Short Lead Time Items** |  | 2025-01-22 | 2025-06-01 |  |  |
|  | INF | **Infrastructure Networks** |  | 2025-01-22 | 2025-06-01 |  |  |
|  | 10 | **Road Works** |  | 2025-01-22 | 2025-06-01 |  |  |
|  | MS | **Submission of Material** |  | 2025-01-22 | 2025-05-27 |  |  |
|  | 1 | **Roads Works** |  | 2025-01-22 | 2025-05-26 |  |  |
| ENG-MT-RD-S-100 |  | Material Submittal for Subgrade of Road Works | 12d | 2025-01-22 A | 2025-02-04 A | ENG-DS-RD-A-110 | 100% |
| ENG-MT-RD-S-110 |  | Material Submittal for Aggregate Base Course of Road Works | 12d | 2025-01-22 A | 2025-02-04 A | ENG-DS-RD-A-110 | 100% |
| ENG-MT-RD-S-120 |  | Material Submittal for Prime Coat of Road Works | 12d | 2025-05-13 A | 2025-05-26 A | ENG-DS-RD-A-110 | 100% |
| ENG-MT-RD-S-130 |  | Material Submittal for Bituminous Base & Wearing Courses of Road Works | 12d | 2025-05-13 A | 2025-05-26 A | ENG-DS-RD-A-110 | 100% |
|  | 10 | **Pavement Works** |  | 2025-01-27 | 2025-05-27 |  |  |
| ENG-MT-RD-S-140 |  | Material Submittal for Interlock Tiles of Landscaping | 12d | 2025-01-27 A | 2025-03-15 A | ENG-DS-RD-A-110 | 100% |
| ENG-MT-RD-S-150 |  | Material Submittal for Curbstones of Landscaping | 12d | 2025-04-26 A | 2025-05-27 A | ENG-DS-RD-A-110 | 100% |
|  | 11 | **Traffic Signs Boards and Roads Marking** |  | 2025-05-13 | 2025-05-26 |  |  |
| ENG-MT-TS-S-100 |  | Material Submittal for Traffic Signs Boards of Road Works | 12d | 2025-05-13 A | 2025-05-26 A | ENG-DS-RD-A-110 | 100% |
| ENG-MT-TS-S-110 |  | Material Submittal for Road Markings of Road Works | 12d | 2025-05-13 A | 2025-05-25 A | ENG-DS-RD-A-110 | 100% |
|  | NA | **Approval of Material** |  | 2025-01-27 | 2025-06-01 |  |  |
|  | 1 | **Road Works** |  | 2025-02-05 | 2025-06-01 |  |  |
| ENG-MT-RD-A-100 |  | Material Approval for Subgrade of Road Works | 5d | 2025-02-05 A | 2025-03-13 A | ENG-MT-RD-S-100 | 100% |
| ENG-MT-RD-A-110 |  | Material Approval for Aggregate Base Course of Road Works | 5d | 2025-02-05 A | 2025-03-13 A | ENG-MT-RD-S-110 | 100% |
| ENG-MT-RD-A-120 |  | Material Approval for Prime Coat of Road Works | 5d | 2025-05-27 A | 2025-06-01 A | ENG-MT-RD-S-120 | 100% |
| ENG-MT-RD-A-130 |  | Material Approval for Bituminous Base & Wearing Courses of Road Works | 5d | 2025-05-27 A | 2025-06-01 A | ENG-MT-RD-S-130 | 100% |
|  | 2 | **Pavement Works** |  | 2025-01-27 | 2025-04-27 |  |  |
| ENG-MT-RD-A-140 |  | Material Approval of Interlock Tiles for Landscaping | 10d | 2025-01-27 A | 2025-03-15 A | ENG-MT-RD-S-140 | 100% |
| ENG-MT-RD-A-150 |  | Material Approval of Curbstones for Landscaping | 10d | 2025-04-26 A | 2025-04-27 A | ENG-MT-RD-S-150 | 100% |
|  | 3 | **Traffic Signs Boards and Roads Marking** |  | 2025-05-26 | 2025-05-31 |  |  |
| ENG-MT-TS-A-110 |  | Material Approval for Road Markings of Road Works | 10d | 2025-05-26 A | 2025-05-31 A | ENG-MT-TS-S-110 | 100% |
| ENG-MT-TS-A-100 |  | Material Approval for Traffic Signs Boards of Road Works | 10d | 2025-05-27 A | 2025-05-31 A | ENG-MT-TS-S-100 | 100% |
|  | 2 | **Sewage Network** |  | 2025-01-22 | 2025-05-15 |  |  |
|  | MS | **Submission of Material** |  | 2025-01-22 | 2025-01-29 |  |  |
|  | 1 | **Main Line Sections** |  | 2025-01-22 | 2025-01-29 |  |  |
| ENG-MT-SW-ML-S-100 |  | Material Submittal for Manholes of Sewage Network | 5d | 2025-01-22 A | 2025-01-29 A | ENG-DS-SW-A-110 | 100% |
| ENG-MT-SW-ML-S-110 |  | Material Submittal for Main Line Pipes of Sewage Network | 7d | 2025-01-22 A | 2025-01-29 A | ENG-DS-SW-A-110 | 100% |
|  | 3 | **Testing and Finishes** |  | 2025-01-22 | 2025-01-29 |  |  |
| ENG-MT-SW-TF-S-100 |  | Material Submittal for Manhole Covers of Sewage Network | 7d | 2025-01-22 A | 2025-01-29 A | ENG-DS-SW-A-110 | 100% |
| ENG-MT-SW-TF-S-120 |  | Material Submittal for Membrane Insulation of Sewage Network | 7d | 2025-01-22 A | 2025-01-29 A | ENG-DS-SW-A-110 | 100% |
|  | MA | **Approval of Material** |  | 2025-01-30 | 2025-05-15 |  |  |
|  | 1 | **Main Line Sections** |  | 2025-01-30 | 2025-04-20 |  |  |
| ENG-MT-SW-ML-A-100 |  | Material Approval for Manholes of Sewage Network | 6d | 2025-01-30 A | 2025-04-20 A | ENG-MT-SW-ML-S-100 | 100% |
| ENG-MT-SW-ML-A-110 |  | Material Approval for Main Line Pipes of Sewage Network | 10d | 2025-01-30 A | 2025-02-10 A | ENG-MT-SW-ML-S-110 | 100% |
|  | 3 | **Testing and Finishes** |  | 2025-03-05 | 2025-05-15 |  |  |
| ENG-MT-SW-TF-A-100 |  | Material Approval for Manhole Covers of Sewage Network | 10d | 2025-03-05 A | 2025-05-15 A | ENG-MT-SW-TF-S-100 | 100% |
| ENG-MT-SW-TF-A-120 |  | Material Approval for Membrane Insulation of Sewage Network | 10d | 2025-03-06 A | 2025-03-15 A | ENG-MT-SW-TF-S-120 | 100% |
|  | 9 | **Storm Drainage Network** |  | 2025-01-22 | 2025-02-20 |  |  |
|  | MS | **Submission of Material** |  | 2025-01-22 | 2025-01-29 |  |  |
|  | 1 | **Main Line Sections** |  | 2025-01-22 | 2025-01-29 |  |  |
| ENG-MT-SD-ML-S-100 |  | Material Submittal for Manholes of Storm Drainage Network | 7d | 2025-01-22 A | 2025-01-29 A | ENG-DS-SD-A-110 | 100% |
| ENG-MT-SD-ML-S-110 |  | Material Submittal for Main Line Pipes of Storm Drainage Network | 7d | 2025-01-22 A | 2025-01-29 A | ENG-DS-SD-A-110 | 100% |
|  | 2 | **Catch Basin Sections** |  | 2025-01-22 | 2025-01-29 |  |  |
| ENG-MT-SD-CB-S-100 |  | Material Submittal for Catch Basins of Storm Drainage Network | 7d | 2025-01-22 A | 2025-01-29 A | ENG-DS-SD-A-110 | 100% |
| ENG-MT-SD-CB-S-110 |  | Material Submittal for Catch Basin Pipes of Storm Drainage Network | 7d | 2025-01-22 A | 2025-01-29 A | ENG-DS-SD-A-110 | 100% |
|  | 3 | **Testing and Finishes** |  | 2025-01-22 | 2025-01-29 |  |  |
| ENG-MT-SD-TF-S-100 |  | Material Submittal for Manhole Covers of Storm Drainage Network | 7d | 2025-01-22 A | 2025-01-29 A | ENG-DS-SD-A-110 | 100% |
| ENG-MT-SD-TF-S-110 |  | Material Submittal for Catch Basin Covers of Storm Drainage Network | 7d | 2025-01-22 A | 2025-01-29 A | ENG-DS-SD-A-110 | 100% |
| ENG-MT-SD-TF-S-120 |  | Material Submittal for Epoxy Insulation of Storm Drainage Network | 7d | 2025-01-22 A | 2025-01-29 A | ENG-DS-SD-A-110 | 100% |
|  | MA | **Approval of Material** |  | 2025-01-30 | 2025-02-20 |  |  |
|  | 1 | **Main Line Sections** |  | 2025-01-30 | 2025-02-10 |  |  |
| ENG-MT-SD-ML-A-100 |  | Material Approval for Manholes of Storm Drainage Network | 10d | 2025-01-30 A | 2025-02-10 A | ENG-MT-SD-ML-S-100 | 100% |
| ENG-MT-SD-ML-A-110 |  | Material Approval for Main Line Pipes of Storm Drainage Network | 10d | 2025-01-30 A | 2025-02-10 A | ENG-MT-SD-ML-S-110 | 100% |
|  | 2 | **Catch Basin Sections** |  | 2025-01-30 | 2025-02-13 |  |  |
| ENG-MT-SD-CB-A-100 |  | Material Approval for Catch Basins of Storm Drainage Network | 10d | 2025-01-30 A | 2025-02-12 A | ENG-MT-SD-CB-S-100 | 100% |
| ENG-MT-SD-CB-A-110 |  | Material Approval for Catch Basin Pipes of Storm Drainage Network | 10d | 2025-01-30 A | 2025-02-13 A | ENG-MT-SD-CB-S-110 | 100% |
|  | 3 | **Testing and Finishes** |  | 2025-01-30 | 2025-02-20 |  |  |
| ENG-MT-SD-TF-A-100 |  | Material Approval for Manhole Covers of Storm Drainage Network | 10d | 2025-01-30 A | 2025-02-20 A | ENG-MT-SD-TF-S-100 | 100% |
| ENG-MT-SD-TF-A-110 |  | Material Approval for Catch Basin Covers of Storm Drainage Network | 10d | 2025-01-30 A | 2025-02-20 A | ENG-MT-SD-TF-S-110 | 100% |
| ENG-MT-SD-TF-A-120 |  | Material Approval for Epoxy Insulation of Storm Drainage Network | 10d | 2025-01-30 A | 2025-02-20 A | ENG-MT-SD-TF-S-120 | 100% |
|  | 3 | **Potable Water Network** |  | 2025-01-22 | 2025-05-14 |  |  |
|  | MS | **Submission of Material** |  | 2025-01-22 | 2025-05-13 |  |  |
|  | 1 | **Main Line Sections** |  | 2025-01-22 | 2025-05-13 |  |  |
| ENG-MT-PW-ML-S-100 |  | Material Submittal for Main Line Pipes of Potable Water Network | 7d | 2025-01-22 A | 2025-01-29 A | ENG-DS-PW-A-110 | 100% |
| ENG-MT-PW-ML-S-110 |  | Material Submittal for Main Line Valves of Potable Water Network | 7d | 2025-01-22 A | 2025-05-13 A | ENG-DS-PW-A-110 | 100% |

| ID | WBS | Task | Duration | Start | Finish | Predecessors | Complete |
| --- | --- | --- | --- | --- | --- | --- | --- |
|  | 3 | **Fire Hydrant** |  | 2025-01-22 | 2025-02-15 |  |  |
| ENG-MT-PW-FH-S-100 |  | Material Submittal for Fire Hydrant of Potable Water Network | 7d | 2025-01-22 A | 2025-02-15 A | ENG-DS-PW-A-110 | 100% |
|  | 4 | **Testing and Finishes** |  | 2025-01-22 | 2025-02-10 |  |  |
| ENG-MT-PW-TF-S-100 |  | Material Submittal for Surface Box of Potable Water Network | 7d | 2025-01-22 A | 2025-02-10 A | ENG-DS-PW-A-110 | 100% |
|  | MA | **Approval of Material** |  | 2025-01-30 | 2025-05-14 |  |  |
|  | 1 | **Main Line Sections** |  | 2025-01-30 | 2025-05-14 |  |  |
| ENG-MT-PW-ML-A-100 |  | Material Approval for Main Line Pipes of Potable Water Network | 10d | 2025-01-30 A | 2025-02-10 A | ENG-MT-PW-ML-S-100 | 100% |
| ENG-MT-PW-ML-A-110 |  | Material Approval for Valves of Potable Water Network | 10d | 2025-01-30 A | 2025-05-14 A | ENG-MT-PW-ML-S-110 | 100% |
|  | 3 | **Fire Hydrant** |  | 2025-02-16 | 2025-03-14 |  |  |
| ENG-MT-PW-FH-A-100 |  | Material Approval for Fire Hydrants of Potable Water Network | 10d | 2025-02-16 A | 2025-03-14 A | ENG-MT-PW-FH-S-100 | 100% |
|  | 4 | **Testing and Finishes** |  | 2025-02-11 | 2025-03-14 |  |  |
| ENG-MT-PW-TF-A-100 |  | Material Approval for Surface Box of Potable Water Network | 0.63d | 2025-02-11 A | 2025-03-14 A | ENG-MT-PW-TF-S-100 | 100% |
|  | 4 | **Irrigation Network** |  | 2025-01-22 | 2025-05-14 |  |  |
|  | MS | **Submission of Material** |  | 2025-01-22 | 2025-01-29 |  |  |
|  | 1 | **Main Line Pipes** |  | 2025-01-22 | 2025-01-29 |  |  |
| ENG-MT-IR-ML-S-100 |  | Material Submittal for Main Line Pipes of Irrigation Network | 7d | 2025-01-22 A | 2025-01-29 A | ENG-DS-IR-A-110 | 100% |
| ENG-MT-IR-ML-S-110 |  | Material Submittal for Main Line Valves of Irrigation Network | 7d | 2025-01-22 A | 2025-01-29 A | ENG-DS-IR-A-110 | 100% |
|  | MA | **Approval of Material** |  | 2025-01-30 | 2025-05-14 |  |  |
|  | 1 | **Main Line Pipes** |  | 2025-01-30 | 2025-05-14 |  |  |
| ENG-MT-IR-ML-A-100 |  | Material Approval for Main Line Pipes of Irrigation Network | 10d | 2025-01-30 A | 2025-02-10 A | ENG-MT-IR-ML-S-100 | 100% |
| ENG-MT-IR-ML-A-110 |  | Material Approval for Valves of Irrigation Network | 10d | 2025-01-30 A | 2025-05-14 A | ENG-MT-IR-ML-S-110 | 100% |
|  | 5 | **Medium Voltage Network** |  | 2025-01-22 | 2025-05-13 |  |  |
|  | MS | **Submission of Material** |  | 2025-01-22 | 2025-01-29 |  |  |
|  | 1 | **Cabling Works** |  | 2025-01-22 | 2025-01-29 |  |  |
| ENG-MT-MV-ML-S-100 |  | Material Submittal for Medium Voltage Cables of Medium Voltage Network | 7d | 2025-01-22 A | 2025-01-29 A | ENG-DS-MV-A-110 | 100% |
|  | 2 | **RMU Concrete Works** |  | 2025-01-22 | 2025-01-29 |  |  |
| ENG-MT-MV-SS-S-100 |  | Material Submittal for RMU Concrete Foundations of Medium Voltage Network | 7d | 2025-01-22 A | 2025-01-29 A | ENG-DS-MV-A-110 | 100% |
|  | 3 | **Termination and Testing Works** |  | 2025-01-22 | 2025-01-29 |  |  |
| ENG-MT-MV-TF-S-100 |  | Material Submittal for Termination Kits of Medium Voltage Network | 7d | 2025-01-22 A | 2025-01-29 A | ENG-DS-MV-A-110 | 100% |
|  | MA | **Approval of Material** |  | 2025-01-30 | 2025-05-13 |  |  |
|  | 1 | **Cabling Works** |  | 2025-01-30 | 2025-05-13 |  |  |
| ENG-MT-MV-ML-A-100 |  | Material Approval for Medium Voltage Cables of Medium Voltage Network | 10d | 2025-01-30 A | 2025-05-13 A | ENG-MT-MV-ML-S-100 | 100% |
|  | 2 | **RMU Concrete Works** |  | 2025-01-30 | 2025-02-20 |  |  |
| ENG-MT-MV-SS-A-100 |  | Material Approval for RMU Concrete Foundations of Medium Voltage Network | 10d | 2025-01-30 A | 2025-02-20 A | ENG-MT-MV-SS-S-100 | 100% |
|  | 3 | **Termination and Testing Works** |  | 2025-01-30 | 2025-02-10 |  |  |
| ENG-MT-MV-TF-A-100 |  | Material Approval for Termination and Joints Kits of Medium Voltage Network | 10d | 2025-01-30 A | 2025-02-10 A | ENG-MT-MV-TF-S-100 | 100% |
|  | 7 | **Street Lighting Network** |  | 2025-01-22 | 2025-05-24 |  |  |
|  | MS | **Submission of Material** |  | 2025-01-22 | 2025-01-29 |  |  |
|  | 1 | **Cabling Works** |  | 2025-01-22 | 2025-01-29 |  |  |
| ENG-MT-SL-ML-S-100 |  | Material Submittal for Lighting Cables of Street Lighting Network | 7d | 2025-01-22 A | 2025-01-29 A | ENG-DS-SL-A-110 | 100% |
|  | 2 | **Lighting Poles Works** |  | 2025-01-22 | 2025-01-29 |  |  |
| ENG-MT-SL-S-100 |  | Material Submittal for Lighting Poles Concrete Foundations of Street Lighting Network | 7d | 2025-01-22 A | 2025-01-29 A | ENG-DS-SL-A-110 | 100% |
| ENG-MT-SL-S-110 |  | Material Submittal for Lighting Poles of Street Lighting Network | 7d | 2025-01-22 A | 2025-01-29 A | ENG-DS-SL-A-110 | 100% |
| ENG-MT-SL-S-120 |  | Material Submittal for Lighting Fixtures of Street Lighting Network | 7d | 2025-01-22 A | 2025-01-29 A | ENG-DS-SL-A-110 | 100% |
|  | 3 | **Distribution Panel Board** |  | 2025-01-22 | 2025-01-29 |  |  |
| ENG-MT-SL-DB-S-100 |  | Material Submittal for Lighting Distrubution Panel Boards of Street Lighting Network | 7d | 2025-01-22 A | 2025-01-29 A | ENG-DS-SL-A-110 | 100% |
|  | 5 | **Termination and Testing Works** |  | 2025-01-22 | 2025-01-29 |  |  |
| ENG-MT-SL-TF-S-100 |  | Material Submittal for Fuse Boxes of Street Lighting Network | 7d | 2025-01-22 A | 2025-01-29 A | ENG-DS-SL-A-110 | 100% |
| ENG-MT-SL-TF-S-110 |  | Material Submittal for Cable Lugs of Street Lighting Network | 7d | 2025-01-22 A | 2025-01-29 A | ENG-DS-SL-A-110 | 100% |
|  | 4 | **Earthing System Works** |  | 2025-01-22 | 2025-01-29 |  |  |
| ENG-MT-SL-ES-S-100 |  | Material Submittal for Lighting Earthing of Street Lighting Network | 7d | 2025-01-22 A | 2025-01-29 A | ENG-DS-SL-A-110 | 100% |
|  | MA | **Approval of Material** |  | 2025-01-30 | 2025-05-24 |  |  |
|  | 1 | **Cabling Works** |  | 2025-01-30 | 2025-05-14 |  |  |
| ENG-MT-SL-ML-A-100 |  | Material Approval for Lighting Cables of Street Lighting Network | 10d | 2025-01-30 A | 2025-05-14 A | ENG-MT-SL-ML-S-100 | 100% |
|  | 2 | **Lighting Poles Works** |  | 2025-01-30 | 2025-05-24 |  |  |
| ENG-MT-SL-A-100 |  | Material Approval for Lighting Poles Concrete Foundations of Street Lighting Network | 10d | 2025-01-30 A | 2025-05-21 A | ENG-MT-SL-S-100 | 100% |
| ENG-MT-SL-A-110 |  | Material Approval for Lighting Poles of Street Lighting Network | 10d | 2025-05-13 A | 2025-05-24 A | ENG-MT-SL-S-110 | 100% |
| ENG-MT-SL-A-120 |  | Material Approval for Lighting Fixtures of Street Lighting Network | 10d | 2025-05-13 A | 2025-05-24 A | ENG-MT-SL-S-120 | 100% |
|  | 3 | **Distribution Panel Board** |  | 2025-01-30 | 2025-02-10 |  |  |
| ENG-MT-SL-DB-A-100 |  | Material Approval for Distrubution Panel Boards of Street Lighting Network | 10d | 2025-01-30 A | 2025-02-10 A | ENG-MT-SL-DB-S-100 | 100% |
|  | 4 | **Earthing System Works** |  | 2025-01-30 | 2025-02-10 |  |  |
| ENG-MT-SL-ES-A-100 |  | Material Approval for Lighting Earthing of Street Lighting Network | 10d | 2025-01-30 A | 2025-02-10 A | ENG-MT-SL-ES-S-100 | 100% |
|  | 5 | **Termination and Testing Works** |  | 2025-01-30 | 2025-02-10 |  |  |
| ENG-MT-SL-TF-A-100 |  | Material Approval for Fuse Boxes of Street Lighting Network | 10d | 2025-01-30 A | 2025-02-10 A | ENG-MT-SL-TF-S-100 | 100% |
| ENG-MT-SL-TF-A-110 |  | Material Approval for Cable Lugs of Street Lighting Network | 10d | 2025-01-30 A | 2025-02-10 A | ENG-MT-SL-TF-S-110 | 100% |
|  | 8 | **Telecom Network** |  | 2025-01-22 | 2025-05-14 |  |  |
|  | MS | **Submission of Material** |  | 2025-01-22 | 2025-01-29 |  |  |
|  | 1 | **Ducts Works** |  | 2025-01-22 | 2025-01-29 |  |  |
| ENG-MT-TE-S-100 |  | Material Submittal for Ducts of Telecom Network | 7d | 2025-01-22 A | 2025-01-29 A | ENG-DS-TE-A-110 | 100% |
|  | 3 | **Manholes Works** |  | 2025-01-22 | 2025-01-29 |  |  |

| ID | WBS | Task | Duration | Start | Finish | Predecessors | Complete | Total float |
| --- | --- | --- | --- | --- | --- | --- | --- | --- |
| ENG-MT-TE-S-110 |  | Material Submittal for Manholes of Telecom Network | 7d | 2025-01-22 A | 2025-01-29 A | ENG-DS-TE-A-110 | 100% |  |
|  | MA | **Approval of Material** |  | 2025-01-30 | 2025-05-14 |  |  |  |
|  | 1 | **Ducts Works** |  | 2025-01-30 | 2025-02-10 |  |  |  |
| ENG-MT-TE-A-100 |  | Material Approval for Ducts of Telecom Network | 10d | 2025-01-30 A | 2025-02-10 A | ENG-MT-TE-S-100 | 100% |  |
|  | 3 | **Manholes Works** |  | 2025-01-30 | 2025-05-14 |  |  |  |
| ENG-MT-TE-A-110 |  | Material Approval for Manholes of Telecom Network | 10d | 2025-01-30 A | 2025-05-14 A | ENG-MT-TE-S-110 | 100% |  |
|  | 1 | **Superstructure Works** |  | 2025-01-22 | 2025-05-11 |  |  |  |
|  | SL | **Sewage Pump Stations ( PS 06 )** |  | 2025-01-22 | 2025-05-11 |  |  |  |
|  | 1 | **Submission of Material** |  | 2025-01-22 | 2025-05-11 |  |  |  |
| ENG-MT-SPS-CV-S-100 |  | Material Submittal for Civil Works for Sewage Pump Stations | 7d | 2025-01-22 A | 2025-05-11 A | ENG-DS-SW-A-110 | 100% |  |
|  | 2 | **Approval of Material** |  | 2025-01-30 | 2025-05-11 |  |  |  |
| ENG-MT-SPS-CV-A-110 |  | Material Approval for Civil Works for Sewage Pump Stations | 10d | 2025-01-30 A | 2025-05-11 A | ENG-MT-SPS-CV-S-100 | 100% |  |
|  | TE | **Storm Drainage Ponds ( PO-J1 , PO-J2 )** |  | 2025-01-22 | 2025-03-18 |  |  |  |
|  | 1 | **Submission of Material** |  | 2025-01-22 | 2025-01-29 |  |  |  |
| ENG-MT-DPO-CV-S-100 |  | Material Submittal for Civil Works for Storm Drainage Ponds | 7d | 2025-01-22 A | 2025-01-29 A | ENG-DS-SD-A-110 | 100% |  |
|  | 2 | **Approval of Material** |  | 2025-01-30 | 2025-03-18 |  |  |  |
| ENG-MT-DPO-CV-A-110 |  | Material Approval for Civil Works for Storm Drainage Ponds | 10d | 2025-01-30 A | 2025-03-18 A | ENG-MT-DPO-CV-S-100 | 100% |  |
|  | 1 | **Long Lead Time Items** |  | 2025-02-01 | 2025-06-02 |  |  |  |
|  | 1 | **Infrastructure Networks** |  | 2025-02-01 | 2025-05-23 |  |  |  |
|  | 1 | **RMU Works of Medium Voltage Network** |  | 2025-02-01 | 2025-05-23 |  |  |  |
|  | MS | **Submission of Material** |  | 2025-02-01 | 2025-02-12 |  |  |  |
| ENG-MT-MV-S-10 |  | Material Submittal for RMU of Medium Voltage Network | 7d | 2025-02-01 A | 2025-02-12 A | ENG-DS-MV-A-110 | 100% |  |
|  | MA | **Approval of Material** |  | 2025-05-01 | 2025-05-23 |  |  |  |
| ENG-MT-MV-A-10 |  | Material Approval for RMU of Medium Voltage Network | 2d | 2025-05-01 A | 2025-05-23 A | ENG-MT-MV-S-10 | 100% |  |
|  | 2 | **Superstructure Works** |  | 2025-05-11 | 2025-06-02 |  |  |  |
|  | SL | **Sewage Pump Stations ( PS 06 )** |  | 2025-05-11 | 2025-06-02 |  |  |  |
|  | 1 | **Submission of Material** |  | 2025-05-11 | 2025-05-19 |  |  |  |
| ENG-MT-SPS-MC-S-100 |  | Material Submittal for Electromechanical Works for Sewage Pump Stations | 7d | 2025-05-11 A | 2025-05-19 A | ENG-DS-SW-A-110 | 100% |  |
|  | 2 | **Approval of Material** |  | 2025-05-20 | 2025-06-02 |  |  |  |
| ENG-MT-SPS-MC-A-110 |  | Material Approval for Electromechanical Works for Sewage Pump Stations | 10d | 2025-05-20 A | 2025-06-02 A | ENG-MT-SPS-MC-S-100 | 100% |  |
|  | PROC | **Procurement Cycle** |  | 2025-02-11 | 2027-01-31 |  |  |  |
|  | NLL | **Short Lead Time Items** |  | 2025-02-11 | 2027-01-31 |  |  |  |
|  | INF | **Infrastructure Networks** |  | 2025-02-11 | 2027-01-31 |  |  |  |
|  | RD | **Road Works** |  | 2025-02-11 | 2027-01-25 |  |  |  |
|  | PO | **Issuance of Purchase Orders** |  | 2025-02-11 | 2025-06-12 |  |  |  |
|  | 1 | **Road Works** |  | 2025-02-11 | 2025-02-25 |  |  |  |
| PRO-RD-PO-100 |  | Issuance of Purchase Order for Subgrade of Road Works | 12d | 2025-02-11 A | 2025-02-25 A | ENG-MT-RD-A-100, ENG-SH-RD-A-100, ENG-MS-RD-A-10 | 100% |  |
| PRO-RD-PO-110 |  | Issuance of Purchase Order for Aggregate Base Course of Road Works | 12d | 2025-02-11 A | 2025-02-25 A | ENG-MT-RD-A-110, ENG-SH-RD-A-100, ENG-MS-RD-A-10 | 100% |  |
| PRO-RD-PO-120 |  | Issuance of Purchase Order for Prime Coat of Road Works | 12d | 2025-02-11 A | 2025-02-25 A | ENG-MT-RD-A-120, ENG-SH-RD-A-100, ENG-MS-RD-A-10 | 100% |  |
| PRO-RD-PO-130 |  | Issuance of Purchase Order for Bituminous Base & Wearing Courses of Road Works | 12d | 2025-02-11 A | 2025-02-25 A | ENG-MT-RD-A-130, ENG-SH-RD-A-100, ENG-MS-RD-A-10 | 100% |  |
|  | 2 | **Pavement Works** |  | 2025-02-17 | 2025-03-04 |  |  |  |
| PRO-RD-PO-140 |  | Issuance of Purchase Order for Interlock Tiles of Landscaping | 12d | 2025-02-17 A | 2025-03-04 A | ENG-MT-RD-A-140, ENG-SH-HS-A-110, ENG-MS-HS-A-10 | 100% |  |
| PRO-RD-PO-150 |  | Issuance of Purchase Order for Curbstones of Landscaping | 12d | 2025-02-17 A | 2025-03-04 A | ENG-MT-RD-A-150, ENG-SH-HS-A-110, ENG-MS-HS-A-10 | 100% |  |
|  | 3 | **Traffic Signs Boards and Roads Marking** |  | 2025-06-01 | 2025-06-12 |  |  |  |
| PRO-RD-PO-160 |  | Issuance of Purchase Order for Traffic Signs Boards of Road Works | 12d | 2025-06-01 A | 2025-06-12 A | ENG-MT-TS-A-100, ENG-SH-TSB-A-100, ENG-MS-TSB-A-10 | 100% |  |
| PRO-RD-PO-170 |  | Issuance of Purchase Order for Road Markings of Road Works | 12d | 2025-06-01 A | 2025-06-12 A | ENG-MT-TS-A-110, ENG-SH-MRK-A-110, ENG-MS-MRK-A-10 | 100% |  |
|  | MF | **Manufacturing of Material** |  | 2025-04-01 | 2025-06-01 |  |  |  |
|  | 1 | **Road Works** |  | 2025-04-01 | 2025-06-01 |  |  |  |
| PRO-RD-MF-100 |  | Manufacturing of Subgrade for Road Works | 90d | 2025-04-01 A | 2025-05-29 A | PRO-RD-PO-100 | 100% |  |
| PRO-RD-MF-110 |  | Manufacturing of Aggregate Base Course for Road Works | 110d | 2025-05-11 A | 2025-06-01 A | PRO-RD-PO-110 | 100% |  |
| PRO-RD-MF-120 |  | Manufacturing of Prime Coat for Road Works | 110d | 2025-05-12 A | 2025-05-22 A | PRO-RD-PO-120 | 100% |  |
| PRO-RD-MF-130 |  | Manufacturing of Bituminous Base & Wearing Courses for Road Works | 110d | 2025-05-28 A | 2025-06-01 A | PRO-RD-PO-130 | 100% |  |
|  | 2 | **Pavement Works** |  | 2025-05-04 | 2025-06-01 |  |  |  |
| PRO-RD-MF-140 |  | Manufacturing of Interlock Tiles for Landscaping | 110d | 2025-05-04 A | 2025-05-26 A | PRO-RD-PO-140 | 100% |  |
| PRO-RD-MF-150 |  | Manufacturing of Curbstones for Landscaping | 110d | 2025-05-20 A | 2025-06-01 A | PRO-RD-PO-150 | 100% |  |
|  | 3 | **Traffic Signs Boards and Roads Marking** |  | 2025-05-12 | 2025-05-29 |  |  |  |
| PRO-RD-MF-170 |  | Manufacturing of Road Markings for Road Works | 130d | 2025-05-12 A | 2025-05-29 A | PRO-RD-PO-170 | 100% |  |
| PRO-RD-MF-160 |  | Manufacturing of Traffic Signs Boards for Road Works | 130d | 2025-05-14 A | 2025-05-29 A | PRO-RD-PO-160 | 100% |  |
|  | 1DL | **1st Material Delivery & Site Inspection** |  | 2025-05-22 | 2026-11-09 |  |  |  |
|  | 1 | **Road Works** |  | 2025-05-22 | 2025-07-05 |  |  |  |
| PRO-RD-1DL-120 |  | 1ST Material Delivery for Prime Coat of Road Works | 6d | 2025-05-22 A | 2025-05-30 A | PRO-RD-MF-120 | 100% |  |
| PRO-RD-1DL-100 |  | 1ST Material Delivery for Subgrade of Road Works | 6d | 2025-05-30 A | 2025-06-08 A | PRO-RD-MF-100 | 100% |  |
| PRO-RD-1DL-130 |  | 1ST Material Delivery for Bituminous Base & Wearing Courses of Road Works | 6d | 2025-06-01 A | 2025-06-15 A | PRO-RD-MF-130 | 100% |  |
| PRO-RD-1DL-110 |  | 1ST Material Delivery for Aggregate Base Course of Road Works | 6d | 2025-06-02 A | 2025-07-05 A | PRO-RD-MF-110 | 100% |  |
|  | 2 | **Pavement Works** |  | 2026-02-17 | 2026-07-19 |  |  |  |
| PRO-RD-1DL-140 |  | 1ST Material Delivery for Interlock Tiles of Landscaping | 6d | 2026-02-17 A | 2026-07-19 A | PRO-RD-MF-140 | 100% |  |
| PRO-RD-1DL-150 |  | 1ST Material Delivery for Curbstones of Landscaping | 6d | 2026-02-17 A | 2026-07-19 A | PRO-RD-MF-150 | 100% |  |
|  | 3 | **Traffic Signs Boards and Roads Marking** |  | 2026-11-03 | 2026-11-09 |  |  |  |
| PRO-RD-1DL-160 |  | 1ST Material Delivery for Traffic Signs Boards of Road Works | 6d | 2026-11-03 | 2026-11-09 | PRO-RD-MF-160 |  | -77d |
| PRO-RD-1DL-170 |  | 1ST Material Delivery for Road Markings of Road Works | 6d | 2026-11-03 | 2026-11-09 | PRO-RD-MF-170 |  | -72d |

| ID | WBS | Task | Duration | Start | Finish | Predecessors | Complete | Total float |
| --- | --- | --- | --- | --- | --- | --- | --- | --- |
|  | DL | **Material Delivery & Site Inspection** |  | 2025-06-09 | 2027-01-25 |  |  |  |
|  | 1 | **Road 18 Local 1 ( 479 LM )** |  | 2025-06-10 | 2026-12-15 |  |  |  |
|  | 1 | **Pre-Bituminous Construction** |  | 2025-06-10 | 2025-08-11 |  |  |  |
| PRO-R18-RD-DL-220 |  | Material Delivery & Site Inspection for Subgrade of Road Works | 26d | 2025-06-10 A | 2025-07-07 A | PRO-RD-1DL-100 | 100% |  |
| PRO-R18-RD-DL-230 |  | Material Delivery & Site Inspection for Aggregate Base Course of Road Works | 26d | 2025-08-01 A | 2025-08-11 A | PRO-RD-1DL-110, PRO-R18-RD-DL-220 | 100% |  |
|  | 2 | **Pavement Works** |  | 2026-08-03 | 2026-08-20 |  |  |  |
| PRO-R18-RD-DL-180 |  | Material Delivery & Site Inspection of Interlock Tiles for Landscaping | 26d | 2026-08-03 A | 2026-08-20 A | PRO-RD-1DL-140, PRO-R18-RD-DL-230 | 100% |  |
| PRO-R18-RD-DL-190 |  | Material Delivery & Site Inspection of Curbstones for Landscaping | 26d | 2026-08-03 A | 2026-08-20 A | PRO-RD-1DL-150, PRO-R18-RD-DL-180 | 100% |  |
|  | 4 | **Bituminous Construction** |  | 2025-09-20 | 2025-10-11 |  |  |  |
| PRO-R18-RD-DL-240 |  | Material Delivery & Site Inspection for Prime Coat of Road Works | 26d | 2025-09-20 A | 2025-09-21 A | PRO-RD-1DL-120, PRO-R18-RD-DL-190 | 100% |  |
| PRO-R18-RD-DL-250 |  | Material Delivery & Site Inspection for Bituminous Base & Wearing Courses of Road Works | 26d | 2025-09-23 A | 2025-10-11 A | PRO-RD-1DL-130, PRO-R18-RD-DL-240 | 100% |  |
|  | 3 | **Traffic Signs Boards and Roads Marking** |  | 2026-11-10 | 2026-12-15 |  |  |  |
| PRO-R18-RD-DL-200 |  | Material Delivery & Site Inspection of Traffic Signs Boards For Road Works | 26d | 2026-11-10 | 2026-12-09 | PRO-R18-RD-DL-250 FF, PRO-RD-1DL-160, PRO-R18-RD-DL-250 SS+5d |  | -77d |
| PRO-R18-RD-DL-210 |  | Material Delivery & Site Inspection of Road Markings For Road Works | 26d | 2026-11-16 | 2026-12-15 | PRO-R18-RD-DL-200 SS, PRO-RD-1DL-170, PRO-R18-RD-DL-200 SS+5d |  | -77d |
|  | 9 | **Road 17 Local 1 ( 500 LM )** |  | 2025-07-06 | 2026-12-21 |  |  |  |
|  | 1 | **Pre-Bituminous Construction** |  | 2025-07-06 | 2025-09-04 |  |  |  |
| PRO-R17-RD-DL-120 |  | Material Delivery & Site Inspection for Subgrade of Road Works | 26d | 2025-07-06 A | 2025-07-13 A | PRO-RD-1DL-100, PRO-R18-RD-DL-220 | 100% |  |
| PRO-R17-RD-DL-130 |  | Material Delivery & Site Inspection for Aggregate Base Course of Road Works | 26d | 2025-09-01 A | 2025-09-04 A | PRO-RD-1DL-110, PRO-R18-RD-DL-230, PRO-R17-RD-DL-120 | 100% |  |
|  | 2 | **Pavement Works** |  | 2026-08-22 | 2026-08-29 |  |  |  |
| PRO-R17-RD-DL-100 |  | Material Delivery & Site Inspection of Interlock Tiles for Landscaping | 26d | 2026-08-22 A | 2026-08-29 A | PRO-RD-1DL-140, PRO-R18-RD-DL-180, PRO-R17-RD-DL-130 | 100% |  |
| PRO-R17-RD-DL-110 |  | Material Delivery & Site Inspection of Curbstones for Landscaping | 26d | 2026-08-22 A | 2026-08-29 A | PRO-RD-1DL-150, PRO-R18-RD-DL-190, PRO-R17-RD-DL-100 | 100% |  |
|  | 4 | **Bituminous Construction** |  | 2025-09-20 | 2025-10-11 |  |  |  |
| PRO-R17-RD-DL-160 |  | Material Delivery & Site Inspection for Prime Coat of Road Works | 26d | 2025-09-20 A | 2025-09-25 A | PRO-RD-1DL-120, PRO-R18-RD-DL-240, PRO-R17-RD-DL-110 | 100% |  |
| PRO-R17-RD-DL-170 |  | Material Delivery & Site Inspection for Bituminous Base & Wearing Courses of Road Works | 26d | 2025-10-09 A | 2025-10-11 A | PRO-RD-1DL-130, PRO-R18-RD-DL-250, PRO-R17-RD-DL-160 | 100% |  |
|  | 3 | **Traffic Signs Boards and Roads Marking** |  | 2026-11-16 | 2026-12-21 |  |  |  |
| PRO-R17-RD-DL-140 |  | Material Delivery & Site Inspection of Traffic Signs Boards For Road Works | 26d | 2026-11-16 | 2026-12-15 | PRO-RD-1DL-160, PRO-R17-RD-DL-170 FF, PRO-R18-RD-DL-200 SS+5d, PRO-R17-RD-DL-170 SS+5d |  | -77d |
| PRO-R17-RD-DL-150 |  | Material Delivery & Site Inspection of Road Markings For Road Works | 26d | 2026-11-22 | 2026-12-21 | PRO-RD-1DL-170, PRO-R17-RD-DL-140 SS, PRO-R18-RD-DL-210 SS+5d, PRO-R17-RD-DL-140 SS+5d |  | -77d |
|  | 8 | **Road 16 Local 1 ( 527 LM )** |  | 2025-07-28 | 2026-12-27 |  |  |  |
|  | 1 | **Pre-Bituminous Construction** |  | 2025-07-28 | 2025-10-12 |  |  |  |
| PRO-R16-RD-DL-100 |  | Material Delivery & Site Inspection for Subgrade of Road Works | 26d | 2025-07-28 A | 2025-08-02 A | PRO-RD-1DL-100, PRO-R17-RD-DL-120 | 100% |  |
| PRO-R16-RD-DL-110 |  | Material Delivery & Site Inspection for Aggregate Base Course of Road Works | 26d | 2025-09-17 A | 2025-10-12 A | PRO-RD-1DL-110, PRO-R17-RD-DL-130 | 100% |  |
|  | 2 | **Pavement Works** |  | 2026-08-24 | 2026-08-27 |  |  |  |
| PRO-R16-RD-DL-120 |  | Material Delivery & Site Inspection of Interlock Tiles for Landscaping | 26d | 2026-08-24 A | 2026-08-27 A | PRO-RD-1DL-140, PRO-R17-RD-DL-100 | 100% |  |
| PRO-R16-RD-DL-130 |  | Material Delivery & Site Inspection of Curbstones for Landscaping | 26d | 2026-08-24 A | 2026-08-27 A | PRO-RD-1DL-150, PRO-R16-RD-DL-110 FF, PRO-R17-RD-DL-110 | 100% |  |
|  | 4 | **Bituminous Construction** |  | 2025-10-12 | 2025-12-15 |  |  |  |
| PRO-R16-RD-DL-160 |  | Material Delivery & Site Inspection for Prime Coat of Road Works | 26d | 2025-10-12 A | 2025-10-12 A | PRO-RD-1DL-120, PRO-R17-RD-DL-160 | 100% |  |
| PRO-R16-RD-DL-170 |  | Material Delivery & Site Inspection for Bituminous Base & Wearing Courses of Road Works | 26d | 2025-12-13 A | 2025-12-15 A | PRO-RD-1DL-130, PRO-R16-RD-DL-120, PRO-R17-RD-DL-170 | 100% |  |
|  | 3 | **Traffic Signs Boards and Roads Marking** |  | 2026-11-22 | 2026-12-27 |  |  |  |
| PRO-R16-RD-DL-140 |  | Material Delivery & Site Inspection of Traffic Signs Boards For Road Works | 26d | 2026-11-22 | 2026-12-21 | PRO-RD-1DL-160, PRO-R16-RD-DL-170 FF, PRO-R17-RD-DL-140 SS+5d |  | -72d |
| PRO-R16-RD-DL-150 |  | Material Delivery & Site Inspection of Road Markings For Road Works | 26d | 2026-11-28 | 2026-12-27 | PRO-RD-1DL-170, PRO-R16-RD-DL-140 SS, PRO-R17-RD-DL-150 SS+5d |  | -77d |
|  | 7 | **Road 15 Local 1 ( 556 LM )** |  | 2025-06-09 | 2027-01-02 |  |  |  |
|  | 1 | **Pre-Bituminous Construction** |  | 2025-06-09 | 2025-10-13 |  |  |  |
| PRO-R15-RD-DL-100 |  | Material Delivery & Site Inspection for Subgrade of Road Works | 26d | 2025-06-09 A | 2025-07-13 A | PRO-RD-1DL-100, PRO-R16-RD-DL-100 | 100% |  |
| PRO-R15-RD-DL-110 |  | Material Delivery & Site Inspection for Aggregate Base Course of Road Works | 26d | 2025-10-12 A | 2025-10-13 A | PRO-RD-1DL-110, PRO-R16-RD-DL-110 | 100% |  |
|  | 2 | **Pavement Works** |  | 2026-05-16 | 2026-06-01 |  |  |  |
| PRO-R15-RD-DL-130 |  | Material Delivery & Site Inspection of Curbstones for Landscaping | 26d | 2026-05-16 A | 2026-06-01 A | PRO-RD-1DL-150, PRO-R15-RD-DL-110 FF, PRO-R16-RD-DL-130 | 100% |  |
| PRO-R15-RD-DL-120 |  | Material Delivery & Site Inspection of Interlock Tiles for Landscaping | 26d | 2026-05-20 A | 2026-06-01 A | PRO-RD-1DL-140, PRO-R16-RD-DL-120 | 100% |  |
|  | 4 | **Bituminous Construction** |  | 2026-03-01 | 2026-03-08 |  |  |  |
| PRO-R15-RD-DL-160 |  | Material Delivery & Site Inspection for Prime Coat of Road Works | 26d | 2026-03-01 A | 2026-03-08 A | PRO-RD-1DL-120, PRO-R16-RD-DL-160 | 100% |  |
| PRO-R15-RD-DL-170 |  | Material Delivery & Site Inspection for Bituminous Base & Wearing Courses of Road Works | 26d | 2026-03-01 A | 2026-03-08 A | PRO-RD-1DL-130, PRO-R15-RD-DL-120, PRO-R16-RD-DL-170 | 100% |  |
|  | 3 | **Traffic Signs Boards and Roads Marking** |  | 2026-11-28 | 2027-01-02 |  |  |  |
| PRO-R15-RD-DL-140 |  | Material Delivery & Site Inspection of Traffic Signs Boards For Road Works | 26d | 2026-11-28 | 2026-12-27 | PRO-RD-1DL-160, PRO-R15-RD-DL-170 FF, PRO-R16-RD-DL-140 SS+5d |  | -72d |
| PRO-R15-RD-DL-150 |  | Material Delivery & Site Inspection of Road Markings For Road Works | 26d | 2026-12-03 | 2027-01-02 | PRO-RD-1DL-170, PRO-R15-RD-DL-140 SS, PRO-R16-RD-DL-150 SS+5d |  | -77d |
|  | 4 | **Road 10 Local 2 ( 2352 LM )** |  | 2025-09-20 | 2027-01-07 |  |  |  |
|  | 1 | **Pre-Bituminous Construction** |  | 2025-09-20 | 2025-09-27 |  |  |  |
| PRO-R10-RD-DL-110 |  | Material Delivery & Site Inspection for Aggregate Base Course of Road Works | 26d | 2025-09-20 A | 2025-09-24 A | PRO-RD-1DL-110, PRO-R15-RD-DL-110 | 100% |  |
| PRO-R10-RD-DL-100 |  | Material Delivery & Site Inspection for Subgrade of Road Works | 26d | 2025-09-24 A | 2025-09-27 A | PRO-RD-1DL-100, PRO-R15-RD-DL-100 | 100% |  |
|  | 2 | **Pavement Works** |  | 2026-02-17 | 2026-03-11 |  |  |  |
| PRO-R10-RD-DL-120 |  | Material Delivery & Site Inspection of Interlock Tiles for Landscaping | 26d | 2026-02-17 A | 2026-03-11 A | PRO-RD-1DL-140, PRO-R15-RD-DL-120 | 100% |  |
| PRO-R10-RD-DL-130 |  | Material Delivery & Site Inspection of Curbstones for Landscaping | 26d | 2026-02-17 A | 2026-03-11 A | PRO-RD-1DL-150, PRO-R10-RD-DL-110 FF, PRO-R15-RD-DL-130 | 100% |  |
|  | 4 | **Bituminous Construction** |  | 2026-11-03 | 2026-12-02 |  |  |  |
| PRO-R10-RD-DL-160 |  | Material Delivery & Site Inspection for Prime Coat of Road Works | 26d | 2026-11-03 | 2026-12-02 | PRO-RD-1DL-120, PRO-R15-RD-DL-160 SS+5d |  | -76d |
| PRO-R10-RD-DL-170 |  | Material Delivery & Site Inspection for Bituminous Base & Wearing Courses of Road Works | 26d | 2026-11-03 | 2026-12-02 | PRO-RD-1DL-130, PRO-R10-RD-DL-120 SS+5d, PRO-R15-RD-DL-170 SS+5d |  | -67d |
|  | 3 | **Traffic Signs Boards and Roads Marking** |  | 2026-12-03 | 2027-01-07 |  |  |  |
| PRO-R10-RD-DL-140 |  | Material Delivery & Site Inspection of Traffic Signs Boards For Road Works | 26d | 2026-12-03 | 2027-01-02 | PRO-RD-1DL-160, PRO-R10-RD-DL-170 FF, PRO-R15-RD-DL-140 SS+5d |  | -72d |
| PRO-R10-RD-DL-150 |  | Material Delivery & Site Inspection of Road Markings For Road Works | 26d | 2026-12-09 | 2027-01-07 | PRO-RD-1DL-170, PRO-R10-RD-DL-140 SS, PRO-R15-RD-DL-150 SS+5d |  | -77d |
|  | 6 | **Road 14 Local 1 ( 584 LM )** |  | 2025-09-25 | 2027-01-13 |  |  |  |
|  | 1 | **Pre-Bituminous Construction** |  | 2025-09-25 | 2025-09-29 |  |  |  |
| PRO-R14-RD-DL-100 |  | Material Delivery & Site Inspection for Subgrade of Road Works | 26d | 2025-09-25 A | 2025-09-29 A | PRO-RD-1DL-100, PRO-R10-RD-DL-100 | 100% |  |
| PRO-R14-RD-DL-110 |  | Material Delivery & Site Inspection for Aggregate Base Course of Road Works | 26d | 2025-09-25 A | 2025-09-28 A | PRO-RD-1DL-110, PRO-R10-RD-DL-110 | 100% |  |

| ID | WBS | Task | Duration | Start | Finish | Predecessors | Complete | Total float |
| --- | --- | --- | --- | --- | --- | --- | --- | --- |
|  | 2 | **Pavement Works** |  | 2026-08-23 | 2026-08-29 |  |  |  |
| PRO-R14-RD-DL-120 |  | Material Delivery & Site Inspection of Interlock Tiles for Landscaping | 26d | 2026-08-23 A | 2026-08-29 A | PRO-RD-1DL-140, PRO-R10-RD-DL-120 | 100% |  |
| PRO-R14-RD-DL-130 |  | Material Delivery & Site Inspection of Curbstones for Landscaping | 26d | 2026-08-23 A | 2026-08-29 A | PRO-RD-1DL-150, PRO-R14-RD-DL-110 FF, PRO-R10-RD-DL-130 | 100% |  |
|  | 4 | **Bituminous Construction** |  | 2026-08-23 | 2026-08-29 |  |  |  |
| PRO-R14-RD-DL-160 |  | Material Delivery & Site Inspection for Prime Coat of Road Works | 26d | 2026-08-23 A | 2026-08-29 A | PRO-RD-1DL-120, PRO-R10-RD-DL-160 | 100% |  |
| PRO-R14-RD-DL-170 |  | Material Delivery & Site Inspection for Bituminous Base & Wearing Courses of Road Works | 26d | 2026-08-23 A | 2026-08-29 A | PRO-RD-1DL-130, PRO-R14-RD-DL-120, PRO-R10-RD-DL-170 | 100% |  |
|  | 3 | **Traffic Signs Boards and Roads Marking** |  | 2026-12-09 | 2027-01-13 |  |  |  |
| PRO-R14-RD-DL-140 |  | Material Delivery & Site Inspection of Traffic Signs Boards For Road Works | 26d | 2026-12-09 | 2027-01-07 | PRO-RD-1DL-160, PRO-R14-RD-DL-170 FF, PRO-R10-RD-DL-140 SS+5d |  | -72d |
| PRO-R14-RD-DL-150 |  | Material Delivery & Site Inspection of Road Markings For Road Works | 26d | 2026-12-15 | 2027-01-13 | PRO-RD-1DL-170, PRO-R14-RD-DL-140 SS, PRO-R10-RD-DL-150 SS+5d |  | -77d |
|  | 2 | **Road 09 Local 2 ( 2278 LM )** |  | 2025-09-25 | 2027-01-19 |  |  |  |
|  | 1 | **Pre-Bituminous Construction** |  | 2025-09-25 | 2026-03-15 |  |  |  |
| PRO-R09-RD-DL-100 |  | Material Delivery & Site Inspection for Subgrade of Road Works | 26d | 2025-09-25 A | 2026-03-12 A | PRO-RD-1DL-100, PRO-RD-1DL-100 FF, PRO-R14-RD-DL-100 | 100% |  |
| PRO-R09-RD-DL-110 |  | Material Delivery & Site Inspection for Aggregate Base Course of Road Works | 26d | 2026-03-10 A | 2026-03-15 A | PRO-RD-1DL-110, PRO-RD-1DL-110 FF, PRO-R14-RD-DL-110 | 100% |  |
|  | 2 | **Pavement Works** |  | 2026-03-10 | 2026-03-15 |  |  |  |
| PRO-R09-RD-DL-120 |  | Material Delivery & Site Inspection of Interlock Tiles for Landscaping | 26d | 2026-03-10 A | 2026-03-15 A | PRO-RD-1DL-140, PRO-R14-RD-DL-120 | 100% |  |
| PRO-R09-RD-DL-130 |  | Material Delivery & Site Inspection of Curbstones for Landscaping | 26d | 2026-03-10 A | 2026-03-15 A | PRO-RD-1DL-150, PRO-R09-RD-DL-110 FF, PRO-R14-RD-DL-130 | 100% |  |
|  | 4 | **Bituminous Construction** |  | 2026-12-03 | 2027-01-02 |  |  |  |
| PRO-R09-RD-DL-160 |  | Material Delivery & Site Inspection for Prime Coat of Road Works | 26d | 2026-12-03 | 2027-01-02 | PRO-RD-1DL-120, PRO-RD-1DL-120 FF, PRO-R14-RD-DL-160 SS+5d |  | -76d |
| PRO-R09-RD-DL-170 |  | Material Delivery & Site Inspection for Bituminous Base & Wearing Courses of Road Works | 26d | 2026-12-03 | 2027-01-02 | PRO-RD-1DL-130, PRO-RD-1DL-130 FF, PRO-R09-RD-DL-120 SS+5d, PRO-R14-RD-DL-170 SS+5d |  | -67d |
|  | 3 | **Traffic Signs Boards and Roads Marking** |  | 2026-12-15 | 2027-01-19 |  |  |  |
| PRO-R09-RD-DL-140 |  | Material Delivery & Site Inspection of Traffic Signs Boards For Road Works | 26d | 2026-12-15 | 2027-01-13 | PRO-RD-1DL-160, PRO-R09-RD-DL-170 SS+5d, PRO-R14-RD-DL-140 SS+5d |  | -72d |
| PRO-R09-RD-DL-150 |  | Material Delivery & Site Inspection of Road Markings For Road Works | 26d | 2026-12-21 | 2027-01-19 | PRO-RD-1DL-170, PRO-R09-RD-DL-140 SS, PRO-R14-RD-DL-150 SS+5d |  | -77d |
|  | 5 | **Road 11 Local 1 ( 670 LM )** |  | 2026-02-19 | 2027-01-25 |  |  |  |
|  | 1 | **Pre-Bituminous Construction** |  | 2026-02-19 | 2026-02-23 |  |  |  |
| PRO-R11-RD-DL-100 |  | Material Delivery & Site Inspection for Subgrade of Road Works | 26d | 2026-02-19 A | 2026-02-23 A | PRO-RD-1DL-100, PRO-R09-RD-DL-100 | 100% |  |
| PRO-R11-RD-DL-110 |  | Material Delivery & Site Inspection for Aggregate Base Course of Road Works | 26d | 2026-02-19 A | 2026-02-23 A | PRO-RD-1DL-110, PRO-R09-RD-DL-110 | 100% |  |
|  | 2 | **Pavement Works** |  | 2026-06-01 | 2026-08-27 |  |  |  |
| PRO-R11-RD-DL-130 |  | Material Delivery & Site Inspection of Curbstones for Landscaping | 26d | 2026-06-01 A | 2026-08-27 A | PRO-RD-1DL-150, PRO-R11-RD-DL-110 FF, PRO-R09-RD-DL-130 | 100% |  |
| PRO-R11-RD-DL-120 |  | Material Delivery & Site Inspection of Interlock Tiles for Landscaping | 26d | 2026-08-23 A | 2026-08-27 A | PRO-RD-1DL-140, PRO-R09-RD-DL-120 | 100% |  |
|  | 4 | **Bituminous Construction** |  | 2026-08-13 | 2026-08-27 |  |  |  |
| PRO-R11-RD-DL-160 |  | Material Delivery & Site Inspection for Prime Coat of Road Works | 26d | 2026-08-13 A | 2026-08-27 A | PRO-RD-1DL-120, PRO-R09-RD-DL-160 | 100% |  |
| PRO-R11-RD-DL-170 |  | Material Delivery & Site Inspection for Bituminous Base & Wearing Courses of Road Works | 26d | 2026-08-23 A | 2026-08-27 A | PRO-RD-1DL-130, PRO-R11-RD-DL-120, PRO-R09-RD-DL-170 | 100% |  |
|  | 3 | **Traffic Signs Boards and Roads Marking** |  | 2026-12-21 | 2027-01-25 |  |  |  |
| PRO-R11-RD-DL-140 |  | Material Delivery & Site Inspection of Traffic Signs Boards For Road Works | 26d | 2026-12-21 | 2027-01-19 | PRO-RD-1DL-160, PRO-R11-RD-DL-170 FF, PRO-R09-RD-DL-140 SS+5d |  | -72d |
| PRO-R11-RD-DL-150 |  | Material Delivery & Site Inspection of Road Markings For Road Works | 26d | 2026-12-27 | 2027-01-25 | PRO-RD-1DL-170, PRO-R11-RD-DL-140 SS, PRO-R09-RD-DL-150 SS+5d |  | -77d |
|  | SW | **Sewage Network** |  | 2025-02-11 | 2026-12-31 |  |  |  |
|  | PO | **Issuance of Purchase Orders** |  | 2025-02-11 | 2025-02-17 |  |  |  |
|  | 1 | **Main Line Sections** |  | 2025-02-11 | 2025-02-17 |  |  |  |
| PRO-SW-PO-100 |  | Issuance of Purchase Order for Main Line Pipes of Sewage Network | 6d | 2025-02-11 A | 2025-02-17 A | ENG-MT-SW-ML-A-110, ENG-SH-SW-ML-A-110, ENG-MS-SW-ML-A-110 | 100% |  |
| PRO-SW-PO-110 |  | Issuance of Purchase Order for Manhole of Sewage Network | 6d | 2025-02-11 A | 2025-02-17 A | ENG-MT-SW-ML-A-100, ENG-SH-SW-ML-A-110, ENG-MS-SW-ML-A-110 | 100% |  |
|  | 3 | **Testing and Finishes** |  | 2025-02-11 | 2025-02-17 |  |  |  |
| PRO-SW-PO-120 |  | Issuance of Purchase Order for Manhole Covers of Sewage Network | 6d | 2025-02-11 A | 2025-02-17 A | ENG-MT-SW-TF-A-100, ENG-SH-SW-ML-A-110, ENG-MS-SW-ML-A-110 | 100% |  |
| PRO-SW-PO-140 |  | Issuance of Purchase Order for Membrane Insulation of Sewage Network | 6d | 2025-02-11 A | 2025-02-17 A | ENG-MT-SW-TF-A-120, ENG-SH-SW-ML-A-110, ENG-MS-SW-ML-A-110 | 100% |  |
|  | MF | **Manufacturing of Material** |  | 2025-02-12 | 2025-05-29 |  |  |  |
|  | 1 | **Main Line Sections** |  | 2025-02-12 | 2025-05-13 |  |  |  |
| PRO-SW-MF-110 |  | Manufacturing of Manholes for Sewage Network | 30d | 2025-02-12 A | 2025-05-13 A | PRO-SW-PO-110 | 100% |  |
| PRO-SW-MF-100 |  | Manufacturing of Main Line Pipes for Sewage Network | 30d | 2025-02-15 A | 2025-04-24 A | PRO-SW-PO-100 | 100% |  |
|  | 3 | **Testing and Finishes** |  | 2025-05-04 | 2025-05-29 |  |  |  |
| PRO-SW-MF-140 |  | Manufacturing of Membrane Insulation for Sewage Network | 120d | 2025-05-04 A | 2025-05-26 A | PRO-SW-PO-140 | 100% |  |
| PRO-SW-MF-120 |  | Manufacturing of Manhole Covers for Sewage Network | 120d | 2025-05-12 A | 2025-05-29 A | PRO-SW-PO-120 | 100% |  |
|  | 1DL | **1st Material Delivery & Site Inspection** |  | 2025-03-19 | 2025-06-10 |  |  |  |
|  | 1 | **Main Line Sections** |  | 2025-03-19 | 2025-05-25 |  |  |  |
| PRO-SW-1DL-100 |  | 1ST Material Delivery for Main Line Pipes of Sewage Network | 6d | 2025-03-19 A | 2025-04-26 A | PRO-SW-MF-100 FF, PRO-SW-MF-100 SS+24d | 100% |  |
| PRO-SW-1DL-110 |  | 1ST Material Delivery for Manholes of Sewage Network | 6d | 2025-04-10 A | 2025-05-25 A | PRO-SW-MF-110 | 100% |  |
|  | 3 | **Testing and Finishes** |  | 2025-05-14 | 2025-06-10 |  |  |  |
| PRO-SW-1DL-120 |  | 1ST Material Delivery for Manholes Covers of Sewage Network | 6d | 2025-05-14 A | 2025-06-10 A | PRO-SW-MF-120 | 100% |  |
| PRO-SW-1DL-140 |  | 1ST Material Delivery for Membrane Insulation of Sewage Network | 6d | 2025-05-27 A | 2025-06-05 A | PRO-SW-MF-140 | 100% |  |
|  | DL | **Material Delivery & Site Inspection** |  | 2025-04-13 | 2026-12-31 |  |  |  |
|  | 1 | **Road 18 Local 1 ( 479 LM )** |  | 2025-04-13 | 2025-06-01 |  |  |  |
|  | 1 | **Main Line Sections** |  | 2025-04-13 | 2025-05-27 |  |  |  |
| PRO-R18-SW-DL-150 |  | Material Delivery & Site Inspection of Main Line Pipes for Sewage Network | 10d | 2025-04-13 A | 2025-04-28 A | PRO-SW-1DL-100, PRO-R18-SW-DL-160 | 100% |  |
| PRO-R18-SW-DL-160 |  | Material Delivery & Site Inspection of Manholes for Sewage Network | 10d | 2025-04-22 A | 2025-05-27 A | PRO-SW-1DL-110 | 100% |  |
|  | 3 | **Testing and Finishes** |  | 2025-05-14 | 2025-06-01 |  |  |  |
| PRO-R18-SW-DL-170 |  | Material Delivery & Site Inspection of Manholes Covers for Sewage Network | 26d | 2025-05-14 A | 2025-06-01 A | PRO-SW-1DL-120, PRO-R18-SW-DL-150 | 100% |  |
| PRO-R18-SW-DL-190 |  | Material Delivery & Site Inspection of Membrane Insulation for Sewage Network | 26d | 2025-05-29 A | 2025-06-01 A | PRO-SW-1DL-140, PRO-R18-SW-DL-170 | 100% |  |
|  | 9 | **Road 17 Local 1 ( 500 LM )** |  | 2025-05-26 | 2026-12-02 |  |  |  |
|  | 1 | **Main Line Sections** |  | 2025-05-26 | 2025-07-03 |  |  |  |
| PRO-R17-SW-DL-100 |  | Material Delivery & Site Inspection of Main Line Pipes for Sewage Network | 14d | 2025-05-26 A | 2025-06-12 A | PRO-SW-1DL-100, PRO-R18-SW-DL-150 | 100% |  |
| PRO-R17-SW-DL-110 |  | Material Delivery & Site Inspection of Manholes for Sewage Network | 15d | 2025-06-10 A | 2025-07-03 A | PRO-SW-1DL-110, PRO-R18-SW-DL-160 | 100% |  |
|  | 3 | **Testing and Finishes** |  | 2026-11-03 | 2026-12-02 |  |  |  |

| ID | WBS | Task | Duration | Start | Finish | Predecessors | Complete | Total float |
| --- | --- | --- | --- | --- | --- | --- | --- | --- |
| PRO-R17-SW-DL-120 |  | Material Delivery & Site Inspection of Manholes Covers for Sewage Network | 26d | 2026-11-03 | 2026-12-02 | PRO-SW-1DL-120, PRO-R18-SW-DL-170 SS+5d |  | -102d |
| PRO-R17-SW-DL-130 |  | Material Delivery & Site Inspection of Membrane Insulation for Sewage Network | 26d | 2026-11-03 | 2026-12-02 | PRO-SW-1DL-140, PRO-R18-SW-DL-190 SS+5d |  | -99d |
|  | 8 | **Road 16 Local 1 ( 527 LM )** |  | 2025-05-27 | 2026-12-08 |  |  |  |
|  | 1 | **Main Line Sections** |  | 2025-05-27 | 2025-06-04 |  |  |  |
| PRO-R16-SW-DL-100 |  | Material Delivery & Site Inspection of Main Line Pipes for Sewage Network | 14d | 2025-05-27 A | 2025-06-04 A | PRO-SW-1DL-100, PRO-R17-SW-DL-100 | 100% |  |
| PRO-R16-SW-DL-110 |  | Material Delivery & Site Inspection of Manholes for Sewage Network | 15d | 2025-05-27 A | 2025-06-04 A | PRO-SW-1DL-110, PRO-R17-SW-DL-110 | 100% |  |
|  | 3 | **Testing and Finishes** |  | 2026-11-09 | 2026-12-08 |  |  |  |
| PRO-R16-SW-DL-120 |  | Material Delivery & Site Inspection of Manholes Covers for Sewage Network | 26d | 2026-11-09 | 2026-12-08 | PRO-SW-1DL-120, PRO-R17-SW-DL-120 SS+5d |  | -102d |
| PRO-R16-SW-DL-130 |  | Material Delivery & Site Inspection of Membrane Insulation for Sewage Network | 26d | 2026-11-09 | 2026-12-08 | PRO-SW-1DL-140, PRO-R17-SW-DL-130 SS+5d |  | -99d |
|  | 7 | **Road 15 Local 1 ( 556 LM )** |  | 2025-05-09 | 2026-12-14 |  |  |  |
|  | 1 | **Main Line Sections** |  | 2025-05-09 | 2025-06-29 |  |  |  |
| PRO-R15-SW-DL-100 |  | Material Delivery & Site Inspection of Main Line Pipes for Sewage Network | 14d | 2025-05-09 A | 2025-05-29 A | PRO-SW-1DL-100, PRO-R16-SW-DL-100 | 100% |  |
| PRO-R15-SW-DL-110 |  | Material Delivery & Site Inspection of Manholes for Sewage Network | 15d | 2025-06-05 A | 2025-06-29 A | PRO-SW-1DL-110, PRO-R16-SW-DL-110 | 100% |  |
|  | 3 | **Testing and Finishes** |  | 2026-11-15 | 2026-12-14 |  |  |  |
| PRO-R15-SW-DL-120 |  | Material Delivery & Site Inspection of Manholes Covers for Sewage Network | 26d | 2026-11-15 | 2026-12-14 | PRO-SW-1DL-120, PRO-R16-SW-DL-120 SS+5d |  | -102d |
| PRO-R15-SW-DL-130 |  | Material Delivery & Site Inspection of Membrane Insulation for Sewage Network | 26d | 2026-11-15 | 2026-12-14 | PRO-SW-1DL-140, PRO-R16-SW-DL-130 SS+5d |  | -99d |
|  | 4 | **Road 10 Local 2 ( 2352 LM )** |  | 2025-05-21 | 2026-12-20 |  |  |  |
|  | 1 | **Main Line Sections** |  | 2025-05-21 | 2025-06-04 |  |  |  |
| PRO-R10-SW-DL-100 |  | Material Delivery & Site Inspection of Main Line Pipes for Sewage Network | 14d | 2025-05-21 A | 2025-06-02 A | PRO-SW-1DL-100, PRO-R15-SW-DL-100 | 100% |  |
| PRO-R10-SW-DL-110 |  | Material Delivery & Site Inspection of Manholes for Sewage Network | 15d | 2025-05-22 A | 2025-06-04 A | PRO-SW-1DL-110, PRO-R15-SW-DL-110 | 100% |  |
|  | 3 | **Testing and Finishes** |  | 2026-11-21 | 2026-12-20 |  |  |  |
| PRO-R10-SW-DL-120 |  | Material Delivery & Site Inspection of Manholes Covers for Sewage Network | 26d | 2026-11-21 | 2026-12-20 | PRO-SW-1DL-120, PRO-R15-SW-DL-120 SS+5d |  | -102d |
| PRO-R10-SW-DL-130 |  | Material Delivery & Site Inspection of Membrane Insulation for Sewage Network | 26d | 2026-11-21 | 2026-12-20 | PRO-SW-1DL-140, PRO-R15-SW-DL-130 SS+5d |  | -99d |
|  | 6 | **Road 14 Local 1 ( 584 LM )** |  | 2025-06-03 | 2026-12-26 |  |  |  |
|  | 1 | **Main Line Sections** |  | 2025-06-03 | 2025-06-26 |  |  |  |
| PRO-R14-SW-DL-100 |  | Material Delivery & Site Inspection of Main Line Pipes for Sewage Network | 14d | 2025-06-03 A | 2025-06-20 A | PRO-SW-1DL-100, PRO-R10-SW-DL-100 | 100% |  |
| PRO-R14-SW-DL-110 |  | Material Delivery & Site Inspection of Manholes for Sewage Network | 15d | 2025-06-05 A | 2025-06-26 A | PRO-SW-1DL-110, PRO-R10-SW-DL-110 | 100% |  |
|  | 3 | **Testing and Finishes** |  | 2026-11-26 | 2026-12-26 |  |  |  |
| PRO-R14-SW-DL-120 |  | Material Delivery & Site Inspection of Manholes Covers for Sewage Network | 26d | 2026-11-26 | 2026-12-26 | PRO-SW-1DL-120, PRO-R10-SW-DL-120 SS+5d |  | -100d |
| PRO-R14-SW-DL-130 |  | Material Delivery & Site Inspection of Membrane Insulation for Sewage Network | 26d | 2026-11-26 | 2026-12-26 | PRO-SW-1DL-140, PRO-R10-SW-DL-130 SS+5d |  | -97d |
|  | 2 | **Road 09 Local 2 ( 2278 LM )** |  | 2025-05-10 | 2026-12-16 |  |  |  |
|  | 1 | **Main Line Sections** |  | 2025-05-10 | 2025-06-01 |  |  |  |
| PRO-R09-SW-DL-110 |  | Material Delivery & Site Inspection of Manholes for Rising Main Network | 7d | 2025-05-10 A | 2025-06-01 A | PRO-SW-1DL-110 | 100% |  |
| PRO-R09-SW-DL-100 |  | Material Delivery & Site Inspection of Main Line Pipes for Rising Main Network | 10d | 2025-05-14 A | 2025-05-29 A | PRO-SW-1DL-100 | 100% |  |
|  | 3 | **Testing and Finishes** |  | 2026-11-03 | 2026-12-16 |  |  |  |
| PRO-R09-SW-DL-120 |  | Material Delivery & Site Inspection of Manholes Covers for Rising Main Network | 38d | 2026-11-03 | 2026-12-16 | PRO-SW-1DL-120 |  | -104d |
| PRO-R09-SW-DL-130 |  | Material Delivery & Site Inspection of Membrane Insulation for Rising Main Network | 38d | 2026-11-03 | 2026-12-16 | PRO-SW-1DL-140 |  | -88d |
|  | 5 | **Road 11 Local 1 ( 670 LM )** |  | 2025-05-06 | 2026-12-31 |  |  |  |
|  | 1 | **Main Line Sections** |  | 2025-05-06 | 2025-06-01 |  |  |  |
| PRO-R11-SW-DL-100 |  | Material Delivery & Site Inspection of Main Line Pipes for Sewage Network | 14d | 2025-05-06 A | 2025-05-29 A | PRO-SW-1DL-100, PRO-R14-SW-DL-100 | 100% |  |
| PRO-R11-SW-DL-110 |  | Material Delivery & Site Inspection of Manholes for Sewage Network | 15d | 2025-05-19 A | 2025-06-01 A | PRO-SW-1DL-110, PRO-R14-SW-DL-110 | 100% |  |
|  | 3 | **Testing and Finishes** |  | 2026-12-02 | 2026-12-31 |  |  |  |
| PRO-R11-SW-DL-120 |  | Material Delivery & Site Inspection of Manholes Covers for Sewage Network | 26d | 2026-12-02 | 2026-12-31 | PRO-SW-1DL-120, PRO-R14-SW-DL-120 SS+5d |  | -100d |
| PRO-R11-SW-DL-130 |  | Material Delivery & Site Inspection of Membrane Insulation for Sewage Network | 26d | 2026-12-02 | 2026-12-31 | PRO-SW-1DL-140, PRO-R14-SW-DL-130 SS+5d |  | -97d |
|  | SD | **Storm Drainage Network** |  | 2025-02-11 | 2027-01-25 |  |  |  |
|  | MF | **Manufacturing of Material** |  | 2025-02-18 | 2025-07-13 |  |  |  |
|  | 1 | **Main Line Sections** |  | 2025-02-18 | 2025-05-13 |  |  |  |
| PRO-SD-MF-100 |  | Manufacturing of Materials for Manholes of Storm Drainage Network | 50d | 2025-02-18 A | 2025-05-13 A | PRO-SD-PO-100 | 100% |  |
| PRO-SD-MF-110 |  | Manufacturing of Materials for Main Line Pipes of Storm Drainage Network | 40d | 2025-02-18 A | 2025-05-11 A | PRO-SD-PO-110 | 100% |  |
|  | 2 | **Catch Basin Sections** |  | 2025-02-18 | 2025-07-13 |  |  |  |
| PRO-SD-MF-130 |  | Manufacturing of Materials for Catch Basins of Storm Drainage Network | 50d | 2025-02-18 A | 2025-05-15 A | PRO-SD-PO-130 | 100% |  |
| PRO-SD-MF-150 |  | Manufacturing of Materials for Catch Basin Pipes of Storm Drainage Network | 50d | 2025-02-18 A | 2025-07-13 A | PRO-SD-PO-150 | 100% |  |
|  | 3 | **Testing and Finishes** |  | 2025-02-18 | 2025-05-29 |  |  |  |
| PRO-SD-MF-120 |  | Manufacturing of Materials for Manhole Covers of Storm Drainage Network | 120d | 2025-02-18 A | 2025-05-27 A | PRO-SD-PO-120 | 100% |  |
| PRO-SD-MF-140 |  | Manufacturing of Materials for Catch Basin Covers of Storm Drainage Network | 120d | 2025-02-18 A | 2025-05-29 A | PRO-SD-PO-140 | 100% |  |
| PRO-SD-MF-160 |  | Manufacturing of Materials for Epoxy Insulation of Storm Drainage Network | 120d | 2025-02-18 A | 2025-05-28 A | PRO-SD-PO-160 | 100% |  |
|  | PO | **Issuance of Purchase Orders** |  | 2025-02-11 | 2025-02-17 |  |  |  |
|  | 1 | **Main Line Sections** |  | 2025-02-11 | 2025-02-17 |  |  |  |
| PRO-SD-PO-100 |  | Issuance of Purchase Order for Manholes of Storm Drainage Network | 6d | 2025-02-11 A | 2025-02-17 A | ENG-MT-SD-ML-A-100, ENG-SH-SD-ML-A-110, ENG-MS-SD-ML-A-110 | 100% |  |
| PRO-SD-PO-110 |  | Issuance of Purchase Order for Main Line Pipes of Storm Drainage Network | 6d | 2025-02-11 A | 2025-02-17 A | ENG-MT-SD-ML-A-110, ENG-SH-SD-ML-A-110, ENG-MS-SD-ML-A-110 | 100% |  |
|  | 2 | **Catch Basin Sections** |  | 2025-02-11 | 2025-02-17 |  |  |  |
| PRO-SD-PO-130 |  | Issuance of Purchase Order for Catch Basins of Storm Drainage Network | 6d | 2025-02-11 A | 2025-02-17 A | ENG-MT-SD-CB-A-100, ENG-SH-SD-CB-A-110, ENG-MS-SD-CB-A-110 | 100% |  |
| PRO-SD-PO-150 |  | Issuance of Purchase Order for Catch Basin Pipes of Storm Drainage Network | 6d | 2025-02-11 A | 2025-02-17 A | ENG-MT-SD-CB-A-110, ENG-SH-SD-CB-A-110, ENG-MS-SD-CB-A-110 | 100% |  |
|  | 3 | **Testing and Finishes** |  | 2025-02-11 | 2025-02-17 |  |  |  |
| PRO-SD-PO-120 |  | Issuance of Purchase Order for Manhole Covers of Storm Drainage Network | 6d | 2025-02-11 A | 2025-02-17 A | ENG-MT-SD-TF-A-100, ENG-SH-SD-ML-A-110, ENG-MS-SD-ML-A-110 | 100% |  |
| PRO-SD-PO-140 |  | Issuance of Purchase Order for Catch Basin Covers of Storm Drainage Network | 6d | 2025-02-11 A | 2025-02-17 A | ENG-MT-SD-TF-A-110, ENG-SH-SD-CB-A-110, ENG-MS-SD-CB-A-110 | 100% |  |
| PRO-SD-PO-160 |  | Issuance of Purchase Order for Epoxy Insulation of Storm Drainage Network | 6d | 2025-02-11 A | 2025-02-17 A | ENG-MT-SD-TF-A-120, ENG-SH-SD-ML-A-110, ENG-MS-SD-ML-A-110 | 100% |  |
|  | 1DL | **1st Material Delivery & Site Inspection** |  | 2025-04-29 | 2026-06-30 |  |  |  |
|  | 1 | **Main Line Sections** |  | 2025-04-29 | 2025-05-29 |  |  |  |
| PRO-SD-1DL-110 |  | 1ST Material Delivery for Main Line Pipes of Storm Drainage Network | 6d | 2025-04-29 A | 2025-04-30 A | PRO-SD-MF-110 | 100% |  |

| ID | WBS | Task | Duration | Start | Finish | Predecessors | Complete | Total float |
| --- | --- | --- | --- | --- | --- | --- | --- | --- |
| PRO-SD-1DL-100 |  | 1ST Material Delivery for Manholes of Storm Drainage Network | 6d | 2025-05-11 A | 2025-05-29 A | PRO-SD-MF-100 | 100% |  |
|  | 2 | **Catch Basin Sections** |  | 2025-05-10 | 2025-05-31 |  |  |  |
| PRO-SD-1DL-120 |  | 1ST Material Delivery for Catch Basin Pipes of Storm Drainage Network | 6d | 2025-05-10 A | 2025-05-20 A | PRO-SD-MF-150 | 100% |  |
| PRO-SD-1DL-130 |  | 1ST Material Delivery for Catch Basins of Storm Drainage Network | 6d | 2025-05-19 A | 2025-05-31 A | PRO-SD-MF-130 | 100% |  |
|  | 3 | **Testing and Finishes** |  | 2026-06-17 | 2026-06-30 |  |  |  |
| PRO-SD-1DL-150 |  | 1ST Material Delivery for Catch Basin Covers of Storm Drainage Network | 6d | 2026-06-17 A | 2026-06-30 A | PRO-SD-MF-140 | 100% |  |
| PRO-SD-1DL-160 |  | 1ST Material Delivery for Epoxy Insulation of Storm Drainage Network | 6d | 2026-06-18 A | 2026-06-30 A | PRO-SD-MF-160 | 100% |  |
| PRO-SD-1DL-140 |  | 1ST Material Delivery for Manholes Covers of Storm Drainage Network | 6d | 2026-06-24 A | 2026-06-30 A | PRO-SD-MF-120 | 100% |  |
|  | DL | **Material Delivery & Site Inspection** |  | 2025-05-01 | 2027-01-25 |  |  |  |
|  | 1 | **Road 18 Local 1 ( 479 LM )** |  | 2025-05-01 | 2026-12-02 |  |  |  |
|  | 1 | **Main Line Sections** |  | 2025-05-01 | 2025-05-29 |  |  |  |
| PRO-R18-SD-DL-180 |  | Material Delivery & Site Inspection of Main Line Pipes of Storm Drainage Network | 17d | 2025-05-01 A | 2025-05-29 A | PRO-SD-1DL-110 | 100% |  |
| PRO-R18-SD-DL-170 |  | Material Delivery & Site Inspection of Manholes of Storm Drainage Network | 20d | 2025-05-11 A | 2025-05-24 A | PRO-SD-1DL-100 | 100% |  |
|  | 2 | **Catch Basin Sections** |  | 2025-05-21 | 2025-05-31 |  |  |  |
| PRO-R18-SD-DL-200 |  | Material Delivery & Site Inspection of Catch Basins for Storm Drainage Network | 26d | 2025-05-21 A | 2025-05-31 A | PRO-SD-1DL-130 | 100% |  |
| PRO-R18-SD-DL-220 |  | Material Delivery & Site Inspection of Catch Basin Pipes for Storm Drainage Network | 26d | 2025-05-21 A | 2025-05-29 A | PRO-SD-1DL-120 | 100% |  |
|  | 3 | **Testing and Finishes** |  | 2026-11-03 | 2026-12-02 |  |  |  |
| PRO-R18-SD-DL-190 |  | Material Delivery & Site Inspection of Manholes Covers for Storm Drainage Network | 26d | 2026-11-03 | 2026-12-02 | PRO-SD-1DL-140 |  | -139d |
| PRO-R18-SD-DL-210 |  | Material Delivery & Site Inspection of Catch Basin Covers for Storm Drainage Network | 26d | 2026-11-03 | 2026-12-02 | PRO-SD-1DL-150 |  | -138d |
| PRO-R18-SD-DL-230 |  | Material Delivery & Site Inspection of Epoxy Insulation for Storm Drainage Network | 26d | 2026-11-03 | 2026-12-02 | PRO-SD-1DL-160 |  | -85d |
|  | 9 | **Road 17 Local 1 ( 500 LM )** |  | 2025-05-15 | 2026-12-08 |  |  |  |
|  | 1 | **Main Line Sections** |  | 2025-05-15 | 2025-05-29 |  |  |  |
| PRO-R17-SD-DL-120 |  | Material Delivery & Site Inspection of Main Line Pipes of Storm Drainage Network | 17d | 2025-05-15 A | 2025-05-29 A | PRO-SD-1DL-110, PRO-R18-SD-DL-180 | 100% |  |
| PRO-R17-SD-DL-100 |  | Material Delivery & Site Inspection of Manholes of Storm Drainage Network | 20d | 2025-05-17 A | 2025-05-27 A | PRO-SD-1DL-100, PRO-R18-SD-DL-170 | 100% |  |
|  | 2 | **Catch Basin Sections** |  | 2025-05-19 | 2025-05-31 |  |  |  |
| PRO-R17-SD-DL-130 |  | Material Delivery & Site Inspection of Catch Basins for Storm Drainage Network | 26d | 2025-05-19 A | 2025-05-31 A | PRO-SD-1DL-130, PRO-R18-SD-DL-200 | 100% |  |
| PRO-R17-SD-DL-110 |  | Material Delivery & Site Inspection of Catch Basin Pipes for Storm Drainage Network | 26d | 2025-05-22 A | 2025-05-29 A | PRO-SD-1DL-120, PRO-R18-SD-DL-220 | 100% |  |
|  | 3 | **Testing and Finishes** |  | 2026-06-20 | 2026-12-08 |  |  |  |
| PRO-R17-SD-DL-160 |  | Material Delivery & Site Inspection of Epoxy Insulation for Storm Drainage Network | 26d | 2026-06-20 A | 2026-11-14 | PRO-SD-1DL-160, PRO-R18-SD-DL-230 SS+5d | 20% | -85d |
| PRO-R17-SD-DL-140 |  | Material Delivery & Site Inspection of Manholes Covers for Storm Drainage Network | 26d | 2026-11-09 | 2026-12-08 | PRO-SD-1DL-140, PRO-R18-SD-DL-190 SS+5d |  | -139d |
| PRO-R17-SD-DL-150 |  | Material Delivery & Site Inspection of Catch Basin Covers for Storm Drainage Network | 26d | 2026-11-09 | 2026-12-08 | PRO-SD-1DL-150, PRO-R18-SD-DL-210 SS+5d |  | -138d |
|  | 8 | **Road 16 Local 1 ( 527 LM )** |  | 2025-05-20 | 2026-12-14 |  |  |  |
|  | 1 | **Main Line Sections** |  | 2025-05-20 | 2025-06-01 |  |  |  |
| PRO-R16-SD-DL-100 |  | Material Delivery & Site Inspection of Manholes of Storm Drainage Network | 20d | 2025-05-20 A | 2025-05-28 A | PRO-SD-1DL-100, PRO-R17-SD-DL-100 | 100% |  |
| PRO-R16-SD-DL-120 |  | Material Delivery & Site Inspection of Main Line Pipes of Storm Drainage Network | 17d | 2025-05-20 A | 2025-06-01 A | PRO-SD-1DL-110, PRO-R17-SD-DL-120 | 100% |  |
|  | 2 | **Catch Basin Sections** |  | 2025-05-21 | 2025-06-01 |  |  |  |
| PRO-R16-SD-DL-110 |  | Material Delivery & Site Inspection of Catch Basin Pipes for Storm Drainage Network | 26d | 2025-05-21 A | 2025-05-31 A | PRO-SD-1DL-120, PRO-R17-SD-DL-110 | 100% |  |
| PRO-R16-SD-DL-130 |  | Material Delivery & Site Inspection of Catch Basins for Storm Drainage Network | 26d | 2025-05-26 A | 2025-06-01 A | PRO-SD-1DL-130, PRO-R17-SD-DL-130 | 100% |  |
|  | 3 | **Testing and Finishes** |  | 2026-11-09 | 2026-12-14 |  |  |  |
| PRO-R16-SD-DL-160 |  | Material Delivery & Site Inspection of Epoxy Insulation for Storm Drainage Network | 26d | 2026-11-09 | 2026-12-08 | PRO-SD-1DL-160, PRO-R17-SD-DL-160 SS+5d |  | -85d |
| PRO-R16-SD-DL-140 |  | Material Delivery & Site Inspection of Manholes Covers for Storm Drainage Network | 26d | 2026-11-15 | 2026-12-14 | PRO-SD-1DL-140, PRO-R17-SD-DL-140 SS+5d |  | -139d |
| PRO-R16-SD-DL-150 |  | Material Delivery & Site Inspection of Catch Basin Covers for Storm Drainage Network | 26d | 2026-11-15 | 2026-12-14 | PRO-SD-1DL-150, PRO-R17-SD-DL-150 SS+5d |  | -138d |
|  | 7 | **Road 15 Local 1 ( 556 LM )** |  | 2025-05-03 | 2026-12-20 |  |  |  |
|  | 1 | **Main Line Sections** |  | 2025-05-03 | 2025-05-31 |  |  |  |
| PRO-R15-SD-DL-120 |  | Material Delivery & Site Inspection of Main Line Pipes of Storm Drainage Network | 17d | 2025-05-03 A | 2025-05-31 A | PRO-SD-1DL-110, PRO-R16-SD-DL-120 | 100% |  |
| PRO-R15-SD-DL-100 |  | Material Delivery & Site Inspection of Manholes of Storm Drainage Network | 25.75d | 2025-05-15 A | 2025-05-31 A | PRO-SD-1DL-100, PRO-R16-SD-DL-100 | 100% |  |
|  | 2 | **Catch Basin Sections** |  | 2025-05-10 | 2025-06-01 |  |  |  |
| PRO-R15-SD-DL-110 |  | Material Delivery & Site Inspection of Catch Basin Pipes for Storm Drainage Network | 26d | 2025-05-10 A | 2025-05-29 A | PRO-SD-1DL-120, PRO-R16-SD-DL-110 | 100% |  |
| PRO-R15-SD-DL-130 |  | Material Delivery & Site Inspection of Catch Basins for Storm Drainage Network | 26d | 2025-05-24 A | 2025-06-01 A | PRO-SD-1DL-130, PRO-R16-SD-DL-130 | 100% |  |
|  | 3 | **Testing and Finishes** |  | 2026-11-15 | 2026-12-20 |  |  |  |
| PRO-R15-SD-DL-160 |  | Material Delivery & Site Inspection of Epoxy Insulation for Storm Drainage Network | 26d | 2026-11-15 | 2026-12-14 | PRO-SD-1DL-160, PRO-R16-SD-DL-160 SS+5d |  | -85d |
| PRO-R15-SD-DL-140 |  | Material Delivery & Site Inspection of Manholes Covers for Storm Drainage Network | 26d | 2026-11-21 | 2026-12-20 | PRO-SD-1DL-140, PRO-R16-SD-DL-140 SS+5d |  | -139d |
| PRO-R15-SD-DL-150 |  | Material Delivery & Site Inspection of Catch Basin Covers for Storm Drainage Network | 26d | 2026-11-21 | 2026-12-20 | PRO-SD-1DL-150, PRO-R16-SD-DL-150 SS+5d |  | -138d |
|  | 4 | **Road 10 Local 2 ( 2352 LM )** |  | 2025-06-10 | 2026-12-26 |  |  |  |
|  | 1 | **Main Line Sections** |  | 2025-06-10 | 2025-06-25 |  |  |  |
| PRO-R10-SD-DL-100 |  | Material Delivery & Site Inspection of Manholes of Storm Drainage Network | 26d | 2025-06-10 A | 2025-06-25 A | PRO-SD-1DL-100, PRO-R15-SD-DL-100 | 100% |  |
| PRO-R10-SD-DL-120 |  | Material Delivery & Site Inspection of Main Line Pipes of Storm Drainage Network | 17d | 2025-06-10 A | 2025-06-25 A | PRO-SD-1DL-110, PRO-R15-SD-DL-120 | 100% |  |
|  | 2 | **Catch Basin Sections** |  | 2025-06-12 | 2025-07-12 |  |  |  |
| PRO-R10-SD-DL-110 |  | Material Delivery & Site Inspection of Catch Basin Pipes for Storm Drainage Network | 26d | 2025-06-12 A | 2025-07-12 A | PRO-SD-1DL-120, PRO-R15-SD-DL-110 | 100% |  |
| PRO-R10-SD-DL-130 |  | Material Delivery & Site Inspection of Catch Basins for Storm Drainage Network | 26d | 2025-06-12 A | 2025-06-30 A | PRO-SD-1DL-130, PRO-R15-SD-DL-130 | 100% |  |
|  | 3 | **Testing and Finishes** |  | 2026-06-17 | 2026-12-26 |  |  |  |
| PRO-R10-SD-DL-150 |  | Material Delivery & Site Inspection of Catch Basin Covers for Storm Drainage Network | 26d | 2026-06-17 A | 2026-08-30 A | PRO-SD-1DL-150, PRO-R15-SD-DL-150 | 100% |  |
| PRO-R10-SD-DL-160 |  | Material Delivery & Site Inspection of Epoxy Insulation for Storm Drainage Network | 26d | 2026-06-18 A | 2026-07-30 A | PRO-SD-1DL-160, PRO-R15-SD-DL-160 | 100% |  |
| PRO-R10-SD-DL-140 |  | Material Delivery & Site Inspection of Manholes Covers for Storm Drainage Network | 26d | 2026-11-26 | 2026-12-26 | PRO-SD-1DL-140, PRO-R15-SD-DL-140 SS+5d |  | -139d |
|  | 6 | **Road 14 Local 1 ( 584 LM )** |  | 2025-07-15 | 2027-01-19 |  |  |  |
|  | 1 | **Main Line Sections** |  | 2025-07-15 | 2025-11-01 |  |  |  |
| PRO-R14-SD-DL-120 |  | Material Delivery & Site Inspection of Main Line Pipes of Storm Drainage Network | 17d | 2025-07-15 A | 2025-08-02 A | PRO-SD-1DL-110, PRO-R10-SD-DL-120 | 100% |  |
| PRO-R14-SD-DL-100 |  | Material Delivery & Site Inspection of Manholes of Storm Drainage Network | 26d | 2025-10-04 A | 2025-11-01 A | PRO-SD-1DL-100, PRO-R10-SD-DL-100 | 100% |  |
|  | 2 | **Catch Basin Sections** |  | 2025-10-04 | 2026-06-15 |  |  |  |
| PRO-R14-SD-DL-130 |  | Material Delivery & Site Inspection of Catch Basins for Storm Drainage Network | 26d | 2025-10-04 A | 2025-11-01 A | PRO-SD-1DL-130, PRO-R10-SD-DL-130 | 100% |  |

| ID | WBS | Task | Duration | Start | Finish | Predecessors | Complete | Total float |
| --- | --- | --- | --- | --- | --- | --- | --- | --- |
| PRO-R14-SD-DL-110 |  | Material Delivery & Site Inspection of Catch Basin Pipes for Storm Drainage Network | 26d | 2026-06-04 A | 2026-06-15 A | PRO-SD-1DL-120, PRO-R10-SD-DL-110 | 100% |  |
|  | 3 | **Testing and Finishes** |  | 2026-07-24 | 2027-01-19 |  |  |  |
| PRO-R14-SD-DL-160 |  | Material Delivery & Site Inspection of Epoxy Insulation for Storm Drainage Network | 26d | 2026-07-24 A | 2026-07-30 A | PRO-SD-1DL-160, PRO-R10-SD-DL-160 | 100% |  |
| PRO-R14-SD-DL-140 |  | Material Delivery & Site Inspection of Manholes Covers for Storm Drainage Network | 26d | 2026-12-02 | 2026-12-31 | PRO-SD-1DL-140, PRO-R10-SD-DL-140 SS+5d |  | -139d |
| PRO-R14-SD-DL-150 |  | Material Delivery & Site Inspection of Catch Basin Covers for Storm Drainage Network | 26d | 2026-12-21 | 2027-01-19 | PRO-SD-1DL-150, PRO-R10-SD-DL-150 SS+5d |  | -138d |
|  | 2 | **Road 09 Local 2 ( 2278 LM )** |  | 2025-06-03 | 2027-01-25 |  |  |  |
|  | 1 | **Main Line Sections** |  | 2025-06-03 | 2025-06-30 |  |  |  |
| PRO-R09-SD-DL-120 |  | Material Delivery & Site Inspection of Main Line Pipes of Storm Drainage Network | 17d | 2025-06-03 A | 2025-06-30 A | PRO-SD-1DL-110, PRO-R14-SD-DL-120 | 100% |  |
| PRO-R09-SD-DL-100 |  | Material Delivery & Site Inspection of Manholes of Storm Drainage Network | 12d | 2025-06-14 A | 2025-06-30 A | PRO-SD-1DL-100, PRO-R14-SD-DL-100 | 100% |  |
|  | 2 | **Catch Basin Sections** |  | 2025-12-01 | 2025-12-08 |  |  |  |
| PRO-R09-SD-DL-110 |  | Material Delivery & Site Inspection of Catch Basin Pipes for Storm Drainage Network | 26d | 2025-12-01 A | 2025-12-08 A | PRO-SD-1DL-120, PRO-R14-SD-DL-110 | 100% |  |
| PRO-R09-SD-DL-130 |  | Material Delivery & Site Inspection of Catch Basins for Storm Drainage Network | 26d | 2025-12-01 A | 2025-12-07 A | PRO-SD-1DL-130, PRO-R14-SD-DL-130 | 100% |  |
|  | 3 | **Testing and Finishes** |  | 2026-08-24 | 2027-01-25 |  |  |  |
| PRO-R09-SD-DL-160 |  | Material Delivery & Site Inspection of Epoxy Insulation for Storm Drainage Network | 26d | 2026-08-24 A | 2026-08-29 A | PRO-SD-1DL-160, PRO-R14-SD-DL-160 | 100% |  |
| PRO-R09-SD-DL-140 |  | Material Delivery & Site Inspection of Manholes Covers for Storm Drainage Network | 26d | 2026-12-08 | 2027-01-06 | PRO-SD-1DL-140, PRO-R14-SD-DL-140 SS+5d |  | -139d |
| PRO-R09-SD-DL-150 |  | Material Delivery & Site Inspection of Catch Basin Covers for Storm Drainage Network | 26d | 2026-12-27 | 2027-01-25 | PRO-SD-1DL-150, PRO-R14-SD-DL-150 SS+5d |  | -138d |
|  | 5 | **Road 11 Local 1 ( 670 LM )** |  | 2025-07-29 | 2027-01-12 |  |  |  |
|  | 1 | **Main Line Sections** |  | 2025-07-29 | 2026-07-02 |  |  |  |
| PRO-R11-SD-DL-120 |  | Material Delivery & Site Inspection of Main Line Pipes of Storm Drainage Network | 17d | 2025-07-29 A | 2025-08-07 A | PRO-SD-1DL-110, PRO-R09-SD-DL-120 | 100% |  |
| PRO-R11-SD-DL-100 |  | Material Delivery & Site Inspection of Manholes of Storm Drainage Network | 26d | 2025-11-01 A | 2026-07-02 A | PRO-SD-1DL-100, PRO-R09-SD-DL-100 | 100% |  |
|  | 2 | **Catch Basin Sections** |  | 2025-12-01 | 2026-07-06 |  |  |  |
| PRO-R11-SD-DL-130 |  | Material Delivery & Site Inspection of Catch Basins for Storm Drainage Network | 26d | 2025-12-01 A | 2025-12-08 A | PRO-SD-1DL-130, PRO-R09-SD-DL-130 | 100% |  |
| PRO-R11-SD-DL-110 |  | Material Delivery & Site Inspection of Catch Basin Pipes for Storm Drainage Network | 26d | 2026-06-14 A | 2026-07-06 A | PRO-SD-1DL-120, PRO-R09-SD-DL-110 | 100% |  |
|  | 3 | **Testing and Finishes** |  | 2026-06-22 | 2027-01-12 |  |  |  |
| PRO-R11-SD-DL-160 |  | Material Delivery & Site Inspection of Epoxy Insulation for Storm Drainage Network | 26d | 2026-06-22 A | 2026-09-16 A | PRO-SD-1DL-160, PRO-R09-SD-DL-160 | 100% |  |
| PRO-R11-SD-DL-150 |  | Material Delivery & Site Inspection of Catch Basin Covers for Storm Drainage Network | 26d | 2026-06-27 A | 2026-08-30 A | PRO-SD-1DL-150, PRO-R09-SD-DL-150 | 100% |  |
| PRO-R11-SD-DL-140 |  | Material Delivery & Site Inspection of Manholes Covers for Storm Drainage Network | 26d | 2026-12-14 | 2027-01-12 | PRO-SD-1DL-140, PRO-R09-SD-DL-140 SS+5d |  | -93d |
|  | PW | **Potable Water Network** |  | 2025-02-11 | 2027-01-31 |  |  |  |
|  | PO | **Issuance of Purchase Orders** |  | 2025-02-11 | 2025-02-23 |  |  |  |
|  | 1 | **Main Line Sections** |  | 2025-02-11 | 2025-02-17 |  |  |  |
| PRO-PW-PO-100 |  | Issuance of Purchase Order for Main Line Pipes of Potable Water Network | 6d | 2025-02-11 A | 2025-02-17 A | ENG-MT-PW-ML-A-100, ENG-SH-PW-ML-A-110, ENG-MS-PW-ML-A-110, ENG-SH-PW-FH-A-110 | 100% |  |
| PRO-PW-PO-110 |  | Issuance of Purchase Order for Valves of Potable Water Network | 6d | 2025-02-11 A | 2025-02-17 A | ENG-MT-PW-ML-A-110, ENG-SH-PW-ML-A-110, ENG-MS-PW-ML-A-110, ENG-SH-PW-FH-A-110 | 100% |  |
|  | 3 | **Fire Hydrant** |  | 2025-02-11 | 2025-02-23 |  |  |  |
| PRO-PW-PO-120 |  | Issuance of Purchase Order for Fire Hydrants of Potable Water Network | 10d | 2025-02-11 A | 2025-02-23 A | ENG-MT-PW-FH-A-100, ENG-SH-PW-ML-A-110, ENG-MS-PW-ML-A-110, ENG-SH-PW-FH-A-110 | 100% |  |
|  | 4 | **Testing and Finishes** |  | 2025-02-11 | 2025-02-23 |  |  |  |
| PRO-PW-PO-130 |  | Issuance of Purchase Order for Surface Box of Potable Water Network | 10d | 2025-02-11 A | 2025-02-23 A | ENG-MT-PW-TF-A-100, ENG-SH-PW-ML-A-110, ENG-MS-PW-ML-A-110, ENG-SH-PW-FH-A-110 | 100% |  |
|  | MF | **Manufacturing of Material** |  | 2025-02-18 | 2025-05-31 |  |  |  |
|  | 1 | **Main Line Sections** |  | 2025-02-18 | 2025-05-31 |  |  |  |
| PRO-PW-MF-100 |  | Manufacturing of Main Line Pipes for Potable Water Network | 60d | 2025-02-18 A | 2025-05-22 A | PRO-PW-PO-100 | 100% |  |
| PRO-PW-MF-110 |  | Manufacturing of Valves for Potable Water Network | 60d | 2025-02-18 A | 2025-05-31 A | PRO-PW-PO-110 | 100% |  |
|  | 3 | **Fire Hydrant** |  | 2025-02-24 | 2025-05-21 |  |  |  |
| PRO-PW-MF-120 |  | Manufacturing of Fire Hydrants for Potable Water Network | 60d | 2025-02-24 A | 2025-05-21 A | PRO-PW-PO-120 | 100% |  |
|  | 4 | **Testing and Finishes** |  | 2025-02-24 | 2025-04-26 |  |  |  |
| PRO-PW-MF-130 |  | Manufacturing for Surface Box of Potable Water Network | 80d | 2025-02-24 A | 2025-04-26 A | PRO-PW-PO-130 | 100% |  |
|  | 1DL | **1st Material Delivery & Site Inspection** |  | 2025-04-29 | 2025-12-01 |  |  |  |
|  | 1 | **Main Line Sections** |  | 2025-04-29 | 2025-10-10 |  |  |  |
| PRO-PW-1DL-100 |  | 1ST Material Delivery for Main Line Pipes of Potable Water Network | 6d | 2025-04-29 A | 2025-05-28 A | PRO-PW-MF-100 | 100% |  |
| PRO-PW-1DL-110 |  | 1ST Material Delivery for Valves of Potable Water Network | 6d | 2025-06-21 A | 2025-10-10 A | PRO-PW-MF-110 | 100% |  |
|  | 3 | **Fire Hydrant** |  | 2025-11-01 | 2025-11-04 |  |  |  |
| PRO-PW-1DL-120 |  | 1ST Material Delivery for Fire Hydrants of Potable Water Network | 6d | 2025-11-01 A | 2025-11-04 A | PRO-PW-MF-120 | 100% |  |
|  | 4 | **Testing and Finishes** |  | 2025-11-24 | 2025-12-01 |  |  |  |
| PRO-PW-1DL-130 |  | 1ST Material Delivery for Finishes of Potable Water Network | 6d | 2025-11-24 A | 2025-12-01 A | PRO-PW-MF-130 | 100% |  |
|  | DL | **Material Delivery & Site Inspection** |  | 2025-04-29 | 2027-01-31 |  |  |  |
|  | 1 | **Road 18 Local 1 ( 479 LM )** |  | 2025-05-03 | 2026-12-02 |  |  |  |
|  | 1 | **Main Line Sections** |  | 2025-05-03 | 2025-11-04 |  |  |  |
| PRO-R18-PW-DL-140 |  | Material Delivery & Site Inspection of Main Line Pipes for Potable Water Network | 26d | 2025-05-03 A | 2025-05-28 A | PRO-PW-1DL-100 | 100% |  |
| PRO-R18-PW-DL-150 |  | Material Delivery & Site Inspection of Valves for Potable Water Network | 26d | 2025-06-21 A | 2025-11-04 A | PRO-PW-1DL-110 | 100% |  |
|  | 3 | **Fire Hydrant** |  | 2026-07-14 | 2026-07-18 |  |  |  |
| PRO-R18-PW-DL-160 |  | Material Delivery & Site Inspection of Fire Hydrants for Potable Water Network | 26d | 2026-07-14 A | 2026-07-18 A | PRO-PW-1DL-120 | 100% |  |
|  | 4 | **Testing and Finishes** |  | 2026-11-03 | 2026-12-02 |  |  |  |
| PRO-R18-PW-DL-170 |  | Material Delivery & Site Inspection for Finishes of Potable Water Network | 26d | 2026-11-03 | 2026-12-02 | PRO-PW-1DL-130 |  | -134d |
|  | 9 | **Road 17 Local 1 ( 500 LM )** |  | 2025-05-17 | 2026-12-08 |  |  |  |
|  | 1 | **Main Line Sections** |  | 2025-05-17 | 2026-12-02 |  |  |  |
| PRO-R17-PW-DL-100 |  | Material Delivery & Site Inspection of Main Line Pipes for Potable Water Network | 26d | 2025-05-17 A | 2025-05-31 A | PRO-PW-1DL-100, PRO-R18-PW-DL-140 | 100% |  |
| PRO-R17-PW-DL-110 |  | Material Delivery & Site Inspection of Valves for Potable Water Network | 26d | 2026-11-03 | 2026-12-02 | PRO-PW-1DL-110, PRO-R18-PW-DL-150 SS+5d |  | -256d |
|  | 3 | **Fire Hydrant** |  | 2026-07-14 | 2026-07-18 |  |  |  |
| PRO-R17-PW-DL-120 |  | Material Delivery & Site Inspection of Fire Hydrants for Potable Water Network | 26d | 2026-07-14 A | 2026-07-18 A | PRO-PW-1DL-120, PRO-R18-PW-DL-160 | 100% |  |
|  | 4 | **Testing and Finishes** |  | 2026-11-09 | 2026-12-08 |  |  |  |
| PRO-R17-PW-DL-130 |  | Material Delivery & Site Inspection for Finishes of Potable Water Network | 26d | 2026-11-09 | 2026-12-08 | PRO-PW-1DL-130, PRO-R18-PW-DL-170 SS+5d |  | -134d |
|  | 8 | **Road 16 Local 1 ( 527 LM )** |  | 2025-04-29 | 2026-12-14 |  |  |  |

| ID | WBS | Task | Duration | Start | Finish | Predecessors | Complete | Total float |
| --- | --- | --- | --- | --- | --- | --- | --- | --- |
|  | 1 | **Main Line Sections** |  | 2025-04-29 | 2026-12-08 |  |  |  |
| PRO-R16-PW-DL-100 |  | Material Delivery & Site Inspection of Main Line Pipes for Potable Water Network | 26d | 2025-04-29 A | 2025-05-29 A | PRO-PW-1DL-100, PRO-R17-PW-DL-100 | 100% |  |
| PRO-R16-PW-DL-110 |  | Material Delivery & Site Inspection of Valves for Potable Water Network | 26d | 2026-11-09 | 2026-12-08 | PRO-PW-1DL-110, PRO-R17-PW-DL-110 SS+5d |  | -256d |
|  | 3 | **Fire Hydrant** |  | 2026-07-14 | 2026-07-18 |  |  |  |
| PRO-R16-PW-DL-120 |  | Material Delivery & Site Inspection of Fire Hydrants for Potable Water Network | 26d | 2026-07-14 A | 2026-07-18 A | PRO-PW-1DL-120, PRO-R17-PW-DL-120 | 100% |  |
|  | 4 | **Testing and Finishes** |  | 2026-11-15 | 2026-12-14 |  |  |  |
| PRO-R16-PW-DL-130 |  | Material Delivery & Site Inspection for Finishes of Potable Water Network | 26d | 2026-11-15 | 2026-12-14 | PRO-PW-1DL-130, PRO-R17-PW-DL-130 SS+5d |  | -134d |
|  | 7 | **Road 15 Local 1 ( 556 LM )** |  | 2025-05-12 | 2026-12-20 |  |  |  |
|  | 1 | **Main Line Sections** |  | 2025-05-12 | 2026-12-14 |  |  |  |
| PRO-R15-PW-DL-100 |  | Material Delivery & Site Inspection of Main Line Pipes for Potable Water Network | 26d | 2025-05-12 A | 2025-05-29 A | PRO-PW-1DL-100, PRO-R16-PW-DL-100 | 100% |  |
| PRO-R15-PW-DL-110 |  | Material Delivery & Site Inspection of Valves for Potable Water Network | 26d | 2026-11-15 | 2026-12-14 | PRO-PW-1DL-110, PRO-R16-PW-DL-110 SS+5d |  | -256d |
|  | 3 | **Fire Hydrant** |  | 2026-07-14 | 2026-07-18 |  |  |  |
| PRO-R15-PW-DL-120 |  | Material Delivery & Site Inspection of Fire Hydrants for Potable Water Network | 26d | 2026-07-14 A | 2026-07-18 A | PRO-PW-1DL-120, PRO-R16-PW-DL-120 | 100% |  |
|  | 4 | **Testing and Finishes** |  | 2026-11-21 | 2026-12-20 |  |  |  |
| PRO-R15-PW-DL-130 |  | Material Delivery & Site Inspection for Finishes of Potable Water Network | 26d | 2026-11-21 | 2026-12-20 | PRO-PW-1DL-130, PRO-R16-PW-DL-130 SS+5d |  | -134d |
|  | 4 | **Road 10 Local 2 ( 2352 LM )** |  | 2025-05-30 | 2026-12-26 |  |  |  |
|  | 1 | **Main Line Sections** |  | 2025-05-30 | 2026-11-23 |  |  |  |
| PRO-R10-PW-DL-100 |  | Material Delivery & Site Inspection of Main Line Pipes for Potable Water Network | 26d | 2025-05-30 A | 2025-06-26 A | PRO-PW-1DL-100, PRO-R15-PW-DL-100 | 100% |  |
| PRO-R10-PW-DL-110 |  | Material Delivery & Site Inspection of Valves for Potable Water Network | 26d | 2025-12-13 A | 2026-11-23 | PRO-PW-1DL-110, PRO-R15-PW-DL-110 SS+5d | 80% | -256d |
|  | 3 | **Fire Hydrant** |  | 2026-07-14 | 2026-07-18 |  |  |  |
| PRO-R10-PW-DL-120 |  | Material Delivery & Site Inspection of Fire Hydrants for Potable Water Network | 26d | 2026-07-14 A | 2026-07-18 A | PRO-PW-1DL-120, PRO-R15-PW-DL-120 | 100% |  |
|  | 4 | **Testing and Finishes** |  | 2026-11-26 | 2026-12-26 |  |  |  |
| PRO-R10-PW-DL-130 |  | Material Delivery & Site Inspection for Finishes of Potable Water Network | 26d | 2026-11-26 | 2026-12-26 | PRO-PW-1DL-130, PRO-R15-PW-DL-130 SS+5d |  | -134d |
|  | 3 | **Road 14 Local 1 ( 584 LM )** |  | 2025-07-22 | 2026-11-21 |  |  |  |
|  | 1 | **Main Line Sections** |  | 2025-07-22 | 2026-11-21 |  |  |  |
| PRO-R14-PW-DL-100 |  | Material Delivery & Site Inspection of Main Line Pipes for Potable Water Network | 26d | 2025-07-22 A | 2025-08-04 A | PRO-PW-1DL-100, PRO-R10-PW-DL-100 | 100% |  |
| PRO-R14-PW-DL-110 |  | Material Delivery & Site Inspection of Valves for Potable Water Network | 26d | 2026-10-10 A | 2026-11-21 | PRO-PW-1DL-110, PRO-R10-PW-DL-110 SS+5d | 10% | -204.5d |
|  | 3 | **Fire Hydrant** |  | 2025-12-01 | 2026-07-18 |  |  |  |
| PRO-R14-PW-DL-120 |  | Material Delivery & Site Inspection of Fire Hydrants for Potable Water Network | 26d | 2025-12-01 A | 2026-07-18 A | PRO-PW-1DL-120, PRO-R10-PW-DL-120 | 100% |  |
|  | 4 | **Testing and Finishes** |  | 2025-12-01 | 2025-12-08 |  |  |  |
| PRO-R14-PW-DL-130 |  | Material Delivery & Site Inspection for Finishes of Potable Water Network | 26d | 2025-12-01 A | 2025-12-08 A | PRO-PW-1DL-130, PRO-R10-PW-DL-130 | 100% |  |
|  | 2 | **Road 09 Local 2 ( 2278 LM )** |  | 2025-11-01 | 2027-01-25 |  |  |  |
|  | 1 | **Main Line Sections** |  | 2025-11-01 | 2026-08-17 |  |  |  |
| PRO-R09-PW-DL-100 |  | Material Delivery & Site Inspection of Main Line Pipes for Potable Water Network | 26d | 2025-11-01 A | 2025-11-08 A | PRO-PW-1DL-100, PRO-R14-PW-DL-100 | 100% |  |
| PRO-R09-PW-DL-110 |  | Material Delivery & Site Inspection of Valves for Potable Water Network | 26d | 2026-06-30 A | 2026-08-17 A | PRO-PW-1DL-110, PRO-R14-PW-DL-110 | 100% |  |
|  | 3 | **Fire Hydrant** |  | 2026-07-14 | 2026-07-18 |  |  |  |
| PRO-R09-PW-DL-120 |  | Material Delivery & Site Inspection of Fire Hydrants for Potable Water Network | 26d | 2026-07-14 A | 2026-07-18 A | PRO-PW-1DL-120, PRO-R14-PW-DL-120 | 100% |  |
|  | 4 | **Testing and Finishes** |  | 2026-12-27 | 2027-01-25 |  |  |  |
| PRO-R09-PW-DL-130 |  | Material Delivery & Site Inspection for Finishes of Potable Water Network | 26d | 2026-12-27 | 2027-01-25 | PRO-PW-1DL-130, PRO-R14-PW-DL-130 SS+5d |  | -134d |
|  | 5 | **Road 11 Local 1 ( 670 LM )** |  | 2025-08-02 | 2027-01-31 |  |  |  |
|  | 1 | **Main Line Sections** |  | 2025-08-02 | 2026-12-20 |  |  |  |
| PRO-R11-PW-DL-100 |  | Material Delivery & Site Inspection of Main Line Pipes for Potable Water Network | 26d | 2025-08-02 A | 2025-08-09 A | PRO-PW-1DL-100, PRO-R09-PW-DL-100 | 100% |  |
| PRO-R11-PW-DL-110 |  | Material Delivery & Site Inspection of Valves for Potable Water Network | 26d | 2026-11-21 | 2026-12-20 | PRO-PW-1DL-110, PRO-R09-PW-DL-110 SS+5d |  | -196d |
|  | 3 | **Fire Hydrant** |  | 2026-07-14 | 2026-07-18 |  |  |  |
| PRO-R11-PW-DL-120 |  | Material Delivery & Site Inspection of Fire Hydrants for Potable Water Network | 26d | 2026-07-14 A | 2026-07-18 A | PRO-PW-1DL-120, PRO-R09-PW-DL-120 | 100% |  |
|  | 4 | **Testing and Finishes** |  | 2027-01-02 | 2027-01-31 |  |  |  |
| PRO-R11-PW-DL-130 |  | Material Delivery & Site Inspection for Finishes of Potable Water Network | 26d | 2027-01-02 | 2027-01-31 | PRO-PW-1DL-130, PRO-R09-PW-DL-130 SS+5d |  | -133d |
|  | IR | **Irrigation Network** |  | 2025-02-11 | 2026-12-10 |  |  |  |
|  | PO | **Issuance of Purchase Orders** |  | 2025-02-11 | 2025-02-17 |  |  |  |
|  | 1 | **Main Line Pipes** |  | 2025-02-11 | 2025-02-17 |  |  |  |
| PRO-IR-PO-100 |  | Issuance of Purchase Order for Main Line Pipes of Irrigation Network | 6d | 2025-02-11 A | 2025-02-17 A | ENG-MT-IR-ML-A-100, ENG-SH-IR-ML-A-110, ENG-MS-IR-ML-A-110 | 100% |  |
| PRO-IR-PO-110 |  | Issuance of Purchase Order for Valves of Irrigation Network | 6d | 2025-02-11 A | 2025-02-17 A | ENG-MT-IR-ML-A-110, ENG-SH-IR-ML-A-110, ENG-MS-IR-ML-A-110 | 100% |  |
|  | MF | **Manufacturing of Material** |  | 2025-02-18 | 2025-04-30 |  |  |  |
|  | 1 | **Main Line Pipes** |  | 2025-02-18 | 2025-04-30 |  |  |  |
| PRO-IR-MF-100 |  | Manufacturing of Main Line Pipes for Irrigation Network | 105d | 2025-02-18 A | 2025-04-30 A | PRO-IR-PO-100 | 100% |  |
| PRO-IR-MF-110 |  | Manufacturing of Valves for Irrigation Network | 119d | 2025-02-18 A | 2025-04-08 A | PRO-IR-PO-110 | 100% |  |
|  | 1DL | **1st Material Delivery & Site Inspection** |  | 2025-05-01 | 2026-11-04 |  |  |  |
|  | 1 | **Main Line Pipes** |  | 2025-05-01 | 2026-11-04 |  |  |  |
| PRO-IR-1DL-100 |  | 1ST Material Delivery for Main Line Pipes of Irrigation Network | 6d | 2025-05-01 A | 2025-05-10 A | PRO-IR-MF-100 | 100% |  |
| PRO-IR-1DL-110 |  | 1ST Material Delivery for Valves of Irrigation Network | 6d | 2025-12-11 A | 2026-11-04 | PRO-IR-MF-110 | 50% | -258d |
|  | DL | **Material Delivery & Site Inspection** |  | 2025-05-03 | 2026-12-10 |  |  |  |
|  | 1 | **Road 18 Local 1 ( 479 LM )** |  | 2025-05-03 | 2026-11-23 |  |  |  |
|  | 1 | **Main Line Pipes** |  | 2025-05-03 | 2026-11-23 |  |  |  |
| PRO-R18-IR-DL-120 |  | Material Delivery & Site Inspection of Main Line Pipes for Irrigation Network | 16d | 2025-05-03 A | 2025-05-17 A | PRO-IR-1DL-100 | 100% |  |
| PRO-R18-IR-DL-130 |  | Material Delivery & Site Inspection of Valves for Irrigation Network | 16d | 2026-11-05 | 2026-11-23 | PRO-IR-1DL-110 |  | -258d |
|  | 9 | **Road 17 Local 1 ( 500 LM )** |  | 2025-05-05 | 2026-11-29 |  |  |  |
|  | 1 | **Main Line Pipes** |  | 2025-05-05 | 2026-11-29 |  |  |  |
| PRO-R17-IR-DL-100 |  | Material Delivery & Site Inspection of Main Line Pipes for Irrigation Network | 16d | 2025-05-05 A | 2025-05-20 A | PRO-IR-1DL-100, PRO-R18-IR-DL-120 | 100% |  |
| PRO-R17-IR-DL-110 |  | Material Delivery & Site Inspection of Valves for Irrigation Network | 16d | 2026-11-11 | 2026-11-29 | PRO-IR-1DL-110, PRO-R18-IR-DL-130 SS+5d |  | -258d |
|  | 8 | **Road 16 Local 1 ( 527 LM )** |  | 2025-05-14 | 2026-12-05 |  |  |  |

| ID | WBS | Task | Duration | Start | Finish | Predecessors | Complete | Total float |
| --- | --- | --- | --- | --- | --- | --- | --- | --- |
|  | 1 | **Main Line Pipes** |  | 2025-05-14 | 2026-12-05 |  |  |  |
| PRO-R16-IR-DL-100 |  | Material Delivery & Site Inspection of Main Line Pipes for Irrigation Network | 16d | 2025-05-14 A | 2025-05-31 A | PRO-IR-1DL-100, PRO-R17-IR-DL-100 | 100% |  |
| PRO-R16-IR-DL-110 |  | Material Delivery & Site Inspection of Valves for Irrigation Network | 16d | 2026-11-17 | 2026-12-05 | PRO-IR-1DL-110, PRO-R17-IR-DL-110 SS+5d |  | -258d |
|  | 7 | **Road 15 Local 1 ( 556 LM )** |  | 2025-05-06 | 2026-12-10 |  |  |  |
|  | 1 | **Main Line Pipes** |  | 2025-05-06 | 2026-12-10 |  |  |  |
| PRO-R15-IR-DL-100 |  | Material Delivery & Site Inspection of Main Line Pipes for Irrigation Network | 16d | 2025-05-06 A | 2025-05-29 A | PRO-IR-1DL-100, PRO-R16-IR-DL-100 | 100% |  |
| PRO-R15-IR-DL-110 |  | Material Delivery & Site Inspection of Valves for Irrigation Network | 16d | 2026-11-23 | 2026-12-10 | PRO-IR-1DL-110, PRO-R16-IR-DL-110 SS+5d |  | -258d |
|  | 4 | **Road 10 Local 2 ( 2352 LM )** |  | 2025-06-19 | 2026-06-01 |  |  |  |
|  | 1 | **Main Line Pipes** |  | 2025-06-19 | 2026-06-01 |  |  |  |
| PRO-R19.2-IR-DL-100 |  | Material Delivery & Site Inspection of Main Line Pipes for Irrigation Network | 16d | 2025-06-19 A | 2025-07-08 A | PRO-IR-1DL-100, PRO-R15-IR-DL-100 | 100% |  |
| PRO-R19.2-IR-DL-110 |  | Material Delivery & Site Inspection of Valves for Irrigation Network | 16d | 2025-12-11 A | 2026-06-01 A | PRO-IR-1DL-110, PRO-R15-IR-DL-110 | 100% |  |
|  | 6 | **Road 14 Local 1 ( 584 LM )** |  | 2025-10-13 | 2026-06-01 |  |  |  |
|  | 1 | **Main Line Pipes** |  | 2025-10-13 | 2026-06-01 |  |  |  |
| PRO-R14-IR-DL-100 |  | Material Delivery & Site Inspection of Main Line Pipes for Irrigation Network | 16d | 2025-10-13 A | 2026-06-01 A | PRO-IR-1DL-100, PRO-R19.2-IR-DL-100 | 100% |  |
| PRO-R14-IR-DL-110 |  | Material Delivery & Site Inspection of Valves for Irrigation Network | 16d | 2026-05-21 A | 2026-06-01 A | PRO-IR-1DL-110, PRO-R19.2-IR-DL-110 | 100% |  |
|  | 2 | **Road 09 Local 2 ( 2278 LM )** |  | 2025-11-30 | 2026-06-02 |  |  |  |
|  | 1 | **Main Line Pipes** |  | 2025-11-30 | 2026-06-02 |  |  |  |
| PRO-R09-IR-DL-100 |  | Material Delivery & Site Inspection of Main Line Pipes for Irrigation Network | 16d | 2025-11-30 A | 2026-06-02 A | PRO-IR-1DL-100, PRO-R14-IR-DL-100 | 100% |  |
| PRO-R09-IR-DL-110 |  | Material Delivery & Site Inspection of Valves for Irrigation Network | 16d | 2026-05-21 A | 2026-06-02 A | PRO-IR-1DL-110, PRO-R14-IR-DL-110 | 100% |  |
|  | 5 | **Road 11 Local 1 ( 670 LM )** |  | 2025-10-13 | 2026-06-01 |  |  |  |
|  | 1 | **Main Line Pipes** |  | 2025-10-13 | 2026-06-01 |  |  |  |
| PRO-R11-IR-DL-140 |  | Material Delivery & Site Inspection of Main Line Pipes for Irrigation Network | 16d | 2025-10-13 A | 2026-06-01 A | PRO-IR-1DL-100, PRO-R09-IR-DL-100 | 100% |  |
| PRO-R11-IR-DL-150 |  | Material Delivery & Site Inspection of Valves for Irrigation Network | 16d | 2026-05-19 A | 2026-06-01 A | PRO-IR-1DL-110, PRO-R09-IR-DL-110 | 100% |  |
|  | MV | **Medium Voltage Network** |  | 2025-02-11 | 2026-10-07 |  |  |  |
|  | PO | **Issuance of Purchase Orders** |  | 2025-02-11 | 2025-03-10 |  |  |  |
|  | 1 | **Cabling Works** |  | 2025-02-11 | 2025-02-25 |  |  |  |
| PRO-MV-PO-100 |  | Issuance of Purchase Order for Medium Voltage Cables of Medium Voltage Network | 12d | 2025-02-11 A | 2025-02-25 A | ENG-MT-MV-ML-A-100, ENG-SH-MV-A-110, ENG-MS-MV-A-110 | 100% |  |
|  | 2 | **RMU Concrete Works** |  | 2025-02-21 | 2025-03-10 |  |  |  |
| PRO-MV-PO-110 |  | Issuance of Purchase Order for RMU Concrete Foundations of Medium Voltage Network | 12d | 2025-02-21 A | 2025-03-10 A | ENG-MT-MV-SS-A-100, ENG-SH-MV-A-110, ENG-MS-MV-A-110 | 100% |  |
|  | 3 | **Termination and Testing Works** |  | 2025-02-11 | 2025-02-25 |  |  |  |
| PRO-MV-PO-120 |  | Issuance of Purchase Order for Termination and Joints Kits of Medium Voltage Network | 12d | 2025-02-11 A | 2025-02-25 A | ENG-MT-MV-TF-A-100, ENG-SH-MV-A-110, ENG-MS-MV-A-110 | 100% |  |
|  | MF | **Manufacturing of Material** |  | 2025-02-26 | 2025-07-15 |  |  |  |
|  | 1 | **Cabling Works** |  | 2025-02-26 | 2025-04-30 |  |  |  |
| PRO-MV-MF-100 |  | Manufacturing of Medium Voltage Cables for Medium Voltage Network | 52d | 2025-02-26 A | 2025-04-30 A | PRO-MV-PO-100 | 100% |  |
|  | 2 | **RMU Concrete Works** |  | 2025-03-11 | 2025-07-15 |  |  |  |
| PRO-MV-MF-120 |  | Manufacturing of RMU Concrete Foundations for Medium Voltage Network | 160d | 2025-03-11 A | 2025-07-15 A | PRO-MV-PO-110 | 100% |  |
|  | 3 | **Termination and Testing Works** |  | 2025-02-26 | 2025-04-29 |  |  |  |
| PRO-MV-MF-110 |  | Manufacturing of Termination and Joints Kits for Medium Voltage Network | 52d | 2025-02-26 A | 2025-04-29 A | PRO-MV-PO-120 | 100% |  |
|  | 1DL | **1st Material Delivery & Site Inspection** |  | 2025-05-01 | 2026-10-05 |  |  |  |
|  | 1 | **Cabling Works** |  | 2025-05-01 | 2025-05-15 |  |  |  |
| PRO-MV-1DL-100 |  | 1ST Material Delivery for Medium Voltage Cables of Medium Voltage Network | 12d | 2025-05-01 A | 2025-05-15 A | PRO-MV-MF-100 | 100% |  |
|  | 2 | **RMU Concrete Works** |  | 2026-07-07 | 2026-07-13 |  |  |  |
| PRO-MV-1DL-110 |  | 1ST Material Delivery for RMU Concrete Foundations of Medium Voltage Network | 52d | 2026-07-07 A | 2026-07-13 A | PRO-MV-MF-120 | 100% |  |
|  | 3 | **Termination and Testing Works** |  | 2026-09-03 | 2026-10-05 |  |  |  |
| PRO-MV-1DL-120 |  | 1ST Material Delivery for Termination and Joints Kits of Medium Voltage Network | 26d | 2026-09-03 A | 2026-10-05 A | PRO-MV-MF-110, PRO-MV-1DL-100 FF | 100% |  |
|  | DL | **Material Delivery & Site Inspection** |  | 2025-05-16 | 2026-10-07 |  |  |  |
|  | 1 | **Road 18 Local 1 ( 479 LM )** |  | 2025-05-16 | 2026-10-07 |  |  |  |
|  | 1 | **Cabling Works** |  | 2025-05-16 | 2025-05-27 |  |  |  |
| PRO-R18-MV-DL-120 |  | Material Delivery & Site Inspection of Medium Voltage Cables for Medium Voltage Network | 26d | 2025-05-16 A | 2025-05-27 A | PRO-MV-1DL-100 | 100% |  |
|  | 3 | **Termination and Testing Works** |  | 2026-10-07 | 2026-10-07 |  |  |  |
| PRO-R18-MV-DL-130 |  | Material Delivery & Site Inspection of Termination and Joints Kits for Medium Voltage Network | 26d | 2026-10-07 A | 2026-10-07 A | PRO-MV-1DL-120, PRO-R18-MV-DL-120 | 100% |  |
|  | 9 | **Road 17 Local 1 ( 500 LM )** |  | 2025-05-16 | 2026-10-07 |  |  |  |
|  | 1 | **Cabling Works** |  | 2025-05-16 | 2025-05-27 |  |  |  |
| PRO-R17-MV-DL-100 |  | Material Delivery & Site Inspection of Medium Voltage Cables for Medium Voltage Network | 26d | 2025-05-16 A | 2025-05-27 A | PRO-MV-1DL-100, PRO-R18-MV-DL-120 | 100% |  |
|  | 2 | **RMU Concrete Works** |  | 2026-07-07 | 2026-10-06 |  |  |  |
| PRO-R17-MV-DL-120 |  | Material Delivery & Site Inspection of RMU Concrete Foundations for Medium Voltage Network | 38d | 2026-07-07 A | 2026-10-06 A | PRO-MV-1DL-110, PRO-R10-MV-DL-120 | 100% |  |
|  | 3 | **Termination and Testing Works** |  | 2026-10-05 | 2026-10-07 |  |  |  |
| PRO-R17-MV-DL-110 |  | Material Delivery & Site Inspection of Termination and Joints Kits for Medium Voltage Network | 26d | 2026-10-05 A | 2026-10-07 A | PRO-MV-1DL-120, PRO-R18-MV-DL-130 | 100% |  |
|  | 3 | **Road 16 Local 1 ( 527 LM )** |  | 2025-05-16 | 2026-10-07 |  |  |  |
|  | 1 | **Cabling Works** |  | 2025-05-16 | 2025-05-29 |  |  |  |
| PRO-R16-MV-DL-100 |  | Material Delivery & Site Inspection of Medium Voltage Cables for Medium Voltage Network | 26d | 2025-05-16 A | 2025-05-29 A | PRO-MV-1DL-100, PRO-R17-MV-DL-100 | 100% |  |
|  | 3 | **Termination and Testing Works** |  | 2026-10-05 | 2026-10-07 |  |  |  |
| PRO-R16-MV-DL-110 |  | Material Delivery & Site Inspection of Termination and Joints Kits for Medium Voltage Network | 26d | 2026-10-05 A | 2026-10-07 A | PRO-MV-1DL-120, PRO-R17-MV-DL-110 | 100% |  |
|  | 7 | **Road 15 Local 1 ( 556 LM )** |  | 2025-05-16 | 2026-10-07 |  |  |  |
|  | 1 | **Cabling Works** |  | 2025-05-16 | 2025-05-29 |  |  |  |
| PRO-R15-MV-DL-100 |  | Material Delivery & Site Inspection of Medium Voltage Cables for Medium Voltage Network | 26d | 2025-05-16 A | 2025-05-29 A | PRO-MV-1DL-100, PRO-R16-MV-DL-100 | 100% |  |
|  | 3 | **Termination and Testing Works** |  | 2026-10-07 | 2026-10-07 |  |  |  |
| PRO-R15-MV-DL-110 |  | Material Delivery & Site Inspection of Termination and Joints Kits for Medium Voltage Network | 26d | 2026-10-07 A | 2026-10-07 A | PRO-MV-1DL-120, PRO-R16-MV-DL-110 | 100% |  |
|  | 4 | **Road 10 Local 2 ( 2352 LM )** |  | 2025-11-01 | 2026-10-07 |  |  |  |
|  | 1 | **Cabling Works** |  | 2025-11-01 | 2025-11-09 |  |  |  |

| ID | WBS | Task | Duration | Start | Finish | Predecessors | Complete | Total float |
| --- | --- | --- | --- | --- | --- | --- | --- | --- |
| PRO-R10-MV-DL-100 |  | Material Delivery & Site Inspection of Medium Voltage Cables for Medium Voltage Network | 26d | 2025-11-01 A | 2025-11-09 A | PRO-MV-1DL-100, PRO-R15-MV-DL-100 | 100% |  |
|  | 2 | **RMU Concrete Works** |  | 2026-07-15 | 2026-07-16 |  |  |  |
| PRO-R10-MV-DL-120 |  | Material Delivery & Site Inspection of RMU Concrete Foundations for Medium Voltage Network | 26d | 2026-07-15 A | 2026-07-16 A | PRO-MV-1DL-110, PRO-R11-MV-DL-100 FF | 100% |  |
|  | 3 | **Termination and Testing Works** |  | 2026-10-07 | 2026-10-07 |  |  |  |
| PRO-R10-MV-DL-110 |  | Material Delivery & Site Inspection of Termination and Joints Kits for Medium Voltage Network | 26d | 2026-10-07 A | 2026-10-07 A | PRO-MV-1DL-120, PRO-R15-MV-DL-110 | 100% |  |
|  | 6 | **Road 14 Local 1 ( 584 LM )** |  | 2025-08-16 | 2026-10-07 |  |  |  |
|  | 1 | **Cabling Works** |  | 2025-08-16 | 2025-08-16 |  |  |  |
| PRO-R14-MV-DL-100 |  | Material Delivery & Site Inspection of Medium Voltage Cables for Medium Voltage Network | 26d | 2025-08-16 A | 2025-08-16 A | PRO-MV-1DL-100, PRO-R10-MV-DL-100 | 100% |  |
|  | 3 | **Termination and Testing Works** |  | 2026-10-07 | 2026-10-07 |  |  |  |
| PRO-R14-MV-DL-110 |  | Material Delivery & Site Inspection of Termination and Joints Kits for Medium Voltage Network | 26d | 2026-10-07 A | 2026-10-07 A | PRO-MV-1DL-120, PRO-R10-MV-DL-110 | 100% |  |
|  | 2 | **Road 09 Local 2 ( 2278 LM )** |  | 2025-12-13 | 2026-10-07 |  |  |  |
|  | 1 | **Cabling Works** |  | 2025-12-13 | 2026-09-11 |  |  |  |
| PRO-R09-MV-DL-100 |  | Material Delivery & Site Inspection of Medium Voltage Cables for Medium Voltage Network | 26d | 2025-12-13 A | 2026-09-11 A | PRO-MV-1DL-100, PRO-R14-MV-DL-100 | 100% |  |
|  | 3 | **Termination and Testing Works** |  | 2026-10-07 | 2026-10-07 |  |  |  |
| PRO-R09-MV-DL-110 |  | Material Delivery & Site Inspection of Termination and Joints Kits for Medium Voltage Network | 26d | 2026-10-07 A | 2026-10-07 A | PRO-MV-1DL-120, PRO-R14-MV-DL-110 | 100% |  |
|  | 5 | **Road 11 Local 1 ( 670 LM )** |  | 2026-07-08 | 2026-10-07 |  |  |  |
|  | 1 | **Cabling Works** |  | 2026-07-08 | 2026-08-13 |  |  |  |
| PRO-R11-MV-DL-100 |  | Material Delivery & Site Inspection of Medium Voltage Cables for Medium Voltage Network | 26d | 2026-07-08 A | 2026-08-13 A | PRO-MV-1DL-100, PRO-R09-MV-DL-100 | 100% |  |
|  | 3 | **Termination and Testing Works** |  | 2026-10-07 | 2026-10-07 |  |  |  |
| PRO-R11-MV-DL-110 |  | Material Delivery & Site Inspection of Termination and Joints Kits for Medium Voltage Network | 26d | 2026-10-07 A | 2026-10-07 A | PRO-MV-1DL-120, PRO-R09-MV-DL-110 | 100% |  |
|  | SL | **Street Lighting Network** |  | 2025-02-11 | 2027-01-25 |  |  |  |
|  | PO | **Issuance of Purchase Orders** |  | 2025-02-11 | 2025-05-31 |  |  |  |
|  | 1 | **Cabling Works** |  | 2025-02-11 | 2025-02-17 |  |  |  |
| PRO-SL-PO-100 |  | Issuance of Purchase Order for Lighting Cables of Street Lighting Network | 6d | 2025-02-11 A | 2025-02-17 A | ENG-MT-SL-ML-A-100, ENG-SH-SL-A-110, ENG-MS-SL-A-110 | 100% |  |
|  | 2 | **Lighting Poles Works** |  | 2025-02-11 | 2025-05-20 |  |  |  |
| PRO-SL-PO-110 |  | Issuance of Purchase Order for Lighting Poles Foundations of Street Lighting Network | 12d | 2025-02-11 A | 2025-02-25 A | ENG-MT-SL-A-100, ENG-SH-SL-A-110, ENG-MS-SL-A-110 | 100% |  |
| PRO-SL-PO-120 |  | Issuance of Purchase Order for Lighting Poles of Street Lighting Network | 12d | 2025-02-11 A | 2025-02-25 A | ENG-MT-SL-A-110, ENG-SH-SL-A-110, ENG-MS-SL-A-110 | 100% |  |
| PRO-SL-PO-140 |  | Issuance of Purchase Order for Lighting Fixtures of Street Lighting Network | 12d | 2025-02-26 A | 2025-05-20 A | ENG-MT-SL-A-120, ENG-SH-SL-A-110, ENG-MS-SL-A-110, PRO-SL-PO-120 | 100% |  |
|  | 3 | **Distribution Panel Board** |  | 2025-05-07 | 2025-05-31 |  |  |  |
| PRO-SL-PO-160 |  | Issuance of Purchase Order for Distrubution Panel Boards of Street Lighting Network | 10d | 2025-05-07 A | 2025-05-31 A | ENG-MT-SL-DB-A-100, ENG-SH-SL-A-110, ENG-MS-SL-A-110, PRO-SL-PO-140 | 100% |  |
|  | 4 | **Earthing System Works** |  | 2025-05-21 | 2025-05-31 |  |  |  |
| PRO-SL-PO-150 |  | Issuance of Purchase Order for Lighting Earthing of Street Lighting Network | 10d | 2025-05-21 A | 2025-05-31 A | ENG-MT-SL-ES-A-100, ENG-SH-SL-A-110, ENG-MS-SL-A-110, PRO-SL-PO-170 SS | 100% |  |
|  | 5 | **Termination and Testing Works** |  | 2025-05-12 | 2025-05-29 |  |  |  |
| PRO-SL-PO-170 |  | Issuance of Purchase Order for Cable Lugs of Street Lighting Network | 10d | 2025-05-12 A | 2025-05-18 A | ENG-MT-SL-TF-A-110, ENG-SH-SL-A-110, ENG-MS-SL-A-110, PRO-SL-PO-130 SS | 100% |  |
| PRO-SL-PO-130 |  | Issuance of Purchase Order for Fuse Boxes of Street Lighting Network | 10d | 2025-05-20 A | 2025-05-29 A | ENG-MT-SL-TF-A-100, ENG-SH-SL-A-110, ENG-MS-SL-A-110, PRO-SL-PO-160 SS | 100% |  |
|  | MF | **Manufacturing of Material** |  | 2025-02-18 | 2026-08-30 |  |  |  |
|  | 1 | **Cabling Works** |  | 2025-02-18 | 2025-05-31 |  |  |  |
| PRO-SL-MF-100 |  | Manufacturing of Lighting Cables for Street Lighting Network | 60d | 2025-02-18 A | 2025-05-31 A | PRO-SL-PO-100 | 100% |  |
|  | 2 | **Lighting Poles Works** |  | 2025-02-26 | 2025-06-01 |  |  |  |
| PRO-SL-MF-110 |  | Manufacturing of Lighting Poles Foundations for Street Lighting Network | 60d | 2025-02-26 A | 2025-04-16 A | PRO-SL-PO-110 | 100% |  |
| PRO-SL-MF-120 |  | Manufacturing of Lighting Poles for Street Lighting Network | 60d | 2025-02-26 A | 2025-04-30 A | PRO-SL-PO-120 | 100% |  |
| PRO-SL-MF-140 |  | Manufacturing of Lighting Fixtures for Street Lighting Network | 60d | 2025-04-30 A | 2025-06-01 A | PRO-SL-PO-140, PRO-SL-MF-120 | 100% |  |
|  | 3 | **Distribution Panel Board** |  | 2026-08-25 | 2026-08-30 |  |  |  |
| PRO-SL-MF-160 |  | Manufacturing of Distrubution Panel Boards for Street Lighting Network | 26d | 2026-08-25 A | 2026-08-30 A | PRO-SL-PO-160, PRO-SL-MF-140 FF | 100% |  |
|  | 4 | **Earthing System Works** |  | 2026-08-25 | 2026-08-30 |  |  |  |
| PRO-SL-MF-150 |  | Manufacturing of Lighting Earthing for Street Lighting Network | 26d | 2026-08-25 A | 2026-08-30 A | PRO-SL-PO-150, PRO-SL-MF-170 FF | 100% |  |
|  | 5 | **Termination and Testing Works** |  | 2026-08-25 | 2026-08-30 |  |  |  |
| PRO-SL-MF-130 |  | Manufacturing of Fuse Boxes for Street Lighting Network | 26d | 2026-08-25 A | 2026-08-30 A | PRO-SL-PO-130, PRO-SL-MF-160 FF | 100% |  |
| PRO-SL-MF-170 |  | Manufacturing of Cable Lugs for Street Lighting Network | 26d | 2026-08-25 A | 2026-08-30 A | PRO-SL-PO-170, PRO-SL-MF-130 FF | 100% |  |
|  | 1DL | **1st Material Delivery & Site Inspection** |  | 2025-04-17 | 2026-11-09 |  |  |  |
|  | 1 | **Cabling Works** |  | 2025-06-01 | 2025-06-10 |  |  |  |
| PRO-SL-1DL-100 |  | 1ST Material Delivery for Lighting Cables of Street Lighting Network | 6d | 2025-06-01 A | 2025-06-10 A | PRO-SL-MF-100 | 100% |  |
|  | 2 | **Lighting Poles Works** |  | 2025-04-17 | 2026-11-09 |  |  |  |
| PRO-SL-1DL-110 |  | 1ST Material Delivery for Lighting Poles Foundations of Street Lighting Network | 6d | 2025-04-17 A | 2025-04-27 A | PRO-SL-MF-110 | 100% |  |
| PRO-SL-1DL-120 |  | 1ST Material Delivery for Lighting Poles of Street Lighting Network | 6d | 2025-09-01 A | 2025-09-08 A | PRO-SL-MF-120 | 100% |  |
| PRO-SL-1DL-140 |  | 1ST Material Delivery for Lighting Fixtures of Street Lighting Network | 6d | 2026-11-03 | 2026-11-09 | PRO-SL-MF-140 |  | -197.5d |
|  | 3 | **Distribution Panel Board** |  | 2025-10-25 | 2025-10-31 |  |  |  |
| PRO-SL-1DL-160 |  | 1ST Material Delivery for Distrubution Panel Boards of Street Lighting Network | 6d | 2025-10-25 A | 2025-10-31 A | PRO-SL-MF-160 | 100% |  |
|  | 5 | **Termination and Testing Works** |  | 2026-09-03 | 2026-09-21 |  |  |  |
| PRO-SL-1DL-130 |  | 1ST Material Delivery for Fuse Boxes of Street Lighting Network | 15d | 2026-09-03 A | 2026-09-21 A | PRO-SL-MF-130 | 100% |  |
| PRO-SL-1DL-170 |  | 1ST Material Delivery for Cable Lugs of Street Lighting Network | 15d | 2026-09-03 A | 2026-09-21 A | PRO-SL-MF-170 | 100% |  |
|  | 4 | **Earthing System Works** |  | 2026-11-03 | 2026-11-09 |  |  |  |
| PRO-SL-1DL-150 |  | 1ST Material Delivery for Lighting Earthing of Street Lighting Network | 6d | 2026-11-03 | 2026-11-09 | PRO-SL-MF-150 |  | -147d |
|  | DL | **Material Delivery & Site Inspection** |  | 2025-06-11 | 2027-01-25 |  |  |  |
|  | 1 | **Road 18 Local 1 ( 479 LM )** |  | 2025-06-11 | 2026-12-21 |  |  |  |
|  | 1 | **Cabling Works** |  | 2025-06-11 | 2025-06-30 |  |  |  |
| PRO-R18-SL-DL-180 |  | Material Delivery & Site Inspection of Lighting Cables for Street Lighting Network | 26d | 2025-06-11 A | 2025-06-30 A | PRO-SL-1DL-100 | 100% |  |
|  | 2 | **Lighting Poles Works** |  | 2025-07-01 | 2026-12-09 |  |  |  |
| PRO-R18-SL-DL-190 |  | Material Delivery & Site Inspection of Lighting Poles Foundations for Street Lighting Network | 26d | 2025-07-01 A | 2025-07-10 A | PRO-SL-1DL-110, PRO-R18-SL-DL-180 | 100% |  |
| PRO-R18-SL-DL-200 |  | Material Delivery & Site Inspection of Lighting Poles for Street Lighting Network | 26d | 2025-09-09 A | 2025-09-09 A | PRO-SL-1DL-120, PRO-R18-SL-DL-190 | 100% |  |

| ID | WBS | Task | Duration | Start | Finish | Predecessors | Complete | Total float |
| --- | --- | --- | --- | --- | --- | --- | --- | --- |
| PRO-R18-SL-DL-220 |  | Material Delivery & Site Inspection of Lighting Fixtures for Street Lighting Network | 26d | 2026-11-10 | 2026-12-09 | PRO-SL-1DL-140, PRO-R18-SL-DL-200 SS+5d |  | -197.5d |
|  | 3 | **Distribution Panel Board** |  |  |  |  |  |  |
|  | 4 | **Termination and Testing Works** |  | 2026-11-16 | 2026-12-21 |  |  |  |
| PRO-R18-SL-DL-210 |  | Material Delivery & Site Inspection of Fuse Boxes for Street Lighting Network | 26d | 2026-11-16 | 2026-12-15 | PRO-SL-1DL-130, PRO-R18-SL-DL-220 SS+5d |  | -185.5d |
| PRO-R18-SL-DL-250 |  | Material Delivery & Site Inspection of Cable Lugs for Street Lighting Network | 26d | 2026-11-22 | 2026-12-21 | PRO-SL-1DL-170, PRO-R18-SL-DL-210 SS+5d |  | -142d |
|  | 5 | **Earthing System Works** |  |  |  |  |  |  |
|  | 9 | **Road 17 Local 1 ( 500 LM )** |  | 2025-06-11 | 2026-12-27 |  |  |  |
|  | 1 | **Cabling Works** |  | 2025-06-11 | 2025-06-30 |  |  |  |
| PRO-R17-SL-DL-100 |  | Material Delivery & Site Inspection of Lighting Cables for Street Lighting Network | 26d | 2025-06-11 A | 2025-06-30 A | PRO-SL-1DL-100, PRO-R18-SL-DL-180 | 100% |  |
|  | 2 | **Lighting Poles Works** |  | 2025-07-11 | 2026-12-15 |  |  |  |
| PRO-R17-SL-DL-110 |  | Material Delivery & Site Inspection of Lighting Poles Foundations for Street Lighting Network | 26d | 2025-07-11 A | 2025-07-20 A | PRO-SL-1DL-110, PRO-R18-SL-DL-190 | 100% |  |
| PRO-R17-SL-DL-120 |  | Material Delivery & Site Inspection of Lighting Poles for Street Lighting Network | 26d | 2025-09-10 A | 2025-09-10 A | PRO-SL-1DL-120, PRO-R18-SL-DL-200 | 100% |  |
| PRO-R17-SL-DL-140 |  | Material Delivery & Site Inspection of Lighting Fixtures for Street Lighting Network | 26d | 2026-11-16 | 2026-12-15 | PRO-SL-1DL-140, PRO-R18-SL-DL-220 SS+5d |  | -197.5d |
|  | 3 | **Distribution Panel Board** |  |  |  |  |  |  |
|  | 4 | **Termination and Testing Works** |  | 2026-11-22 | 2026-12-27 |  |  |  |
| PRO-R17-SL-DL-130 |  | Material Delivery & Site Inspection of Fuse Boxes for Street Lighting Network | 26d | 2026-11-22 | 2026-12-21 | PRO-SL-1DL-130, PRO-R18-SL-DL-210 SS+5d |  | -185.5d |
| PRO-R17-SL-DL-170 |  | Material Delivery & Site Inspection of Cable Lugs for Street Lighting Network | 26d | 2026-11-28 | 2026-12-27 | PRO-SL-1DL-170, PRO-R18-SL-DL-250 SS+5d |  | -142d |
|  | 5 | **Earthing System Works** |  |  |  |  |  |  |
|  | 8 | **Road 16 Local 1 ( 527 LM )** |  | 2025-06-11 | 2027-01-02 |  |  |  |
|  | 1 | **Cabling Works** |  | 2025-06-11 | 2025-06-30 |  |  |  |
| PRO-R16-SL-DL-100 |  | Material Delivery & Site Inspection of Lighting Cables for Street Lighting Network | 26d | 2025-06-11 A | 2025-06-30 A | PRO-SL-1DL-100, PRO-R17-SL-DL-100 | 100% |  |
|  | 2 | **Lighting Poles Works** |  | 2025-09-01 | 2026-12-21 |  |  |  |
| PRO-R16-SL-DL-110 |  | Material Delivery & Site Inspection of Lighting Poles Foundations for Street Lighting Network | 26d | 2025-09-01 A | 2025-09-02 A | PRO-SL-1DL-110, PRO-R17-SL-DL-110 | 100% |  |
| PRO-R16-SL-DL-120 |  | Material Delivery & Site Inspection of Lighting Poles for Street Lighting Network | 26d | 2025-09-11 A | 2025-09-11 A | PRO-SL-1DL-120, PRO-R17-SL-DL-120 | 100% |  |
| PRO-R16-SL-DL-140 |  | Material Delivery & Site Inspection of Lighting Fixtures for Street Lighting Network | 26d | 2026-11-22 | 2026-12-21 | PRO-SL-1DL-140, PRO-R17-SL-DL-140 SS+5d |  | -197.5d |
|  | 3 | **Distribution Panel Board** |  |  |  |  |  |  |
|  | 4 | **Termination and Testing Works** |  | 2026-11-28 | 2027-01-02 |  |  |  |
| PRO-R16-SL-DL-130 |  | Material Delivery & Site Inspection of Fuse Boxes for Street Lighting Network | 26d | 2026-11-28 | 2026-12-27 | PRO-SL-1DL-130, PRO-R17-SL-DL-130 SS+5d |  | -185.5d |
| PRO-R16-SL-DL-170 |  | Material Delivery & Site Inspection of Cable Lugs for Street Lighting Network | 26d | 2026-12-03 | 2027-01-02 | PRO-SL-1DL-170, PRO-R17-SL-DL-170 SS+5d |  | -142d |
|  | 5 | **Earthing System Works** |  |  |  |  |  |  |
|  | 7 | **Road 15 Local 1 ( 556 LM )** |  | 2025-06-11 | 2027-01-07 |  |  |  |
|  | 1 | **Cabling Works** |  | 2025-06-11 | 2025-06-30 |  |  |  |
| PRO-R15-SL-DL-100 |  | Material Delivery & Site Inspection of Lighting Cables for Street Lighting Network | 26d | 2025-06-11 A | 2025-06-30 A | PRO-SL-1DL-100, PRO-R16-SL-DL-100 | 100% |  |
|  | 2 | **Lighting Poles Works** |  | 2025-07-28 | 2026-12-27 |  |  |  |
| PRO-R15-SL-DL-110 |  | Material Delivery & Site Inspection of Lighting Poles Foundations for Street Lighting Network | 26d | 2025-07-28 A | 2025-08-03 A | PRO-SL-1DL-110, PRO-R16-SL-DL-110 | 100% |  |
| PRO-R15-SL-DL-120 |  | Material Delivery & Site Inspection of Lighting Poles for Street Lighting Network | 26d | 2025-09-13 A | 2025-09-13 A | PRO-SL-1DL-120, PRO-R16-SL-DL-120 | 100% |  |
| PRO-R15-SL-DL-140 |  | Material Delivery & Site Inspection of Lighting Fixtures for Street Lighting Network | 26d | 2026-11-28 | 2026-12-27 | PRO-SL-1DL-140, PRO-R16-SL-DL-140 SS+5d |  | -197.5d |
|  | 3 | **Distribution Panel Board** |  |  |  |  |  |  |
|  | 4 | **Termination and Testing Works** |  | 2026-12-03 | 2027-01-07 |  |  |  |
| PRO-R15-SL-DL-130 |  | Material Delivery & Site Inspection of Fuse Boxes for Street Lighting Network | 26d | 2026-12-03 | 2027-01-02 | PRO-SL-1DL-130, PRO-R16-SL-DL-130 SS+5d |  | -185.5d |
| PRO-R15-SL-DL-170 |  | Material Delivery & Site Inspection of Cable Lugs for Street Lighting Network | 26d | 2026-12-09 | 2027-01-07 | PRO-SL-1DL-170, PRO-R16-SL-DL-170 SS+5d |  | -142d |
|  | 5 | **Earthing System Works** |  |  |  |  |  |  |
|  | 4 | **Road 10 Local 2 ( 2352 LM )** |  | 2025-06-15 | 2027-01-02 |  |  |  |
|  | 1 | **Cabling Works** |  | 2025-06-15 | 2025-06-30 |  |  |  |
| PRO-R10-SL-DL-100 |  | Material Delivery & Site Inspection of Lighting Cables for Street Lighting Network | 26d | 2025-06-15 A | 2025-06-30 A | PRO-SL-1DL-100, PRO-R15-SL-DL-100 | 100% |  |
|  | 2 | **Lighting Poles Works** |  | 2026-08-27 | 2027-01-02 |  |  |  |
| PRO-R10-SL-DL-110 |  | Material Delivery & Site Inspection of Lighting Poles Foundations for Street Lighting Network | 26d | 2026-08-27 A | 2026-08-29 A | PRO-SL-1DL-110, PRO-R15-SL-DL-110 | 100% |  |
| PRO-R10-SL-DL-120 |  | Material Delivery & Site Inspection of Lighting Poles for Street Lighting Network | 26d | 2026-08-27 A | 2026-08-29 A | PRO-SL-1DL-120, PRO-R15-SL-DL-120 | 100% |  |
| PRO-R10-SL-DL-140 |  | Material Delivery & Site Inspection of Lighting Fixtures for Street Lighting Network | 26d | 2026-12-03 | 2027-01-02 | PRO-SL-1DL-140, PRO-R15-SL-DL-140 SS+5d |  | -197.5d |
|  | 3 | **Distribution Panel Board** |  | 2026-09-21 | 2026-11-05 |  |  |  |
| PRO-R10-SL-DL-160 |  | Material Delivery & Site Inspection of Distrubution Panel Boards for Street Lighting Network | 26d | 2026-09-21 A | 2026-11-05 | PRO-SL-1DL-160 | 80% | -103d |
|  | 4 | **Termination and Testing Works** |  | 2026-09-21 | 2026-12-17 |  |  |  |
| PRO-R10-SL-DL-130 |  | Material Delivery & Site Inspection of Fuse Boxes for Street Lighting Network | 26d | 2026-09-21 A | 2026-12-12 | PRO-SL-1DL-130, PRO-R15-SL-DL-130 SS+5d | 80% | -185.5d |
| PRO-R10-SL-DL-170 |  | Material Delivery & Site Inspection of Cable Lugs for Street Lighting Network | 26d | 2026-09-21 A | 2026-12-17 | PRO-SL-1DL-170, PRO-R15-SL-DL-170 SS+5d | 80% | -142d |
|  | 5 | **Earthing System Works** |  | 2026-11-10 | 2026-12-09 |  |  |  |
| PRO-R10-SL-DL-150 |  | Material Delivery & Site Inspection of Lighting Earthing for Street Lighting Network | 26d | 2026-11-10 | 2026-12-09 | PRO-SL-1DL-150 |  | -147d |
|  | 6 | **Road 14 Local 1 ( 584 LM )** |  | 2025-11-01 | 2027-01-13 |  |  |  |
|  | 1 | **Cabling Works** |  | 2025-11-01 | 2025-11-04 |  |  |  |
| PRO-R14-SL-DL-100 |  | Material Delivery & Site Inspection of Lighting Cables for Street Lighting Network | 26d | 2025-11-01 A | 2025-11-04 A | PRO-SL-1DL-100, PRO-R10-SL-DL-100 | 100% |  |
|  | 2 | **Lighting Poles Works** |  | 2026-08-26 | 2027-01-07 |  |  |  |
| PRO-R14-SL-DL-110 |  | Material Delivery & Site Inspection of Lighting Poles Foundations for Street Lighting Network | 26d | 2026-08-26 A | 2026-08-31 A | PRO-SL-1DL-110, PRO-R10-SL-DL-110 | 100% |  |
| PRO-R14-SL-DL-120 |  | Material Delivery & Site Inspection of Lighting Poles for Street Lighting Network | 26d | 2026-08-26 A | 2026-08-31 A | PRO-SL-1DL-120, PRO-R10-SL-DL-120 | 100% |  |
| PRO-R14-SL-DL-140 |  | Material Delivery & Site Inspection of Lighting Fixtures for Street Lighting Network | 26d | 2026-12-09 | 2027-01-07 | PRO-SL-1DL-140, PRO-R10-SL-DL-140 SS+5d |  | -197.5d |
|  | 3 | **Distribution Panel Board** |  |  |  |  |  |  |
|  | 4 | **Termination and Testing Works** |  | 2026-12-09 | 2027-01-13 |  |  |  |
| PRO-R14-SL-DL-130 |  | Material Delivery & Site Inspection of Fuse Boxes for Street Lighting Network | 26d | 2026-12-09 | 2027-01-07 | PRO-SL-1DL-130, PRO-R10-SL-DL-130 SS+5d |  | -185.5d |
| PRO-R14-SL-DL-170 |  | Material Delivery & Site Inspection of Cable Lugs for Street Lighting Network | 26d | 2026-12-15 | 2027-01-13 | PRO-SL-1DL-170, PRO-R10-SL-DL-170 SS+5d |  | -142d |
|  | 5 | **Earthing System Works** |  |  |  |  |  |  |
|  | 2 | **Road 09 Local 2 ( 2278 LM )** |  | 2025-10-31 | 2027-01-19 |  |  |  |
|  | 1 | **Cabling Works** |  | 2026-02-17 | 2026-02-22 |  |  |  |

| ID | WBS | Task | Duration | Start | Finish | Predecessors | Complete | Total float |
| --- | --- | --- | --- | --- | --- | --- | --- | --- |
| PRO-R09-SL-DL-100 |  | Material Delivery & Site Inspection of Lighting Cables for Street Lighting Network | 26d | 2026-02-17 A | 2026-02-22 A | PRO-SL-1DL-100, PRO-R14-SL-DL-100 | 100% |  |
|  | 2 | **Lighting Poles Works** |  | 2026-02-17 | 2027-01-13 |  |  |  |
| PRO-R09-SL-DL-110 |  | Material Delivery & Site Inspection of Lighting Poles Foundations for Street Lighting Network | 26d | 2026-02-17 A | 2026-02-22 A | PRO-SL-1DL-110, PRO-R14-SL-DL-110 | 100% |  |
| PRO-R09-SL-DL-120 |  | Material Delivery & Site Inspection of Lighting Poles for Street Lighting Network | 26d | 2026-02-17 A | 2026-02-22 A | PRO-SL-1DL-120, PRO-R14-SL-DL-120 | 100% |  |
| PRO-R09-SL-DL-140 |  | Material Delivery & Site Inspection of Lighting Fixtures for Street Lighting Network | 26d | 2026-12-15 | 2027-01-13 | PRO-SL-1DL-140, PRO-R14-SL-DL-140 SS+5d |  | -197.5d |
|  | 3 | **Distribution Panel Board** |  | 2025-10-31 | 2026-02-20 |  |  |  |
| PRO-R09-SL-DL-160 |  | Material Delivery & Site Inspection of Distrubution Panel Boards for Street Lighting Network | 26d | 2025-10-31 A | 2026-02-20 A | PRO-SL-1DL-160 | 100% |  |
|  | 4 | **Termination and Testing Works** |  | 2026-12-15 | 2027-01-19 |  |  |  |
| PRO-R09-SL-DL-130 |  | Material Delivery & Site Inspection of Fuse Boxes for Street Lighting Network | 26d | 2026-12-15 | 2027-01-13 | PRO-SL-1DL-130, PRO-R14-SL-DL-130 SS+5d |  | -185.5d |
| PRO-R09-SL-DL-170 |  | Material Delivery & Site Inspection of Cable Lugs for Street Lighting Network | 26d | 2026-12-21 | 2027-01-19 | PRO-SL-1DL-170, PRO-R14-SL-DL-170 SS+5d |  | -142d |
|  | 5 | **Earthing System Works** |  | 2026-11-10 | 2026-12-09 |  |  |  |
| PRO-R09-SL-DL-150 |  | Material Delivery & Site Inspection of Lighting Earthing for Street Lighting Network | 26d | 2026-11-10 | 2026-12-09 | PRO-SL-1DL-150 |  | -143.5d |
|  | 5 | **Road 11 Local 1 ( 670 LM )** |  | 2026-07-07 | 2027-01-25 |  |  |  |
|  | 1 | **Cabling Works** |  | 2026-07-09 | 2026-07-25 |  |  |  |
| PRO-R11-SL-DL-100 |  | Material Delivery & Site Inspection of Lighting Cables for Street Lighting Network | 26d | 2026-07-09 A | 2026-07-25 A | PRO-SL-1DL-100, PRO-R09-SL-DL-100 | 100% |  |
|  | 2 | **Lighting Poles Works** |  | 2026-07-07 | 2027-01-19 |  |  |  |
| PRO-R11-SL-DL-110 |  | Material Delivery & Site Inspection of Lighting Poles Foundations for Street Lighting Network | 26d | 2026-07-07 A | 2026-08-22 A | PRO-SL-1DL-110, PRO-R09-SL-DL-110 | 100% |  |
| PRO-R11-SL-DL-120 |  | Material Delivery & Site Inspection of Lighting Poles for Street Lighting Network | 26d | 2026-07-07 A | 2026-08-22 A | PRO-SL-1DL-120, PRO-R09-SL-DL-120 | 100% |  |
| PRO-R11-SL-DL-140 |  | Material Delivery & Site Inspection of Lighting Fixtures for Street Lighting Network | 26d | 2026-12-21 | 2027-01-19 | PRO-SL-1DL-140, PRO-R09-SL-DL-140 SS+5d |  | -102.5d |
|  | 3 | **Distribution Panel Board** |  |  |  |  |  |  |
|  | 4 | **Termination and Testing Works** |  | 2026-12-21 | 2027-01-25 |  |  |  |
| PRO-R11-SL-DL-130 |  | Material Delivery & Site Inspection of Fuse Boxes for Street Lighting Network | 26d | 2026-12-21 | 2027-01-19 | PRO-SL-1DL-130, PRO-R09-SL-DL-130 SS+5d |  | -133d |
| PRO-R11-SL-DL-170 |  | Material Delivery & Site Inspection of Cable Lugs for Street Lighting Network | 26d | 2026-12-27 | 2027-01-25 | PRO-SL-1DL-170, PRO-R09-SL-DL-170 SS+5d |  | -142d |
|  | 5 | **Earthing System Works** |  |  |  |  |  |  |
|  | TE | **Telecom Network** |  | 2025-02-11 | 2026-08-16 |  |  |  |
|  | PO | **Issuance of Purchase Orders** |  | 2025-02-11 | 2025-02-17 |  |  |  |
|  | 1 | **Ducts Works** |  | 2025-02-11 | 2025-02-17 |  |  |  |
| PRO-TE-PO-100 |  | Issuance of Purchase Order for Ducts forTelecom Network | 6d | 2025-02-11 A | 2025-02-17 A | ENG-MT-TE-A-100 | 100% |  |
|  | 3 | **Manholes Works** |  | 2025-02-11 | 2025-02-17 |  |  |  |
| PRO-TE-PO-110 |  | Issuance of Purchase Order for Manholes forTelecom Network | 6d | 2025-02-11 A | 2025-02-17 A | ENG-MT-TE-A-110 | 100% |  |
|  | MF | **Manufacturing of Material** |  | 2025-02-18 | 2025-05-21 |  |  |  |
|  | 1 | **Ducts Works** |  | 2025-02-18 | 2025-05-21 |  |  |  |
| PRO-TE-MF-100 |  | Manufacturing of Ducts for Telecom Network | 60d | 2025-02-18 A | 2025-05-21 A | PRO-TE-PO-100 | 100% |  |
|  | 3 | **Manholes Works** |  | 2025-02-18 | 2025-05-20 |  |  |  |
| PRO-TE-MF-110 |  | Manufacturing of Manholes for Telecom Network | 60d | 2025-02-18 A | 2025-05-20 A | PRO-TE-PO-110 | 100% |  |
|  | 1DL | **1st Material Delivery & Site Inspection** |  | 2025-05-21 | 2025-05-30 |  |  |  |
|  | 1 | **Ducts Works** |  | 2025-05-22 | 2025-05-30 |  |  |  |
| PRO-TE-1DL-100 |  | 1ST Material Delivery for Ducts of Telecom Network | 6d | 2025-05-22 A | 2025-05-30 A | PRO-TE-MF-100 | 100% |  |
|  | 3 | **Manholes Works** |  | 2025-05-21 | 2025-05-29 |  |  |  |
| PRO-TE-1DL-110 |  | 1ST Material Delivery for Manholes of Telecom Network | 6d | 2025-05-21 A | 2025-05-29 A | PRO-TE-MF-110 | 100% |  |
|  | DL | **Material Delivery & Site Inspection** |  | 2025-06-01 | 2026-08-16 |  |  |  |
|  | 1 | **Road 18 Local 1 ( 479 LM )** |  | 2025-06-01 | 2025-06-30 |  |  |  |
|  | 1 | **Ducts Works** |  | 2025-06-01 | 2025-06-30 |  |  |  |
| PRO-R18-TE-DL-120 |  | Material Delivery & Site Inspection for Ducts of Telecom Network | 26d | 2025-06-01 A | 2025-06-30 A | PRO-TE-1DL-100 | 100% |  |
|  | 3 | **Manholes Works** |  | 2025-06-01 | 2025-06-10 |  |  |  |
| PRO-R18-TE-DL-130 |  | Material Delivery & Site Inspection of Manholes for Telecom Network | 26d | 2025-06-01 A | 2025-06-10 A | PRO-TE-1DL-110 | 100% |  |
|  | 9 | **Road 17 Local 1 ( 500 LM )** |  | 2025-06-01 | 2025-06-30 |  |  |  |
|  | 1 | **Ducts Works** |  | 2025-06-01 | 2025-06-30 |  |  |  |
| PRO-R17-TE-DL-100 |  | Material Delivery & Site Inspection for Ducts of Telecom Network | 26d | 2025-06-01 A | 2025-06-30 A | PRO-TE-1DL-100, PRO-R18-TE-DL-120 | 100% |  |
|  | 3 | **Manholes Works** |  | 2025-06-11 | 2025-06-14 |  |  |  |
| PRO-R17-TE-DL-110 |  | Material Delivery & Site Inspection of Manholes for Telecom Network | 26d | 2025-06-11 A | 2025-06-14 A | PRO-TE-1DL-110, PRO-R18-TE-DL-130 | 100% |  |
|  | 8 | **Road 16 Local 1 ( 527 LM )** |  | 2025-06-01 | 2025-06-30 |  |  |  |
|  | 1 | **Ducts Works** |  | 2025-06-01 | 2025-06-30 |  |  |  |
| PRO-R16-TE-DL-100 |  | Material Delivery & Site Inspection for Ducts of Telecom Network | 26d | 2025-06-01 A | 2025-06-30 A | PRO-TE-1DL-100, PRO-R17-TE-DL-100 | 100% |  |
|  | 3 | **Manholes Works** |  | 2025-06-15 | 2025-06-19 |  |  |  |
| PRO-R16-TE-DL-110 |  | Material Delivery & Site Inspection of Manholes for Telecom Network | 26d | 2025-06-15 A | 2025-06-19 A | PRO-TE-1DL-110, PRO-R17-TE-DL-110 | 100% |  |
|  | 7 | **Road 15 Local 1 ( 556 LM )** |  | 2025-06-01 | 2025-06-30 |  |  |  |
|  | 1 | **Ducts Works** |  | 2025-06-01 | 2025-06-30 |  |  |  |
| PRO-R15-TE-DL-100 |  | Material Delivery & Site Inspection for Ducts of Telecom Network | 26d | 2025-06-01 A | 2025-06-30 A | PRO-TE-1DL-100, PRO-R16-TE-DL-100 | 100% |  |
|  | 3 | **Manholes Works** |  | 2025-06-21 | 2025-06-26 |  |  |  |
| PRO-R15-TE-DL-110 |  | Material Delivery & Site Inspection of Manholes for Telecom Network | 26d | 2025-06-21 A | 2025-06-26 A | PRO-TE-1DL-110, PRO-R16-TE-DL-110 | 100% |  |
|  | 4 | **Road 10 Local 2 ( 2352 LM )** |  | 2025-11-01 | 2026-08-16 |  |  |  |
|  | 1 | **Ducts Works** |  | 2025-11-01 | 2025-11-10 |  |  |  |
| PRO-R10-TE-DL-100 |  | Material Delivery & Site Inspection for Ducts of Telecom Network | 26d | 2025-11-01 A | 2025-11-10 A | PRO-TE-1DL-100, PRO-R15-TE-DL-100 | 100% |  |
|  | 3 | **Manholes Works** |  | 2026-08-01 | 2026-08-16 |  |  |  |
| PRO-R10-TE-DL-110 |  | Material Delivery & Site Inspection of Manholes for Telecom Network | 26d | 2026-08-01 A | 2026-08-16 A | PRO-TE-1DL-110, PRO-R15-TE-DL-110 | 100% |  |
|  | 6 | **Road 14 Local 1 ( 584 LM )** |  | 2025-11-01 | 2026-08-16 |  |  |  |
|  | 1 | **Ducts Works** |  | 2025-11-01 | 2025-11-10 |  |  |  |
| PRO-R14-TE-DL-100 |  | Material Delivery & Site Inspection for Ducts of Telecom Network | 26d | 2025-11-01 A | 2025-11-10 A | PRO-TE-1DL-100, PRO-R10-TE-DL-100 | 100% |  |
|  | 3 | **Manholes Works** |  | 2026-08-01 | 2026-08-16 |  |  |  |

| ID | WBS | Task | Duration | Start | Finish | Predecessors | Complete | Total float |
| --- | --- | --- | --- | --- | --- | --- | --- | --- |
| PRO-R14-TE-DL-110 |  | Material Delivery & Site Inspection of Manholes for Telecom Network | 26d | 2026-08-01 A | 2026-08-16 A | PRO-TE-1DL-110, PRO-R10-TE-DL-110 | 100% |  |
|  | 2 | **Road 09 Local 2 ( 2278 LM )** |  | 2026-08-01 | 2026-08-16 |  |  |  |
|  | 1 | **Ducts Works** |  | 2026-08-01 | 2026-08-16 |  |  |  |
| PRO-R09-TE-DL-110 |  | Material Delivery & Site Inspection of Manholes for Telecom Network | 26d | 2026-08-01 A | 2026-08-16 A | PRO-TE-1DL-110, PRO-R14-TE-DL-110 | 100% |  |
|  | 3 | **Manholes Works** |  | 2026-08-01 | 2026-08-16 |  |  |  |
| PRO-R09-TE-DL-100 |  | Material Delivery & Site Inspection for Ducts of Telecom Network | 26d | 2026-08-01 A | 2026-08-16 A | PRO-TE-1DL-100, PRO-R14-TE-DL-100 | 100% |  |
|  | 5 | **Road 11 Local 1 ( 670 LM )** |  | 2026-07-09 | 2026-08-16 |  |  |  |
|  | 1 | **Ducts Works** |  | 2026-07-09 | 2026-08-16 |  |  |  |
| PRO-R11-TE-DL-100 |  | Material Delivery & Site Inspection for Ducts of Telecom Network | 26d | 2026-07-09 A | 2026-08-16 A | PRO-TE-1DL-100, PRO-R09-TE-DL-100 | 100% |  |
|  | 3 | **Manholes Works** |  | 2026-08-01 | 2026-08-16 |  |  |  |
| PRO-R11-TE-DL-110 |  | Material Delivery & Site Inspection of Manholes for Telecom Network | 26d | 2026-08-01 A | 2026-08-16 A | PRO-TE-1DL-110, PRO-R09-TE-DL-110 | 100% |  |
|  | 1 | **Superstructure Works** |  | 2025-02-18 | 2026-11-09 |  |  |  |
|  | 1 | **Issuance of Purchase Orders** |  | 2025-02-18 | 2025-03-30 |  |  |  |
|  | SL | **Sewage Pump Stations ( PS 06 )** |  | 2025-02-18 | 2025-03-06 |  |  |  |
| PRO-SPS-CV-PO-10 |  | Issuance of Purchase Order for Civil Works for Sewage Pump Stations | 12d | 2025-02-18 A | 2025-03-06 A | ENG-MT-SPS-CV-A-110, ENG-MS-SPS-A-110, ENG-SH-SPS-A-110, PRO-SW-PO-100, PRO-SW-PO-110 | 100% |  |
|  | TE | **Storm Drainage Ponds ( PO-J1 , PO-J2 )** |  | 2025-03-19 | 2025-03-30 |  |  |  |
| PRO-DPO-CV-PO-10 |  | Issuance of Purchase Order for Civil Works for Storm Drainage Ponds | 12d | 2025-03-19 A | 2025-03-30 A | ENG-SH-SPS-A-110, ENG-MT-DPO-CV-A-110, ENG-MS-DPO-A-110, ENG-SH-DPO-A-110, PRO-SD-PO-100, PRO-SD-PO-110, PRO-SD-PO-130, PRO-SD-PO-150, PRO-SD-PO-120, PRO-SD-PO-140, PRO-SD-PO-160, PRO-SPS-CV-PO-10 | 100% |  |
|  | 2 | **Manufacturing of Material** |  | 2025-03-07 | 2026-08-09 |  |  |  |
|  | SL | **Sewage Pump Stations ( PS 06 )** |  | 2025-03-07 | 2025-07-17 |  |  |  |
| PRO-SPS-CV-MF-10 |  | Manufacturing of Civil Works for Sewage Pump Stations ( PS06 ) | 130d | 2025-03-07 A | 2025-07-17 A | PRO-SPS-CV-PO-10 | 100% |  |
|  | TE | **Storm Drainage Ponds ( PO-J1 , PO-J2 )** |  | 2025-04-01 | 2026-08-09 |  |  |  |
| PRO-DPO-CV-MF-10 |  | Manufacturing of Civil Works for Storm Drainage Ponds ( PO-J1 ) | 120d | 2025-04-01 A | 2025-07-17 A | PRO-DPO-CV-PO-10 | 100% |  |
| PRO-DPO-CV-MF-20 |  | Manufacturing of Civil Works for Storm Drainage Ponds ( PO-J2 ) | 60d | 2026-06-01 A | 2026-08-09 A | PRO-DPO-CV-MF-10 | 100% |  |
|  | 3 | **1st Material Delivery & Site Inspection** |  | 2025-05-19 | 2026-09-08 |  |  |  |
|  | SL | **Sewage Pump Stations ( PS 06 )** |  | 2025-10-13 | 2025-11-29 |  |  |  |
| PRO-SPS-CV-1DL-10 |  | 1ST Material Delivery for Civil Works for Sewage Pump Stations ( PS 06 ) | 40d | 2025-10-13 A | 2025-11-29 A | PRO-SPS-CV-MF-10 | 100% |  |
|  | TE | **Storm Drainage Ponds ( PO-J1 , PO-J2 )** |  | 2025-05-19 | 2026-09-08 |  |  |  |
| PRO-DPO-CV-1DL-10 |  | 1ST Material Delivery for Civil Works for Storm Drainage Ponds ( PO-J1 ) | 26d | 2025-05-19 A | 2025-10-23 A | PRO-DPO-CV-MF-10 | 100% |  |
| PRO-DPO-CV-1DL-20 |  | 1ST Material Delivery for Civil Works for Storm Drainage Ponds ( PO-J2 ) | 26d | 2026-08-10 A | 2026-09-08 A | PRO-DPO-CV-MF-20 | 100% |  |
|  | 4 | **Material Delivery & Site Inspection** |  | 2025-10-29 | 2026-11-09 |  |  |  |
|  | SL | **Sewage Pump Stations ( PS 06 )** |  | 2025-11-29 | 2025-12-01 |  |  |  |
| PRO-SPS-CV-DL-10 |  | Material Delivery & Site Inspection for Civil Works for Sewage Pump Stations ( PS 06 ) | 70d | 2025-11-29 A | 2025-12-01 A | PRO-SPS-CV-1DL-10 | 100% |  |
|  | TE | **Storm Drainage Ponds ( PO-J1 , PO-J2 )** |  | 2025-10-29 | 2026-11-09 |  |  |  |
| PRO-DPO-CV-DL-10 |  | Material Delivery & Site Inspection for Civil Works for Storm Drainage Ponds ( PO-J1 ) | 70d | 2025-10-29 A | 2026-11-04 | PRO-DPO-CV-1DL-10 | 97% | -135d |
| PRO-DPO-CV-DL-20 |  | Material Delivery & Site Inspection for Civil Works for Storm Drainage Ponds ( PO-J2 ) | 70d | 2026-09-09 A | 2026-11-09 | PRO-DPO-CV-1DL-20 | 85% | -147d |
|  | LL | **Long Lead Time Items** |  | 2025-02-11 | 2026-11-19 |  |  |  |
|  | 2 | **Infrastructure Networks** |  | 2025-02-11 | 2026-09-20 |  |  |  |
|  | 1 | **RMU Works of Medium Voltage Network** |  | 2025-02-11 | 2026-09-20 |  |  |  |
|  | PO | **Issuance of Purchase Orders** |  | 2025-02-11 | 2025-05-05 |  |  |  |
| PRO-MV-LL-PO-10 |  | Issuance of Purchase Order for RMU of Medium Voltage Network | 30d | 2025-02-11 A | 2025-05-05 A | ENG-MT-MV-A-10, ENG-SH-MV-A-110, ENG-MS-MV-A-110 | 100% |  |
|  | MF | **Manufacturing of Material** |  | 2025-06-01 | 2026-06-20 |  |  |  |
| PRO-MV-LL-MF-10 |  | Manufacturing of RMU for Medium Voltage Network | 150d | 2025-06-01 A | 2026-06-20 A | PRO-MV-LL-PO-10 | 100% |  |
|  | 1DL | **Material Shipping/Custom Clearance/Delivery** |  | 2026-05-15 | 2026-05-28 |  |  |  |
| PRO-MV-LL-SH/DL-10 |  | Material Delivery for RMU of Medium Voltage Network | 90d | 2026-05-15 A | 2026-05-28 A | PRO-MV-LL-MF-10 | 100% |  |
|  | DL | **Material Site Inspection** |  | 2026-08-01 | 2026-09-20 |  |  |  |
|  | DL4 | **Road 10 Local 2 ( 2352 LM )** |  | 2026-08-01 | 2026-08-06 |  |  |  |
| PRO-R10-MV-LL-MSI-10 |  | Material Site Inspection of RMU for Medium Voltage Network | 30d | 2026-08-01 A | 2026-08-06 A | PRO-MV-LL-SH/DL-10 | 100% |  |
|  | DL9111 | **Road 17 Local 1 ( 500 LM )** |  | 2026-09-15 | 2026-09-20 |  |  |  |
| PRO-R17-MV-LL-MSI-40 |  | Material Site Inspection of RMU for Medium Voltage Network | 30d | 2026-09-15 A | 2026-09-20 A | PRO-MV-LL-SH/DL-10 | 100% |  |
|  | 1 | **Superstructure Works** |  | 2025-06-01 | 2026-11-19 |  |  |  |
|  | SL | **Sewage Pump Stations ( PS 06 )** |  | 2025-06-01 | 2026-11-19 |  |  |  |
|  | 1 | **Issuance of Purchase Orders** |  | 2025-06-01 | 2025-06-05 |  |  |  |
| PRO-SPS-LL-PO-10 |  | Issuance of Purchase Order for Electromechanical Works for Sewage Pump Stations | 60d | 2025-06-01 A | 2025-06-05 A | ENG-MS-SPS-A-110, ENG-SH-SPS-A-110, ENG-MT-SPS-MC-A-110, PRO-MV-LL-PO-10, PRO-MV-LL-MF-10 | 100% |  |
|  | 2 | **Manufacturing of Material** |  | 2025-06-01 | 2026-06-30 |  |  |  |
| PRO-SPS7-LL-MF-10 |  | Manufacturing of Electromechanical Works for Sewage Pump Stations ( PS 06 ) | 100d | 2025-06-01 A | 2026-06-30 A | PRO-SPS-LL-PO-10, PRO-MV-LL-MF-10 | 100% |  |
|  | 3 | **Material Shipping/Custom Clearance/Delivery** |  | 2026-07-05 | 2026-08-06 |  |  |  |
| PRO-SPS7-LL-SH/DL-10 |  | Material Delivery for Electromechanical Works for Sewage Pump Stations ( PS 06 ) | 80d | 2026-07-05 A | 2026-08-06 A | PRO-SPS7-LL-MF-10 | 100% |  |
|  | 4 | **Material Site Inspection** |  | 2026-10-05 | 2026-11-19 |  |  |  |
| PRO-SPS7-LL-MSI-10 |  | Material Site Inspection for Electromechanical Works for Sewage Pump Stations ( PS06 ) | 50d | 2026-10-05 A | 2026-11-19 | PRO-SPS7-LL-SH/DL-10 | 40% | -31d |
|  | CON | **Construction Works** |  | 2025-02-11 | 2027-10-25 |  |  |  |
|  | INF | **Infrastructure Networks** |  | 2025-02-11 | 2027-10-25 |  |  |  |
|  | 1 | **Phase 2 Block "J"** |  | 2025-02-11 | 2027-08-14 |  |  |  |
|  | SW | **Rising Main Network** |  | 2025-12-27 | 2026-11-25 |  |  |  |
|  | ML | **Main Line Sections** |  | 2025-12-27 | 2026-10-28 |  |  |  |
| CO-RM-SW-290 |  | Trench Excavation and Bedding Works for Main Lines of Rising Main Network | 21d | 2025-12-27 A | 2026-01-05 A | CO-R09.S01-SW-130, CO-R09.S02-SW-130 | 100% |  |
| CO-RM-SW-300 |  | Pipes Laying Works for Main Lines of Rising Main Network | 21d | 2026-02-25 A | 2026-10-13 A | CO-RM-SW-290 | 100% |  |
| CO-RM-SW-310 |  | Trench Backfilling and Compaction Works for Main Lines of Rising Main Network | 21d | 2026-09-01 A | 2026-10-28 A | CO-RM-SW-300, CO-RM-SW-370, CO-RM-SW-440 FF | 100% |  |
|  | MH | **Manholes** |  | 2026-01-08 | 2026-11-22 |  |  |  |
| CO-RM-SW-320 |  | Excavation Works for Main Line Manholes of Rising Main Network | 1d | 2026-01-08 A | 2026-01-15 A | CO-RM-SW-290 SS, CO-RM-SW-300 SS | 100% |  |
| CO-RM-SW-330 |  | Installation RC Footing Works for Main Line Manholes of Rising Main Network | 3d | 2026-01-17 A | 2026-11-07 | CO-RM-SW-320 | 97% | 43d |

| ID | WBS | Task | Duration | Start | Finish | Predecessors | Complete | Total float |
| --- | --- | --- | --- | --- | --- | --- | --- | --- |
| CO-RM-SW-340 |  | Install Grp Liner Wall Works for Main Line Manholes of Rising Main Network | 6d | 2026-01-17 A | 2026-11-08 | CO-RM-SW-330 | 98% | 43d |
| CO-RM-SW-350 |  | Pouring Grp Liner Wall Works for Main Line Manholes of Rising Main Network | 3d | 2026-09-18 A | 2026-11-10 | CO-RM-SW-340 | 90% | 43d |
| CO-RM-SW-360 |  | Backfilling Works for Main Line Manholes of Rising Main Network | 5d | 2026-09-21 A | 2026-11-12 | CO-RM-SW-350 | 80% | 43d |
| CO-RM-SW-370 |  | Testing Works for Main Line Manholes of Rising Main Network | 1d | 2026-10-01 A | 2026-11-22 | CO-RM-SW-360 | 80% | 43d |
|  | VC | **Valves Chamber** |  | 2026-05-02 | 2026-11-25 |  |  |  |
| CO-RM-SW-380 |  | Excavation Works for Valve Chambers and Washout chamber of Rising Main Network | 1d | 2026-05-02 A | 2026-05-09 A | CO-RM-SW-300 SS | 100% |  |
| CO-RM-SW-390 |  | RC Footing Works for Valve Chambers and Washout chamber of Rising Main Network | 6d | 2026-05-09 A | 2026-05-12 A | CO-RM-SW-380 | 100% |  |
| CO-RM-SW-400 |  | RC Wall Works for Valve Chambers and Washout chamber of Rising Main Network | 7d | 2026-05-14 A | 2026-11-07 | CO-RM-SW-390 | 70% | 40d |
| CO-RM-SW-410 |  | RC Slab Works for Valve Chambers and Washout chamber of Rising Main Network | 7d | 2026-11-07 | 2026-11-14 | CO-RM-SW-400 |  | 40d |
| CO-RM-SW-420 |  | Insulation Works for Valve Chambers and Washout chamber of Rising Main Network | 2d | 2026-11-15 | 2026-11-16 | CO-RM-SW-410 |  | 40d |
| CO-RM-SW-430 |  | Backfilling Works for Valve Chambers and Washout chamber of Rising Main Network | 5d | 2026-11-17 | 2026-11-22 | CO-RM-SW-420 |  | 40d |
| CO-RM-SW-440 |  | Testing and Covering Works for Valve Chambers and Washout chamber of Rising Main Network | 3d | 2026-11-23 | 2026-11-25 | CO-RM-SW-430 |  | 40d |
|  | 2 | **Road 09 Local 2 ( 2278 LM )** |  | 2025-03-26 | 2027-08-07 |  |  |  |
|  | SW_1 | **SW_1** |  | 2025-03-26 | 2027-07-31 |  |  |  |
|  | EW | **Earthworks** |  | 2025-03-26 | 2025-05-31 |  |  |  |
|  | EW | **Earthworks** |  | 2025-03-26 | 2025-05-31 |  |  |  |
| CO-R09.S01-EW-110 |  | Embankments Works Upto Design Level for Earthworks-[Road 09] -[SW-1] | 10d | 2025-03-26 A | 2025-05-03 A | CO-R09.S01-EW-100, ENG-MS-RD-A-10, ENG-SH-RD-A-100 | 100% |  |
| CO-R09.S01-EW-100 |  | Roadway Excavation Works Upto Design Level for Earthworks-[Road 09] -[SW-1] | 10d | 2025-05-25 A | 2025-05-31 A | MS-CF-MOB, MS-CF-EBL, MS-CF-ENG, ENG-MS-RD-A-10, ENG-SH-RD-A-100, CO-R10.S04-ES-EW-100 | 100% |  |
|  | SW | **Sewage Network** |  | 2025-09-01 | 2026-10-13 |  |  |  |
|  | ML | **Main Line Sections** |  | 2025-09-01 | 2026-05-05 |  |  |  |
| CO-R09.S01-SW-100 |  | Trench Excavation and Bedding Works for Main Lines of Sewage Network-[Road 09] -[SW-1] | 10d | 2025-09-01 A | 2025-09-04 A | CO-R09.S01-EW-110, ENG-MS-SW-ML-A-110, ENG-SH-SW-ML-A-110, CO-R10.S04-ES-SW-100 | 100% |  |
| CO-R09.S01-SW-120 |  | Pipes Laying Works for Main Lines of Sewage Network-[Road 09] -[SW-1] | 12d | 2025-09-06 A | 2025-09-15 A | PRO-SW-1DL-100, MS-CS-SW, CO-R09.S01-SW-100, PRO-R09-SW-DL-100 | 100% |  |
| CO-R09.S01-SW-130 |  | Trench Backfilling and Compaction Works for Main Lines of Sewage Network-[Road 09] -[SW-1] | 12d | 2025-10-24 A | 2026-05-05 A | ENG-SH-SW-ML-A-110 FF, ENG-MS-SW-ML-A-110 FF, CO-R09.S01-SW-120, CO-R09.S01-SW-210 FF | 100% |  |
|  | MH | **Manholes** |  | 2025-10-12 | 2026-10-13 |  |  |  |
| CO-R09.S01-SW-160 |  | Excavation Works for Main Line Manholes of Sewage Network-[Road 09] -[SW-1] | 1d | 2025-10-12 A | 2025-10-15 A | CO-R09.S01-SW-100 SS, CO-R09.S01-SW-120 SS, PRO-R09-SW-DL-110 | 100% |  |
| CO-R09.S01-SW-170 |  | Installation RC Footing Works for Main Line Manholes of Sewage Network-[Road 09] -[SW-1] | 3d | 2025-10-13 A | 2025-10-16 A | CO-R09.S01-SW-160 | 100% |  |
| CO-R09.S01-SW-180 |  | Install Grp Liner Wall Works for Main Line Manholes of Sewage Network-[Road 09] -[SW-1] | 6d | 2025-10-13 A | 2025-10-16 A | CO-R09.S01-SW-170 | 100% |  |
| CO-R09.S01-SW-190 |  | Pouring Grp Liner Wall Works for Main Line Manholes of Sewage Network-[Road 09] -[SW-1] | 3d | 2025-10-14 A | 2025-10-18 A | CO-R09.S01-SW-180 | 100% |  |
| CO-R09.S01-SW-200 |  | Backfilling Works for Main Line Manholes of Sewage Network-[Road 09] -[SW-1] | 5d | 2025-10-15 A | 2025-10-20 A | CO-R09.S01-SW-190 | 100% |  |
| CO-R09.S01-SW-210 |  | Testing Works for Main Line Manholes of Sewage Network-[Road 09] -[SW-1] | 1d | 2026-10-13 A | 2026-10-13 A | CO-R09.S01-SW-200 | 100% |  |
|  | SD | **Storm Drainage Network** |  | 2025-10-16 | 2026-11-25 |  |  |  |
|  | ML | **Main Line Sections** |  | 2025-10-16 | 2026-03-11 |  |  |  |
| CO-R09.S01-SD-100 |  | Trench Excavation and Bedding Works for Main Lines of Storm Drainage Network-[Road 09] -[SW-1] | 10d | 2025-10-16 A | 2026-03-10 A | ENG-SH-SD-ML-A-110, CO-R09.S01-EW-110, CO-R09.S01-EW-100, MS-CS-PS SS, ENG-MS-SD-ML-A-110, CO-R09.S01-SW-130 SS+3d, CO-R09.S01-SW-130 FF+3d, CO-R10.S04-ES-SD-100 | 100% |  |
| CO-R09.S01-SD-120 |  | Pipes Laying Works for Main Lines of Storm Drainage Network-[Road 09] -[SW-1] | 10d | 2025-10-18 A | 2026-03-11 A | PRO-SD-1DL-110, CO-R09.S01-SD-100, CO-R09.S01-SW-120 | 100% |  |
| CO-R09.S01-SD-130 |  | Trench Backfilling and Compaction Works for Main Lines of Storm Drainage Network-[Road 09] -[SW-1] | 20d | 2025-12-18 A | 2026-03-11 A | ENG-SH-SD-ML-A-110 FF, ENG-MS-SD-ML-A-110 FF, CO-R09.S01-SD-120, CO-R09.S01-SD-220 FF, CO-R09.S01-SD-170 FF, CO-R09.S01-SW-130, CO-R09.S02-SW-130 | 100% |  |
|  | MH | **Manholes** |  | 2025-12-11 | 2026-11-18 |  |  |  |
| CO-R09.S01-SD-180 |  | Trench Excavation and Bedding Works for Manholes of Storm Drainage Network-[Road 09] -[SW-1] | 2d | 2025-12-11 A | 2025-12-15 A | CO-R09.S01-SD-120 SS, PRO-SD-1DL-100, MS-CS-SD, CO-R09.S01-SD-100 | 100% |  |
| CO-R09.S01-SD-190 |  | Install RC Footing Works for Manholes of Storm Drainage Network-[Road 09] -[SW-1] | 3d | 2025-12-11 A | 2025-12-15 A | CO-R09.S01-SD-180 | 100% |  |
| CO-R09.S01-SD-200 |  | Install RC Wall Rings & Slab Works for Manholes of Storm Drainage Network-[Road 09] -[SW-1] | 7d | 2025-12-11 A | 2025-12-15 A | CO-R09.S01-SD-190 | 100% |  |
| CO-R09.S01-SD-220 |  | Backfilling Works for Manholes of Storm Drainage Network-[Road 09] -[SW-1] | 7d | 2026-05-02 A | 2026-05-09 A | CO-R09.S01-SD-210 | 100% |  |
| CO-R09.S01-SD-210 |  | Testing Works for Manholes of Storm Drainage Network-[Road 09] -[SW-1] | 2d | 2026-10-07 A | 2026-11-18 | CO-R09.S01-SD-200 | 60% | -252d |
|  | CB | **Catch Basin Sections** |  | 2026-06-14 | 2026-11-25 |  |  |  |
| CO-R09.S01-SD-160 |  | Testing Works for Catch Basins of Storm Drainage Network-[Road 09] -[SW-1] | 7d | 2026-06-14 A | 2026-11-24 | CO-R09.S01-SD-150, CO-R09.S01-SD-120 SS+3d, CO-R09.S01-SD-120 FF+3d, PRO-SD-1DL-120 | 90% | -252d |
| CO-R09.S01-SD-140 |  | Trench Excavation and Bedding Works for Catch Basins of Storm Drainage Network-[Road 09] -[SW-1] | 6d | 2026-06-27 A | 2026-11-19 | CO-R09.S01-EW-110, ENG-SH-SD-CB-A-110, ENG-MS-SD-CB-A-110, CO-R09.S01-SD-220 | 90% | -252d |
| CO-R09.S01-SD-150 |  | Installation and Pipes Laying Connection Works for Catch Basins of Storm Drainage Network-[Road 09] -[SW-1] | 7d | 2026-06-29 A | 2026-11-21 | CO-R09.S01-SD-140, PRO-SD-1DL-130 | 90% | -252d |
| CO-R09.S01-SD-170 |  | Trench Backfilling and Compaction Works for Catch Basins of Storm Drainage Network-[Road 09] -[SW-1] | 10d | 2026-08-03 A | 2026-11-25 | CO-R09.S01-SD-160 | 90% | -252d |
|  | IR | **Irrigation Network** |  | 2025-11-29 | 2026-12-10 |  |  |  |
|  | ML | **Main Line Pipes** |  | 2025-11-29 | 2026-12-10 |  |  |  |
| CO-R09.S01-IR-100 |  | Trench Excavation and Bedding Works for Main Lines of Irrigation Network-[Road 09] -[SW-1] | 7d | 2025-11-29 A | 2025-12-01 A | ENG-SH-IR-ML-A-110, CO-R09.S01-EW-110, ENG-MS-IR-ML-A-110, CO-R09.S01-SD-170 | 100% |  |
| CO-R09.S01-IR-110 |  | Pipes Laying Works for Main Lines of Irrigation Network-[Road 09] -[SW-1] | 10d | 2025-11-30 A | 2026-04-04 A | CO-R09.S01-IR-100, PRO-IR-1DL-100, MS-CS-IR, CO-R09.S01-SD-120, PRO-R09-IR-DL-100 FF+3d | 100% |  |
| CO-R09.S01-IR-140 |  | Trench Backfilling and Compaction Works for Main Lines of Irrigation Network-[Road 09] -[SW-1] | 10d | 2026-04-09 A | 2026-04-19 A | CO-R09.S01-IR-120, CO-R09.S01-IR-110 | 100% |  |
| CO-R09.S01-IR-120 |  | Installation Works for Main Line Valves of Irrigation Network-[Road 09] -[SW-1] | 7d | 2026-12-03 | 2026-12-10 | CO-R09.S01-IR-110, PRO-IR-1DL-110, PRO-R09-IR-DL-110 FF+3d |  | -258d |
|  | SL | **Street Lighting Network** |  | 2026-12-12 | 2027-06-19 |  |  |  |
|  | LP | **Lighting Poles Works** |  | 2026-12-12 | 2027-03-01 |  |  |  |
| CO-R09.S01-SL-100 |  | Foundation Excavation Works for Lighting Poles of Street Lighting Network-[Road 09] -[SW-1] | 10d | 2026-12-12 | 2026-12-22 | CO-R09.S01-EW-110, ENG-SH-SL-A-110, CO-R09.S01-EW-100, PRO-SL-1DL-110, ENG-MS-SL-A-110, CO-R09.S01-IR-100 SS+3d, CO-R09.S01-IR-140 |  | -258d |
| CO-R09.S01-SL-110 |  | Installation Works for Lighting Poles Foundation of Street Lighting Network-[Road 09] -[SW-1] | 12d | 2026-12-23 | 2027-01-05 | PRO-SL-1DL-110, CO-R09.S01-SL-100, MS-CS-SL |  | -258d |
| CO-R09.S01-SL-120 |  | Installation Works for Lighting Poles of Street Lighting Network-[Road 09] -[SW-1] | 11d | 2027-01-27 | 2027-02-08 | PRO-SL-1DL-120, CO-R09.S01-SL-160, CO-R09.S01-SL-110 |  | -256.5d |
| CO-R09.S01-SL-210 |  | Backfilling Works for Lighting Poles of Street Lighting Network-[Road 09] -[SW-1] | 12d | 2027-02-09 | 2027-02-23 | CO-R09.S01-SL-120, CO-R09.S01-SL-120 FF, CO-R10.S04-ES-SL-210 |  | -256.5d |
| CO-R09.S01-SL-130 |  | Installation Works for Lighting Fixtures With Drop Wire of Street Lighting Network-[Road 09] -[SW-1] | 12d | 2027-02-15 | 2027-03-01 | PRO-SL-1DL-140, CO-R09.S01-SL-120, CO-R09.S01-SL-200 FF |  | -233.5d |
| CO-R09.S01-SL-200 |  | Testing Works for Lighting Poles of Street Lighting Network-[Road 09] -[SW-1] | 5d | 2027-02-24 | 2027-03-01 | CO-R09.S01-SL-210, CO-R09.S01-SL-120 |  | -233.5d |
|  | CW | **Cabling Works** |  | 2026-12-23 | 2027-01-26 |  |  |  |
| CO-R09.S01-SL-140 |  | Trench Excavation and Bedding Works for Street Lighting Network-[Road 09] -[SW-1] | 10d | 2026-12-23 | 2027-01-03 | ENG-SH-SL-A-110, CO-R09.S01-SL-110 SS, ENG-MS-SL-A-110 |  | -258d |
| CO-R09.S01-SL-150 |  | Cable Laying Works for Street Lighting Network-[Road 09] -[SW-1] | 10d | 2027-01-04 | 2027-01-14 | PRO-SL-1DL-100, CO-R09.S01-SL-140 |  | -258d |
| CO-R09.S01-SL-160 |  | Trench Backfilling and Compaction Works for Street Lighting Network-[Road 09] -[SW-1] | 10d | 2027-01-16 | 2027-01-26 | CO-R09.S01-SL-150, CO-R09.S01-IR-140 |  | -258d |
|  | DPB | **Distrubution Panel Boards** |  | 2027-04-29 | 2027-06-19 |  |  |  |
| CO-R09.S01-SL-170 |  | Foundation Excavation Works For Panel Boards of Street Lighting Network-[Road 09] -[SW-1] | 15d | 2027-04-29 | 2027-05-22 | CO-R09-SL-ES-100, CO-R09.S01-EW-110, ENG-SH-SL-A-110, ENG-MS-SL-A-110 |  | -256.5d |
| CO-R09.S01-SL-180 |  | Installation Works for Panel Board Concrete Foundations of Street Lighting Network-[Road 09] -[SW-1] | 12d | 2027-05-23 | 2027-06-05 | CO-R09.S01-SL-170 |  | -256.5d |
| CO-R09.S01-SL-190 |  | Installation Works for Lighting Panel Boards of Street Lighting Network-[Road 09] -[SW-1] | 12d | 2027-06-06 | 2027-06-19 | CO-R09.S01-SL-180, PRO-SL-1DL-160 |  | -256.5d |
| CO-R09.S01-SL-220 |  | A wall of concrete blocks to install the KWH meter of Street Lighting Network-[Road 09] -[SW-1] | 12d | 2027-06-06 | 2027-06-19 | CO-R09.S01-SL-180 |  | -256.5d |
|  | MV | **Medium Voltage Network** |  | 2026-09-30 | 2027-03-02 |  |  |  |

| ID | WBS | Task | Duration | Start | Finish | Predecessors | Complete | Total float |
| --- | --- | --- | --- | --- | --- | --- | --- | --- |
|  | CW | **Cabling Works** |  | 2026-09-30 | 2027-03-02 |  |  |  |
| CO-R09.S01-MV-100 |  | Trench Excavation and Bedding Works for Medium Voltage Network-[Road 09] -[SW-1] | 4d | 2026-09-30 A | 2027-01-27 | ENG-SH-MV-A-110, CO-R09.S01-SD-170 SS+3d, CO-R09.S01-SD-170 FF+3d, CO-R09.S01-EW-110, ENG-MS-MV-A-110, CO-R09.S01-SL-160 | 85% | -258d |
| CO-R09.S01-MV-110 |  | Cable Laying Works for Medium Voltage Network-[Road 09] -[SW-1] | 5d | 2026-10-07 A | 2027-02-13 | PRO-MV-1DL-100, CO-R09.S01-MV-100, MS-CS-MV, PRO-R09-MV-DL-100 FF+3d | 85% | -258d |
| CO-R09.S01-MV-120 |  | Trench Backfilling and Compaction Works for Medium Voltage Network-[Road 09] -[SW-1] | 7d | 2026-10-13 A | 2027-03-02 | CO-R09.S01-MV-110 | 85% | -258d |
|  | TE | **Telecom Network** |  | 2027-03-03 | 2027-04-19 |  |  |  |
|  | PD | **Ducts Works** |  | 2027-03-03 | 2027-03-20 |  |  |  |
| CO-R09.S01-TE-100 |  | Trench Excavation and Bedding Works for Ducts of Telecom Network-[Road 09] -[SW-1] | 2d | 2027-03-03 | 2027-03-04 | ENG-SH-TE-A-110, CO-R09.S01-IR-140 SS+3d, CO-R09.S01-IR-140 FF+3d, CO-R09.S01-SL-160 SS+5d, CO-R09.S01-SL-160 FF+5d, CO-R09.S01-EW-110, ENG-MS-TE-A-110, CO-R09.S01-MV-120, CO-R10.S04-ES-TE-100 |  | -258d |
| CO-R09.S01-TE-110 |  | Pipes Laying Works for Ducts of Telecom Network-[Road 09] -[SW-1] | 4d | 2027-03-06 | 2027-03-13 | PRO-TE-1DL-100, CO-R09.S01-TE-100, MS-CS-TE |  | -244d |
| CO-R09.S01-TE-120 |  | Pouring Plain Concrete Above Ducts of Telecom Network-[Road 09] -[SW-1] | 2d | 2027-03-14 | 2027-03-15 | CO-R09.S01-TE-110 |  | -244d |
| CO-R09.S01-TE-130 |  | Trench Backfilling and Compaction Works for Ducts of Telecom Network-[Road 09] -[SW-1] | 4d | 2027-03-16 | 2027-03-20 | CO-R09.S01-TE-120 |  | -244d |
|  | MH | **Manholes Works** |  | 2027-03-06 | 2027-04-19 |  |  |  |
| CO-R09.S01-TE-140 |  | Excavation Works for Manholes of Telecom Network-[Road 09] -[SW-1] | 12d | 2027-03-06 | 2027-03-22 | ENG-SH-TE-A-110, ENG-MS-TE-A-110, CO-R09.S01-TE-100 |  | -258d |
| CO-R09.S01-TE-150 |  | Installation Works for Manholes of Telecom Network-[Road 09] -[SW-1] | 12d | 2027-03-23 | 2027-04-05 | PRO-TE-1DL-110, CO-R09.S01-TE-140 |  | -258d |
| CO-R09.S01-TE-160 |  | Backfilling Works for Manholes of Telecom Network-[Road 09] -[SW-1] | 12d | 2027-04-06 | 2027-04-19 | CO-R09.S01-TE-150, CO-R09.S01-TE-130 |  | -258d |
|  | RD | **Road Works** |  | 2026-06-10 | 2027-07-31 |  |  |  |
|  | RD | **Pre-Bituminous Construction** |  | 2026-06-10 | 2027-05-13 |  |  |  |
| CO-R09.S01-RD-P-100 |  | Capping and Subgrade Layer for Road Works-[Road 09] -[SW-1] | 21d | 2026-06-10 A | 2027-05-05 | ENG-SH-RD-A-100, PRO-RD-1DL-100, CO-R09.S01-SD-130, CO-R09.S01-SW-130, CO-R09.S01-SL-160 SS+3d, CO-R09.S01-SL-160 FF+3d, ENG-MS-RD-A-10, CO-R09.S01-MV-120 SS+3d, CO-R09.S01-MV-120 FF+3d, CO-R09.S01-TE-130, CO-R09.S01-TE-160, CO-R09.S02-SW-130 | 60% | -237d |
| CO-R09.S01-RD-P-110 |  | Aggregate Base Course Layer for Road Works-[Road 09] -[SW-1] | 21d | 2027-04-20 | 2027-05-13 | PRO-RD-1DL-110, CO-R09.S01-RD-P-100 SS+3d, CO-R09.S01-RD-P-100 FF+3d, CO-R09.S01-SD-170 SS+3d, CO-R09.S01-SD-170 FF+3d, MS-CS-RD |  | -208d |
|  | LS | **Pavement Works** |  | 2026-08-25 | 2027-07-31 |  |  |  |
| CO-R09.S01-RD-P-120 |  | Fixing of Curbstone for Sidewalks Pavement-[Road 09] -[SW-1] | 18d | 2026-08-25 A | 2026-08-31 A | PRO-RD-1DL-150, ENG-SH-HS-A-110, ENG-MS-HS-A-10, CO-R09.S01-RD-P-110, ENG-MT-RD-A-150 | 100% |  |
| CO-R09.S01-RD-P-130 |  | Fixing of Interlock Tiles for Sidewalks Pavement-[Road 09] -[SW-1] | 12d | 2027-07-18 | 2027-07-31 | PRO-RD-1DL-140, CO-R09.S01-RD-P-120, CO-R09-PW-TF-100, CO-R09-PW-TF-110, CO-R09-PW-TF-120, CO-R09-SW-TF-100, CO-R09-SW-TF-110, CO-R09-SW-TF-120, CO-R09-SD-TF-120, CO-R09-SD-TF-100, CO-R09-SL-TF-100, CO-R09-SL-TF-110, CO-R09-SL-ES-100, CO-R09-SL-ES-110, CO-R09-IR-TF-100, CO-R09-MV-TF-100 |  | -258d |
|  | SW_2 | **SW_2** |  | 2025-04-17 | 2027-08-07 |  |  |  |
|  | EW | **Earthworks** |  | 2025-04-17 | 2025-05-03 |  |  |  |
|  | EW | **Earthworks** |  | 2025-04-17 | 2025-05-03 |  |  |  |
| CO-R09.S02-EW-110 |  | Roadway Excavation Works Upto Design Level for Earthworks-[Road 09]-[SW-2] | 10d | 2025-04-17 A | 2025-04-26 A | CO-R09.S01-EW-100, ENG-MS-RD-A-10, ENG-SH-RD-A-100, CO-R09.S01-EW-100 FF | 100% |  |
| CO-R09.S02-EW-120 |  | Embankments Works Upto Design Level for Earthworks-[Road 09]-[SW-2] | 10d | 2025-04-17 A | 2025-05-03 A | CO-R09.S02-EW-110, ENG-MS-RD-A-10, ENG-SH-RD-A-100 | 100% |  |
|  | SW | **Sewage Network** |  | 2025-11-10 | 2026-11-05 |  |  |  |
|  | ML | **Main Line Sections** |  | 2025-11-10 | 2026-11-05 |  |  |  |
| CO-R09.S02-SW-100 |  | Trench Excavation and Bedding Works for Main Lines of Sewage Network-[Road 09]-[SW-2] | 12d | 2025-11-10 A | 2026-11-03 | CO-R09.S02-EW-120, ENG-MS-SW-ML-A-110, ENG-SH-SW-ML-A-110, CO-R09.S01-SW-100 | 98% | -234d |
| CO-R09.S02-SW-120 |  | Pipes Laying Works for Main Lines of Sewage Network-[Road 09]-[SW-2] | 12d | 2026-02-15 A | 2026-11-04 | CO-R09.S02-SW-100 | 98% | -234d |
| CO-R09.S02-SW-130 |  | Trench Backfilling and Compaction Works for Main Lines of Sewage Network-[Road 09]-[SW-2] | 12d | 2026-05-02 A | 2026-11-05 | CO-R09.S02-SW-120, CO-R09.S02-SW-210 FF | 98% | -234d |
|  | MH | **Manholes** |  | 2026-05-02 | 2026-11-04 |  |  |  |
| CO-R09.S02-SW-160 |  | Excavation Works for Main Line Manholes of Sewage Network-[Road 09]-[SW-2] | 1d | 2026-05-02 A | 2026-05-10 A | CO-R09.S02-SW-100 SS, CO-R09.S02-SW-120 SS | 100% |  |
| CO-R09.S02-SW-170 |  | Installation RC Footing Works for Main Line Manholes of Sewage Network-[Road 09]-[SW-2] | 3d | 2026-05-02 A | 2026-05-10 A | CO-R09.S02-SW-160 | 100% |  |
| CO-R09.S02-SW-180 |  | Install Grp Liner Wall Works for Main Line Manholes of Sewage Network-[Road 09]-[SW-2] | 6d | 2026-05-02 A | 2026-05-10 A | CO-R09.S02-SW-170 | 100% |  |
| CO-R09.S02-SW-190 |  | Pouring Grp Liner Wall Works for Main Line Manholes of Sewage Network-[Road 09]-[SW-2] | 3d | 2026-07-01 A | 2026-07-05 A | CO-R09.S02-SW-180 | 100% |  |
| CO-R09.S02-SW-200 |  | Backfilling Works for Main Line Manholes of Sewage Network-[Road 09]-[SW-2] | 5d | 2026-07-05 A | 2026-07-06 A | CO-R09.S02-SW-190 | 100% |  |
| CO-R09.S02-SW-210 |  | Testing Works for Main Line Manholes of Sewage Network-[Road 09]-[SW-2] | 1d | 2026-11-04 | 2026-11-04 | CO-R09.S02-SW-200 |  | -233d |
|  | SD | **Storm Drainage Network** |  | 2025-12-25 | 2026-12-10 |  |  |  |
|  | ML | **Main Line Sections** |  | 2025-12-25 | 2026-10-07 |  |  |  |
| CO-R09.S02-SD-100 |  | Trench Excavation and Bedding Works for Main Lines of Storm Drainage Network-[Road 09]-[SW-2] | 10d | 2025-12-25 A | 2025-12-29 A | CO-R09.S02-EW-120, CO-R09.S02-EW-110, CO-R09.S02-SW-130 SS+3d, CO-R09.S02-SW-130 FF+3d, CO-R09.S01-SD-100 | 100% |  |
| CO-R09.S02-SD-120 |  | Pipes Laying Works for Main Lines of Storm Drainage Network-[Road 09]-[SW-2] | 10d | 2025-12-27 A | 2025-12-29 A | PRO-R09-SD-DL-120 FF+3d, CO-R09.S02-SD-100, CO-R09.S01-SD-120 | 100% |  |
| CO-R09.S02-SD-130 |  | Trench Backfilling and Compaction Works for Main Lines of Storm Drainage Network-[Road 09]-[SW-2] | 15d | 2026-01-22 A | 2026-10-07 A | CO-R09.S02-SD-120, CO-R09.S02-SD-220 FF | 100% |  |
|  | MH | **Manholes** |  | 2026-03-01 | 2026-12-06 |  |  |  |
| CO-R09.S02-SD-180 |  | Trench Excavation and Bedding Works for Manholes of Storm Drainage Network-[Road 09]-[SW-2] | 1d | 2026-03-01 A | 2026-03-09 A | CO-R09.S02-SD-120 SS, PRO-SD-1DL-100, CO-R09.S01-SD-220 | 100% |  |
| CO-R09.S02-SD-190 |  | Install RC Footing Works for Manholes of Storm Drainage Network-[Road 09]-[SW-2] | 2d | 2026-03-01 A | 2026-03-09 A | CO-R09.S02-SD-180 | 100% |  |
| CO-R09.S02-SD-200 |  | Install RC Wall Rings & Slab Works for Manholes of Storm Drainage Network-[Road 09]-[SW-2] | 4d | 2026-03-01 A | 2026-03-09 A | CO-R09.S02-SD-190 | 100% |  |
| CO-R09.S02-SD-220 |  | Backfilling Works for Manholes of Storm Drainage Network-[Road 09]-[SW-2] | 7d | 2026-03-05 A | 2026-12-06 | CO-R09.S02-SD-210 | 90% | -232.5d |
| CO-R09.S02-SD-210 |  | Testing Works for Manholes of Storm Drainage Network-[Road 09]-[SW-2] | 2d | 2026-09-25 A | 2026-12-05 | CO-R09.S02-SD-200 | 90% | -232.5d |
|  | CB | **Catch Basin Sections** |  | 2026-06-24 | 2026-12-10 |  |  |  |
| CO-R09.S02-SD-140 |  | Trench Excavation and Bedding Works for Catch Basins of Storm Drainage Network-[Road 09]-[SW-2] | 6d | 2026-06-24 A | 2026-12-06 | CO-R09.S02-EW-120, CO-R09.S02-SD-220, CO-R09.S01-SD-140 | 90% | -163d |
| CO-R09.S02-SD-150 |  | Installation and Pipes Laying Connection Works for Catch Basins of Storm Drainage Network-[Road 09]-[SW-2] | 7d | 2026-06-25 A | 2026-12-07 | CO-R09.S02-SD-140, PRO-R09-SD-DL-130 FF+3d | 90% | -99d |
| CO-R09.S02-SD-170 |  | Trench Backfilling and Compaction Works for Catch Basins of Storm Drainage Network-[Road 09]-[SW-2] | 7d | 2026-06-28 A | 2026-12-10 | CO-R09.S02-SD-160 | 90% | -99d |
| CO-R09.S02-SD-160 |  | Testing Works for Catch Basins of Storm Drainage Network-[Road 09]-[SW-2] | 4d | 2026-07-17 A | 2026-12-09 | CO-R09.S02-SD-150, CO-R09.S02-SD-120, PRO-R09-SD-DL-110 FF+3d | 90% | -99d |
|  | PW | **Potable Water Network** |  | 2026-06-27 | 2026-12-24 |  |  |  |
|  | ML | **Main Line Sections** |  | 2026-06-27 | 2026-12-24 |  |  |  |
| CO-R09.S02-PW-100 |  | Trench Excavation and Bedding Works for Main Lines of Potable Water Network-[Road 09]-[SW-2] | 7d | 2026-06-27 A | 2026-12-06 | CO-R09.S02-EW-120, CO-R09.S02-EW-110, CO-R09.S02-SD-130 | 95% | -232.5d |
| CO-R09.S02-PW-110 |  | Pipes Laying and accessories for Main Lines of Potable Water Network-[Road 09]-[SW-2] | 8d | 2026-06-30 A | 2026-12-12 | CO-R09.S02-PW-100, PRO-R09-PW-DL-100 FF+3d, PRO-R09-PW-DL-110 FF+3d, MS-CS-PW SS | 90% | -223.5d |
| CO-R09.S02-PW-130 |  | Trench Backfilling and Compaction Works for Main Lines of Potable Water Network-[Road 09]-[SW-2] | 8d | 2026-07-01 A | 2026-12-24 | CO-R09.S02-PW-110, CO-R09.S02-PW-160 FF, CO-R09.S02-PW-210 FF | 90% | -232.5d |
|  | VC | **Valve Chamber** |  | 2026-12-07 | 2026-12-13 |  |  |  |
| CO-R09.S02-PW-210 |  | Installation Works for Main Line Valves and Valve Chambers of Potable Water Network-[Road 09]-[SW-2] | 6d | 2026-12-07 | 2026-12-13 | CO-R09.S02-PW-100 |  | -222.5d |
|  | FH | **Fire Hydrant** |  | 2026-12-07 | 2026-12-24 |  |  |  |
| CO-R09.S02-PW-140 |  | Excavation Works for Fire Hydrants of Potable Water Network-[Road 09]-[SW-2] | 5d | 2026-12-07 | 2026-12-12 | CO-R09.S02-EW-120, CO-R09.S02-PW-100 |  | -232.5d |
| CO-R09.S02-PW-150 |  | Installation Works for Fire Hydrant of Potable Water Network-[Road 09]-[SW-2] | 6d | 2026-12-13 | 2026-12-19 | CO-R09.S02-PW-140, PRO-R09-PW-DL-120 FF+3d |  | -232.5d |
| CO-R09.S02-PW-160 |  | Trench Backfilling and Compaction Works for Fire Hydrants of Potable Water Network-[Road 09]-[SW-2] | 5d | 2026-12-20 | 2026-12-24 | CO-R09.S02-PW-150 |  | -232.5d |
|  | SL | **Street Lighting Network** |  | 2026-12-26 | 2027-06-30 |  |  |  |
|  | LP | **Lighting Poles Works** |  | 2026-12-26 | 2027-03-31 |  |  |  |
| CO-R09.S02-SL-100 |  | Foundation Excavation Works for Lighting Poles of Street Lighting Network-[Road 09]-[SW-2] | 9d | 2026-12-26 | 2027-01-04 | CO-R09.S02-EW-120, CO-R09.S02-EW-110, CO-R09.S02-PW-130 |  | -232.5d |
| CO-R09.S02-SL-110 |  | Installation Works for Lighting Poles Foundation of Street Lighting Network-[Road 09]-[SW-2] | 9d | 2027-01-05 | 2027-01-14 | CO-R09.S02-SL-100, PRO-R09-SL-DL-110 FF+3d |  | -232.5d |
| CO-R09.S02-SL-120 |  | Installation Works for Lighting Poles of Street Lighting Network-[Road 09]-[SW-2] | 9d | 2027-01-16 | 2027-01-25 | CO-R09.S02-SL-110, PRO-R09-SL-DL-120 FF+3d |  | -232.5d |

| ID | WBS | Task | Duration | Start | Finish | Predecessors | Complete | Total float |
| --- | --- | --- | --- | --- | --- | --- | --- | --- |
| CO-R09.S02-SL-210 |  | Backfilling Works for Lighting Poles of Street Lighting Network-[Road 09]-[SW-2] | 20d | 2027-02-24 | 2027-03-22 | CO-R09.S02-SL-120, CO-R09.S01-SL-210 |  | -256.5d |
| CO-R09.S02-SL-130 |  | Installation Works for Lighting Fixtures With Drop Wire of Street Lighting Network-[Road 09]-[SW-2] | 17d | 2027-03-13 | 2027-03-31 | CO-R09.S02-SL-120, PRO-R09-SL-DL-140 FF+3d, CO-R09.S02-SL-200 FF |  | -256.5d |
| CO-R09.S02-SL-200 |  | Testing Works for Lighting Poles of Street Lighting Network-[Road 09]-[SW-2] | 8d | 2027-03-23 | 2027-03-31 | CO-R09.S02-SL-210, CO-R09.S02-SL-120 |  | -256.5d |
|  | CW | **Cabling Works** |  | 2027-01-26 | 2027-03-02 |  |  |  |
| CO-R09.S02-SL-140 |  | Trench Excavation and Bedding Works for Street Lighting Network-[Road 09]-[SW-2] | 10d | 2027-01-26 | 2027-02-06 | CO-R09.S02-EW-120, CO-R09.S02-SL-120, CO-R09.S02-SL-110 |  | -192d |
| CO-R09.S02-SL-150 |  | Cable Laying Works for Street Lighting Network-[Road 09]-[SW-2] | 10d | 2027-02-07 | 2027-02-17 | CO-R09.S02-SL-140, PRO-R09-SL-DL-100 FF+3d |  | -192d |
| CO-R09.S02-SL-160 |  | Trench Backfilling and Compaction Works for Street Lighting Network-[Road 09]-[SW-2] | 10d | 2027-02-18 | 2027-03-02 | CO-R09.S02-SL-150 |  | -192d |
|  | DPB | **Distrubution Panel Boards** |  | 2027-04-29 | 2027-06-30 |  |  |  |
| CO-R09.S02-SL-170 |  | Foundation Excavation Works For Panel Boards of Street Lighting Network-[Road 09]-[SW-2] | 10d | 2027-04-29 | 2027-05-10 | CO-R09.S02-EW-120, CO-R09.S02-SL-160 SS, CO-R09-SL-ES-100 |  | -225.25d |
| CO-R09.S02-SL-180 |  | Installation Works for Panel Board Concrete Foundations of Street Lighting Network-[Road 09]-[SW-2] | 10d | 2027-05-11 | 2027-05-27 | CO-R09.S02-SL-170 |  | -225.25d |
| CO-R09.S02-SL-190 |  | Installation Works for Lighting Panel Boards of Street Lighting Network-[Road 09]-[SW-2] | 10d | 2027-05-29 | 2027-06-08 | CO-R09.S02-SL-180, PRO-R09-SL-DL-160 FF+3d |  | -225.25d |
| CO-R09.S02-SL-220 |  | A wall of concrete blocks to install the KWH meter of Street Lighting Network-[Road 09]-[SW-2] | 18.25d | 2027-06-09 | 2027-06-30 | CO-R09.S02-SL-180, CO-R09.S02-SL-190 |  | -225.25d |
|  | TE | **Telecom Network** |  | 2027-03-21 | 2027-05-13 |  |  |  |
|  | PD | **Ducts Works** |  | 2027-03-21 | 2027-04-17 |  |  |  |
| CO-R09.S02-TE-100 |  | Trench Excavation and Bedding Works for Ducts of Telecom Network-[Road 09]-[SW-2] | 3d | 2027-03-21 | 2027-03-23 | CO-R09.S01-TE-130, CO-R09.S01-TE-100 |  | -244d |
| CO-R09.S02-TE-110 |  | Pipes Laying Works for Ducts of Telecom Network-[Road 09]-[SW-2] | 7d | 2027-03-24 | 2027-03-31 | CO-R09.S02-TE-100, PRO-R09-TE-DL-100 FF+3d |  | -235d |
| CO-R09.S02-TE-120 |  | Pouring Plain Concrete Above Ducts of Telecom Network-[Road 09]-[SW-2] | 7d | 2027-04-01 | 2027-04-08 | CO-R09.S02-TE-110 |  | -235d |
| CO-R09.S02-TE-130 |  | Trench Backfilling and Compaction Works for Ducts of Telecom Network-[Road 09]-[SW-2] | 7d | 2027-04-10 | 2027-04-17 | CO-R09.S02-TE-120 |  | -235d |
|  | MH | **Manholes Works** |  | 2027-04-20 | 2027-05-13 |  |  |  |
| CO-R09.S02-TE-140 |  | Excavation Works for Manholes of Telecom Network-[Road 09]-[SW-2] | 7d | 2027-04-20 | 2027-04-27 | CO-R09.S02-TE-100, CO-R09.S01-TE-140, CO-R09.S01-TE-160 |  | -258d |
| CO-R09.S02-TE-150 |  | Installation Works for Manholes of Telecom Network-[Road 09]-[SW-2] | 7d | 2027-04-28 | 2027-05-05 | CO-R09.S02-TE-140, PRO-R09-TE-DL-110 FF+3d |  | -258d |
| CO-R09.S02-TE-160 |  | Backfilling Works for Manholes of Telecom Network-[Road 09]-[SW-2] | 7d | 2027-05-06 | 2027-05-13 | CO-R09.S02-TE-150 |  | -258d |
|  | RD | **Road Works** |  | 2026-06-10 | 2027-08-07 |  |  |  |
|  | RD | **Pre-Bituminous Construction** |  | 2026-06-10 | 2027-06-09 |  |  |  |
| CO-R09.S02-RD-P-100 |  | Capping and Subgrade Layer for Road Works-[Road 09]-[SW-2] | 12d | 2026-06-10 A | 2027-06-05 | CO-R09.S02-SD-130, CO-R09.S02-PW-130, CO-R09.S02-PW-160, CO-R09.S02-SL-160 SS+3d, CO-R09.S02-SL-160 FF+3d, PRO-R09-RD-DL-100 FF+3d, CO-R09.S02-TE-130, CO-R09.S02-TE-160 | 60% | -258d |
| CO-R09.S02-RD-P-110 |  | Aggregate Base Course Layer for Road Works-[Road 09]-[SW-2] | 18d | 2027-05-20 | 2027-06-09 | CO-R09.S02-RD-P-100 SS+3d, CO-R09.S02-RD-P-100 FF+3d, CO-R09.S02-SD-170 SS+3d, CO-R09.S02-SD-170 FF+3d, PRO-R09-RD-DL-110 FF+3d |  | -228d |
|  | LS | **Pavement Works** |  | 2026-08-25 | 2027-08-07 |  |  |  |
| CO-R09.S02-RD-P-120 |  | Fixing of Curbstone for Sidewalks Pavement-[Road 09]-[SW-2] | 18d | 2026-08-25 A | 2026-08-31 A | PRO-R09-RD-DL-130 FF+3d, CO-R09.S02-RD-P-110 SS+3d, CO-R09.S02-RD-P-110 FF+3d | 100% |  |
| CO-R09.S02-RD-P-130 |  | Fixing of Interlock Tiles for Sidewalks Pavement-[Road 09]-[SW-2] | 18d | 2027-07-18 | 2027-08-07 | PRO-R09-RD-DL-120 FF+3d, CO-R09.S02-RD-P-120 SS+3d, CO-R09.S02-RD-P-120 FF+3d, CO-R09-PW-TF-110, CO-R09-PW-TF-120, CO-R09-SW-TF-100, CO-R09-SW-TF-110, CO-R09-SW-TF-120, CO-R09-SD-TF-100, CO-R09-SD-TF-120, CO-R09-SL-TF-100, CO-R09-SL-TF-110, CO-R09-SL-ES-100, CO-R09-SL-ES-110, CO-R09-IR-TF-100, CO-R09-MV-TF-100 |  | -257d |
|  | 4 | **Road 10 Local 2 ( 2352 LM )** |  | 2025-03-15 | 2027-07-17 |  |  |  |
|  | 1 | **SW-3** |  | 2025-03-15 | 2027-07-14 |  |  |  |
|  | SW_3 | **SW_3-East** |  | 2025-03-15 | 2027-07-14 |  |  |  |
|  | EW | **Earthworks** |  | 2025-03-15 | 2025-03-24 |  |  |  |
|  | EW | **Earthworks** |  | 2025-03-15 | 2025-03-24 |  |  |  |
| CO-R10.S03-ES-EW-100 |  | Roadway Excavation Works Upto Design Level for Earthworks-[Road 10]-[SW-3] | 10d | 2025-03-15 A | 2025-03-22 A | ENG-MS-RD-A-10, ENG-SH-RD-A-100, CO-R15.S10-EW-100 | 100% |  |
| CO-R10.S03-ES-EW-110 |  | Embankments Works Upto Design Level for Earthworks-[Road 10]-[SW-3] | 12d | 2025-03-18 A | 2025-03-24 A | CO-R10.S03-ES-EW-100, ENG-MS-RD-A-10, ENG-SH-RD-A-100 | 100% |  |
|  | SD | **Storm Drainage Network** |  | 2025-08-02 | 2026-10-10 |  |  |  |
|  | ML | **Main Line Sections** |  | 2025-08-02 | 2025-08-21 |  |  |  |
| CO-R10.S03-ES-SD-100 |  | Trench Excavation and Bedding Works for Main Lines of Storm Drainage Network-[Road 10]-[SW-3] | 10d | 2025-08-02 A | 2025-08-07 A | ENG-SH-SD-ML-A-110, CO-R10.S03-ES-EW-110, CO-R10.S03-ES-EW-100, ENG-MS-SD-ML-A-110, CO-R15.S10-SD-100 | 100% |  |
| CO-R10.S03-ES-SD-120 |  | Pipes Laying Works for Main Lines of Storm Drainage Network-[Road 10]-[SW-3] | 15d | 2025-08-09 A | 2025-08-14 A | CO-R10.S03-ES-SD-100, CO-R15.S10-SD-120 | 100% |  |
| CO-R10.S03-ES-SD-130 |  | Trench Backfilling and Compaction Works for Main Lines of Storm Drainage Network-[Road 10]-[SW-3] | 15d | 2025-08-16 A | 2025-08-21 A | ENG-SH-SD-ML-A-110 FF, ENG-MS-SD-ML-A-110 FF, CO-R10.S03-ES-SD-120, CO-R10.S03-ES-SD-220 FF | 100% |  |
|  | MH | **Manholes** |  | 2025-11-01 | 2026-10-07 |  |  |  |
| CO-R10.S03-ES-SD-180 |  | Trench Excavation and Bedding Works for Manholes of Storm Drainage Network-[Road 10]-[SW-3] | 1d | 2025-11-01 A | 2025-11-06 A | CO-R10.S03-ES-SD-120 SS, PRO-SD-1DL-100 | 100% |  |
| CO-R10.S03-ES-SD-190 |  | Install RC Footing Works for Manholes of Storm Drainage Network-[Road 10]-[SW-3] | 1d | 2025-11-05 A | 2025-11-13 A | CO-R10.S03-ES-SD-180 | 100% |  |
| CO-R10.S03-ES-SD-200 |  | Install RC Wall Rings & Slab Works for Manholes of Storm Drainage Network-[Road 10]-[SW-3] | 4d | 2025-11-11 A | 2025-11-22 A | CO-R10.S03-ES-SD-190 | 100% |  |
| CO-R10.S03-ES-SD-220 |  | Backfilling Works for Manholes of Storm Drainage Network-[Road 10]-[SW-3] | 7d | 2025-11-16 A | 2025-11-24 A | CO-R10.S03-ES-SD-210 | 100% |  |
| CO-R10.S03-ES-SD-210 |  | Testing Works for Manholes of Storm Drainage Network-[Road 10]-[SW-3] | 1d | 2026-09-15 A | 2026-10-07 A | CO-R10.S03-ES-SD-200 | 100% |  |
|  | CB | **Catch Basin Sections** |  | 2025-08-20 | 2026-10-10 |  |  |  |
| CO-R10.S03-ES-SD-140 |  | Trench Excavation and Bedding Works for Catch Basins of Storm Drainage Network-[Road 10]-[SW-3] | 6d | 2025-08-20 A | 2025-08-25 A | CO-R10.S03-ES-EW-110, ENG-SH-SD-CB-A-110, ENG-MS-SD-CB-A-110, CO-R10.S03-ES-SD-220, CO-R15.S10-SD-140 | 100% |  |
| CO-R10.S03-ES-SD-150 |  | Installation and Pipes Laying Connection Works for Catch Basins of Storm Drainage Network-[Road 10]-[SW-3] | 7d | 2025-08-26 A | 2025-08-28 A | CO-R10.S03-ES-SD-140, CO-R15.S10-SD-150 | 100% |  |
| CO-R10.S03-ES-SD-170 |  | Trench Backfilling and Compaction Works for Catch Basins of Storm Drainage Network-[Road 10]-[SW-3] | 7d | 2025-08-30 A | 2025-09-02 A | CO-R10.S03-ES-SD-160 | 100% |  |
| CO-R10.S03-ES-SD-160 |  | Testing Works for Catch Basins of Storm Drainage Network-[Road 10]-[SW-3] | 10d | 2026-09-15 A | 2026-10-10 A | CO-R10.S03-ES-SD-150, CO-R10.S03-ES-SD-120 | 100% |  |
|  | PW | **Potable Water Network** |  | 2025-07-07 | 2026-12-14 |  |  |  |
|  | ML | **Main Line Sections** |  | 2025-08-05 | 2025-08-16 |  |  |  |
| CO-R10.S03-ES-PW-100 |  | Trench Excavation and Bedding Works for Main Lines of Potable Water Network-[Road 10]-[SW-3] | 6d | 2025-08-05 A | 2025-08-07 A | ENG-SH-PW-ML-A-110, CO-R10.S03-ES-EW-110, CO-R10.S03-ES-EW-100, ENG-MS-PW-ML-A-110, ENG-SH-PW-FH-A-110, CO-R10.S03-ES-SD-130 | 100% |  |
| CO-R10.S03-ES-PW-110 |  | Pipes Laying and accessories for Main Lines of Potable Water Network-[Road 10]-[SW-3] | 6d | 2025-08-09 A | 2025-08-12 A | CO-R10.S03-ES-PW-100, PRO-R10-PW-DL-110 FF+3d | 100% |  |
| CO-R10.S03-ES-PW-130 |  | Trench Backfilling and Compaction Works for Main Lines of Potable Water Network-[Road 10]-[SW-3] | 6d | 2025-08-13 A | 2025-08-16 A | CO-R10.S03-ES-PW-110 SS+3d, CO-R10.S03-ES-PW-110 FF+3d, CO-R10.S03-ES-PW-220 FF, CO-R10.S03-ES-PW-160 FF | 100% |  |
|  | VC | **Valve Chamber** |  | 2025-07-07 | 2026-07-16 |  |  |  |
| CO-R10.S03-ES-PW-170 |  | Excavation Works for Main Line Valves and Valve Chambers of Potable Water Network-[Road 10]-[SW-3] | 1d | 2025-07-07 A | 2026-07-16 A | CO-R10.S03-ES-PW-100 | 100% |  |
| CO-R10.S03-ES-PW-180 |  | RC Footing Works for Main Line Valves and Valve Chambers of Potable Water Network-[Road 10]-[SW-3] | 3d | 2025-07-07 A | 2026-07-16 A | CO-R10.S03-ES-PW-170 | 100% |  |
| CO-R10.S03-ES-PW-190 |  | RC Wall Works for Main Line Valves and Valve Chambers of Potable Water Network-[Road 10]-[SW-3] | 6d | 2025-07-07 A | 2026-07-16 A | CO-R10.S03-ES-PW-180 | 100% |  |
| CO-R10.S03-ES-PW-200 |  | RC Slab Works for Main Line Valves and Valve Chambers of Potable Water Network-[Road 10]-[SW-3] | 2d | 2025-07-07 A | 2026-07-16 A | CO-R10.S03-ES-PW-190 | 100% |  |
| CO-R10.S03-ES-PW-210 |  | Insulation Works for Main Line Valves and Valve Chambers of Potable Water Network-[Road 10]-[SW-3] | 1d | 2025-07-07 A | 2026-07-16 A | CO-R10.S03-ES-PW-200 | 100% |  |
| CO-R10.S03-ES-PW-220 |  | Backfilling Works for Main Line Valves and Valve Chambers of Potable Water Network-[Road 10]-[SW-3] | 3d | 2025-07-07 A | 2026-07-16 A | CO-R10.S03-ES-PW-210 | 100% |  |
|  | FH | **Fire Hydrant** |  | 2026-11-28 | 2026-12-14 |  |  |  |
| CO-R10.S03-ES-PW-140 |  | Excavation Works for Fire Hydrants of Potable Water Network-[Road 10]-[SW-3] | 6d | 2026-11-28 | 2026-12-03 | CO-R10.S03-ES-PW-110 SS+3d, CO-R10.S03-ES-PW-110 FF+3d, CO-R10.S03-ES-EW-110 |  | -256d |
| CO-R10.S03-ES-PW-150 |  | Installation Works for Fire Hydrant of Potable Water Network-[Road 10]-[SW-3] | 6d | 2026-12-05 | 2026-12-10 | CO-R10.S03-ES-PW-140 |  | -256d |
| CO-R10.S03-ES-PW-160 |  | Trench Backfilling and Compaction Works for Fire Hydrants of Potable Water Network-[Road 10]-[SW-3] | 6d | 2026-12-08 | 2026-12-14 | CO-R10.S03-ES-PW-150 SS+3d, CO-R10.S03-ES-PW-150 FF+3d |  | -256d |
|  | IR | **Irrigation Network** |  | 2025-07-20 | 2026-12-16 |  |  |  |
|  | ML | **Main Line Pipes** |  | 2025-07-20 | 2026-12-16 |  |  |  |

| ID | WBS | Task | Duration | Start | Finish | Predecessors | Complete | Total float |
| --- | --- | --- | --- | --- | --- | --- | --- | --- |
| CO-R10.S03-ES-IR-100 |  | Trench Excavation and Bedding Works for Main Lines of Irrigation Network-[Road 10]-[SW-3] | 7d | 2025-07-20 A | 2025-07-24 A | ENG-SH-IR-ML-A-110, CO-R10.S03-ES-EW-110, CO-R10.S03-ES-PW-130, CO-R10.S03-ES-SD-170, ENG-MS-IR-ML-A-110 | 100% |  |
| CO-R10.S03-ES-IR-110 |  | Pipes Laying Works for Main Lines of Irrigation Network-[Road 10]-[SW-3] | 7d | 2025-07-26 A | 2025-07-31 A | CO-R10.S03-ES-IR-100, PRO-R19.2-IR-DL-100 FF+3d | 100% |  |
| CO-R10.S03-ES-IR-130 |  | Trench Backfilling and Compaction Works for Main Lines of Irrigation Network-[Road 10]-[SW-3] | 7d | 2025-08-20 A | 2025-08-21 A | CO-R10.S03-ES-IR-120, CO-R10.S03-ES-IR-110 | 100% |  |
| CO-R10.S03-ES-IR-120 |  | Installation Works for Main Line Valves of Irrigation Network-[Road 10]-[SW-3] | 2d | 2026-12-15 | 2026-12-16 | CO-R10.S03-ES-IR-110 |  | -256d |
|  | SL | **Street Lighting Network** |  | 2026-12-17 | 2027-04-20 |  |  |  |
|  | LP | **Lighting Poles Works** |  | 2026-12-17 | 2027-01-24 |  |  |  |
| CO-R10.S03-ES-SL-100 |  | Foundation Excavation Works for Lighting Poles of Street Lighting Network-[Road 10]-[SW-3] | 12d | 2026-12-17 | 2026-12-30 | CO-R10.S03-ES-EW-110, ENG-SH-SL-A-110, CO-R10.S03-ES-EW-100, ENG-MS-SL-A-110, CO-R10.S03-ES-IR-130 |  | -256d |
| CO-R10.S03-ES-SL-110 |  | Installation Works for Lighting Poles Foundation of Street Lighting Network-[Road 10]-[SW-3] | 12d | 2026-12-23 | 2027-01-05 | CO-R10.S03-ES-SL-100 SS+5d, CO-R10.S03-ES-SL-100 FF+5d |  | -256d |
| CO-R10.S03-ES-SL-120 |  | Installation Works for Lighting Poles of Street Lighting Network-[Road 10]-[SW-3] | 18d | 2026-12-29 | 2027-01-18 | CO-R10.S03-ES-SL-110 SS+5d, CO-R10.S03-ES-SL-110 FF+5d |  | -256d |
| CO-R10.S03-ES-SL-130 |  | Installation Works for Lighting Fixtures With Drop Wire of Street Lighting Network-[Road 10]-[SW-3] | 18d | 2027-01-04 | 2027-01-24 | CO-R10.S03-ES-SL-120 SS+5d, CO-R10.S03-ES-SL-120 FF+5d, CO-R10.S03-ES-SL-200 FF |  | -207d |
| CO-R10.S03-ES-SL-210 |  | Backfilling Works for Lighting Poles of Street Lighting Network-[Road 10]-[SW-3] | 12d | 2027-01-05 | 2027-01-18 | CO-R10.S03-ES-SL-120 SS, CO-R10.S03-ES-SL-120 FF, CO-R15.S10-SL-210 |  | -253.5d |
| CO-R10.S03-ES-SL-200 |  | Testing Works for Lighting Poles of Street Lighting Network-[Road 10]-[SW-3] | 5d | 2027-01-19 | 2027-01-24 | CO-R10.S03-ES-SL-210, CO-R10.S03-ES-SL-120 |  | -207d |
|  | CW | **Cabling Works** |  | 2027-01-19 | 2027-02-23 |  |  |  |
| CO-R10.S03-ES-SL-140 |  | Trench Excavation and Bedding Works for Street Lighting Network-[Road 10]-[SW-3] | 10d | 2027-01-19 | 2027-01-30 | ENG-SH-SL-A-110, CO-R10.S03-ES-IR-130, CO-R10.S03-ES-EW-110, CO-R10.S03-ES-SL-120, CO-R10.S03-ES-SL-110, ENG-MS-SL-A-110 |  | -256d |
| CO-R10.S03-ES-SL-150 |  | Cable Laying Works for Street Lighting Network-[Road 10]-[SW-3] | 10d | 2027-01-31 | 2027-02-10 | CO-R10.S03-ES-SL-140 |  | -256d |
| CO-R10.S03-ES-SL-160 |  | Trench Backfilling and Compaction Works for Street Lighting Network-[Road 10]-[SW-3] | 10d | 2027-02-11 | 2027-02-23 | CO-R10.S03-ES-SL-150, CO-R10.S03-ES-IR-130 |  | -256d |
|  | DPB | **Distrubution Panel Boards** |  | 2027-03-28 | 2027-04-20 |  |  |  |
| CO-R10.S03-ES-SL-170 |  | Foundation Excavation Works For Panel Boards of Street Lighting Network-[Road 10]-[SW-3] | 12d | 2027-03-28 | 2027-04-10 | CO-R10-SL-ES-140, CO-R10.S03-ES-EW-110, ENG-SH-SL-A-110, ENG-MS-SL-A-110 |  | -232d |
| CO-R10.S03-ES-SL-180 |  | Installation Works for Panel Board Concrete Foundations of Street Lighting Network-[Road 10]-[SW-3] | 12d | 2027-04-04 | 2027-04-17 | CO-R10-SL-ES-150 SS+3d, CO-R10-SL-ES-150 FF+3d, CO-R10.S03-ES-SL-170 SS+3d, CO-R10.S03-ES-SL-170 FF+3d |  | -232d |
| CO-R10.S03-ES-SL-220 |  | A wall of concrete blocks to install the KWH meter of Street Lighting Network-[Road 10]-[SW-3] | 12d | 2027-04-04 | 2027-04-17 | CO-R10.S03-ES-SL-180 SS, CO-R10.S03-ES-SL-180 FF |  | -229d |
| CO-R10.S03-ES-SL-190 |  | Installation Works for Lighting Panel Boards of Street Lighting Network-[Road 10]-[SW-3] | 12d | 2027-04-07 | 2027-04-20 | CO-R10.S03-ES-SL-180 SS+3d, CO-R10.S03-ES-SL-180 FF+3d |  | -232d |
|  | TE | **Telecom Network** |  | 2027-02-11 | 2027-03-20 |  |  |  |
|  | PD | **Ducts Works** |  | 2027-02-11 | 2027-03-20 |  |  |  |
| CO-R10.S03-ES-TE-100 |  | Trench Excavation and Bedding Works for Ducts of Telecom Network-[Road 10]-[SW-3] | 7d | 2027-02-11 | 2027-02-18 | CO-R10.S03-ES-IR-130, CO-R10.S03-ES-SL-160 SS, CO-R15.S10-TE-100 |  | -256d |
| CO-R10.S03-ES-TE-110 |  | Pipes Laying Works for Ducts of Telecom Network-[Road 10]-[SW-3] | 7d | 2027-02-20 | 2027-02-28 | CO-R10.S03-ES-TE-100 |  | -211d |
| CO-R10.S03-ES-TE-120 |  | Pouring Plain Concrete Above Ducts of Telecom Network-[Road 10]-[SW-3] | 7d | 2027-03-01 | 2027-03-08 | CO-R10.S03-ES-TE-110 |  | -211d |
| CO-R10.S03-ES-TE-130 |  | Trench Backfilling and Compaction Works for Ducts of Telecom Network-[Road 10]-[SW-3] | 7d | 2027-03-13 | 2027-03-20 | CO-R10.S03-ES-TE-120 |  | -211d |
|  | MH | **Manholes Works** |  | 2027-02-20 | 2027-03-20 |  |  |  |
| CO-R10.S03-ES-TE-140 |  | Excavation Works for Manholes of Telecom Network-[Road 10]-[SW-3] | 7d | 2027-02-20 | 2027-02-28 | CO-R10.S03-ES-TE-100 |  | -208d |
| CO-R10.S03-ES-TE-150 |  | Installation Works for Manholes of Telecom Network-[Road 10]-[SW-3] | 7d | 2027-03-01 | 2027-03-08 | CO-R10.S03-ES-TE-140 |  | -208d |
| CO-R10.S03-ES-TE-160 |  | Backfilling Works for Manholes of Telecom Network-[Road 10]-[SW-3] | 7d | 2027-03-13 | 2027-03-20 | CO-R10.S03-ES-TE-150 |  | -208d |
|  | MV | **Medium Voltage Network** |  | 2026-07-09 | 2026-10-12 |  |  |  |
|  | CW | **Cabling Works** |  | 2026-09-09 | 2026-10-12 |  |  |  |
| CO-R10.S03-ES-MV-100 |  | Trench Excavation and Bedding Works for Medium Voltage Network-[Road 10]-[SW-3] | 18d | 2026-09-09 A | 2026-10-08 A | ENG-SH-MV-A-110, CO-R10.S03-ES-SD-170 SS+3d, CO-R10.S03-ES-SD-170 FF+3d, CO-R10.S03-ES-EW-110, CO-R10.S03-ES-TE-130 SS+3d, CO-R10.S03-ES-TE-130 FF+3d, ENG-MS-MV-A-110 | 100% |  |
| CO-R10.S03-ES-MV-110 |  | Cable Laying Works for Medium Voltage Network-[Road 10]-[SW-3] | 18d | 2026-09-13 A | 2026-10-10 A | CO-R10.S03-ES-MV-100 SS+3d, CO-R10.S03-ES-MV-100 FF+3d, PRO-R10-MV-DL-100 FF+3d | 100% |  |
| CO-R10.S03-ES-MV-120 |  | Trench Backfilling and Compaction Works for Medium Voltage Network-[Road 10]-[SW-3] | 18d | 2026-09-16 A | 2026-10-12 A | CO-R10.S03-ES-MV-110 SS+3d, CO-R10.S03-ES-MV-110 FF+3d, CO-R10.S03-ES-PW-130 FF+3d | 100% |  |
|  | SS | **RMU Works** |  | 2026-07-09 | 2026-07-13 |  |  |  |
| CO-R10.S03-ES-MV-130 |  | Foundation Excavation Works for RMU of Medium Voltage Network-[Road 10]-[SW-3] | 12d | 2026-07-09 A | 2026-07-13 A | ENG-SH-MV-A-110, ENG-MS-MV-A-110, CO-R10.S03-ES-EW-100, CO-R10.S03-ES-EW-110, CO-R10.S03-ES-MV-120 | 100% |  |
| CO-R10.S03-ES-MV-150 |  | Installation Works for RMU Concrete Foundations of Medium Voltage Network-[Road 10]-[SW-3] | 18d | 2026-07-09 A | 2026-07-13 A | CO-R10.S03-ES-MV-130, PRO-R10-MV-DL-120 | 100% |  |
| CO-R10.S03-ES-MV-170 |  | Installation Works for RMU of Medium Voltage Network-[Road 10]-[SW-3] | 6d | 2026-07-09 A | 2026-07-13 A | CO-R10.S03-ES-MV-150, ENG-SH-MV-A-110, ENG-MS-MV-A-110, PRO-MV-LL-SH/DL-10, PRO-R10-MV-LL-MSI-10 | 100% |  |
| CO-R10.S03-ES-MV-180 |  | Termination Works for RMU of Medium Voltage Network-[Road 10]-[SW-3] | 5d | 2026-07-09 A | 2026-07-13 A | CO-R10.S03-ES-MV-170 | 100% |  |
| CO-R10.S03-ES-MV-190 |  | Testing Works for RMU of Medium Voltage Network-[Road 10]-[SW-3] | 5d | 2026-07-09 A | 2026-07-13 A | CO-R10.S03-ES-MV-180 | 100% |  |
|  | RD | **Road Works** |  | 2026-08-25 | 2027-07-14 |  |  |  |
|  | RD | **Pre-Bituminous Construction** |  | 2026-09-10 | 2027-04-13 |  |  |  |
| CO-R10.S03-ES-RD-100 |  | Capping and Subgrade Layer for Road Works-[Road 10]-[SW-3] | 18d | 2026-09-10 A | 2027-04-08 | ENG-SH-RD-A-100, CO-R10.S03-ES-SD-130, CO-R10.S03-ES-PW-130, CO-R10.S03-ES-PW-160, CO-R10.S03-ES-SL-160 SS+3d, CO-R10.S03-ES-SL-160 FF+3d, ENG-MS-RD-A-10, CO-R10.S03-ES-TE-130, CO-R10.S03-ES-TE-160, CO-R10.S03-ES-MV-120 SS+3d, CO-R10.S03-ES-MV-120 FF+3d | 70% | -211d |
| CO-R10.S03-ES-RD-110 |  | Aggregate Base Course Layer for Road Works-[Road 10]-[SW-3] | 18d | 2027-03-24 | 2027-04-13 | CO-R10.S03-ES-RD-100 SS+3d, CO-R10.S03-ES-RD-100 FF+3d, CO-R10.S03-ES-SD-170 SS+3d, CO-R10.S03-ES-SD-170 FF+3d |  | -187d |
|  | LS | **Pavement Works** |  | 2026-08-25 | 2027-07-14 |  |  |  |
| CO-R10.S03-ES-RD-120 |  | Fixing of Curbstone for Sidewalks Pavement-[Road 10]-[SW-3] | 18d | 2026-08-25 A | 2026-08-31 A | CO-R10.S03-ES-RD-110 FF+3d, CO-R10.S03-ES-RD-110 SS+3d | 100% |  |
| CO-R10.S03-ES-RD-130 |  | Fixing of Interlock Tiles for Sidewalks Pavement-[Road 10]-[SW-3] | 10d | 2027-07-04 | 2027-07-14 | CO-R10.S03-ES-RD-120 SS+3d, CO-R10.S03-ES-RD-120 FF+3d, CO-R10-PW-TF-100, CO-R10-PW-TF-110, CO-R10-PW-TF-120, CO-R10-SW-TF-100, CO-R10-SW-TF-110, CO-R10-SW-TF-130, CO-R10-SD-TF-100, CO-R10-SL-TF-140, CO-R10-SL-TF-150, CO-R10-SL-ES-140, CO-R10-SL-ES-150, CO-R10-IR-TF-120, CO-R10-MV-TF-140 |  | -248d |
|  | SW_31 | **SW_3-West** |  | 2025-04-08 | 2027-07-14 |  |  |  |
|  | EW | **Earthworks** |  | 2025-04-08 | 2025-04-14 |  |  |  |
|  | EW | **Earthworks** |  | 2025-04-08 | 2025-04-14 |  |  |  |
| CO-R10.S03-WE-EW-100 |  | Roadway Excavation Works Upto Design Level for Earthworks-[Road 10]-[SW-3] | 12d | 2025-04-08 A | 2025-04-14 A | CO-R09.S02-EW-110, ENG-MS-RD-A-10, ENG-SH-RD-A-100, CO-R11.S06-EW-100 | 100% |  |
| CO-R10.S03-WE-EW-110 |  | Embankments Works Upto Design Level for Earthworks-[Road 10]-[SW-3] | 12d | 2025-04-08 A | 2025-04-14 A | CO-R10.S03-WE-EW-100, ENG-MS-RD-A-10, ENG-SH-RD-A-100 | 100% |  |
|  | SD | **Storm Drainage Network** |  | 2025-08-07 | 2026-10-10 |  |  |  |
|  | ML | **Main Line Sections** |  | 2025-08-07 | 2025-08-28 |  |  |  |
| CO-R10.S03-WE-SD-100 |  | Trench Excavation and Bedding Works for Main Lines of Storm Drainage Network-[Road 10]-[SW-3] | 10d | 2025-08-07 A | 2025-08-10 A | ENG-SH-SD-ML-A-110, CO-R10.S03-WE-EW-110, CO-R10.S03-WE-EW-100, ENG-MS-SD-ML-A-110, CO-R11.S06-SD-100 | 100% |  |
| CO-R10.S03-WE-SD-120 |  | Pipes Laying Works for Main Lines of Storm Drainage Network-[Road 10]-[SW-3] | 10d | 2025-08-11 A | 2025-08-14 A | CO-R10.S03-WE-SD-100, CO-R11.S06-SD-120 | 100% |  |
| CO-R10.S03-WE-SD-130 |  | Trench Backfilling and Compaction Works for Main Lines of Storm Drainage Network-[Road 10]-[SW-3] | 15d | 2025-08-19 A | 2025-08-28 A | ENG-SH-SD-ML-A-110 FF, ENG-MS-SD-ML-A-110 FF, CO-R10.S03-WE-SD-120, CO-R10.S03-WE-SD-220 FF | 100% |  |
|  | MH | **Manholes** |  | 2025-11-06 | 2026-10-10 |  |  |  |
| CO-R10.S03-WE-SD-180 |  | Trench Excavation and Bedding Works for Manholes of Storm Drainage Network-[Road 10]-[SW-3] | 1d | 2025-11-06 A | 2025-11-15 A | CO-R10.S03-WE-SD-120 SS, PRO-SD-1DL-100 | 100% |  |
| CO-R10.S03-WE-SD-190 |  | Install RC Footing Works for Manholes of Storm Drainage Network-[Road 10]-[SW-3] | 1d | 2025-11-08 A | 2025-11-16 A | CO-R10.S03-WE-SD-180 | 100% |  |
| CO-R10.S03-WE-SD-200 |  | Install RC Wall Rings & Slab Works for Manholes of Storm Drainage Network-[Road 10]-[SW-3] | 4d | 2025-11-09 A | 2025-11-16 A | CO-R10.S03-WE-SD-190 | 100% |  |
| CO-R10.S03-WE-SD-220 |  | Backfilling Works for Manholes of Storm Drainage Network-[Road 10]-[SW-3] | 7d | 2025-11-11 A | 2025-11-20 A | CO-R10.S03-WE-SD-210 | 100% |  |
| CO-R10.S03-WE-SD-210 |  | Testing Works for Manholes of Storm Drainage Network-[Road 10]-[SW-3] | 1d | 2026-10-10 A | 2026-10-10 A | CO-R10.S03-WE-SD-200 | 100% |  |
|  | CB | **Catch Basin Sections** |  | 2025-09-01 | 2026-10-10 |  |  |  |
| CO-R10.S03-WE-SD-140 |  | Trench Excavation and Bedding Works for Catch Basins of Storm Drainage Network-[Road 10]-[SW-3] | 6d | 2025-09-01 A | 2025-09-04 A | CO-R10.S03-WE-EW-110, ENG-SH-SD-CB-A-110, ENG-MS-SD-CB-A-110, CO-R10.S03-WE-SD-220 | 100% |  |
| CO-R10.S03-WE-SD-150 |  | Installation and Pipes Laying Connection Works for Catch Basins of Storm Drainage Network-[Road 10]-[SW-3] | 7d | 2025-09-06 A | 2025-09-07 A | CO-R10.S03-WE-SD-140 | 100% |  |
| CO-R10.S03-WE-SD-170 |  | Trench Backfilling and Compaction Works for Catch Basins of Storm Drainage Network-[Road 10]-[SW-3] | 7d | 2025-09-08 A | 2025-09-09 A | CO-R10.S03-WE-SD-160 | 100% |  |
| CO-R10.S03-WE-SD-160 |  | Testing Works for Catch Basins of Storm Drainage Network-[Road 10]-[SW-3] | 10d | 2026-10-10 A | 2026-10-10 A | CO-R10.S03-WE-SD-150, CO-R10.S03-WE-SD-120 | 100% |  |

| ID | WBS | Task | Duration | Start | Finish | Predecessors | Complete | Total float |
| --- | --- | --- | --- | --- | --- | --- | --- | --- |
|  | PW | **Potable Water Network** |  | 2025-08-05 | 2026-12-14 |  |  |  |
|  | ML | **Main Line Sections** |  | 2025-08-05 | 2025-08-16 |  |  |  |
| CO-R10.S03-WE-PW-100 |  | Trench Excavation and Bedding Works for Main Lines of Potable Water Network-[Road 10]-[SW-3] | 6d | 2025-08-05 A | 2025-08-07 A | ENG-SH-PW-ML-A-110, CO-R10.S03-WE-EW-110, CO-R10.S03-WE-EW-100, ENG-MS-PW-ML-A-110, ENG-SH-PW-FH-A-110, CO-R10.S03-WE-SD-130 | 100% |  |
| CO-R10.S03-WE-PW-110 |  | Pipes Laying and accessories for Main Lines of Potable Water Network-[Road 10]-[SW-3] | 6d | 2025-08-09 A | 2025-08-12 A | CO-R10.S03-WE-PW-100, PRO-R10-PW-DL-110 FF+3d | 100% |  |
| CO-R10.S03-WE-PW-130 |  | Trench Backfilling and Compaction Works for Main Lines of Potable Water Network-[Road 10]-[SW-3] | 6d | 2025-08-13 A | 2025-08-16 A | CO-R10.S03-WE-PW-110 SS+3d, CO-R10.S03-WE-PW-110 FF+3d, CO-R10.S03-WE-PW-220 FF, CO-R10.S03-WE-PW-160 FF | 100% |  |
|  | VC | **Valve Chamber** |  | 2026-07-07 | 2026-07-17 |  |  |  |
| CO-R10.S03-WE-PW-170 |  | Excavation Works for Main Line Valves and Valve Chambers of Potable Water Network-[Road 10]-[SW-3] | 1d | 2026-07-07 A | 2026-07-17 A | CO-R10.S03-WE-PW-100 | 100% |  |
| CO-R10.S03-WE-PW-180 |  | RC Footing Works for Main Line Valves and Valve Chambers of Potable Water Network-[Road 10]-[SW-3] | 3d | 2026-07-07 A | 2026-07-17 A | CO-R10.S03-WE-PW-170 | 100% |  |
| CO-R10.S03-WE-PW-190 |  | RC Wall Works for Main Line Valves and Valve Chambers of Potable Water Network-[Road 10]-[SW-3] | 6d | 2026-07-07 A | 2026-07-17 A | CO-R10.S03-WE-PW-180 | 100% |  |
| CO-R10.S03-WE-PW-200 |  | RC Slab Works for Main Line Valves and Valve Chambers of Potable Water Network-[Road 10]-[SW-3] | 2d | 2026-07-07 A | 2026-07-17 A | CO-R10.S03-WE-PW-190 | 100% |  |
| CO-R10.S03-WE-PW-210 |  | Insulation Works for Main Line Valves and Valve Chambers of Potable Water Network-[Road 10]-[SW-3] | 1d | 2026-07-07 A | 2026-07-17 A | CO-R10.S03-WE-PW-200 | 100% |  |
| CO-R10.S03-WE-PW-220 |  | Backfilling Works for Main Line Valves and Valve Chambers of Potable Water Network-[Road 10]-[SW-3] | 3d | 2026-07-07 A | 2026-07-17 A | CO-R10.S03-WE-PW-210 | 100% |  |
|  | FH | **Fire Hydrant** |  | 2026-11-28 | 2026-12-14 |  |  |  |
| CO-R10.S03-WE-PW-140 |  | Excavation Works for Fire Hydrants of Potable Water Network-[Road 10]-[SW-3] | 6d | 2026-11-28 | 2026-12-03 | CO-R10.S03-WE-PW-110 SS+3d, CO-R10.S03-WE-PW-110 FF+3d, CO-R10.S03-WE-EW-110 |  | -232d |
| CO-R10.S03-WE-PW-150 |  | Installation Works for Fire Hydrant of Potable Water Network-[Road 10]-[SW-3] | 6d | 2026-12-05 | 2026-12-10 | CO-R10.S03-WE-PW-140 |  | -232d |
| CO-R10.S03-WE-PW-160 |  | Trench Backfilling and Compaction Works for Fire Hydrants of Potable Water Network-[Road 10]-[SW-3] | 6d | 2026-12-08 | 2026-12-14 | CO-R10.S03-WE-PW-150 SS+3d, CO-R10.S03-WE-PW-150 FF+3d |  | -232d |
|  | IR | **Irrigation Network** |  | 2025-08-10 | 2026-12-16 |  |  |  |
|  | ML | **Main Line Pipes** |  | 2025-08-10 | 2026-12-16 |  |  |  |
| CO-R10.S03-WE-IR-100 |  | Trench Excavation and Bedding Works for Main Lines of Irrigation Network-[Road 10]-[SW-3] | 7d | 2025-08-10 A | 2025-08-14 A | ENG-SH-IR-ML-A-110, CO-R10.S03-WE-EW-110, CO-R10.S03-WE-PW-130, CO-R10.S03-WE-SD-170, ENG-MS-IR-ML-A-110 | 100% |  |
| CO-R10.S03-WE-IR-110 |  | Pipes Laying Works for Main Lines of Irrigation Network-[Road 10]-[SW-3] | 7d | 2025-08-16 A | 2025-08-19 A | CO-R10.S03-WE-IR-100, PRO-R19.2-IR-DL-100 FF+3d | 100% |  |
| CO-R10.S03-WE-IR-130 |  | Trench Backfilling and Compaction Works for Main Lines of Irrigation Network-[Road 10]-[SW-3] | 7d | 2025-08-20 A | 2025-08-24 A | CO-R10.S03-WE-IR-120, CO-R10.S03-WE-IR-110 | 100% |  |
| CO-R10.S03-WE-IR-120 |  | Installation Works for Main Line Valves of Irrigation Network-[Road 10]-[SW-3] | 2d | 2026-12-15 | 2026-12-16 | CO-R10.S03-WE-IR-110 |  | -232d |
|  | SL | **Street Lighting Network** |  | 2026-12-17 | 2027-04-20 |  |  |  |
|  | LP | **Lighting Poles Works** |  | 2026-12-17 | 2027-01-24 |  |  |  |
| CO-R10.S03-WE-SL-100 |  | Foundation Excavation Works for Lighting Poles of Street Lighting Network-[Road 10]-[SW-3] | 12d | 2026-12-17 | 2026-12-30 | CO-R10.S03-WE-EW-110, ENG-SH-SL-A-110, CO-R10.S03-WE-EW-100, ENG-MS-SL-A-110, CO-R10.S03-WE-IR-130 |  | -232d |
| CO-R10.S03-WE-SL-110 |  | Installation Works for Lighting Poles Foundation of Street Lighting Network-[Road 10]-[SW-3] | 12d | 2026-12-23 | 2027-01-05 | CO-R10.S03-WE-SL-100 SS+5d, CO-R10.S03-WE-SL-100 FF+5d |  | -232d |
| CO-R10.S03-WE-SL-120 |  | Installation Works for Lighting Poles of Street Lighting Network-[Road 10]-[SW-3] | 18d | 2026-12-29 | 2027-01-18 | CO-R10.S03-WE-SL-110 SS+5d, CO-R10.S03-WE-SL-110 FF+5d |  | -232d |
| CO-R10.S03-WE-SL-130 |  | Installation Works for Lighting Fixtures With Drop Wire of Street Lighting Network-[Road 10]-[SW-3] | 18d | 2027-01-04 | 2027-01-24 | CO-R10.S03-WE-SL-120 SS+5d, CO-R10.S03-WE-SL-120 FF+5d, CO-R10.S03-WE-SL-200 FF |  | -207d |
| CO-R10.S03-WE-SL-210 |  | Backfilling Works for Lighting Poles of Street Lighting Network-[Road 10]-[SW-3] | 12d | 2027-01-05 | 2027-01-18 | CO-R10.S03-WE-SL-120 SS, CO-R10.S03-WE-SL-120 FF |  | -207d |
| CO-R10.S03-WE-SL-200 |  | Testing Works for Lighting Poles of Street Lighting Network-[Road 10]-[SW-3] | 5d | 2027-01-19 | 2027-01-24 | CO-R10.S03-WE-SL-210, CO-R10.S03-WE-SL-120 |  | -207d |
|  | CW | **Cabling Works** |  | 2027-01-19 | 2027-02-23 |  |  |  |
| CO-R10.S03-WE-SL-140 |  | Trench Excavation and Bedding Works for Street Lighting Network-[Road 10]-[SW-3] | 10d | 2027-01-19 | 2027-01-30 | ENG-SH-SL-A-110, CO-R10.S03-WE-IR-130, CO-R10.S03-WE-EW-110, CO-R10.S03-WE-SL-120, CO-R10.S03-WE-SL-110, ENG-MS-SL-A-110 |  | -232d |
| CO-R10.S03-WE-SL-150 |  | Cable Laying Works for Street Lighting Network-[Road 10]-[SW-3] | 10d | 2027-01-31 | 2027-02-10 | CO-R10.S03-WE-SL-140 |  | -232d |
| CO-R10.S03-WE-SL-160 |  | Trench Backfilling and Compaction Works for Street Lighting Network-[Road 10]-[SW-3] | 10d | 2027-02-11 | 2027-02-23 | CO-R10.S03-WE-SL-150, CO-R10.S03-WE-IR-130 |  | -232d |
|  | DPB | **Distrubution Panel Boards** |  | 2027-03-28 | 2027-04-20 |  |  |  |
| CO-R10.S03-WE-SL-170 |  | Foundation Excavation Works For Panel Boards of Street Lighting Network-[Road 10]-[SW-3] | 12d | 2027-03-28 | 2027-04-10 | CO-R10-SL-ES-140, CO-R10.S03-WE-EW-110, ENG-SH-SL-A-110, ENG-MS-SL-A-110 |  | -232d |
| CO-R10.S03-WE-SL-180 |  | Installation Works for Panel Board Concrete Foundations of Street Lighting Network-[Road 10]-[SW-3] | 12d | 2027-04-04 | 2027-04-17 | CO-R10-SL-ES-150 SS+3d, CO-R10-SL-ES-150 FF+3d, CO-R10.S03-WE-SL-170 SS+3d, CO-R10.S03-WE-SL-170 FF+3d |  | -232d |
| CO-R10.S03-WE-SL-220 |  | A wall of concrete blocks to install the KWH meter of Street Lighting Network-[Road 10]-[SW-3] | 12d | 2027-04-04 | 2027-04-17 | CO-R10.S03-WE-SL-180 SS, CO-R10.S03-WE-SL-180 FF |  | -229d |
| CO-R10.S03-WE-SL-190 |  | Installation Works for Lighting Panel Boards of Street Lighting Network-[Road 10]-[SW-3] | 12d | 2027-04-07 | 2027-04-20 | CO-R10.S03-WE-SL-180 SS+3d, CO-R10.S03-WE-SL-180 FF+3d |  | -232d |
|  | TE | **Telecom Network** |  | 2027-03-31 | 2027-04-27 |  |  |  |
|  | PD | **Ducts Works** |  | 2027-03-31 | 2027-04-27 |  |  |  |
| CO-R10.S03-WE-TE-100 |  | Trench Excavation and Bedding Works for Ducts of Telecom Network-[Road 10]-[SW-3] | 3d | 2027-03-31 | 2027-04-03 | CO-R10.S03-WE-IR-130, CO-R10.S03-WE-SL-160 SS, CO-R11.S06-TE-100 |  | -244d |
| CO-R10.S03-WE-TE-110 |  | Pipes Laying Works for Ducts of Telecom Network-[Road 10]-[SW-3] | 7d | 2027-04-04 | 2027-04-11 | CO-R10.S03-WE-TE-100 |  | -244d |
| CO-R10.S03-WE-TE-120 |  | Pouring Plain Concrete Above Ducts of Telecom Network-[Road 10]-[SW-3] | 7d | 2027-04-12 | 2027-04-19 | CO-R10.S03-WE-TE-110 |  | -244d |
| CO-R10.S03-WE-TE-130 |  | Trench Backfilling and Compaction Works for Ducts of Telecom Network-[Road 10]-[SW-3] | 7d | 2027-04-20 | 2027-04-27 | CO-R10.S03-WE-TE-120 |  | -244d |
|  | MH | **Manholes Works** |  | 2027-04-04 | 2027-04-27 |  |  |  |
| CO-R10.S03-WE-TE-140 |  | Excavation Works for Manholes of Telecom Network-[Road 10]-[SW-3] | 7d | 2027-04-04 | 2027-04-11 | CO-R10.S03-WE-TE-100 |  | -241d |
| CO-R10.S03-WE-TE-150 |  | Installation Works for Manholes of Telecom Network-[Road 10]-[SW-3] | 7d | 2027-04-12 | 2027-04-19 | CO-R10.S03-WE-TE-140 |  | -241d |
| CO-R10.S03-WE-TE-160 |  | Backfilling Works for Manholes of Telecom Network-[Road 10]-[SW-3] | 7d | 2027-04-20 | 2027-04-27 | CO-R10.S03-WE-TE-150 |  | -241d |
|  | MV | **Medium Voltage Network** |  | 2026-07-09 | 2026-10-10 |  |  |  |
|  | CW | **Cabling Works** |  | 2026-09-22 | 2026-10-10 |  |  |  |
| CO-R10.S03-WE-MV-100 |  | Trench Excavation and Bedding Works for Medium Voltage Network-[Road 10]-[SW-3] | 10d | 2026-09-22 A | 2026-10-10 A | ENG-SH-MV-A-110, CO-R10.S03-WE-SD-170 SS+3d, CO-R10.S03-WE-SD-170 FF+3d, CO-R10.S03-WE-EW-110, CO-R10.S03-WE-TE-130 SS+3d, CO-R10.S03-WE-TE-130 FF+3d, ENG-MS-MV-A-110 | 100% |  |
| CO-R10.S03-WE-MV-110 |  | Cable Laying Works for Medium Voltage Network-[Road 10]-[SW-3] | 10d | 2026-09-22 A | 2026-10-10 A | CO-R10.S03-WE-MV-100 SS+3d, CO-R10.S03-WE-MV-100 FF+3d, PRO-R10-MV-DL-100 FF+3d | 100% |  |
| CO-R10.S03-WE-MV-120 |  | Trench Backfilling and Compaction Works for Medium Voltage Network-[Road 10]-[SW-3] | 10d | 2026-09-22 A | 2026-10-10 A | CO-R10.S03-WE-MV-110 SS+3d, CO-R10.S03-WE-MV-110 FF+3d, CO-R10.S03-WE-PW-130 FF+3d | 100% |  |
|  | SS | **RMU Works** |  | 2026-07-09 | 2026-07-13 |  |  |  |
| CO-R10.S03-WE-MV-130 |  | Foundation Excavation Works for RMU of Medium Voltage Network-[Road 10]-[SW-3] | 10d | 2026-07-09 A | 2026-07-13 A | ENG-SH-MV-A-110, ENG-MS-MV-A-110, CO-R10.S03-WE-EW-100, CO-R10.S03-WE-EW-110, CO-R10.S03-WE-MV-120 | 100% |  |
| CO-R10.S03-WE-MV-150 |  | Installation Works for RMU Concrete Foundations of Medium Voltage Network-[Road 10]-[SW-3] | 10d | 2026-07-09 A | 2026-07-13 A | CO-R10.S03-WE-MV-130, PRO-R10-MV-DL-120 | 100% |  |
| CO-R10.S03-WE-MV-170 |  | Installation Works for RMU of Medium Voltage Network-[Road 10]-[SW-3] | 6d | 2026-07-09 A | 2026-07-13 A | CO-R10.S03-WE-MV-150, ENG-SH-MV-A-110, ENG-MS-MV-A-110, PRO-MV-LL-SH/DL-10, PRO-R10-MV-LL-MSI-10 | 100% |  |
| CO-R10.S03-WE-MV-180 |  | Termination Works for RMU of Medium Voltage Network-[Road 10]-[SW-3] | 5d | 2026-07-09 A | 2026-07-13 A | CO-R10.S03-WE-MV-170 | 100% |  |
| CO-R10.S03-WE-MV-190 |  | Testing Works for RMU of Medium Voltage Network-[Road 10]-[SW-3] | 5d | 2026-07-09 A | 2026-07-13 A | CO-R10.S03-WE-MV-180 | 100% |  |
|  | RD | **Road Works** |  | 2026-08-22 | 2027-07-14 |  |  |  |
|  | RD | **Pre-Bituminous Construction** |  | 2026-08-22 | 2027-05-27 |  |  |  |
| CO-R10.S03-WE-RD-100 |  | Capping and Subgrade Layer for Road Works-[Road 10]-[SW-3] | 12d | 2026-08-22 A | 2027-05-23 | ENG-SH-RD-A-100, CO-R10.S03-WE-SD-130, CO-R10.S03-WE-PW-130, CO-R10.S03-WE-PW-160, CO-R10.S03-WE-SL-160 SS+3d, CO-R10.S03-WE-SL-160 FF+3d, ENG-MS-RD-A-10, CO-R10.S03-WE-TE-130, CO-R10.S03-WE-TE-160, CO-R10.S03-WE-MV-120 SS+3d, CO-R10.S03-WE-MV-120 FF+3d | 80% | -244d |
| CO-R10.S03-WE-RD-110 |  | Aggregate Base Course Layer for Road Works-[Road 10]-[SW-3] | 18d | 2027-05-02 | 2027-05-27 | CO-R10.S03-WE-RD-100 SS+3d, CO-R10.S03-WE-RD-100 FF+3d, CO-R10.S03-WE-SD-170 SS+3d, CO-R10.S03-WE-SD-170 FF+3d |  | -220d |
|  | LS | **Pavement Works** |  | 2026-08-25 | 2027-07-14 |  |  |  |
| CO-R10.S03-WE-RD-120 |  | Fixing of Curbstone for Sidewalks Pavement-[Road 10]-[SW-3] | 18d | 2026-08-25 A | 2026-08-31 A | CO-R10.S03-WE-RD-110 FF+3d, CO-R10.S03-WE-RD-110 SS+3d | 100% |  |
| CO-R10.S03-WE-RD-130 |  | Fixing of Interlock Tiles for Sidewalks Pavement-[Road 10]-[SW-3] | 10d | 2027-07-04 | 2027-07-14 | CO-R10.S03-WE-RD-120 SS+3d, CO-R10.S03-WE-RD-120 FF+3d, CO-R10-PW-TF-100, CO-R10-PW-TF-110, CO-R10-PW-TF-120, CO-R10-SW-TF-100, CO-R10-SW-TF-110, CO-R10-SW-TF-130, CO-R10-SD-TF-100, CO-R10-SL-TF-140, CO-R10-SL-TF-150, CO-R10-SL-ES-140, CO-R10-SL-ES-150, CO-R10-IR-TF-120, CO-R10-MV-TF-140 |  | -248d |
|  | 2 | **SW-4** |  | 2025-04-01 | 2027-07-17 |  |  |  |
|  | SW_4 | **SW_4-East** |  | 2025-04-01 | 2027-07-14 |  |  |  |
|  | EW | **Earthworks** |  | 2025-04-01 | 2025-04-13 |  |  |  |

| ID | WBS | Task | Duration | Start | Finish | Predecessors | Complete | Total float |
| --- | --- | --- | --- | --- | --- | --- | --- | --- |
|  | EW | **Earthworks** |  | 2025-04-01 | 2025-04-13 |  |  |  |
| CO-R10.S04-ES-EW-100 |  | Roadway Excavation Works Upto Design Level for Earthworks-[Road 10]-[SW-4] | 10d | 2025-04-01 A | 2025-04-12 A | ENG-MS-RD-A-10, ENG-SH-RD-A-100, CO-R10.S03-ES-EW-100 | 100% |  |
| CO-R10.S04-ES-EW-110 |  | Embankments Works Upto Design Level for Earthworks-[Road 10]-[SW-4] | 10d | 2025-04-01 A | 2025-04-13 A | CO-R10.S04-ES-EW-100, ENG-MS-RD-A-10, ENG-SH-RD-A-100 | 100% |  |
|  | SW | **Sewage Network** |  | 2025-08-17 | 2025-11-21 |  |  |  |
|  | ML | **Main Line Sections** |  | 2025-08-17 | 2025-08-28 |  |  |  |
| CO-R10.S04-ES-SW-100 |  | Trench Excavation and Bedding Works for Main Lines of Sewage Network-[Road 10]-[SW-4] | 10d | 2025-08-17 A | 2025-08-20 A | CO-R10.S04-ES-EW-110, ENG-MS-SW-ML-A-110, ENG-SH-SW-ML-A-110 | 100% |  |
| CO-R10.S04-ES-SW-120 |  | Pipes Laying Works for Main Lines of Sewage Network-[Road 10]-[SW-4] | 12d | 2025-08-21 A | 2025-08-24 A | PRO-R10-SW-DL-100 FF+3d, CO-R10.S04-ES-SW-100 | 100% |  |
| CO-R10.S04-ES-SW-130 |  | Trench Backfilling and Compaction Works for Main Lines of Sewage Network-[Road 10]-[SW-4] | 12d | 2025-08-25 A | 2025-08-28 A | CO-R10.S04-ES-SW-120, CO-R10.S04-ES-SW-210 FF | 100% |  |
|  | 1 | **Manholes** |  | 2025-11-06 | 2025-11-21 |  |  |  |
| CO-R10.S04-ES-SW-160 |  | Excavation Works for Main Line Manholes of Sewage Network-[Road 10]-[SW-4] | 1d | 2025-11-06 A | 2025-11-13 A | CO-R10.S04-ES-SW-120 SS | 100% |  |
| CO-R10.S04-ES-SW-170 |  | Installation RC Footing Works for Main Line Manholes of Sewage Network-[Road 10]-[SW-4] | 2d | 2025-11-06 A | 2025-11-16 A | CO-R10.S04-ES-SW-160, PRO-R10-SW-DL-110 FF+3d | 100% |  |
| CO-R10.S04-ES-SW-180 |  | Install Grp Liner Wall Works for Main Line Manholes of Sewage Network-[Road 10]-[SW-4] | 4d | 2025-11-06 A | 2025-11-17 A | CO-R10.S04-ES-SW-170 | 100% |  |
| CO-R10.S04-ES-SW-190 |  | Pouring Grp Liner Wall Works for Main Line Manholes of Sewage Network-[Road 10]-[SW-4] | 1d | 2025-11-06 A | 2025-11-20 A | CO-R10.S04-ES-SW-180 | 100% |  |
| CO-R10.S04-ES-SW-200 |  | Backfilling Works for Main Line Manholes of Sewage Network-[Road 10]-[SW-4] | 4d | 2025-11-06 A | 2025-11-21 A | CO-R10.S04-ES-SW-190 | 100% |  |
| CO-R10.S04-ES-SW-210 |  | Testing Works for Main Line Manholes of Sewage Network-[Road 10]-[SW-4] | 1d | 2025-11-06 A | 2025-11-21 A | CO-R10.S04-ES-SW-200 | 100% |  |
|  | SD | **Storm Drainage Network** |  | 2025-08-25 | 2026-10-13 |  |  |  |
|  | ML | **Main Line Sections** |  | 2025-08-25 | 2025-09-07 |  |  |  |
| CO-R10.S04-ES-SD-100 |  | Trench Excavation and Bedding Works for Main Lines of Storm Drainage Network-[Road 10]-[SW-4] | 10d | 2025-08-25 A | 2025-08-28 A | CO-R10.S04-ES-EW-110, CO-R10.S04-ES-EW-100, CO-R10.S04-ES-SW-130 SS+3d, CO-R10.S04-ES-SW-130 FF+3d, CO-R10.S03-ES-SD-100 | 100% |  |
| CO-R10.S04-ES-SD-120 |  | Pipes Laying Works for Main Lines of Storm Drainage Network-[Road 10]-[SW-4] | 10d | 2025-08-30 A | 2025-09-03 A | PRO-R10-SD-DL-120 FF+3d, CO-R10.S04-ES-SD-100, CO-R10.S03-ES-SD-120, CO-R10.S03-WE-SD-120 | 100% |  |
| CO-R10.S04-ES-SD-130 |  | Trench Backfilling and Compaction Works for Main Lines of Storm Drainage Network-[Road 10]-[SW-4] | 10d | 2025-09-04 A | 2025-09-07 A | CO-R10.S04-ES-SD-120 SS+3d, CO-R10.S04-ES-SD-120 FF+3d, CO-R10.S04-ES-SD-120, CO-R10.S04-ES-SD-220 FF | 100% |  |
|  | MH | **Manholes** |  | 2026-03-17 | 2026-10-13 |  |  |  |
| CO-R10.S04-ES-SD-180 |  | Trench Excavation and Bedding Works for Manholes of Storm Drainage Network-[Road 10]-[SW-4] | 1d | 2026-03-17 A | 2026-03-17 A | CO-R10.S04-ES-SD-120 SS, PRO-SD-1DL-100 | 100% |  |
| CO-R10.S04-ES-SD-190 |  | Install RC Footing Works for Manholes of Storm Drainage Network-[Road 10]-[SW-4] | 1d | 2026-03-18 A | 2026-03-18 A | CO-R10.S04-ES-SD-180 | 100% |  |
| CO-R10.S04-ES-SD-200 |  | Install RC Wall Rings & Slab Works for Manholes of Storm Drainage Network-[Road 10]-[SW-4] | 4d | 2026-03-19 A | 2026-03-26 A | CO-R10.S04-ES-SD-190 | 100% |  |
| CO-R10.S04-ES-SD-220 |  | Backfilling Works for Manholes of Storm Drainage Network-[Road 10]-[SW-4] | 7d | 2026-03-28 A | 2026-04-04 A | CO-R10.S04-ES-SD-210 | 100% |  |
| CO-R10.S04-ES-SD-210 |  | Testing Works for Manholes of Storm Drainage Network-[Road 10]-[SW-4] | 1d | 2026-10-13 A | 2026-10-13 A | CO-R10.S04-ES-SD-200 | 100% |  |
|  | CB | **Catch Basin Sections** |  | 2025-09-06 | 2026-10-13 |  |  |  |
| CO-R10.S04-ES-SD-140 |  | Trench Excavation and Bedding Works for Catch Basins of Storm Drainage Network-[Road 10]-[SW-4] | 6d | 2025-09-06 A | 2025-09-08 A | CO-R10.S04-ES-EW-110, CO-R10.S04-ES-SD-220 | 100% |  |
| CO-R10.S04-ES-SD-150 |  | Installation and Pipes Laying Connection Works for Catch Basins of Storm Drainage Network-[Road 10]-[SW-4] | 7d | 2025-09-09 A | 2025-09-11 A | CO-R10.S04-ES-SD-140, PRO-R10-SD-DL-130 FF+3d | 100% |  |
| CO-R10.S04-ES-SD-170 |  | Trench Backfilling and Compaction Works for Catch Basins of Storm Drainage Network-[Road 10]-[SW-4] | 7d | 2025-09-13 A | 2025-09-15 A | CO-R10.S04-ES-SD-160 SS+3d, CO-R10.S04-ES-SD-160 FF+3d | 100% |  |
| CO-R10.S04-ES-SD-160 |  | Testing Works for Catch Basins of Storm Drainage Network-[Road 10]-[SW-4] | 10d | 2026-10-13 A | 2026-10-13 A | CO-R10.S04-ES-SD-150, CO-R10.S04-ES-SD-120, PRO-R10-SD-DL-110 FF+3d | 100% |  |
|  | PW | **Potable Water Network** |  | 2025-10-01 | 2026-12-21 |  |  |  |
|  | ML | **Main Line Sections** |  | 2025-10-01 | 2025-10-07 |  |  |  |
| CO-R10.S04-ES-PW-100 |  | Trench Excavation and Bedding Works for Main Lines of Potable Water Network-[Road 10]-[SW-4] | 10d | 2025-10-01 A | 2025-10-07 A | CO-R10.S04-ES-EW-110, CO-R10.S04-ES-EW-100, CO-R10.S04-ES-SD-130 | 100% |  |
| CO-R10.S04-ES-PW-110 |  | Pipes Laying and accessories for Main Lines of Potable Water Network-[Road 10]-[SW-4] | 10d | 2025-10-02 A | 2025-10-07 A | CO-R10.S04-ES-PW-100, PRO-R10-PW-DL-100 FF+3d, PRO-R10-PW-DL-110 FF+3d | 100% |  |
| CO-R10.S04-ES-PW-130 |  | Trench Backfilling and Compaction Works for Main Lines of Potable Water Network-[Road 10]-[SW-4] | 7d | 2025-10-04 A | 2025-10-07 A | CO-R10.S04-ES-PW-110, CO-R10.S04-ES-PW-220 FF, CO-R10.S04-ES-PW-160 FF | 100% |  |
|  | VC | **Valve Chamber** |  | 2026-07-07 | 2026-07-16 |  |  |  |
| CO-R10.S04-ES-PW-170 |  | Excavation Works for Main Line Valves and Valve Chambers of Potable Water Network-[Road 10]-[SW-4] | 1d | 2026-07-07 A | 2026-07-16 A | CO-R10.S04-ES-PW-100 | 100% |  |
| CO-R10.S04-ES-PW-180 |  | RC Footing Works for Main Line Valves and Valve Chambers of Potable Water Network-[Road 10]-[SW-4] | 3d | 2026-07-07 A | 2026-07-16 A | CO-R10.S04-ES-PW-170 | 100% |  |
| CO-R10.S04-ES-PW-190 |  | RC Wall Works for Main Line Valves and Valve Chambers of Potable Water Network-[Road 10]-[SW-4] | 6d | 2026-07-07 A | 2026-07-16 A | CO-R10.S04-ES-PW-180 | 100% |  |
| CO-R10.S04-ES-PW-200 |  | RC Slab Works for Main Line Valves and Valve Chambers of Potable Water Network-[Road 10]-[SW-4] | 2d | 2026-07-07 A | 2026-07-16 A | CO-R10.S04-ES-PW-190 | 100% |  |
| CO-R10.S04-ES-PW-210 |  | Insulation Works for Main Line Valves and Valve Chambers of Potable Water Network-[Road 10]-[SW-4] | 1d | 2026-07-07 A | 2026-07-16 A | CO-R10.S04-ES-PW-200 | 100% |  |
| CO-R10.S04-ES-PW-220 |  | Backfilling Works for Main Line Valves and Valve Chambers of Potable Water Network-[Road 10]-[SW-4] | 3d | 2026-07-07 A | 2026-07-16 A | CO-R10.S04-ES-PW-210 | 100% |  |
|  | FH | **Fire Hydrant** |  | 2026-11-28 | 2026-12-21 |  |  |  |
| CO-R10.S04-ES-PW-140 |  | Excavation Works for Fire Hydrants of Potable Water Network-[Road 10]-[SW-4] | 7d | 2026-11-28 | 2026-12-05 | CO-R10.S04-ES-PW-110 SS+3d, CO-R10.S04-ES-EW-110, CO-R10.S04-ES-SW-130 SS+3d, CO-R10.S04-ES-SW-130 FF+3d, CO-R10.S04-ES-PW-170 |  | -245d |
| CO-R10.S04-ES-PW-150 |  | Installation Works for Fire Hydrant of Potable Water Network-[Road 10]-[SW-4] | 7d | 2026-12-06 | 2026-12-13 | CO-R10.S04-ES-PW-140, PRO-R10-PW-DL-120 FF+3d |  | -245d |
| CO-R10.S04-ES-PW-160 |  | Trench Backfilling and Compaction Works for Fire Hydrants of Potable Water Network-[Road 10]-[SW-4] | 7d | 2026-12-14 | 2026-12-21 | CO-R10.S04-ES-PW-150 |  | -245d |
|  | IR | **Irrigation Network** |  | 2026-06-10 | 2026-12-26 |  |  |  |
|  | ML | **Main Line Pipes** |  | 2026-06-10 | 2026-12-26 |  |  |  |
| CO-R10.S04-ES-IR-100 |  | Trench Excavation and Bedding Works for Main Lines of Irrigation Network-[Road 10]-[SW-4] | 6d | 2026-06-10 A | 2026-06-20 A | CO-R10.S04-ES-EW-110, CO-R10.S04-ES-PW-130, CO-R10.S04-ES-SD-170 | 100% |  |
| CO-R10.S04-ES-IR-110 |  | Pipes Laying Works for Main Lines of Irrigation Network-[Road 10]-[SW-4] | 7d | 2026-06-10 A | 2026-06-20 A | CO-R10.S04-ES-IR-100, PRO-R19.2-IR-DL-100 FF+3d | 100% |  |
| CO-R10.S04-ES-IR-130 |  | Trench Backfilling and Compaction Works for Main Lines of Irrigation Network-[Road 10]-[SW-4] | 5d | 2026-06-10 A | 2026-06-20 A | CO-R10.S04-ES-IR-120, CO-R10.S04-ES-IR-110 | 100% |  |
| CO-R10.S04-ES-IR-120 |  | Installation Works for Main Line Valves of Irrigation Network-[Road 10]-[SW-4] | 4d | 2026-12-22 | 2026-12-26 | CO-R10.S04-ES-IR-110, PRO-R19.2-IR-DL-110 FF+3d |  | -245d |
|  | SL | **Street Lighting Network** |  | 2026-12-27 | 2027-03-30 |  |  |  |
|  | LP | **Lighting Poles Works** |  | 2026-12-27 | 2027-02-13 |  |  |  |
| CO-R10.S04-ES-SL-100 |  | Foundation Excavation Works for Lighting Poles of Street Lighting Network-[Road 10]-[SW-4] | 7d | 2026-12-27 | 2027-01-03 | CO-R10.S04-ES-EW-110, CO-R10.S04-ES-EW-100, CO-R10.S04-ES-IR-130 |  | -245d |
| CO-R10.S04-ES-SL-110 |  | Installation Works for Lighting Poles Foundation of Street Lighting Network-[Road 10]-[SW-4] | 7d | 2027-01-02 | 2027-01-09 | CO-R10.S04-ES-SL-100 SS+5d, CO-R10.S04-ES-SL-100 FF+5d, PRO-R10-SL-DL-110 FF+3d |  | -245d |
| CO-R10.S04-ES-SL-120 |  | Installation Works for Lighting Poles of Street Lighting Network-[Road 10]-[SW-4] | 7d | 2027-01-07 | 2027-01-14 | CO-R10.S04-ES-SL-110 SS+5d, CO-R10.S04-ES-SL-110 FF+5d, PRO-R10-SL-DL-120 FF+3d |  | -245d |
| CO-R10.S04-ES-SL-210 |  | Backfilling Works for Lighting Poles of Street Lighting Network-[Road 10]-[SW-4] | 15d | 2027-01-19 | 2027-02-04 | CO-R10.S04-ES-SL-120 SS, CO-R10.S04-ES-SL-120 FF, CO-R10.S03-ES-SL-210 |  | -253.5d |
| CO-R10.S04-ES-SL-130 |  | Installation Works for Lighting Fixtures With Drop Wire of Street Lighting Network-[Road 10]-[SW-4] | 18d | 2027-01-24 | 2027-02-13 | CO-R10.S04-ES-SL-120 SS+5d, CO-R10.S04-ES-SL-120 FF+5d, PRO-R10-SL-DL-140 FF+3d, CO-R10.S04-ES-SL-200 FF |  | -138.5d |
| CO-R10.S04-ES-SL-200 |  | Testing Works for Lighting Poles of Street Lighting Network-[Road 10]-[SW-4] | 7d | 2027-02-06 | 2027-02-13 | CO-R10.S04-ES-SL-210, CO-R10.S04-ES-SL-120 |  | -138.5d |
|  | CW | **Cabling Works** |  | 2027-01-16 | 2027-02-08 |  |  |  |
| CO-R10.S04-ES-SL-140 |  | Trench Excavation and Bedding Works for Street Lighting Network-[Road 10]-[SW-4] | 7d | 2027-01-16 | 2027-01-23 | CO-R10.S04-ES-IR-130, CO-R10.S04-ES-EW-110, CO-R10.S04-ES-SL-120, CO-R10.S04-ES-SL-110 |  | -245d |
| CO-R10.S04-ES-SL-150 |  | Cable Laying Works for Street Lighting Network-[Road 10]-[SW-4] | 7d | 2027-01-24 | 2027-01-31 | CO-R10.S04-ES-SL-140, PRO-R10-SL-DL-100 FF+3d |  | -245d |
| CO-R10.S04-ES-SL-160 |  | Trench Backfilling and Compaction Works for Street Lighting Network-[Road 10]-[SW-4] | 7d | 2027-02-01 | 2027-02-08 | CO-R10.S04-ES-SL-150, CO-R10.S04-ES-IR-130 |  | -245d |
|  | DPB | **Distrubution Panel Boards** |  | 2027-02-09 | 2027-03-30 |  |  |  |
| CO-R10.S04-ES-SL-170 |  | Foundation Excavation Works For Panel Boards of Street Lighting Network-[Road 10]-[SW-4] | 18d | 2027-02-09 | 2027-03-02 | CO-R10.S04-ES-EW-110, CO-R10.S04-ES-SL-160 |  | -223d |
| CO-R10.S04-ES-SL-180 |  | Installation Works for Panel Board Concrete Foundations of Street Lighting Network-[Road 10]-[SW-4] | 12d | 2027-02-20 | 2027-03-06 | CO-R10.S04-ES-SL-170 SS+3d, CO-R10.S04-ES-SL-170 FF+3d |  | -214d |
| CO-R10.S04-ES-SL-190 |  | Installation Works for Lighting Panel Boards of Street Lighting Network-[Road 10]-[SW-4] | 12d | 2027-03-07 | 2027-03-23 | CO-R10.S04-ES-SL-180, PRO-R10-SL-DL-160 FF+3d |  | -214d |
| CO-R10.S04-ES-SL-220 |  | A wall of concrete blocks to install the KWH meter of Street Lighting Network-[Road 10]-[SW-4] | 18d | 2027-03-07 | 2027-03-30 | CO-R10.S04-ES-SL-180 |  | -214d |

| ID | WBS | Task | Duration | Start | Finish | Predecessors | Complete | Total float |
| --- | --- | --- | --- | --- | --- | --- | --- | --- |
|  | TE | **Telecom Network** |  | 2027-02-20 | 2027-05-05 |  |  |  |
|  | PD | **Ducts Works** |  | 2027-02-20 | 2027-03-28 |  |  |  |
| CO-R10.S04-ES-TE-100 |  | Trench Excavation and Bedding Works for Ducts of Telecom Network-[Road 10]-[SW-4] | 7d | 2027-02-20 | 2027-02-28 | CO-R10.S04-ES-IR-130 SS+3d, CO-R10.S04-ES-IR-130 FF+3d, CO-R10.S04-ES-SL-160 SS+5d, CO-R10.S04-ES-SL-160 FF+5d, CO-R10.S04-ES-EW-110, CO-R10.S03-ES-TE-100 |  | -256d |
| CO-R10.S04-ES-TE-110 |  | Pipes Laying Works for Ducts of Telecom Network-[Road 10]-[SW-4] | 7d | 2027-03-01 | 2027-03-08 | CO-R10.S04-ES-TE-100, PRO-R10-TE-DL-100 FF+3d |  | -208d |
| CO-R10.S04-ES-TE-120 |  | Pouring Plain Concrete Above Ducts of Telecom Network-[Road 10]-[SW-4] | 7d | 2027-03-13 | 2027-03-20 | CO-R10.S04-ES-TE-110 |  | -208d |
| CO-R10.S04-ES-TE-130 |  | Trench Backfilling and Compaction Works for Ducts of Telecom Network-[Road 10]-[SW-4] | 7d | 2027-03-21 | 2027-03-28 | CO-R10.S04-ES-TE-120 |  | -208d |
|  | MH | **Manholes Works** |  | 2027-04-12 | 2027-05-05 |  |  |  |
| CO-R10.S04-ES-TE-140 |  | Excavation Works for Manholes of Telecom Network-[Road 10]-[SW-4] | 7d | 2027-04-12 | 2027-04-19 | CO-R10.S03-ES-TE-140, CO-R10.S04-ES-TE-100, CO-R10.S03-WE-TE-140 |  | -241d |
| CO-R10.S04-ES-TE-150 |  | Installation Works for Manholes of Telecom Network-[Road 10]-[SW-4] | 7d | 2027-04-20 | 2027-04-27 | CO-R10.S04-ES-TE-140, PRO-R10-TE-DL-110 FF+3d |  | -241d |
| CO-R10.S04-ES-TE-160 |  | Backfilling Works for Manholes of Telecom Network-[Road 10]-[SW-4] | 7d | 2027-04-28 | 2027-05-05 | CO-R10.S04-ES-TE-150 |  | -241d |
|  | RD | **Road Works** |  | 2026-08-25 | 2027-07-14 |  |  |  |
|  | RD | **Pre-Bituminous Construction** |  | 2026-09-20 | 2027-05-31 |  |  |  |
| CO-R10.S04-ES-RD-100 |  | Capping and Subgrade Layer for Road Works-[Road 10]-[SW-4] | 14d | 2026-09-20 A | 2027-05-27 | CO-R10.S04-ES-SD-130, CO-R10.S04-ES-SW-130, CO-R10.S04-ES-PW-130, CO-R10.S04-ES-PW-160, CO-R10.S04-ES-SL-160 SS+3d, CO-R10.S04-ES-SL-160 FF+3d, PRO-R10-RD-DL-100 FF+3d, CO-R10.S04-ES-TE-130, CO-R10.S04-ES-TE-160 | 85% | -241d |
| CO-R10.S04-ES-RD-110 |  | Aggregate Base Course Layer for Road Works-[Road 10]-[SW-4] | 12d | 2027-05-12 | 2027-05-31 | CO-R10.S04-ES-RD-100 SS+3d, CO-R10.S04-ES-RD-100 FF+3d, CO-R10.S04-ES-SD-170 SS+3d, CO-R10.S04-ES-SD-170 FF+3d, PRO-R10-RD-DL-110 FF+3d |  | -221d |
|  | LS | **Pavement Works** |  | 2026-08-25 | 2027-07-14 |  |  |  |
| CO-R10.S04-ES-RD-120 |  | Fixing of Curbstone for Sidewalks Pavement-[Road 10]-[SW-4] | 12d | 2026-08-25 A | 2026-08-31 A | PRO-R10-RD-DL-130 FF+3d, CO-R10.S04-ES-RD-110 SS+3d, CO-R10.S04-ES-RD-110 FF+3d | 100% |  |
| CO-R10.S04-ES-RD-130 |  | Fixing of Interlock Tiles for Sidewalks Pavement-[Road 10]-[SW-4] | 10d | 2027-07-04 | 2027-07-14 | PRO-R10-RD-DL-120 FF+3d, CO-R10.S04-ES-RD-120 SS+3d, CO-R10.S04-ES-RD-120 FF+3d, CO-R10-PW-TF-100, CO-R10-PW-TF-110, CO-R10-PW-TF-120, CO-R10-SW-TF-100, CO-R10-SW-TF-110, CO-R10-SW-TF-130, CO-R10-SD-TF-100, CO-R10-SD-TF-120, CO-R10-SL-TF-140, CO-R10-SL-TF-150, CO-R10-SL-ES-140, CO-R10-SL-ES-150, CO-R10-IR-TF-120, CO-R10-MV-TF-140, CO-R10-SL-TF-380 |  | -246d |
|  | SW_41 | **SW_4-West** |  | 2025-04-08 | 2027-07-17 |  |  |  |
|  | EW | **Earthworks** |  | 2025-04-08 | 2025-04-12 |  |  |  |
|  | EW | **Earthworks** |  | 2025-04-08 | 2025-04-12 |  |  |  |
| CO-R10.S04-WE-EW-100 |  | Roadway Excavation Works Upto Design Level for Earthworks-[Road 10]-[SW-4] | 12d | 2025-04-08 A | 2025-04-12 A | ENG-MS-RD-A-10, ENG-SH-RD-A-100, CO-R10.S03-WE-EW-100 | 100% |  |
| CO-R10.S04-WE-EW-110 |  | Embankments Works Upto Design Level for Earthworks-[Road 10]-[SW-4] | 12d | 2025-04-08 A | 2025-04-12 A | CO-R10.S04-WE-EW-100, ENG-MS-RD-A-10, ENG-SH-RD-A-100 | 100% |  |
|  | SW | **Sewage Network** |  | 2025-08-16 | 2026-07-04 |  |  |  |
|  | ML | **Main Line Sections** |  | 2025-08-16 | 2025-08-25 |  |  |  |
| CO-R10.S04-WE-SW-100 |  | Trench Excavation and Bedding Works for Main Lines of Sewage Network-[Road 10]-[SW-4] | 12d | 2025-08-16 A | 2025-08-18 A | CO-R10.S04-WE-EW-110, ENG-MS-SW-ML-A-110, ENG-SH-SW-ML-A-110, CO-R11.S06-SW-100 | 100% |  |
| CO-R10.S04-WE-SW-120 |  | Pipes Laying Works for Main Lines of Sewage Network-[Road 10]-[SW-4] | 12d | 2025-08-19 A | 2025-08-21 A | PRO-R10-SW-DL-100 FF+3d, CO-R10.S04-WE-SW-100 | 100% |  |
| CO-R10.S04-WE-SW-130 |  | Trench Backfilling and Compaction Works for Main Lines of Sewage Network-[Road 10]-[SW-4] | 12d | 2025-08-23 A | 2025-08-25 A | CO-R10.S04-WE-SW-120, CO-R10.S04-WE-SW-210 FF | 100% |  |
|  | 1 | **Manholes** |  | 2026-06-27 | 2026-07-04 |  |  |  |
| CO-R10.S04-WE-SW-160 |  | Excavation Works for Main Line Manholes of Sewage Network-[Road 10]-[SW-4] | 1d | 2026-06-27 A | 2026-07-04 A | CO-R10.S04-WE-SW-120 SS | 100% |  |
| CO-R10.S04-WE-SW-170 |  | Installation RC Footing Works for Main Line Manholes of Sewage Network-[Road 10]-[SW-4] | 2d | 2026-06-27 A | 2026-07-04 A | CO-R10.S04-WE-SW-160, PRO-R10-SW-DL-110 FF+3d | 100% |  |
| CO-R10.S04-WE-SW-180 |  | Install Grp Liner Wall Works for Main Line Manholes of Sewage Network-[Road 10]-[SW-4] | 4d | 2026-06-27 A | 2026-07-04 A | CO-R10.S04-WE-SW-170 | 100% |  |
| CO-R10.S04-WE-SW-190 |  | Pouring Grp Liner Wall Works for Main Line Manholes of Sewage Network-[Road 10]-[SW-4] | 1d | 2026-06-27 A | 2026-07-04 A | CO-R10.S04-WE-SW-180 | 100% |  |
| CO-R10.S04-WE-SW-200 |  | Backfilling Works for Main Line Manholes of Sewage Network-[Road 10]-[SW-4] | 4d | 2026-06-27 A | 2026-07-04 A | CO-R10.S04-WE-SW-190 | 100% |  |
| CO-R10.S04-WE-SW-210 |  | Testing Works for Main Line Manholes of Sewage Network-[Road 10]-[SW-4] | 1d | 2026-06-27 A | 2026-07-04 A | CO-R10.S04-WE-SW-200 | 100% |  |
|  | SD | **Storm Drainage Network** |  | 2025-08-23 | 2026-10-19 |  |  |  |
|  | ML | **Main Line Sections** |  | 2025-08-23 | 2025-09-02 |  |  |  |
| CO-R10.S04-WE-SD-100 |  | Trench Excavation and Bedding Works for Main Lines of Storm Drainage Network-[Road 10]-[SW-4] | 10d | 2025-08-23 A | 2025-08-25 A | CO-R10.S04-WE-EW-110, CO-R10.S04-WE-EW-100, CO-R10.S04-WE-SW-130 SS+3d, CO-R10.S04-WE-SW-130 FF+3d, CO-R10.S03-WE-SD-100 | 100% |  |
| CO-R10.S04-WE-SD-120 |  | Pipes Laying Works for Main Lines of Storm Drainage Network-[Road 10]-[SW-4] | 10d | 2025-08-26 A | 2025-08-28 A | PRO-R10-SD-DL-120 FF+3d, CO-R10.S04-WE-SD-100 | 100% |  |
| CO-R10.S04-WE-SD-130 |  | Trench Backfilling and Compaction Works for Main Lines of Storm Drainage Network-[Road 10]-[SW-4] | 10d | 2025-08-30 A | 2025-09-02 A | CO-R10.S04-WE-SD-120 SS+3d, CO-R10.S04-WE-SD-120 FF+3d, CO-R10.S04-WE-SD-120, CO-R10.S04-WE-SD-220 FF | 100% |  |
|  | MH | **Manholes** |  | 2025-11-09 | 2026-10-14 |  |  |  |
| CO-R10.S04-WE-SD-180 |  | Trench Excavation and Bedding Works for Manholes of Storm Drainage Network-[Road 10]-[SW-4] | 1d | 2025-11-09 A | 2025-11-15 A | CO-R10.S04-WE-SD-120 SS, PRO-SD-1DL-100 | 100% |  |
| CO-R10.S04-WE-SD-190 |  | Install RC Footing Works for Manholes of Storm Drainage Network-[Road 10]-[SW-4] | 1d | 2025-11-10 A | 2025-11-17 A | CO-R10.S04-WE-SD-180 | 100% |  |
| CO-R10.S04-WE-SD-200 |  | Install RC Wall Rings & Slab Works for Manholes of Storm Drainage Network-[Road 10]-[SW-4] | 4d | 2025-11-11 A | 2025-11-18 A | CO-R10.S04-WE-SD-190 | 100% |  |
| CO-R10.S04-WE-SD-210 |  | Testing Works for Manholes of Storm Drainage Network-[Road 10]-[SW-4] | 1d | 2026-10-13 A | 2026-10-13 A | CO-R10.S04-WE-SD-200 | 100% |  |
| CO-R10.S04-WE-SD-220 |  | Backfilling Works for Manholes of Storm Drainage Network-[Road 10]-[SW-4] | 7d | 2026-10-14 A | 2026-10-14 A | CO-R10.S04-WE-SD-210 | 100% |  |
|  | CB | **Catch Basin Sections** |  | 2026-06-17 | 2026-10-19 |  |  |  |
| CO-R10.S04-WE-SD-140 |  | Trench Excavation and Bedding Works for Catch Basins of Storm Drainage Network-[Road 10]-[SW-4] | 6d | 2026-06-17 A | 2026-10-14 A | CO-R10.S04-WE-EW-110, CO-R10.S04-WE-SD-220, CO-R10.S03-ES-SD-140 | 100% |  |
| CO-R10.S04-WE-SD-150 |  | Installation and Pipes Laying Connection Works for Catch Basins of Storm Drainage Network-[Road 10]-[SW-4] | 7d | 2026-06-20 A | 2026-10-15 A | CO-R10.S04-WE-SD-140, PRO-R10-SD-DL-130 FF+3d | 100% |  |
| CO-R10.S04-WE-SD-160 |  | Testing Works for Catch Basins of Storm Drainage Network-[Road 10]-[SW-4] | 10d | 2026-06-23 A | 2026-10-17 A | CO-R10.S04-WE-SD-150, CO-R10.S04-WE-SD-120, PRO-R10-SD-DL-110 FF+3d | 100% |  |
| CO-R10.S04-WE-SD-170 |  | Trench Backfilling and Compaction Works for Catch Basins of Storm Drainage Network-[Road 10]-[SW-4] | 7d | 2026-10-13 A | 2026-10-19 A | CO-R10.S04-WE-SD-160 SS+3d, CO-R10.S04-WE-SD-160 FF+3d | 100% |  |
|  | PW | **Potable Water Network** |  | 2025-10-01 | 2026-12-21 |  |  |  |
|  | ML | **Main Line Sections** |  | 2025-10-01 | 2026-06-24 |  |  |  |
| CO-R10.S04-WE-PW-100 |  | Trench Excavation and Bedding Works for Main Lines of Potable Water Network-[Road 10]-[SW-4] | 10d | 2025-10-01 A | 2025-10-07 A | CO-R10.S04-WE-EW-110, CO-R10.S04-WE-EW-100, CO-R10.S04-WE-SD-130 | 100% |  |
| CO-R10.S04-WE-PW-110 |  | Pipes Laying and accessories for Main Lines of Potable Water Network-[Road 10]-[SW-4] | 10d | 2025-10-02 A | 2026-06-18 A | CO-R10.S04-WE-PW-100, PRO-R10-PW-DL-100 FF+3d, PRO-R10-PW-DL-110 FF+3d | 100% |  |
| CO-R10.S04-WE-PW-130 |  | Trench Backfilling and Compaction Works for Main Lines of Potable Water Network-[Road 10]-[SW-4] | 10d | 2026-06-11 A | 2026-06-24 A | CO-R10.S04-WE-PW-110, CO-R10.S04-WE-PW-220 FF, CO-R10.S04-WE-PW-160 FF | 100% |  |
|  | VC | **Valve Chamber** |  | 2026-06-21 | 2026-11-28 |  |  |  |
| CO-R10.S04-WE-PW-210 |  | Insulation Works for Main Line Valves and Valve Chambers of Potable Water Network-[Road 10]-[SW-4] | 1d | 2026-06-21 A | 2026-11-24 | CO-R10.S04-WE-PW-200 | 60% | -228d |
| CO-R10.S04-WE-PW-170 |  | Excavation Works for Main Line Valves and Valve Chambers of Potable Water Network-[Road 10]-[SW-4] | 1d | 2026-11-10 | 2026-11-10 | CO-R10.S04-WE-PW-100 |  | -234d |
| CO-R10.S04-WE-PW-180 |  | RC Footing Works for Main Line Valves and Valve Chambers of Potable Water Network-[Road 10]-[SW-4] | 3d | 2026-11-11 | 2026-11-14 | CO-R10.S04-WE-PW-170 |  | -228d |
| CO-R10.S04-WE-PW-190 |  | RC Wall Works for Main Line Valves and Valve Chambers of Potable Water Network-[Road 10]-[SW-4] | 6d | 2026-11-15 | 2026-11-21 | CO-R10.S04-WE-PW-180 |  | -228d |
| CO-R10.S04-WE-PW-200 |  | RC Slab Works for Main Line Valves and Valve Chambers of Potable Water Network-[Road 10]-[SW-4] | 2d | 2026-11-22 | 2026-11-23 | CO-R10.S04-WE-PW-190 |  | -228d |
| CO-R10.S04-WE-PW-220 |  | Backfilling Works for Main Line Valves and Valve Chambers of Potable Water Network-[Road 10]-[SW-4] | 3d | 2026-11-25 | 2026-11-28 | CO-R10.S04-WE-PW-210 |  | -228d |
|  | FH | **Fire Hydrant** |  | 2026-11-28 | 2026-12-21 |  |  |  |
| CO-R10.S04-WE-PW-140 |  | Excavation Works for Fire Hydrants of Potable Water Network-[Road 10]-[SW-4] | 7d | 2026-11-28 | 2026-12-05 | CO-R10.S04-WE-PW-110 SS+3d, CO-R10.S04-WE-EW-110, CO-R10.S04-WE-SW-130 SS+3d, CO-R10.S04-WE-SW-130 FF+3d, CO-R10.S04-WE-PW-170 |  | -248d |
| CO-R10.S04-WE-PW-150 |  | Installation Works for Fire Hydrant of Potable Water Network-[Road 10]-[SW-4] | 7d | 2026-12-06 | 2026-12-13 | CO-R10.S04-WE-PW-140, PRO-R10-PW-DL-120 FF+3d |  | -248d |
| CO-R10.S04-WE-PW-160 |  | Trench Backfilling and Compaction Works for Fire Hydrants of Potable Water Network-[Road 10]-[SW-4] | 7d | 2026-12-14 | 2026-12-21 | CO-R10.S04-WE-PW-150 |  | -248d |
|  | IR | **Irrigation Network** |  | 2026-10-13 | 2026-12-31 |  |  |  |
|  | ML | **Main Line Pipes** |  | 2026-10-13 | 2026-12-31 |  |  |  |
| CO-R10.S04-WE-IR-100 |  | Trench Excavation and Bedding Works for Main Lines of Irrigation Network-[Road 10]-[SW-4] | 6d | 2026-10-13 A | 2026-12-23 | CO-R10.S04-WE-EW-110, CO-R10.S04-WE-PW-130, CO-R10.S04-WE-SD-170 | 70% | -248d |
| CO-R10.S04-WE-IR-110 |  | Pipes Laying Works for Main Lines of Irrigation Network-[Road 10]-[SW-4] | 7d | 2026-10-15 A | 2026-12-26 | CO-R10.S04-WE-IR-100, PRO-R19.2-IR-DL-100 FF+3d | 70% | -248d |

| ID | WBS | Task | Duration | Start | Finish | Predecessors | Complete | Total float |
| --- | --- | --- | --- | --- | --- | --- | --- | --- |
| CO-R10.S04-WE-IR-130 |  | Trench Backfilling and Compaction Works for Main Lines of Irrigation Network-[Road 10]-[SW-4] | 5d | 2026-10-17 A | 2026-12-31 | CO-R10.S04-WE-IR-120, CO-R10.S04-WE-IR-110 | 70% | -248d |
| CO-R10.S04-WE-IR-120 |  | Installation Works for Main Line Valves of Irrigation Network-[Road 10]-[SW-4] | 3d | 2026-12-27 | 2026-12-29 | CO-R10.S04-WE-IR-110, PRO-R19.2-IR-DL-110 FF+3d |  | -248d |
|  | SL | **Street Lighting Network** |  | 2027-01-02 | 2027-04-28 |  |  |  |
|  | LP | **Lighting Poles Works** |  | 2027-01-02 | 2027-02-13 |  |  |  |
| CO-R10.S04-WE-SL-100 |  | Foundation Excavation Works for Lighting Poles of Street Lighting Network-[Road 10]-[SW-4] | 10d | 2027-01-02 | 2027-01-12 | CO-R10.S04-WE-EW-110, CO-R10.S04-WE-EW-100, CO-R10.S04-WE-IR-130 |  | -248d |
| CO-R10.S04-WE-SL-110 |  | Installation Works for Lighting Poles Foundation of Street Lighting Network-[Road 10]-[SW-4] | 10d | 2027-01-07 | 2027-01-18 | CO-R10.S04-WE-SL-100 SS+5d, CO-R10.S04-WE-SL-100 FF+5d, PRO-R10-SL-DL-110 FF+3d |  | -248d |
| CO-R10.S04-WE-SL-120 |  | Installation Works for Lighting Poles of Street Lighting Network-[Road 10]-[SW-4] | 18d | 2027-01-13 | 2027-02-02 | CO-R10.S04-WE-SL-110 SS+5d, CO-R10.S04-WE-SL-110 FF+5d, PRO-R10-SL-DL-120 FF+3d |  | -248d |
| CO-R10.S04-WE-SL-210 |  | Backfilling Works for Lighting Poles of Street Lighting Network-[Road 10]-[SW-4] | 15d | 2027-01-19 | 2027-02-04 | CO-R10.S04-WE-SL-120 SS, CO-R10.S04-WE-SL-120 FF, CO-R10.S03-WE-SL-210 |  | -138.5d |
| CO-R10.S04-WE-SL-130 |  | Installation Works for Lighting Fixtures With Drop Wire of Street Lighting Network-[Road 10]-[SW-4] | 18d | 2027-01-24 | 2027-02-13 | CO-R10.S04-WE-SL-120 SS+5d, CO-R10.S04-WE-SL-120 FF+5d, PRO-R10-SL-DL-140 FF+3d, CO-R10.S04-WE-SL-200 FF |  | -138.5d |
| CO-R10.S04-WE-SL-200 |  | Testing Works for Lighting Poles of Street Lighting Network-[Road 10]-[SW-4] | 7d | 2027-02-06 | 2027-02-13 | CO-R10.S04-WE-SL-210, CO-R10.S04-WE-SL-120 |  | -138.5d |
|  | CW | **Cabling Works** |  | 2027-02-03 | 2027-03-14 |  |  |  |
| CO-R10.S04-WE-SL-140 |  | Trench Excavation and Bedding Works for Street Lighting Network-[Road 10]-[SW-4] | 10d | 2027-02-03 | 2027-02-14 | CO-R10.S04-WE-IR-130, CO-R10.S04-WE-EW-110, CO-R10.S04-WE-SL-120, CO-R10.S04-WE-SL-110 |  | -248d |
| CO-R10.S04-WE-SL-150 |  | Cable Laying Works for Street Lighting Network-[Road 10]-[SW-4] | 10d | 2027-02-15 | 2027-02-27 | CO-R10.S04-WE-SL-140, PRO-R10-SL-DL-100 FF+3d |  | -248d |
| CO-R10.S04-WE-SL-160 |  | Trench Backfilling and Compaction Works for Street Lighting Network-[Road 10]-[SW-4] | 10d | 2027-02-28 | 2027-03-14 | CO-R10.S04-WE-SL-150, CO-R10.S04-WE-IR-130 |  | -248d |
|  | DPB | **Distrubution Panel Boards** |  | 2027-03-15 | 2027-04-28 |  |  |  |
| CO-R10.S04-WE-SL-170 |  | Foundation Excavation Works For Panel Boards of Street Lighting Network-[Road 10]-[SW-4] | 18d | 2027-03-15 | 2027-04-04 | CO-R10.S04-WE-EW-110, CO-R10.S04-WE-SL-160 |  | -248d |
| CO-R10.S04-WE-SL-180 |  | Installation Works for Panel Board Concrete Foundations of Street Lighting Network-[Road 10]-[SW-4] | 12d | 2027-03-25 | 2027-04-07 | CO-R10.S04-WE-SL-170 SS+3d, CO-R10.S04-WE-SL-170 FF+3d |  | -239d |
| CO-R10.S04-WE-SL-190 |  | Installation Works for Lighting Panel Boards of Street Lighting Network-[Road 10]-[SW-4] | 12d | 2027-04-08 | 2027-04-21 | CO-R10.S04-WE-SL-180, PRO-R10-SL-DL-160 FF+3d |  | -239d |
| CO-R10.S04-WE-SL-220 |  | A wall of concrete blocks to install the KWH meter of Street Lighting Network-[Road 10]-[SW-4] | 18d | 2027-04-08 | 2027-04-28 | CO-R10.S04-WE-SL-180 |  | -239d |
|  | TE | **Telecom Network** |  | 2027-04-04 | 2027-05-05 |  |  |  |
|  | PD | **Ducts Works** |  | 2027-04-04 | 2027-05-05 |  |  |  |
| CO-R10.S04-WE-TE-100 |  | Trench Excavation and Bedding Works for Ducts of Telecom Network-[Road 10]-[SW-4] | 7d | 2027-04-04 | 2027-04-11 | CO-R10.S04-WE-IR-130 SS+3d, CO-R10.S04-WE-IR-130 FF+3d, CO-R10.S04-WE-SL-160 SS+5d, CO-R10.S04-WE-SL-160 FF+5d, CO-R10.S04-WE-EW-110, CO-R10.S03-WE-TE-100 |  | -236d |
| CO-R10.S04-WE-TE-110 |  | Pipes Laying Works for Ducts of Telecom Network-[Road 10]-[SW-4] | 7d | 2027-04-12 | 2027-04-19 | CO-R10.S04-WE-TE-100, PRO-R10-TE-DL-100 FF+3d |  | -236d |
| CO-R10.S04-WE-TE-120 |  | Pouring Plain Concrete Above Ducts of Telecom Network-[Road 10]-[SW-4] | 7d | 2027-04-20 | 2027-04-27 | CO-R10.S04-WE-TE-110 |  | -236d |
| CO-R10.S04-WE-TE-130 |  | Trench Backfilling and Compaction Works for Ducts of Telecom Network-[Road 10]-[SW-4] | 7d | 2027-04-28 | 2027-05-05 | CO-R10.S04-WE-TE-120 |  | -236d |
|  | MH | **Manholes Works** |  | 2027-04-12 | 2027-05-05 |  |  |  |
| CO-R10.S04-WE-TE-140 |  | Excavation Works for Manholes of Telecom Network-[Road 10]-[SW-4] | 7d | 2027-04-12 | 2027-04-19 | CO-R10.S03-ES-TE-140, CO-R10.S04-WE-TE-100, CO-R10.S03-WE-TE-140 |  | -236d |
| CO-R10.S04-WE-TE-150 |  | Installation Works for Manholes of Telecom Network-[Road 10]-[SW-4] | 7d | 2027-04-20 | 2027-04-27 | CO-R10.S04-WE-TE-140, PRO-R10-TE-DL-110 FF+3d |  | -236d |
| CO-R10.S04-WE-TE-160 |  | Backfilling Works for Manholes of Telecom Network-[Road 10]-[SW-4] | 7d | 2027-04-28 | 2027-05-05 | CO-R10.S04-WE-TE-150 |  | -236d |
|  | RD | **Road Works** |  | 2026-07-30 | 2027-07-17 |  |  |  |
|  | RD | **Pre-Bituminous Construction** |  | 2026-07-30 | 2027-05-25 |  |  |  |
| CO-R10.S04-WE-RD-100 |  | Capping and Subgrade Layer for Road Works-[Road 10]-[SW-4] | 12d | 2026-07-30 A | 2027-05-11 | CO-R10.S04-WE-SD-130, CO-R10.S04-WE-SW-130, CO-R10.S04-WE-PW-130, CO-R10.S04-WE-PW-160, CO-R10.S04-WE-SL-160 SS+3d, CO-R10.S04-WE-SL-160 FF+3d, PRO-R10-RD-DL-100 FF+3d, CO-R10.S04-WE-TE-130, CO-R10.S04-WE-TE-160 | 80% | -236d |
| CO-R10.S04-WE-RD-110 |  | Aggregate Base Course Layer for Road Works-[Road 10]-[SW-4] | 12d | 2027-05-06 | 2027-05-25 | CO-R10.S04-WE-RD-100 SS+3d, CO-R10.S04-WE-RD-100 FF+3d, CO-R10.S04-WE-SD-170 SS+3d, CO-R10.S04-WE-SD-170 FF+3d, PRO-R10-RD-DL-110 FF+3d |  | -218d |
|  | LS | **Pavement Works** |  | 2026-08-25 | 2027-07-17 |  |  |  |
| CO-R10.S04-WE-RD-120 |  | Fixing of Curbstone for Sidewalks Pavement-[Road 10]-[SW-4] | 12d | 2026-08-25 A | 2026-08-31 A | PRO-R10-RD-DL-130 FF+3d, CO-R10.S04-WE-RD-110 SS+3d, CO-R10.S04-WE-RD-110 FF+3d | 100% |  |
| CO-R10.S04-WE-RD-130 |  | Fixing of Interlock Tiles for Sidewalks Pavement-[Road 10]-[SW-4] | 12d | 2027-07-04 | 2027-07-17 | PRO-R10-RD-DL-120 FF+3d, CO-R10.S04-WE-RD-120 SS+3d, CO-R10.S04-WE-RD-120 FF+3d, CO-R10-PW-TF-100, CO-R10-PW-TF-110, CO-R10-PW-TF-120, CO-R10-SW-TF-100, CO-R10-SW-TF-110, CO-R10-SW-TF-130, CO-R10-SD-TF-100, CO-R10-SD-TF-120, CO-R10-SL-TF-140, CO-R10-SL-TF-150, CO-R10-SL-ES-140, CO-R10-SL-ES-150, CO-R10-IR-TF-120, CO-R10-MV-TF-140, CO-R10-SL-TF-380 |  | -248d |
|  | 5 | **Road 11 Local 1 ( 670 LM )** |  | 2025-04-23 | 2027-05-22 |  |  |  |
|  | SW_5 | **SW_5** |  | 2025-04-26 | 2027-05-05 |  |  |  |
|  | EW | **Earthworks** |  | 2025-04-26 | 2025-05-03 |  |  |  |
|  | EW | **Earthworks** |  | 2025-04-26 | 2025-05-03 |  |  |  |
| CO-R11.S05-EW-100 |  | Roadway Excavation Works Upto Design Level for Earthworks-[Road 11]-[SW-5] | 12d | 2025-04-26 A | 2025-04-27 A | ENG-MS-RD-A-10, ENG-SH-RD-A-100, CO-R14.S08-EW-100 | 100% |  |
| CO-R11.S05-EW-110 |  | Embankments Works Upto Design Level for Earthworks-[Road 11]-[SW-5] | 12d | 2025-04-26 A | 2025-05-03 A | CO-R11.S05-EW-100, ENG-MS-RD-A-10, ENG-SH-RD-A-100 | 100% |  |
|  | SW | **Sewage Network** |  | 2025-08-12 | 2026-08-31 |  |  |  |
|  | ML | **Main Line Sections** |  | 2025-08-12 | 2026-04-06 |  |  |  |
| CO-R11.S05-SW-100 |  | Trench Excavation and Bedding Works for Main Lines of Sewage Network-[Road 11]-[SW-5] | 12d | 2025-08-12 A | 2025-08-14 A | CO-R11.S05-EW-110, ENG-MS-SW-ML-A-110, ENG-SH-SW-ML-A-110, CO-R14.S08-SW-100 | 100% |  |
| CO-R11.S05-SW-120 |  | Pipes Laying Works for Main Lines of Sewage Network-[Road 11]-[SW-5] | 12d | 2025-09-16 A | 2026-04-05 A | CO-R11.S05-SW-100, PRO-R11-SW-DL-100 FF+3d | 100% |  |
| CO-R11.S05-SW-130 |  | Trench Backfilling and Compaction Works for Main Lines of Sewage Network-[Road 11]-[SW-5] | 12d | 2025-09-18 A | 2026-04-06 A | ENG-SH-SW-ML-A-110 FF, ENG-MS-SW-ML-A-110 FF, CO-R11.S05-SW-120, CO-R11.S05-SW-210 FF | 100% |  |
|  | 1 | **Manholes** |  | 2026-08-20 | 2026-08-31 |  |  |  |
| CO-R11.S05-SW-160 |  | Excavation Works for Main Line Manholes of Sewage Network-[Road 11]-[SW-5] | 1d | 2026-08-20 A | 2026-08-20 A | CO-R11.S05-SW-120 SS | 100% |  |
| CO-R11.S05-SW-170 |  | Installation RC Footing Works for Main Line Manholes of Sewage Network-[Road 11]-[SW-5] | 2d | 2026-08-22 A | 2026-08-23 A | CO-R11.S05-SW-160, PRO-R11-SW-DL-110 FF+3d | 100% |  |
| CO-R11.S05-SW-180 |  | Install Grp Liner Wall Works for Main Line Manholes of Sewage Network-[Road 11]-[SW-5] | 4d | 2026-08-24 A | 2026-08-27 A | CO-R11.S05-SW-170 | 100% |  |
| CO-R11.S05-SW-190 |  | Pouring Grp Liner Wall Works for Main Line Manholes of Sewage Network-[Road 11]-[SW-5] | 1d | 2026-08-28 A | 2026-08-28 A | CO-R11.S05-SW-180 | 100% |  |
| CO-R11.S05-SW-200 |  | Backfilling Works for Main Line Manholes of Sewage Network-[Road 11]-[SW-5] | 4d | 2026-08-29 A | 2026-08-30 A | CO-R11.S05-SW-190 | 100% |  |
| CO-R11.S05-SW-210 |  | Testing Works for Main Line Manholes of Sewage Network-[Road 11]-[SW-5] | 1d | 2026-08-30 A | 2026-08-31 A | CO-R11.S05-SW-200 | 100% |  |
|  | SD | **Storm Drainage Network** |  | 2025-07-29 | 2026-04-30 |  |  |  |
|  | ML | **Main Line Sections** |  | 2025-07-29 | 2025-08-20 |  |  |  |
| CO-R11.S05-SD-100 |  | Trench Excavation and Bedding Works for Main Lines of Storm Drainage Network-[Road 11]-[SW-5] | 10d | 2025-07-29 A | 2025-08-03 A | ENG-SH-SD-ML-A-110, CO-R11.S05-EW-110, CO-R11.S05-EW-100, CO-R11.S05-SW-130 SS+3d, CO-R11.S05-SW-130 FF+3d, ENG-MS-SD-ML-A-110, CO-R14.S08-SD-100 | 100% |  |
| CO-R11.S05-SD-120 |  | Pipes Laying Works for Main Lines of Storm Drainage Network-[Road 11]-[SW-5] | 10d | 2025-08-12 A | 2025-08-14 A | CO-R11.S05-SD-100, CO-R14.S08-SD-120 | 100% |  |
| CO-R11.S05-SD-130 |  | Trench Backfilling and Compaction Works for Main Lines of Storm Drainage Network-[Road 11]-[SW-5] | 15d | 2025-08-13 A | 2025-08-20 A | CO-R11.S05-SD-120 SS+3d, CO-R11.S05-SD-120 FF+3d, ENG-SH-SD-ML-A-110 FF, CO-R10.S03-ES-SD-130, ENG-MS-SD-ML-A-110 FF, CO-R11.S05-SD-120, CO-R11.S05-SD-220 FF, CO-R10.S03-WE-SD-130 | 100% |  |
|  | MH | **Manholes** |  | 2026-03-22 | 2026-04-07 |  |  |  |
| CO-R11.S05-SD-180 |  | Trench Excavation and Bedding Works for Manholes of Storm Drainage Network-[Road 11]-[SW-5] | 1d | 2026-03-22 A | 2026-03-31 A | CO-R11.S05-SD-120 SS, PRO-SD-1DL-100 | 100% |  |
| CO-R11.S05-SD-190 |  | Install RC Footing Works for Manholes of Storm Drainage Network-[Road 11]-[SW-5] | 1d | 2026-04-01 A | 2026-04-01 A | CO-R11.S05-SD-180 | 100% |  |
| CO-R11.S05-SD-200 |  | Install RC Wall Rings & Slab Works for Manholes of Storm Drainage Network-[Road 11]-[SW-5] | 4d | 2026-04-02 A | 2026-04-04 A | CO-R11.S05-SD-190 | 100% |  |
| CO-R11.S05-SD-210 |  | Testing Works for Manholes of Storm Drainage Network-[Road 11]-[SW-5] | 1d | 2026-04-05 A | 2026-04-06 A | CO-R11.S05-SD-200 | 100% |  |
| CO-R11.S05-SD-220 |  | Backfilling Works for Manholes of Storm Drainage Network-[Road 11]-[SW-5] | 7d | 2026-04-06 A | 2026-04-07 A | CO-R11.S05-SD-210 | 100% |  |
|  | CB | **Catch Basin Sections** |  | 2026-04-25 | 2026-04-30 |  |  |  |
| CO-R11.S05-SD-140 |  | Trench Excavation and Bedding Works for Catch Basins of Storm Drainage Network-[Road 11]-[SW-5] | 6d | 2026-04-25 A | 2026-04-30 A | CO-R11.S05-EW-110, ENG-SH-SD-CB-A-110, ENG-MS-SD-CB-A-110, CO-R11.S05-SD-220, CO-R14.S08-SD-140 | 100% |  |
| CO-R11.S05-SD-150 |  | Installation and Pipes Laying Connection Works for Catch Basins of Storm Drainage Network-[Road 11]-[SW-5] | 7d | 2026-04-25 A | 2026-04-30 A | CO-R11.S05-SD-140 | 100% |  |
| CO-R11.S05-SD-160 |  | Testing Works for Catch Basins of Storm Drainage Network-[Road 11]-[SW-5] | 10d | 2026-04-25 A | 2026-04-30 A | CO-R11.S05-SD-150, CO-R11.S05-SD-120 | 100% |  |
| CO-R11.S05-SD-170 |  | Trench Backfilling and Compaction Works for Catch Basins of Storm Drainage Network-[Road 11]-[SW-5] | 7d | 2026-04-25 A | 2026-04-30 A | CO-R11.S05-SD-160 | 100% |  |

| ID | WBS | Task | Duration | Start | Finish | Predecessors | Complete | Total float |
| --- | --- | --- | --- | --- | --- | --- | --- | --- |
|  | IR | **Irrigation Network** |  | 2026-04-25 | 2026-12-20 |  |  |  |
|  | ML | **Main Line Pipes** |  | 2026-04-25 | 2026-12-20 |  |  |  |
| CO-R11.S05-IR-100 |  | Trench Excavation and Bedding Works for Main Lines of Irrigation Network-[Road 11]-[SW-5] | 4d | 2026-04-25 A | 2026-04-30 A | ENG-SH-IR-ML-A-110, CO-R11.S05-EW-110, CO-R11.S05-SD-170, ENG-MS-IR-ML-A-110 | 100% |  |
| CO-R11.S05-IR-110 |  | Pipes Laying Works for Main Lines of Irrigation Network-[Road 11]-[SW-5] | 7d | 2026-04-25 A | 2026-12-08 | CO-R11.S05-IR-100, PRO-R11-IR-DL-140 FF+3d | 70% | -162d |
| CO-R11.S05-IR-120 |  | Installation Works for Main Line Valves of Irrigation Network-[Road 11]-[SW-5] | 3d | 2026-12-09 | 2026-12-12 | CO-R11.S05-IR-110, PRO-R11-IR-DL-150 FF+3d |  | -162d |
| CO-R11.S05-IR-130 |  | Trench Backfilling and Compaction Works for Main Lines of Irrigation Network-[Road 11]-[SW-5] | 7d | 2026-12-13 | 2026-12-20 | CO-R11.S05-IR-120, CO-R11.S05-IR-110 |  | -162d |
|  | TE | **Telecom Network** |  | 2026-07-08 | 2027-05-05 |  |  |  |
|  | PD | **Ducts Works** |  | 2026-07-08 | 2026-07-13 |  |  |  |
| CO-R11.S05-TE-100 |  | Trench Excavation and Bedding Works for Ducts of Telecom Network-[Road 11]-[SW-5] | 3d | 2026-07-08 A | 2026-07-13 A | CO-R11.S05-IR-130, CO-R11.S05-EW-110, CO-R14.S08-TE-100 | 100% |  |
| CO-R11.S05-TE-110 |  | Pipes Laying Works for Ducts of Telecom Network-[Road 11]-[SW-5] | 7d | 2026-07-08 A | 2026-07-13 A | CO-R11.S05-TE-100, CO-R10.S03-ES-TE-110, CO-R10.S03-WE-TE-110 | 100% |  |
| CO-R11.S05-TE-120 |  | Pouring Plain Concrete Above Ducts of Telecom Network-[Road 11]-[SW-5] | 7d | 2026-07-08 A | 2026-07-13 A | CO-R11.S05-TE-110, CO-R10.S03-ES-TE-120, CO-R10.S03-WE-TE-120 | 100% |  |
| CO-R11.S05-TE-130 |  | Trench Backfilling and Compaction Works for Ducts of Telecom Network-[Road 11]-[SW-5] | 7d | 2026-07-08 A | 2026-07-13 A | CO-R11.S05-TE-120, CO-R11.S05-TE-120 FF+3d, CO-R10.S03-ES-TE-130, CO-R10.S03-WE-TE-130 | 100% |  |
|  | MH | **Manholes Works** |  | 2027-04-12 | 2027-05-05 |  |  |  |
| CO-R11.S05-TE-140 |  | Excavation Works for Manholes of Telecom Network-[Road 11]-[SW-5] | 7d | 2027-04-12 | 2027-04-19 | CO-R10.S03-ES-TE-140, CO-R11.S05-TE-100, CO-R10.S03-WE-TE-140 |  | -227d |
| CO-R11.S05-TE-150 |  | Installation Works for Manholes of Telecom Network-[Road 11]-[SW-5] | 7d | 2027-04-20 | 2027-04-27 | CO-R11.S05-TE-140, CO-R10.S03-ES-TE-150, CO-R10.S03-WE-TE-150 |  | -219d |
| CO-R11.S05-TE-160 |  | Backfilling Works for Manholes of Telecom Network-[Road 11]-[SW-5] | 7d | 2027-04-28 | 2027-05-05 | CO-R11.S05-TE-150, CO-R10.S03-ES-TE-160, CO-R10.S03-WE-TE-160 |  | -219d |
|  | MV | **Medium Voltage Network** |  | 2026-07-08 | 2026-07-13 |  |  |  |
|  | CW | **Cabling Works** |  | 2026-07-08 | 2026-07-13 |  |  |  |
| CO-R11.S05-MV-100 |  | Trench Excavation and Bedding Works for Medium Voltage Network-[Road 11]-[SW-5] | 18d | 2026-07-08 A | 2026-07-13 A | ENG-SH-MV-A-110, CO-R11.S05-SD-170 SS+3d, CO-R11.S05-SD-170 FF+3d, CO-R10.S03-ES-MV-100, ENG-MS-MV-A-110, CO-R10.S03-WE-MV-100 | 100% |  |
| CO-R11.S05-MV-110 |  | Cable Laying Works for Medium Voltage Network-[Road 11]-[SW-5] | 18d | 2026-07-08 A | 2026-07-13 A | CO-R11.S05-MV-100 SS+3d, CO-R11.S05-MV-100 FF+3d, CO-R10.S03-ES-MV-110, CO-R10.S03-WE-MV-110 | 100% |  |
| CO-R11.S05-MV-120 |  | Trench Backfilling and Compaction Works for Medium Voltage Network-[Road 11]-[SW-5] | 18d | 2026-07-08 A | 2026-07-13 A | CO-R11.S05-MV-110 SS+3d, CO-R11.S05-MV-110 FF+3d, CO-R10.S03-ES-MV-120, CO-R10.S03-WE-MV-120 | 100% |  |
|  | RD | **Road Works** |  | 2026-03-29 | 2026-09-10 |  |  |  |
|  | RD | **Pre-Bituminous Construction** |  | 2026-03-29 | 2026-04-21 |  |  |  |
| CO-R11.S05-RD-P-100 |  | Capping and Subgrade Layer for Road Works-[Road 11]-[SW-5] | 18d | 2026-03-29 A | 2026-04-04 A | ENG-SH-RD-A-100, CO-R11.S05-SD-130, CO-R11.S05-SW-130, ENG-MS-RD-A-10, CO-R11.S05-TE-130, CO-R11.S05-TE-160, CO-R11.S05-MV-120 SS+3d, CO-R11.S05-MV-120 FF+3d | 100% |  |
| CO-R11.S05-RD-P-110 |  | Aggregate Base Course Layer for Road Works-[Road 11]-[SW-5] | 18d | 2026-04-09 A | 2026-04-21 A | CO-R11.S05-RD-P-100 SS+3d, CO-R11.S05-RD-P-100 FF+3d, CO-R11.S05-SD-170 SS+3d, CO-R11.S05-SD-170 FF+3d, CO-R10.S03-ES-RD-110, CO-R10.S03-WE-RD-110 | 100% |  |
|  | LS | **Pavement Works** |  | 2026-08-25 | 2026-09-10 |  |  |  |
| CO-R11.S05-RD-P-120 |  | Fixing of Curbstone for Sidewalks Pavement-[Road 11]-[SW-5] | 18d | 2026-08-25 A | 2026-08-31 A | CO-R10.S03-ES-RD-120, CO-R11.S05-RD-P-110 SS+3d, CO-R11.S05-RD-P-110 FF+3d, CO-R10.S03-WE-RD-120 | 100% |  |
| CO-R11.S05-RD-P-130 |  | Fixing of Interlock Tiles for Sidewalks Pavement-[Road 11]-[SW-5] | 10d | 2026-08-25 A | 2026-09-10 A | CO-R11.S05-RD-P-120 SS+3d, CO-R11.S05-RD-P-120 FF+3d, CO-R10.S03-ES-RD-130, CO-R11-PW-TF-100, CO-R11-PW-TF-110, CO-R11-PW-TF-120, CO-R11-SW-TF-100, CO-R11-SW-TF-110, CO-R11-SW-TF-130, CO-R11-SD-TF-100, CO-R11-SL-TF-160, CO-R11-SL-TF-170, CO-R11-IR-TF-130, CO-R11-MV-TF-160, CO-R10.S03-WE-RD-130 | 100% |  |
|  | SW_6 | **SW_6** |  | 2025-04-23 | 2027-05-22 |  |  |  |
|  | EW | **Earthworks** |  | 2025-04-23 | 2025-05-03 |  |  |  |
|  | EW | **Earthworks** |  | 2025-04-23 | 2025-05-03 |  |  |  |
| CO-R11.S06-EW-100 |  | Roadway Excavation Works Upto Design Level for Earthworks-[Road 11]-[SW-6] | 12d | 2025-04-23 A | 2025-04-27 A | ENG-MS-RD-A-10, ENG-SH-RD-A-100, CO-R11.S05-EW-100 | 100% |  |
| CO-R11.S06-EW-110 |  | Embankments Works Upto Design Level for Earthworks-[Road 11]-[SW-6] | 12d | 2025-04-26 A | 2025-05-03 A | CO-R11.S06-EW-100, ENG-MS-RD-A-10, ENG-SH-RD-A-100 | 100% |  |
|  | SW | **Sewage Network** |  | 2025-09-16 | 2026-07-09 |  |  |  |
|  | ML | **Main Line Sections** |  | 2025-09-16 | 2026-07-05 |  |  |  |
| CO-R11.S06-SW-100 |  | Trench Excavation and Bedding Works for Main Lines of Sewage Network-[Road 11]-[SW-6] | 12d | 2025-09-16 A | 2026-07-01 A | CO-R11.S06-EW-110, ENG-MS-SW-ML-A-110, ENG-SH-SW-ML-A-110, CO-R11.S05-SW-100 | 100% |  |
| CO-R11.S06-SW-120 |  | Pipes Laying Works for Main Lines of Sewage Network-[Road 11]-[SW-6] | 12d | 2025-09-20 A | 2026-06-30 A | CO-R11.S06-SW-100, PRO-R11-SW-DL-100 FF+3d | 100% |  |
| CO-R11.S06-SW-130 |  | Trench Backfilling and Compaction Works for Main Lines of Sewage Network-[Road 11]-[SW-6] | 10d | 2025-09-29 A | 2026-07-05 A | CO-R11.S06-SW-120, CO-R11.S06-SW-210 FF | 100% |  |
|  | 1 | **Manholes** |  | 2026-04-01 | 2026-07-09 |  |  |  |
| CO-R11.S06-SW-160 |  | Excavation Works for Main Line Manholes of Sewage Network-[Road 11]-[SW-6] | 1d | 2026-04-01 A | 2026-04-05 A | CO-R11.S06-SW-120 SS | 100% |  |
| CO-R11.S06-SW-170 |  | Installation RC Footing Works for Main Line Manholes of Sewage Network-[Road 11]-[SW-6] | 2d | 2026-04-01 A | 2026-04-06 A | CO-R11.S06-SW-160, PRO-R11-SW-DL-110 FF+3d | 100% |  |
| CO-R11.S06-SW-180 |  | Install Grp Liner Wall Works for Main Line Manholes of Sewage Network-[Road 11]-[SW-6] | 4d | 2026-04-02 A | 2026-07-01 A | CO-R11.S06-SW-170 | 100% |  |
| CO-R11.S06-SW-190 |  | Pouring Grp Liner Wall Works for Main Line Manholes of Sewage Network-[Road 11]-[SW-6] | 1d | 2026-07-01 A | 2026-07-06 A | CO-R11.S06-SW-180 | 100% |  |
| CO-R11.S06-SW-200 |  | Backfilling Works for Main Line Manholes of Sewage Network-[Road 11]-[SW-6] | 4d | 2026-07-01 A | 2026-07-09 A | CO-R11.S06-SW-190 | 100% |  |
| CO-R11.S06-SW-210 |  | Testing Works for Main Line Manholes of Sewage Network-[Road 11]-[SW-6] | 1d | 2026-07-01 A | 2026-07-09 A | CO-R11.S06-SW-200 | 100% |  |
|  | SD | **Storm Drainage Network** |  | 2025-08-05 | 2026-07-07 |  |  |  |
|  | ML | **Main Line Sections** |  | 2025-08-05 | 2025-08-14 |  |  |  |
| CO-R11.S06-SD-100 |  | Trench Excavation and Bedding Works for Main Lines of Storm Drainage Network-[Road 11]-[SW-6] | 10d | 2025-08-05 A | 2025-08-06 A | CO-R11.S06-EW-110, CO-R11.S06-EW-100, CO-R11.S06-SW-130 SS+3d, CO-R11.S06-SW-130 FF+3d, CO-R11.S05-SD-100 | 100% |  |
| CO-R11.S06-SD-120 |  | Pipes Laying Works for Main Lines of Storm Drainage Network-[Road 11]-[SW-6] | 10d | 2025-08-07 A | 2025-08-09 A | PRO-R11-SD-DL-120 FF+3d, CO-R11.S06-SD-100, CO-R11.S05-SD-120 | 100% |  |
| CO-R11.S06-SD-130 |  | Trench Backfilling and Compaction Works for Main Lines of Storm Drainage Network-[Road 11]-[SW-6] | 15d | 2025-08-10 A | 2025-08-14 A | CO-R11.S06-SD-120 SS+3d, CO-R11.S06-SD-120 FF+3d, CO-R10.S04-ES-SD-130, CO-R11.S06-SD-120, CO-R11.S06-SD-220 FF, CO-R10.S04-WE-SD-130 | 100% |  |
|  | MH | **Manholes** |  | 2026-03-31 | 2026-04-06 |  |  |  |
| CO-R11.S06-SD-180 |  | Trench Excavation and Bedding Works for Manholes of Storm Drainage Network-[Road 11]-[SW-6] | 1d | 2026-03-31 A | 2026-03-31 A | CO-R11.S06-SD-120 SS, PRO-SD-1DL-100 | 100% |  |
| CO-R11.S06-SD-190 |  | Install RC Footing Works for Manholes of Storm Drainage Network-[Road 11]-[SW-6] | 1d | 2026-04-01 A | 2026-04-01 A | CO-R11.S06-SD-180 | 100% |  |
| CO-R11.S06-SD-200 |  | Install RC Wall Rings & Slab Works for Manholes of Storm Drainage Network-[Road 11]-[SW-6] | 4d | 2026-04-02 A | 2026-04-05 A | CO-R11.S06-SD-190 | 100% |  |
| CO-R11.S06-SD-210 |  | Testing Works for Manholes of Storm Drainage Network-[Road 11]-[SW-6] | 1d | 2026-04-05 A | 2026-04-06 A | CO-R11.S06-SD-200 | 100% |  |
| CO-R11.S06-SD-220 |  | Backfilling Works for Manholes of Storm Drainage Network-[Road 11]-[SW-6] | 7d | 2026-04-05 A | 2026-04-06 A | CO-R11.S06-SD-210 | 100% |  |
|  | CB | **Catch Basin Sections** |  | 2026-06-14 | 2026-07-07 |  |  |  |
| CO-R11.S06-SD-160 |  | Testing Works for Catch Basins of Storm Drainage Network-[Road 11]-[SW-6] | 6d | 2026-06-14 A | 2026-06-20 A | CO-R11.S06-SD-150, CO-R11.S06-SD-120, PRO-R11-SD-DL-110 FF+3d | 100% |  |
| CO-R11.S06-SD-140 |  | Trench Excavation and Bedding Works for Catch Basins of Storm Drainage Network-[Road 11]-[SW-6] | 7d | 2026-06-24 A | 2026-07-01 A | CO-R11.S06-EW-110, CO-R11.S06-SD-220, CO-R11.S05-SD-140 | 100% |  |
| CO-R11.S06-SD-150 |  | Installation and Pipes Laying Connection Works for Catch Basins of Storm Drainage Network-[Road 11]-[SW-6] | 7d | 2026-06-27 A | 2026-07-01 A | CO-R11.S06-SD-140, PRO-R11-SD-DL-130 FF+3d | 100% |  |
| CO-R11.S06-SD-170 |  | Trench Backfilling and Compaction Works for Catch Basins of Storm Drainage Network-[Road 11]-[SW-6] | 7d | 2026-06-30 A | 2026-07-07 A | CO-R11.S06-SD-160 | 100% |  |
|  | PW | **Potable Water Network** |  | 2025-08-14 | 2027-01-17 |  |  |  |
|  | ML | **Main Line Sections** |  | 2025-08-14 | 2025-08-21 |  |  |  |
| CO-R11.S06-PW-100 |  | Trench Excavation and Bedding Works for Main Lines of Potable Water Network-[Road 11]-[SW-6] | 6d | 2025-08-14 A | 2025-08-16 A | CO-R11.S06-EW-110, CO-R11.S06-EW-100, CO-R11.S06-SD-130 | 100% |  |
| CO-R11.S06-PW-110 |  | Pipes Laying and accessories for Main Lines of Potable Water Network-[Road 11]-[SW-6] | 10d | 2025-08-17 A | 2025-08-18 A | CO-R11.S06-PW-100, CO-R10.S04-ES-PW-110 SS, PRO-R11-PW-DL-100 FF+3d, PRO-R11-PW-DL-110 FF+3d, CO-R10.S04-WE-PW-110 SS | 100% |  |
| CO-R11.S06-PW-130 |  | Trench Backfilling and Compaction Works for Main Lines of Potable Water Network-[Road 11]-[SW-6] | 10d | 2025-08-19 A | 2025-08-21 A | CO-R11.S06-PW-110, CO-R10.S04-ES-PW-130, CO-R11.S06-PW-160 FF, CO-R10.S04-WE-PW-130, CO-R11.S06-PW-210 FF | 100% |  |
|  | VC | **Valve Chamber** |  | 2026-11-10 | 2026-11-16 |  |  |  |
| CO-R11.S06-PW-210 |  | Installation Works for Main Line Valves and Valve Chambers of Potable Water Network-[Road 11]-[SW-6] | 6d | 2026-11-10 | 2026-11-16 | CO-R11.S06-PW-100 |  | -143d |
|  | FH | **Fire Hydrant** |  | 2026-12-24 | 2027-01-17 |  |  |  |
| CO-R11.S06-PW-140 |  | Excavation Works for Fire Hydrants of Potable Water Network-[Road 11]-[SW-6] | 7d | 2026-12-24 | 2026-12-31 | CO-R11.S06-PW-110 SS+3d, CO-R11.S06-PW-110 FF+3d, CO-R11.S06-EW-110 |  | -196d |

| ID | WBS | Task | Duration | Start | Finish | Predecessors | Complete | Total float |
| --- | --- | --- | --- | --- | --- | --- | --- | --- |
| CO-R11.S06-PW-150 |  | Installation Works for Fire Hydrant of Potable Water Network-[Road 11]-[SW-6] | 7d | 2027-01-02 | 2027-01-09 | CO-R11.S06-PW-140, PRO-R11-PW-DL-120 FF+3d |  | -196d |
| CO-R11.S06-PW-160 |  | Trench Backfilling and Compaction Works for Fire Hydrants of Potable Water Network-[Road 11]-[SW-6] | 7d | 2027-01-10 | 2027-01-17 | CO-R11.S06-PW-150 |  | -196d |
|  | SL | **Street Lighting Network** |  | 2026-07-07 | 2027-05-22 |  |  |  |
|  | LP | **Lighting Poles Works** |  | 2026-07-07 | 2027-04-17 |  |  |  |
| CO-R11.S06-SL-100 |  | Foundation Excavation Works for Lighting Poles of Street Lighting Network-[Road 11]-[SW-6] | 12d | 2026-07-07 A | 2026-07-13 A | CO-R11.S06-EW-110, CO-R11.S06-EW-100, CO-R11.S06-PW-130 | 100% |  |
| CO-R11.S06-SL-110 |  | Installation Works for Lighting Poles Foundation of Street Lighting Network-[Road 11]-[SW-6] | 10d | 2026-07-07 A | 2026-07-13 A | CO-R11.S06-SL-100, CO-R10.S04-ES-SL-110, PRO-R11-SL-DL-110 FF+3d, CO-R10.S04-WE-SL-110 | 100% |  |
| CO-R11.S06-SL-120 |  | Installation Works for Lighting Poles of Street Lighting Network-[Road 11]-[SW-6] | 18d | 2026-07-07 A | 2026-07-13 A | CO-R11.S06-SL-110 SS+5d, CO-R11.S06-SL-110 FF+5d, PRO-R11-SL-DL-120 FF+3d | 100% |  |
| CO-R11.S06-SL-210 |  | Backfilling Works for Lighting Poles of Street Lighting Network-[Road 11]-[SW-6] | 15d | 2027-03-23 | 2027-04-08 | CO-R11.S06-SL-120 SS, CO-R11.S06-SL-120 FF, CO-R14.S08-SL-210 |  | -170.5d |
| CO-R11.S06-SL-130 |  | Installation Works for Lighting Fixtures With Drop Wire of Street Lighting Network-[Road 11]-[SW-6] | 18d | 2027-03-28 | 2027-04-17 | CO-R11.S06-SL-120, CO-R10.S04-ES-SL-130, PRO-R11-SL-DL-140 FF+3d, CO-R11.S06-SL-200 FF, CO-R10.S04-WE-SL-130 |  | -170.5d |
| CO-R11.S06-SL-200 |  | Testing Works for Lighting Poles of Street Lighting Network-[Road 11]-[SW-6] | 7d | 2027-04-10 | 2027-04-17 | CO-R11.S06-SL-210, CO-R11.S06-SL-120 |  | -170.5d |
|  | CW | **Cabling Works** |  | 2026-07-09 | 2027-01-30 |  |  |  |
| CO-R11.S06-SL-140 |  | Trench Excavation and Bedding Works for Street Lighting Network-[Road 11]-[SW-6] | 10d | 2026-07-09 A | 2026-07-13 A | CO-R11.S06-EW-110, CO-R11.S06-SL-120, CO-R11.S06-SL-110 | 100% |  |
| CO-R11.S06-SL-150 |  | Cable Laying Works for Street Lighting Network-[Road 11]-[SW-6] | 10d | 2026-07-09 A | 2026-07-13 A | CO-R11.S06-SL-140, PRO-R11-SL-DL-100 FF+3d | 100% |  |
| CO-R11.S06-SL-160 |  | Trench Backfilling and Compaction Works for Street Lighting Network-[Road 11]-[SW-6] | 10d | 2027-01-19 | 2027-01-30 | CO-R11.S06-SL-150 |  | -197d |
|  | DPB | **Distrubution Panel Boards** |  | 2027-04-05 | 2027-05-22 |  |  |  |
| CO-R11.S06-SL-170 |  | Foundation Excavation Works For Panel Boards of Street Lighting Network-[Road 11]-[SW-6] | 12d | 2027-04-05 | 2027-04-18 | CO-R11.S06-EW-110, CO-R10.S04-ES-SL-170, CO-R10.S04-WE-SL-170 |  | -248d |
| CO-R11.S06-SL-180 |  | Installation Works for Panel Board Concrete Foundations of Street Lighting Network-[Road 11]-[SW-6] | 12d | 2027-04-19 | 2027-05-02 | CO-R11.S06-SL-170, CO-R10.S04-ES-SL-180, CO-R10.S04-WE-SL-180 |  | -248d |
| CO-R11.S06-SL-190 |  | Installation Works for Lighting Panel Boards of Street Lighting Network-[Road 11]-[SW-6] | 12d | 2027-05-03 | 2027-05-22 | CO-R11.S06-SL-180, CO-R10.S04-ES-SL-190, CO-R10.S04-WE-SL-190 |  | -248d |
| CO-R11.S06-SL-220 |  | A wall of concrete blocks to install the KWH meter of Street Lighting Network-[Road 11]-[SW-6] | 12d | 2027-05-03 | 2027-05-22 | CO-R11.S06-SL-180 |  | -242d |
|  | TE | **Telecom Network** |  | 2026-07-09 | 2027-05-13 |  |  |  |
|  | PD | **Ducts Works** |  | 2026-07-09 | 2026-07-12 |  |  |  |
| CO-R11.S06-TE-100 |  | Trench Excavation and Bedding Works for Ducts of Telecom Network-[Road 11]-[SW-6] | 3d | 2026-07-09 A | 2026-07-12 A | CO-R11.S06-SL-160, CO-R11.S06-EW-110, CO-R11.S05-TE-100 | 100% |  |
| CO-R11.S06-TE-110 |  | Pipes Laying Works for Ducts of Telecom Network-[Road 11]-[SW-6] | 7d | 2026-07-09 A | 2026-07-12 A | CO-R11.S06-TE-100, CO-R10.S04-ES-TE-110, PRO-R11-TE-DL-100 FF+3d, CO-R10.S04-WE-TE-110 | 100% |  |
| CO-R11.S06-TE-120 |  | Pouring Plain Concrete Above Ducts of Telecom Network-[Road 11]-[SW-6] | 7d | 2026-07-09 A | 2026-07-12 A | CO-R11.S06-TE-110, CO-R10.S04-ES-TE-120, CO-R10.S04-WE-TE-120 | 100% |  |
| CO-R11.S06-TE-130 |  | Trench Backfilling and Compaction Works for Ducts of Telecom Network-[Road 11]-[SW-6] | 7d | 2026-07-09 A | 2026-07-12 A | CO-R11.S06-TE-120, CO-R10.S04-ES-TE-130, CO-R10.S04-WE-TE-130 | 100% |  |
|  | MH | **Manholes Works** |  | 2027-04-20 | 2027-05-13 |  |  |  |
| CO-R11.S06-TE-140 |  | Excavation Works for Manholes of Telecom Network-[Road 11]-[SW-6] | 7d | 2027-04-20 | 2027-04-27 | CO-R10.S04-ES-TE-140, CO-R11.S05-TE-140 SS, CO-R11.S06-TE-100 SS+6d, CO-R11.S06-TE-100 FF+6d, CO-R10.S04-WE-TE-140 |  | -227d |
| CO-R11.S06-TE-150 |  | Installation Works for Manholes of Telecom Network-[Road 11]-[SW-6] | 7d | 2027-04-28 | 2027-05-05 | CO-R11.S06-TE-140, CO-R10.S04-ES-TE-150, PRO-R11-TE-DL-110 FF+3d, CO-R10.S04-WE-TE-150 |  | -227d |
| CO-R11.S06-TE-160 |  | Backfilling Works for Manholes of Telecom Network-[Road 11]-[SW-6] | 7d | 2027-05-06 | 2027-05-13 | CO-R11.S06-TE-150, CO-R10.S04-ES-TE-160, CO-R10.S04-WE-TE-160 |  | -227d |
|  | MV | **Medium Voltage Network** |  | 2026-07-08 | 2026-07-13 |  |  |  |
|  | CW | **Cabling Works** |  | 2026-07-08 | 2026-07-13 |  |  |  |
| CO-R11.S06-MV-100 |  | Trench Excavation and Bedding Works for Medium Voltage Network-[Road 11]-[SW-6] | 12d | 2026-07-08 A | 2026-07-13 A | CO-R11.S06-SD-170 SS+3d, CO-R11.S06-SD-170 FF+3d, CO-R11.S06-EW-110, CO-R11.S06-TE-130 SS+3d, CO-R11.S06-TE-130 FF+3d, CO-R11.S05-MV-100 SS | 100% |  |
| CO-R11.S06-MV-110 |  | Cable Laying Works for Medium Voltage Network-[Road 11]-[SW-6] | 12d | 2026-07-08 A | 2026-07-13 A | CO-R11.S06-MV-100 SS+3d, CO-R11.S06-MV-100 FF+3d, PRO-R11-MV-DL-100 FF+3d | 100% |  |
| CO-R11.S06-MV-120 |  | Trench Backfilling and Compaction Works for Medium Voltage Network-[Road 11]-[SW-6] | 12d | 2026-07-08 A | 2026-07-13 A | CO-R11.S06-MV-110 SS+3d, CO-R11.S06-MV-110 FF+3d, CO-R11.S06-PW-130 FF+3d | 100% |  |
|  | RD | **Road Works** |  | 2026-04-01 | 2026-09-10 |  |  |  |
|  | RD | **Pre-Bituminous Construction** |  | 2026-04-01 | 2026-04-16 |  |  |  |
| CO-R11.S06-RD-P-100 |  | Capping and Subgrade Layer for Road Works-[Road 11]-[SW-6] | 12d | 2026-04-01 A | 2026-04-07 A | CO-R11.S06-SD-130, CO-R11.S06-PW-130, CO-R11.S06-PW-160, CO-R11.S06-SL-160 SS+3d, CO-R11.S06-SL-160 FF+3d, PRO-R11-RD-DL-100 FF+3d, CO-R11.S06-TE-130, CO-R11.S06-TE-160, CO-R11.S06-MV-120 SS+3d, CO-R11.S06-MV-120 FF+3d, CO-R11.S06-SW-130 | 100% |  |
| CO-R11.S06-RD-P-110 |  | Aggregate Base Course Layer for Road Works-[Road 11]-[SW-6] | 18d | 2026-04-08 A | 2026-04-16 A | CO-R11.S06-RD-P-100 SS+3d, CO-R11.S06-RD-P-100 FF+3d, CO-R11.S06-SD-170 SS+3d, CO-R11.S06-SD-170 FF+3d, CO-R10.S04-ES-RD-110, PRO-R11-RD-DL-110 FF+3d, CO-R10.S04-WE-RD-110 | 100% |  |
|  | LS | **Pavement Works** |  | 2026-06-01 | 2026-09-10 |  |  |  |
| CO-R11.S06-RD-P-120 |  | Fixing of Curbstone for Sidewalks Pavement-[Road 11]-[SW-6] | 18d | 2026-06-01 A | 2026-08-31 A | PRO-R11-RD-DL-130 FF+3d, CO-R10.S04-ES-RD-120, CO-R11.S06-RD-P-110 SS+3d, CO-R11.S06-RD-P-110 FF+3d, CO-R10.S04-WE-RD-120 | 100% |  |
| CO-R11.S06-RD-P-130 |  | Fixing of Interlock Tiles for Sidewalks Pavement-[Road 11]-[SW-6] | 10d | 2026-08-25 A | 2026-09-10 A | PRO-R11-RD-DL-120 FF+3d, CO-R11.S06-RD-P-120 SS+3d, CO-R11.S06-RD-P-120 FF+3d, CO-R10.S04-ES-RD-130, CO-R11-PW-TF-100, CO-R11-PW-TF-110, CO-R11-PW-TF-120, CO-R11-SW-TF-100, CO-R11-SW-TF-110, CO-R11-SW-TF-130, CO-R11-SD-TF-100, CO-R11-SD-TF-120, CO-R11-SL-TF-160, CO-R11-SL-TF-170, CO-R11-IR-TF-130, CO-R11-MV-TF-160, CO-R10.S04-WE-RD-130 | 100% |  |
|  | 6 | **Road 14 Local 1 ( 584 LM )** |  | 2025-04-17 | 2027-08-14 |  |  |  |
|  | SW_7 | **SW_7** |  | 2025-04-17 | 2027-08-14 |  |  |  |
|  | EW | **Earthworks** |  | 2025-04-17 | 2025-05-03 |  |  |  |
|  | EW | **Earthworks** |  | 2025-04-17 | 2025-05-03 |  |  |  |
| CO-R14.S07-EW-100 |  | Roadway Excavation Works Upto Design Level for Earthworks-[Road 14]-[SW-7] | 10d | 2025-04-17 A | 2025-04-27 A | ENG-MS-RD-A-10, ENG-SH-RD-A-100, CO-R09.S02-EW-110 | 100% |  |
| CO-R14.S07-EW-110 |  | Embankments Works Upto Design Level for Earthworks-[Road 14]-[SW-7] | 10d | 2025-04-19 A | 2025-05-03 A | CO-R14.S07-EW-100 SS+2d, CO-R14.S07-EW-100 FF+2d, CO-R14.S07-EW-100, ENG-MS-RD-A-10, ENG-SH-RD-A-100 | 100% |  |
|  | SW | **Sewage Network** |  | 2025-08-10 | 2026-10-28 |  |  |  |
|  | ML | **Main Line Sections** |  | 2025-08-10 | 2025-08-21 |  |  |  |
| CO-R14.S07-SW-100 |  | Trench Excavation and Bedding Works for Main Lines of Sewage Network-[Road 14]-[SW-7] | 12d | 2025-08-10 A | 2025-08-14 A | CO-R14.S07-EW-110, ENG-MS-SW-ML-A-110, ENG-SH-SW-ML-A-110, CO-R09.S02-SW-100 | 100% |  |
| CO-R14.S07-SW-120 |  | Pipes Laying Works for Main Lines of Sewage Network-[Road 14]-[SW-7] | 12d | 2025-08-16 A | 2025-08-18 A | CO-R14.S07-SW-100, PRO-R14-SW-DL-100 FF+3d | 100% |  |
| CO-R14.S07-SW-130 |  | Trench Backfilling and Compaction Works for Main Lines of Sewage Network-[Road 14]-[SW-7] | 12d | 2025-08-19 A | 2025-08-21 A | ENG-SH-SW-ML-A-110 FF, ENG-MS-SW-ML-A-110 FF, CO-R14.S07-SW-120, CO-R14.S07-SW-210 FF | 100% |  |
|  | 1 | **Manholes** |  | 2025-08-19 | 2026-10-28 |  |  |  |
| CO-R14.S07-SW-160 |  | Excavation Works for Main Line Manholes of Sewage Network-[Road 14]-[SW-7] | 1d | 2025-08-19 A | 2025-08-21 A | CO-R14.S07-SW-120 SS | 100% |  |
| CO-R14.S07-SW-170 |  | Installation RC Footing Works for Main Line Manholes of Sewage Network-[Road 14]-[SW-7] | 2d | 2025-08-23 A | 2025-08-25 A | CO-R14.S07-SW-160, PRO-R14-SW-DL-110 FF+3d | 100% |  |
| CO-R14.S07-SW-180 |  | Install Grp Liner Wall Works for Main Line Manholes of Sewage Network-[Road 14]-[SW-7] | 4d | 2025-08-26 A | 2025-08-28 A | CO-R14.S07-SW-170 | 100% |  |
| CO-R14.S07-SW-200 |  | Backfilling Works for Main Line Manholes of Sewage Network-[Road 14]-[SW-7] | 4d | 2025-08-30 A | 2025-08-31 A | CO-R14.S07-SW-190 | 100% |  |
| CO-R14.S07-SW-190 |  | Pouring Grp Liner Wall Works for Main Line Manholes of Sewage Network-[Road 14]-[SW-7] | 1d | 2026-07-01 A | 2026-07-07 A | CO-R14.S07-SW-180 | 100% |  |
| CO-R14.S07-SW-210 |  | Testing Works for Main Line Manholes of Sewage Network-[Road 14]-[SW-7] | 1d | 2026-10-28 A | 2026-10-28 A | CO-R14.S07-SW-200 | 100% |  |
|  | SD | **Storm Drainage Network** |  | 2025-08-10 | 2026-06-04 |  |  |  |
|  | ML | **Main Line Sections** |  | 2025-08-10 | 2025-08-28 |  |  |  |
| CO-R14.S07-SD-100 |  | Trench Excavation and Bedding Works for Main Lines of Storm Drainage Network-[Road 14]-[SW-7] | 10d | 2025-08-10 A | 2025-08-14 A | ENG-SH-SD-ML-A-110, CO-R14.S07-EW-110, CO-R14.S07-EW-100, CO-R14.S07-SW-130 SS+3d, CO-R14.S07-SW-130 FF+3d, ENG-MS-SD-ML-A-110, CO-R09.S02-SD-100 | 100% |  |
| CO-R14.S07-SD-120 |  | Pipes Laying Works for Main Lines of Storm Drainage Network-[Road 14]-[SW-7] | 10d | 2025-08-16 A | 2025-08-18 A | CO-R14.S07-SD-100, CO-R09.S02-SD-120 | 100% |  |
| CO-R14.S07-SD-130 |  | Trench Backfilling and Compaction Works for Main Lines of Storm Drainage Network-[Road 14]-[SW-7] | 15d | 2025-08-27 A | 2025-08-28 A | CO-R14.S07-SD-120 SS+3d, CO-R14.S07-SD-120 FF+3d, ENG-SH-SD-ML-A-110 FF, CO-R11.S05-SD-130, ENG-MS-SD-ML-A-110 FF, CO-R14.S07-SD-120, CO-R14.S07-SD-220 FF | 100% |  |
|  | MH | **Manholes** |  | 2025-08-16 | 2026-06-04 |  |  |  |
| CO-R14.S07-SD-180 |  | Trench Excavation and Bedding Works for Manholes of Storm Drainage Network-[Road 14]-[SW-7] | 1d | 2025-08-16 A | 2025-08-17 A | PRO-SD-1DL-100, CO-R14.S07-SD-100 | 100% |  |
| CO-R14.S07-SD-190 |  | Install RC Footing Works for Manholes of Storm Drainage Network-[Road 14]-[SW-7] | 1d | 2025-08-18 A | 2025-08-20 A | CO-R14.S07-SD-180 | 100% |  |
| CO-R14.S07-SD-200 |  | Install RC Wall Rings & Slab Works for Manholes of Storm Drainage Network-[Road 14]-[SW-7] | 4d | 2025-08-21 A | 2025-08-23 A | CO-R14.S07-SD-190 | 100% |  |
| CO-R14.S07-SD-220 |  | Backfilling Works for Manholes of Storm Drainage Network-[Road 14]-[SW-7] | 7d | 2025-08-24 A | 2025-08-26 A | CO-R14.S07-SD-210 | 100% |  |
| CO-R14.S07-SD-210 |  | Testing Works for Manholes of Storm Drainage Network-[Road 14]-[SW-7] | 1d | 2026-06-04 A | 2026-06-04 A | CO-R14.S07-SD-200 | 100% |  |

| ID | WBS | Task | Duration | Start | Finish | Predecessors | Complete | Total float |
| --- | --- | --- | --- | --- | --- | --- | --- | --- |
|  | CB | **Catch Basin Sections** |  | 2025-12-01 | 2025-12-08 |  |  |  |
| CO-R14.S07-SD-140 |  | Trench Excavation and Bedding Works for Catch Basins of Storm Drainage Network-[Road 14]-[SW-7] | 6d | 2025-12-01 A | 2025-12-08 A | CO-R14.S07-EW-110, ENG-SH-SD-CB-A-110, ENG-MS-SD-CB-A-110, CO-R14.S07-SD-220, CO-R09.S02-SD-140 | 100% |  |
| CO-R14.S07-SD-150 |  | Installation and Pipes Laying Connection Works for Catch Basins of Storm Drainage Network-[Road 14]-[SW-7] | 7d | 2025-12-01 A | 2025-12-08 A | CO-R14.S07-SD-140 | 100% |  |
| CO-R14.S07-SD-160 |  | Testing Works for Catch Basins of Storm Drainage Network-[Road 14]-[SW-7] | 4d | 2025-12-01 A | 2025-12-08 A | CO-R14.S07-SD-150 FS+3d, CO-R14.S07-SD-120 | 100% |  |
| CO-R14.S07-SD-170 |  | Trench Backfilling and Compaction Works for Catch Basins of Storm Drainage Network-[Road 14]-[SW-7] | 7d | 2025-12-01 A | 2025-12-08 A | CO-R14.S07-SD-160 | 100% |  |
|  | IR | **Irrigation Network** |  | 2025-10-11 | 2026-12-19 |  |  |  |
|  | ML | **Main Line Pipes** |  | 2025-10-11 | 2026-12-19 |  |  |  |
| CO-R14.S07-IR-130 |  | Trench Backfilling and Compaction Works for Main Lines of Irrigation Network-[Road 14]-[SW-7] | 10d | 2025-10-11 A | 2025-10-12 A | CO-R14.S07-IR-120, CO-R14.S07-IR-110 | 100% |  |
| CO-R14.S07-IR-100 |  | Trench Excavation and Bedding Works for Main Lines of Irrigation Network-[Road 14]-[SW-7] | 7d | 2025-10-13 A | 2025-10-13 A | ENG-SH-IR-ML-A-110, CO-R14.S07-EW-110, CO-R14.S07-SD-170, ENG-MS-IR-ML-A-110 | 100% |  |
| CO-R14.S07-IR-110 |  | Pipes Laying Works for Main Lines of Irrigation Network-[Road 14]-[SW-7] | 10d | 2025-10-13 A | 2025-10-13 A | CO-R14.S07-IR-100, CO-R14.S07-IR-100 FF+3d, PRO-R11-IR-DL-140 FF+3d, PRO-R14-IR-DL-100 FS+3d | 100% |  |
| CO-R14.S07-IR-120 |  | Installation Works for Main Line Valves of Irrigation Network-[Road 14]-[SW-7] | 7d | 2026-12-12 | 2026-12-19 | CO-R14.S07-IR-110, PRO-R11-IR-DL-150 FF+3d, PRO-R14-IR-DL-110 |  | -167d |
|  | SL | **Street Lighting Network** |  | 2026-09-29 | 2027-03-28 |  |  |  |
|  | LP | **Lighting Poles Works** |  | 2026-10-06 | 2027-03-28 |  |  |  |
| CO-R14.S07-SL-100 |  | Foundation Excavation Works for Lighting Poles of Street Lighting Network-[Road 14]-[SW-7] | 12d | 2026-10-06 A | 2026-10-12 A | CO-R14.S07-EW-110, ENG-SH-SL-A-110, CO-R14.S07-EW-100, ENG-MS-SL-A-110, CO-R14.S07-IR-130 | 100% |  |
| CO-R14.S07-SL-110 |  | Installation Works for Lighting Poles Foundation of Street Lighting Network-[Road 14]-[SW-7] | 12d | 2026-10-06 A | 2026-10-12 A | CO-R14.S07-SL-100 | 100% |  |
| CO-R14.S07-SL-120 |  | Installation Works for Lighting Poles of Street Lighting Network-[Road 14]-[SW-7] | 17.5d | 2026-10-06 A | 2026-10-12 A | CO-R14.S07-SL-110 | 100% |  |
| CO-R14.S07-SL-210 |  | Backfilling Works for Lighting Poles of Street Lighting Network-[Road 14]-[SW-7] | 12d | 2026-10-06 A | 2026-10-12 A | CO-R14.S07-SL-120 SS, CO-R14.S07-SL-120 FF, CO-R09.S02-SL-210 | 100% |  |
| CO-R14.S07-SL-130 |  | Installation Works for Lighting Fixtures With Drop Wire of Street Lighting Network-[Road 14]-[SW-7] | 18d | 2027-03-04 | 2027-03-28 | CO-R14.S07-SL-120 SS+5d, CO-R14.S07-SL-120 FF+5d, CO-R14.S07-SL-200 FF |  | -184d |
| CO-R14.S07-SL-200 |  | Testing Works for Lighting Poles of Street Lighting Network-[Road 14]-[SW-7] | 5d | 2027-03-23 | 2027-03-28 | CO-R14.S07-SL-210, CO-R14.S07-SL-120 |  | -184d |
|  | CW | **Cabling Works** |  | 2026-09-29 | 2026-10-04 |  |  |  |
| CO-R14.S07-SL-140 |  | Trench Excavation and Bedding Works for Street Lighting Network-[Road 14]-[SW-7] | 10d | 2026-09-29 A | 2026-10-04 A | ENG-SH-SL-A-110, CO-R14.S07-IR-130, CO-R14.S07-EW-110, CO-R14.S07-SL-120, CO-R14.S07-SL-110, ENG-MS-SL-A-110 | 100% |  |
| CO-R14.S07-SL-150 |  | Cable Laying Works for Street Lighting Network-[Road 14]-[SW-7] | 10d | 2026-09-29 A | 2026-10-04 A | CO-R14.S07-SL-140 | 100% |  |
| CO-R14.S07-SL-160 |  | Trench Backfilling and Compaction Works for Street Lighting Network-[Road 14]-[SW-7] | 10d | 2026-09-29 A | 2026-10-04 A | CO-R14.S07-SL-150, CO-R14.S07-IR-130 | 100% |  |
|  | DPB | **Distrubution Panel Boards** |  | 2026-11-03 | 2026-11-30 |  |  |  |
| CO-R14.S07-SL-170 |  | Foundation Excavation Works For Panel Boards of Street Lighting Network-[Road 14]-[SW-7] | 18d | 2026-11-03 | 2026-11-23 | CO-R14.S07-EW-110, ENG-SH-SL-A-110, ENG-MS-SL-A-110 |  | -91d |
| CO-R14.S07-SL-180 |  | Installation Works for Panel Board Concrete Foundations of Street Lighting Network-[Road 14]-[SW-7] | 18d | 2026-11-07 | 2026-11-26 | CO-R14.S07-SL-170 SS+3d, CO-R14.S07-SL-170 FF+3d |  | -91d |
| CO-R14.S07-SL-220 |  | A wall of concrete blocks to install the KWH meter of Street Lighting Network-[Road 14]-[SW-7] | 18d | 2026-11-07 | 2026-11-26 | CO-R14.S07-SL-180 SS, CO-R14.S07-SL-180 FF |  | -88d |
| CO-R14.S07-SL-190 |  | Installation Works for Lighting Panel Boards of Street Lighting Network-[Road 14]-[SW-7] | 18d | 2026-11-10 | 2026-11-30 | CO-R14.S07-SL-180 SS+3d, CO-R14.S07-SL-180 FF+3d |  | -91d |
|  | TE | **Telecom Network** |  | 2027-03-24 | 2027-05-13 |  |  |  |
|  | PD | **Ducts Works** |  | 2027-03-24 | 2027-05-05 |  |  |  |
| CO-R14.S07-TE-100 |  | Trench Excavation and Bedding Works for Ducts of Telecom Network-[Road 14]-[SW-7] | 3d | 2027-03-24 | 2027-03-27 | CO-R14.S07-IR-130 SS+3d, CO-R14.S07-IR-130 FF+3d, CO-R14.S07-SL-160 SS+5d, CO-R14.S07-SL-160 FF+5d, CO-R14.S07-EW-110, CO-R09.S02-TE-100 |  | -244d |
| CO-R14.S07-TE-110 |  | Pipes Laying Works for Ducts of Telecom Network-[Road 14]-[SW-7] | 7d | 2027-04-12 | 2027-04-19 | CO-R14.S07-TE-100, CO-R11.S05-TE-110 |  | -207d |
| CO-R14.S07-TE-120 |  | Pouring Plain Concrete Above Ducts of Telecom Network-[Road 14]-[SW-7] | 7d | 2027-04-20 | 2027-04-27 | CO-R14.S07-TE-110, CO-R11.S05-TE-120 |  | -207d |
| CO-R14.S07-TE-130 |  | Trench Backfilling and Compaction Works for Ducts of Telecom Network-[Road 14]-[SW-7] | 7d | 2027-04-28 | 2027-05-05 | CO-R14.S07-TE-120, CO-R11.S05-TE-130 |  | -207d |
|  | MH | **Manholes Works** |  | 2027-04-20 | 2027-05-13 |  |  |  |
| CO-R14.S07-TE-140 |  | Excavation Works for Manholes of Telecom Network-[Road 14]-[SW-7] | 7d | 2027-04-20 | 2027-04-27 | CO-R11.S05-TE-140, CO-R14.S07-TE-100 |  | -227d |
| CO-R14.S07-TE-150 |  | Installation Works for Manholes of Telecom Network-[Road 14]-[SW-7] | 7d | 2027-04-28 | 2027-05-05 | CO-R14.S07-TE-140, CO-R11.S05-TE-150 |  | -214d |
| CO-R14.S07-TE-160 |  | Backfilling Works for Manholes of Telecom Network-[Road 14]-[SW-7] | 7d | 2027-05-06 | 2027-05-13 | CO-R14.S07-TE-150, CO-R11.S05-TE-160 |  | -214d |
|  | RD | **Road Works** |  | 2026-08-18 | 2027-08-14 |  |  |  |
|  | RD | **Pre-Bituminous Construction** |  | 2026-08-18 | 2026-09-09 |  |  |  |
| CO-R14.S07-RD-P-100 |  | Capping and Subgrade Layer for Road Works-[Road 14]-[SW-7] | 18d | 2026-08-18 A | 2026-08-23 A | ENG-SH-RD-A-100, CO-R14.S07-SD-130, CO-R14.S07-SW-130, CO-R14.S07-SL-160 SS+3d, CO-R14.S07-SL-160 FF+3d, ENG-MS-RD-A-10, CO-R14.S07-TE-130, CO-R14.S07-TE-160 | 100% |  |
| CO-R14.S07-RD-P-110 |  | Aggregate Base Course Layer for Road Works-[Road 14]-[SW-7] | 18d | 2026-09-05 A | 2026-09-09 A | CO-R14.S07-RD-P-100 SS+3d, CO-R14.S07-RD-P-100 FF+3d, CO-R14.S07-SD-170 SS+3d, CO-R14.S07-SD-170 FF+3d, CO-R11.S05-RD-P-110 | 100% |  |
|  | LS | **Pavement Works** |  | 2026-08-25 | 2027-08-14 |  |  |  |
| CO-R14.S07-RD-P-120 |  | Fixing of Curbstone for Sidewalks Pavement-[Road 14]-[SW-7] | 18d | 2026-08-25 A | 2026-08-31 A | CO-R11.S05-RD-P-120, CO-R14.S07-RD-P-110 SS+3d, CO-R14.S07-RD-P-110 FF+3d | 100% |  |
| CO-R14.S07-RD-P-130 |  | Fixing of Interlock Tiles for Sidewalks Pavement-[Road 14]-[SW-7] | 12d | 2027-08-01 | 2027-08-14 | CO-R14.S07-RD-P-120 SS+3d, CO-R14.S07-RD-P-120 FF+3d, CO-R11.S05-RD-P-130, CO-R14-PW-TF-100, CO-R14-PW-TF-110, CO-R14-PW-TF-120, CO-R14-SW-TF-100, CO-R14-SW-TF-110, CO-R14-SW-TF-130, CO-R11-SL-TF-180, CO-R11-SL-TF-190, CO-R11-IR-TF-140, CO-R11-MV-TF-180 |  | -252d |
|  | SW_8 | **SW_8** |  | 2025-04-23 | 2027-08-14 |  |  |  |
|  | EW | **Earthworks** |  | 2025-04-23 | 2025-05-03 |  |  |  |
|  | EW | **Earthworks** |  | 2025-04-23 | 2025-05-03 |  |  |  |
| CO-R14.S08-EW-100 |  | Roadway Excavation Works Upto Design Level for Earthworks-[Road 14]-[SW-8] | 12d | 2025-04-23 A | 2025-04-27 A | ENG-MS-RD-A-10, ENG-SH-RD-A-100, CO-R14.S07-EW-100 | 100% |  |
| CO-R14.S08-EW-110 |  | Embankments Works Upto Design Level for Earthworks-[Road 14]-[SW-8] | 12d | 2025-04-26 A | 2025-05-03 A | CO-R14.S08-EW-100, ENG-MS-RD-A-10, ENG-SH-RD-A-100 | 100% |  |
|  | SW | **Sewage Network** |  | 2025-08-02 | 2026-10-28 |  |  |  |
|  | ML | **Main Line Sections** |  | 2025-08-02 | 2025-08-06 |  |  |  |
| CO-R14.S08-SW-100 |  | Trench Excavation and Bedding Works for Main Lines of Sewage Network-[Road 14]-[SW-8] | 12d | 2025-08-02 A | 2025-08-03 A | CO-R14.S08-EW-110, ENG-MS-SW-ML-A-110, ENG-SH-SW-ML-A-110, CO-R14.S07-SW-100 | 100% |  |
| CO-R14.S08-SW-120 |  | Pipes Laying Works for Main Lines of Sewage Network-[Road 14]-[SW-8] | 12d | 2025-08-04 A | 2025-08-05 A | CO-R14.S08-SW-100, PRO-R14-SW-DL-100 FF+3d | 100% |  |
| CO-R14.S08-SW-130 |  | Trench Backfilling and Compaction Works for Main Lines of Sewage Network-[Road 14]-[SW-8] | 12d | 2025-08-06 A | 2025-08-06 A | CO-R14.S08-SW-120, CO-R14.S08-SW-210 FF | 100% |  |
|  | 1 | **Manholes** |  | 2025-08-10 | 2026-10-28 |  |  |  |
| CO-R14.S08-SW-160 |  | Excavation Works for Main Line Manholes of Sewage Network-[Road 14]-[SW-8] | 1d | 2025-08-10 A | 2025-08-13 A | CO-R14.S08-SW-120 SS | 100% |  |
| CO-R14.S08-SW-170 |  | Installation RC Footing Works for Main Line Manholes of Sewage Network-[Road 14]-[SW-8] | 2d | 2025-08-14 A | 2025-08-17 A | CO-R14.S08-SW-160, PRO-R14-SW-DL-110 FF+3d | 100% |  |
| CO-R14.S08-SW-180 |  | Install Grp Liner Wall Works for Main Line Manholes of Sewage Network-[Road 14]-[SW-8] | 4d | 2025-08-18 A | 2025-08-19 A | CO-R14.S08-SW-170 | 100% |  |
| CO-R14.S08-SW-200 |  | Backfilling Works for Main Line Manholes of Sewage Network-[Road 14]-[SW-8] | 4d | 2025-08-20 A | 2025-08-21 A | CO-R14.S08-SW-190 | 100% |  |
| CO-R14.S08-SW-190 |  | Pouring Grp Liner Wall Works for Main Line Manholes of Sewage Network-[Road 14]-[SW-8] | 1d | 2026-07-01 A | 2026-07-04 A | CO-R14.S08-SW-180 | 100% |  |
| CO-R14.S08-SW-210 |  | Testing Works for Main Line Manholes of Sewage Network-[Road 14]-[SW-8] | 1d | 2026-10-28 A | 2026-10-28 A | CO-R14.S08-SW-200 | 100% |  |
|  | SD | **Storm Drainage Network** |  | 2025-08-06 | 2026-07-13 |  |  |  |
|  | ML | **Main Line Sections** |  | 2025-08-06 | 2025-08-08 |  |  |  |
| CO-R14.S08-SD-100 |  | Trench Excavation and Bedding Works for Main Lines of Storm Drainage Network-[Road 14]-[SW-8] | 10d | 2025-08-06 A | 2025-08-06 A | CO-R14.S08-EW-110, CO-R14.S08-EW-100, CO-R14.S08-SW-130 SS+3d, CO-R14.S08-SW-130 FF+3d, CO-R14.S07-SD-100 | 100% |  |
| CO-R14.S08-SD-120 |  | Pipes Laying Works for Main Lines of Storm Drainage Network-[Road 14]-[SW-8] | 10d | 2025-08-07 A | 2025-08-07 A | PRO-R14-SD-DL-120 FF+3d, CO-R14.S08-SD-100, CO-R14.S07-SD-120 | 100% |  |
| CO-R14.S08-SD-130 |  | Trench Backfilling and Compaction Works for Main Lines of Storm Drainage Network-[Road 14]-[SW-8] | 15d | 2025-08-08 A | 2025-08-08 A | CO-R14.S08-SD-120 SS+3d, CO-R14.S08-SD-120 FF+3d, CO-R11.S06-SD-130, CO-R14.S08-SD-120, CO-R14.S08-SD-220 FF | 100% |  |
|  | MH | **Manholes** |  | 2025-10-09 | 2026-06-04 |  |  |  |
| CO-R14.S08-SD-180 |  | Trench Excavation and Bedding Works for Manholes of Storm Drainage Network-[Road 14]-[SW-8] | 1d | 2025-10-09 A | 2025-10-11 A | CO-R14.S08-SD-120 SS, PRO-SD-1DL-100 | 100% |  |
| CO-R14.S08-SD-190 |  | Install RC Footing Works for Manholes of Storm Drainage Network-[Road 14]-[SW-8] | 1d | 2025-10-11 A | 2025-10-12 A | CO-R14.S08-SD-180 | 100% |  |

| ID | WBS | Task | Duration | Start | Finish | Predecessors | Complete | Total float |
| --- | --- | --- | --- | --- | --- | --- | --- | --- |
| CO-R14.S08-SD-200 |  | Install RC Wall Rings & Slab Works for Manholes of Storm Drainage Network-[Road 14]-[SW-8] | 4d | 2025-10-12 A | 2025-10-13 A | CO-R14.S08-SD-190 | 100% |  |
| CO-R14.S08-SD-220 |  | Backfilling Works for Manholes of Storm Drainage Network-[Road 14]-[SW-8] | 7d | 2025-10-14 A | 2025-10-14 A | CO-R14.S08-SD-210 | 100% |  |
| CO-R14.S08-SD-210 |  | Testing Works for Manholes of Storm Drainage Network-[Road 14]-[SW-8] | 1d | 2026-06-04 A | 2026-06-04 A | CO-R14.S08-SD-200 | 100% |  |
|  | CB | **Catch Basin Sections** |  | 2026-06-04 | 2026-07-13 |  |  |  |
| CO-R14.S08-SD-140 |  | Trench Excavation and Bedding Works for Catch Basins of Storm Drainage Network-[Road 14]-[SW-8] | 6d | 2026-06-04 A | 2026-07-13 A | CO-R14.S08-EW-110, CO-R14.S08-SD-220, CO-R14.S07-SD-140 | 100% |  |
| CO-R14.S08-SD-150 |  | Installation and Pipes Laying Connection Works for Catch Basins of Storm Drainage Network-[Road 14]-[SW-8] | 7d | 2026-06-04 A | 2026-07-13 A | CO-R14.S08-SD-140, PRO-R14-SD-DL-130 FF+3d | 100% |  |
| CO-R14.S08-SD-160 |  | Testing Works for Catch Basins of Storm Drainage Network-[Road 14]-[SW-8] | 4d | 2026-06-04 A | 2026-07-13 A | CO-R14.S08-SD-150, CO-R14.S08-SD-120, PRO-R14-SD-DL-110 FF+3d | 100% |  |
| CO-R14.S08-SD-170 |  | Trench Backfilling and Compaction Works for Catch Basins of Storm Drainage Network-[Road 14]-[SW-8] | 7d | 2026-06-04 A | 2026-07-13 A | CO-R14.S08-SD-160 | 100% |  |
|  | PW | **Potable Water Network** |  | 2025-08-09 | 2027-01-17 |  |  |  |
|  | ML | **Main Line Sections** |  | 2025-08-09 | 2025-08-11 |  |  |  |
| CO-R14.S08-PW-100 |  | Trench Excavation and Bedding Works for Main Lines of Potable Water Network-[Road 14]-[SW-8] | 10d | 2025-08-09 A | 2025-08-09 A | CO-R14.S08-EW-110, CO-R14.S08-EW-100, CO-R14.S08-SD-130 | 100% |  |
| CO-R14.S08-PW-110 |  | Pipes Laying and accessories for Main Lines of Potable Water Network-[Road 14]-[SW-8] | 10d | 2025-08-10 A | 2025-08-10 A | CO-R14.S08-PW-100, CO-R11.S06-PW-110, PRO-R14-PW-DL-100 FF+3d, PRO-R14-PW-DL-110 FF+3d | 100% |  |
| CO-R14.S08-PW-130 |  | Trench Backfilling and Compaction Works for Main Lines of Potable Water Network-[Road 14]-[SW-8] | 10d | 2025-08-11 A | 2025-08-11 A | CO-R14.S08-PW-110, CO-R11.S06-PW-130, CO-R14.S08-PW-220 FF, CO-R14.S08-PW-160 FF | 100% |  |
|  | VC | **Valve Chamber** |  | 2026-06-07 | 2026-06-17 |  |  |  |
| CO-R14.S08-PW-170 |  | Excavation Works for Main Line Valves and Valve Chambers of Potable Water Network-[Road 14]-[SW-8] | 1d | 2026-06-07 A | 2026-06-17 A | CO-R14.S08-PW-110 | 100% |  |
| CO-R14.S08-PW-180 |  | RC Footing Works for Main Line Valves and Valve Chambers of Potable Water Network-[Road 14]-[SW-8] | 3d | 2026-06-07 A | 2026-06-17 A | CO-R14.S08-PW-170 | 100% |  |
| CO-R14.S08-PW-190 |  | RC Wall Works for Main Line Valves and Valve Chambers of Potable Water Network-[Road 14]-[SW-8] | 6d | 2026-06-07 A | 2026-06-17 A | CO-R14.S08-PW-180 | 100% |  |
| CO-R14.S08-PW-200 |  | RC Slab Works for Main Line Valves and Valve Chambers of Potable Water Network-[Road 14]-[SW-8] | 2d | 2026-06-07 A | 2026-06-17 A | CO-R14.S08-PW-190 | 100% |  |
| CO-R14.S08-PW-210 |  | Insulation Works for Main Line Valves and Valve Chambers of Potable Water Network-[Road 14]-[SW-8] | 1d | 2026-06-07 A | 2026-06-17 A | CO-R14.S08-PW-200 | 100% |  |
| CO-R14.S08-PW-220 |  | Backfilling Works for Main Line Valves and Valve Chambers of Potable Water Network-[Road 14]-[SW-8] | 3d | 2026-06-07 A | 2026-06-17 A | CO-R14.S08-PW-210 | 100% |  |
|  | FH | **Fire Hydrant** |  | 2026-12-24 | 2027-01-17 |  |  |  |
| CO-R14.S08-PW-140 |  | Excavation Works for Fire Hydrants of Potable Water Network-[Road 14]-[SW-8] | 7d | 2026-12-24 | 2026-12-31 | CO-R14.S08-PW-110 SS+3d, CO-R14.S08-PW-110 FF+3d, CO-R14.S08-EW-110 |  | -189d |
| CO-R14.S08-PW-150 |  | Installation Works for Fire Hydrant of Potable Water Network-[Road 14]-[SW-8] | 7d | 2027-01-02 | 2027-01-09 | CO-R14.S08-PW-140, PRO-R14-PW-DL-120 FF+3d |  | -189d |
| CO-R14.S08-PW-160 |  | Trench Backfilling and Compaction Works for Fire Hydrants of Potable Water Network-[Road 14]-[SW-8] | 7d | 2027-01-10 | 2027-01-17 | CO-R14.S08-PW-150 |  | -189d |
|  | SL | **Street Lighting Network** |  | 2026-08-09 | 2027-06-12 |  |  |  |
|  | LP | **Lighting Poles Works** |  | 2026-09-01 | 2027-05-08 |  |  |  |
| CO-R14.S08-SL-210 |  | Backfilling Works for Lighting Poles of Street Lighting Network-[Road 14]-[SW-8] | 15d | 2026-09-01 A | 2026-09-08 A | CO-R14.S08-SL-840 SS, CO-R14.S08-SL-840 FF, CO-R14.S07-SL-210 | 100% |  |
| CO-R14.S08-SL-820 |  | Foundation Excavation Works for Lighting Poles of Street Lighting Network-[Road 14]-[SW-8] | 12d | 2026-09-01 A | 2026-09-08 A | CO-R14.S08-EW-110, CO-R14.S08-EW-100, CO-R14.S08-PW-130 | 100% |  |
| CO-R14.S08-SL-830 |  | Installation Works for Lighting Poles Foundation of Street Lighting Network-[Road 14]-[SW-8] | 10d | 2026-09-01 A | 2026-09-08 A | CO-R14.S08-SL-820 SS+5d, CO-R14.S08-SL-820 FF+5d, CO-R11.S06-SL-110, PRO-R14-SL-DL-110 FF+3d | 100% |  |
| CO-R14.S08-SL-840 |  | Installation Works for Lighting Poles of Street Lighting Network-[Road 14]-[SW-8] | 10d | 2026-09-01 A | 2026-09-08 A | CO-R14.S08-SL-830 SS+5d, CO-R14.S08-SL-830 FF+5d, PRO-R14-SL-DL-120 FF+3d | 100% |  |
| CO-R14.S08-SL-200 |  | Testing Works for Lighting Poles of Street Lighting Network-[Road 14]-[SW-8] | 7d | 2027-03-23 | 2027-03-30 | CO-R14.S08-SL-210, CO-R14.S08-SL-840 |  | -138d |
| CO-R14.S08-SL-850 |  | Installation Works for Lighting Fixtures With Drop Wire of Street Lighting Network-[Road 14]-[SW-8] | 17.5d | 2027-04-18 | 2027-05-08 | CO-R14.S08-SL-840 SS+5d, CO-R14.S08-SL-840 FF+5d, CO-R11.S06-SL-130, PRO-R14-SL-DL-140 FF+3d, CO-R14.S08-SL-200 FF |  | -170.5d |
|  | CW | **Cabling Works** |  | 2026-08-09 | 2026-09-17 |  |  |  |
| CO-R14.S08-SL-640 |  | Trench Excavation and Bedding Works for Street Lighting Network-[Road 14]-[SW-8] | 10d | 2026-08-09 A | 2026-09-17 A | CO-R14.S08-EW-110, CO-R14.S08-SL-840, CO-R14.S08-SL-830 | 100% |  |
| CO-R14.S08-SL-650 |  | Cable Laying Works for Street Lighting Network-[Road 14]-[SW-8] | 10d | 2026-08-09 A | 2026-09-17 A | CO-R14.S08-SL-640, PRO-R14-SL-DL-100 FF+3d | 100% |  |
| CO-R14.S08-SL-660 |  | Trench Backfilling and Compaction Works for Street Lighting Network-[Road 14]-[SW-8] | 10d | 2026-08-09 A | 2026-09-17 A | CO-R14.S08-SL-650 | 100% |  |
|  | DPB | **Distrubution Panel Boards** |  | 2027-04-19 | 2027-06-12 |  |  |  |
| CO-R14.S08-SL-DB-640 |  | Foundation Excavation Works For Panel Boards of Street Lighting Network-[Road 14]-[SW-8] | 18d | 2027-04-19 | 2027-05-09 | CO-R14.S08-EW-110, CO-R11.S06-SL-170 |  | -234d |
| CO-R14.S08-SL-220 |  | A wall of concrete blocks to install the KWH meter of Street Lighting Network-[Road 14]-[SW-8] | 25d | 2027-05-03 | 2027-06-06 | CO-R14.S08-SL-DB-650 SS, CO-R14.S08-SL-DB-650 FF |  | -243d |
| CO-R14.S08-SL-DB-650 |  | Installation Works for Panel Board Concrete Foundations of Street Lighting Network-[Road 14]-[SW-8] | 18d | 2027-05-03 | 2027-05-29 | CO-R14.S08-SL-DB-640 SS+3d, CO-R14.S08-SL-DB-640 FF+3d, CO-R11.S06-SL-180 |  | -243d |
| CO-R14.S08-SL-DB-660 |  | Installation Works for Lighting Panel Boards of Street Lighting Network-[Road 14]-[SW-8] | 18d | 2027-05-23 | 2027-06-12 | CO-R14.S08-SL-DB-650 SS+3d, CO-R14.S08-SL-DB-650 FF+3d, CO-R11.S06-SL-190 |  | -248d |
|  | TE | **Telecom Network** |  | 2027-03-28 | 2027-05-27 |  |  |  |
|  | PD | **Ducts Works** |  | 2027-03-28 | 2027-05-13 |  |  |  |
| CO-R14.S08-TE-100 |  | Trench Excavation and Bedding Works for Ducts of Telecom Network-[Road 14]-[SW-8] | 3d | 2027-03-28 | 2027-03-30 | CO-R14.S08-SL-660, CO-R14.S07-TE-100 |  | -244d |
| CO-R14.S08-TE-110 |  | Pipes Laying Works for Ducts of Telecom Network-[Road 14]-[SW-8] | 7d | 2027-04-20 | 2027-04-27 | CO-R14.S08-TE-100, CO-R11.S06-TE-110, PRO-R14-TE-DL-100 FF+3d |  | -213d |
| CO-R14.S08-TE-120 |  | Pouring Plain Concrete Above Ducts of Telecom Network-[Road 14]-[SW-8] | 7d | 2027-04-28 | 2027-05-05 | CO-R14.S08-TE-110, CO-R11.S06-TE-120 |  | -213d |
| CO-R14.S08-TE-130 |  | Trench Backfilling and Compaction Works for Ducts of Telecom Network-[Road 14]-[SW-8] | 7d | 2027-05-06 | 2027-05-13 | CO-R14.S08-TE-120, CO-R11.S06-TE-130 |  | -213d |
|  | MH | **Manholes Works** |  | 2027-04-28 | 2027-05-27 |  |  |  |
| CO-R14.S08-TE-140 |  | Excavation Works for Manholes of Telecom Network-[Road 14]-[SW-8] | 7d | 2027-04-28 | 2027-05-05 | CO-R11.S06-TE-140, CO-R14.S08-TE-100, CO-R14.S07-TE-140 |  | -227d |
| CO-R14.S08-TE-150 |  | Installation Works for Manholes of Telecom Network-[Road 14]-[SW-8] | 7d | 2027-05-06 | 2027-05-13 | CO-R14.S08-TE-140, CO-R11.S06-TE-150, PRO-R14-TE-DL-110 FF+3d |  | -227d |
| CO-R14.S08-TE-160 |  | Backfilling Works for Manholes of Telecom Network-[Road 14]-[SW-8] | 7d | 2027-05-20 | 2027-05-27 | CO-R14.S08-TE-150, CO-R11.S06-TE-160 |  | -227d |
|  | MV | **Medium Voltage Network** |  | 2025-09-01 | 2025-09-07 |  |  |  |
|  | CW | **Cabling Works** |  | 2025-09-01 | 2025-09-07 |  |  |  |
| CO-R14.S08-MV-ML-640 |  | Trench Excavation and Bedding Works for Medium Voltage Network-[Road 14]-[SW-8] | 10d | 2025-09-01 A | 2025-09-03 A | CO-R14.S08-SD-170 SS+3d, CO-R14.S08-SD-170 FF+3d, CO-R14.S08-EW-110, CO-R14.S08-TE-130 SS+3d, CO-R14.S08-TE-130 FF+3d, CO-R11.S06-MV-100 | 100% |  |
| CO-R14.S08-MV-ML-650 |  | Cable Laying Works for Medium Voltage Network-[Road 14]-[SW-8] | 10d | 2025-09-02 A | 2025-09-04 A | CO-R14.S08-MV-ML-640 SS+3d, CO-R14.S08-MV-ML-640 FF+3d, CO-R11.S06-MV-110, PRO-R14-MV-DL-100 FF+3d | 100% |  |
| CO-R14.S08-MV-ML-660 |  | Trench Backfilling and Compaction Works for Medium Voltage Network-[Road 14]-[SW-8] | 10d | 2025-09-06 A | 2025-09-07 A | CO-R14.S08-MV-ML-650 SS+3d, CO-R14.S08-MV-ML-650 FF+3d, CO-R14.S08-PW-130 FF+3d, CO-R11.S06-MV-120 | 100% |  |
|  | RD | **Road Works** |  | 2026-08-17 | 2027-08-14 |  |  |  |
|  | RD | **Pre-Bituminous Construction** |  | 2026-08-17 | 2026-09-09 |  |  |  |
| CO-R14.S08-RD-P-100 |  | Capping and Subgrade Layer for Road Works-[Road 14]-[SW-8] | 10d | 2026-08-17 A | 2026-08-22 A | CO-R14.S08-SD-130, CO-R14.S08-PW-130, CO-R14.S08-PW-160, CO-R14.S08-SL-660 SS+3d, CO-R14.S08-SL-660 FF+3d, PRO-R14-RD-DL-100 FF+3d, CO-R14.S08-TE-130, CO-R14.S08-TE-160, CO-R14.S08-MV-ML-660 SS+3d, CO-R14.S08-MV-ML-660 FF+3d, CO-R14.S08-SW-130 | 100% |  |
| CO-R14.S08-RD-P-110 |  | Aggregate Base Course Layer for Road Works-[Road 14]-[SW-8] | 18d | 2026-09-05 A | 2026-09-09 A | CO-R14.S08-RD-P-100 SS+3d, CO-R14.S08-RD-P-100 FF+3d, CO-R14.S08-SD-170 SS+3d, CO-R14.S08-SD-170 FF+3d, CO-R11.S06-RD-P-110, PRO-R14-RD-DL-110 FF+3d | 100% |  |
|  | LS | **Pavement Works** |  | 2026-08-25 | 2027-08-14 |  |  |  |
| CO-R14.S08-RD-P-120 |  | Fixing of Curbstone for Sidewalks Pavement-[Road 14]-[SW-8] | 18d | 2026-08-25 A | 2026-08-31 A | PRO-R14-RD-DL-130 FF+3d, CO-R11.S06-RD-P-120, CO-R14.S08-RD-P-110 SS+3d, CO-R14.S08-RD-P-110 FF+3d | 100% |  |
| CO-R14.S08-RD-P-130 |  | Fixing of Interlock Tiles for Sidewalks Pavement-[Road 14]-[SW-8] | 12d | 2027-08-01 | 2027-08-14 | PRO-R14-RD-DL-120 FF+3d, CO-R14.S08-RD-P-120 SS+3d, CO-R14.S08-RD-P-120 FF+3d, CO-R11.S06-RD-P-130, CO-R14-PW-TF-100, CO-R14-PW-TF-110, CO-R14-PW-TF-120, CO-R14-SW-TF-100, CO-R14-SW-TF-110, CO-R14-SW-TF-130, CO-R14-SD-TF-120, CO-R11-SL-TF-180, CO-R11-SL-TF-190, CO-R11-IR-TF-140, CO-R11-MV-TF-180 |  | -250d |
|  | 7 | **Road 15 Local 1 ( 556 LM )** |  | 2025-04-13 | 2027-01-13 |  |  |  |
|  | SW_9 | **SW_9** |  | 2025-04-13 | 2026-12-14 |  |  |  |
|  | EW | **Earthworks** |  | 2025-04-13 | 2025-04-23 |  |  |  |
|  | EW | **Earthworks** |  | 2025-04-13 | 2025-04-23 |  |  |  |
| CO-R15.S09-EW-110 |  | Embankments Works Upto Design Level for Earthworks-[Road 15]-[SW-9] | 12d | 2025-04-13 A | 2025-04-16 A | CO-R15.S09-EW-200, ENG-MS-RD-A-10, ENG-SH-RD-A-100 | 100% |  |
| CO-R15.S09-EW-200 |  | Roadway Excavation Works Upto Design Level for Earthworks-[Road 15]-[SW-9] | 10d | 2025-04-16 A | 2025-04-23 A | ENG-MS-RD-A-10, ENG-SH-RD-A-100, CO-R16.S12-EW-100 | 100% |  |
|  | SW | **Sewage Network** |  | 2025-04-29 | 2025-09-21 |  |  |  |

| ID | WBS | Task | Duration | Start | Finish | Predecessors | Complete | Total float |
| --- | --- | --- | --- | --- | --- | --- | --- | --- |
|  | ML | **Main Line Sections** |  | 2025-04-29 | 2025-07-14 |  |  |  |
| CO-R15.S09-SW-100 |  | Trench Excavation and Bedding Works for Main Lines of Sewage Network-[Road 15]-[SW-9] | 12d | 2025-04-29 A | 2025-05-08 A | CO-R15.S09-EW-110, ENG-MS-SW-ML-A-110, ENG-SH-SW-ML-A-110 | 100% |  |
| CO-R15.S09-SW-120 |  | Pipes Laying Works for Main Lines of Sewage Network-[Road 15]-[SW-9] | 12d | 2025-05-09 A | 2025-05-31 A | CO-R15.S09-SW-100, PRO-R15-SW-DL-100 FF+3d | 100% |  |
| CO-R15.S09-SW-130 |  | Trench Backfilling and Compaction Works for Main Lines of Sewage Network-[Road 15]-[SW-9] | 10d | 2025-07-11 A | 2025-07-14 A | ENG-SH-SW-ML-A-110 FF, ENG-MS-SW-ML-A-110 FF, CO-R15.S09-SW-120, CO-R15.S09-SW-210 FF, CO-R16.S12-SW-130 | 100% |  |
|  | 1 | **Manholes** |  | 2025-05-10 | 2025-09-21 |  |  |  |
| CO-R15.S09-SW-160 |  | Excavation Works for Main Line Manholes of Sewage Network-[Road 15]-[SW-9] | 1d | 2025-05-10 A | 2025-05-15 A | CO-R15.S09-SW-120 SS | 100% |  |
| CO-R15.S09-SW-170 |  | Installation RC Footing Works for Main Line Manholes of Sewage Network-[Road 15]-[SW-9] | 2d | 2025-06-15 A | 2025-06-30 A | CO-R15.S09-SW-160, PRO-R15-SW-DL-110 FF+3d | 100% |  |
| CO-R15.S09-SW-180 |  | Install Grp Liner Wall Works for Main Line Manholes of Sewage Network-[Road 15]-[SW-9] | 4d | 2025-07-01 A | 2025-07-05 A | CO-R15.S09-SW-170 | 100% |  |
| CO-R15.S09-SW-190 |  | Pouring Grp Liner Wall Works for Main Line Manholes of Sewage Network-[Road 15]-[SW-9] | 1d | 2025-09-16 A | 2025-09-16 A | CO-R15.S09-SW-180 | 100% |  |
| CO-R15.S09-SW-200 |  | Backfilling Works for Main Line Manholes of Sewage Network-[Road 15]-[SW-9] | 4d | 2025-09-16 A | 2025-09-20 A | CO-R15.S09-SW-190 | 100% |  |
| CO-R15.S09-SW-210 |  | Testing Works for Main Line Manholes of Sewage Network-[Road 15]-[SW-9] | 1d | 2025-09-21 A | 2025-09-21 A | CO-R15.S09-SW-200 | 100% |  |
|  | SD | **Storm Drainage Network** |  | 2025-06-17 | 2026-07-13 |  |  |  |
|  | ML | **Main Line Sections** |  | 2025-07-11 | 2025-07-17 |  |  |  |
| CO-R15.S09-SD-100 |  | Trench Excavation and Bedding Works for Main Lines of Storm Drainage Network-[Road 15]-[SW-9] | 10d | 2025-07-11 A | 2025-07-14 A | ENG-SH-SD-ML-A-110, CO-R15.S09-EW-110, CO-R15.S09-EW-200, CO-R15.S09-SW-130 SS+3d, CO-R15.S09-SW-130 FF+3d, ENG-MS-SD-ML-A-110 | 100% |  |
| CO-R15.S09-SD-120 |  | Pipes Laying Works for Main Lines of Storm Drainage Network-[Road 15]-[SW-9] | 15d | 2025-07-15 A | 2025-07-16 A | CO-R15.S09-SD-100 | 100% |  |
| CO-R15.S09-SD-130 |  | Trench Backfilling and Compaction Works for Main Lines of Storm Drainage Network-[Road 15]-[SW-9] | 16d | 2025-07-17 A | 2025-07-17 A | CO-R15.S09-SD-120 SS+3d, CO-R15.S09-SD-120 FF+3d, ENG-SH-SD-ML-A-110 FF, CO-R14.S07-SD-130, ENG-MS-SD-ML-A-110 FF, CO-R15.S09-SD-120, CO-R15.S09-SD-220 FF | 100% |  |
|  | MH | **Manholes** |  | 2025-06-17 | 2026-07-13 |  |  |  |
| CO-R15.S09-SD-190 |  | Install RC Footing Works for Manholes of Storm Drainage Network-[Road 15]-[SW-9] | 1d | 2025-06-17 A | 2025-07-17 A | CO-R15.S09-SD-180 | 100% |  |
| CO-R15.S09-SD-180 |  | Trench Excavation and Bedding Works for Manholes of Storm Drainage Network-[Road 15]-[SW-9] | 1d | 2025-07-15 A | 2025-07-16 A | CO-R15.S09-SD-120 SS, PRO-SD-1DL-100 | 100% |  |
| CO-R15.S09-SD-200 |  | Install RC Wall Rings & Slab Works for Manholes of Storm Drainage Network-[Road 15]-[SW-9] | 4d | 2025-07-18 A | 2025-07-18 A | CO-R15.S09-SD-190 | 100% |  |
| CO-R15.S09-SD-220 |  | Backfilling Works for Manholes of Storm Drainage Network-[Road 15]-[SW-9] | 7d | 2025-07-19 A | 2025-07-19 A | CO-R15.S09-SD-210 | 100% |  |
| CO-R15.S09-SD-210 |  | Testing Works for Manholes of Storm Drainage Network-[Road 15]-[SW-9] | 1d | 2026-06-04 A | 2026-07-13 A | CO-R15.S09-SD-200 | 100% |  |
|  | CB | **Catch Basin Sections** |  | 2025-06-19 | 2026-07-13 |  |  |  |
| CO-R15.S09-SD-140 |  | Trench Excavation and Bedding Works for Catch Basins of Storm Drainage Network-[Road 15]-[SW-9] | 7d | 2025-06-19 A | 2025-06-23 A | CO-R15.S09-EW-110, ENG-SH-SD-CB-A-110, ENG-MS-SD-CB-A-110, CO-R15.S09-SD-220 | 100% |  |
| CO-R15.S09-SD-150 |  | Installation and Pipes Laying Connection Works for Catch Basins of Storm Drainage Network-[Road 15]-[SW-9] | 7d | 2025-08-03 A | 2025-08-05 A | CO-R15.S09-SD-140 | 100% |  |
| CO-R15.S09-SD-170 |  | Trench Backfilling and Compaction Works for Catch Basins of Storm Drainage Network-[Road 15]-[SW-9] | 10d | 2025-08-06 A | 2025-08-07 A | CO-R15.S09-SD-160 | 100% |  |
| CO-R15.S09-SD-160 |  | Testing Works for Catch Basins of Storm Drainage Network-[Road 15]-[SW-9] | 7d | 2026-06-04 A | 2026-07-13 A | CO-R15.S09-SD-150, CO-R15.S09-SD-120 | 100% |  |
|  | IR | **Irrigation Network** |  | 2025-04-28 | 2026-12-14 |  |  |  |
|  | ML | **Main Line Pipes** |  | 2025-04-28 | 2026-12-14 |  |  |  |
| CO-R15.S09-IR-100 |  | Trench Excavation and Bedding Works for Main Lines of Irrigation Network-[Road 15]-[SW-9] | 7d | 2025-04-28 A | 2025-05-05 A | ENG-SH-IR-ML-A-110, CO-R15.S09-EW-110, CO-R15.S09-SD-170, ENG-MS-IR-ML-A-110 | 100% |  |
| CO-R15.S09-IR-110 |  | Pipes Laying Works for Main Lines of Irrigation Network-[Road 15]-[SW-9] | 10d | 2025-05-06 A | 2025-05-31 A | CO-R15.S09-IR-100, PRO-R15-IR-DL-100 FF+3d | 100% |  |
| CO-R15.S09-IR-130 |  | Trench Backfilling and Compaction Works for Main Lines of Irrigation Network-[Road 15]-[SW-9] | 10d | 2025-06-01 A | 2025-06-12 A | CO-R15.S09-IR-120, CO-R15.S09-IR-110 | 100% |  |
| CO-R15.S09-IR-120 |  | Installation Works for Main Line Valves of Irrigation Network-[Road 15]-[SW-9] | 7d | 2026-12-07 | 2026-12-14 | CO-R15.S09-IR-110, PRO-R15-IR-DL-110 FF+3d |  | -235.5d |
|  | TE | **Telecom Network** |  | 2025-08-02 | 2025-08-28 |  |  |  |
|  | PD | **Ducts Works** |  | 2025-08-02 | 2025-08-19 |  |  |  |
| CO-R15.S09-TE-100 |  | Trench Excavation and Bedding Works for Ducts of Telecom Network-[Road 15]-[SW-9] | 7d | 2025-08-02 A | 2025-08-05 A | CO-R15.S09-IR-130, CO-R16.S12-TE-100 | 100% |  |
| CO-R15.S09-TE-110 |  | Pipes Laying Works for Ducts of Telecom Network-[Road 15]-[SW-9] | 7d | 2025-08-06 A | 2025-08-09 A | CO-R15.S09-TE-100, CO-R14.S07-TE-110 | 100% |  |
| CO-R15.S09-TE-120 |  | Pouring Plain Concrete Above Ducts of Telecom Network-[Road 15]-[SW-9] | 7d | 2025-08-10 A | 2025-08-13 A | CO-R15.S09-TE-110, CO-R14.S07-TE-120 | 100% |  |
| CO-R15.S09-TE-130 |  | Trench Backfilling and Compaction Works for Ducts of Telecom Network-[Road 15]-[SW-9] | 7d | 2025-08-16 A | 2025-08-19 A | CO-R15.S09-TE-120, CO-R14.S07-TE-130 | 100% |  |
|  | MH | **Manholes Works** |  | 2025-08-26 | 2025-08-28 |  |  |  |
| CO-R15.S09-TE-140 |  | Excavation Works for Manholes of Telecom Network-[Road 15]-[SW-9] | 7d | 2025-08-26 A | 2025-08-26 A | CO-R14.S07-TE-140, CO-R15.S09-TE-100 | 100% |  |
| CO-R15.S09-TE-150 |  | Installation Works for Manholes of Telecom Network-[Road 15]-[SW-9] | 7d | 2025-08-27 A | 2025-08-27 A | CO-R15.S09-TE-140, CO-R14.S07-TE-150 | 100% |  |
| CO-R15.S09-TE-160 |  | Backfilling Works for Manholes of Telecom Network-[Road 15]-[SW-9] | 7d | 2025-08-28 A | 2025-08-28 A | CO-R15.S09-TE-150, CO-R14.S07-TE-160 | 100% |  |
|  | MV | **Medium Voltage Network** |  | 2025-08-08 | 2025-08-10 |  |  |  |
|  | CW | **Cabling Works** |  | 2025-08-08 | 2025-08-10 |  |  |  |
| CO-R15.S09-MV-ML-250 |  | Trench Excavation and Bedding Works for Medium Voltage Network-[Road 15]-[SW-9] | 18d | 2025-08-08 A | 2025-08-08 A | ENG-SH-MV-A-110, CO-R15.S09-SD-170 SS+3d, CO-R15.S09-SD-170 FF+3d, CO-R15.S09-EW-110, CO-R15.S09-TE-130 SS+3d, CO-R15.S09-TE-130 FF+3d, ENG-MS-MV-A-110, CO-R15.S10-SL-160 | 100% |  |
| CO-R15.S09-MV-ML-260 |  | Cable Laying Works for Medium Voltage Network-[Road 15]-[SW-9] | 18d | 2025-08-09 A | 2025-08-09 A | CO-R15.S09-MV-ML-250 SS+3d, CO-R15.S09-MV-ML-250 FF+3d, PRO-R15-MV-DL-100 FF+3d | 100% |  |
| CO-R15.S09-MV-ML-270 |  | Trench Backfilling and Compaction Works for Medium Voltage Network-[Road 15]-[SW-9] | 18d | 2025-08-09 A | 2025-08-10 A | CO-R15.S09-MV-ML-260 SS+3d, CO-R15.S09-MV-ML-260 FF+3d | 100% |  |
|  | RD | **Road Works** |  | 2025-07-22 | 2026-10-12 |  |  |  |
|  | RD | **Pre-Bituminous Construction** |  | 2025-07-22 | 2025-10-07 |  |  |  |
| CO-R15.S09-RD-P-100 |  | Capping and Subgrade Layer for Road Works-[Road 15]-[SW-9] | 18d | 2025-07-22 A | 2025-07-27 A | ENG-SH-RD-A-100, CO-R15.S09-SD-130, CO-R15.S09-SW-130, ENG-MS-RD-A-10, CO-R15.S09-TE-130, CO-R15.S09-TE-160, CO-R15.S09-MV-ML-270 SS+3d, CO-R15.S09-MV-ML-270 FF+3d | 100% |  |
| CO-R15.S09-RD-P-110 |  | Aggregate Base Course Layer for Road Works-[Road 15]-[SW-9] | 18d | 2025-10-01 A | 2025-10-07 A | CO-R15.S09-RD-P-100 SS+3d, CO-R15.S09-RD-P-100 FF+3d, CO-R15.S09-SD-170 SS+3d, CO-R15.S09-SD-170 FF+3d, CO-R14.S07-RD-P-110 | 100% |  |
|  | LS | **Pavement Works** |  | 2026-08-25 | 2026-10-12 |  |  |  |
| CO-R15.S09-RD-P-120 |  | Fixing of Curbstone for Sidewalks Pavement-[Road 15]-[SW-9] | 18d | 2026-08-25 A | 2026-08-31 A | CO-R14.S07-RD-P-120, CO-R15.S09-RD-P-110 SS+3d, CO-R15.S09-RD-P-110 FF+3d | 100% |  |
| CO-R15.S09-RD-P-130 |  | Fixing of Interlock Tiles for Sidewalks Pavement-[Road 15]-[SW-9] | 12d | 2026-08-25 A | 2026-10-12 A | CO-R15.S09-RD-P-120 SS+3d, CO-R15.S09-RD-P-120 FF+3d, CO-R14.S07-RD-P-130, CO-R15-PW-TF-100, CO-R15-PW-TF-110, CO-R15-PW-TF-120, CO-R15-SW-TF-100, CO-R15-SW-TF-110, CO-R15-SW-TF-130, CO-R15-SD-TF-100, CO-R15-SL-TF-200, CO-R15-SL-TF-210, CO-R15-IR-TF-150, CO-R15-MV-TF-200 | 100% |  |
|  | SW_10 | **SW_10** |  | 2025-04-24 | 2027-01-13 |  |  |  |
|  | EW | **Earthworks** |  | 2025-04-24 | 2025-04-30 |  |  |  |
|  | EW | **Earthworks** |  | 2025-04-24 | 2025-04-30 |  |  |  |
| CO-R15.S10-EW-100 |  | Roadway Excavation Works Upto Design Level for Earthworks-[Road 15]-[SW-10] | 10d | 2025-04-24 A | 2025-04-26 A | ENG-MS-RD-A-10, ENG-SH-RD-A-100, CO-R15.S09-EW-200 | 100% |  |
| CO-R15.S10-EW-110 |  | Embankments Works Upto Design Level for Earthworks-[Road 15]-[SW-10] | 12d | 2025-04-27 A | 2025-04-30 A | CO-R15.S10-EW-100, ENG-MS-RD-A-10, ENG-SH-RD-A-100 | 100% |  |
|  | SW | **Sewage Network** |  | 2025-05-01 | 2026-07-07 |  |  |  |
|  | ML | **Main Line Sections** |  | 2025-05-01 | 2025-07-16 |  |  |  |
| CO-R15.S10-SW-100 |  | Trench Excavation and Bedding Works for Main Lines of Sewage Network-[Road 15]-[SW-10] | 12d | 2025-05-01 A | 2025-06-12 A | CO-R15.S10-EW-110, ENG-MS-SW-ML-A-110, ENG-SH-SW-ML-A-110 | 100% |  |
| CO-R15.S10-SW-120 |  | Pipes Laying Works for Main Lines of Sewage Network-[Road 15]-[SW-10] | 12d | 2025-05-13 A | 2025-05-30 A | PRO-R15-SW-DL-100 FF+3d, CO-R15.S10-SW-100 | 100% |  |
| CO-R15.S10-SW-130 |  | Trench Backfilling and Compaction Works for Main Lines of Sewage Network-[Road 15]-[SW-10] | 10d | 2025-07-15 A | 2025-07-16 A | CO-R15.S10-SW-120, CO-R15.S10-SW-210 FF, CO-R15.S09-SW-130 | 100% |  |
|  | 1 | **Manholes** |  | 2025-06-01 | 2026-07-07 |  |  |  |
| CO-R15.S10-SW-160 |  | Excavation Works for Main Line Manholes of Sewage Network-[Road 15]-[SW-10] | 1d | 2025-06-01 A | 2025-06-01 A | CO-R15.S10-SW-120 SS | 100% |  |
| CO-R15.S10-SW-170 |  | Installation RC Footing Works for Main Line Manholes of Sewage Network-[Road 15]-[SW-10] | 2.25d | 2025-06-25 A | 2025-06-30 A | CO-R15.S10-SW-160, PRO-R15-SW-DL-110 FF+3d | 100% |  |
| CO-R15.S10-SW-180 |  | Install Grp Liner Wall Works for Main Line Manholes of Sewage Network-[Road 15]-[SW-10] | 4d | 2025-07-01 A | 2025-07-08 A | CO-R15.S10-SW-170 | 100% |  |
| CO-R15.S10-SW-200 |  | Backfilling Works for Main Line Manholes of Sewage Network-[Road 15]-[SW-10] | 4d | 2025-07-09 A | 2025-07-12 A | CO-R15.S10-SW-190 | 100% |  |

| ID | WBS | Task | Duration | Start | Finish | Predecessors | Complete | Total float |
| --- | --- | --- | --- | --- | --- | --- | --- | --- |
| CO-R15.S10-SW-210 |  | Testing Works for Main Line Manholes of Sewage Network-[Road 15]-[SW-10] | 1d | 2025-07-09 A | 2025-07-12 A | CO-R15.S10-SW-200 | 100% |  |
| CO-R15.S10-SW-190 |  | Pouring Grp Liner Wall Works for Main Line Manholes of Sewage Network-[Road 15]-[SW-10] | 1d | 2026-07-01 A | 2026-07-07 A | CO-R15.S10-SW-180 | 100% |  |
|  | SD | **Storm Drainage Network** |  | 2025-07-15 | 2026-07-13 |  |  |  |
|  | ML | **Main Line Sections** |  | 2025-07-15 | 2025-07-19 |  |  |  |
| CO-R15.S10-SD-100 |  | Trench Excavation and Bedding Works for Main Lines of Storm Drainage Network-[Road 15]-[SW-10] | 10d | 2025-07-15 A | 2025-07-16 A | CO-R15.S10-EW-110, CO-R15.S10-EW-100, CO-R15.S10-SW-130 SS+3d, CO-R15.S10-SW-130 FF+3d | 100% |  |
| CO-R15.S10-SD-120 |  | Pipes Laying Works for Main Lines of Storm Drainage Network-[Road 15]-[SW-10] | 15d | 2025-07-17 A | 2025-07-17 A | PRO-R15-SD-DL-120 FF+3d, CO-R15.S10-SD-100 | 100% |  |
| CO-R15.S10-SD-130 |  | Trench Backfilling and Compaction Works for Main Lines of Storm Drainage Network-[Road 15]-[SW-10] | 15d | 2025-07-18 A | 2025-07-19 A | CO-R15.S10-SD-120 SS+3d, CO-R15.S10-SD-120 FF+3d, CO-R14.S08-SD-130, CO-R15.S10-SD-120, CO-R15.S10-SD-220 FF | 100% |  |
|  | MH | **Manholes** |  | 2025-07-18 | 2026-07-13 |  |  |  |
| CO-R15.S10-SD-180 |  | Trench Excavation and Bedding Works for Manholes of Storm Drainage Network-[Road 15]-[SW-10] | 1d | 2025-07-18 A | 2025-07-18 A | CO-R15.S10-SD-120 SS, PRO-SD-1DL-100 | 100% |  |
| CO-R15.S10-SD-190 |  | Install RC Footing Works for Manholes of Storm Drainage Network-[Road 15]-[SW-10] | 1d | 2025-07-18 A | 2025-07-18 A | CO-R15.S10-SD-180 | 100% |  |
| CO-R15.S10-SD-200 |  | Install RC Wall Rings & Slab Works for Manholes of Storm Drainage Network-[Road 15]-[SW-10] | 4d | 2025-07-19 A | 2025-07-20 A | CO-R15.S10-SD-190 | 100% |  |
| CO-R15.S10-SD-220 |  | Backfilling Works for Manholes of Storm Drainage Network-[Road 15]-[SW-10] | 7d | 2025-07-21 A | 2025-07-21 A | CO-R15.S10-SD-210 | 100% |  |
| CO-R15.S10-SD-210 |  | Testing Works for Manholes of Storm Drainage Network-[Road 15]-[SW-10] | 1d | 2026-06-04 A | 2026-07-13 A | CO-R15.S10-SD-200 | 100% |  |
|  | CB | **Catch Basin Sections** |  | 2025-08-02 | 2026-07-13 |  |  |  |
| CO-R15.S10-SD-140 |  | Trench Excavation and Bedding Works for Catch Basins of Storm Drainage Network-[Road 15]-[SW-10] | 7d | 2025-08-02 A | 2025-08-04 A | CO-R15.S10-EW-110, CO-R15.S10-SD-220 | 100% |  |
| CO-R15.S10-SD-150 |  | Installation and Pipes Laying Connection Works for Catch Basins of Storm Drainage Network-[Road 15]-[SW-10] | 7d | 2025-08-05 A | 2025-08-09 A | CO-R15.S10-SD-140, PRO-R15-SD-DL-130 FF+3d | 100% |  |
| CO-R15.S10-SD-170 |  | Trench Backfilling and Compaction Works for Catch Basins of Storm Drainage Network-[Road 15]-[SW-10] | 10d | 2025-08-10 A | 2025-08-13 A | CO-R15.S10-SD-160 SS+3d, CO-R15.S10-SD-160 FF+3d | 100% |  |
| CO-R15.S10-SD-160 |  | Testing Works for Catch Basins of Storm Drainage Network-[Road 15]-[SW-10] | 4d | 2026-06-04 A | 2026-07-13 A | CO-R15.S10-SD-150, CO-R15.S10-SD-120, PRO-R15-SD-DL-110 FF+3d | 100% |  |
|  | SL | **Street Lighting Network** |  | 2025-08-05 | 2027-01-04 |  |  |  |
|  | LP | **Lighting Poles Works** |  | 2025-08-05 | 2027-01-04 |  |  |  |
| CO-R15.S10-SL-100 |  | Foundation Excavation Works for Lighting Poles of Street Lighting Network-[Road 15]-[SW-10] | 12d | 2025-08-05 A | 2025-08-06 A | CO-R15.S10-EW-100, CO-R15.S10-EW-110, CO-R15.S09-IR-100 SS+3d, CO-R15.S09-IR-130, ENG-MS-SL-A-110, ENG-SH-SL-A-110, PRO-SL-1DL-110 | 100% |  |
| CO-R15.S10-SL-110 |  | Installation Works for Lighting Poles Foundation of Street Lighting Network-[Road 15]-[SW-10] | 12d | 2025-08-07 A | 2025-08-07 A | CO-R15.S10-SL-100, PRO-R15-SL-DL-110 FF+3d | 100% |  |
| CO-R15.S10-SL-120 |  | Installation Works for Lighting Poles of Street Lighting Network-[Road 15]-[SW-10] | 17.5d | 2025-09-14 A | 2025-09-14 A | CO-R15.S10-SL-110, CO-R15.S10-SL-160, PRO-R15-SL-DL-120 FF+3d | 100% |  |
| CO-R15.S10-SL-210 |  | Backfilling Works for Lighting Poles of Street Lighting Network-[Road 15]-[SW-10] | 12d | 2026-07-07 A | 2026-07-13 A | CO-R15.S10-SL-120 SS, CO-R15.S10-SL-120 FF, CO-R17.S14-SL-210 | 100% |  |
| CO-R15.S10-SL-130 |  | Installation Works for Lighting Fixtures With Drop Wire of Street Lighting Network-[Road 15]-[SW-10] | 18d | 2026-12-15 | 2027-01-04 | CO-R15.S10-SL-120 SS+5d, CO-R15.S10-SL-120 FF+5d, CO-R15.S10-SL-200 FF, PRO-R15-SL-DL-140 FF+3d |  | -190d |
| CO-R15.S10-SL-200 |  | Testing Works for Lighting Poles of Street Lighting Network-[Road 15]-[SW-10] | 5d | 2026-12-15 | 2026-12-20 | CO-R15.S10-SL-210, CO-R15.S10-SL-120 |  | -177d |
|  | CW | **Cabling Works** |  | 2025-08-08 | 2025-08-11 |  |  |  |
| CO-R15.S10-SL-140 |  | Trench Excavation and Bedding Works for Street Lighting Network-[Road 15]-[SW-10] | 10d | 2025-08-08 A | 2025-08-08 A | CO-R15.S10-SL-110 | 100% |  |
| CO-R15.S10-SL-150 |  | Cable Laying Works for Street Lighting Network-[Road 15]-[SW-10] | 10d | 2025-08-10 A | 2025-08-10 A | CO-R15.S10-SL-140, PRO-R15-SL-DL-100 FF+3d | 100% |  |
| CO-R15.S10-SL-160 |  | Trench Backfilling and Compaction Works for Street Lighting Network-[Road 15]-[SW-10] | 10d | 2025-08-11 A | 2025-08-11 A | CO-R15.S10-SL-150 | 100% |  |
|  | DPB | **Distrubution Panel Boards** |  | 2026-11-03 | 2026-11-30 |  |  |  |
| CO-R15.S10-SL-170 |  | Foundation Excavation Works For Panel Boards of Street Lighting Network-[Road 15]-[SW-10] | 18d | 2026-11-03 | 2026-11-23 | CO-R15.S10-EW-110, ENG-MS-SL-A-110, ENG-SH-SL-A-110 |  | -77d |
| CO-R15.S10-SL-180 |  | Installation Works for Panel Board Concrete Foundations of Street Lighting Network-[Road 15]-[SW-10] | 18d | 2026-11-07 | 2026-11-26 | CO-R15.S10-SL-170 SS+3d, CO-R15.S10-SL-170 FF+3d |  | -77d |
| CO-R15.S10-SL-220 |  | A wall of concrete blocks to install the KWH meter of Street Lighting Network-[Road 15]-[SW-10] | 18d | 2026-11-07 | 2026-11-26 | CO-R15.S10-SL-180 SS, CO-R15.S10-SL-180 FF |  | -74d |
| CO-R15.S10-SL-190 |  | Installation Works for Lighting Panel Boards of Street Lighting Network-[Road 15]-[SW-10] | 18d | 2026-11-10 | 2026-11-30 | CO-R15.S10-SL-180 SS+3d, CO-R15.S10-SL-180 FF+3d |  | -77d |
|  | PW | **Potable Water Network** |  | 2025-07-01 | 2027-01-13 |  |  |  |
|  | ML | **Main Line Sections** |  | 2025-07-01 | 2025-07-17 |  |  |  |
| CO-R15.S10-PW-100 |  | Trench Excavation and Bedding Works for Main Lines of Potable Water Network-[Road 15]-[SW-10] | 6d | 2025-07-01 A | 2025-07-06 A | CO-R15.S10-EW-110, CO-R15.S10-EW-100, CO-R15.S10-SW-130, CO-R15.S10-SD-130 | 100% |  |
| CO-R15.S10-PW-110 |  | Pipes Laying and accessories for Main Lines of Potable Water Network-[Road 15]-[SW-10] | 6d | 2025-07-07 A | 2025-07-12 A | CO-R15.S10-PW-100, CO-R14.S08-PW-110 SS, PRO-R15-PW-DL-100 FF+3d, PRO-R15-PW-DL-110 FF+3d | 100% |  |
| CO-R15.S10-PW-130 |  | Trench Backfilling and Compaction Works for Main Lines of Potable Water Network-[Road 15]-[SW-10] | 6d | 2025-07-13 A | 2025-07-17 A | CO-R15.S10-PW-110, CO-R14.S08-PW-130 SS, CO-R15.S10-PW-160 FF, CO-R15.S10-PW-210 FF | 100% |  |
|  | VC | **Valve Chamber** |  | 2026-12-24 | 2026-12-30 |  |  |  |
| CO-R15.S10-PW-210 |  | Installation Works for Main Line Valves and Valve Chambers of Potable Water Network-[Road 15]-[SW-10] | 6d | 2026-12-24 | 2026-12-30 | CO-R15.S10-PW-110 |  | -84d |
|  | FH | **Fire Hydrant** |  | 2026-12-24 | 2027-01-13 |  |  |  |
| CO-R15.S10-PW-140 |  | Excavation Works for Fire Hydrants of Potable Water Network-[Road 15]-[SW-10] | 6d | 2026-12-24 | 2026-12-30 | CO-R15.S10-PW-110 SS+3d, CO-R15.S10-PW-110 FF+3d, CO-R15.S10-EW-110, CO-R15.S10-SW-130 SS+3d, CO-R15.S10-SW-130 FF+3d |  | -96d |
| CO-R15.S10-PW-150 |  | Installation Works for Fire Hydrant of Potable Water Network-[Road 15]-[SW-10] | 6d | 2026-12-31 | 2027-01-06 | CO-R15.S10-PW-140, PRO-R15-PW-DL-120 FF+3d |  | -96d |
| CO-R15.S10-PW-160 |  | Trench Backfilling and Compaction Works for Fire Hydrants of Potable Water Network-[Road 15]-[SW-10] | 6d | 2027-01-07 | 2027-01-13 | CO-R15.S10-PW-150 |  | -96d |
|  | TE | **Telecom Network** |  | 2025-08-08 | 2025-08-28 |  |  |  |
|  | PD | **Ducts Works** |  | 2025-08-08 | 2025-08-11 |  |  |  |
| CO-R15.S10-TE-100 |  | Trench Excavation and Bedding Works for Ducts of Telecom Network-[Road 15]-[SW-10] | 7d | 2025-08-08 A | 2025-08-08 A | CO-R15.S10-SL-160 SS+5d, CO-R15.S10-SL-160 FF+5d | 100% |  |
| CO-R15.S10-TE-110 |  | Pipes Laying Works for Ducts of Telecom Network-[Road 15]-[SW-10] | 7d | 2025-08-09 A | 2025-08-09 A | CO-R15.S10-TE-100, CO-R14.S08-TE-110, PRO-R15-TE-DL-100 FF+3d | 100% |  |
| CO-R15.S10-TE-120 |  | Pouring Plain Concrete Above Ducts of Telecom Network-[Road 15]-[SW-10] | 7d | 2025-08-10 A | 2025-08-10 A | CO-R15.S10-TE-110, CO-R14.S08-TE-120 | 100% |  |
| CO-R15.S10-TE-130 |  | Trench Backfilling and Compaction Works for Ducts of Telecom Network-[Road 15]-[SW-10] | 7d | 2025-08-11 A | 2025-08-11 A | CO-R15.S10-TE-120, CO-R14.S08-TE-130 | 100% |  |
|  | MH | **Manholes Works** |  | 2025-08-26 | 2025-08-28 |  |  |  |
| CO-R15.S10-TE-140 |  | Excavation Works for Manholes of Telecom Network-[Road 15]-[SW-10] | 7d | 2025-08-26 A | 2025-08-26 A | CO-R14.S08-TE-140, CO-R15.S09-TE-140 SS, CO-R15.S10-TE-100 SS+6d, CO-R15.S10-TE-100 FF+6d | 100% |  |
| CO-R15.S10-TE-150 |  | Installation Works for Manholes of Telecom Network-[Road 15]-[SW-10] | 7d | 2025-08-27 A | 2025-08-27 A | CO-R15.S10-TE-140, CO-R14.S08-TE-150, PRO-R15-TE-DL-110 FF+3d | 100% |  |
| CO-R15.S10-TE-160 |  | Backfilling Works for Manholes of Telecom Network-[Road 15]-[SW-10] | 7d | 2025-08-28 A | 2025-08-28 A | CO-R15.S10-TE-150, CO-R14.S08-TE-160 | 100% |  |
|  | RD | **Road Works** |  | 2025-07-22 | 2026-10-12 |  |  |  |
|  | RD | **Pre-Bituminous Construction** |  | 2025-07-22 | 2026-08-09 |  |  |  |
| CO-R15.S10-RD-P-100 |  | Capping and Subgrade Layer for Road Works-[Road 15]-[SW-10] | 18d | 2025-07-22 A | 2025-07-27 A | CO-R15.S10-SD-130, CO-R15.S10-SW-130, CO-R15.S10-PW-130, CO-R15.S10-PW-160, PRO-R15-RD-DL-100 FF+3d, CO-R15.S10-TE-130, CO-R15.S10-TE-160, CO-R15.S10-SL-160 SS+3d, CO-R15.S10-SL-160 FF+3d | 100% |  |
| CO-R15.S10-RD-P-110 |  | Aggregate Base Course Layer for Road Works-[Road 15]-[SW-10] | 18d | 2026-08-01 A | 2026-08-09 A | CO-R15.S10-RD-P-100 SS+3d, CO-R15.S10-RD-P-100 FF+3d, CO-R15.S10-SD-170 SS+3d, CO-R15.S10-SD-170 FF+3d, CO-R14.S08-RD-P-110, PRO-R15-RD-DL-110 FF+3d | 100% |  |
|  | LS | **Pavement Works** |  | 2026-08-25 | 2026-10-12 |  |  |  |
| CO-R15.S10-RD-P-120 |  | Fixing of Curbstone for Sidewalks Pavement-[Road 15]-[SW-10] | 18d | 2026-08-25 A | 2026-08-31 A | CO-R14.S08-RD-P-120, PRO-R15-RD-DL-130 FF+3d, CO-R15.S10-RD-P-110 SS+3d, CO-R15.S10-RD-P-110 FF+3d | 100% |  |
| CO-R15.S10-RD-P-130 |  | Fixing of Interlock Tiles for Sidewalks Pavement-[Road 15]-[SW-10] | 10d | 2026-08-25 A | 2026-10-12 A | CO-R15.S10-RD-P-120 SS+3d, CO-R15.S10-RD-P-120 FF+3d, CO-R14.S08-RD-P-130, PRO-R15-RD-DL-120 FF+3d, CO-R15-PW-TF-100, CO-R15-PW-TF-110, CO-R15-PW-TF-120, CO-R15-SW-TF-100, CO-R15-SW-TF-110, CO-R15-SW-TF-130, CO-R15-SD-TF-100, CO-R15-SD-TF-120, CO-R15-SL-TF-200, CO-R15-SL-TF-210, CO-R15-IR-TF-150, CO-R15-MV-TF-200 | 100% |  |
|  | 8 | **Road 16 Local 1 ( 527 LM )** |  | 2025-03-13 | 2027-01-20 |  |  |  |
|  | SW_13 | **SW_11** |  | 2025-03-27 | 2026-12-08 |  |  |  |
|  | EW | **Earthworks** |  | 2025-03-27 | 2025-04-19 |  |  |  |
|  | EW | **Earthworks** |  | 2025-03-27 | 2025-04-19 |  |  |  |
| CO-R16.S11-EW-100 |  | Roadway Excavation Works Upto Design Level for Earthworks-[Road 16]-[SW-11] | 10d | 2025-03-27 A | 2025-04-12 A | ENG-MS-RD-A-10, ENG-SH-RD-A-100, CO-R17.S14-EW-100 | 100% |  |
| CO-R16.S11-EW-110 |  | Embankments Works Upto Design Level for Earthworks-[Road 16]-[SW-11] | 12d | 2025-04-13 A | 2025-04-19 A | CO-R16.S11-EW-100, ENG-MS-RD-A-10, ENG-SH-RD-A-100, CO-R17.S14-EW-110 | 100% |  |
|  | SW | **Sewage Network** |  | 2025-06-05 | 2025-09-17 |  |  |  |

| ID | WBS | Task | Duration | Start | Finish | Predecessors | Complete | Total float |
| --- | --- | --- | --- | --- | --- | --- | --- | --- |
|  | ML | **Main Line Sections** |  | 2025-06-05 | 2025-07-08 |  |  |  |
| CO-R16.S11-SW-100 |  | Trench Excavation and Bedding Works for Main Lines of Sewage Network-[Road 16]-[SW-11] | 12d | 2025-06-05 A | 2025-06-15 A | CO-R16.S11-EW-110, ENG-MS-SW-ML-A-110, ENG-SH-SW-ML-A-110, CO-R17.S14-SW-100 | 100% |  |
| CO-R16.S11-SW-120 |  | Pipes Laying Works for Main Lines of Sewage Network-[Road 16]-[SW-11] | 12d | 2025-06-16 A | 2025-06-21 A | CO-R16.S11-SW-100, PRO-R16-SW-DL-100 FF+3d | 100% |  |
| CO-R16.S11-SW-130 |  | Trench Backfilling and Compaction Works for Main Lines of Sewage Network-[Road 16]-[SW-11] | 10d | 2025-07-06 A | 2025-07-08 A | CO-R16.S11-SW-120 SS+3d, CO-R16.S11-SW-120 FF+3d, ENG-SH-SW-ML-A-110 FF, ENG-MS-SW-ML-A-110 FF, CO-R16.S11-SW-120, CO-R16.S11-SW-210 FF, CO-R17.S14-SW-130 | 100% |  |
|  | 1 | **Manholes** |  | 2025-06-17 | 2025-09-17 |  |  |  |
| CO-R16.S11-SW-160 |  | Excavation Works for Main Line Manholes of Sewage Network-[Road 16]-[SW-11] | 1d | 2025-06-17 A | 2025-06-17 A | CO-R16.S11-SW-120 SS, CO-R17.S14-SW-160 | 100% |  |
| CO-R16.S11-SW-170 |  | Installation RC Footing Works for Main Line Manholes of Sewage Network-[Road 16]-[SW-11] | 2d | 2025-06-18 A | 2025-06-25 A | CO-R16.S11-SW-160, PRO-R16-SW-DL-110 FF+3d | 100% |  |
| CO-R16.S11-SW-180 |  | Install Grp Liner Wall Works for Main Line Manholes of Sewage Network-[Road 16]-[SW-11] | 4d | 2025-06-26 A | 2025-07-02 A | CO-R16.S11-SW-170 | 100% |  |
| CO-R16.S11-SW-200 |  | Backfilling Works for Main Line Manholes of Sewage Network-[Road 16]-[SW-11] | 4d | 2025-07-22 A | 2025-07-24 A | CO-R16.S11-SW-190 | 100% |  |
| CO-R16.S11-SW-190 |  | Pouring Grp Liner Wall Works for Main Line Manholes of Sewage Network-[Road 16]-[SW-11] | 1d | 2025-09-16 A | 2025-09-16 A | CO-R16.S11-SW-180 | 100% |  |
| CO-R16.S11-SW-210 |  | Testing Works for Main Line Manholes of Sewage Network-[Road 16]-[SW-11] | 1d | 2025-09-17 A | 2025-09-17 A | CO-R16.S11-SW-200 | 100% |  |
|  | SD | **Storm Drainage Network** |  | 2025-07-07 | 2026-07-13 |  |  |  |
|  | ML | **Main Line Sections** |  | 2025-07-07 | 2025-07-13 |  |  |  |
| CO-R16.S11-SD-100 |  | Trench Excavation and Bedding Works for Main Lines of Storm Drainage Network-[Road 16]-[SW-11] | 10d | 2025-07-07 A | 2025-07-09 A | ENG-SH-SD-ML-A-110, CO-R16.S11-EW-110, CO-R16.S11-EW-100, CO-R16.S11-SW-130 SS+3d, CO-R16.S11-SW-130 FF+3d, ENG-MS-SD-ML-A-110 | 100% |  |
| CO-R16.S11-SD-120 |  | Pipes Laying Works for Main Lines of Storm Drainage Network-[Road 16]-[SW-11] | 15d | 2025-07-10 A | 2025-07-12 A | CO-R16.S11-SD-100 | 100% |  |
| CO-R16.S11-SD-130 |  | Trench Backfilling and Compaction Works for Main Lines of Storm Drainage Network-[Road 16]-[SW-11] | 15d | 2025-07-13 A | 2025-07-13 A | CO-R16.S11-SD-120 SS+3d, CO-R16.S11-SD-120 FF+3d, ENG-SH-SD-ML-A-110 FF, CO-R15.S09-SD-130, ENG-MS-SD-ML-A-110 FF, CO-R16.S11-SD-120, CO-R16.S11-SD-220 FF | 100% |  |
|  | MH | **Manholes** |  | 2025-07-11 | 2026-07-13 |  |  |  |
| CO-R16.S11-SD-180 |  | Trench Excavation and Bedding Works for Manholes of Storm Drainage Network-[Road 16]-[SW-11] | 1d | 2025-07-11 A | 2025-07-12 A | CO-R16.S11-SD-120 SS, PRO-SD-1DL-100 | 100% |  |
| CO-R16.S11-SD-190 |  | Install RC Footing Works for Manholes of Storm Drainage Network-[Road 16]-[SW-11] | 1d | 2025-07-13 A | 2025-07-13 A | CO-R16.S11-SD-180 | 100% |  |
| CO-R16.S11-SD-200 |  | Install RC Wall Rings & Slab Works for Manholes of Storm Drainage Network-[Road 16]-[SW-11] | 4d | 2025-07-14 A | 2025-07-15 A | CO-R16.S11-SD-190 | 100% |  |
| CO-R16.S11-SD-220 |  | Backfilling Works for Manholes of Storm Drainage Network-[Road 16]-[SW-11] | 7d | 2025-07-16 A | 2025-07-16 A | CO-R16.S11-SD-210 | 100% |  |
| CO-R16.S11-SD-210 |  | Testing Works for Manholes of Storm Drainage Network-[Road 16]-[SW-11] | 1d | 2026-06-04 A | 2026-07-13 A | CO-R16.S11-SD-200 | 100% |  |
|  | CB | **Catch Basin Sections** |  | 2025-07-17 | 2026-07-13 |  |  |  |
| CO-R16.S11-SD-140 |  | Trench Excavation and Bedding Works for Catch Basins of Storm Drainage Network-[Road 16]-[SW-11] | 7d | 2025-07-17 A | 2025-07-17 A | CO-R16.S11-EW-110, ENG-SH-SD-CB-A-110, ENG-MS-SD-CB-A-110, CO-R16.S11-SD-220 | 100% |  |
| CO-R16.S11-SD-150 |  | Installation and Pipes Laying Connection Works for Catch Basins of Storm Drainage Network-[Road 16]-[SW-11] | 7d | 2025-07-18 A | 2025-07-18 A | CO-R16.S11-SD-140, CO-R17.S14-SD-150 | 100% |  |
| CO-R16.S11-SD-170 |  | Trench Backfilling and Compaction Works for Catch Basins of Storm Drainage Network-[Road 16]-[SW-11] | 10d | 2025-07-19 A | 2025-07-19 A | CO-R16.S11-SD-160 | 100% |  |
| CO-R16.S11-SD-160 |  | Testing Works for Catch Basins of Storm Drainage Network-[Road 16]-[SW-11] | 4d | 2026-06-04 A | 2026-07-13 A | CO-R16.S11-SD-150, CO-R16.S11-SD-120 | 100% |  |
|  | IR | **Irrigation Network** |  | 2025-07-19 | 2026-12-08 |  |  |  |
|  | ML | **Main Line Pipes** |  | 2025-07-19 | 2026-12-08 |  |  |  |
| CO-R16.S11-IR-100 |  | Trench Excavation and Bedding Works for Main Lines of Irrigation Network-[Road 16]-[SW-11] | 7d | 2025-07-19 A | 2025-07-21 A | ENG-SH-IR-ML-A-110, CO-R16.S11-EW-110, CO-R16.S11-SD-170, ENG-MS-IR-ML-A-110 | 100% |  |
| CO-R16.S11-IR-110 |  | Pipes Laying Works for Main Lines of Irrigation Network-[Road 16]-[SW-11] | 10d | 2025-07-22 A | 2025-07-25 A | CO-R16.S11-IR-100, PRO-R16-IR-DL-100 FF+3d | 100% |  |
| CO-R16.S11-IR-130 |  | Trench Backfilling and Compaction Works for Main Lines of Irrigation Network-[Road 16]-[SW-11] | 10d | 2025-07-26 A | 2025-07-27 A | CO-R16.S11-IR-120, CO-R16.S11-IR-110 | 100% |  |
| CO-R16.S11-IR-120 |  | Installation Works for Main Line Valves of Irrigation Network-[Road 16]-[SW-11] | 7d | 2026-12-01 | 2026-12-08 | CO-R16.S11-IR-110, PRO-R16-IR-DL-110 FF+3d |  | -104d |
|  | TE | **Telecom Network** |  | 2025-08-04 | 2025-08-30 |  |  |  |
|  | PD | **Ducts Works** |  | 2025-08-04 | 2025-08-21 |  |  |  |
| CO-R16.S11-TE-100 |  | Trench Excavation and Bedding Works for Ducts of Telecom Network-[Road 16]-[SW-11] | 12d | 2025-08-04 A | 2025-08-07 A | CO-R16.S11-IR-130 SS+3d, CO-R16.S11-IR-130 FF+3d, CO-R17.S14-TE-100 | 100% |  |
| CO-R16.S11-TE-110 |  | Pipes Laying Works for Ducts of Telecom Network-[Road 16]-[SW-11] | 7d | 2025-08-10 A | 2025-08-14 A | CO-R16.S11-TE-100, CO-R15.S09-TE-110 | 100% |  |
| CO-R16.S11-TE-120 |  | Pouring Plain Concrete Above Ducts of Telecom Network-[Road 16]-[SW-11] | 7d | 2025-08-16 A | 2025-08-19 A | CO-R16.S11-TE-110, CO-R15.S09-TE-120 | 100% |  |
| CO-R16.S11-TE-130 |  | Trench Backfilling and Compaction Works for Ducts of Telecom Network-[Road 16]-[SW-11] | 7d | 2025-08-20 A | 2025-08-21 A | CO-R16.S11-TE-120, CO-R15.S09-TE-130 | 100% |  |
|  | MH | **Manholes Works** |  | 2025-08-27 | 2025-08-30 |  |  |  |
| CO-R16.S11-TE-140 |  | Excavation Works for Manholes of Telecom Network-[Road 16]-[SW-11] | 7d | 2025-08-27 A | 2025-08-27 A | CO-R15.S09-TE-140, CO-R16.S11-TE-100 | 100% |  |
| CO-R16.S11-TE-150 |  | Installation Works for Manholes of Telecom Network-[Road 16]-[SW-11] | 7d | 2025-08-28 A | 2025-08-28 A | CO-R16.S11-TE-140, CO-R15.S09-TE-150 | 100% |  |
| CO-R16.S11-TE-160 |  | Backfilling Works for Manholes of Telecom Network-[Road 16]-[SW-11] | 7d | 2025-08-30 A | 2025-08-30 A | CO-R16.S11-TE-150, CO-R15.S09-TE-160 | 100% |  |
|  | MV | **Medium Voltage Network** |  | 2025-08-11 | 2025-08-19 |  |  |  |
|  | CW | **Cabling Works** |  | 2025-08-11 | 2025-08-19 |  |  |  |
| CO-R16.S11-MV-ML-280 |  | Trench Excavation and Bedding Works for Medium Voltage Network-[Road 16]-[SW-11] | 18d | 2025-08-11 A | 2025-08-14 A | ENG-SH-MV-A-110, CO-R16.S11-SD-170 SS+3d, CO-R16.S11-SD-170 FF+3d, CO-R16.S11-EW-110, CO-R16.S11-TE-130 SS+3d, CO-R16.S11-TE-130 FF+3d, CO-R15.S09-MV-ML-250, ENG-MS-MV-A-110 | 100% |  |
| CO-R16.S11-MV-ML-290 |  | Cable Laying Works for Medium Voltage Network-[Road 16]-[SW-11] | 18d | 2025-08-12 A | 2025-08-17 A | CO-R16.S11-MV-ML-280 SS+3d, CO-R16.S11-MV-ML-280 FF+3d, CO-R15.S09-MV-ML-260, PRO-R16-MV-DL-100 FF+3d | 100% |  |
| CO-R16.S11-MV-ML-300 |  | Trench Backfilling and Compaction Works for Medium Voltage Network-[Road 16]-[SW-11] | 18d | 2025-08-16 A | 2025-08-19 A | CO-R16.S11-MV-ML-290 SS+3d, CO-R16.S11-MV-ML-290 FF+3d, CO-R15.S09-MV-ML-270 | 100% |  |
|  | RD | **Road Works** |  | 2025-08-04 | 2026-10-12 |  |  |  |
|  | RD | **Pre-Bituminous Construction** |  | 2025-08-04 | 2025-10-20 |  |  |  |
| CO-R16.S11-RD-P-100 |  | Capping and Subgrade Layer for Road Works-[Road 16]-[SW-11] | 18d | 2025-08-04 A | 2025-08-11 A | ENG-SH-RD-A-100, CO-R16.S11-SD-130, CO-R16.S11-SW-130, ENG-MS-RD-A-10, CO-R16.S11-TE-130, CO-R16.S11-TE-160, CO-R16.S11-MV-ML-300 SS+3d, CO-R16.S11-MV-ML-300 FF+3d | 100% |  |
| CO-R16.S11-RD-P-110 |  | Aggregate Base Course Layer for Road Works-[Road 16]-[SW-11] | 18d | 2025-09-17 A | 2025-10-20 A | CO-R16.S11-RD-P-100 SS+3d, CO-R16.S11-RD-P-100 FF+3d, CO-R16.S11-SD-170 SS+3d, CO-R16.S11-SD-170 FF+3d, CO-R15.S09-RD-P-110 | 100% |  |
|  | LS | **Pavement Works** |  | 2026-08-25 | 2026-10-12 |  |  |  |
| CO-R16.S11-RD-P-120 |  | Fixing of Curbstone for Sidewalks Pavement-[Road 16]-[SW-11] | 18d | 2026-08-25 A | 2026-08-31 A | CO-R15.S09-RD-P-120, CO-R16.S11-RD-P-110 SS+3d, CO-R16.S11-RD-P-110 FF+3d | 100% |  |
| CO-R16.S11-RD-P-130 |  | Fixing of Interlock Tiles for Sidewalks Pavement-[Road 16]-[SW-11] | 10d | 2026-08-25 A | 2026-10-12 A | CO-R16.S11-RD-P-120 SS+3d, CO-R16.S11-RD-P-120 FF+3d, CO-R15.S09-RD-P-130 SS, CO-R16-PW-TF-100, CO-R16-PW-TF-110, CO-R16-PW-TF-120, CO-R16-SW-TF-100, CO-R16-SW-TF-110, CO-R16-SW-TF-130, CO-R16-SD-TF-100, CO-R16-SL-TF-220, CO-R16-SL-TF-230 SS, CO-R16-IR-TF-160, CO-R16-MV-TF-220 | 100% |  |
|  | SW_14 | **SW_12** |  | 2025-03-13 | 2027-01-20 |  |  |  |
|  | EW | **Earthworks** |  | 2025-03-13 | 2025-04-20 |  |  |  |
|  | EW | **Earthworks** |  | 2025-03-13 | 2025-04-20 |  |  |  |
| CO-R16.S12-EW-100 |  | Roadway Excavation Works Upto Design Level for Earthworks-[Road 16]-[SW-12] | 10d | 2025-03-13 A | 2025-04-15 A | ENG-MS-RD-A-10, ENG-SH-RD-A-100, CO-R16.S11-EW-100 | 100% |  |
| CO-R16.S12-EW-110 |  | Embankments Works Upto Design Level for Earthworks-[Road 16]-[SW-12] | 12d | 2025-04-16 A | 2025-04-20 A | CO-R16.S12-EW-100, ENG-MS-RD-A-10, ENG-SH-RD-A-100 | 100% |  |
|  | SW | **Sewage Network** |  | 2025-06-16 | 2025-09-17 |  |  |  |
|  | ML | **Main Line Sections** |  | 2025-06-16 | 2025-07-10 |  |  |  |
| CO-R16.S12-SW-100 |  | Trench Excavation and Bedding Works for Main Lines of Sewage Network-[Road 16]-[SW-12] | 12d | 2025-06-16 A | 2025-06-23 A | CO-R16.S12-EW-110, ENG-MS-SW-ML-A-110, ENG-SH-SW-ML-A-110, CO-R16.S11-SW-100 | 100% |  |
| CO-R16.S12-SW-120 |  | Pipes Laying Works for Main Lines of Sewage Network-[Road 16]-[SW-12] | 12d | 2025-06-24 A | 2025-06-27 A | PRO-R16-SW-DL-100 FF+3d, CO-R16.S12-SW-100 | 100% |  |
| CO-R16.S12-SW-130 |  | Trench Backfilling and Compaction Works for Main Lines of Sewage Network-[Road 16]-[SW-12] | 10d | 2025-07-09 A | 2025-07-10 A | CO-R16.S12-SW-120, CO-R16.S12-SW-210 FF, CO-R16.S11-SW-130 | 100% |  |
|  | 1 | **Manholes** |  | 2025-06-28 | 2025-09-17 |  |  |  |
| CO-R16.S12-SW-160 |  | Excavation Works for Main Line Manholes of Sewage Network-[Road 16]-[SW-12] | 1d | 2025-06-28 A | 2025-06-30 A | CO-R16.S12-SW-120 SS | 100% |  |
| CO-R16.S12-SW-170 |  | Installation RC Footing Works for Main Line Manholes of Sewage Network-[Road 16]-[SW-12] | 2d | 2025-07-20 A | 2025-07-22 A | CO-R16.S12-SW-160, PRO-R16-SW-DL-110 FF+3d | 100% |  |
| CO-R16.S12-SW-180 |  | Install Grp Liner Wall Works for Main Line Manholes of Sewage Network-[Road 16]-[SW-12] | 4d | 2025-07-23 A | 2025-07-24 A | CO-R16.S12-SW-170 | 100% |  |
| CO-R16.S12-SW-200 |  | Backfilling Works for Main Line Manholes of Sewage Network-[Road 16]-[SW-12] | 4d | 2025-07-26 A | 2025-07-27 A | CO-R16.S12-SW-190 | 100% |  |

| ID | WBS | Task | Duration | Start | Finish | Predecessors | Complete | Total float |
| --- | --- | --- | --- | --- | --- | --- | --- | --- |
| CO-R16.S12-SW-190 |  | Pouring Grp Liner Wall Works for Main Line Manholes of Sewage Network-[Road 16]-[SW-12] | 1d | 2025-09-16 A | 2025-09-16 A | CO-R16.S12-SW-180 | 100% |  |
| CO-R16.S12-SW-210 |  | Testing Works for Main Line Manholes of Sewage Network-[Road 16]-[SW-12] | 1d | 2025-09-17 A | 2025-09-17 A | CO-R16.S12-SW-200 | 100% |  |
|  | SD | **Storm Drainage Network** |  | 2025-07-10 | 2026-07-13 |  |  |  |
|  | ML | **Main Line Sections** |  | 2025-07-10 | 2025-07-19 |  |  |  |
| CO-R16.S12-SD-100 |  | Trench Excavation and Bedding Works for Main Lines of Storm Drainage Network-[Road 16]-[SW-12] | 10d | 2025-07-10 A | 2025-07-11 A | CO-R16.S12-EW-110, CO-R16.S12-EW-100, CO-R16.S12-SW-130 SS+3d, CO-R16.S12-SW-130 FF+3d | 100% |  |
| CO-R16.S12-SD-120 |  | Pipes Laying Works for Main Lines of Storm Drainage Network-[Road 16]-[SW-12] | 15d | 2025-07-12 A | 2025-07-13 A | PRO-R16-SD-DL-120 FF+3d, CO-R16.S12-SD-100 | 100% |  |
| CO-R16.S12-SD-130 |  | Trench Backfilling and Compaction Works for Main Lines of Storm Drainage Network-[Road 16]-[SW-12] | 15d | 2025-07-19 A | 2025-07-19 A | CO-R16.S12-SD-120 SS+3d, CO-R16.S12-SD-120 FF+3d, CO-R15.S10-SD-130, CO-R16.S12-SD-120, CO-R16.S12-SD-220 FF | 100% |  |
|  | MH | **Manholes** |  | 2025-07-14 | 2026-07-13 |  |  |  |
| CO-R16.S12-SD-180 |  | Trench Excavation and Bedding Works for Manholes of Storm Drainage Network-[Road 16]-[SW-12] | 1d | 2025-07-14 A | 2025-07-15 A | CO-R16.S12-SD-120 SS, PRO-SD-1DL-100 | 100% |  |
| CO-R16.S12-SD-190 |  | Install RC Footing Works for Manholes of Storm Drainage Network-[Road 16]-[SW-12] | 1d | 2025-07-16 A | 2025-07-16 A | CO-R16.S12-SD-180 | 100% |  |
| CO-R16.S12-SD-200 |  | Install RC Wall Rings & Slab Works for Manholes of Storm Drainage Network-[Road 16]-[SW-12] | 4d | 2025-07-17 A | 2025-07-17 A | CO-R16.S12-SD-190 | 100% |  |
| CO-R16.S12-SD-220 |  | Backfilling Works for Manholes of Storm Drainage Network-[Road 16]-[SW-12] | 7d | 2025-07-18 A | 2025-07-18 A | CO-R16.S12-SD-210 | 100% |  |
| CO-R16.S12-SD-210 |  | Testing Works for Manholes of Storm Drainage Network-[Road 16]-[SW-12] | 1d | 2026-06-04 A | 2026-07-13 A | CO-R16.S12-SD-200 | 100% |  |
|  | CB | **Catch Basin Sections** |  | 2025-07-19 | 2026-07-13 |  |  |  |
| CO-R16.S12-SD-140 |  | Trench Excavation and Bedding Works for Catch Basins of Storm Drainage Network-[Road 16]-[SW-12] | 7d | 2025-07-19 A | 2025-07-19 A | CO-R16.S12-EW-110, CO-R16.S12-SD-220 | 100% |  |
| CO-R16.S12-SD-150 |  | Installation and Pipes Laying Connection Works for Catch Basins of Storm Drainage Network-[Road 16]-[SW-12] | 7d | 2025-07-20 A | 2025-07-20 A | CO-R16.S12-SD-140, PRO-R16-SD-DL-130 FF+3d | 100% |  |
| CO-R16.S12-SD-170 |  | Trench Backfilling and Compaction Works for Catch Basins of Storm Drainage Network-[Road 16]-[SW-12] | 10d | 2025-07-21 A | 2025-07-21 A | CO-R16.S12-SD-160 | 100% |  |
| CO-R16.S12-SD-160 |  | Testing Works for Catch Basins of Storm Drainage Network-[Road 16]-[SW-12] | 4d | 2026-06-04 A | 2026-07-13 A | CO-R16.S12-SD-150, CO-R16.S12-SD-120, PRO-R16-SD-DL-110 FF+3d | 100% |  |
|  | PW | **Potable Water Network** |  | 2025-04-21 | 2027-01-20 |  |  |  |
|  | ML | **Main Line Sections** |  | 2025-04-21 | 2025-06-10 |  |  |  |
| CO-R16.S12-PW-100 |  | Trench Excavation and Bedding Works for Main Lines of Potable Water Network-[Road 16]-[SW-12] | 6d | 2025-04-21 A | 2025-04-26 A | CO-R16.S12-EW-110, CO-R16.S12-EW-100, CO-R16.S12-SW-130, CO-R16.S12-SD-130 | 100% |  |
| CO-R16.S12-PW-110 |  | Pipes Laying and accessories for Main Lines of Potable Water Network-[Road 16]-[SW-12] | 6d | 2025-04-29 A | 2025-05-30 A | CO-R16.S12-PW-100, CO-R15.S10-PW-110, PRO-R16-PW-DL-100 FF+3d, PRO-R16-PW-DL-110 FF+3d | 100% |  |
| CO-R16.S12-PW-130 |  | Trench Backfilling and Compaction Works for Main Lines of Potable Water Network-[Road 16]-[SW-12] | 5.75d | 2025-06-01 A | 2025-06-10 A | CO-R16.S12-PW-110, CO-R15.S10-PW-130, CO-R16.S12-PW-210 FF | 100% |  |
|  | VC | **Valve Chamber** |  | 2026-12-24 | 2026-12-30 |  |  |  |
| CO-R16.S12-PW-210 |  | Installation Works for Main Line Valves and Valve Chambers of Potable Water Network-[Road 16]-[SW-12] | 6d | 2026-12-24 | 2026-12-30 | CO-R16.S12-PW-110 |  | -74d |
|  | FH | **Fire Hydrant** |  | 2026-12-24 | 2027-01-20 |  |  |  |
| CO-R16.S12-PW-140 |  | Excavation Works for Fire Hydrants of Potable Water Network-[Road 16]-[SW-12] | 6d | 2026-12-24 | 2026-12-30 | CO-R16.S12-PW-110 SS+3d, CO-R16.S12-PW-110 FF+3d, CO-R16.S12-EW-110, CO-R16.S12-SW-130 SS+3d, CO-R16.S12-SW-130 FF+3d |  | -86d |
| CO-R16.S12-PW-150 |  | Installation Works for Fire Hydrant of Potable Water Network-[Road 16]-[SW-12] | 6d | 2027-01-07 | 2027-01-13 | CO-R16.S12-PW-140, CO-R15.S10-PW-150, PRO-R16-PW-DL-120 FF+3d |  | -92d |
| CO-R16.S12-PW-160 |  | Trench Backfilling and Compaction Works for Fire Hydrants of Potable Water Network-[Road 16]-[SW-12] | 6d | 2027-01-14 | 2027-01-20 | CO-R16.S12-PW-150, CO-R15.S10-PW-160 |  | -92d |
|  | TE | **Telecom Network** |  | 2025-08-20 | 2025-09-01 |  |  |  |
|  | PD | **Ducts Works** |  | 2025-08-20 | 2025-09-01 |  |  |  |
| CO-R16.S12-TE-100 |  | Trench Excavation and Bedding Works for Ducts of Telecom Network-[Road 16]-[SW-12] | 7d | 2025-08-20 A | 2025-08-23 A | CO-R16.S11-TE-100 | 100% |  |
| CO-R16.S12-TE-110 |  | Pipes Laying Works for Ducts of Telecom Network-[Road 16]-[SW-12] | 7d | 2025-08-24 A | 2025-08-26 A | CO-R16.S12-TE-100, CO-R15.S10-TE-110, PRO-R16-TE-DL-100 FF+3d | 100% |  |
| CO-R16.S12-TE-120 |  | Pouring Plain Concrete Above Ducts of Telecom Network-[Road 16]-[SW-12] | 7d | 2025-08-27 A | 2025-08-30 A | CO-R16.S12-TE-110, CO-R15.S10-TE-120 | 100% |  |
| CO-R16.S12-TE-130 |  | Trench Backfilling and Compaction Works for Ducts of Telecom Network-[Road 16]-[SW-12] | 7d | 2025-08-31 A | 2025-09-01 A | CO-R16.S12-TE-120, CO-R15.S10-TE-130 | 100% |  |
|  | MH | **Manholes Works** |  | 2025-08-27 | 2025-08-30 |  |  |  |
| CO-R16.S12-TE-140 |  | Excavation Works for Manholes of Telecom Network-[Road 16]-[SW-12] | 7d | 2025-08-27 A | 2025-08-27 A | CO-R15.S10-TE-140, CO-R16.S11-TE-140, CO-R16.S12-TE-100 | 100% |  |
| CO-R16.S12-TE-150 |  | Installation Works for Manholes of Telecom Network-[Road 16]-[SW-12] | 7d | 2025-08-28 A | 2025-08-28 A | CO-R16.S12-TE-140, CO-R15.S10-TE-150, PRO-R16-TE-DL-110 FF+3d | 100% |  |
| CO-R16.S12-TE-160 |  | Backfilling Works for Manholes of Telecom Network-[Road 16]-[SW-12] | 7d | 2025-08-30 A | 2025-08-30 A | CO-R16.S12-TE-150, CO-R15.S10-TE-160 | 100% |  |
|  | RD | **Road Works** |  | 2025-08-04 | 2026-10-12 |  |  |  |
|  | RD | **Pre-Bituminous Construction** |  | 2025-08-04 | 2025-10-20 |  |  |  |
| CO-R16.S12-RD-P-100 |  | Capping and Subgrade Layer for Road Works-[Road 16]-[SW-12] | 18d | 2025-08-04 A | 2025-08-11 A | CO-R16.S12-SD-130, CO-R16.S12-SW-130, CO-R16.S12-PW-130, CO-R16.S12-PW-160, PRO-R16-RD-DL-100 FF+3d, CO-R16.S12-TE-130, CO-R16.S12-TE-160 | 100% |  |
| CO-R16.S12-RD-P-110 |  | Aggregate Base Course Layer for Road Works-[Road 16]-[SW-12] | 18d | 2025-09-17 A | 2025-10-20 A | CO-R16.S12-RD-P-100 SS+3d, CO-R16.S12-RD-P-100 FF+3d, CO-R16.S12-SD-170 SS+3d, CO-R16.S12-SD-170 FF+3d, CO-R15.S10-RD-P-110, PRO-R16-RD-DL-110 FF+3d | 100% |  |
|  | LS | **Pavement Works** |  | 2026-08-25 | 2026-10-12 |  |  |  |
| CO-R16.S12-RD-P-120 |  | Fixing of Curbstone for Sidewalks Pavement-[Road 16]-[SW-12] | 18d | 2026-08-25 A | 2026-08-31 A | CO-R15.S10-RD-P-120, PRO-R16-RD-DL-130 FF+3d, CO-R16.S12-RD-P-110 SS+3d, CO-R16.S12-RD-P-110 FF+3d | 100% |  |
| CO-R16.S12-RD-P-130 |  | Fixing of Interlock Tiles for Sidewalks Pavement-[Road 16]-[SW-12] | 10d | 2026-08-25 A | 2026-10-12 A | CO-R16.S12-RD-P-120 SS+3d, CO-R16.S12-RD-P-120 FF+3d, CO-R15.S10-RD-P-130, PRO-R16-RD-DL-120 FF+3d, CO-R16-PW-TF-100, CO-R16-PW-TF-110, CO-R16-PW-TF-120, CO-R16-SW-TF-100, CO-R16-SW-TF-110, CO-R16-SW-TF-130, CO-R16-SD-TF-100, CO-R16-SD-TF-120, CO-R16-SL-TF-220, CO-R16-SL-TF-230, CO-R16-IR-TF-160, CO-R16-MV-TF-220 | 100% |  |
|  | 9 | **Road 17 Local 1 ( 500 LM )** |  | 2025-02-27 | 2027-06-05 |  |  |  |
|  | SW_15 | **SW_13** |  | 2025-02-27 | 2026-12-02 |  |  |  |
|  | EW | **Earthworks** |  | 2025-02-27 | 2025-03-07 |  |  |  |
|  | EW | **Earthworks** |  | 2025-02-27 | 2025-03-07 |  |  |  |
| CO-R17.S13-EW-100 |  | Roadway Excavation Works Upto Design Level for Earthworks-[Road 17]-[SW-13] | 10d | 2025-02-27 A | 2025-03-03 A | ENG-MS-RD-A-10, ENG-SH-RD-A-100, CO-R18.S16-EW-120 | 100% |  |
| CO-R17.S13-EW-110 |  | Embankments Works Upto Design Level for Earthworks-[Road 17]-[SW-13] | 12d | 2025-03-04 A | 2025-03-07 A | CO-R17.S13-EW-100, ENG-MS-RD-A-10, ENG-SH-RD-A-100 | 100% |  |
|  | SW | **Sewage Network** |  | 2025-05-20 | 2025-09-17 |  |  |  |
|  | ML | **Main Line Sections** |  | 2025-05-20 | 2025-06-21 |  |  |  |
| CO-R17.S13-SW-100 |  | Trench Excavation and Bedding Works for Main Lines of Sewage Network-[Road 17]-[SW-13] | 12d | 2025-05-20 A | 2025-05-22 A | CO-R17.S13-EW-110, ENG-MS-SW-ML-A-110, ENG-SH-SW-ML-A-110, CO-R18.S16-SW-220 | 100% |  |
| CO-R17.S13-SW-120 |  | Pipes Laying Works for Main Lines of Sewage Network-[Road 17]-[SW-13] | 12d | 2025-06-08 A | 2025-06-14 A | CO-R17.S13-SW-100, PRO-R17-SW-DL-100 FF+3d | 100% |  |
| CO-R17.S13-SW-130 |  | Trench Backfilling and Compaction Works for Main Lines of Sewage Network-[Road 17]-[SW-13] | 10d | 2025-06-15 A | 2025-06-21 A | ENG-SH-SW-ML-A-110 FF, ENG-MS-SW-ML-A-110 FF, CO-R17.S13-SW-120, CO-R17.S13-SW-210 FF, CO-R18.S16-SW-240 | 100% |  |
|  | 1 | **Manholes** |  | 2025-06-11 | 2025-09-17 |  |  |  |
| CO-R17.S13-SW-160 |  | Excavation Works for Main Line Manholes of Sewage Network-[Road 17]-[SW-13] | 1d | 2025-06-11 A | 2025-06-14 A | CO-R17.S13-SW-120 SS | 100% |  |
| CO-R17.S13-SW-170 |  | Installation RC Footing Works for Main Line Manholes of Sewage Network-[Road 17]-[SW-13] | 2.25d | 2025-06-15 A | 2025-06-16 A | CO-R17.S13-SW-160, PRO-R17-SW-DL-110 FF+3d | 100% |  |
| CO-R17.S13-SW-180 |  | Install Grp Liner Wall Works for Main Line Manholes of Sewage Network-[Road 17]-[SW-13] | 4d | 2025-06-17 A | 2025-06-18 A | CO-R17.S13-SW-170 | 100% |  |
| CO-R17.S13-SW-200 |  | Backfilling Works for Main Line Manholes of Sewage Network-[Road 17]-[SW-13] | 4d | 2025-06-19 A | 2025-06-21 A | CO-R17.S13-SW-190 | 100% |  |
| CO-R17.S13-SW-190 |  | Pouring Grp Liner Wall Works for Main Line Manholes of Sewage Network-[Road 17]-[SW-13] | 1d | 2025-09-16 A | 2025-09-16 A | CO-R17.S13-SW-180 | 100% |  |
| CO-R17.S13-SW-210 |  | Testing Works for Main Line Manholes of Sewage Network-[Road 17]-[SW-13] | 1d | 2025-09-17 A | 2025-09-17 A | CO-R17.S13-SW-200 | 100% |  |
|  | SD | **Storm Drainage Network** |  | 2025-06-03 | 2026-07-13 |  |  |  |
|  | ML | **Main Line Sections** |  | 2025-06-22 | 2025-06-30 |  |  |  |
| CO-R17.S13-SD-100 |  | Trench Excavation and Bedding Works for Main Lines of Storm Drainage Network-[Road 17]-[SW-13] | 10d | 2025-06-22 A | 2025-06-23 A | ENG-SH-SD-ML-A-110, CO-R17.S13-EW-110, CO-R17.S13-EW-100, CO-R17.S13-SW-130 SS+3d, CO-R17.S13-SW-130 FF+3d, ENG-MS-SD-ML-A-110 | 100% |  |
| CO-R17.S13-SD-120 |  | Pipes Laying Works for Main Lines of Storm Drainage Network-[Road 17]-[SW-13] | 20d | 2025-06-24 A | 2025-06-28 A | CO-R17.S13-SD-100 | 100% |  |
| CO-R17.S13-SD-130 |  | Trench Backfilling and Compaction Works for Main Lines of Storm Drainage Network-[Road 17]-[SW-13] | 20d | 2025-06-29 A | 2025-06-30 A | CO-R17.S13-SD-120 SS+3d, CO-R17.S13-SD-120 FF+3d, ENG-SH-SD-ML-A-110 FF, CO-R16.S11-SD-130, ENG-MS-SD-ML-A-110 FF, CO-R17.S13-SD-120, CO-R17.S13-SD-220 FF | 100% |  |
|  | MH | **Manholes** |  | 2025-06-03 | 2026-07-13 |  |  |  |

| ID | WBS | Task | Duration | Start | Finish | Predecessors | Complete | Total float |
| --- | --- | --- | --- | --- | --- | --- | --- | --- |
| CO-R17.S13-SD-220 |  | Backfilling Works for Manholes of Storm Drainage Network-[Road 17]-[SW-13] | 7d | 2025-06-03 A | 2025-06-08 A | CO-R17.S13-SD-210 | 100% |  |
| CO-R17.S13-SD-180 |  | Trench Excavation and Bedding Works for Manholes of Storm Drainage Network-[Road 17]-[SW-13] | 1d | 2025-06-29 A | 2025-06-29 A | CO-R17.S13-SD-120 SS, PRO-SD-1DL-100 | 100% |  |
| CO-R17.S13-SD-190 |  | Install RC Footing Works for Manholes of Storm Drainage Network-[Road 17]-[SW-13] | 1d | 2025-06-30 A | 2025-06-30 A | CO-R17.S13-SD-180 | 100% |  |
| CO-R17.S13-SD-200 |  | Install RC Wall Rings & Slab Works for Manholes of Storm Drainage Network-[Road 17]-[SW-13] | 4d | 2025-07-01 A | 2025-07-02 A | CO-R17.S13-SD-190 | 100% |  |
| CO-R17.S13-SD-210 |  | Testing Works for Manholes of Storm Drainage Network-[Road 17]-[SW-13] | 1d | 2026-06-04 A | 2026-07-13 A | CO-R17.S13-SD-200 | 100% |  |
|  | CB | **Catch Basin Sections** |  | 2025-06-07 | 2026-07-13 |  |  |  |
| CO-R17.S13-SD-170 |  | Trench Backfilling and Compaction Works for Catch Basins of Storm Drainage Network-[Road 17]-[SW-13] | 7d | 2025-06-07 A | 2025-06-10 A | CO-R17.S13-SD-160 | 100% |  |
| CO-R17.S13-SD-140 |  | Trench Excavation and Bedding Works for Catch Basins of Storm Drainage Network-[Road 17]-[SW-13] | 7d | 2025-06-24 A | 2025-06-30 A | CO-R17.S13-EW-110, ENG-SH-SD-CB-A-110, ENG-MS-SD-CB-A-110, CO-R17.S13-SD-220 | 100% |  |
| CO-R17.S13-SD-150 |  | Installation and Pipes Laying Connection Works for Catch Basins of Storm Drainage Network-[Road 17]-[SW-13] | 7d | 2025-07-01 A | 2025-07-06 A | CO-R17.S13-SD-140, CO-R18.S16-SD-270 | 100% |  |
| CO-R17.S13-SD-160 |  | Testing Works for Catch Basins of Storm Drainage Network-[Road 17]-[SW-13] | 7d | 2026-06-04 A | 2026-07-13 A | CO-R17.S13-SD-150, CO-R17.S13-SD-120 | 100% |  |
|  | IR | **Irrigation Network** |  | 2025-05-01 | 2026-12-02 |  |  |  |
|  | ML | **Main Line Pipes** |  | 2025-05-01 | 2026-12-02 |  |  |  |
| CO-R17.S13-IR-100 |  | Trench Excavation and Bedding Works for Main Lines of Irrigation Network-[Road 17]-[SW-13] | 7d | 2025-05-01 A | 2025-05-10 A | ENG-SH-IR-ML-A-110, CO-R17.S13-EW-110, CO-R17.S13-SD-170, ENG-MS-IR-ML-A-110 | 100% |  |
| CO-R17.S13-IR-110 |  | Pipes Laying Works for Main Lines of Irrigation Network-[Road 17]-[SW-13] | 10d | 2025-05-21 A | 2025-05-27 A | CO-R17.S13-IR-100, PRO-R17-IR-DL-100 FF+3d | 100% |  |
| CO-R17.S13-IR-130 |  | Trench Backfilling and Compaction Works for Main Lines of Irrigation Network-[Road 17]-[SW-13] | 9d | 2025-06-29 A | 2025-07-07 A | CO-R17.S13-IR-120, CO-R17.S13-IR-110 | 100% |  |
| CO-R17.S13-IR-120 |  | Installation Works for Main Line Valves of Irrigation Network-[Road 17]-[SW-13] | 7d | 2026-11-25 | 2026-12-02 | CO-R17.S13-IR-110, PRO-R17-IR-DL-110 FF+3d |  | -225.5d |
|  | TE | **Telecom Network** |  | 2025-07-14 | 2025-07-27 |  |  |  |
|  | PD | **Ducts Works** |  | 2025-07-14 | 2025-07-25 |  |  |  |
| CO-R17.S13-TE-100 |  | Trench Excavation and Bedding Works for Ducts of Telecom Network-[Road 17]-[SW-13] | 7d | 2025-07-14 A | 2025-07-17 A | CO-R17.S13-IR-130, CO-R17.S13-EW-110, CO-R18.S16-TE-170 | 100% |  |
| CO-R17.S13-TE-110 |  | Pipes Laying Works for Ducts of Telecom Network-[Road 17]-[SW-13] | 7d | 2025-07-18 A | 2025-07-21 A | CO-R17.S13-TE-100, CO-R16.S11-TE-110 | 100% |  |
| CO-R17.S13-TE-120 |  | Pouring Plain Concrete Above Ducts of Telecom Network-[Road 17]-[SW-13] | 7d | 2025-07-22 A | 2025-07-22 A | CO-R17.S13-TE-110, CO-R16.S11-TE-120 | 100% |  |
| CO-R17.S13-TE-130 |  | Trench Backfilling and Compaction Works for Ducts of Telecom Network-[Road 17]-[SW-13] | 7d | 2025-07-23 A | 2025-07-25 A | CO-R17.S13-TE-120, CO-R16.S11-TE-130 | 100% |  |
|  | MH | **Manholes Works** |  | 2025-07-19 | 2025-07-27 |  |  |  |
| CO-R17.S13-TE-140 |  | Excavation Works for Manholes of Telecom Network-[Road 17]-[SW-13] | 7d | 2025-07-19 A | 2025-07-22 A | CO-R16.S11-TE-140, CO-R17.S13-TE-100 | 100% |  |
| CO-R17.S13-TE-150 |  | Installation Works for Manholes of Telecom Network-[Road 17]-[SW-13] | 7d | 2025-07-23 A | 2025-07-24 A | CO-R17.S13-TE-140, CO-R16.S11-TE-150 | 100% |  |
| CO-R17.S13-TE-160 |  | Backfilling Works for Manholes of Telecom Network-[Road 17]-[SW-13] | 7d | 2025-07-26 A | 2025-07-27 A | CO-R17.S13-TE-150, CO-R16.S11-TE-160 | 100% |  |
|  | MV | **Medium Voltage Network** |  | 2025-07-23 | 2026-07-13 |  |  |  |
|  | CW | **Cabling Works** |  | 2025-07-23 | 2025-07-26 |  |  |  |
| CO-R17.S13-MV-ML-310 |  | Trench Excavation and Bedding Works for Medium Voltage Network-[Road 17]-[SW-13] | 18d | 2025-07-23 A | 2025-07-25 A | ENG-SH-MV-A-110, CO-R17.S13-SD-170 SS+3d, CO-R17.S13-SD-170 FF+3d, CO-R17.S13-EW-110, CO-R17.S13-TE-130 SS+3d, CO-R17.S13-TE-130 FF+3d, CO-R16.S11-MV-ML-280, ENG-MS-MV-A-110, CO-R17.S14-SL-160 | 100% |  |
| CO-R17.S13-MV-ML-320 |  | Cable Laying Works for Medium Voltage Network-[Road 17]-[SW-13] | 18d | 2025-07-23 A | 2025-07-25 A | CO-R17.S13-MV-ML-310 SS+3d, CO-R17.S13-MV-ML-310 FF+3d, CO-R16.S11-MV-ML-290, PRO-R17-MV-DL-100 FF+3d | 100% |  |
| CO-R17.S13-MV-ML-330 |  | Trench Backfilling and Compaction Works for Medium Voltage Network-[Road 17]-[SW-13] | 18d | 2025-07-24 A | 2025-07-26 A | CO-R17.S13-MV-ML-320 SS+3d, CO-R17.S13-MV-ML-320 FF+3d, CO-R16.S11-MV-ML-300 | 100% |  |
|  | SS | **RMU Works** |  | 2026-07-07 | 2026-07-13 |  |  |  |
| CO-R17.S13-MV-130 |  | Foundation Excavation Works for RMU of Medium Voltage Network-[Road 17]-[SW-13] | 6d | 2026-07-07 A | 2026-07-13 A | ENG-SH-MV-A-110, ENG-MS-MV-A-110, CO-R17.S13-EW-100, CO-R17.S13-EW-110 | 100% |  |
| CO-R17.S13-MV-150 |  | Installation Works for RMU Concrete Foundations of Medium Voltage Network-[Road 17]-[SW-13] | 8d | 2026-07-07 A | 2026-07-13 A | CO-R17.S13-MV-130, CO-R10.S03-ES-MV-150, PRO-R17-MV-DL-120, CO-R10.S03-WE-MV-150 | 100% |  |
| CO-R17.S13-MV-170 |  | Installation Works for RMU of Medium Voltage Network-[Road 17]-[SW-13] | 5d | 2026-07-07 A | 2026-07-13 A | CO-R17.S13-MV-150, ENG-SH-MV-A-110, ENG-MS-MV-A-110, PRO-MV-LL-SH/DL-10, CO-R10.S03-ES-MV-170, PRO-R17-MV-LL-MSI-40, CO-R10.S03-WE-MV-170 | 100% |  |
| CO-R17.S13-MV-SS-150 |  | Termination Works for RMU of Medium Voltage Network-[Road 17]-[SW-13] | 5d | 2026-07-07 A | 2026-07-13 A | CO-R17.S13-MV-170 | 100% |  |
| CO-R17.S13-MV-SS-160 |  | Testing Works for RMU of Medium Voltage Network-[Road 17]-[SW-13] | 5d | 2026-07-07 A | 2026-07-13 A | CO-R17.S13-MV-SS-150 | 100% |  |
|  | RD | **Road Works** |  | 2025-06-22 | 2026-09-19 |  |  |  |
|  | RD | **Pre-Bituminous Construction** |  | 2025-06-22 | 2025-09-14 |  |  |  |
| CO-R17.S13-RD-P-100 |  | Capping and Subgrade Layer for Road Works-[Road 17]-[SW-13] | 15d | 2025-06-22 A | 2025-07-05 A | ENG-SH-RD-A-100, CO-R17.S13-SD-130, CO-R17.S13-SW-130, ENG-MS-RD-A-10, CO-R17.S13-TE-130, CO-R17.S13-TE-160, CO-R17.S13-MV-ML-330 SS+3d, CO-R17.S13-MV-ML-330 FF+3d | 100% |  |
| CO-R17.S13-RD-P-110 |  | Aggregate Base Course Layer for Road Works-[Road 17]-[SW-13] | 12d | 2025-09-13 A | 2025-09-14 A | CO-R17.S13-RD-P-100 SS+3d, CO-R17.S13-RD-P-100 FF+3d, CO-R17.S13-SD-170 SS+3d, CO-R17.S13-SD-170 FF+3d, CO-R16.S11-RD-P-110 | 100% |  |
|  | LS | **Pavement Works** |  | 2026-08-25 | 2026-09-19 |  |  |  |
| CO-R17.S13-RD-P-120 |  | Fixing of Curbstone for Sidewalks Pavement-[Road 17]-[SW-13] | 12d | 2026-08-25 A | 2026-08-31 A | CO-R16.S11-RD-P-120, CO-R17.S13-RD-P-110 SS+3d, CO-R17.S13-RD-P-110 FF+3d | 100% |  |
| CO-R17.S13-RD-P-130 |  | Fixing of Interlock Tiles for Sidewalks Pavement-[Road 17]-[SW-13] | 10d | 2026-09-12 A | 2026-09-19 A | CO-R17.S13-RD-P-120 SS+3d, CO-R17.S13-RD-P-120 FF+3d, CO-R16.S11-RD-P-130, CO-R17-PW-TF-100, CO-R17-PW-TF-110, CO-R17-PW-TF-120, CO-R17-SW-TF-100, CO-R17-SW-TF-110, CO-R17-SW-TF-130, CO-R17-SD-TF-100, CO-R17-SL-TF-240, CO-R17-SL-TF-250, CO-R17-IR-TF-170, CO-R17-MV-TF-240 | 100% |  |
|  | SW_16 | **SW_14** |  | 2025-03-04 | 2027-06-05 |  |  |  |
|  | EW | **Earthworks** |  | 2025-03-04 | 2025-03-27 |  |  |  |
|  | EW | **Earthworks** |  | 2025-03-04 | 2025-03-27 |  |  |  |
| CO-R17.S14-EW-100 |  | Roadway Excavation Works Upto Design Level for Earthworks-[Road 17]-[SW-14] | 10d | 2025-03-04 A | 2025-03-15 A | ENG-MS-RD-A-10, ENG-SH-RD-A-100, CO-R17.S13-EW-100 | 100% |  |
| CO-R17.S14-EW-110 |  | Embankments Works Upto Design Level for Earthworks-[Road 17]-[SW-14] | 12d | 2025-03-16 A | 2025-03-27 A | ENG-MS-RD-A-10, ENG-SH-RD-A-100, CO-R17.S14-EW-100 | 100% |  |
|  | SW | **Sewage Network** |  | 2025-05-23 | 2025-07-05 |  |  |  |
|  | ML | **Main Line Sections** |  | 2025-05-23 | 2025-07-05 |  |  |  |
| CO-R17.S14-SW-100 |  | Trench Excavation and Bedding Works for Main Lines of Sewage Network-[Road 17]-[SW-14] | 12d | 2025-05-23 A | 2025-05-25 A | CO-R17.S14-EW-110, ENG-MS-SW-ML-A-110, ENG-SH-SW-ML-A-110, CO-R17.S13-SW-100 | 100% |  |
| CO-R17.S14-SW-120 |  | Pipes Laying Works for Main Lines of Sewage Network-[Road 17]-[SW-14] | 12d | 2025-05-26 A | 2025-06-12 A | PRO-R17-SW-DL-100 FF+3d, CO-R17.S14-SW-100 | 100% |  |
| CO-R17.S14-SW-130 |  | Trench Backfilling and Compaction Works for Main Lines of Sewage Network-[Road 17]-[SW-14] | 10d | 2025-06-22 A | 2025-07-05 A | CO-R17.S14-SW-120, CO-R17.S14-SW-210 FF, CO-R17.S13-SW-130 | 100% |  |
|  | 1 | **Manholes** |  | 2025-06-13 | 2025-06-28 |  |  |  |
| CO-R17.S14-SW-160 |  | Excavation Works for Main Line Manholes of Sewage Network-[Road 17]-[SW-14] | 1d | 2025-06-13 A | 2025-06-13 A | CO-R17.S14-SW-120 SS | 100% |  |
| CO-R17.S14-SW-170 |  | Installation RC Footing Works for Main Line Manholes of Sewage Network-[Road 17]-[SW-14] | 2d | 2025-06-14 A | 2025-06-15 A | CO-R17.S14-SW-160, PRO-R17-SW-DL-110 FF+3d | 100% |  |
| CO-R17.S14-SW-180 |  | Install Grp Liner Wall Works for Main Line Manholes of Sewage Network-[Road 17]-[SW-14] | 4d | 2025-06-16 A | 2025-06-20 A | CO-R17.S14-SW-170 | 100% |  |
| CO-R17.S14-SW-190 |  | Pouring Grp Liner Wall Works for Main Line Manholes of Sewage Network-[Road 17]-[SW-14] | 1d | 2025-06-21 A | 2025-06-21 A | CO-R17.S14-SW-180 | 100% |  |
| CO-R17.S14-SW-200 |  | Backfilling Works for Main Line Manholes of Sewage Network-[Road 17]-[SW-14] | 4d | 2025-06-22 A | 2025-06-28 A | CO-R17.S14-SW-190 | 100% |  |
| CO-R17.S14-SW-210 |  | Testing Works for Main Line Manholes of Sewage Network-[Road 17]-[SW-14] | 1d | 2025-06-22 A | 2025-06-28 A | CO-R17.S14-SW-200 | 100% |  |
|  | SD | **Storm Drainage Network** |  | 2025-06-23 | 2026-07-13 |  |  |  |
|  | ML | **Main Line Sections** |  | 2025-06-23 | 2025-07-10 |  |  |  |
| CO-R17.S14-SD-100 |  | Trench Excavation and Bedding Works for Main Lines of Storm Drainage Network-[Road 17]-[SW-14] | 10d | 2025-06-23 A | 2025-07-06 A | CO-R17.S14-EW-110, CO-R17.S14-EW-100, CO-R17.S14-SW-130 SS+3d, CO-R17.S14-SW-130 FF+3d | 100% |  |
| CO-R17.S14-SD-120 |  | Pipes Laying Works for Main Lines of Storm Drainage Network-[Road 17]-[SW-14] | 20d | 2025-07-07 A | 2025-07-10 A | PRO-R17-SD-DL-120 FF+3d, CO-R17.S14-SD-100 | 100% |  |
| CO-R17.S14-SD-130 |  | Trench Backfilling and Compaction Works for Main Lines of Storm Drainage Network-[Road 17]-[SW-14] | 20d | 2025-07-08 A | 2025-07-10 A | CO-R17.S14-SD-120 SS+3d, CO-R17.S14-SD-120 FF+3d, CO-R16.S12-SD-130, CO-R17.S14-SD-120, CO-R17.S14-SD-220 FF | 100% |  |
|  | MH | **Manholes** |  | 2025-07-08 | 2026-07-13 |  |  |  |
| CO-R17.S14-SD-180 |  | Trench Excavation and Bedding Works for Manholes of Storm Drainage Network-[Road 17]-[SW-14] | 1d | 2025-07-08 A | 2025-07-11 A | CO-R17.S14-SD-120 SS, PRO-SD-1DL-100 | 100% |  |
| CO-R17.S14-SD-190 |  | Install RC Footing Works for Manholes of Storm Drainage Network-[Road 17]-[SW-14] | 1d | 2025-07-12 A | 2025-07-12 A | CO-R17.S14-SD-180 | 100% |  |
| CO-R17.S14-SD-200 |  | Install RC Wall Rings & Slab Works for Manholes of Storm Drainage Network-[Road 17]-[SW-14] | 4d | 2025-07-13 A | 2025-07-14 A | CO-R17.S14-SD-190 | 100% |  |

| ID | WBS | Task | Duration | Start | Finish | Predecessors | Complete | Total float |
| --- | --- | --- | --- | --- | --- | --- | --- | --- |
| CO-R17.S14-SD-220 |  | Backfilling Works for Manholes of Storm Drainage Network-[Road 17]-[SW-14] | 7d | 2025-07-15 A | 2025-07-15 A | CO-R17.S14-SD-210 | 100% |  |
| CO-R17.S14-SD-210 |  | Testing Works for Manholes of Storm Drainage Network-[Road 17]-[SW-14] | 1d | 2026-06-04 A | 2026-07-13 A | CO-R17.S14-SD-200 | 100% |  |
|  | CB | **Catch Basin Sections** |  | 2025-07-16 | 2026-07-13 |  |  |  |
| CO-R17.S14-SD-140 |  | Trench Excavation and Bedding Works for Catch Basins of Storm Drainage Network-[Road 17]-[SW-14] | 6d | 2025-07-16 A | 2025-07-16 A | CO-R17.S14-EW-110, CO-R17.S14-SD-220 | 100% |  |
| CO-R17.S14-SD-150 |  | Installation and Pipes Laying Connection Works for Catch Basins of Storm Drainage Network-[Road 17]-[SW-14] | 7d | 2025-07-17 A | 2025-07-17 A | CO-R17.S14-SD-140, PRO-R17-SD-DL-130 FF+3d, CO-R17.S13-SD-150 | 100% |  |
| CO-R17.S14-SD-170 |  | Trench Backfilling and Compaction Works for Catch Basins of Storm Drainage Network-[Road 17]-[SW-14] | 7d | 2025-07-18 A | 2025-07-18 A | CO-R17.S14-SD-160 | 100% |  |
| CO-R17.S14-SD-160 |  | Testing Works for Catch Basins of Storm Drainage Network-[Road 17]-[SW-14] | 4d | 2026-06-04 A | 2026-07-13 A | CO-R17.S14-SD-150, CO-R17.S14-SD-120, PRO-R17-SD-DL-110 FF+3d | 100% |  |
|  | SL | **Street Lighting Network** |  | 2025-07-08 | 2026-12-23 |  |  |  |
|  | LP | **Lighting Poles Works** |  | 2025-07-08 | 2026-12-23 |  |  |  |
| CO-R17.S14-SL-100 |  | Foundation Excavation Works for Lighting Poles of Street Lighting Network-[Road 17]-[SW-14] | 12d | 2025-07-08 A | 2025-07-11 A | CO-R17.S13-IR-100 SS+3d, CO-R17.S13-IR-130, CO-R17.S14-EW-100, CO-R17.S14-EW-110, ENG-MS-SL-A-110, ENG-SH-SL-A-110, PRO-SL-1DL-110 | 100% |  |
| CO-R17.S14-SL-110 |  | Installation Works for Lighting Poles Foundation of Street Lighting Network-[Road 17]-[SW-14] | 12d | 2025-07-12 A | 2025-07-14 A | CO-R17.S14-SL-100, PRO-R17-SL-DL-110 FF+3d | 100% |  |
| CO-R17.S14-SL-120 |  | Installation Works for Lighting Poles of Street Lighting Network-[Road 17]-[SW-14] | 17.5d | 2025-09-11 A | 2025-09-11 A | CO-R17.S14-SL-110, CO-R17.S14-SL-160, PRO-R17-SL-DL-120 FF+3d | 100% |  |
| CO-R17.S14-SL-210 |  | Backfilling Works for Lighting Poles of Street Lighting Network-[Road 17]-[SW-14] | 12d | 2025-09-11 A | 2025-09-11 A | CO-R17.S14-SL-120 SS, CO-R17.S14-SL-120 FF, CO-R18.S16-SL-210 | 100% |  |
| CO-R17.S14-SL-130 |  | Installation Works for Lighting Fixtures With Drop Wire of Street Lighting Network-[Road 17]-[SW-14] | 18d | 2026-12-03 | 2026-12-23 | CO-R17.S14-SL-120 SS+5d, CO-R17.S14-SL-120 FF+5d, CO-R17.S14-SL-200 FF, PRO-R17-SL-DL-140 FF+3d |  | -95d |
| CO-R17.S14-SL-200 |  | Testing Works for Lighting Poles of Street Lighting Network-[Road 17]-[SW-14] | 5d | 2026-12-03 | 2026-12-08 | CO-R17.S14-SL-210, CO-R17.S14-SL-120 |  | -82d |
|  | CW | **Cabling Works** |  | 2025-07-15 | 2025-07-20 |  |  |  |
| CO-R17.S14-SL-140 |  | Trench Excavation and Bedding Works for Street Lighting Network-[Road 17]-[SW-14] | 10d | 2025-07-15 A | 2025-07-16 A | CO-R17.S14-SL-110 | 100% |  |
| CO-R17.S14-SL-150 |  | Cable Laying Works for Street Lighting Network-[Road 17]-[SW-14] | 10d | 2025-07-17 A | 2025-07-18 A | CO-R17.S14-SL-140, PRO-R17-SL-DL-100 FF+3d | 100% |  |
| CO-R17.S14-SL-160 |  | Trench Backfilling and Compaction Works for Street Lighting Network-[Road 17]-[SW-14] | 10d | 2025-07-19 A | 2025-07-20 A | CO-R17.S14-SL-150 | 100% |  |
|  | DPB | **Distrubution Panel Boards** |  | 2026-11-03 | 2026-11-30 |  |  |  |
| CO-R17.S14-SL-170 |  | Foundation Excavation Works For Panel Boards of Street Lighting Network-[Road 17]-[SW-14] | 18d | 2026-11-03 | 2026-11-23 | CO-R17.S14-EW-110, ENG-MS-SL-A-110, ENG-SH-SL-A-110 |  | -53d |
| CO-R17.S14-SL-180 |  | Installation Works for Panel Board Concrete Foundations of Street Lighting Network-[Road 17]-[SW-14] | 18d | 2026-11-07 | 2026-11-26 | CO-R17.S14-SL-170 SS+3d, CO-R17.S14-SL-170 FF+3d |  | -53d |
| CO-R17.S14-SL-220 |  | A wall of concrete blocks to install the KWH meter of Street Lighting Network-[Road 17]-[SW-14] | 18d | 2026-11-07 | 2026-11-26 | CO-R17.S14-SL-180 SS, CO-R17.S14-SL-180 FF |  | -50d |
| CO-R17.S14-SL-190 |  | Installation Works for Lighting Panel Boards of Street Lighting Network-[Road 17]-[SW-14] | 18d | 2026-11-10 | 2026-11-30 | CO-R17.S14-SL-180 SS+3d, CO-R17.S14-SL-180 FF+3d |  | -53d |
|  | PW | **Potable Water Network** |  | 2025-07-11 | 2027-01-27 |  |  |  |
|  | ML | **Main Line Sections** |  | 2025-07-11 | 2025-07-17 |  |  |  |
| CO-R17.S14-PW-100 |  | Trench Excavation and Bedding Works for Main Lines of Potable Water Network-[Road 17]-[SW-14] | 6d | 2025-07-11 A | 2025-07-12 A | CO-R17.S14-EW-110, CO-R17.S14-EW-100, CO-R17.S14-SW-130, CO-R17.S14-SD-130 | 100% |  |
| CO-R17.S14-PW-110 |  | Pipes Laying and accessories for Main Lines of Potable Water Network-[Road 17]-[SW-14] | 5.75d | 2025-07-13 A | 2025-07-16 A | CO-R17.S14-PW-100, CO-R16.S12-PW-110, PRO-R17-PW-DL-100 FF+3d, PRO-R17-PW-DL-110 FF+3d | 100% |  |
| CO-R17.S14-PW-130 |  | Trench Backfilling and Compaction Works for Main Lines of Potable Water Network-[Road 17]-[SW-14] | 6d | 2025-07-14 A | 2025-07-17 A | CO-R17.S14-PW-110 SS+3d, CO-R17.S14-PW-110 FF+3d, CO-R16.S12-PW-130, CO-R17.S14-PW-210 FF | 100% |  |
|  | VC | **Valve Chamber** |  | 2026-12-24 | 2026-12-30 |  |  |  |
| CO-R17.S14-PW-210 |  | Installation Works for Main Line Valves and Valve Chambers of Potable Water Network-[Road 17]-[SW-14] | 6d | 2026-12-24 | 2026-12-30 | CO-R17.S14-PW-110 |  | -64d |
|  | FH | **Fire Hydrant** |  | 2026-12-24 | 2027-01-27 |  |  |  |
| CO-R17.S14-PW-140 |  | Excavation Works for Fire Hydrants of Potable Water Network-[Road 17]-[SW-14] | 6d | 2026-12-24 | 2026-12-30 | CO-R17.S14-PW-110 SS+3d, CO-R17.S14-PW-110 FF+3d, CO-R17.S14-EW-110, CO-R17.S14-SW-130 SS+3d, CO-R17.S14-SW-130 FF+3d |  | -76d |
| CO-R17.S14-PW-150 |  | Installation Works for Fire Hydrant of Potable Water Network-[Road 17]-[SW-14] | 6d | 2027-01-14 | 2027-01-20 | CO-R17.S14-PW-140, CO-R16.S12-PW-150, PRO-R17-PW-DL-120 FF+3d |  | -88d |
| CO-R17.S14-PW-160 |  | Trench Backfilling and Compaction Works for Fire Hydrants of Potable Water Network-[Road 17]-[SW-14] | 6d | 2027-01-21 | 2027-01-27 | CO-R17.S14-PW-150, CO-R16.S12-PW-160 |  | -88d |
|  | TE | **Telecom Network** |  | 2025-07-20 | 2027-06-05 |  |  |  |
|  | PD | **Ducts Works** |  | 2025-07-20 | 2025-07-27 |  |  |  |
| CO-R17.S14-TE-100 |  | Trench Excavation and Bedding Works for Ducts of Telecom Network-[Road 17]-[SW-14] | 7d | 2025-07-20 A | 2025-07-22 A | CO-R17.S14-EW-110, CO-R17.S14-SL-160 SS+5d, CO-R17.S14-SL-160 FF+5d, CO-R17.S13-TE-100 | 100% |  |
| CO-R17.S14-TE-110 |  | Pipes Laying Works for Ducts of Telecom Network-[Road 17]-[SW-14] | 7d | 2025-07-23 A | 2025-07-24 A | CO-R17.S14-TE-100, CO-R16.S12-TE-110, PRO-R17-TE-DL-100 FF+3d | 100% |  |
| CO-R17.S14-TE-120 |  | Pouring Plain Concrete Above Ducts of Telecom Network-[Road 17]-[SW-14] | 7d | 2025-07-26 A | 2025-07-26 A | CO-R17.S14-TE-110, CO-R16.S12-TE-120 | 100% |  |
| CO-R17.S14-TE-130 |  | Trench Backfilling and Compaction Works for Ducts of Telecom Network-[Road 17]-[SW-14] | 7d | 2025-07-27 A | 2025-07-27 A | CO-R17.S14-TE-120, CO-R16.S12-TE-130 | 100% |  |
|  | MH | **Manholes Works** |  | 2027-05-06 | 2027-06-05 |  |  |  |
| CO-R17.S14-TE-140 |  | Excavation Works for Manholes of Telecom Network-[Road 17]-[SW-14] | 7d | 2027-05-06 | 2027-05-13 | CO-R16.S12-TE-140, CO-R17.S13-TE-140, CO-R17.S14-TE-100 |  | -227d |
| CO-R17.S14-TE-150 |  | Installation Works for Manholes of Telecom Network-[Road 17]-[SW-14] | 7d | 2027-05-20 | 2027-05-27 | CO-R17.S14-TE-140, CO-R16.S12-TE-150, PRO-R17-TE-DL-110 FF+3d |  | -227d |
| CO-R17.S14-TE-160 |  | Backfilling Works for Manholes of Telecom Network-[Road 17]-[SW-14] | 7d | 2027-05-29 | 2027-06-05 | CO-R17.S14-TE-150, CO-R16.S12-TE-160 |  | -227d |
|  | RD | **Road Works** |  | 2025-07-06 | 2026-09-17 |  |  |  |
|  | RD | **Pre-Bituminous Construction** |  | 2025-07-06 | 2025-09-14 |  |  |  |
| CO-R17.S14-RD-P-100 |  | Capping and Subgrade Layer for Road Works-[Road 17]-[SW-14] | 18d | 2025-07-06 A | 2025-07-16 A | CO-R17.S14-SD-130, CO-R17.S14-SW-130, CO-R17.S14-PW-130, CO-R17.S14-PW-160, PRO-R17-RD-DL-120 FF+3d, CO-R17.S14-TE-130, CO-R17.S14-TE-160, CO-R17.S14-SL-160 SS+3d, CO-R17.S14-SL-160 FF+3d | 100% |  |
| CO-R17.S14-RD-P-110 |  | Aggregate Base Course Layer for Road Works-[Road 17]-[SW-14] | 12d | 2025-09-13 A | 2025-09-14 A | CO-R17.S14-RD-P-100 SS+3d, CO-R17.S14-RD-P-100 FF+3d, CO-R17.S14-SD-170 SS+3d, CO-R17.S14-SD-170 FF+3d, CO-R16.S12-RD-P-110, PRO-R17-RD-DL-130 FF+3d | 100% |  |
|  | LS | **Pavement Works** |  | 2026-08-25 | 2026-09-17 |  |  |  |
| CO-R17.S14-RD-P-120 |  | Fixing of Curbstone for Sidewalks Pavement-[Road 17]-[SW-14] | 12d | 2026-08-25 A | 2026-08-31 A | CO-R16.S12-RD-P-120, PRO-R17-RD-DL-110 FF+3d, CO-R17.S14-RD-P-110 SS+3d, CO-R17.S14-RD-P-110 FF+3d | 100% |  |
| CO-R17.S14-RD-P-130 |  | Fixing of Interlock Tiles for Sidewalks Pavement-[Road 17]-[SW-14] | 10d | 2026-09-05 A | 2026-09-17 A | CO-R17.S14-RD-P-120 SS+3d, CO-R17.S14-RD-P-120 FF+3d, CO-R16.S12-RD-P-130, PRO-R17-RD-DL-100 FF+3d, CO-R17-PW-TF-100, CO-R17-PW-TF-110, CO-R17-PW-TF-120, CO-R17-SW-TF-100, CO-R17-SW-TF-110, CO-R17-SW-TF-130, CO-R17-SD-TF-100, CO-R17-SD-TF-120, CO-R17-SL-TF-240, CO-R17-SL-TF-250, CO-R17-IR-TF-170, CO-R17-MV-TF-240 | 100% |  |
|  | 1 | **Road 18 Local 1 ( 479 LM )** |  | 2025-02-11 | 2026-12-17 |  |  |  |
|  | SW_15 | **SW_15** |  | 2025-02-11 | 2026-11-26 |  |  |  |
|  | EW | **Earthworks** |  | 2025-02-11 | 2025-02-25 |  |  |  |
|  | EW | **Earthworks** |  | 2025-02-11 | 2025-02-25 |  |  |  |
| CO-R18.S15-EW-120 |  | Roadway Excavation Works Upto Design Level for Earthworks-[Road 18]-[SW-15] | 10d | 2025-02-11 A | 2025-02-20 A | ENG-MS-RD-A-10, ENG-SH-RD-A-100 | 100% |  |
| CO-R18.S15-EW-130 |  | Embankments Works Upto Design Level for Earthworks-[Road 18]-[SW-15] | 12d | 2025-02-21 A | 2025-02-25 A | CO-R18.S15-EW-120, ENG-MS-RD-A-10, ENG-SH-RD-A-100 | 100% |  |
|  | SW | **Sewage Network** |  | 2025-04-29 | 2025-09-17 |  |  |  |
|  | ML | **Main Line Sections** |  | 2025-04-29 | 2025-05-20 |  |  |  |
| CO-R18.S15-SW-220 |  | Trench Excavation and Bedding Works for Main Lines of Sewage Network-[Road 18]-[SW-15] | 12d | 2025-04-29 A | 2025-05-09 A | CO-R18.S15-EW-130, ENG-MS-SW-ML-A-110, ENG-SH-SW-ML-A-110 | 100% |  |
| CO-R18.S15-SW-230 |  | Pipes Laying Works for Main Lines of Sewage Network-[Road 18]-[SW-15] | 10d | 2025-05-10 A | 2025-05-16 A | CO-R18.S15-SW-220, PRO-R18-SW-DL-150 | 100% |  |
| CO-R18.S15-SW-240 |  | Trench Backfilling and Compaction Works for Main Lines of Sewage Network-[Road 18]-[SW-15] | 10d | 2025-05-17 A | 2025-05-20 A | CO-R18.S15-SW-230, CO-R18.S15-SW-300 FF | 100% |  |
|  | 1 | **Manholes** |  | 2025-05-25 | 2025-09-17 |  |  |  |
| CO-R18.S15-SW-250 |  | Excavation Works for Main Line Manholes of Sewage Network-[Road 18]-[SW-15] | 1d | 2025-05-25 A | 2025-05-26 A | CO-R18.S15-SW-230 SS | 100% |  |
| CO-R18.S15-SW-260 |  | Installation RC Footing Works for Main Line Manholes of Sewage Network-[Road 18]-[SW-15] | 2.25d | 2025-05-31 A | 2025-06-02 A | CO-R18.S15-SW-250, PRO-R18-SW-DL-160 | 100% |  |
| CO-R18.S15-SW-270 |  | Install Grp Liner Wall Works for Main Line Manholes of Sewage Network-[Road 18]-[SW-15] | 4d | 2025-06-01 A | 2025-06-03 A | CO-R18.S15-SW-260 | 100% |  |
| CO-R18.S15-SW-290 |  | Backfilling Works for Main Line Manholes of Sewage Network-[Road 18]-[SW-15] | 4d | 2025-06-17 A | 2025-06-21 A | CO-R18.S15-SW-280 | 100% |  |
| CO-R18.S15-SW-280 |  | Pouring Grp Liner Wall Works for Main Line Manholes of Sewage Network-[Road 18]-[SW-15] | 1d | 2025-09-16 A | 2025-09-16 A | CO-R18.S15-SW-270 | 100% |  |
| CO-R18.S15-SW-300 |  | Testing Works for Main Line Manholes of Sewage Network-[Road 18]-[SW-15] | 1d | 2025-09-17 A | 2025-09-17 A | CO-R18.S15-SW-290 | 100% |  |

| ID | WBS | Task | Duration | Start | Finish | Predecessors | Complete | Total float |
| --- | --- | --- | --- | --- | --- | --- | --- | --- |
|  | SD | **Storm Drainage Network** |  | 2025-04-30 | 2026-07-13 |  |  |  |
|  | ML | **Main Line Sections** |  | 2025-04-30 | 2025-05-24 |  |  |  |
| CO-R18.S15-SD-230 |  | Trench Excavation and Bedding Works for Main Lines of Storm Drainage Network-[Road 18]-[SW-15] | 10d | 2025-04-30 A | 2025-05-22 A | CO-R18.S15-EW-130, CO-R18.S15-EW-120, CO-R18.S15-SW-240, CO-R18.S15-SW-240 FF+3d | 100% |  |
| CO-R18.S15-SD-240 |  | Pipes Laying Works for Main Lines of Storm Drainage Network-[Road 18]-[SW-15] | 20d | 2025-05-01 A | 2025-05-24 A | CO-R18.S15-SD-230, PRO-R18-SD-DL-180 | 100% |  |
| CO-R18.S15-SD-250 |  | Trench Backfilling and Compaction Works for Main Lines of Storm Drainage Network-[Road 18]-[SW-15] | 20d | 2025-05-15 A | 2025-05-24 A | CO-R18.S15-SD-240 SS+3d, CO-R18.S15-SD-240 FF+3d, CO-R18.S15-SD-240, CO-R18.S15-SD-340 FF | 100% |  |
|  | MH | **Manholes** |  | 2025-05-13 | 2026-07-13 |  |  |  |
| CO-R18.S15-SD-300 |  | Trench Excavation and Bedding Works for Manholes of Storm Drainage Network-[Road 18]-[SW-15] | 1d | 2025-05-13 A | 2025-05-22 A | CO-R18.S15-SD-240 SS | 100% |  |
| CO-R18.S15-SD-310 |  | Install RC Footing Works for Manholes of Storm Drainage Network-[Road 18]-[SW-15] | 1d | 2025-05-21 A | 2025-05-22 A | CO-R18.S15-SD-300, PRO-R18-SD-DL-170 | 100% |  |
| CO-R18.S15-SD-320 |  | Install RC Wall Rings & Slab Works for Manholes of Storm Drainage Network-[Road 18]-[SW-15] | 4d | 2025-06-01 A | 2025-06-04 A | CO-R18.S15-SD-310 | 100% |  |
| CO-R18.S15-SD-340 |  | Backfilling Works for Manholes of Storm Drainage Network-[Road 18]-[SW-15] | 7d | 2025-06-08 A | 2025-06-14 A | CO-R18.S15-SD-330 | 100% |  |
| CO-R18.S15-SD-330 |  | Testing Works for Manholes of Storm Drainage Network-[Road 18]-[SW-15] | 1d | 2026-06-04 A | 2026-07-13 A | CO-R18.S15-SD-320 | 100% |  |
|  | CB | **Catch Basin Sections** |  | 2025-05-18 | 2026-07-13 |  |  |  |
| CO-R18.S15-SD-260 |  | Trench Excavation and Bedding Works for Catch Basins of Storm Drainage Network-[Road 18]-[SW-15] | 7d | 2025-05-18 A | 2025-05-22 A | CO-R18.S15-EW-130, CO-R18.S15-SD-340 | 100% |  |
| CO-R18.S15-SD-270 |  | Installation and Pipes Laying Connection Works for Catch Basins of Storm Drainage Network-[Road 18]-[SW-15] | 7d | 2025-05-24 A | 2025-06-03 A | CO-R18.S15-SD-260, PRO-R18-SD-DL-200, PRO-R18-SD-DL-220 | 100% |  |
| CO-R18.S15-SD-290 |  | Trench Backfilling and Compaction Works for Catch Basins of Storm Drainage Network-[Road 18]-[SW-15] | 7d | 2025-06-04 A | 2025-06-09 A | CO-R18.S15-SD-280 | 100% |  |
| CO-R18.S15-SD-280 |  | Testing Works for Catch Basins of Storm Drainage Network-[Road 18]-[SW-15] | 7d | 2026-06-04 A | 2026-07-13 A | CO-R18.S15-SD-270, CO-R18.S15-SD-240 | 100% |  |
|  | IR | **Irrigation Network** |  | 2025-06-16 | 2026-11-26 |  |  |  |
|  | ML | **Main Line Pipes** |  | 2025-06-16 | 2026-11-26 |  |  |  |
| CO-R18.S15-IR-140 |  | Trench Excavation and Bedding Works for Main Lines of Irrigation Network-[Road 18]-[SW-15] | 7d | 2025-06-16 A | 2025-07-07 A | CO-R18.S15-EW-130, CO-R18.S15-SD-290 | 100% |  |
| CO-R18.S15-IR-150 |  | Pipes Laying Works for Main Lines of Irrigation Network-[Road 18]-[SW-15] | 10d | 2025-06-19 A | 2025-07-07 A | CO-R18.S15-IR-140, PRO-R18-IR-DL-120 FF+3d | 100% |  |
| CO-R18.S15-IR-170 |  | Trench Backfilling and Compaction Works for Main Lines of Irrigation Network-[Road 18]-[SW-15] | 9d | 2025-07-02 A | 2025-07-07 A | CO-R18.S15-IR-160, CO-R18.S15-IR-150 | 100% |  |
| CO-R18.S15-IR-160 |  | Installation Works for Main Line Valves of Irrigation Network-[Road 18]-[SW-15] | 7d | 2026-11-19 | 2026-11-26 | CO-R18.S15-IR-150, PRO-R18-IR-DL-130 FF+3d |  | -220.5d |
|  | TE | **Telecom Network** |  | 2025-07-08 | 2025-07-30 |  |  |  |
|  | PD | **Ducts Works** |  | 2025-07-08 | 2025-07-21 |  |  |  |
| CO-R18.S15-TE-170 |  | Trench Excavation and Bedding Works for Ducts of Telecom Network-[Road 18]-[SW-15] | 7d | 2025-07-08 A | 2025-07-10 A | CO-R18.S15-IR-170, CO-R18.S15-EW-130 | 100% |  |
| CO-R18.S15-TE-180 |  | Pipes Laying Works for Ducts of Telecom Network-[Road 18]-[SW-15] | 7d | 2025-07-11 A | 2025-07-15 A | CO-R18.S15-TE-170, PRO-R18-TE-DL-120 | 100% |  |
| CO-R18.S15-TE-190 |  | Trench Backfilling and Compaction Works for Ducts of Telecom Network-[Road 18]-[SW-15] | 7d | 2025-07-16 A | 2025-07-17 A | CO-R18.S15-TE-230 | 100% |  |
| CO-R18.S15-TE-230 |  | Pouring Plain Concrete Above Ducts of Telecom Network-[Road 18]-[SW-15] | 7d | 2025-07-18 A | 2025-07-21 A | CO-R18.S15-TE-180 | 100% |  |
|  | MH | **Manholes Works** |  | 2025-07-20 | 2025-07-30 |  |  |  |
| CO-R18.S15-TE-200 |  | Excavation Works for Manholes of Telecom Network-[Road 18]-[SW-15] | 7d | 2025-07-20 A | 2025-07-22 A | CO-R18.S15-TE-170 | 100% |  |
| CO-R18.S15-TE-210 |  | Installation Works for Manholes of Telecom Network-[Road 18]-[SW-15] | 7d | 2025-07-23 A | 2025-07-26 A | CO-R18.S15-TE-200, PRO-R18-TE-DL-130 | 100% |  |
| CO-R18.S15-TE-220 |  | Backfilling Works for Manholes of Telecom Network-[Road 18]-[SW-15] | 7d | 2025-07-27 A | 2025-07-30 A | CO-R18.S15-TE-210 | 100% |  |
|  | MV | **Medium Voltage Network** |  | 2025-07-22 | 2025-07-24 |  |  |  |
|  | CW | **Cabling Works** |  | 2025-07-22 | 2025-07-24 |  |  |  |
| CO-R18.S15-MV-ML-340 |  | Trench Excavation and Bedding Works for Medium Voltage Network-[Road 18]-[SW-15] | 18d | 2025-07-22 A | 2025-07-23 A | CO-R18.S15-SD-290 SS+3d, CO-R18.S15-SD-290 FF+3d, CO-R18.S15-EW-130, CO-R18.S15-TE-190 SS+3d, CO-R18.S15-TE-190 FF+3d, CO-R18.S16-SL-160 | 100% |  |
| CO-R18.S15-MV-ML-350 |  | Cable Laying Works for Medium Voltage Network-[Road 18]-[SW-15] | 18d | 2025-07-22 A | 2025-07-23 A | CO-R18.S15-MV-ML-340 SS+3d, CO-R18.S15-MV-ML-340 FF+3d, PRO-R18-MV-DL-120 FF+3d | 100% |  |
| CO-R18.S15-MV-ML-360 |  | Trench Backfilling and Compaction Works for Medium Voltage Network-[Road 18]-[SW-15] | 18d | 2025-07-23 A | 2025-07-24 A | CO-R18.S15-MV-ML-350 SS+3d, CO-R18.S15-MV-ML-350 FF+3d | 100% |  |
|  | RD | **Road Works** |  | 2025-07-10 | 2026-09-20 |  |  |  |
|  | RD | **Pre-Bituminous Construction** |  | 2025-07-10 | 2025-08-31 |  |  |  |
| CO-R18.S15-RD-P-160 |  | Capping and Subgrade Layer for Road Works-[Road 18]-[SW-15] | 15d | 2025-07-10 A | 2025-07-21 A | CO-R18.S15-SD-250, CO-R18.S15-SW-240, CO-R18.S15-TE-190, CO-R18.S15-TE-220, CO-R18.S15-MV-ML-360 SS+3d, CO-R18.S15-MV-ML-360 FF+3d, PRO-R18-RD-DL-220 | 100% |  |
| CO-R18.S15-RD-P-170 |  | Aggregate Base Course Layer for Road Works-[Road 18]-[SW-15] | 18d | 2025-08-27 A | 2025-08-31 A | CO-R18.S15-RD-P-160 SS+3d, CO-R18.S15-RD-P-160 FF+3d, CO-R18.S15-SD-290 SS+3d, CO-R18.S15-SD-290 FF+3d, PRO-R18-RD-DL-230 | 100% |  |
|  | LS | **Pavement Works** |  | 2026-08-25 | 2026-09-20 |  |  |  |
| CO-R18.S15-RD-P-140 |  | Fixing of Curbstone for Sidewalks Pavement-[Road 18]-[SW-15] | 18d | 2026-08-25 A | 2026-08-31 A | CO-R18.S15-RD-P-170 SS+3d, CO-R18.S15-RD-P-170 FF+3d, PRO-R18-RD-DL-190 | 100% |  |
| CO-R18.S15-RD-P-150 |  | Fixing of Interlock Tiles for Sidewalks Pavement-[Road 18]-[SW-15] | 18d | 2026-09-02 A | 2026-09-20 A | CO-R18.S15-RD-P-140 SS+3d, CO-R18.S15-RD-P-140 FF+3d, PRO-R18-RD-DL-180 | 100% |  |
|  | SW_16 | **SW_16** |  | 2025-02-21 | 2026-12-17 |  |  |  |
|  | EW | **Earthworks** |  | 2025-02-21 | 2025-03-02 |  |  |  |
|  | EW | **Earthworks** |  | 2025-02-21 | 2025-03-02 |  |  |  |
| CO-R18.S16-EW-120 |  | Roadway Excavation Works Upto Design Level for Earthworks-[Road 18]-[SW-16] | 10d | 2025-02-21 A | 2025-02-26 A | ENG-MS-RD-A-10, ENG-SH-RD-A-100, CO-R18.S15-EW-120 | 100% |  |
| CO-R18.S16-EW-130 |  | Embankments Works Upto Design Level for Earthworks-[Road 18]-[SW-16] | 12d | 2025-02-27 A | 2025-03-02 A | CO-R18.S16-EW-120, ENG-MS-RD-A-10, ENG-SH-RD-A-100 | 100% |  |
|  | SW | **Sewage Network** |  | 2025-04-29 | 2025-09-17 |  |  |  |
|  | ML | **Main Line Sections** |  | 2025-04-29 | 2025-05-19 |  |  |  |
| CO-R18.S16-SW-220 |  | Trench Excavation and Bedding Works for Main Lines of Sewage Network-[Road 18]-[SW-16] | 12d | 2025-04-29 A | 2025-05-19 A | CO-R18.S16-EW-130, ENG-MS-SW-ML-A-110, ENG-SH-SW-ML-A-110, CO-R18.S15-SW-220 | 100% |  |
| CO-R18.S16-SW-230 |  | Pipes Laying Works for Main Lines of Sewage Network-[Road 18]-[SW-16] | 12d | 2025-04-30 A | 2025-05-19 A | CO-R18.S16-SW-220, PRO-R18-SW-DL-150 | 100% |  |
| CO-R18.S16-SW-240 |  | Trench Backfilling and Compaction Works for Main Lines of Sewage Network-[Road 18]-[SW-16] | 10d | 2025-05-03 A | 2025-05-17 A | CO-R18.S16-SW-230, CO-R18.S16-SW-300 FF, CO-R18.S15-SW-240 | 100% |  |
|  | 1 | **Manholes** |  | 2025-06-10 | 2025-09-17 |  |  |  |
| CO-R18.S16-SW-250 |  | Excavation Works for Main Line Manholes of Sewage Network-[Road 18]-[SW-16] | 1d | 2025-06-10 A | 2025-06-10 A | CO-R18.S16-SW-230 SS | 100% |  |
| CO-R18.S16-SW-260 |  | Installation RC Footing Works for Main Line Manholes of Sewage Network-[Road 18]-[SW-16] | 2d | 2025-06-11 A | 2025-06-12 A | CO-R18.S16-SW-250, PRO-R18-SW-DL-160 | 100% |  |
| CO-R18.S16-SW-270 |  | Install Grp Liner Wall Works for Main Line Manholes of Sewage Network-[Road 18]-[SW-16] | 4d | 2025-06-17 A | 2025-06-22 A | CO-R18.S16-SW-260 | 100% |  |
| CO-R18.S16-SW-290 |  | Backfilling Works for Main Line Manholes of Sewage Network-[Road 18]-[SW-16] | 4d | 2025-06-24 A | 2025-06-28 A | CO-R18.S16-SW-280 | 100% |  |
| CO-R18.S16-SW-280 |  | Pouring Grp Liner Wall Works for Main Line Manholes of Sewage Network-[Road 18]-[SW-16] | 1d | 2025-09-16 A | 2025-09-16 A | CO-R18.S16-SW-270 | 100% |  |
| CO-R18.S16-SW-300 |  | Testing Works for Main Line Manholes of Sewage Network-[Road 18]-[SW-16] | 1d | 2025-09-17 A | 2025-09-17 A | CO-R18.S16-SW-290 | 100% |  |
|  | SD | **Storm Drainage Network** |  | 2025-05-01 | 2026-07-13 |  |  |  |
|  | ML | **Main Line Sections** |  | 2025-05-01 | 2025-06-04 |  |  |  |
| CO-R18.S16-SD-240 |  | Pipes Laying Works for Main Lines of Storm Drainage Network-[Road 18]-[SW-16] | 20d | 2025-05-01 A | 2025-06-02 A | CO-R18.S16-SD-230 | 100% |  |
| CO-R18.S16-SD-230 |  | Trench Excavation and Bedding Works for Main Lines of Storm Drainage Network-[Road 18]-[SW-16] | 10d | 2025-05-03 A | 2025-05-15 A | CO-R18.S16-EW-130, CO-R18.S16-EW-120, CO-R18.S16-SW-240 SS+3d, CO-R18.S16-SW-240 FF+3d | 100% |  |
| CO-R18.S16-SD-250 |  | Trench Backfilling and Compaction Works for Main Lines of Storm Drainage Network-[Road 18]-[SW-16] | 20d | 2025-05-19 A | 2025-06-04 A | CO-R18.S16-SD-240 SS+3d, CO-R18.S16-SD-240 FF+3d, CO-R18.S16-SD-240, CO-R18.S16-SD-340 FF, CO-R18.S15-SD-250 | 100% |  |
|  | MH | **Manholes** |  | 2025-06-01 | 2026-07-13 |  |  |  |
| CO-R18.S16-SD-300 |  | Trench Excavation and Bedding Works for Manholes of Storm Drainage Network-[Road 18]-[SW-16] | 1d | 2025-06-01 A | 2025-06-02 A | CO-R18.S16-SD-240 SS | 100% |  |
| CO-R18.S16-SD-310 |  | Install RC Footing Works for Manholes of Storm Drainage Network-[Road 18]-[SW-16] | 1d | 2025-06-02 A | 2025-06-03 A | CO-R18.S16-SD-300 | 100% |  |
| CO-R18.S16-SD-320 |  | Install RC Wall Rings & Slab Works for Manholes of Storm Drainage Network-[Road 18]-[SW-16] | 4d | 2025-06-03 A | 2025-06-04 A | CO-R18.S16-SD-310 | 100% |  |

| ID | WBS | Task | Duration | Start | Finish | Predecessors | Complete | Total float |
| --- | --- | --- | --- | --- | --- | --- | --- | --- |
| CO-R18.S16-SD-340 |  | Backfilling Works for Manholes of Storm Drainage Network-[Road 18]-[SW-16] | 7d | 2025-06-11 A | 2025-06-14 A | CO-R18.S16-SD-330 | 100% |  |
| CO-R18.S16-SD-330 |  | Testing Works for Manholes of Storm Drainage Network-[Road 18]-[SW-16] | 1d | 2026-06-04 A | 2026-07-13 A | CO-R18.S16-SD-320 | 100% |  |
|  | CB | **Catch Basin Sections** |  | 2025-06-10 | 2026-07-13 |  |  |  |
| CO-R18.S16-SD-260 |  | Trench Excavation and Bedding Works for Catch Basins of Storm Drainage Network-[Road 18]-[SW-16] | 6d | 2025-06-10 A | 2025-06-12 A | CO-R18.S16-EW-130, CO-R18.S16-SD-340 | 100% |  |
| CO-R18.S16-SD-290 |  | Trench Backfilling and Compaction Works for Catch Basins of Storm Drainage Network-[Road 18]-[SW-16] | 7d | 2025-06-15 A | 2025-06-23 A | CO-R18.S16-SD-280 | 100% |  |
| CO-R18.S16-SD-270 |  | Installation and Pipes Laying Connection Works for Catch Basins of Storm Drainage Network-[Road 18]-[SW-16] | 7d | 2025-06-17 A | 2025-06-22 A | CO-R18.S16-SD-260, CO-R18.S15-SD-270 | 100% |  |
| CO-R18.S16-SD-280 |  | Testing Works for Catch Basins of Storm Drainage Network-[Road 18]-[SW-16] | 4d | 2026-06-04 A | 2026-07-13 A | CO-R18.S16-SD-270, CO-R18.S16-SD-240 | 100% |  |
|  | SL | **Street Lighting Network** |  | 2025-07-08 | 2026-12-17 |  |  |  |
|  | LP | **Lighting Poles Works** |  | 2025-07-08 | 2026-12-17 |  |  |  |
| CO-R18.S16-SL-100 |  | Foundation Excavation Works for Lighting Poles of Street Lighting Network-[Road 18]-[SW-16] | 12d | 2025-07-08 A | 2025-07-10 A | CO-R18.S15-IR-140 SS+3d, CO-R18.S15-IR-170, CO-R18.S16-EW-120, CO-R18.S16-EW-130, ENG-MS-SL-A-110, ENG-SH-SL-A-110, PRO-SL-1DL-110 | 100% |  |
| CO-R18.S16-SL-110 |  | Installation Works for Lighting Poles Foundation of Street Lighting Network-[Road 18]-[SW-16] | 12d | 2025-07-11 A | 2025-07-13 A | CO-R18.S16-SL-100, PRO-R18-SL-DL-190 FF+3d | 100% |  |
| CO-R18.S16-SL-120 |  | Installation Works for Lighting Poles of Street Lighting Network-[Road 18]-[SW-16] | 17.5d | 2025-09-10 A | 2025-09-10 A | CO-R18.S16-SL-110, CO-R18.S16-SL-160, PRO-R18-SL-DL-200 FF+3d | 100% |  |
| CO-R18.S16-SL-210 |  | Backfilling Works for Lighting Poles of Street Lighting Network-[Road 18]-[SW-16] | 12d | 2025-09-10 A | 2025-09-10 A | CO-R18.S16-SL-120 SS, CO-R18.S16-SL-120 FF | 100% |  |
| CO-R18.S16-SL-130 |  | Installation Works for Lighting Fixtures With Drop Wire of Street Lighting Network-[Road 18]-[SW-16] | 18d | 2026-11-28 | 2026-12-17 | CO-R18.S16-SL-120 SS+5d, CO-R18.S16-SL-120 FF+5d, CO-R18.S16-SL-200 FF, PRO-R18-SL-DL-220 FF+3d |  | -66.25d |
| CO-R18.S16-SL-200 |  | Testing Works for Lighting Poles of Street Lighting Network-[Road 18]-[SW-16] | 5d | 2026-11-28 | 2026-12-02 | CO-R18.S16-SL-210, CO-R18.S16-SL-120 |  | -53.25d |
|  | CW | **Cabling Works** |  | 2025-07-14 | 2025-07-21 |  |  |  |
| CO-R18.S16-SL-140 |  | Trench Excavation and Bedding Works for Street Lighting Network-[Road 18]-[SW-16] | 10d | 2025-07-14 A | 2025-07-16 A | CO-R18.S16-SL-110 | 100% |  |
| CO-R18.S16-SL-150 |  | Cable Laying Works for Street Lighting Network-[Road 18]-[SW-16] | 10d | 2025-07-17 A | 2025-07-18 A | CO-R18.S16-SL-140, PRO-R18-SL-DL-180 FF+3d | 100% |  |
| CO-R18.S16-SL-160 |  | Trench Backfilling and Compaction Works for Street Lighting Network-[Road 18]-[SW-16] | 10d | 2025-07-19 A | 2025-07-21 A | CO-R18.S16-SL-150 | 100% |  |
|  | DPB | **Distrubution Panel Boards** |  | 2026-11-03 | 2026-11-30 |  |  |  |
| CO-R18.S16-SL-170 |  | Foundation Excavation Works For Panel Boards of Street Lighting Network-[Road 18]-[SW-16] | 18d | 2026-11-03 | 2026-11-23 | CO-R18.S16-EW-130, ENG-MS-SL-A-110, ENG-SH-SL-A-110 |  | -53d |
| CO-R18.S16-SL-180 |  | Installation Works for Panel Board Concrete Foundations of Street Lighting Network-[Road 18]-[SW-16] | 18d | 2026-11-07 | 2026-11-26 | CO-R18.S16-SL-170 SS+3d, CO-R18.S16-SL-170 FF+3d |  | -53d |
| CO-R18.S16-SL-220 |  | A wall of concrete blocks to install the KWH meter of Street Lighting Network-[Road 18]-[SW-16] | 18d | 2026-11-07 | 2026-11-26 | CO-R18.S16-SL-180 SS, CO-R18.S16-SL-180 FF |  | -50d |
| CO-R18.S16-SL-190 |  | Installation Works for Lighting Panel Boards of Street Lighting Network-[Road 18]-[SW-16] | 18d | 2026-11-10 | 2026-11-30 | CO-R18.S16-SL-180 SS+3d, CO-R18.S16-SL-180 FF+3d |  | -53d |
|  | PW | **Potable Water Network** |  | 2025-06-19 | 2026-11-23 |  |  |  |
|  | ML | **Main Line Sections** |  | 2025-06-19 | 2025-07-07 |  |  |  |
| CO-R18.S16-PW-230 |  | Trench Excavation and Bedding Works for Main Lines of Potable Water Network-[Road 18]-[SW-16] | 6d | 2025-06-19 A | 2025-07-07 A | CO-R18.S16-EW-130, CO-R18.S16-EW-120, CO-R18.S16-SW-240, CO-R18.S16-SD-250 | 100% |  |
| CO-R18.S16-PW-240 |  | Pipes Laying and accessories for Main Lines of Potable Water Network-[Road 18]-[SW-16] | 5.75d | 2025-06-21 A | 2025-07-07 A | CO-R18.S16-PW-230, PRO-R18-PW-DL-150 FF+3d, PRO-R18-PW-DL-140 FF+3d | 100% |  |
| CO-R18.S16-PW-280 |  | Trench Backfilling and Compaction Works for Main Lines of Potable Water Network-[Road 18]-[SW-16] | 6d | 2025-06-22 A | 2025-07-07 A | CO-R18.S16-PW-240 SS+3d, CO-R18.S16-PW-240 FF+3d, CO-R18.S16-PW-330 FF | 100% |  |
|  | VC | **Valve Chamber** |  | 2026-11-03 | 2026-11-09 |  |  |  |
| CO-R18.S16-PW-330 |  | Installation Works for Main Line Valves and Valve Chambers of Potable Water Network-[Road 18]-[SW-16] | 6d | 2026-11-03 | 2026-11-09 | CO-R18.S16-PW-240 |  | 32d |
|  | FH | **Fire Hydrant** |  | 2026-11-03 | 2026-11-23 |  |  |  |
| CO-R18.S16-PW-250 |  | Excavation Works for Fire Hydrants of Potable Water Network-[Road 18]-[SW-16] | 6d | 2026-11-03 | 2026-11-09 | CO-R18.S16-PW-240 SS+3d, CO-R18.S16-PW-240 FF+3d, CO-R18.S16-EW-130, CO-R18.S16-SW-240 SS+3d, CO-R18.S16-SW-240 FF+3d |  | 20d |
| CO-R18.S16-PW-260 |  | Installation Works for Fire Hydrant of Potable Water Network-[Road 18]-[SW-16] | 6d | 2026-11-10 | 2026-11-16 | CO-R18.S16-PW-250, PRO-R18-PW-DL-160 FF+3d |  | 20d |
| CO-R18.S16-PW-270 |  | Trench Backfilling and Compaction Works for Fire Hydrants of Potable Water Network-[Road 18]-[SW-16] | 6d | 2026-11-17 | 2026-11-23 | CO-R18.S16-PW-260 |  | 20d |
|  | TE | **Telecom Network** |  | 2025-07-11 | 2025-07-31 |  |  |  |
|  | PD | **Ducts Works** |  | 2025-07-11 | 2025-07-21 |  |  |  |
| CO-R18.S16-TE-170 |  | Trench Excavation and Bedding Works for Ducts of Telecom Network-[Road 18]-[SW-16] | 7d | 2025-07-11 A | 2025-07-13 A | CO-R18.S16-EW-130, CO-R18.S16-SL-160 SS+5d, CO-R18.S16-SL-160 FF+5d, CO-R18.S15-TE-170 | 100% |  |
| CO-R18.S16-TE-180 |  | Pipes Laying Works for Ducts of Telecom Network-[Road 18]-[SW-16] | 7d | 2025-07-14 A | 2025-07-17 A | CO-R18.S16-TE-170 | 100% |  |
| CO-R18.S16-TE-230 |  | Pouring Plain Concrete Above Ducts of Telecom Network-[Road 18]-[SW-16] | 7d | 2025-07-18 A | 2025-07-18 A | CO-R18.S16-TE-180 | 100% |  |
| CO-R18.S16-TE-190 |  | Trench Backfilling and Compaction Works for Ducts of Telecom Network-[Road 18]-[SW-16] | 7d | 2025-07-19 A | 2025-07-21 A | CO-R18.S16-TE-230 | 100% |  |
|  | MH | **Manholes Works** |  | 2025-07-23 | 2025-07-31 |  |  |  |
| CO-R18.S16-TE-200 |  | Excavation Works for Manholes of Telecom Network-[Road 18]-[SW-16] | 7d | 2025-07-23 A | 2025-07-24 A | CO-R18.S15-TE-200, CO-R18.S16-TE-170 | 100% |  |
| CO-R18.S16-TE-210 |  | Installation Works for Manholes of Telecom Network-[Road 18]-[SW-16] | 7d | 2025-07-26 A | 2025-07-28 A | CO-R18.S16-TE-200 | 100% |  |
| CO-R18.S16-TE-220 |  | Backfilling Works for Manholes of Telecom Network-[Road 18]-[SW-16] | 7d | 2025-07-29 A | 2025-07-31 A | CO-R18.S16-TE-210 | 100% |  |
|  | RD | **Road Works** |  | 2025-07-10 | 2026-09-01 |  |  |  |
|  | RD | **Pre-Bituminous Construction** |  | 2025-07-10 | 2025-08-31 |  |  |  |
| CO-R18.S16-RD-P-160 |  | Capping and Subgrade Layer for Road Works-[Road 18]-[SW-16] | 18d | 2025-07-10 A | 2025-07-21 A | CO-R18.S16-SD-250, CO-R18.S16-SW-240, CO-R18.S16-PW-280, CO-R18.S16-PW-270, CO-R18.S16-TE-190, CO-R18.S16-TE-220, CO-R18.S16-SL-160 SS+3d, CO-R18.S16-SL-160 FF+3d | 100% |  |
| CO-R18.S16-RD-P-170 |  | Aggregate Base Course Layer for Road Works-[Road 18]-[SW-16] | 18d | 2025-08-27 A | 2025-08-31 A | CO-R18.S16-RD-P-160 SS+3d, CO-R18.S16-RD-P-160 FF+3d, CO-R18.S16-SD-290 SS+3d, CO-R18.S16-SD-290 FF+3d | 100% |  |
|  | LS | **Pavement Works** |  | 2026-08-25 | 2026-09-01 |  |  |  |
| CO-R18.S16-RD-P-140 |  | Fixing of Curbstone for Sidewalks Pavement-[Road 18]-[SW-16] | 18d | 2026-08-25 A | 2026-08-31 A | CO-R18.S16-RD-P-170 SS+3d, CO-R18.S16-RD-P-170 FF+3d | 100% |  |
| CO-R18.S16-RD-P-150 |  | Fixing of Interlock Tiles for Sidewalks Pavement-[Road 18]-[SW-16] | 18d | 2026-08-25 A | 2026-09-01 A | CO-R18.S16-RD-P-140 SS+3d, CO-R18.S16-RD-P-140 FF+3d | 100% |  |
|  | 3 | **Finishes for Infrastructure Networks** |  | 2025-09-20 | 2027-10-25 |  |  |  |
|  | 1 | **Phase 2 Block "J"** |  | 2025-09-20 | 2027-10-25 |  |  |  |
|  | 2 | **Road 09 Local 2 ( 2278 LM )** |  | 2026-06-01 | 2027-10-06 |  |  |  |
|  | 10 | **Sewage Network** |  | 2026-06-01 | 2027-06-26 |  |  |  |
|  | TF | **Testing and Finishes** |  | 2026-06-01 | 2027-06-26 |  |  |  |
| CO-R09-SW-TF-100 |  | Final Testing For Main Line of Sewage Network-[Road 09] | 12d | 2026-06-01 A | 2027-06-08 | CO-R09.S01-SW-130, CO-R09.S01-RD-P-100 SS+3d, CO-R09.S01-RD-P-100 FF+3d, CO-R09.S02-RD-P-100 SS+3d, CO-R09.S02-RD-P-100 FF+3d | 95% | -258d |
| CO-R09-SW-TF-110 |  | Install Manhole Cover Works for External Finishes of Sewage Network-[Road 09] | 12d | 2027-06-09 | 2027-06-22 | PRO-SW-1DL-120, PRO-R09-SW-DL-120 FF+3d, CO-R09-SW-TF-100, CO-R09.S01-RD-P-100, CO-R09.S01-SW-120, ENG-SH-SW-ML-A-110, ENG-SH-SW-ML-A-110 FF, ENG-MS-SW-ML-A-110, ENG-MS-SW-ML-A-110 FF |  | -253d |
| CO-R09-SW-TF-120 |  | Main Manhole Internal Finishes (Benching + Insulation) of Sewage Network-[Road 09] | 12d | 2027-06-13 | 2027-06-26 | CO-R09-SW-TF-110 SS+3d, CO-R09-SW-TF-110 FF+3d, PRO-SW-1DL-140, PRO-R09-SW-DL-130 FF+3d |  | -240d |
|  | 11 | **Storm Drainage Network** |  | 2027-05-06 | 2027-07-11 |  |  |  |
|  | TF | **Testing and Finishes** |  | 2027-05-06 | 2027-07-11 |  |  |  |
| CO-R09-SD-TF-110 |  | Install Catch Basin Cover Works for External Finishes of Storm Drainage Network-[Road 09] | 16d | 2027-05-06 | 2027-05-30 | CO-R09.S01-SD-170 SS+3d, PRO-SD-1DL-150, PRO-R09-SD-DL-150 FF+3d, CO-R09.S01-RD-P-100 FF+3d, CO-R09.S01-RD-P-100, CO-R09.S01-SD-170 FF+3d |  | -233d |
| CO-R09-SD-TF-100 |  | Testing Work for Pipes of Storm Drainage Network-[Road 09] | 12d | 2027-05-26 | 2027-06-08 | CO-R09.S01-SD-130 SS+3d, PRO-SD-1DL-140, PRO-R09-SD-DL-140 FF+3d, CO-R09.S01-RD-P-100 SS+3d, CO-R09.S01-RD-P-100 FF+3d, CO-R09.S01-SD-130 FF+3d, CO-R09.S01-SD-120 SS, CO-R09.S01-SD-120, ENG-SH-SD-ML-A-110, ENG-MS-SD-ML-A-110, CO-R09.S02-RD-P-100 SS+3d, CO-R09.S02-RD-P-100 FF+3d |  | -258d |
| CO-R09-SD-TF-120 |  | Main Manhole Internal Finishes (Benching + Insulation ) for Storm Drainage Network-[Road 09] | 16d | 2027-06-23 | 2027-07-11 | CO-R09-SD-TF-100 SS+3d, CO-R09-SD-TF-100 FF+3d, PRO-R09-SD-DL-160 FF+3d, PRO-SD-1DL-160, CO-R09-SD-TF-100, CO-R09-SD-TF-110 SS, CO-R09-SD-TF-110, CO-R09-SD-TF-110 FF, CO-R09-SW-TF-110 SS, CO-R09-SW-TF-110, CO-R09-SW-TF-110 FF, ENG-SH-RD-A-100, ENG-SH-RD-A-100 FF, ENG-MS-RD-A-10, ENG-MS-RD-A-10 FF, PRO-R09-SD-DL-100 |  | -253d |
| CO-R09-SD-TF-130 |  | Catch Basin Internal Finishes (Benching + Insulation ) for Storm Drainage Network-[Road 09] | 16d | 2027-06-23 | 2027-07-11 | CO-R09-SD-TF-110 SS+3d, CO-R09-SD-TF-110 FF+3d, PRO-R09-SD-DL-160 FF+3d, PRO-SD-1DL-160, CO-R09-SD-TF-100 SS, CO-R09-SD-TF-100, CO-R09-SD-TF-100 FF, CO-R09-SD-TF-110, CO-R09-SW-TF-110 SS, CO-R09-SW-TF-110, CO-R09-SW-TF-110 FF, ENG-SH-RD-A-100, ENG-SH-RD-A-100 FF, ENG-MS-RD-A-10, ENG-MS-RD-A-10 FF |  | -191d |
|  | 9 | **Potable Water Network** |  | 2027-06-09 | 2027-07-17 |  |  |  |
|  | TF | **Testing and Finishes** |  | 2027-06-09 | 2027-07-17 |  |  |  |
| CO-R09-PW-TF-110 |  | Testing Work for Main Line of Potable Water Network-[Road 09] | 9d | 2027-06-09 | 2027-06-19 | CO-R09.S02-PW-130, CO-R09-SL-TF-100, CO-R09-SW-TF-100, CO-R09-SD-TF-100 |  | -258d |
| CO-R09-PW-TF-100 |  | Final Finishes works and Covers for Valves and Valve Chambers of Potable Water Network-[Road 09] | 12d | 2027-06-20 | 2027-07-03 | CO-R09.S01-RD-P-100 FS+3d, PRO-PW-1DL-130, PRO-R09-PW-DL-130 FF+3d, CO-R09.S02-PW-130, CO-R09-PW-TF-110 |  | -258d |

| ID | WBS | Task | Duration | Start | Finish | Predecessors | Complete | Total float |
| --- | --- | --- | --- | --- | --- | --- | --- | --- |
| CO-R09-PW-TF-120 |  | Fire Hydrant Finishies (S.Box + Safety + Marker Post ) of Potable Water Network-[Road 09] | 12d | 2027-07-04 | 2027-07-17 | CO-R09-PW-TF-100, PRO-PW-1DL-130, PRO-R09-PW-DL-130 FF+3d, CO-R09.S02-PW-160 |  | -258d |
|  | 13 | **Irrigation Network** |  | 2027-06-06 | 2027-06-23 |  |  |  |
|  | TF | **Testing and Finishes** |  | 2027-06-06 | 2027-06-23 |  |  |  |
| CO-R09-IR-TF-100 |  | Final Testing (pressure tests) of Irrigation Network-[Road 09] | 16d | 2027-06-06 | 2027-06-23 | CO-R09.S01-IR-140, CO-R09.S01-RD-P-100, CO-R09.S02-RD-P-100 |  | -238d |
|  | 12 | **Street Lighting Network** |  | 2027-04-01 | 2027-07-15 |  |  |  |
|  | TR | **Termination and Testing Works** |  | 2027-04-01 | 2027-07-13 |  |  |  |
| CO-R09-SL-TF-100 |  | Termination Works For Lighting Poles Cables of Street Lighting Network-[Road 09] | 12d | 2027-04-01 | 2027-04-14 | CO-R09.S01-SL-130, PRO-SL-1DL-130, PRO-R09-SL-DL-130 FF+3d, CO-R09.S02-SL-130 |  | -256.5d |
| CO-R09-SL-TF-110 |  | Termination Works For Panel Board Cables of Street Lighting Network-[Road 09] | 10.5d | 2027-06-20 | 2027-07-01 | CO-R09.S01-SL-190, PRO-SL-1DL-170, PRO-R09-SL-DL-170 FF+3d, CO-R09.S01-SL-160, CO-R09.S01-SL-220 |  | -256.5d |
| CO-R09-SL-TF-380 |  | Testing Works For Panel Board Cables of Street Lighting Network-[Road 09] | 10d | 2027-07-01 | 2027-07-13 | CO-R09-SL-TF-110 |  | -224.5d |
|  | ES | **Earthing System Works** |  | 2027-04-15 | 2027-07-15 |  |  |  |
| CO-R09-SL-ES-100 |  | Install Earthing System Works for Lighting Poles of Street Lighting Network-[Road 09] | 12d | 2027-04-15 | 2027-04-28 | PRO-SL-1DL-150, PRO-R09-SL-DL-150 FF+3d, CO-R09-SL-TF-100 |  | -256.5d |
| CO-R09-SL-ES-110 |  | Install Earthing System Works for Lighting Panel Boards of Street Lighting Network-[Road 09] | 12d | 2027-07-01 | 2027-07-15 | PRO-SL-1DL-150, PRO-R09-SL-DL-150 FF+3d, CO-R09-SL-TF-110 |  | -256.5d |
|  | 14 | **Medium Voltage Network** |  | 2027-04-20 | 2027-05-08 |  |  |  |
|  | TT | **Termination and Testing Works** |  | 2027-04-20 | 2027-05-08 |  |  |  |
| CO-R09-MV-TF-100 |  | Termination Works of Medium Voltage Network-[Road 09] | 16d | 2027-04-20 | 2027-05-08 | PRO-MV-1DL-120, CO-R09.S01-MV-120, PRO-R09-MV-DL-110 FF+3d, CO-R09.S01-TE-160 |  | -203d |
|  | 1 | **Road Works** |  | 2027-08-01 | 2027-10-06 |  |  |  |
|  | 1 | **Bituminous Construction** |  | 2027-08-01 | 2027-08-31 |  |  |  |
| CO-R09-S1-RD-F-100 |  | Application of Prime Coat Layer for Road Works - S.W 01-[Road 09] | 12d | 2027-08-01 | 2027-08-14 | PRO-RD-1DL-120, CO-R09.S01-RD-P-130 |  | -258d |
| CO-R09-S1-RD-F-120 |  | Bituminous Base & Wearing Courses Layers for Road Works- S.W 01-[Road 09] | 12d | 2027-08-04 | 2027-08-17 | PRO-RD-1DL-130, CO-R09-S1-RD-F-100 SS+3d, CO-R09-S1-RD-F-100 FF+3d |  | -258d |
| CO-R09-S2-RD-F-110 |  | Application of Prime Coat Layer for Road Works- S.W 02-[Road 09] | 18d | 2027-08-08 | 2027-08-28 | PRO-R09-RD-DL-160 FF+3d, CO-R09.S02-RD-P-130, CO-R09-S1-RD-F-100 SS |  | -257d |
| CO-R09-S2-RD-F-130 |  | Bituminous Base & Wearing Courses Layers for Road Works- S.W 02-[Road 09] | 18d | 2027-08-11 | 2027-08-31 | CO-R09-S2-RD-F-110 SS+3d, CO-R09-S2-RD-F-110 FF+3d, PRO-R09-RD-DL-170 FF+3d, CO-R09-S1-RD-F-120 SS |  | -257d |
|  | TS | **Traffic Signs Boards and Roads Marking** |  | 2027-08-18 | 2027-10-06 |  |  |  |
| CO-R09-S1-RD-F-140 |  | Application of Road Marking Works For Road Works- S.W 01-[Road 09] | 12d | 2027-08-18 | 2027-08-31 | PRO-RD-1DL-170, ENG-SH-MRK-A-110, CO-R09-S1-RD-F-120, ENG-SH-RD-A-100, ENG-MS-MRK-A-10, ENG-MS-RD-A-10 |  | -258d |
| CO-R09-S1-RD-F-150 |  | Installation Works of Traffic Signs Boards For Road Works- S.W 01-[Road 09] | 12d | 2027-09-01 | 2027-09-14 | PRO-RD-1DL-160, ENG-SH-TSB-A-100, CO-R09.S01-RD-P-130, ENG-SH-RD-A-100, ENG-MS-TSB-A-10, ENG-MS-RD-A-10, PRO-R09-RD-DL-140 SS+6d, CO-R09-S1-RD-F-140 |  | -258d |
| CO-R09-S2-RD-F-160 |  | Application of Road Marking Works For Road Works- S.W 02-[Road 09] | 15d | 2027-09-01 | 2027-09-18 | PRO-R09-RD-DL-150 FF+3d, CO-R09-S2-RD-F-130 |  | -257d |
| CO-R09-S2-RD-F-170 |  | Installation Works of Traffic Signs Boards For Road Works- S.W 02-[Road 09] | 15d | 2027-09-19 | 2027-10-06 | PRO-R09-RD-DL-140 FF+6d, CO-R09.S02-RD-P-130, CO-R09-S2-RD-F-160 |  | -257d |
|  | 4 | **Road 10 Local 2 ( 2352 LM )** |  | 2026-06-15 | 2027-08-15 |  |  |  |
|  | 10 | **Sewage Network** |  | 2027-05-12 | 2027-06-17 |  |  |  |
|  | TF | **Testing and Finishes** |  | 2027-05-12 | 2027-06-17 |  |  |  |
| CO-R10-SW-TF-100 |  | Final Testing For Main Line of Sewage Network-[Road 10] | 12d | 2027-05-12 | 2027-05-31 | CO-R10.S03-ES-RD-100 SS+3d, CO-R10.S03-ES-RD-100 FF+3d, CO-R10.S04-ES-RD-100 SS+3d, CO-R10.S04-ES-RD-100 FF+3d, CO-R09.S02-SW-130, CO-R10.S03-WE-RD-100 SS+3d, CO-R10.S03-WE-RD-100 FF+3d, CO-R10.S04-WE-RD-100 SS+3d, CO-R10.S04-WE-RD-100 FF+3d |  | -241d |
| CO-R10-SW-TF-110 |  | Install Manhole Cover Works for External Finishes of Sewage Network-[Road 10] | 12d | 2027-06-01 | 2027-06-14 | PRO-R10-SW-DL-120 FF+3d, CO-R10-SW-TF-100, CO-R10.S03-ES-RD-100 SS+3d, CO-R10.S03-ES-RD-100 FF+3d, ENG-SH-SW-ML-A-110, ENG-SH-SW-ML-A-110 FF, ENG-MS-SW-ML-A-110, ENG-MS-SW-ML-A-110 FF, CO-R10.S04-ES-RD-100 SS+3d, CO-R10.S04-ES-RD-100 FS+3d, CO-R10.S03-WE-RD-100 SS+3d, CO-R10.S03-WE-RD-100 FF+3d, CO-R10.S04-WE-RD-100 SS+3d, CO-R10.S04-WE-RD-100 FS+3d |  | -241d |
| CO-R10-SW-TF-130 |  | Main Manhole Internal Finishes (Benching + Insulation) of Sewage Network-[Road 10] | 12d | 2027-06-05 | 2027-06-17 | CO-R10-SW-TF-110 SS+3d, CO-R10-SW-TF-110 FF+3d, PRO-R10-SW-DL-130 FF+3d |  | -241d |
|  | 11 | **Storm Drainage Network** |  | 2026-06-15 | 2027-06-23 |  |  |  |
|  | TF | **Testing and Finishes** |  | 2026-06-15 | 2027-06-23 |  |  |  |
| CO-R10-SD-TF-100 |  | Testing Work for Pipes of Storm Drainage Network-[Road 10] | 16d | 2026-06-15 A | 2026-08-08 A | CO-R10.S03-ES-SD-130 SS+3d, CO-R10.S03-ES-RD-100 SS+3d, CO-R10.S03-ES-RD-100 FF+3d, CO-R10.S03-ES-SD-130 FF+3d, CO-R10.S03-ES-SD-120 SS, CO-R10.S03-ES-SD-120, ENG-SH-SD-ML-A-110, ENG-MS-SD-ML-A-110, PRO-R10-SD-DL-140 FF+3d, CO-R10.S04-ES-RD-100 SS+3d, CO-R10.S04-ES-RD-100 FF+3d, CO-R10.S03-WE-SD-130 SS+3d, CO-R10.S03-WE-RD-100 SS+3d, CO-R10.S03-WE-RD-100 FF+3d, CO-R10.S03-WE-SD-130 FF+3d, CO-R10.S03-WE-SD-120 SS, CO-R10.S03-WE-SD-120, CO-R10.S04-WE-RD-100 SS+3d, CO-R10.S04-WE-RD-100 FF+3d | 100% |  |
| CO-R10-SD-TF-110 |  | Install Catch Basin Cover Works for External Finishes of Storm Drainage Network-[Road 10] | 16d | 2026-06-17 A | 2027-05-31 | CO-R10.S03-ES-SD-170 SS+3d, PRO-R10-SD-DL-150 FF+3d, CO-R10.S03-ES-RD-100 SS+3d, CO-R10.S03-ES-RD-100 FF+3d, CO-R10.S03-ES-RD-100, CO-R10.S03-ES-SD-170 FF+3d, CO-R10.S04-ES-RD-100 SS+3d, CO-R10.S04-ES-RD-100 FF+3d, CO-R10.S03-WE-SD-170 SS+3d, CO-R10.S03-WE-RD-100 SS+3d, CO-R10.S03-WE-RD-100 FF+3d, CO-R10.S03-WE-RD-100, CO-R10.S03-WE-SD-170 FF+3d, CO-R10.S04-WE-RD-100 SS+3d, CO-R10.S04-WE-RD-100 FF+3d | 20% | -221d |
| CO-R10-SD-TF-120 |  | Main Manhole Internal Finishes (Benching + Insulation ) for Storm Drainage Network-[Road 10] | 12d | 2026-06-18 A | 2027-06-15 | CO-R10-SD-TF-100 SS+3d, CO-R10-SD-TF-100 FF+3d, PRO-R10-SD-DL-160 FF+3d, CO-R10-SD-TF-100, CO-R10-SD-TF-110 SS, CO-R10-SD-TF-110, CO-R10-SD-TF-110 FF, CO-R10-SW-TF-110 SS, CO-R10-SW-TF-110, CO-R10-SW-TF-110 FF, ENG-SH-RD-A-100, ENG-SH-RD-A-100 FF, ENG-MS-RD-A-10, ENG-MS-RD-A-10 FF, PRO-R10-SD-DL-100 FF+3d | 85% | -233d |
| CO-R10-SD-TF-130 |  | Catch Basin Internal Finishes (Benching + Insulation ) for Storm Drainage Network-[Road 10] | 16d | 2026-06-22 A | 2027-06-23 | CO-R10-SD-TF-110 SS+3d, CO-R10-SD-TF-110 FF+3d, PRO-R10-SD-DL-160 FF+3d, CO-R10-SD-TF-100 SS, CO-R10-SD-TF-100, CO-R10-SD-TF-100 FF, CO-R10-SD-TF-110, CO-R10-SW-TF-110 SS, CO-R10-SW-TF-110, CO-R10-SW-TF-110 FF, ENG-SH-RD-A-100, ENG-SH-RD-A-100 FF, ENG-MS-RD-A-10, ENG-MS-RD-A-10 FF | 35% | -210d |
|  | 9 | **Potable Water Network** |  | 2027-05-27 | 2027-07-03 |  |  |  |
|  | TF | **Testing and Finishes** |  | 2027-05-27 | 2027-07-03 |  |  |  |
| CO-R10-PW-TF-100 |  | Final Finishes works and Covers for Valves and Valve Chambers of Potable Water Network-[Road 10] | 12d | 2027-05-27 | 2027-06-09 | CO-R10.S03-ES-RD-100 FS+3d, PRO-R10-PW-DL-130 FF+3d, CO-R10.S03-WE-RD-100 FS+3d |  | -244d |
| CO-R10-PW-TF-120 |  | Fire Hydrant Finishies (S.Box + Safety + Marker Post ) of Potable Water Network-[Road 10] | 12d | 2027-06-10 | 2027-06-23 | CO-R10.S03-ES-PW-160, CO-R10-PW-TF-100, PRO-R10-PW-DL-130 FF+3d, CO-R10.S03-WE-PW-160 |  | -244d |
| CO-R10-PW-TF-110 |  | Testing Work for Main Line of Potable Water Network-[Road 10] | 12d | 2027-06-20 | 2027-07-03 | CO-R10.S03-ES-PW-130, CO-R09-PW-TF-110, CO-R10.S03-WE-PW-130 |  | -257d |
|  | 13 | **Irrigation Network** |  | 2027-05-29 | 2027-06-08 |  |  |  |
|  | TF | **Testing and Finishes** |  | 2027-05-29 | 2027-06-08 |  |  |  |
| CO-R10-IR-TF-120 |  | Final Testing (pressure tests) of Irrigation Network-[Road 10] | 10d | 2027-05-29 | 2027-06-08 | CO-R10.S03-ES-IR-130, CO-R10.S03-ES-RD-100, CO-R10.S04-ES-RD-100, CO-R10.S03-WE-IR-130, CO-R10.S03-WE-RD-100, CO-R10.S04-WE-RD-100 |  | -232d |
|  | 12 | **Street Lighting Network** |  | 2027-02-24 | 2027-05-20 |  |  |  |
|  | TR | **Termination and Testing Works** |  | 2027-02-24 | 2027-05-20 |  |  |  |
| CO-R10-SL-TF-140 |  | Termination Works For Lighting Poles Cables of Street Lighting Network-[Road 10] | 12d | 2027-02-24 | 2027-03-13 | CO-R10.S03-ES-SL-160, CO-R10.S03-ES-SL-130, PRO-R10-SL-DL-130 FF+3d, CO-R15.S10-SL-130, CO-R10.S03-WE-SL-160, CO-R10.S03-WE-SL-130 |  | -232d |
| CO-R10-SL-TF-150 |  | Termination Works For Panel Board Cables of Street Lighting Network-[Road 10] | 12d | 2027-04-29 | 2027-05-12 | CO-R10.S03-ES-SL-190, PRO-R10-SL-DL-170 FF+3d, CO-R10.S03-ES-SL-160, CO-R10.S03-ES-SL-220, CO-R10.S04-ES-SL-220, CO-R10.S03-WE-SL-190, CO-R10.S03-WE-SL-160, CO-R10.S03-WE-SL-220, CO-R10.S04-WE-SL-220 |  | -239d |
| CO-R10-SL-TF-380 |  | Testing Works For Panel Board Cables of Street Lighting Network-[Road 10] | 2d | 2027-05-13 | 2027-05-20 | CO-R10-SL-TF-150 |  | -219d |
|  | ES | **Earthing System Works** |  | 2027-03-14 | 2027-04-13 |  |  |  |
| CO-R10-SL-ES-140 |  | Install Earthing System Works for Lighting Poles of Street Lighting Network-[Road 10] | 12d | 2027-03-14 | 2027-03-27 | PRO-R10-SL-DL-150 FF+3d, CO-R10.S03-ES-SL-100 SS+5d, CO-R10.S03-ES-SL-100 FF+5d, CO-R10-SL-TF-140, CO-R10-SL-TF-140 SS+3d, CO-R10.S03-WE-SL-100 SS+5d, CO-R10.S03-WE-SL-100 FF+5d |  | -232d |
| CO-R10-SL-ES-150 |  | Install Earthing System Works for Lighting Panel Boards of Street Lighting Network-[Road 10] | 12d | 2027-03-31 | 2027-04-13 | CO-R10.S03-ES-SL-170 SS+3d, CO-R10.S03-ES-SL-170 FF+3d, PRO-R10-SL-DL-150 FF+3d, CO-R10.S03-WE-SL-170 SS+3d, CO-R10.S03-WE-SL-170 FF+3d |  | -232d |
|  | 14 | **Medium Voltage Network** |  | 2027-05-02 | 2027-05-09 |  |  |  |
|  | TT | **Termination and Testing Works** |  | 2027-05-02 | 2027-05-09 |  |  |  |
| CO-R10-MV-TF-140 |  | Termination Works of Medium Voltage Network-[Road 10] | 7d | 2027-05-02 | 2027-05-09 | CO-R10.S03-ES-MV-120, PRO-R10-MV-DL-110 FF+3d, CO-R10.S03-ES-MV-190, CO-R10.S03-WE-MV-120, CO-R10.S03-WE-MV-190 |  | -206d |
|  | 1 | **Road Works** |  | 2027-07-15 | 2027-08-15 |  |  |  |
|  | 1 | **Bituminous Construction** |  | 2027-07-15 | 2027-08-01 |  |  |  |
| CO-R10-S03-RD-F-110 |  | Application of Prime Coat Layer for Road Works- S.W 05-[Road 10] | 10d | 2027-07-15 | 2027-07-26 | CO-R10.S03-ES-RD-130, CO-SD-PO-K1-130, CO-R10.S03-WE-RD-130 |  | -248d |
| CO-R10-S04-RD-F-140 |  | Application of Prime Coat Layer for Road Works- S.W 06-[Road 10] | 10d | 2027-07-18 | 2027-07-28 | PRO-R10-RD-DL-160 FF+3d, CO-R10.S04-ES-RD-130, CO-R10-S03-RD-F-110 SS, CO-SD-PO-K1-130, CO-R10.S04-WE-RD-130 |  | -248d |
| CO-R10-S03-RD-F-120 |  | Bituminous Base & Wearing Courses Layers for Road Works- S.W 05-[Road 10] | 10d | 2027-07-19 | 2027-07-29 | CO-R10-S03-RD-F-110 SS+3d, CO-R10-S03-RD-F-110 FF+3d |  | -248d |
| CO-R10-S04-RD-F-150 |  | Bituminous Base & Wearing Courses Layers for Road Works- S.W 06-[Road 10] | 10d | 2027-07-21 | 2027-08-01 | CO-R10-S04-RD-F-140 SS+3d, CO-R10-S04-RD-F-140 FF+3d, PRO-R10-RD-DL-170 FF+3d, CO-R10-S03-RD-F-120 SS |  | -248d |
|  | TS | **Traffic Signs Boards and Roads Marking** |  | 2027-07-31 | 2027-08-15 |  |  |  |
| CO-R10-S03-RD-F-100 |  | Installation Works of Traffic Signs Boards For Road Works- S.W 05-[Road 10] | 12d | 2027-07-31 | 2027-08-12 | CO-R10.S03-ES-RD-130, CO-R10-S03-RD-F-160 FF, CO-R10.S03-WE-RD-130 |  | -248d |
| CO-R10-S03-RD-F-160 |  | Application of Road Marking Works For Road Works- S.W 05-[Road 10] | 12d | 2027-07-31 | 2027-08-12 | CO-R10-S03-RD-F-120 |  | -248d |
| CO-R10-S04-RD-F-170 |  | Application of Road Marking Works For Road Works- S.W 06-[Road 10] | 12d | 2027-08-02 | 2027-08-15 | PRO-R10-RD-DL-150 FF+3d, CO-R10-S04-RD-F-150 |  | -248d |
| CO-R10-S04-RD-F-130 |  | Installation Works of Traffic Signs Boards For Road Works- S.W 06-[Road 10] | 10d | 2027-08-04 | 2027-08-15 | PRO-R10-RD-DL-140 FF+3d, CO-R10.S04-ES-RD-130, CO-R10-S04-RD-F-170 FF, CO-R10.S04-WE-RD-130 |  | -247d |
|  | 5 | **Road 11 Local 1 ( 670 LM )** |  | 2026-06-22 | 2027-08-26 |  |  |  |
|  | 10 | **Sewage Network** |  | 2026-10-28 | 2027-07-01 |  |  |  |

| ID | WBS | Task | Duration | Start | Finish | Predecessors | Complete | Total float |
| --- | --- | --- | --- | --- | --- | --- | --- | --- |
|  | TF | **Testing and Finishes** |  | 2026-10-28 | 2027-07-01 |  |  |  |
| CO-R11-SW-TF-100 |  | Final Testing For Main Line of Sewage Network-[Road 11] | 12d | 2026-10-28 A | 2026-10-29 A | CO-R11.S05-SW-130, CO-R11.S05-RD-P-100 SS+3d, CO-R11.S05-RD-P-100 FF+3d, CO-R10-SW-TF-100, CO-R11.S06-RD-P-100 SS+3d, CO-R11.S06-RD-P-100 FF+3d, CO-R11.S06-SW-130 | 100% |  |
| CO-R11-SW-TF-110 |  | Install Manhole Cover Works for External Finishes of Sewage Network-[Road 11] | 12d | 2027-06-15 | 2027-06-28 | CO-R11.S05-SW-130 SS+3d, PRO-R11-SW-DL-120 FF+3d, CO-R11-SW-TF-100, CO-R11.S05-SW-130 FF+3d, CO-R11.S05-RD-P-100 SS+3d, CO-R11.S05-RD-P-100 FF+3d, CO-R11.S05-SW-120 SS, CO-R11.S05-SW-120, CO-R11.S05-SW-120 FF, ENG-SH-SW-ML-A-110, ENG-SH-SW-ML-A-110 FF, CO-R10-SW-TF-110, ENG-MS-SW-ML-A-110, ENG-MS-SW-ML-A-110 FF, CO-R11.S06-RD-P-100 SS+3d, CO-R11.S06-RD-P-100 FF+3d, CO-R11.S06-SW-130 SS+3d, CO-R11.S06-SW-130 FF+3d |  | -241d |
| CO-R11-SW-TF-130 |  | Main Manhole Internal Finishes (Benching + Insulation) of Sewage Network-[Road 11] | 12d | 2027-06-19 | 2027-07-01 | CO-R11-SW-TF-110 SS+3d, CO-R11-SW-TF-110 FF+3d, PRO-R11-SW-DL-130 FF+3d, CO-R10-SW-TF-130 |  | -241d |
|  | 11 | **Storm Drainage Network** |  | 2026-06-22 | 2027-07-05 |  |  |  |
|  | TF | **Testing and Finishes** |  | 2026-06-22 | 2027-07-05 |  |  |  |
| CO-R11-SD-TF-130 |  | Catch Basin Internal Finishes (Benching + Insulation ) for Storm Drainage Network-[Road 11] | 16d | 2026-06-22 A | 2027-07-05 | CO-R11-SD-TF-110 SS+3d, CO-R11-SD-TF-110 FF+3d, PRO-R11-SD-DL-160 FF+3d, CO-R11-SD-TF-100 SS, CO-R11-SD-TF-100, CO-R11-SD-TF-100 FF, CO-R11-SD-TF-110, CO-R11-SW-TF-110 SS, CO-R11-SW-TF-110, CO-R11-SW-TF-110 FF, ENG-SH-RD-A-100, ENG-SH-RD-A-100 FF, CO-R10-SD-TF-130, ENG-MS-RD-A-10, ENG-MS-RD-A-10 FF | 20% | -214d |
| CO-R11-SD-TF-120 |  | Main Manhole Internal Finishes (Benching + Insulation ) for Storm Drainage Network-[Road 11] | 12d | 2026-06-23 A | 2027-06-29 | CO-R11-SD-TF-100 SS+3d, CO-R11-SD-TF-100 FF+3d, PRO-R11-SD-DL-160 FF+3d, CO-R11-SD-TF-100, CO-R11-SD-TF-110 SS, CO-R11-SD-TF-110, CO-R11-SD-TF-110 FF, CO-R11-SW-TF-110 SS, CO-R11-SW-TF-110, CO-R11-SW-TF-110 FF, ENG-SH-RD-A-100, ENG-SH-RD-A-100 FF, CO-R10-SD-TF-120, ENG-MS-RD-A-10, ENG-MS-RD-A-10 FF, PRO-R11-SD-DL-100 FF+3d | 85% | -223d |
| CO-R11-SD-TF-100 |  | Testing Work for Pipes of Storm Drainage Network-[Road 11] | 16d | 2026-06-24 A | 2026-07-05 A | CO-R11.S05-SD-130 SS+3d, PRO-R11-SD-DL-140 FF+3d, CO-R11.S05-RD-P-100 SS+3d, CO-R11.S05-RD-P-100 FF+3d, CO-R11.S05-SD-130 FF+3d, CO-R11.S05-SD-120 SS, CO-R11.S05-SD-120, ENG-SH-SD-ML-A-110, CO-R10-SD-TF-100, ENG-MS-SD-ML-A-110, CO-R11.S06-RD-P-100 SS+3d, CO-R11.S06-RD-P-100 FF | 100% |  |
| CO-R11-SD-TF-110 |  | Install Catch Basin Cover Works for External Finishes of Storm Drainage Network-[Road 11] | 12d | 2026-06-27 A | 2027-06-08 | CO-R11.S05-SD-170 SS+3d, PRO-R11-SD-DL-150 FF+3d, CO-R11.S05-RD-P-100 SS+3d, CO-R11.S05-RD-P-100 FF+3d, CO-R11.S05-RD-P-100, CO-R11.S05-SD-170 FF+3d, CO-R10-SD-TF-110, CO-R11.S06-RD-P-100 SS+3d, CO-R11.S06-RD-P-100 FF+3d | 20% | -206d |
|  | 9 | **Potable Water Network** |  | 2027-06-10 | 2027-07-17 |  |  |  |
|  | TF | **Testing and Finishes** |  | 2027-06-10 | 2027-07-17 |  |  |  |
| CO-R11-PW-TF-100 |  | Final Finishes works and Covers for Valves and Valve Chambers of Potable Water Network-[Road 11] | 12d | 2027-06-10 | 2027-06-23 | CO-R11.S05-RD-P-100 FS+3d, CO-R10-PW-TF-100, PRO-R11-PW-DL-130 FF+3d |  | -244d |
| CO-R11-PW-TF-120 |  | Fire Hydrant Finishies (S.Box + Safety + Marker Post ) of Potable Water Network-[Road 11] | 12d | 2027-06-24 | 2027-07-07 | CO-R11-PW-TF-100, CO-R10-PW-TF-120, PRO-R11-PW-DL-130 FF+3d |  | -244d |
| CO-R11-PW-TF-110 |  | Testing Work for Main Line of Potable Water Network-[Road 11] | 12d | 2027-07-04 | 2027-07-17 | CO-R10-PW-TF-110 |  | -257d |
|  | 13 | **Irrigation Network** |  | 2027-06-09 | 2027-06-20 |  |  |  |
|  | TF | **Testing and Finishes** |  | 2027-06-09 | 2027-06-20 |  |  |  |
| CO-R11-IR-TF-130 |  | Final Testing (pressure tests) of Irrigation Network-[Road 11] | 10d | 2027-06-09 | 2027-06-20 | CO-R11.S05-IR-130, CO-R11.S05-RD-P-100, CO-R10-IR-TF-120, CO-R11.S06-RD-P-100 |  | -232d |
|  | 12 | **Street Lighting Network** |  | 2027-03-14 | 2027-06-07 |  |  |  |
|  | TR | **Termination and Testing Works** |  | 2027-03-14 | 2027-06-07 |  |  |  |
| CO-R11-SL-TF-160 |  | Termination Works For Lighting Poles Cables of Street Lighting Network-[Road 11] | 12d | 2027-03-14 | 2027-03-27 | PRO-R11-SL-DL-130 FF+3d, CO-R10-SL-TF-140 |  | -183d |
| CO-R11-SL-TF-170 |  | Termination Works For Panel Board Cables of Street Lighting Network-[Road 11] | 12d | 2027-05-23 | 2027-06-05 | PRO-R11-SL-DL-170 FF+3d, CO-R10-SL-TF-150, CO-R11.S06-SL-220 |  | -242d |
| CO-R11-SL-TF-380 |  | Testing Works For Panel Board Cables of Street Lighting Network-[Road 11] | 2d | 2027-06-06 | 2027-06-07 | CO-R11-SL-TF-170, CO-R10-SL-TF-380 |  | -232d |
|  | ES | **Earthing System Works** |  |  |  |  |  |  |
|  | 14 | **Medium Voltage Network** |  | 2027-05-10 | 2027-05-23 |  |  |  |
|  | TT | **Termination and Testing Works** |  | 2027-05-10 | 2027-05-23 |  |  |  |
| CO-R11-MV-TF-160 |  | Termination Works of Medium Voltage Network-[Road 11] | 7d | 2027-05-10 | 2027-05-23 | CO-R10.S03-ES-MV-170, CO-R11.S05-MV-120, CO-R10-MV-TF-140, PRO-R11-MV-DL-110 FF+3d, CO-R17.S13-MV-170, CO-R10.S03-WE-MV-170 |  | -200d |
|  | 1 | **Road Works** |  | 2026-08-12 | 2027-08-26 |  |  |  |
|  | 1 | **Bituminous Construction** |  | 2026-08-12 | 2027-08-15 |  |  |  |
| CO-R11-S05-RD-F-110 |  | Application of Prime Coat Layer for Road Works- S.W 07-[Road 11] | 10d | 2026-08-12 A | 2026-08-15 A | CO-R10-S03-RD-F-110, CO-R11.S05-RD-P-130, CO-SD-PO-K2-130 | 100% |  |
| CO-R11-S06-RD-F-140 |  | Application of Prime Coat Layer for Road Works- S.W 08-[Road 11] | 12d | 2026-08-13 A | 2026-08-15 A | CO-R10-S04-RD-F-140, PRO-R11-RD-DL-160 FF+3d, CO-R11.S06-RD-P-130, CO-R11-S05-RD-F-110 SS, CO-SD-PO-K2-130 | 100% |  |
| CO-R11-S05-RD-F-120 |  | Bituminous Base & Wearing Courses Layers for Road Works- S.W 07-[Road 11] | 12d | 2027-07-31 | 2027-08-12 | CO-R11-S05-RD-F-110 SS+3d, CO-R11-S05-RD-F-110 FF+3d, CO-R10-S03-RD-F-120 |  | -248d |
| CO-R11-S06-RD-F-150 |  | Bituminous Base & Wearing Courses Layers for Road Works- S.W 08-[Road 11] | 12d | 2027-08-02 | 2027-08-15 | CO-R11-S06-RD-F-140 SS+3d, CO-R11-S06-RD-F-140 FF+3d, CO-R10-S04-RD-F-150, PRO-R11-RD-DL-170 FF+3d, CO-R11-S05-RD-F-120 SS |  | -248d |
|  | TS | **Traffic Signs Boards and Roads Marking** |  | 2027-08-14 | 2027-08-26 |  |  |  |
| CO-R11-S05-RD-F-100 |  | Installation Works of Traffic Signs Boards For Road Works- S.W 07-[Road 11] | 10d | 2027-08-14 | 2027-08-24 | CO-R11.S05-RD-P-130, CO-R10-S03-RD-F-100, CO-R11-S05-RD-F-160 FF |  | -248d |
| CO-R11-S05-RD-F-160 |  | Application of Road Marking Works For Road Works- S.W 07-[Road 11] | 10d | 2027-08-14 | 2027-08-24 | CO-R11-S05-RD-F-120, CO-R10-S03-RD-F-160 |  | -248d |
| CO-R11-S06-RD-F-130 |  | Installation Works of Traffic Signs Boards For Road Works- S.W 08-[Road 11] | 10d | 2027-08-16 | 2027-08-26 | PRO-R11-RD-DL-140 FF+3d, CO-R11.S06-RD-P-130, CO-R10-S04-RD-F-130, CO-R11-S06-RD-F-170 FF |  | -247d |
| CO-R11-S06-RD-F-170 |  | Application of Road Marking Works For Road Works- S.W 08-[Road 11] | 10d | 2027-08-16 | 2027-08-26 | PRO-R11-RD-DL-150 FF+3d, CO-R11-S06-RD-F-150, CO-R10-S04-RD-F-170 |  | -248d |
|  | 6 | **Road 14 Local 1 ( 584 LM )** |  | 2026-04-08 | 2027-09-12 |  |  |  |
|  | 10 | **Sewage Network** |  | 2026-09-15 | 2027-07-15 |  |  |  |
|  | TF | **Testing and Finishes** |  | 2026-09-15 | 2027-07-15 |  |  |  |
| CO-R14-SW-TF-100 |  | Final Testing For Main Line of Sewage Network-[Road 14] | 12d | 2026-09-15 A | 2026-09-21 A | CO-R14.S07-SW-130, CO-R14.S07-RD-P-100 SS+3d, CO-R14.S07-RD-P-100 FF+3d, CO-R11-SW-TF-100, CO-R14.S08-RD-P-100 SS+3d, CO-R14.S08-RD-P-100 FF+3d, CO-R14.S08-SW-130 | 100% |  |
| CO-R14-SW-TF-110 |  | Install Manhole Cover Works for External Finishes of Sewage Network-[Road 14] | 12d | 2027-06-29 | 2027-07-12 | CO-R14.S07-SW-130 SS+3d, PRO-R14-SW-DL-120 FF+3d, CO-R14-SW-TF-100, CO-R14.S07-SW-130 FF+3d, CO-R14.S07-RD-P-100 SS+3d, CO-R14.S07-RD-P-100 FF+3d, CO-R14.S07-SW-120 SS, CO-R14.S07-SW-120, CO-R14.S07-SW-120 FF, ENG-SH-SW-ML-A-110, ENG-SH-SW-ML-A-110 FF, CO-R11-SW-TF-110, ENG-MS-SW-ML-A-110, ENG-MS-SW-ML-A-110 FF, CO-R14.S08-RD-P-100 SS+3d, CO-R14.S08-RD-P-100 FF+3d, CO-R14.S08-SW-130 SS+3d, CO-R14.S08-SW-130 FF+3d |  | -241d |
| CO-R14-SW-TF-130 |  | Main Manhole Internal Finishes (Benching + Insulation) of Sewage Network-[Road 14] | 12d | 2027-07-03 | 2027-07-15 | CO-R14-SW-TF-110 SS+3d, CO-R14-SW-TF-110 FF+3d, PRO-R14-SW-DL-130 FF+3d, CO-R11-SW-TF-130 |  | -241d |
|  | 11 | **Storm Drainage Network** |  | 2026-04-08 | 2026-04-18 |  |  |  |
|  | TF | **Testing and Finishes** |  | 2026-04-08 | 2026-04-18 |  |  |  |
| CO-R14-SD-TF-100 |  | Testing Work for Pipes of Storm Drainage Network-[Road 14] | 10d | 2026-04-08 A | 2026-04-18 A | CO-R14.S07-SD-120 SS+2d, CO-R14.S08-SD-120 SS+2d, CO-R14.S07-SD-130, CO-R14.S07-RD-P-100 SS, CO-R14.S07-RD-P-100 FF | 100% |  |
| CO-R14-SD-TF-110 |  | Install Catch Basin Cover Works for External Finishes of Storm Drainage Network-[Road 14] | 12d | 2026-04-08 A | 2026-04-18 A | CO-R14.S07-SD-170 SS+3d, PRO-R14-SD-DL-150 FF+3d, CO-R14.S07-RD-P-100 SS+3d, CO-R14.S07-RD-P-100 FF+3d, CO-R14.S07-RD-P-100, CO-R14.S07-SD-170 FF+3d, CO-R11-SD-TF-110, CO-R14.S08-RD-P-100 SS+3d, CO-R14.S08-RD-P-100 FF+3d, CO-R14-SD-TF-100, CO-R14.S07-SD-170 | 100% |  |
| CO-R14-SD-TF-120 |  | Main Manhole Internal Finishes (Benching + Insulation ) for Storm Drainage Network-[Road 14] | 12d | 2026-04-08 A | 2026-04-18 A | PRO-R14-SD-DL-160 FF+3d, CO-R14-SD-TF-110 SS, CO-R14-SD-TF-110, CO-R14-SD-TF-110 FF, CO-R14-SW-TF-110 SS, CO-R14-SW-TF-110, CO-R14-SW-TF-110 FF, ENG-SH-RD-A-100, ENG-SH-RD-A-100 FF, CO-R11-SD-TF-120, ENG-MS-RD-A-10, ENG-MS-RD-A-10 FF, CO-R14.S07-SD-220, PRO-R14-SD-DL-100 FF+3d | 100% |  |
| CO-R14-SD-TF-130 |  | Catch Basin Internal Finishes (Benching + Insulation ) for Storm Drainage Network-[Road 14] | 16d | 2026-04-08 A | 2026-04-18 A | CO-R14-SD-TF-110 SS+3d, CO-R14-SD-TF-110 FF+3d, PRO-R14-SD-DL-160 FF+3d, CO-R14-SD-TF-110, CO-R14-SW-TF-110 SS, CO-R14-SW-TF-110, CO-R14-SW-TF-110 FF, ENG-SH-RD-A-100, ENG-SH-RD-A-100 FF, CO-R11-SD-TF-130, ENG-MS-RD-A-10, ENG-MS-RD-A-10 FF, CO-R14.S07-SD-150 | 100% |  |
|  | 9 | **Potable Water Network** |  | 2027-06-24 | 2027-07-31 |  |  |  |
|  | TF | **Testing and Finishes** |  | 2027-06-24 | 2027-07-31 |  |  |  |
| CO-R14-PW-TF-100 |  | Final Finishes works and Covers for Valves and Valve Chambers of Potable Water Network-[Road 14] | 12d | 2027-06-24 | 2027-07-07 | CO-R14.S07-RD-P-100 FS+3d, CO-R11-PW-TF-100, PRO-R14-PW-DL-130 FF+3d |  | -244d |
| CO-R14-PW-TF-120 |  | Fire Hydrant Finishies (S.Box + Safety + Marker Post ) of Potable Water Network-[Road 14] | 12d | 2027-07-08 | 2027-07-21 | CO-R14-PW-TF-100, CO-R11-PW-TF-120, PRO-R14-PW-DL-130 FF+3d |  | -244d |
| CO-R14-PW-TF-110 |  | Testing Work for Main Line of Potable Water Network-[Road 14] | 12d | 2027-07-18 | 2027-07-31 | CO-R11-PW-TF-110 |  | -257d |
|  | 13 | **Irrigation Network** |  | 2027-06-21 | 2027-07-01 |  |  |  |
|  | TF | **Testing and Finishes** |  | 2027-06-21 | 2027-07-01 |  |  |  |
| CO-R11-IR-TF-140 |  | Final Testing (pressure tests) of Irrigation Network-[Road 14] | 10d | 2027-06-21 | 2027-07-01 | CO-R14.S07-IR-130, CO-R14.S07-RD-P-100, CO-R11-IR-TF-130, CO-R14.S08-RD-P-100 |  | -232d |
|  | 12 | **Street Lighting Network** |  | 2027-03-29 | 2027-06-28 |  |  |  |
|  | TR | **Termination and Testing Works** |  | 2027-03-29 | 2027-06-28 |  |  |  |
| CO-R11-SL-TF-180 |  | Termination Works For Lighting Poles Cables of Street Lighting Network-[Road 14] | 12d | 2027-03-29 | 2027-04-11 | CO-R14.S07-SL-160, CO-R14.S07-SL-130, PRO-R14-SL-DL-130 FF+3d, CO-R11-SL-TF-160, CO-R14.S08-SL-660 |  | -184d |
| CO-R11-SL-TF-190 |  | Termination Works For Panel Board Cables of Street Lighting Network-[Road 14] | 12d | 2027-06-13 | 2027-06-26 | CO-R14.S07-SL-190, PRO-R14-SL-DL-170 FF+3d, CO-R14.S07-SL-160, CO-R11-SL-TF-170, CO-R14.S08-SL-DB-660, CO-R14.S07-SL-220, CO-R14.S08-SL-220 |  | -248d |
| CO-R14-SL-TF-380 |  | Testing Works For Panel Board Cables of Street Lighting Network-[Road 14] | 2d | 2027-06-27 | 2027-06-28 | CO-R11-SL-TF-190, CO-R11-SL-TF-380 |  | -248d |
|  | ES | **Earthing System Works** |  |  |  |  |  |  |
|  | 14 | **Medium Voltage Network** |  | 2027-05-24 | 2027-05-31 |  |  |  |
|  | TT | **Termination and Testing Works** |  | 2027-05-24 | 2027-05-31 |  |  |  |
| CO-R11-MV-TF-180 |  | Termination Works of Medium Voltage Network-[Road 14] | 7d | 2027-05-24 | 2027-05-31 | CO-R11-MV-TF-160, PRO-R14-MV-DL-110 FF+3d |  | -200d |
|  | 1 | **Road Works** |  | 2027-08-15 | 2027-09-12 |  |  |  |
|  | 1 | **Bituminous Construction** |  | 2027-08-15 | 2027-08-31 |  |  |  |
| CO-R11-S07-RD-F-110 |  | Application of Prime Coat Layer for Road Works- S.W 09-[Road 14] | 12d | 2027-08-15 | 2027-08-28 | CO-R11-S05-RD-F-110, CO-R14.S07-RD-P-130 |  | -252d |

| ID | WBS | Task | Duration | Start | Finish | Predecessors | Complete | Total float |
| --- | --- | --- | --- | --- | --- | --- | --- | --- |
| CO-R11-S08-RD-F-140 |  | Application of Prime Coat Layer for Road Works- S.W 10-[Road 14] | 10d | 2027-08-15 | 2027-08-25 | PRO-R14-RD-DL-160 FF+3d, CO-R14.S08-RD-P-130, CO-R11-S07-RD-F-110 SS |  | -250d |
| CO-R11-S07-RD-F-120 |  | Bituminous Base & Wearing Courses Layers for Road Works- S.W 09-[Road 14] | 10d | 2027-08-21 | 2027-08-31 | CO-R11-S07-RD-F-110 SS+3d, CO-R11-S07-RD-F-110 FF+3d, CO-R11-S05-RD-F-120 |  | -252d |
| CO-R11-S08-RD-F-150 |  | Bituminous Base & Wearing Courses Layers for Road Works- S.W 10-[Road 14] | 10d | 2027-08-21 | 2027-08-31 | CO-R11-S08-RD-F-140 SS+3d, CO-R11-S08-RD-F-140 FF+3d, PRO-R14-RD-DL-170 FF+3d, CO-R11-S07-RD-F-120 SS |  | -252d |
|  | TS | **Traffic Signs Boards and Roads Marking** |  | 2027-08-30 | 2027-09-12 |  |  |  |
| CO-R11-S07-RD-F-100 |  | Installation Works of Traffic Signs Boards For Road Works- S.W 09-[Road 14] | 12d | 2027-08-30 | 2027-09-12 | CO-R14.S07-RD-P-130, CO-R11-S05-RD-F-100, CO-R11-S07-RD-F-160 FF |  | -252d |
| CO-R11-S07-RD-F-160 |  | Application of Road Marking Works For Road Works- S.W 09-[Road 14] | 10d | 2027-09-01 | 2027-09-12 | CO-R11-S07-RD-F-120, CO-R11-S05-RD-F-160 |  | -252d |
| CO-R11-S08-RD-F-130 |  | Installation Works of Traffic Signs Boards For Road Works- S.W 10-[Road 14] | 10d | 2027-09-01 | 2027-09-12 | PRO-R14-RD-DL-140 FF+3d, CO-R14.S08-RD-P-130, CO-R11-S06-RD-F-130, CO-R11-S08-RD-F-170 FF |  | -251d |
| CO-R11-S08-RD-F-170 |  | Application of Road Marking Works For Road Works- S.W 10-[Road 14] | 10d | 2027-09-01 | 2027-09-12 | PRO-R14-RD-DL-150 FF+3d, CO-R11-S08-RD-F-150, CO-R11-S06-RD-F-170 |  | -252d |
|  | 7 | **Road 15 Local 1 ( 556 LM )** |  | 2026-04-01 | 2027-09-27 |  |  |  |
|  | 10 | **Sewage Network** |  | 2026-09-15 | 2027-07-29 |  |  |  |
|  | TF | **Testing and Finishes** |  | 2026-09-15 | 2027-07-29 |  |  |  |
| CO-R15-SW-TF-100 |  | Final Testing For Main Line of Sewage Network-[Road 15] | 12d | 2026-09-15 A | 2026-09-21 A | CO-R15.S09-SW-130, CO-R15.S09-RD-P-100 SS+3d, CO-R15.S09-RD-P-100 FF+3d, CO-R14-SW-TF-100, CO-R15.S10-RD-P-100 SS+3d, CO-R15.S10-RD-P-100 FF+3d | 100% |  |
| CO-R15-SW-TF-110 |  | Install Manhole Cover Works for External Finishes of Sewage Network-[Road 15] | 12d | 2027-07-13 | 2027-07-26 | CO-R15.S09-SW-130 SS+3d, PRO-R15-SW-DL-120 FF+3d, CO-R15-SW-TF-100, CO-R15.S09-SW-130 FF+3d, CO-R15.S09-RD-P-100 SS+3d, CO-R15.S09-RD-P-100 FF+3d, CO-R15.S09-SW-120 SS, CO-R15.S09-SW-120, CO-R15.S09-SW-120 FF, ENG-SH-SW-ML-A-110, ENG-SH-SW-ML-A-110 FF, CO-R14-SW-TF-110, ENG-MS-SW-ML-A-110, ENG-MS-SW-ML-A-110 FF, CO-R15.S10-RD-P-100 SS+3d, CO-R15.S10-RD-P-100 FF+3d |  | -241d |
| CO-R15-SW-TF-130 |  | Main Manhole Internal Finishes (Benching + Insulation) of Sewage Network-[Road 15] | 12d | 2027-07-17 | 2027-07-29 | CO-R15-SW-TF-110 SS+3d, CO-R15-SW-TF-110 FF+3d, PRO-R15-SW-DL-130 FF+3d, CO-R14-SW-TF-130 |  | -241d |
|  | 11 | **Storm Drainage Network** |  | 2026-04-15 | 2027-08-14 |  |  |  |
|  | TF | **Testing and Finishes** |  | 2026-04-15 | 2027-08-14 |  |  |  |
| CO-R15-SD-TF-100 |  | Testing Work for Pipes of Storm Drainage Network-[Road 15] | 16d | 2026-04-15 A | 2026-04-18 A | CO-R15.S09-SD-130 SS+3d, PRO-R15-SD-DL-140 FF+3d, CO-R15.S09-RD-P-100 SS+3d, CO-R15.S09-RD-P-100 FF+3d, CO-R15.S09-SD-130 FF+3d, CO-R15.S09-SD-120 SS, CO-R15.S09-SD-120, ENG-SH-SD-ML-A-110, ENG-MS-SD-ML-A-110, CO-R15.S10-RD-P-100 SS+3d, CO-R15.S10-RD-P-100 FF+3d | 100% |  |
| CO-R15-SD-TF-120 |  | Main Manhole Internal Finishes (Benching + Insulation ) for Storm Drainage Network-[Road 15] | 12d | 2026-04-19 A | 2026-06-17 A | CO-R15-SD-TF-100 SS+3d, CO-R15-SD-TF-100 FF+3d, PRO-R15-SD-DL-160 FF+3d, CO-R15-SD-TF-100, CO-R15-SD-TF-110 SS, CO-R15-SD-TF-110, CO-R15-SD-TF-110 FF, CO-R15-SW-TF-110 SS, CO-R15-SW-TF-110, CO-R15-SW-TF-110 FF, ENG-SH-RD-A-100, ENG-SH-RD-A-100 FF, CO-R14-SD-TF-120, ENG-MS-RD-A-10, ENG-MS-RD-A-10 FF, PRO-R15-SD-DL-100 FF+3d | 100% |  |
| CO-R15-SD-TF-110 |  | Install Catch Basin Cover Works for External Finishes of Storm Drainage Network-[Road 15] | 12d | 2027-06-09 | 2027-06-22 | CO-R15.S09-SD-170 SS+3d, PRO-R15-SD-DL-150 FF+3d, CO-R15.S09-RD-P-100 SS+3d, CO-R15.S09-RD-P-100 FF+3d, CO-R15.S09-RD-P-100, CO-R15.S09-SD-170 FF+3d, CO-R14-SD-TF-110, CO-R15.S10-RD-P-100 SS+3d, CO-R15.S10-RD-P-100 FF+3d |  | -203d |
| CO-R15-SD-TF-130 |  | Catch Basin Internal Finishes (Benching + Insulation ) for Storm Drainage Network-[Road 15] | 16d | 2027-07-27 | 2027-08-14 | CO-R15-SD-TF-110 SS+3d, CO-R15-SD-TF-110 FF+3d, PRO-R15-SD-DL-160 FF+3d, CO-R15-SD-TF-100 SS, CO-R15-SD-TF-100, CO-R15-SD-TF-100 FF, CO-R15-SD-TF-110, CO-R15-SW-TF-110 SS, CO-R15-SW-TF-110, CO-R15-SW-TF-110 FF, ENG-SH-RD-A-100, ENG-SH-RD-A-100 FF, CO-R14-SD-TF-130, ENG-MS-RD-A-10, ENG-MS-RD-A-10 FF |  | -232d |
|  | 9 | **Potable Water Network** |  | 2027-07-08 | 2027-08-14 |  |  |  |
|  | TF | **Testing and Finishes** |  | 2027-07-08 | 2027-08-14 |  |  |  |
| CO-R15-PW-TF-100 |  | Final Finishes works and Covers for Valves and Valve Chambers of Potable Water Network-[Road 15] | 12d | 2027-07-08 | 2027-07-21 | CO-R15.S09-RD-P-100 FS+3d, CO-R14-PW-TF-100, PRO-R15-PW-DL-130 FF+3d |  | -237d |
| CO-R15-PW-TF-120 |  | Fire Hydrant Finishies (S.Box + Safety + Marker Post ) of Potable Water Network-[Road 15] | 12d | 2027-07-22 | 2027-08-04 | CO-R15-PW-TF-100, CO-R14-PW-TF-120, PRO-R15-PW-DL-130 FF+3d |  | -237d |
| CO-R15-PW-TF-110 |  | Testing Work for Main Line of Potable Water Network-[Road 15] | 12d | 2027-08-01 | 2027-08-14 | CO-R14-PW-TF-110 |  | -257d |
|  | 13 | **Irrigation Network** |  | 2027-07-03 | 2027-07-13 |  |  |  |
|  | TF | **Testing and Finishes** |  | 2027-07-03 | 2027-07-13 |  |  |  |
| CO-R15-IR-TF-150 |  | Final Testing (pressure tests) of Irrigation Network-[Road 15] | 10d | 2027-07-03 | 2027-07-13 | CO-R15.S09-IR-130, CO-R15.S09-RD-P-100, CO-R11-IR-TF-140, CO-R15.S10-RD-P-100 |  | -232d |
|  | 12 | **Street Lighting Network** |  | 2027-04-12 | 2027-07-31 |  |  |  |
|  | TR | **Termination and Testing Works** |  | 2027-04-12 | 2027-07-31 |  |  |  |
| CO-R15-SL-TF-200 |  | Termination Works For Lighting Poles Cables of Street Lighting Network-[Road 15] | 12d | 2027-04-12 | 2027-04-25 | PRO-R15-SL-DL-130 FF+3d, CO-R11-SL-TF-180, CO-R17.S14-SL-130 |  | -184d |
| CO-R15-SL-TF-210 |  | Termination Works For Panel Board Cables of Street Lighting Network-[Road 15] | 12d | 2027-06-29 | 2027-07-12 | PRO-R15-SL-DL-170 FF+3d, CO-R11-SL-TF-190, CO-R14-SL-TF-380, CO-R15.S10-SL-160, CO-R15.S10-SL-190, CO-R15.S10-SL-220 |  | -248d |
| CO-R15-SL-TF-380 |  | Testing Works For Panel Board Cables of Street Lighting Network-[Road 15] | 16d | 2027-07-13 | 2027-07-31 | CO-R15-SL-TF-210, CO-R14-SL-TF-380 |  | -242d |
|  | ES | **Earthing System Works** |  |  |  |  |  |  |
|  | 14 | **Medium Voltage Network** |  | 2027-06-01 | 2027-06-08 |  |  |  |
|  | TT | **Termination and Testing Works** |  | 2027-06-01 | 2027-06-08 |  |  |  |
| CO-R15-MV-TF-200 |  | Termination Works of Medium Voltage Network-[Road 15] | 7d | 2027-06-01 | 2027-06-08 | CO-R15.S09-MV-ML-270, CO-R11-MV-TF-180, PRO-R15-MV-DL-110 FF+3d |  | -196d |
|  | 1 | **Road Works** |  | 2026-04-01 | 2027-09-27 |  |  |  |
|  | 1 | **Bituminous Construction** |  | 2026-04-01 | 2026-04-11 |  |  |  |
| CO-R15-S09-RD-F-110 |  | Application of Prime Coat Layer for Road Works- S.W 11-[Road 15] | 10d | 2026-04-01 A | 2026-04-11 A | CO-R11-S07-RD-F-110, CO-R15.S09-RD-P-130 | 100% |  |
| CO-R15-S09-RD-F-120 |  | Bituminous Base & Wearing Courses Layers for Road Works- S.W 11-[Road 15] | 10d | 2026-04-01 A | 2026-04-11 A | CO-R15-S09-RD-F-110 SS+3d, CO-R15-S09-RD-F-110 FF+3d, CO-R11-S07-RD-F-120 | 100% |  |
| CO-R15-S10-RD-F-140 |  | Application of Prime Coat Layer for Road Works- S.W 12-[Road 15] | 10d | 2026-04-01 A | 2026-04-11 A | CO-R11-S08-RD-F-140, PRO-R15-RD-DL-160 FF+3d, CO-R15.S10-RD-P-130, CO-R15-S09-RD-F-110 SS | 100% |  |
| CO-R15-S10-RD-F-150 |  | Bituminous Base & Wearing Courses Layers for Road Works- S.W 12-[Road 15] | 10d | 2026-04-01 A | 2026-04-11 A | CO-R15-S10-RD-F-140 SS+3d, CO-R15-S10-RD-F-140 FF+3d, CO-R11-S08-RD-F-150, PRO-R15-RD-DL-170 FF+3d, CO-R15-S09-RD-F-120 SS | 100% |  |
|  | TS | **Traffic Signs Boards and Roads Marking** |  | 2027-09-13 | 2027-09-27 |  |  |  |
| CO-R15-S09-RD-F-100 |  | Installation Works of Traffic Signs Boards For Road Works- S.W 11-[Road 15] | 10d | 2027-09-13 | 2027-09-25 | CO-R15.S09-RD-P-130, CO-R11-S07-RD-F-100, CO-R15-S09-RD-F-160 FF |  | -252d |
| CO-R15-S09-RD-F-160 |  | Application of Road Marking Works For Road Works- S.W 11-[Road 15] | 10d | 2027-09-13 | 2027-09-25 | CO-R15-S09-RD-F-120, CO-R11-S07-RD-F-160 |  | -252d |
| CO-R15-S10-RD-F-130 |  | Installation Works of Traffic Signs Boards For Road Works- S.W 12-[Road 15] | 12d | 2027-09-13 | 2027-09-27 | CO-R15.S10-RD-P-130, CO-R11-S08-RD-F-130, PRO-R15-RD-DL-140 FF+3d, CO-R15-S10-RD-F-170 FF |  | -251d |
| CO-R15-S10-RD-F-170 |  | Application of Road Marking Works For Road Works- S.W 12-[Road 15] | 10d | 2027-09-13 | 2027-09-25 | CO-R15-S10-RD-F-150, CO-R11-S08-RD-F-170, PRO-R15-RD-DL-150 FF+3d |  | -252d |
|  | 8 | **Road 16 Local 1 ( 527 LM )** |  | 2025-10-13 | 2027-10-09 |  |  |  |
|  | 10 | **Sewage Network** |  | 2026-09-15 | 2027-08-12 |  |  |  |
|  | TF | **Testing and Finishes** |  | 2026-09-15 | 2027-08-12 |  |  |  |
| CO-R16-SW-TF-100 |  | Final Testing For Main Line of Sewage Network-[Road 16] | 12d | 2026-09-15 A | 2026-09-21 A | CO-R16.S11-SW-130, CO-R16.S11-RD-P-100 SS+3d, CO-R16.S11-RD-P-100 FF+3d, CO-R15-SW-TF-100, CO-R16.S12-RD-P-100 SS+3d, CO-R16.S12-RD-P-100 FF+3d | 100% |  |
| CO-R16-SW-TF-110 |  | Install Manhole Cover Works for External Finishes of Sewage Network-[Road 16] | 12d | 2027-07-27 | 2027-08-09 | CO-R16.S11-SW-130 SS+3d, PRO-R16-SW-DL-120 FF+3d, CO-R16-SW-TF-100, CO-R16.S11-SW-130 FF+3d, CO-R16.S11-RD-P-100 SS+3d, CO-R16.S11-RD-P-100 FF+3d, CO-R16.S11-SW-120 SS, CO-R16.S11-SW-120, CO-R16.S11-SW-120 FF, ENG-SH-SW-ML-A-110, ENG-SH-SW-ML-A-110 FF, CO-R15-SW-TF-110, ENG-MS-SW-ML-A-110, ENG-MS-SW-ML-A-110 FF, CO-R16.S12-RD-P-100 SS+3d, CO-R16.S12-RD-P-100 FF+3d |  | -241d |
| CO-R16-SW-TF-130 |  | Main Manhole Internal Finishes (Benching + Insulation) of Sewage Network-[Road 16] | 12d | 2027-07-31 | 2027-08-12 | CO-R16-SW-TF-110 SS+3d, CO-R16-SW-TF-110 FF+3d, PRO-R16-SW-DL-130 FF+3d, CO-R15-SW-TF-130 |  | -241d |
|  | 11 | **Storm Drainage Network** |  | 2026-05-31 | 2027-09-01 |  |  |  |
|  | TF | **Testing and Finishes** |  | 2026-05-31 | 2027-09-01 |  |  |  |
| CO-R16-SD-TF-120 |  | Main Manhole Internal Finishes (Benching + Insulation ) for Storm Drainage Network-[Road 16] | 12d | 2026-05-31 A | 2026-06-26 A | CO-R16-SD-TF-100 SS+3d, CO-R16-SD-TF-100 FF+3d, PRO-R16-SD-DL-160 FF+3d, CO-R16-SD-TF-100, CO-R16-SD-TF-110 SS, CO-R16-SD-TF-110, CO-R16-SD-TF-110 FF, CO-R16-SW-TF-110 SS, CO-R16-SW-TF-110, CO-R16-SW-TF-110 FF, ENG-SH-RD-A-100, ENG-SH-RD-A-100 FF, CO-R15-SD-TF-120, ENG-MS-RD-A-10, ENG-MS-RD-A-10 FF, PRO-R16-SD-DL-100 FF+3d | 100% |  |
| CO-R16-SD-TF-100 |  | Testing Work for Pipes of Storm Drainage Network-[Road 16] | 16d | 2027-05-29 | 2027-06-15 | CO-R16.S11-SD-130 SS+3d, PRO-R16-SD-DL-140 FF+3d, CO-R16.S11-RD-P-100 SS+3d, CO-R16.S11-RD-P-100 FF+3d, CO-R16.S11-SD-130 FF+3d, CO-R16.S11-SD-120 SS, CO-R16.S11-SD-120, ENG-SH-SD-ML-A-110, CO-R15-SD-TF-100, ENG-MS-SD-ML-A-110, CO-R16.S12-RD-P-100 SS+3d, CO-R16.S12-RD-P-100 FF+3d |  | -181d |
| CO-R16-SD-TF-110 |  | Install Catch Basin Cover Works for External Finishes of Storm Drainage Network-[Road 16] | 12d | 2027-06-23 | 2027-07-06 | CO-R16.S11-SD-170 SS+3d, PRO-R16-SD-DL-150 FF+3d, CO-R16.S11-RD-P-100 SS+3d, CO-R16.S11-RD-P-100 FF+3d, CO-R16.S11-RD-P-100, CO-R16.S11-SD-170 FF+3d, CO-R15-SD-TF-110, CO-R16.S12-RD-P-100 SS+3d, CO-R16.S12-RD-P-100 FF+3d |  | -199d |
| CO-R16-SD-TF-130 |  | Catch Basin Internal Finishes (Benching + Insulation ) for Storm Drainage Network-[Road 16] | 16d | 2027-08-15 | 2027-09-01 | CO-R16-SD-TF-110 SS+3d, CO-R16-SD-TF-110 FF+3d, PRO-R16-SD-DL-160 FF+3d, CO-R16-SD-TF-100 SS, CO-R16-SD-TF-100, CO-R16-SD-TF-100 FF, CO-R16-SD-TF-110, CO-R16-SW-TF-110 SS, CO-R16-SW-TF-110, CO-R16-SW-TF-110 FF, ENG-SH-RD-A-100, ENG-SH-RD-A-100 FF, CO-R15-SD-TF-130, ENG-MS-RD-A-10, ENG-MS-RD-A-10 FF |  | -232d |
|  | 9 | **Potable Water Network** |  | 2027-07-22 | 2027-08-28 |  |  |  |
|  | TF | **Testing and Finishes** |  | 2027-07-22 | 2027-08-28 |  |  |  |
| CO-R16-PW-TF-100 |  | Final Finishes works and Covers for Valves and Valve Chambers of Potable Water Network-[Road 16] | 12d | 2027-07-22 | 2027-08-04 | CO-R16.S11-RD-P-100 FS+3d, CO-R15-PW-TF-100, PRO-R16-PW-DL-130 FF+3d, CO-R16.S12-RD-P-100 FS+3d |  | -237d |
| CO-R16-PW-TF-120 |  | Fire Hydrant Finishies (S.Box + Safety + Marker Post ) of Potable Water Network-[Road 16] | 12d | 2027-08-05 | 2027-08-18 | CO-R16-PW-TF-100, CO-R15-PW-TF-120, PRO-R16-PW-DL-130 FF+3d |  | -237d |
| CO-R16-PW-TF-110 |  | Testing Work for Main Line of Potable Water Network-[Road 16] | 12d | 2027-08-15 | 2027-08-28 | CO-R15-PW-TF-110 |  | -257d |
|  | 13 | **Irrigation Network** |  | 2027-07-14 | 2027-07-25 |  |  |  |
|  | TF | **Testing and Finishes** |  | 2027-07-14 | 2027-07-25 |  |  |  |
| CO-R16-IR-TF-160 |  | Final Testing (pressure tests) of Irrigation Network-[Road 16] | 10d | 2027-07-14 | 2027-07-25 | CO-R16.S11-IR-130, CO-R16.S11-RD-P-100, CO-R15-IR-TF-150, CO-R16.S12-RD-P-100 |  | -232d |
|  | 12 | **Street Lighting Network** |  | 2027-04-26 | 2027-08-02 |  |  |  |
|  | TR | **Termination and Testing Works** |  | 2027-04-26 | 2027-08-02 |  |  |  |

| ID | WBS | Task | Duration | Start | Finish | Predecessors | Complete | Total float |
| --- | --- | --- | --- | --- | --- | --- | --- | --- |
| CO-R16-SL-TF-220 |  | Termination Works For Lighting Poles Cables of Street Lighting Network-[Road 16] | 12d | 2027-04-26 | 2027-05-09 | PRO-R16-SL-DL-130 FF+3d, CO-R15-SL-TF-200 |  | -184d |
| CO-R16-SL-TF-230 |  | Termination Works For Panel Board Cables of Street Lighting Network-[Road 16] | 12d | 2027-07-13 | 2027-07-26 | PRO-R16-SL-DL-170 FF+3d, CO-R15-SL-TF-210 |  | -248d |
| CO-R16-SL-TF-380 |  | Testing Works For Panel Board Cables of Street Lighting Network-[Road 16] | 2d | 2027-08-01 | 2027-08-02 | CO-R16-SL-TF-230, CO-R15-SL-TF-380 |  | -242d |
|  | ES | **Earthing System Works** |  |  |  |  |  |  |
|  | 14 | **Medium Voltage Network** |  | 2027-06-09 | 2027-06-16 |  |  |  |
|  | TT | **Termination and Testing Works** |  | 2027-06-09 | 2027-06-16 |  |  |  |
| CO-R16-MV-TF-220 |  | Termination Works of Medium Voltage Network-[Road 16] | 7d | 2027-06-09 | 2027-06-16 | CO-R16.S11-MV-ML-300, CO-R15-MV-TF-200, PRO-R16-MV-DL-110 FF+3d |  | -196d |
|  | 1 | **Road Works** |  | 2025-10-13 | 2027-10-09 |  |  |  |
|  | 1 | **Bituminous Construction** |  | 2025-10-13 | 2026-08-16 |  |  |  |
| CO-R16-S11-RD-F-110 |  | Application of Prime Coat Layer for Road Works - S.W 13-[Road 16] | 10d | 2025-10-13 A | 2025-10-14 A | CO-R15-S09-RD-F-110, CO-R16.S11-RD-P-130 | 100% |  |
| CO-R16-S12-RD-F-140 |  | Application of Prime Coat Layer for Road Works- S.W 14-[Road 16] | 10d | 2025-10-13 A | 2025-10-14 A | CO-R15-S10-RD-F-140, PRO-R16-RD-DL-160 FF+3d, CO-R16.S12-RD-P-130, CO-R16-S11-RD-F-110 SS | 100% |  |
| CO-R16-S11-RD-F-120 |  | Bituminous Base & Wearing Courses Layers for Road Works- S.W 13-[Road 16] | 10d | 2026-05-12 A | 2026-05-16 A | CO-R16-S11-RD-F-110 SS+3d, CO-R16-S11-RD-F-110 FF+3d, CO-R15-S09-RD-F-120 | 100% |  |
| CO-R16-S12-RD-F-150 |  | Bituminous Base & Wearing Courses Layers for Road Works- S.W 14-[Road 16] | 10d | 2026-08-12 A | 2026-08-16 A | CO-R16-S12-RD-F-140 SS+3d, CO-R16-S12-RD-F-140 FF+3d, CO-R15-S10-RD-F-150, PRO-R16-RD-DL-170 FF+3d, CO-R16-S11-RD-F-120 FF | 100% |  |
|  | TS | **Traffic Signs Boards and Roads Marking** |  | 2027-09-26 | 2027-10-09 |  |  |  |
| CO-R16-S11-RD-F-100 |  | Installation Works of Traffic Signs Boards For Road Works- S.W 13-[Road 16] | 10d | 2027-09-26 | 2027-10-06 | CO-R16.S11-RD-P-130, CO-R15-S09-RD-F-100, CO-R16-S11-RD-F-160 FF |  | -252d |
| CO-R16-S11-RD-F-160 |  | Application of Road Marking Works For Road Works- S.W 13-[Road 16] | 10d | 2027-09-26 | 2027-10-06 | CO-R16-S11-RD-F-120, CO-R15-S09-RD-F-160 |  | -252d |
| CO-R16-S12-RD-F-170 |  | Application of Road Marking Works For Road Works- S.W 14-[Road 16] | 10d | 2027-09-26 | 2027-10-06 | CO-R16-S12-RD-F-150, CO-R15-S10-RD-F-170, PRO-R16-RD-DL-150 FF+3d |  | -252d |
| CO-R16-S12-RD-F-130 |  | Installation Works of Traffic Signs Boards For Road Works- S.W 14-[Road 16] | 10d | 2027-09-28 | 2027-10-09 | CO-R16.S12-RD-P-130, CO-R15-S10-RD-F-130, PRO-R16-RD-DL-140 FF+3d, CO-R16-S12-RD-F-170 FF |  | -251d |
|  | 9 | **Road 17 Local 1 ( 500 LM )** |  | 2025-09-20 | 2027-10-18 |  |  |  |
|  | 10 | **Sewage Network** |  | 2026-09-15 | 2027-08-26 |  |  |  |
|  | TF | **Testing and Finishes** |  | 2026-09-15 | 2027-08-26 |  |  |  |
| CO-R17-SW-TF-100 |  | Final Testing For Main Line of Sewage Network-[Road 17] | 12d | 2026-09-15 A | 2026-09-21 A | CO-R17.S13-SW-130, CO-R17.S13-RD-P-100 SS+3d, CO-R17.S13-RD-P-100 FF+3d, CO-R16-SW-TF-100, CO-R17.S14-RD-P-100 SS+3d, CO-R17.S14-RD-P-100 FF+3d | 100% |  |
| CO-R17-SW-TF-110 |  | Install Manhole Cover Works for External Finishes of Sewage Network-[Road 17] | 12d | 2027-08-10 | 2027-08-23 | CO-R17.S13-SW-130 SS+3d, PRO-R17-SW-DL-120 FF+3d, CO-R17-SW-TF-100, CO-R17.S13-SW-130 FF+3d, CO-R17.S13-RD-P-100 SS+3d, CO-R17.S13-RD-P-100 FF+3d, CO-R17.S13-SW-120 SS, CO-R17.S13-SW-120, CO-R17.S13-SW-120 FF, ENG-SH-SW-ML-A-110, ENG-SH-SW-ML-A-110 FF, CO-R16-SW-TF-110, ENG-MS-SW-ML-A-110, ENG-MS-SW-ML-A-110 FF, CO-R17.S14-RD-P-100 SS+3d, CO-R17.S14-RD-P-100 FF+3d |  | -241d |
| CO-R17-SW-TF-130 |  | Main Manhole Internal Finishes (Benching + Insulation) of Sewage Network-[Road 17] | 12d | 2027-08-14 | 2027-08-26 | CO-R17-SW-TF-110 SS+3d, CO-R17-SW-TF-110 FF+3d, PRO-R17-SW-DL-130 FF+3d, CO-R16-SW-TF-130 |  | -241d |
|  | 11 | **Storm Drainage Network** |  | 2026-05-31 | 2027-09-15 |  |  |  |
|  | TF | **Testing and Finishes** |  | 2026-05-31 | 2027-09-15 |  |  |  |
| CO-R17-SD-TF-120 |  | Main Manhole Internal Finishes (Benching + Insulation ) for Storm Drainage Network-[Road 17] | 12d | 2026-05-31 A | 2026-06-18 A | CO-R17-SD-TF-100 SS+3d, CO-R17-SD-TF-100 FF+3d, PRO-R17-SD-DL-160 FF+3d, CO-R17-SD-TF-100, CO-R17-SD-TF-110 SS, CO-R17-SD-TF-110, CO-R17-SD-TF-110 FF, CO-R17-SW-TF-110 SS, CO-R17-SW-TF-110, CO-R17-SW-TF-110 FF, ENG-SH-RD-A-100, ENG-SH-RD-A-100 FF, CO-R16-SD-TF-120, ENG-MS-RD-A-10, ENG-MS-RD-A-10 FF, PRO-R17-SD-DL-100 FF+3d | 100% |  |
| CO-R17-SD-TF-100 |  | Testing Work for Pipes of Storm Drainage Network-[Road 17] | 16d | 2027-06-16 | 2027-07-04 | CO-R17.S13-SD-130 SS+3d, PRO-R17-SD-DL-140 FF+3d, CO-R17.S13-RD-P-100 SS+3d, CO-R17.S13-RD-P-100 FF+3d, CO-R17.S13-SD-130 FF+3d, CO-R17.S13-SD-120 SS, CO-R17.S13-SD-120, ENG-SH-SD-ML-A-110, CO-R16-SD-TF-100, ENG-MS-SD-ML-A-110, CO-R17.S14-RD-P-100 SS+3d, CO-R17.S14-RD-P-100 FF+3d |  | -181d |
| CO-R17-SD-TF-110 |  | Install Catch Basin Cover Works for External Finishes of Storm Drainage Network-[Road 17] | 12d | 2027-07-07 | 2027-07-20 | CO-R17.S13-SD-170 SS+3d, PRO-R17-SD-DL-150 FF+3d, CO-R17.S13-RD-P-100 SS+3d, CO-R17.S13-RD-P-100 FF+3d, CO-R17.S13-RD-P-100, CO-R17.S13-SD-170 FF+3d, CO-R16-SD-TF-110, CO-R17.S14-RD-P-100 SS+3d, CO-R17.S14-RD-P-100 FF+3d |  | -195d |
| CO-R17-SD-TF-130 |  | Catch Basin Internal Finishes (Benching + Insulation ) for Storm Drainage Network-[Road 17] | 12d | 2027-09-02 | 2027-09-15 | CO-R17-SD-TF-110 SS+3d, CO-R17-SD-TF-110 FF+3d, PRO-R17-SD-DL-160 FF+3d, CO-R17-SD-TF-100 SS, CO-R17-SD-TF-100, CO-R17-SD-TF-100 FF, CO-R17-SD-TF-110, CO-R17-SW-TF-110 SS, CO-R17-SW-TF-110, CO-R17-SW-TF-110 FF, ENG-SH-RD-A-100, ENG-SH-RD-A-100 FF, CO-R16-SD-TF-130, ENG-MS-RD-A-10, ENG-MS-RD-A-10 FF |  | -232d |
|  | 9 | **Potable Water Network** |  | 2027-08-05 | 2027-09-11 |  |  |  |
|  | TF | **Testing and Finishes** |  | 2027-08-05 | 2027-09-11 |  |  |  |
| CO-R17-PW-TF-100 |  | Final Finishes works and Covers for Valves and Valve Chambers of Potable Water Network-[Road 17] | 12d | 2027-08-05 | 2027-08-18 | CO-R17.S13-RD-P-100 FS+3d, CO-R16-PW-TF-100, PRO-R17-PW-DL-130 FF+3d, CO-R17.S14-RD-P-100 FS+3d |  | -237d |
| CO-R17-PW-TF-120 |  | Fire Hydrant Finishies (S.Box + Safety + Marker Post ) of Potable Water Network-[Road 17] | 12d | 2027-08-19 | 2027-09-01 | CO-R17-PW-TF-100, CO-R16-PW-TF-120, PRO-R17-PW-DL-130 FF+3d |  | -237d |
| CO-R17-PW-TF-110 |  | Testing Work for Main Line of Potable Water Network-[Road 17] | 12d | 2027-08-29 | 2027-09-11 | CO-R16-PW-TF-110 |  | -257d |
|  | 13 | **Irrigation Network** |  | 2027-07-26 | 2027-08-05 |  |  |  |
|  | TF | **Testing and Finishes** |  | 2027-07-26 | 2027-08-05 |  |  |  |
| CO-R17-IR-TF-170 |  | Final Testing (pressure tests) of Irrigation Network-[Road 17] | 10d | 2027-07-26 | 2027-08-05 | CO-R17.S13-IR-130, CO-R17.S13-RD-P-100, CO-R16-IR-TF-160, CO-R17.S14-RD-P-100 |  | -232d |
|  | 12 | **Street Lighting Network** |  | 2027-05-10 | 2027-08-11 |  |  |  |
|  | TR | **Termination and Testing Works** |  | 2027-05-10 | 2027-08-11 |  |  |  |
| CO-R17-SL-TF-240 |  | Termination Works For Lighting Poles Cables of Street Lighting Network-[Road 17] | 12d | 2027-05-10 | 2027-05-29 | PRO-R17-SL-DL-130 FF+3d, CO-R16-SL-TF-220 |  | -184d |
| CO-R17-SL-TF-250 |  | Termination Works For Panel Board Cables of Street Lighting Network-[Road 17] | 12d | 2027-07-27 | 2027-08-09 | PRO-R17-SL-DL-170 FF+3d, CO-R16-SL-TF-230, CO-R17.S14-SL-160, CO-R17.S14-SL-190, CO-R17.S14-SL-220 |  | -248d |
| CO-R17-SL-TF-380 |  | Testing Works For Panel Board Cables of Street Lighting Network-[Road 17] | 2d | 2027-08-10 | 2027-08-11 | CO-R17-SL-TF-250, CO-R16-SL-TF-380 |  | -248d |
|  | ES | **Earthing System Works** |  |  |  |  |  |  |
|  | 14 | **Medium Voltage Network** |  | 2027-06-17 | 2027-06-24 |  |  |  |
|  | TT | **Termination and Testing Works** |  | 2027-06-17 | 2027-06-24 |  |  |  |
| CO-R17-MV-TF-240 |  | Termination Works of Medium Voltage Network-[Road 17] | 7d | 2027-06-17 | 2027-06-24 | CO-R17.S13-MV-ML-330, CO-R16-MV-TF-220, PRO-R17-MV-DL-110 FF+3d, CO-R17.S13-MV-SS-160 |  | -196d |
|  | 1 | **Road Works** |  | 2025-09-20 | 2027-10-18 |  |  |  |
|  | 1 | **Bituminous Construction** |  | 2025-09-20 | 2025-10-13 |  |  |  |
| CO-R17-S13-RD-F-110 |  | Application of Prime Coat Layer for Road Works- S.W 15-[Road 17] | 10d | 2025-09-20 A | 2025-09-25 A | CO-R16-S11-RD-F-110, CO-R17.S13-RD-P-130 | 100% |  |
| CO-R17-S14-RD-F-140 |  | Application of Prime Coat Layer for Road Works- S.W 16-[Road 17] | 10d | 2025-09-20 A | 2025-09-25 A | CO-R16-S12-RD-F-140, PRO-R17-RD-DL-160 FF+3d, CO-R17.S14-RD-P-130, CO-R17-S13-RD-F-110 SS | 100% |  |
| CO-R17-S13-RD-F-120 |  | Bituminous Base & Wearing Courses Layers for Road Works- S.W 15-[Road 17] | 10d | 2025-10-09 A | 2025-10-13 A | CO-R17-S13-RD-F-110 SS+3d, CO-R17-S13-RD-F-110 FF+3d, CO-R16-S11-RD-F-120 | 100% |  |
| CO-R17-S14-RD-F-150 |  | Bituminous Base & Wearing Courses Layers for Road Works- S.W 16-[Road 17] | 10d | 2025-10-09 A | 2025-10-13 A | CO-R17-S14-RD-F-140 SS+3d, CO-R17-S14-RD-F-140 FF+3d, CO-R16-S12-RD-F-150, PRO-R17-RD-DL-170 FF+3d, CO-R17-S13-RD-F-120 SS | 100% |  |
|  | TS | **Traffic Signs Boards and Roads Marking** |  | 2027-10-07 | 2027-10-18 |  |  |  |
| CO-R17-S13-RD-F-100 |  | Installation Works of Traffic Signs Boards For Road Works- S.W 15-[Road 17] | 10d | 2027-10-07 | 2027-10-18 | CO-R17.S13-RD-P-130, CO-R16-S11-RD-F-100, CO-R17-S13-RD-F-160 FF |  | -252d |
| CO-R17-S13-RD-F-160 |  | Application of Road Marking Works For Road Works- S.W 15-[Road 17] | 10d | 2027-10-07 | 2027-10-18 | CO-R17-S13-RD-F-120, CO-R16-S11-RD-F-160 |  | -252d |
| CO-R17-S14-RD-F-170 |  | Application of Road Marking Works For Road Works- S.W 16-[Road 17] | 10d | 2027-10-07 | 2027-10-18 | CO-R17-S14-RD-F-150, CO-R16-S12-RD-F-170, PRO-R17-RD-DL-150 FF+3d |  | -252d |
| CO-R17-S14-RD-F-130 |  | Installation Works of Traffic Signs Boards For Road Works- S.W 16-[Road 17] | 7d | 2027-10-11 | 2027-10-18 | CO-R17.S14-RD-P-130, CO-R16-S12-RD-F-130, PRO-R17-RD-DL-140 FF+3d, CO-R17-S14-RD-F-170 FF |  | -252d |
|  | 3 | **Road 18 Local 1 ( 479 LM )** |  | 2025-09-23 | 2027-10-25 |  |  |  |
|  | 10 | **Sewage Network** |  | 2026-09-15 | 2027-07-10 |  |  |  |
|  | TF | **Testing and Finishes** |  | 2026-09-15 | 2027-07-10 |  |  |  |
| CO-R18-SW-TF-100 |  | Final Testing For Main Line of Sewage Network-[Road 18] | 12d | 2026-09-15 A | 2026-09-21 A | CO-R09-SW-TF-100, CO-R11.S06-RD-P-100, CO-R18.S15-RD-P-160 SS, CO-R18.S15-RD-P-160 FF | 100% |  |
| CO-R18-SW-TF-110 |  | Install Manhole Cover Works for External Finishes of Sewage Network-[Road 18] | 12d | 2027-06-23 | 2027-07-06 | CO-R18-SW-TF-100, ENG-SH-SW-ML-A-110, ENG-SH-SW-ML-A-110 FF, CO-R09-SW-TF-110, ENG-MS-SW-ML-A-110, ENG-MS-SW-ML-A-110 FF, PRO-R18-SW-DL-170 |  | -197d |
| CO-R18-SW-TF-130 |  | Main Manhole Internal Finishes (Benching + Insulation) of Sewage Network-[Road 18] | 12d | 2027-06-27 | 2027-07-10 | CO-R09-SW-TF-120, CO-R18-SW-TF-110 SS, CO-R18-SW-TF-110 FF, PRO-R18-SW-DL-190 |  | -200d |
|  | 11 | **Storm Drainage Network** |  | 2026-06-20 | 2027-07-29 |  |  |  |
|  | TF | **Testing and Finishes** |  | 2026-06-20 | 2027-07-29 |  |  |  |
| CO-R18-SD-TF-120 |  | Main Manhole Internal Finishes (Benching + Insulation ) for Storm Drainage Network-[Road 18] | 16d | 2026-06-20 A | 2026-06-27 A | CO-R18-SD-TF-100 SS+3d, CO-R18-SD-TF-100 FF+3d, CO-R18-SD-TF-100, CO-R18-SD-TF-110 SS, CO-R18-SD-TF-110, CO-R18-SD-TF-110 FF, CO-R18-SW-TF-110 SS, CO-R18-SW-TF-110 FF, ENG-SH-RD-A-100, ENG-SH-RD-A-100 FF, CO-R09-SD-TF-120, ENG-MS-RD-A-10, ENG-MS-RD-A-10 FF, PRO-R18-SD-DL-190, PRO-R18-SD-DL-170 FF+3d | 100% |  |
| CO-R18-SD-TF-110 |  | Install Catch Basin Cover Works for External Finishes of Storm Drainage Network-[Road 18] | 16d | 2027-05-31 | 2027-06-17 | CO-R09-SD-TF-110, CO-R18.S15-RD-P-160 SS, CO-R18.S15-RD-P-160 FF, PRO-R18-SD-DL-210 |  | -171d |
| CO-R18-SD-TF-100 |  | Testing Work for Pipes of Storm Drainage Network-[Road 18] | 16d | 2027-06-09 | 2027-06-27 | ENG-SH-SD-ML-A-110, CO-R09-SD-TF-100, ENG-MS-SD-ML-A-110, CO-R17.S13-RD-P-100 SS+3d, CO-R17.S13-RD-P-100 FF+3d |  | -179d |
| CO-R18-SD-TF-130 |  | Catch Basin Internal Finishes (Benching + Insulation ) for Storm Drainage Network-[Road 18] | 16d | 2027-07-12 | 2027-07-29 | CO-R18-SD-TF-110 SS+3d, CO-R18-SD-TF-110 FF+3d, CO-R18-SD-TF-100 SS, CO-R18-SD-TF-100, CO-R18-SD-TF-100 FF, CO-R18-SD-TF-110, CO-R18-SW-TF-110 SS, CO-R18-SW-TF-110 FF, ENG-SH-RD-A-100, ENG-SH-RD-A-100 FF, CO-R09-SD-TF-130, ENG-MS-RD-A-10, ENG-MS-RD-A-10 FF, PRO-R18-SD-DL-230 |  | -191d |

| ID | WBS | Task | Duration | Start | Finish | Predecessors | Complete | Total float |
| --- | --- | --- | --- | --- | --- | --- | --- | --- |
|  | 9 | **Potable Water Network** |  | 2027-07-04 | 2027-09-26 |  |  |  |
|  | TF | **Testing and Finishes** |  | 2027-07-04 | 2027-09-26 |  |  |  |
| CO-R18-PW-TF-100 |  | Final Finishes works and Covers for Valves and Valve Chambers of Potable Water Network-[Road 18] | 12d | 2027-07-04 | 2027-07-17 | CO-R09-PW-TF-100, CO-R18.S15-RD-P-160 SS, CO-R18.S15-RD-P-160 FF |  | -209d |
| CO-R18-PW-TF-120 |  | Fire Hydrant Finishies (S.Box + Safety + Marker Post ) of Potable Water Network-[Road 18] | 12d | 2027-07-18 | 2027-07-31 | CO-R18-PW-TF-100, CO-R09-PW-TF-120 |  | -209d |
| CO-R18-PW-TF-110 |  | Testing Work for Main Line of Potable Water Network-[Road 18] | 12d | 2027-09-12 | 2027-09-26 | CO-R09-PW-TF-110, CO-R17-PW-TF-110, PRO-R18-PW-DL-170 |  | -257d |
|  | 13 | **Irrigation Network** |  | 2027-06-24 | 2027-07-12 |  |  |  |
|  | TF | **Testing and Finishes** |  | 2027-06-24 | 2027-07-12 |  |  |  |
| CO-R18-IR-TF-110 |  | Final Testing (pressure tests) of Irrigation Network-[Road 18] | 16d | 2027-06-24 | 2027-07-12 | CO-R09-IR-TF-100, CO-R18.S15-RD-P-160 SS, CO-R18.S15-RD-P-160 FF |  | -211d |
|  | 12 | **Street Lighting Network** |  | 2027-04-15 | 2027-07-18 |  |  |  |
|  | TR | **Termination and Testing Works** |  | 2027-04-15 | 2027-07-18 |  |  |  |
| CO-R18-SL-TF-120 |  | Termination Works For Lighting Poles Cables of Street Lighting Network-[Road 18] | 12.25d | 2027-04-15 | 2027-04-29 | CO-R09-SL-TF-100, PRO-R18-SL-DL-210, PRO-R18-SL-DL-250, CO-R18.S16-SL-130 |  | -163.25d |
| CO-R18-SL-TF-130 |  | Termination Works For Panel Board Cables of Street Lighting Network-[Road 18] | 12d | 2027-07-01 | 2027-07-15 | CO-R09-SL-TF-110, CO-R09.S02-SL-220, CO-R18.S16-SL-160, CO-R18.S16-SL-190, CO-R18.S16-SL-220 |  | -226.5d |
| CO-R18-SL-TF-380 |  | Testing Works For Panel Board Cables of Street Lighting Network-[Road 18] | 2d | 2027-07-15 | 2027-07-18 | CO-R18-SL-TF-130, CO-R09-SL-TF-380 |  | -226.5d |
|  | ES | **Earthing System Works** |  |  |  |  |  |  |
|  | 14 | **Medium Voltage Network** |  | 2027-05-09 | 2027-06-01 |  |  |  |
|  | TT | **Termination and Testing Works** |  | 2027-05-09 | 2027-06-01 |  |  |  |
| CO-R18-MV-TF-120 |  | Termination Works of Medium Voltage Network-[Road 18] | 16d | 2027-05-09 | 2027-06-01 | CO-R09-MV-TF-100, CO-R18.S15-MV-ML-360, PRO-R18-MV-DL-130 |  | -176d |
|  | 1 | **Road Works** |  | 2025-09-23 | 2027-10-25 |  |  |  |
|  | 1 | **Bituminous Construction** |  | 2025-09-23 | 2025-10-13 |  |  |  |
| CO-R18-S15-RD-F-100 |  | Application of Prime Coat Layer for Road Works- S.W 03-[Road 18] | 18d | 2025-09-23 A | 2025-09-28 A | CO-R09-S1-RD-F-100, CO-R18.S15-RD-P-140, PRO-R18-RD-DL-240 | 100% |  |
| CO-R18-S15-RD-F-110 |  | Bituminous Base & Wearing Courses Layers for Road Works- S.W 03-[Road 18] | 18d | 2025-09-23 A | 2025-09-28 A | CO-R18-S15-RD-F-100 SS+3d, CO-R18-S15-RD-F-100 FF+3d, CO-R09-S1-RD-F-120, PRO-R18-RD-DL-250 FF+3d | 100% |  |
| CO-R18-S16-RD-F-150 |  | Application of Prime Coat Layer for Road Works- S.W 04-[Road 18] | 18d | 2025-10-09 A | 2025-10-13 A | CO-R09-S2-RD-F-110, CO-R18-S15-RD-F-100 SS, PRO-R18-RD-DL-240 | 100% |  |
| CO-R18-S16-RD-F-170 |  | Bituminous Base & Wearing Courses Layers for Road Works- S.W 04-[Road 18] | 18d | 2025-10-09 A | 2025-10-11 A | CO-R18-S16-RD-F-150 SS+3d, CO-R18-S16-RD-F-150 FF+3d, CO-R09-S2-RD-F-130, CO-R18-S15-RD-F-110 SS, PRO-R18-RD-DL-250 FF+3d | 100% |  |
|  | TS | **Traffic Signs Boards and Roads Marking** |  | 2027-09-15 | 2027-10-25 |  |  |  |
| CO-R18-S15-RD-F-120 |  | Application of Road Marking Works For Road Works- S.W 03-[Road 18] | 12d | 2027-09-15 | 2027-09-29 | CO-R09-S1-RD-F-140, CO-R18-S15-RD-F-110, CO-R09-S1-RD-F-150, PRO-R18-RD-DL-210 |  | -258d |
| CO-R18-S15-RD-F-130 |  | Installation Works of Traffic Signs Boards For Road Works- S.W 03-[Road 18] | 12d | 2027-09-30 | 2027-10-13 | CO-R09-S1-RD-F-150, CO-R18-S15-RD-F-120, PRO-R18-RD-DL-200 FF+3d |  | -258d |
| CO-R18-S16-RD-F-140 |  | Application of Road Marking Works For Road Works- S.W 04-[Road 18] | 15d | 2027-10-07 | 2027-10-24 | CO-R09-S2-RD-F-160, CO-R18-S16-RD-F-170, CO-R09-S1-RD-F-150, CO-R09-S2-RD-F-170, PRO-R18-RD-DL-210 |  | -257d |
| CO-R18-S16-RD-F-160 |  | Installation Works of Traffic Signs Boards For Road Works- S.W 04-[Road 18] | 10d | 2027-10-14 | 2027-10-25 | CO-R18-S16-RD-F-140 FF, CO-R09-S2-RD-F-170, CO-R18-S15-RD-F-130, PRO-R18-RD-DL-200 FF+3d |  | -258d |
|  | GEN | **Independent Works** |  | 2025-05-19 | 2027-10-25 |  |  |  |
|  | CON | **Tie In To Existing Networks** |  | 2027-06-06 | 2027-10-25 |  |  |  |
|  | 1 | **Phase 2 Block "J"** |  | 2027-06-06 | 2027-10-25 |  |  |  |
|  | 2 | **Road 09 Local 2 ( 2278 LM )** |  | 2027-06-26 | 2027-10-10 |  |  |  |
|  | 15 | **Storm Drainage Network** |  | 2027-09-16 | 2027-09-25 |  |  |  |
| TIE-SD-R09 |  | TIE IN Existing Network For Storm Drainage Network | 7d | 2027-09-16 | 2027-09-25 | MS-CF-SD |  | -232d |
|  | 16 | **Sewage Network** |  | 2027-08-28 | 2027-09-09 |  |  |  |
| TIE-SW-R09 |  | TIE IN Existing Network For Sewage Network | 12d | 2027-08-28 | 2027-09-09 | MS-CF-SW |  | -207d |
|  | 17 | **Potable Water Network** |  | 2027-09-27 | 2027-10-10 |  |  |  |
| TIE-PW-R09 |  | TIE IN Existing Network For Potable Water Network | 12d | 2027-09-27 | 2027-10-10 | MS-CF-PW |  | -245d |
|  | 1 | **Irrigation Network** |  | 2027-08-07 | 2027-08-19 |  |  |  |
| TIE-IR-R09 |  | TIE IN Existing Network For Irrigation Network | 12d | 2027-08-07 | 2027-08-19 | MS-CF-IR |  | -203d |
|  | 18 | **Meduim Voltage Network** |  | 2027-06-26 | 2027-07-15 |  |  |  |
| TIE-R09-MV |  | TIE IN Existing Network For Medium Voltage Network | 18d | 2027-06-26 | 2027-07-15 | MS-CF-MV |  | -176d |
|  | 2 | **Street Lighting Network** |  | 2027-08-12 | 2027-09-01 |  |  |  |
| TIE-R09-SL |  | TIE IN Existing Network For Street Lighting Network | 18d | 2027-08-12 | 2027-09-01 | MS-CF-SL |  | -203d |
|  | 3 | **Telecom Network** |  | 2027-06-26 | 2027-07-06 |  |  |  |
| TIE-R09-TE |  | TIE IN Existing Network For Telecom Network | 10d | 2027-06-26 | 2027-07-06 | MS-CF-TE, MS-CF-MV |  | -172d |
|  | 4 | **Road 10 Local 2 ( 2352 LM )** |  | 2027-06-26 | 2027-10-25 |  |  |  |
|  | 15 | **Storm Drainage Network** |  | 2027-09-16 | 2027-09-25 |  |  |  |
| TIE-SD-R10 |  | TIE IN Existing Network For Storm Drainage Network | 7d | 2027-09-16 | 2027-09-25 | MS-CF-SD |  | -232d |
|  | 16 | **Sewage Network** |  | 2027-08-28 | 2027-09-09 |  |  |  |
| TIE-SW-R10 |  | TIE IN Existing Network For Sewage Network | 12d | 2027-08-28 | 2027-09-09 | MS-CF-SW |  | -207d |
|  | 17 | **Potable Water Network** |  | 2027-09-27 | 2027-10-10 |  |  |  |
| TIE-PW-R10 |  | TIE IN Existing Network For Potable Water Network | 12d | 2027-09-27 | 2027-10-10 | MS-CF-PW |  | -245d |
|  | 1 | **Irrigation Network** |  | 2027-08-07 | 2027-08-19 |  |  |  |
| TIE-IR-R10 |  | TIE IN Existing Network For Irrigation Network | 12d | 2027-08-07 | 2027-08-19 | MS-CF-IR |  | -203d |
|  | 18 | **Meduim Voltage Network** |  | 2027-06-26 | 2027-07-15 |  |  |  |
| TIE-R10-MV |  | TIE IN Existing Network For Medium Voltage Network | 18d | 2027-06-26 | 2027-07-15 | MS-CF-MV |  | -176d |
|  | 2 | **Street Lighting Network** |  | 2027-08-12 | 2027-09-01 |  |  |  |
| TIE-R10-SL |  | TIE IN Existing Network For Street Lighting Network | 18d | 2027-08-12 | 2027-09-01 | MS-CF-SL |  | -203d |
|  | 4 | **Telecom Network** |  | 2027-06-26 | 2027-07-06 |  |  |  |
| TIE-R10-TE |  | TIE IN Existing Network For Telecom Network | 10d | 2027-06-26 | 2027-07-06 | MS-CF-TE, MS-CF-MV |  | -172d |
|  | 3 | **Road Works** |  | 2027-10-20 | 2027-10-25 |  |  |  |
| TIE-R10-RD |  | TIE IN Existing Network For Road Works | 5d | 2027-10-20 | 2027-10-25 | MS-CF-RD FF, TIE-R10-TE |  | -258d |
|  | 5 | **Road 11 Local 1 ( 670 LM )** |  | 2027-06-26 | 2027-10-25 |  |  |  |
|  | 15 | **Storm Drainage Network** |  | 2027-09-16 | 2027-09-25 |  |  |  |
| TIE-SD-R11 |  | TIE IN Existing Network For Storm Drainage Network | 7d | 2027-09-16 | 2027-09-25 | MS-CF-SD |  | -232d |
|  | 16 | **Sewage Network** |  | 2027-08-28 | 2027-09-09 |  |  |  |
| TIE-SW-R11 |  | TIE IN Existing Network For Sewage Network | 12d | 2027-08-28 | 2027-09-09 | MS-CF-SW |  | -207d |
|  | 17 | **Potable Water Network** |  | 2027-09-27 | 2027-10-10 |  |  |  |
| TIE-PW-R11 |  | TIE IN Existing Network For Potable Water Network | 12d | 2027-09-27 | 2027-10-10 | MS-CF-PW |  | -245d |

| ID | WBS | Task | Duration | Start | Finish | Predecessors | Total float |
| --- | --- | --- | --- | --- | --- | --- | --- |
|  | 1 | **Irrigation Network** |  | 2027-08-07 | 2027-08-19 |  |  |
| TIE-IR-R11 |  | TIE IN Existing Network For Irrigation Network | 12d | 2027-08-07 | 2027-08-19 | MS-CF-IR | -203d |
|  | 18 | **Meduim Voltage Network** |  | 2027-06-26 | 2027-07-15 |  |  |
| TIE-R11-MV |  | TIE IN Existing Network For Medium Voltage Network | 18d | 2027-06-26 | 2027-07-15 | MS-CF-MV | -176d |
|  | 2 | **Street Lighting Network** |  | 2027-08-12 | 2027-09-01 |  |  |
| TIE-R11-SL |  | TIE IN Existing Network For Street Lighting Network | 18d | 2027-08-12 | 2027-09-01 | MS-CF-SL | -203d |
|  | 4 | **Telecom Network** |  | 2027-06-26 | 2027-07-06 |  |  |
| TIE-R11-TE |  | TIE IN Existing Network For Telecom Network | 10d | 2027-06-26 | 2027-07-06 | MS-CF-TE, MS-CF-MV | -172d |
|  | 3 | **Road Works** |  | 2027-10-20 | 2027-10-25 |  |  |
| TIE-R11-RD |  | TIE IN Existing Network For Road Works | 5d | 2027-10-20 | 2027-10-25 | MS-CF-RD FF, TIE-R11-TE | -258d |
|  | 6 | **Road 14 Local 1 ( 584 LM )** |  | 2027-06-26 | 2027-10-25 |  |  |
|  | 15 | **Storm Drainage Network** |  | 2027-09-16 | 2027-09-25 |  |  |
| TIE-SD-R14 |  | TIE IN Existing Network For Storm Drainage Network | 7d | 2027-09-16 | 2027-09-25 | MS-CF-SD | -232d |
|  | 16 | **Sewage Network** |  | 2027-08-28 | 2027-09-09 |  |  |
| TIE-SW-R14 |  | TIE IN Existing Network For Sewage Network | 12d | 2027-08-28 | 2027-09-09 | MS-CF-SW | -207d |
|  | 17 | **Potable Water Network** |  | 2027-09-27 | 2027-10-10 |  |  |
| TIE-PW-R14 |  | TIE IN Existing Network For Potable Water Network | 12d | 2027-09-27 | 2027-10-10 | MS-CF-PW | -245d |
|  | 1 | **Irrigation Network** |  | 2027-08-07 | 2027-08-19 |  |  |
| TIE-IR-R14 |  | TIE IN Existing Network For Irrigation Network | 12d | 2027-08-07 | 2027-08-19 | MS-CF-IR | -203d |
|  | 18 | **Meduim Voltage Network** |  | 2027-06-26 | 2027-07-15 |  |  |
| TIE-R14-MV |  | TIE IN Existing Network For Medium Voltage Network | 18d | 2027-06-26 | 2027-07-15 | MS-CF-MV | -176d |
|  | 2 | **Street Lighting Network** |  | 2027-08-12 | 2027-09-01 |  |  |
| TIE-R14-SL |  | TIE IN Existing Network For Street Lighting Network | 18d | 2027-08-12 | 2027-09-01 | MS-CF-SL | -203d |
|  | 4 | **Telecom Network** |  | 2027-06-26 | 2027-07-06 |  |  |
| TIE-R14-TE |  | TIE IN Existing Network For Telecom Network | 10d | 2027-06-26 | 2027-07-06 | MS-CF-TE, MS-CF-MV | -172d |
|  | 3 | **Road Works** |  | 2027-10-20 | 2027-10-25 |  |  |
| TIE-R14-RD |  | TIE IN Existing Network For Road Works | 5d | 2027-10-20 | 2027-10-25 | MS-CF-RD FF, TIE-R10-TE | -258d |
|  | 7 | **Road 15 Local 1 ( 556 LM )** |  | 2027-06-26 | 2027-10-10 |  |  |
|  | 15 | **Storm Drainage Network** |  | 2027-09-16 | 2027-09-25 |  |  |
| TIE-SD-R15 |  | TIE IN Existing Network For Storm Drainage Network | 7d | 2027-09-16 | 2027-09-25 | MS-CF-SD | -232d |
|  | 16 | **Sewage Network** |  | 2027-08-28 | 2027-09-09 |  |  |
| TIE-SW-R15 |  | TIE IN Existing Network For Sewage Network | 12d | 2027-08-28 | 2027-09-09 | MS-CF-SW | -207d |
|  | 17 | **Potable Water Network** |  | 2027-09-27 | 2027-10-10 |  |  |
| TIE-PW-R15 |  | TIE IN Existing Network For Potable Water Network | 12d | 2027-09-27 | 2027-10-10 | MS-CF-PW | -245d |
|  | 1 | **Irrigation Network** |  | 2027-08-07 | 2027-08-19 |  |  |
| TIE-IR-R15 |  | TIE IN Existing Network For Irrigation Network | 12d | 2027-08-07 | 2027-08-19 | MS-CF-IR | -203d |
|  | 18 | **Meduim Voltage Network** |  | 2027-06-26 | 2027-07-15 |  |  |
| TIE-R15-MV |  | TIE IN Existing Network For Medium Voltage Network | 18d | 2027-06-26 | 2027-07-15 | MS-CF-MV | -176d |
|  | 2 | **Street Lighting Network** |  | 2027-08-12 | 2027-09-01 |  |  |
| TIE-R15-SL |  | TIE IN Existing Network For Street Lighting Network | 18d | 2027-08-12 | 2027-09-01 | MS-CF-SL | -203d |
|  | 3 | **Telecom Network** |  | 2027-06-26 | 2027-07-06 |  |  |
| TIE-R15-TE |  | TIE IN Existing Network For Telecom Network | 10d | 2027-06-26 | 2027-07-06 | MS-CF-TE, MS-CF-MV | -172d |
|  | 8 | **Road 16 Local 1 ( 527 LM )** |  | 2027-06-26 | 2027-10-10 |  |  |
|  | 15 | **Storm Drainage Network** |  | 2027-09-16 | 2027-09-25 |  |  |
| TIE-SD-R16 |  | TIE IN Existing Network For Storm Drainage Network | 7d | 2027-09-16 | 2027-09-25 | MS-CF-SD | -232d |
|  | 16 | **Sewage Network** |  | 2027-08-28 | 2027-09-09 |  |  |
| TIE-SW-R16 |  | TIE IN Existing Network For Sewage Network | 12d | 2027-08-28 | 2027-09-09 | MS-CF-SW | -207d |
|  | 17 | **Potable Water Network** |  | 2027-09-27 | 2027-10-10 |  |  |
| TIE-PW-R16 |  | TIE IN Existing Network For Potable Water Network | 12d | 2027-09-27 | 2027-10-10 | MS-CF-PW | -245d |
|  | 1 | **Irrigation Network** |  | 2027-08-07 | 2027-08-19 |  |  |
| TIE-IR-R16 |  | TIE IN Existing Network For Irrigation Network | 12d | 2027-08-07 | 2027-08-19 | MS-CF-IR | -203d |
|  | 18 | **Meduim Voltage Network** |  | 2027-06-26 | 2027-07-15 |  |  |
| TIE-R16-MV |  | TIE IN Existing Network For Medium Voltage Network | 18d | 2027-06-26 | 2027-07-15 | MS-CF-MV | -176d |
|  | 2 | **Street Lighting Network** |  | 2027-08-12 | 2027-09-01 |  |  |
| TIE-R16-SL |  | TIE IN Existing Network For Street Lighting Network | 18d | 2027-08-12 | 2027-09-01 | MS-CF-SL | -203d |
|  | 3 | **Telecom Network** |  | 2027-06-26 | 2027-07-06 |  |  |
| TIE-R16-TE |  | TIE IN Existing Network For Telecom Network | 10d | 2027-06-26 | 2027-07-06 | MS-CF-TE, MS-CF-MV | -172d |
|  | 9 | **Road 17 Local 1 ( 500 LM )** |  | 2027-06-26 | 2027-10-10 |  |  |
|  | 15 | **Storm Drainage Network** |  | 2027-09-16 | 2027-09-25 |  |  |
| TIE-SD-R17 |  | TIE IN Existing Network For Storm Drainage Network | 7d | 2027-09-16 | 2027-09-25 | MS-CF-SD | -232d |
|  | 16 | **Sewage Network** |  | 2027-08-28 | 2027-09-09 |  |  |
| TIE-SW-R17 |  | TIE IN Existing Network For Sewage Network | 12d | 2027-08-28 | 2027-09-09 | MS-CF-SW | -207d |
|  | 17 | **Potable Water Network** |  | 2027-09-27 | 2027-10-10 |  |  |
| TIE-PW-R17 |  | TIE IN Existing Network For Potable Water Network | 12d | 2027-09-27 | 2027-10-10 | MS-CF-PW | -245d |
|  | 1 | **Irrigation Network** |  | 2027-08-07 | 2027-08-19 |  |  |
| TIE-IR-R17 |  | TIE IN Existing Network For Irrigation Network | 12d | 2027-08-07 | 2027-08-19 | MS-CF-IR | -203d |
|  | 18 | **Meduim Voltage Network** |  | 2027-06-26 | 2027-07-15 |  |  |
| TIE-R17-MV |  | TIE IN Existing Network For Medium Voltage Network | 18d | 2027-06-26 | 2027-07-15 | MS-CF-MV | -176d |
|  | 2 | **Street Lighting Network** |  | 2027-08-12 | 2027-09-01 |  |  |
| TIE-R17-SL |  | TIE IN Existing Network For Street Lighting Network | 18d | 2027-08-12 | 2027-09-01 | MS-CF-SL | -203d |

| ID | WBS | Task | Duration | Start | Finish | Predecessors | Complete | Total float |
| --- | --- | --- | --- | --- | --- | --- | --- | --- |
|  | 3 | **Telecom Network** |  | 2027-06-26 | 2027-07-06 |  |  |  |
| TIE-R17-TE |  | TIE IN Existing Network For Telecom Network | 10d | 2027-06-26 | 2027-07-06 | MS-CF-TE, MS-CF-MV |  | -172d |
|  | 1 | **Road 18 Local 1 ( 479 LM )** |  | 2027-06-06 | 2027-10-10 |  |  |  |
|  | 15 | **Storm Drainage Network** |  | 2027-09-16 | 2027-09-25 |  |  |  |
| TIE-SD-R18 |  | TIE IN Existing Network For Storm Drainage Network | 7d | 2027-09-16 | 2027-09-25 | MS-CF-SD |  | -232d |
|  | 16 | **Sewage Network** |  | 2027-08-28 | 2027-09-09 |  |  |  |
| TIE-SW-R18 |  | TIE IN Existing Network For Sewage Network | 12d | 2027-08-28 | 2027-09-09 | MS-CF-SW |  | -205d |
|  | 17 | **Potable Water Network** |  | 2027-09-27 | 2027-10-10 |  |  |  |
| TIE-PW-R18 |  | TIE IN Existing Network For Potable Water Network | 12d | 2027-09-27 | 2027-10-10 | MS-CF-PW |  | -245d |
|  | 1 | **Irrigation Network** |  | 2027-08-07 | 2027-08-19 |  |  |  |
| TIE-IR-R18 |  | TIE IN Existing Network For Irrigation Network | 12d | 2027-08-07 | 2027-08-19 | MS-CF-IR |  | -203d |
|  | 18 | **Meduim Voltage Network** |  | 2027-06-26 | 2027-07-15 |  |  |  |
| TIE-R18-MV10 |  | TIE IN Existing Network For Medium Voltage Network | 18d | 2027-06-26 | 2027-07-15 | MS-CF-MV |  | -176d |
|  | 2 | **Street Lighting Network** |  | 2027-08-12 | 2027-09-01 |  |  |  |
| TIE-R18-SL10 |  | TIE IN Existing Network For Street Lighting Network | 18d | 2027-08-12 | 2027-09-01 | MS-CF-SL |  | -203d |
|  | 3 | **Telecom Network** |  | 2027-06-06 | 2027-06-19 |  |  |  |
| TIE-R18-TE10 |  | TIE IN Existing Network For Telecom Network | 12d | 2027-06-06 | 2027-06-19 | MS-CF-TE |  | -157d |
|  | 2 | **Sewage Pump Stations** |  | 2026-09-01 | 2027-06-12 |  |  |  |
|  | 1 | **Sewage Pump Station ( PS 06 )** |  | 2026-09-01 | 2027-06-12 |  |  |  |
|  | 1 | **Pump Station Main Building** |  | 2026-09-01 | 2027-04-06 |  |  |  |
| CO-SW-PS7-MB-100 |  | Excavation Main Bulding | 15d | 2026-09-01 A | 2026-09-06 A | ENG-SH-SPS-A-110, ENG-MS-SPS-A-110, ENG-MT-SPS-CV-A-110, ENG-MT-SPS-MC-A-110, PRO-SPS-CV-1DL-10, CO-R14.S07-SD-130, CO-R15.S09-SD-130, CO-R16.S12-SD-130 | 100% |  |
| CO-SW-PS7-MB-110 |  | Concrete Works of Superstrucure | 30d | 2026-09-16 A | 2026-11-12 | CO-SW-PS7-MB-100, PRO-SPS-CV-DL-10 | 99% | -152d |
| CO-SW-PS7-MB-120 |  | Internal Finishes Works of Superstrucure | 30d | 2026-11-14 | 2026-12-17 | CO-SW-PS7-MB-110 |  | -152d |
| CO-SW-PS7-MB-130 |  | Internal Electrical Works | 30d | 2026-12-19 | 2027-01-21 | CO-SW-PS7-MB-120 |  | -115d |
| CO-SW-PS7-MB-140 |  | Internal Mechanical Works | 30d | 2027-01-23 | 2027-02-27 | CO-SW-PS7-MB-130 |  | -115d |
| CO-SW-PS7-MB-150 |  | Electromechanical Main Works | 30d | 2027-02-28 | 2027-04-06 | CO-SW-PS7-MB-140, PRO-SPS7-LL-SH/DL-10, PRO-SPS7-LL-MSI-10 |  | -115d |
|  | 2 | **Generator With Umbrella Tank** |  | 2026-12-19 | 2027-03-20 |  |  |  |
| CO-SW-PS7-GN-100 |  | Concrete Works of Base | 12d | 2026-12-19 | 2026-12-31 | CO-SW-PS7-MB-110, CO-SW-PS7-MB-120 |  | -152d |
| CO-SW-PS7-GN-110 |  | Install Manually Operated Fuel Pump | 21d | 2027-01-02 | 2027-01-25 | CO-SW-PS7-GN-100 |  | -152d |
| CO-SW-PS7-GN-120 |  | Install Ground Fuel Tank | 21d | 2027-01-26 | 2027-02-18 | CO-SW-PS7-GN-110 |  | -152d |
| CO-SW-PS7-GN-130 |  | Fix Steel Structure for Umbrella | 21d | 2027-02-20 | 2027-03-20 | CO-SW-PS7-GN-110, CO-SW-PS7-GN-120 |  | -152d |
|  | 5 | **Motor Control Centre Building** |  | 2026-11-14 | 2027-04-07 |  |  |  |
| CO-SW-PS7-MCC-100 |  | Excavation Main Bulding | 16d | 2026-11-14 | 2026-12-01 | CO-SW-PS7-MB-100, CO-SW-PS7-MB-110 |  | -116d |
| CO-SW-PS7-MCC-110 |  | Concrete Works of Superstrucure | 21d | 2026-12-02 | 2026-12-26 | CO-SW-PS7-MCC-100 |  | -116d |
| CO-SW-PS7-MCC-120 |  | Internal Finishes Works of Superstrucure | 21d | 2026-12-27 | 2027-01-19 | CO-SW-PS7-MCC-110 |  | -116d |
| CO-SW-PS7-MCC-130 |  | Internal Electrical Works | 21d | 2027-01-20 | 2027-02-13 | CO-SW-PS7-MCC-120 |  | -116d |
| CO-SW-PS7-MCC-140 |  | Internal Mechanical Works | 21d | 2027-02-14 | 2027-03-14 | CO-SW-PS7-MCC-130 |  | -116d |
| CO-SW-PS7-MCC-150 |  | Electromechanical Main Works | 21d | 2027-03-15 | 2027-04-07 | CO-SW-PS7-MCC-140, PRO-SPS7-LL-MSI-10 |  | -116d |
|  | 6 | **Simple Building Works** |  | 2027-03-21 | 2027-05-23 |  |  |  |
| CO-SW-PS7-SBL-100 |  | Perimeter Fencing | 23d | 2027-03-21 | 2027-04-15 | CO-SW-PS7-MCC-120, CO-SW-PS7-MB-120, CO-SW-PS7-GN-130, CO-SW-PS7-GN-120 |  | -152d |
| CO-SW-PS7-SBL-110 |  | Outside Lighting | 27d | 2027-04-17 | 2027-05-23 | CO-SW-PS7-SBL-100 |  | -150d |
| CO-SW-PS7-SBL-120 |  | Outside Duct Works | 23d | 2027-04-17 | 2027-05-12 | CO-SW-PS7-SBL-100 |  | -152d |
| CO-SW-PS7-SBL-130 |  | Rectangular Wet Wells | 27d | 2027-04-17 | 2027-05-23 | CO-SW-PS7-SBL-100 |  | -150d |
| CO-SW-PS7-SBL-140 |  | Round Wet Well Structure for basket screen | 27d | 2027-04-17 | 2027-05-23 | CO-SW-PS7-SBL-100 |  | -150d |
| CO-SW-PS7-SBL-150 |  | Motorized basket screen | 27d | 2027-04-17 | 2027-05-23 | CO-SW-PS7-SBL-100 |  | -150d |
|  | 7 | **Site Work and Service Road** |  | 2027-05-13 | 2027-06-12 |  |  |  |
| CO-SW-PS7-SWS-100 |  | Outside Strom Drainage System | 6d | 2027-05-13 | 2027-05-25 | CO-SW-PS7-SBL-120 |  | -152d |
| CO-SW-PS7-SWS-110 |  | Bituminous Works | 15d | 2027-05-26 | 2027-06-12 | CO-SW-PS7-MCC-150, CO-SW-PS7-SWS-100, CO-SW-PS7-SBL-120, CO-SW-PS7-SBL-110, CO-SW-PS7-SBL-100, CO-SW-PS7-GN-130, CO-SW-PS7-GN-120, CO-SW-PS7-MB-150, CO-SW-PS7-SBL-130, CO-SW-PS7-SBL-140, CO-SW-PS7-SBL-150, PRO-SPS-CV-DL-10 FF+3d |  | -152d |
|  | 1 | **Storm Drainage Ponds** |  | 2025-05-19 | 2027-05-22 |  |  |  |
|  | 1 | **Storm Drainage Pond ( PO-J1)** |  | 2025-05-19 | 2027-04-21 |  |  |  |
| CO-SD-PO-K1-100-P1 |  | Excavation & Filling Works - PART 1 | 21d | 2025-05-19 A | 2025-06-03 A | CO-R10.S04-ES-SD-130, PRO-DPO-CV-1DL-10, ENG-SH-DPO-A-110, ENG-MS-DPO-A-110, ENG-MT-DPO-CV-A-110, CO-R11.S06-SD-130, CO-R10.S04-WE-SD-130 | 100% |  |
| CO-SD-PO-K1-100-P2 |  | Excavation & Filling Works - PART 2 | 21d | 2025-06-04 A | 2025-06-28 A | CO-SD-PO-K1-100-P1 | 100% |  |
| CO-SD-PO-K1-100-P3 |  | Excavation & Filling Works - PART 3 | 21d | 2025-07-01 A | 2025-07-15 A | CO-SD-PO-K1-100-P2, PRO-DPO-CV-DL-10 | 100% |  |
| CO-SD-PO-K1-100-P4 |  | Excavation & Filling Works - PART 4 | 21d | 2025-07-16 A | 2025-07-21 A | CO-SD-PO-K1-100-P3 | 100% |  |
| CO-SD-PO-K1-110-P1 |  | Finished Grouted Riprap - PART 1 | 21d | 2026-11-10 | 2026-12-03 | CO-SD-PO-K1-100-P1 |  | -181d |
| CO-SD-PO-K1-110-P2 |  | Finished Grouted Riprap - PART 2 | 21d | 2026-12-05 | 2026-12-28 | CO-SD-PO-K1-110-P1, CO-SD-PO-K1-100-P2 |  | -181d |
| CO-SD-PO-K1-110-P3 |  | Finished Grouted Riprap - PART 3 | 21d | 2026-12-29 | 2027-01-21 | CO-SD-PO-K1-110-P2, CO-SD-PO-K1-100-P3 |  | -181d |
| CO-SD-PO-K1-110-P4 |  | Finished Grouted Riprap - PART 4 | 21d | 2027-01-23 | 2027-02-15 | CO-SD-PO-K1-110-P3, CO-SD-PO-K1-100-P4 |  | -181d |
| CO-SD-PO-K1-120 |  | Outfall structure | 26d | 2027-02-16 | 2027-03-22 | CO-SD-PO-K1-110-P4 |  | -181d |
| CO-SD-PO-K1-130 |  | Acess Entrace Ramp | 26d | 2027-03-23 | 2027-04-21 | CO-SD-PO-K1-120, PRO-DPO-CV-DL-10 FF+3d |  | -181d |
|  | 2 | **Storm Drainage Pond ( PO-J2)** |  | 2026-11-10 | 2027-05-22 |  |  |  |
| CO-SD-PO-K2-100-P1 |  | Excavation & Filling Works - PART 1 | 21d | 2026-11-10 | 2026-12-03 | CO-SD-PO-K1-100-P1, CO-R11.S06-SD-130, PRO-DPO-CV-1DL-20, ENG-SH-DPO-A-110, ENG-MS-DPO-A-110, ENG-MT-DPO-CV-A-110 |  | -189d |
| CO-SD-PO-K2-100-P2 |  | Excavation & Filling Works - PART 2 | 21d | 2026-12-05 | 2026-12-28 | CO-SD-PO-K2-100-P1 |  | -189d |
| CO-SD-PO-K2-110-P1 |  | Finished Grouted Riprap - PART 1 | 21d | 2026-12-05 | 2026-12-28 | CO-SD-PO-K2-100-P1 |  | -189d |
| CO-SD-PO-K2-100-P3 |  | Excavation & Filling Works - PART 3 | 21d | 2026-12-29 | 2027-01-21 | CO-SD-PO-K2-100-P2, PRO-DPO-CV-DL-20 |  | -189d |
| CO-SD-PO-K2-110-P2 |  | Finished Grouted Riprap - PART 2 | 21d | 2026-12-29 | 2027-01-21 | CO-SD-PO-K2-100-P2, CO-SD-PO-K2-110-P1 |  | -189d |
| CO-SD-PO-K2-100-P4 |  | Excavation & Filling Works - PART 4 | 21d | 2027-01-23 | 2027-02-15 | CO-SD-PO-K2-100-P3 |  | -189d |
| CO-SD-PO-K2-110-P3 |  | Finished Grouted Riprap - PART 3 | 21d | 2027-01-23 | 2027-02-15 | CO-SD-PO-K2-100-P3, CO-SD-PO-K2-110-P2 |  | -189d |
| CO-SD-PO-K2-110-P4 |  | Finished Grouted Riprap - PART 4 | 21d | 2027-02-16 | 2027-03-16 | CO-SD-PO-K2-100-P4, CO-SD-PO-K2-110-P3 |  | -189d |
| CO-SD-PO-K2-120 |  | Outfall structure | 26d | 2027-03-17 | 2027-04-15 | CO-SD-PO-K2-110-P4 |  | -189d |

| ID | WBS | Task | Duration | Start | Finish | Predecessors | Complete | Total float |
| --- | --- | --- | --- | --- | --- | --- | --- | --- |
| CO-SD-PO-K2-130 |  | Acess Entrace Ramp | 26d | 2027-04-17 | 2027-05-22 | CO-SD-PO-K2-120, PRO-DPO-CV-DL-20 FF+3d |  | -189d |
|  | TC | **Testing and Comissioning** |  | 2026-06-01 | 2027-11-14 |  |  |  |
|  | INF | **Infrastructure Networks** |  | 2026-06-01 | 2027-11-14 |  |  |  |
|  | PW1 | **Irrigation Network** |  | 2026-06-05 | 2027-09-09 |  |  |  |
| T/C-IR |  | Testing and Commissioning of Irrigation Network | 12d | 2026-06-05 A | 2027-09-09 | TIE-IR-R09, TIE-IR-R10, TIE-IR-R11, TIE-IR-R14, TIE-IR-R15, TIE-IR-R16, TIE-IR-R17, TIE-IR-R18 | 50% | -203d |
|  | PW | **Potable Water Network** |  | 2026-07-01 | 2027-10-30 |  |  |  |
| T/C-PW |  | Testing and Commissioning of Potable Water Network | 12d | 2026-07-01 A | 2027-10-30 | TIE-PW-R09, TIE-PW-R10, TIE-PW-R11, TIE-PW-R14, TIE-PW-R15, TIE-PW-R16, TIE-PW-R17, TIE-PW-R18 | 80% | -245d |
|  | SW | **Sewage Network** |  | 2026-06-01 | 2027-09-12 |  |  |  |
| T/C-SW |  | Testing and Commissioning of Sewage Network | 12d | 2026-06-01 A | 2027-09-12 | TIE-SW-R09, TIE-SW-R10, TIE-SW-R11, TIE-SW-R14, TIE-SW-R15, TIE-SW-R16, TIE-SW-R17, T/C-SPS FF, TIE-SW-R18 | 85% | -205d |
|  | SD | **Storm Drainage Network** |  | 2026-06-10 | 2027-10-14 |  |  |  |
| T/C-SD |  | Testing and Commissioning of Storm Drainage Network | 10d | 2026-06-10 A | 2027-10-14 | TIE-SD-R09, TIE-SD-R10, TIE-SD-R11, TIE-SD-R14, TIE-SD-R15, TIE-SD-R16, TIE-SD-R17, T/C-DPO FF, TIE-SD-R18 | 88% | -232d |
|  | SL | **Street Lighting Network** |  | 2026-09-05 | 2027-09-09 |  |  |  |
| T/C-SL |  | Testing and Commissioning of Street Lighting Network | 18d | 2026-09-05 A | 2027-09-09 | TIE-R09-SL, TIE-R10-SL, TIE-R11-SL, TIE-R14-SL, TIE-R15-SL, TIE-R16-SL, TIE-R17-SL, TIE-R18-SL10 | 32% | -203d |
|  | TE | **Telecom Network** |  | 2026-09-05 | 2027-07-11 |  |  |  |
| T/C-TE |  | Testing and Commissioning of Telecom Network | 10d | 2026-09-05 A | 2027-07-11 | TIE-R09-TE, TIE-R10-TE, TIE-R11-TE, TIE-R14-TE, TIE-R15-TE, TIE-R16-TE, TIE-R17-TE, T/C-DPO, TIE-R18-TE10 | 32% | -172d |
|  | MV | **Medium Voltage Network** |  | 2026-09-05 | 2027-07-20 |  |  |  |
| T/C-MV |  | Testing and Commissioning of Medium Voltage Network | 10d | 2026-09-05 A | 2027-07-20 | TIE-R09-MV, TIE-R10-MV, TIE-R11-MV, TIE-R14-MV, TIE-R15-MV, TIE-R16-MV, TIE-R17-MV, T/C-TE, TIE-R18-MV10 | 80% | -176d |
|  | RD | **Road Works** |  | 2026-08-16 | 2027-11-14 |  |  |  |
| T/C-RD |  | Testing and Commissioning of Road Works | 5d | 2026-08-16 A | 2027-11-14 | TIE-R10-RD, TIE-R11-RD, TIE-R14-RD, T/C-MV | 55% | -258d |
|  | 1 | **Independent Works** |  | 2027-05-23 | 2027-07-26 |  |  |  |
| T/C-DPO |  | Testing and Commissioning of Storm Drainage Ponds | 30d | 2027-05-23 | 2027-06-26 | CO-SD-PO-K1-130, CO-SD-PO-K2-130 |  | -164d |
| T/C-SPS |  | Testing and Commissioning of Sewage Pump Stations | 26d | 2027-06-27 | 2027-07-26 | CO-SW-PS7-SWS-110, T/C-DPO |  | -164d |
|  | 1 | **Handing over and close out** |  | 2027-06-13 | 2027-11-20 |  |  |  |
|  | 2 | **As-Built** |  | 2027-06-13 | 2027-11-02 |  |  |  |
| HO-210 |  | Submission As-Built Drawing For Pump station | 12d | 2027-06-13 | 2027-06-26 | MS-MO-10 |  | -140d |
| HO-180 |  | Submission As-Built Drawing For Irrigation Network | 12d | 2027-08-07 | 2027-08-19 | MS-CF-IR |  | -199d |
| HO-150 |  | Submission As-Built Drawing For Street Lighting Network | 12d | 2027-08-12 | 2027-08-25 | MS-CF-SL |  | -192d |
| HO-130 |  | Submission As-Built Drawing For Pond | 12d | 2027-08-21 | 2027-09-02 | MS-MO-20, HO-180 |  | -199d |
| HO-160 |  | Submission As-Built Drawing For Telecom Network | 12d | 2027-08-21 | 2027-09-02 | MS-CF-TE, HO-180 |  | -199d |
| HO-170 |  | Submission As-Built Drawing For Medium Voltage Network | 12d | 2027-08-21 | 2027-09-02 | MS-CF-MV, HO-180 |  | -199d |
| HO-200 |  | Submission As-Built Drawing For Storm Network | 12d | 2027-09-16 | 2027-09-30 | MS-CF-SD |  | -222d |
| HO-190 |  | As-Built Drawing For Potable Water Network | 12d | 2027-09-27 | 2027-10-10 | MS-CF-PW |  | -230d |
| HO-100 |  | Submission As-Built Drawing For Sewage Network | 7d | 2027-10-26 | 2027-11-02 | MS-CF-IR, MS-CF-SL, MS-CF-TE, MS-CF-RD, MS-CF-MV, MS-CF-SD, MS-CF-SW, MS-CF-PW, MS-MO-10, MS-MO-20, MS-MO-30 |  | -245d |
| HO-140 |  | Submission As-Built Drawing For Roads Network | 5d | 2027-10-26 | 2027-10-31 | MS-CF-RD |  | -248d |
|  | 1 | **De-Mobilization Works** |  | 2027-11-15 | 2027-11-20 |  |  |  |
| HO-120 |  | Remove material stock & Storage area | 5d | 2027-11-15 | 2027-11-20 | HO-110 FF, HO-110 SS |  | -258d |
| HO-220 |  | Removing Portable Caravan | 5d | 2027-11-15 | 2027-11-20 | HO-110 SS, HO-110 FF |  | -258d |
| HO-230 |  | Remove Temporary Car Shades | 5d | 2027-11-15 | 2027-11-20 | HO-110 SS, HO-110 FF |  | -258d |
|  | 3 | **Handing Over** |  | 2027-11-01 | 2027-11-20 |  |  |  |
| HO-250 |  | Review B.O.Q Qty. to ensure compliance with the actual status | 5d | 2027-11-01 | 2027-11-06 | HO-260 SS |  | -248d |
| HO-260 |  | Review FIR Approval to ensure compliance with the actual status | 5d | 2027-11-01 | 2027-11-06 | MS-CF-TE, MS-CF-MV, MS-CF-IR, MS-CF-SL, MS-CF-SW, MS-CF-PW, MS-CF-SD, MS-CF-RD, HO-270 SS |  | -248d |
| HO-270 |  | Review the sample drawing to ensure compliance with the actual status | 5d | 2027-11-01 | 2027-11-06 | HO-180, HO-150, HO-190, HO-130, HO-160, HO-170, HO-200, HO-210, HO-100 FF, HO-140 |  | -248d |
| HO-240 |  | Final Walkthrough and Inspection | 2d | 2027-11-07 | 2027-11-08 | HO-250, HO-260, HO-270 |  | -248d |
| HO-110 |  | Final Testing Work | 5d | 2027-11-15 | 2027-11-20 | HO-100 FF, T/C-PW, T/C-SW, T/C-SD, T/C-SL, T/C-TE, T/C-MV, T/C-RD, T/C-SPS, T/C-DPO, T/C-IR, HO-210 FF, HO-200 FF, HO-190 FF, HO-150 FF, HO-180 FF, HO-170 FF, HO-130 FF, HO-160 FF, HO-140 FF |  | -258d |
| HO-280 |  | Punch List Completion | 2d | 2027-11-18 | 2027-11-20 | HO-250, HO-260, HO-270, HO-110 FF, HO-240 FF |  | -258d |

## Version 8 (data date 2026-11-10, saved 2026-11-10, file 03.DAM3-02-007-UPS Level 5 -10-11-2026.xer)

Last finish 2027-11-20 → 2027-10-06 (-45d). Complete tasks 1231 → 1262.

Changed:

| ID | Task | Start | Finish | Total float | Predecessors |
| --- | --- | --- | --- | --- | --- |
| MS | **Key Milestones** |  | 2027-11-20 → 2027-10-06 (-45d) |  |  |
| CM | **Contractual Milestones** |  | 2027-11-20 → 2027-10-06 (-45d) |  |  |
| MS-CF-TE | Completion of Construction Works for Telecom Network | 2027-06-05 → 2027-04-04 (-62d) | 2027-06-05 → 2027-04-04 (-62d) | -227d → -179d |  |
| MS-CF-MV | Completion of Construction Works for Medium Voltage Network | 2027-06-24 → 2027-04-17 (-68d) | 2027-06-24 → 2027-04-17 (-68d) | -196d → -142d | CO-R09.S01-MV-120, CO-R09-MV-TF-100, ENG-SH-MV-A-110, CO-R09.S01-EW-100, CO-R09.S01-EW-110, CO-R18-MV-TF-120, CO-R10.S03-ES-MV-120, CO-R10-MV-TF-140, CO-R10.S03-ES-EW-100, CO-R10.S03-ES-EW-110, CO-R11.S05-MV-120, CO-R11-MV-TF-160, CO-R11.S05-EW-100, CO-R11.S05-EW-110, CO-R11-MV-TF-180, CO-R14.S07-EW-100, CO-R14.S07-EW-110, CO-R15.S09-MV-ML-270, CO-R15-MV-TF-200, CO-R15.S09-EW-200, CO-R15.S09-EW-110, CO-R16.S11-MV-ML-300, CO-R16-MV-TF-220, CO-R16.S11-EW-100, CO-R16.S11-EW-110, CO-R17.S13-MV-ML-330, CO-R17-MV-TF-240, CO-R17.S13-EW-100, CO-R17.S13-EW-110, ENG-MS-MV-A-110, CO-R10.S03-WE-MV-120, CO-R10.S03-WE-EW-100, CO-R10.S03-WE-EW-110 → CO-R09.S01-MV-120, CO-R09-MV-TF-100, ENG-SH-MV-A-110, CO-R09.S01-EW-100, CO-R09.S01-EW-110, CO-R18-MV-TF-120, CO-R10.S03-ES-MV-120, CO-R10-MV-TF-140, CO-R10.S03-ES-EW-100, CO-R10.S03-ES-EW-110, CO-R11.S05-MV-120, CO-R11-MV-TF-160, CO-R11.S05-EW-100, CO-R11.S05-EW-110, CO-R11-MV-TF-180, CO-R14.S07-EW-100, CO-R14.S07-EW-110, CO-R15.S09-MV-ML-270, CO-R15-MV-TF-200, CO-R15.S09-EW-200, CO-R15.S09-EW-110, CO-R16.S11-MV-ML-300, CO-R16-MV-TF-220, CO-R16.S11-EW-100, CO-R16.S11-EW-110, CO-R17.S13-MV-ML-330, CO-R17-MV-TF-240, CO-R17.S13-EW-100, CO-R17.S13-EW-110, ENG-MS-MV-A-110, CO-R10.S03-WE-MV-120, CO-R10.S03-WE-EW-100, CO-R10.S03-WE-EW-110, MS-CS-MV |
| MS-CF-IR | Completion of Construction Works for Irrigation Network | 2027-08-05 → 2027-05-11 (-86d) | 2027-08-05 → 2027-05-11 (-86d) | -232d → -163d | CO-R09.S01-IR-140, CO-R09-IR-TF-100, CO-R18-IR-TF-110, CO-R10.S03-ES-IR-130, CO-R10-IR-TF-120, CO-R11.S05-IR-130, CO-R11-IR-TF-130, CO-R14.S07-IR-130, CO-R11-IR-TF-140, CO-R15.S09-IR-130, CO-R15-IR-TF-150, CO-R16.S11-IR-130, CO-R16-IR-TF-160, CO-R17.S13-IR-130, CO-R17-IR-TF-170, CO-R10.S03-WE-IR-130 → CO-R09.S01-IR-140, CO-R09-IR-TF-100, CO-R18-IR-TF-110, CO-R10.S03-ES-IR-130, CO-R10-IR-TF-120, CO-R11.S05-IR-130, CO-R11-IR-TF-130, CO-R14.S07-IR-130, CO-R11-IR-TF-140, CO-R15.S09-IR-130, CO-R15-IR-TF-150, CO-R16.S11-IR-130, CO-R16-IR-TF-160, CO-R17.S13-IR-130, CO-R17-IR-TF-170, CO-R10.S03-WE-IR-130, CO-R10.S04-ES-IR-120, CO-R10.S03-WE-IR-120, CO-R09.S01-IR-120, CO-R16.S11-IR-120, CO-R15.S09-IR-120, CO-R14.S07-IR-120, CO-R10.S03-ES-IR-120, CO-R18.S15-IR-160, CO-R17.S13-IR-120 |
| MS-CF-SW | Completion of Construction Works for Sewage Network | 2027-08-26 → 2027-06-07 (-80d) | 2027-08-26 → 2027-06-07 (-80d) | -241d → -172d | CO-R09.S01-SW-130, CO-R09-SW-TF-100, CO-R09-SW-TF-110, CO-R09-SW-TF-120, CO-R18-SW-TF-100, CO-R18-SW-TF-110, CO-R18-SW-TF-130, CO-R10-SW-TF-100, CO-R10-SW-TF-110, CO-R10-SW-TF-130, CO-R11.S05-SW-130, CO-R11-SW-TF-100, CO-R11-SW-TF-110, CO-R11-SW-TF-130, CO-R14.S07-SW-130, CO-R14-SW-TF-100, CO-R14-SW-TF-110, CO-R14-SW-TF-130, CO-R15.S09-SW-130, CO-R15-SW-TF-100, CO-R15-SW-TF-110, CO-R15-SW-TF-130, CO-R16.S11-SW-130, CO-R16-SW-TF-100, CO-R16-SW-TF-110, CO-R16-SW-TF-130, CO-R17.S13-SW-130, CO-R17-SW-TF-100, CO-R17-SW-TF-110, CO-R17-SW-TF-130, CO-R11.S06-SW-130 FF, CO-R14.S08-SW-130 FF, CO-R09.S02-SW-130 FF → CO-R09.S01-SW-130, CO-R09-SW-TF-100, CO-R09-SW-TF-110, CO-R09-SW-TF-120, CO-R18-SW-TF-100, CO-R18-SW-TF-110, CO-R18-SW-TF-130, CO-R10-SW-TF-100, CO-R10-SW-TF-110, CO-R10-SW-TF-130, CO-R11.S05-SW-130, CO-R11-SW-TF-100, CO-R11-SW-TF-110, CO-R11-SW-TF-130, CO-R14.S07-SW-130, CO-R14-SW-TF-100, CO-R14-SW-TF-110, CO-R14-SW-TF-130, CO-R15.S09-SW-130, CO-R15-SW-TF-100, CO-R15-SW-TF-110, CO-R15-SW-TF-130, CO-R16.S11-SW-130, CO-R16-SW-TF-100, CO-R16-SW-TF-110, CO-R16-SW-TF-130, CO-R17.S13-SW-130, CO-R17-SW-TF-100, CO-R17-SW-TF-110, CO-R17-SW-TF-130, CO-R11.S06-SW-130 FF, CO-R14.S08-SW-130 FF, CO-R09.S02-SW-130 FF, CO-RM-SW-440, CO-RM-SW-370 |
| MS-CF-SL | Completion of Construction Works for Street Lighting Network | 2027-08-11 → 2027-06-26 (-46d) | 2027-08-11 → 2027-06-26 (-46d) | -248d → -208d | CO-R09.S01-SL-120, CO-R09.S01-SL-130, CO-R09.S01-SL-160, CO-R09.S01-SL-180, CO-R09.S01-SL-190, CO-R09-SL-TF-100, CO-R09-SL-TF-110, CO-R09-SL-ES-100, CO-R09-SL-ES-110, CO-R18-SL-TF-120, CO-R18-SL-TF-130, CO-R10.S03-ES-SL-120, CO-R10.S03-ES-SL-130, CO-R10.S03-ES-SL-160, CO-R10.S03-ES-SL-180, CO-R10.S03-ES-SL-190, CO-R10-SL-TF-140, CO-R10-SL-TF-150, CO-R10-SL-ES-140, CO-R10-SL-ES-150, CO-R11-SL-TF-160, CO-R11-SL-TF-170, CO-R14.S07-SL-120, CO-R14.S07-SL-130, CO-R14.S07-SL-160, CO-R14.S07-SL-180, CO-R14.S07-SL-190, CO-R11-SL-TF-180, CO-R11-SL-TF-190, CO-R15-SL-TF-200, CO-R15-SL-TF-210, CO-R16-SL-TF-220, CO-R16-SL-TF-230, CO-R17-SL-TF-240, CO-R17-SL-TF-250, CO-R14.S08-SL-850 FF, CO-R09-SL-TF-380, CO-R10-SL-TF-380, CO-R11-SL-TF-380, CO-R14-SL-TF-380, CO-R15-SL-TF-380, CO-R16-SL-TF-380, CO-R17-SL-TF-380, CO-R18-SL-TF-380, CO-R15.S10-SL-130 FF, CO-R15.S10-SL-160 FF, CO-R15.S10-SL-190 FF, CO-R17.S14-SL-130 FF, CO-R17.S14-SL-160 FF, CO-R17.S14-SL-190 FF, CO-R18.S16-SL-130 FF, CO-R18.S16-SL-160 FF, CO-R18.S16-SL-190 FF, CO-R09.S02-SL-130 FF, CO-R10.S03-WE-SL-120, CO-R10.S03-WE-SL-130, CO-R10.S03-WE-SL-160, CO-R10.S03-WE-SL-180, CO-R10.S03-WE-SL-190 → CO-R09.S01-SL-120, CO-R09.S01-SL-130, CO-R09.S01-SL-160, CO-R09.S01-SL-180, CO-R09.S01-SL-190, CO-R09-SL-TF-100, CO-R09-SL-TF-110, CO-R09-SL-ES-100, CO-R09-SL-ES-110, CO-R18-SL-TF-120, CO-R18-SL-TF-130, CO-R10.S03-ES-SL-120, CO-R10.S03-ES-SL-130, CO-R10.S03-ES-SL-160, CO-R10.S03-ES-SL-180, CO-R10.S03-ES-SL-190, CO-R10-SL-TF-140, CO-R10-SL-TF-150, CO-R10-SL-ES-140, CO-R10-SL-ES-150, CO-R11-SL-TF-160, CO-R11-SL-TF-170, CO-R14.S07-SL-120, CO-R14.S07-SL-130, CO-R14.S07-SL-160, CO-R14.S07-SL-180, CO-R14.S07-SL-190, CO-R11-SL-TF-180, CO-R11-SL-TF-190, CO-R15-SL-TF-200, CO-R15-SL-TF-210, CO-R16-SL-TF-220, CO-R16-SL-TF-230, CO-R17-SL-TF-240, CO-R17-SL-TF-250, CO-R14.S08-SL-850 FF, CO-R09-SL-TF-380, CO-R10-SL-TF-380, CO-R11-SL-TF-380, CO-R14-SL-TF-380, CO-R15-SL-TF-380, CO-R16-SL-TF-380, CO-R17-SL-TF-380, CO-R18-SL-TF-380, CO-R15.S10-SL-130 FF, CO-R15.S10-SL-160 FF, CO-R15.S10-SL-190 FF, CO-R17.S14-SL-130 FF, CO-R17.S14-SL-160 FF, CO-R17.S14-SL-190 FF, CO-R18.S16-SL-130 FF, CO-R18.S16-SL-160 FF, CO-R18.S16-SL-190 FF, CO-R09.S02-SL-130 FF, CO-R10.S03-WE-SL-120, CO-R10.S03-WE-SL-130, CO-R10.S03-WE-SL-160, CO-R10.S03-WE-SL-180, CO-R10.S03-WE-SL-190, CO-R11.S06-SL-160 |
| MS-CF-SD | Completion of Construction Works for Storm Drainage Network | 2027-09-15 → 2027-06-27 (-80d) | 2027-09-15 → 2027-06-27 (-80d) | -232d → -160d | CO-R09.S01-SD-130, CO-R09.S01-SD-170, CO-R09-SD-TF-100, CO-R09-SD-TF-110, CO-R09-SD-TF-120, CO-R09-SD-TF-130, CO-R18-SD-TF-100, CO-R18-SD-TF-110, CO-R18-SD-TF-120, CO-R18-SD-TF-130, CO-R10.S03-ES-SD-130, CO-R10.S03-ES-SD-170, CO-R10-SD-TF-100, CO-R10-SD-TF-110, CO-R10-SD-TF-120, CO-R10-SD-TF-130, CO-R11.S05-SD-130, CO-R11.S05-SD-170, CO-R11-SD-TF-100, CO-R11-SD-TF-110, CO-R11-SD-TF-120, CO-R11-SD-TF-130, CO-R14.S07-SD-130, CO-R14.S07-SD-170, CO-R14-SD-TF-110, CO-R14-SD-TF-120, CO-R14-SD-TF-130, CO-R15.S09-SD-130, CO-R15.S09-SD-170, CO-R15-SD-TF-100, CO-R15-SD-TF-110, CO-R15-SD-TF-120, CO-R15-SD-TF-130, CO-R16.S11-SD-130, CO-R16.S11-SD-170, CO-R16-SD-TF-100, CO-R16-SD-TF-110, CO-R16-SD-TF-120, CO-R16-SD-TF-130, CO-R17.S13-SD-130, CO-R17.S13-SD-170, CO-R17-SD-TF-100, CO-R17-SD-TF-110, CO-R17-SD-TF-120, CO-R17-SD-TF-130, CO-R14-SD-TF-100, CO-R10.S03-WE-SD-130, CO-R10.S03-WE-SD-170 → CO-R09.S01-SD-130, CO-R09.S01-SD-170, CO-R09-SD-TF-100, CO-R09-SD-TF-110, CO-R09-SD-TF-120, CO-R09-SD-TF-130, CO-R18-SD-TF-100, CO-R18-SD-TF-110, CO-R18-SD-TF-120, CO-R18-SD-TF-130, CO-R10.S03-ES-SD-130, CO-R10.S03-ES-SD-170, CO-R10-SD-TF-100, CO-R10-SD-TF-110, CO-R10-SD-TF-120, CO-R10-SD-TF-130, CO-R11.S05-SD-130, CO-R11.S05-SD-170, CO-R11-SD-TF-100, CO-R11-SD-TF-110, CO-R11-SD-TF-120, CO-R11-SD-TF-130, CO-R14.S07-SD-130, CO-R14.S07-SD-170, CO-R14-SD-TF-110, CO-R14-SD-TF-120, CO-R14-SD-TF-130, CO-R15.S09-SD-130, CO-R15.S09-SD-170, CO-R15-SD-TF-100, CO-R15-SD-TF-110, CO-R15-SD-TF-120, CO-R15-SD-TF-130, CO-R16.S11-SD-130, CO-R16.S11-SD-170, CO-R16-SD-TF-100, CO-R16-SD-TF-110, CO-R16-SD-TF-120, CO-R16-SD-TF-130, CO-R17.S13-SD-130, CO-R17.S13-SD-170, CO-R17-SD-TF-100, CO-R17-SD-TF-110, CO-R17-SD-TF-120, CO-R17-SD-TF-130, CO-R14-SD-TF-100, CO-R10.S03-WE-SD-130, CO-R10.S03-WE-SD-170, CO-R09.S01-SD-210, PRO-R11-SD-DL-140 |
| MS-CF-PW | Completion of Construction Works for Potable Water Network | 2027-09-26 → 2027-07-31 (-57d) | 2027-09-26 → 2027-07-31 (-57d) | -257d → -209d | CO-R09-PW-TF-100, CO-R09-PW-TF-110, CO-R09-PW-TF-120, CO-R18-PW-TF-100, CO-R18-PW-TF-110, CO-R18-PW-TF-120, CO-R10.S03-ES-PW-130, CO-R10.S03-ES-PW-160, CO-R10-PW-TF-100, CO-R10-PW-TF-110, CO-R10-PW-TF-120, CO-R11-PW-TF-100, CO-R11-PW-TF-110, CO-R11-PW-TF-120, CO-R14-PW-TF-100, CO-R14-PW-TF-110, CO-R14-PW-TF-120, CO-R15-PW-TF-100, CO-R15-PW-TF-110, CO-R15-PW-TF-120, CO-R16-PW-TF-100, CO-R16-PW-TF-110, CO-R16-PW-TF-120, CO-R17-PW-TF-100, CO-R17-PW-TF-110, CO-R17-PW-TF-120, CO-R10.S03-WE-PW-130, CO-R10.S03-WE-PW-160 → CO-R09-PW-TF-100, CO-R09-PW-TF-110, CO-R09-PW-TF-120, CO-R18-PW-TF-100, CO-R18-PW-TF-110, CO-R18-PW-TF-120, CO-R10.S03-ES-PW-130, CO-R10.S03-ES-PW-160, CO-R10-PW-TF-100, CO-R10-PW-TF-110, CO-R10-PW-TF-120, CO-R11-PW-TF-100, CO-R11-PW-TF-110, CO-R11-PW-TF-120, CO-R14-PW-TF-100, CO-R14-PW-TF-110, CO-R14-PW-TF-120, CO-R15-PW-TF-100, CO-R15-PW-TF-110, CO-R15-PW-TF-120, CO-R16-PW-TF-100, CO-R16-PW-TF-110, CO-R16-PW-TF-120, CO-R17-PW-TF-100, CO-R17-PW-TF-110, CO-R17-PW-TF-120, CO-R10.S03-WE-PW-130, CO-R10.S03-WE-PW-160, CO-R17.S14-PW-210, CO-R18.S16-PW-330, CO-R11.S06-PW-210, CO-R15.S10-PW-210, CO-R10.S04-WE-PW-220, CO-R11.S06-PW-160, CO-R14.S08-PW-160, CO-R16.S12-PW-210, CO-R18.S16-PW-270, CO-R17.S14-PW-160 |
| MS-CF-RD | Completion of Construction Works for Road Works | 2027-10-25 → 2027-09-21 (-34d) | 2027-10-25 → 2027-09-21 (-34d) | -258d → -219.5d | CO-R09-S1-RD-F-150 FF, CO-R09-S2-RD-F-170 FF, CO-R18-S15-RD-F-130 FF, CO-R18-S16-RD-F-160 FF, CO-R10-S03-RD-F-100 FF, CO-R10-S04-RD-F-130 FF, CO-R11-S05-RD-F-100 FF, CO-R11-S06-RD-F-130 FF, CO-R11-S07-RD-F-100 FF, CO-R11-S08-RD-F-130 FF, CO-R15-S09-RD-F-100 FF, CO-R15-S10-RD-F-130 FF, CO-R16-S11-RD-F-100 FF, CO-R16-S12-RD-F-130 FF, CO-R17-S13-RD-F-100 FF, CO-R17-S14-RD-F-130 FF, CO-R09-S1-RD-F-140 FF, CO-R09-S2-RD-F-160 FF, CO-R18-S15-RD-F-120 FF, CO-R18-S16-RD-F-140 FF, CO-R10-S03-RD-F-160 FF, CO-R10-S04-RD-F-170 FF, CO-R11-S05-RD-F-160 FF, CO-R11-S06-RD-F-170 FF, CO-R11-S07-RD-F-160 FF, CO-R11-S08-RD-F-170 FF, CO-R15-S09-RD-F-160 FF, CO-R15-S10-RD-F-170 FF, CO-R16-S11-RD-F-160 FF, CO-R16-S12-RD-F-170 FF, CO-R17-S13-RD-F-160 FF, CO-R17-S14-RD-F-170 FF, CO-R18.S15-RD-P-150 FF, CO-R18.S16-RD-P-150 FF → CO-R09-S1-RD-F-150 FF, CO-R09-S2-RD-F-170 FF, CO-R18-S15-RD-F-130 FF, CO-R18-S16-RD-F-160 FF, CO-R10-S03-RD-F-100 FF, CO-R10-S04-RD-F-130 FF, CO-R11-S05-RD-F-100 FF, CO-R11-S06-RD-F-130 FF, CO-R11-S07-RD-F-100 FF, CO-R11-S08-RD-F-130 FF, CO-R15-S09-RD-F-100 FF, CO-R15-S10-RD-F-130 FF, CO-R16-S11-RD-F-100 FF, CO-R16-S12-RD-F-130 FF, CO-R17-S13-RD-F-100 FF, CO-R17-S14-RD-F-130 FF, CO-R09-S1-RD-F-140 FF, CO-R09-S2-RD-F-160 FF, CO-R18-S15-RD-F-120 FF, CO-R18-S16-RD-F-140 FF, CO-R10-S03-RD-F-160 FF, CO-R10-S04-RD-F-170 FF, CO-R11-S05-RD-F-160 FF, CO-R11-S06-RD-F-170 FF, CO-R11-S07-RD-F-160 FF, CO-R11-S08-RD-F-170 FF, CO-R15-S09-RD-F-160 FF, CO-R15-S10-RD-F-170 FF, CO-R16-S11-RD-F-160 FF, CO-R16-S12-RD-F-170 FF, CO-R17-S13-RD-F-160 FF, CO-R17-S14-RD-F-170 FF, CO-R18.S15-RD-P-150 FF, CO-R18.S16-RD-P-150 FF, CO-R09.S02-RD-P-110, CO-R10.S04-WE-RD-110, CO-R10.S04-ES-RD-110, CO-R10.S03-WE-RD-110, CO-R10.S03-ES-RD-110, CO-R09.S01-RD-P-110 |
| MS-CF-PF | Project Completion Date | 2027-11-20 → 2027-10-06 (-45d) | 2027-11-20 → 2027-10-06 (-45d) | -258d → -219.5d |  |
| CM1 | **Control Milestones** |  | 2027-01-27 → 2026-12-26 (-32d) |  |  |
| MS-CS-SL | The Employer Approval NOC for Street Lighting Network |  |  |  | CO-R09.S01-SL-100 SS → MS-CF-ENG |
| MS-CS-TE | The Employer Approval NOC for Telecom Network |  |  |  | CO-R09.S01-TE-100 SS → MS-CF-ENG |
| MS-CS-MV | The Employer Approval NOC for Medium Voltage Network | 2027-01-27 → 2026-12-26 (-32d) | 2027-01-27 → 2026-12-26 (-32d) | -257d → -49d |  |
| MM | **Intermediate Milestones** |  | 2027-10-25 → 2027-09-21 (-34d) |  |  |
| MS-MO-30 | Completion of Tie In To Existing Networks | 2027-10-25 → 2027-09-21 (-34d) | 2027-10-25 → 2027-09-21 (-34d) | -245d → -216.5d |  |
| PROC | **Procurement Cycle** |  | 2027-01-31 → 2027-03-01 (+29d) |  |  |
| NLL | **Short Lead Time Items** |  | 2027-01-31 → 2027-03-01 (+29d) |  |  |
| INF | **Infrastructure Networks** |  | 2027-01-31 → 2027-03-01 (+29d) |  |  |
| RD | **Road Works** |  | 2027-01-25 → 2027-02-01 (+7d) |  |  |
| 1DL | **1st Material Delivery & Site Inspection** |  | 2026-11-09 → 2026-11-16 (+7d) |  |  |
| 3 | **Traffic Signs Boards and Roads Marking** | 2026-11-03 → 2026-11-10 (+7d) | 2026-11-09 → 2026-11-16 (+7d) |  |  |
| PRO-RD-1DL-160 | 1ST Material Delivery for Traffic Signs Boards of Road Works | 2026-11-03 → 2026-11-10 (+7d) | 2026-11-09 → 2026-11-16 (+7d) | -77d → -73d |  |
| PRO-RD-1DL-170 | 1ST Material Delivery for Road Markings of Road Works | 2026-11-03 → 2026-11-10 (+7d) | 2026-11-09 → 2026-11-16 (+7d) | -72d → -68d |  |
| DL | **Material Delivery & Site Inspection** |  | 2027-01-25 → 2027-02-01 (+7d) |  |  |
| 1 | **Road 18 Local 1 ( 479 LM )** |  | 2026-12-15 → 2026-12-22 (+7d) |  |  |
| 3 | **Traffic Signs Boards and Roads Marking** | 2026-11-10 → 2026-11-17 (+7d) | 2026-12-15 → 2026-12-22 (+7d) |  |  |
| PRO-R18-RD-DL-200 | Material Delivery & Site Inspection of Traffic Signs Boards For Road Works | 2026-11-10 → 2026-11-17 (+7d) | 2026-12-09 → 2026-12-16 (+7d) | -77d → -73d |  |
| PRO-R18-RD-DL-210 | Material Delivery & Site Inspection of Road Markings For Road Works | 2026-11-16 → 2026-11-23 (+7d) | 2026-12-15 → 2026-12-22 (+7d) | -77d → -73d | PRO-R18-RD-DL-200 SS, PRO-RD-1DL-170, PRO-R18-RD-DL-200 SS+5d → PRO-R18-RD-DL-200 S1, PRO-RD-1DL-170, PRO-R18-RD-DL-200 SS+5d |
| 9 | **Road 17 Local 1 ( 500 LM )** |  | 2026-12-21 → 2026-12-28 (+7d) |  |  |
| 3 | **Traffic Signs Boards and Roads Marking** | 2026-11-16 → 2026-11-23 (+7d) | 2026-12-21 → 2026-12-28 (+7d) |  |  |
| PRO-R17-RD-DL-140 | Material Delivery & Site Inspection of Traffic Signs Boards For Road Works | 2026-11-16 → 2026-11-23 (+7d) | 2026-12-15 → 2026-12-22 (+7d) | -77d → -73d |  |
| PRO-R17-RD-DL-150 | Material Delivery & Site Inspection of Road Markings For Road Works | 2026-11-22 → 2026-11-29 (+7d) | 2026-12-21 → 2026-12-28 (+7d) | -77d → -73d | PRO-RD-1DL-170, PRO-R17-RD-DL-140 SS, PRO-R18-RD-DL-210 SS+5d, PRO-R17-RD-DL-140 SS+5d → PRO-RD-1DL-170, PRO-R17-RD-DL-140 S1, PRO-R18-RD-DL-210 SS+5d, PRO-R17-RD-DL-140 SS+5d |
| 8 | **Road 16 Local 1 ( 527 LM )** |  | 2026-12-27 → 2027-01-03 (+7d) |  |  |
| 3 | **Traffic Signs Boards and Roads Marking** | 2026-11-22 → 2026-11-29 (+7d) | 2026-12-27 → 2027-01-03 (+7d) |  |  |
| PRO-R16-RD-DL-140 | Material Delivery & Site Inspection of Traffic Signs Boards For Road Works | 2026-11-22 → 2026-11-29 (+7d) | 2026-12-21 → 2026-12-28 (+7d) | -72d → -68d |  |
| PRO-R16-RD-DL-150 | Material Delivery & Site Inspection of Road Markings For Road Works | 2026-11-28 → 2026-12-05 (+7d) | 2026-12-27 → 2027-01-03 (+7d) | -77d → -73d |  |
| 7 | **Road 15 Local 1 ( 556 LM )** |  | 2027-01-02 → 2027-01-09 (+7d) |  |  |
| 3 | **Traffic Signs Boards and Roads Marking** | 2026-11-28 → 2026-12-05 (+7d) | 2027-01-02 → 2027-01-09 (+7d) |  |  |
| PRO-R15-RD-DL-140 | Material Delivery & Site Inspection of Traffic Signs Boards For Road Works | 2026-11-28 → 2026-12-05 (+7d) | 2026-12-27 → 2027-01-03 (+7d) | -72d → -68d |  |
| PRO-R15-RD-DL-150 | Material Delivery & Site Inspection of Road Markings For Road Works | 2026-12-03 → 2026-12-10 (+7d) | 2027-01-02 → 2027-01-09 (+7d) | -77d → -73d |  |
| 4 | **Road 10 Local 2 ( 2352 LM )** |  | 2027-01-07 → 2027-01-14 (+7d) |  |  |
| 4 | **Bituminous Construction** | 2026-11-03 → 2026-11-10 (+7d) | 2026-12-02 → 2026-12-09 (+7d) |  |  |
| PRO-R10-RD-DL-160 | Material Delivery & Site Inspection for Prime Coat of Road Works | 2026-11-03 → 2026-11-10 (+7d) | 2026-12-02 → 2026-12-09 (+7d) | -76d → -52d |  |
| PRO-R10-RD-DL-170 | Material Delivery & Site Inspection for Bituminous Base & Wearing Courses of Road Works | 2026-11-03 → 2026-11-10 (+7d) | 2026-12-02 → 2026-12-09 (+7d) | -67d → -49d |  |
| 3 | **Traffic Signs Boards and Roads Marking** | 2026-12-03 → 2026-12-10 (+7d) | 2027-01-07 → 2027-01-14 (+7d) |  |  |
| PRO-R10-RD-DL-140 | Material Delivery & Site Inspection of Traffic Signs Boards For Road Works | 2026-12-03 → 2026-12-10 (+7d) | 2027-01-02 → 2027-01-09 (+7d) | -72d → -68d |  |
| PRO-R10-RD-DL-150 | Material Delivery & Site Inspection of Road Markings For Road Works | 2026-12-09 → 2026-12-16 (+7d) | 2027-01-07 → 2027-01-14 (+7d) | -77d → -73d |  |
| 6 | **Road 14 Local 1 ( 584 LM )** |  | 2027-01-13 → 2027-01-20 (+7d) |  |  |
| PRO-R14-RD-DL-160 | Material Delivery & Site Inspection for Prime Coat of Road Works |  |  |  | PRO-RD-1DL-120, PRO-R10-RD-DL-160 → PRO-RD-1DL-120 |
| PRO-R14-RD-DL-170 | Material Delivery & Site Inspection for Bituminous Base & Wearing Courses of Road Works |  |  |  | PRO-RD-1DL-130, PRO-R14-RD-DL-120, PRO-R10-RD-DL-170 → PRO-RD-1DL-130, PRO-R14-RD-DL-120 |
| 3 | **Traffic Signs Boards and Roads Marking** | 2026-12-09 → 2026-12-16 (+7d) | 2027-01-13 → 2027-01-20 (+7d) |  |  |
| PRO-R14-RD-DL-140 | Material Delivery & Site Inspection of Traffic Signs Boards For Road Works | 2026-12-09 → 2026-12-16 (+7d) | 2027-01-07 → 2027-01-14 (+7d) | -72d → -68d |  |
| PRO-R14-RD-DL-150 | Material Delivery & Site Inspection of Road Markings For Road Works | 2026-12-15 → 2026-12-22 (+7d) | 2027-01-13 → 2027-01-20 (+7d) | -77d → -73d |  |
| 2 | **Road 09 Local 2 ( 2278 LM )** |  | 2027-01-19 → 2027-01-26 (+7d) |  |  |
| 4 | **Bituminous Construction** | 2026-12-03 → 2026-11-10 (-23d) | 2027-01-02 → 2026-12-09 (-24d) |  |  |
| PRO-R09-RD-DL-160 | Material Delivery & Site Inspection for Prime Coat of Road Works | 2026-12-03 → 2026-11-10 (-23d) | 2027-01-02 → 2026-12-09 (-24d) | -76d → -35d |  |
| PRO-R09-RD-DL-170 | Material Delivery & Site Inspection for Bituminous Base & Wearing Courses of Road Works | 2026-12-03 → 2026-11-10 (-23d) | 2027-01-02 → 2026-12-09 (-24d) | -67d → -37d |  |
| 3 | **Traffic Signs Boards and Roads Marking** | 2026-12-15 → 2026-12-22 (+7d) | 2027-01-19 → 2027-01-26 (+7d) |  |  |
| PRO-R09-RD-DL-140 | Material Delivery & Site Inspection of Traffic Signs Boards For Road Works | 2026-12-15 → 2026-12-22 (+7d) | 2027-01-13 → 2027-01-20 (+7d) | -72d → -68d |  |
| PRO-R09-RD-DL-150 | Material Delivery & Site Inspection of Road Markings For Road Works | 2026-12-21 → 2026-12-28 (+7d) | 2027-01-19 → 2027-01-26 (+7d) | -77d → -73d |  |
| 5 | **Road 11 Local 1 ( 670 LM )** |  | 2027-01-25 → 2027-02-01 (+7d) |  |  |
| PRO-R11-RD-DL-160 | Material Delivery & Site Inspection for Prime Coat of Road Works |  |  |  | PRO-RD-1DL-120, PRO-R09-RD-DL-160 → PRO-RD-1DL-120 |
| PRO-R11-RD-DL-170 | Material Delivery & Site Inspection for Bituminous Base & Wearing Courses of Road Works |  |  |  | PRO-RD-1DL-130, PRO-R11-RD-DL-120, PRO-R09-RD-DL-170 → PRO-RD-1DL-130, PRO-R11-RD-DL-120 |
| 3 | **Traffic Signs Boards and Roads Marking** | 2026-12-21 → 2026-12-28 (+7d) | 2027-01-25 → 2027-02-01 (+7d) |  |  |
| PRO-R11-RD-DL-140 | Material Delivery & Site Inspection of Traffic Signs Boards For Road Works | 2026-12-21 → 2026-12-28 (+7d) | 2027-01-19 → 2027-01-26 (+7d) | -72d → -68d |  |
| PRO-R11-RD-DL-150 | Material Delivery & Site Inspection of Road Markings For Road Works | 2026-12-27 → 2027-01-03 (+7d) | 2027-01-25 → 2027-02-01 (+7d) | -77d → -73d |  |
| SW | **Sewage Network** |  | 2026-12-31 → 2026-10-12 (-80d) |  |  |
| DL | **Material Delivery & Site Inspection** |  | 2026-12-31 → 2026-10-12 (-80d) |  |  |

| ID | Task | Start | Finish | Complete | Total float | Predecessors |
| --- | --- | --- | --- | --- | --- | --- |
| 9 | **Road 17 Local 1 ( 500 LM )** |  | 2026-12-02 → 2026-10-12 (-51d) |  |  |  |
| 3 | **Testing and Finishes** | 2026-11-03 → 2026-10-10 (-24d) | 2026-12-02 → 2026-10-12 (-51d) |  |  |  |
| PRO-R17-SW-DL-120 | Material Delivery & Site Inspection of Manholes Covers for Sewage Network | 2026-11-03 → 2026-10-10 A (-24d) | 2026-12-02 → 2026-10-12 A (-51d) | 0% → 100% | -102d → none |  |
| PRO-R17-SW-DL-130 | Material Delivery & Site Inspection of Membrane Insulation for Sewage Network | 2026-11-03 → 2026-10-10 A (-24d) | 2026-12-02 → 2026-10-12 A (-51d) | 0% → 100% | -99d → none |  |
| 8 | **Road 16 Local 1 ( 527 LM )** |  | 2026-12-08 → 2026-10-12 (-57d) |  |  |  |
| 3 | **Testing and Finishes** | 2026-11-09 → 2026-10-10 (-30d) | 2026-12-08 → 2026-10-12 (-57d) |  |  |  |
| PRO-R16-SW-DL-120 | Material Delivery & Site Inspection of Manholes Covers for Sewage Network | 2026-11-09 → 2026-10-10 A (-30d) | 2026-12-08 → 2026-10-12 A (-57d) | 0% → 100% | -102d → none |  |
| PRO-R16-SW-DL-130 | Material Delivery & Site Inspection of Membrane Insulation for Sewage Network | 2026-11-09 → 2026-10-10 A (-30d) | 2026-12-08 → 2026-10-12 A (-57d) | 0% → 100% | -99d → none |  |
| 7 | **Road 15 Local 1 ( 556 LM )** |  | 2026-12-14 → 2026-10-12 (-63d) |  |  |  |
| 3 | **Testing and Finishes** | 2026-11-15 → 2026-10-10 (-36d) | 2026-12-14 → 2026-10-12 (-63d) |  |  |  |
| PRO-R15-SW-DL-120 | Material Delivery & Site Inspection of Manholes Covers for Sewage Network | 2026-11-15 → 2026-10-10 A (-36d) | 2026-12-14 → 2026-10-12 A (-63d) | 0% → 100% | -102d → none |  |
| PRO-R15-SW-DL-130 | Material Delivery & Site Inspection of Membrane Insulation for Sewage Network | 2026-11-15 → 2026-10-10 A (-36d) | 2026-12-14 → 2026-10-12 A (-63d) | 0% → 100% | -99d → none |  |
| 4 | **Road 10 Local 2 ( 2352 LM )** |  | 2026-12-20 → 2026-10-12 (-69d) |  |  |  |
| 3 | **Testing and Finishes** | 2026-11-21 → 2026-10-10 (-42d) | 2026-12-20 → 2026-10-12 (-69d) |  |  |  |
| PRO-R10-SW-DL-120 | Material Delivery & Site Inspection of Manholes Covers for Sewage Network | 2026-11-21 → 2026-10-10 A (-42d) | 2026-12-20 → 2026-10-12 A (-69d) | 0% → 100% | -102d → none |  |
| PRO-R10-SW-DL-130 | Material Delivery & Site Inspection of Membrane Insulation for Sewage Network | 2026-11-21 → 2026-10-10 A (-42d) | 2026-12-20 → 2026-10-12 A (-69d) | 0% → 100% | -99d → none |  |
| 6 | **Road 14 Local 1 ( 584 LM )** |  | 2026-12-26 → 2026-10-12 (-75d) |  |  |  |
| 3 | **Testing and Finishes** | 2026-11-26 → 2026-10-10 (-47d) | 2026-12-26 → 2026-10-12 (-75d) |  |  |  |
| PRO-R14-SW-DL-120 | Material Delivery & Site Inspection of Manholes Covers for Sewage Network | 2026-11-26 → 2026-10-10 A (-47d) | 2026-12-26 → 2026-10-12 A (-75d) | 0% → 100% | -100d → none |  |
| PRO-R14-SW-DL-130 | Material Delivery & Site Inspection of Membrane Insulation for Sewage Network | 2026-11-26 → 2026-10-10 A (-47d) | 2026-12-26 → 2026-10-12 A (-75d) | 0% → 100% | -97d → none |  |
| 2 | **Road 09 Local 2 ( 2278 LM )** |  | 2026-12-16 → 2026-10-12 (-65d) |  |  |  |
| 3 | **Testing and Finishes** | 2026-11-03 → 2026-10-10 (-24d) | 2026-12-16 → 2026-10-12 (-65d) |  |  |  |
| PRO-R09-SW-DL-120 | Material Delivery & Site Inspection of Manholes Covers for Rising Main Network | 2026-11-03 → 2026-10-10 A (-24d) | 2026-12-16 → 2026-10-12 A (-65d) | 0% → 100% | -104d → none |  |
| PRO-R09-SW-DL-130 | Material Delivery & Site Inspection of Membrane Insulation for Rising Main Network | 2026-11-03 → 2026-10-10 A (-24d) | 2026-12-16 → 2026-10-12 A (-65d) | 0% → 100% | -88d → none |  |
| 5 | **Road 11 Local 1 ( 670 LM )** |  | 2026-12-31 → 2026-10-12 (-80d) |  |  |  |
| 3 | **Testing and Finishes** | 2026-12-02 → 2026-10-10 (-53d) | 2026-12-31 → 2026-10-12 (-80d) |  |  |  |
| PRO-R11-SW-DL-120 | Material Delivery & Site Inspection of Manholes Covers for Sewage Network | 2026-12-02 → 2026-10-10 A (-53d) | 2026-12-31 → 2026-10-12 A (-80d) | 0% → 100% | -100d → none |  |
| PRO-R11-SW-DL-130 | Material Delivery & Site Inspection of Membrane Insulation for Sewage Network | 2026-12-02 → 2026-10-10 A (-53d) | 2026-12-31 → 2026-10-12 A (-80d) | 0% → 100% | -97d → none |  |
| SD | **Storm Drainage Network** |  | 2027-01-25 → 2027-01-13 (-12d) |  |  |  |
| DL | **Material Delivery & Site Inspection** |  | 2027-01-25 → 2027-01-13 (-12d) |  |  |  |
| 1 | **Road 18 Local 1 ( 479 LM )** |  | 2026-12-02 → 2026-12-09 (+7d) |  |  |  |
| 3 | **Testing and Finishes** | 2026-11-03 → 2026-10-10 (-24d) | 2026-12-02 → 2026-12-09 (+7d) |  |  |  |
| PRO-R18-SD-DL-210 | Material Delivery & Site Inspection of Catch Basin Covers for Storm Drainage Network | 2026-11-03 → 2026-10-10 A (-24d) | 2026-12-02 → 2026-10-12 A (-51d) | 0% → 100% | -138d → none |  |
| PRO-R18-SD-DL-230 | Material Delivery & Site Inspection of Epoxy Insulation for Storm Drainage Network | 2026-11-03 → 2026-10-10 A (-24d) | 2026-12-02 → 2026-10-13 A (-50d) | 0% → 100% | -85d → none |  |
| PRO-R18-SD-DL-190 | Material Delivery & Site Inspection of Manholes Covers for Storm Drainage Network | 2026-11-03 → 2026-11-10 (+7d) | 2026-12-02 → 2026-12-09 (+7d) |  |  |  |
| 9 | **Road 17 Local 1 ( 500 LM )** |  | 2026-12-08 → 2026-11-15 (-23d) |  |  |  |
| 3 | **Testing and Finishes** |  | 2026-12-08 → 2026-11-15 (-23d) |  |  |  |
| PRO-R17-SD-DL-160 | Material Delivery & Site Inspection of Epoxy Insulation for Storm Drainage Network |  | 2026-11-14 → 2026-11-15 (+1d) |  | -85d → 0d | PRO-SD-1DL-160, PRO-R18-SD-DL-230 SS+5d → PRO-SD-1DL-160, PRO-R18-SD-DL-230 FF+5d |
| PRO-R17-SD-DL-140 | Material Delivery & Site Inspection of Manholes Covers for Storm Drainage Network | 2026-11-09 → 2026-10-16 A (-24d) | 2026-12-08 → 2026-10-17 A (-52d) | 0% → 100% | -139d → none |  |
| PRO-R17-SD-DL-150 | Material Delivery & Site Inspection of Catch Basin Covers for Storm Drainage Network | 2026-11-09 → 2026-10-16 A (-24d) | 2026-12-08 → 2026-10-17 A (-52d) | 0% → 100% | -138d → none |  |
| 8 | **Road 16 Local 1 ( 527 LM )** |  | 2026-12-14 → 2026-12-15 (+1d) |  |  |  |
| 3 | **Testing and Finishes** | 2026-11-09 → 2026-09-22 (-48d) | 2026-12-14 → 2026-12-15 (+1d) |  |  |  |
| PRO-R16-SD-DL-150 | Material Delivery & Site Inspection of Catch Basin Covers for Storm Drainage Network | 2026-11-15 → 2026-09-22 A (-54d) | 2026-12-14 → 2026-10-21 A (-54d) | 0% → 100% | -138d → none |  |
| PRO-R16-SD-DL-160 | Material Delivery & Site Inspection of Epoxy Insulation for Storm Drainage Network | 2026-11-09 → 2026-09-22 A (-48d) | 2026-12-08 → 2026-10-21 A (-48d) | 0% → 100% | -85d → none |  |
| PRO-R16-SD-DL-140 | Material Delivery & Site Inspection of Manholes Covers for Storm Drainage Network | 2026-11-15 → 2026-11-16 (+1d) | 2026-12-14 → 2026-12-15 (+1d) |  |  |  |
| 7 | **Road 15 Local 1 ( 556 LM )** |  | 2026-12-20 → 2026-12-21 (+1d) |  |  |  |
| 3 | **Testing and Finishes** | 2026-11-15 → 2026-09-28 (-48d) | 2026-12-20 → 2026-12-21 (+1d) |  |  |  |
| PRO-R15-SD-DL-150 | Material Delivery & Site Inspection of Catch Basin Covers for Storm Drainage Network | 2026-11-21 → 2026-09-28 A (-54d) | 2026-12-20 → 2026-10-01 A (-80d) | 0% → 100% | -138d → none |  |
| PRO-R15-SD-DL-160 | Material Delivery & Site Inspection of Epoxy Insulation for Storm Drainage Network | 2026-11-15 → 2026-09-28 A (-48d) | 2026-12-14 → 2026-10-01 A (-74d) | 0% → 100% | -85d → none |  |
| PRO-R15-SD-DL-140 | Material Delivery & Site Inspection of Manholes Covers for Storm Drainage Network | 2026-11-21 → 2026-11-22 (+1d) | 2026-12-20 → 2026-12-21 (+1d) |  |  |  |
| 4 | **Road 10 Local 2 ( 2352 LM )** |  | 2026-12-26 → 2026-12-27 (+1d) |  |  |  |
| 3 | **Testing and Finishes** |  | 2026-12-26 → 2026-12-27 (+1d) |  |  |  |
| PRO-R10-SD-DL-150 | Material Delivery & Site Inspection of Catch Basin Covers for Storm Drainage Network |  |  |  |  | PRO-SD-1DL-150, PRO-R15-SD-DL-150 → PRO-SD-1DL-150 |
| PRO-R10-SD-DL-160 | Material Delivery & Site Inspection of Epoxy Insulation for Storm Drainage Network |  |  |  |  | PRO-SD-1DL-160, PRO-R15-SD-DL-160 → PRO-SD-1DL-160 |
| PRO-R10-SD-DL-140 | Material Delivery & Site Inspection of Manholes Covers for Storm Drainage Network | 2026-11-26 → 2026-11-28 (+2d) | 2026-12-26 → 2026-12-27 (+1d) |  |  |  |
| 6 | **Road 14 Local 1 ( 584 LM )** |  | 2027-01-19 → 2027-01-02 (-17d) |  |  |  |
| 3 | **Testing and Finishes** |  | 2027-01-19 → 2027-01-02 (-17d) |  |  |  |
| PRO-R14-SD-DL-150 | Material Delivery & Site Inspection of Catch Basin Covers for Storm Drainage Network | 2026-12-21 → 2026-09-10 A (-102d) | 2027-01-19 → 2026-09-12 A (-129d) | 0% → 100% | -138d → none |  |
| PRO-R14-SD-DL-140 | Material Delivery & Site Inspection of Manholes Covers for Storm Drainage Network | 2026-12-02 → 2026-12-03 (+1d) | 2026-12-31 → 2027-01-02 (+2d) |  |  |  |
| 2 | **Road 09 Local 2 ( 2278 LM )** |  | 2027-01-25 → 2027-01-07 (-18d) |  |  |  |
| 3 | **Testing and Finishes** |  | 2027-01-25 → 2027-01-07 (-18d) |  |  |  |
| PRO-R09-SD-DL-150 | Material Delivery & Site Inspection of Catch Basin Covers for Storm Drainage Network | 2026-12-27 → 2026-10-15 A (-73d) | 2027-01-25 → 2026-10-17 A (-100d) | 0% → 100% | -138d → none |  |
| PRO-R09-SD-DL-140 | Material Delivery & Site Inspection of Manholes Covers for Storm Drainage Network | 2026-12-08 → 2026-12-09 (+1d) | 2027-01-06 → 2027-01-07 (+1d) |  |  |  |
| 5 | **Road 11 Local 1 ( 670 LM )** |  | 2027-01-12 → 2027-01-13 (+1d) |  |  |  |
| 3 | **Testing and Finishes** |  | 2027-01-12 → 2027-01-13 (+1d) |  |  |  |
| PRO-R11-SD-DL-150 | Material Delivery & Site Inspection of Catch Basin Covers for Storm Drainage Network |  |  |  |  | PRO-SD-1DL-150, PRO-R09-SD-DL-150 → PRO-SD-1DL-150 |
| PRO-R11-SD-DL-140 | Material Delivery & Site Inspection of Manholes Covers for Storm Drainage Network | 2026-12-14 → 2026-12-15 (+1d) | 2027-01-12 → 2027-01-13 (+1d) |  | -93d → -28d |  |
| PW | **Potable Water Network** |  | 2027-01-31 → 2027-01-23 (-8d) |  |  |  |
| DL | **Material Delivery & Site Inspection** |  | 2027-01-31 → 2027-01-23 (-8d) |  |  |  |
| 1 | **Road 18 Local 1 ( 479 LM )** |  | 2026-12-02 → 2026-12-09 (+7d) |  |  |  |

| ID | Task | Start | Finish | Total float | Predecessors |
| --- | --- | --- | --- | --- | --- |
| 4 | **Testing and Finishes** | 2026-11-03 → 2026-11-10 (+7d) | 2026-12-02 → 2026-12-09 (+7d) |  |  |
| PRO-R18-PW-DL-170 | Material Delivery & Site Inspection for Finishes of Potable Water Network | 2026-11-03 → 2026-11-10 (+7d) | 2026-12-02 → 2026-12-09 (+7d) | -134d → -113d |  |
| 9 | **Road 17 Local 1 ( 500 LM )** |  | 2026-12-08 → 2026-12-15 (+7d) |  |  |
| 1 | **Main Line Sections** |  | 2026-12-02 → 2026-12-09 (+7d) |  |  |
| PRO-R17-PW-DL-110 | Material Delivery & Site Inspection of Valves for Potable Water Network | 2026-11-03 → 2026-11-10 (+7d) | 2026-12-02 → 2026-12-09 (+7d) | -256d → -62d |  |
| 4 | **Testing and Finishes** | 2026-11-09 → 2026-11-16 (+7d) | 2026-12-08 → 2026-12-15 (+7d) |  |  |
| PRO-R17-PW-DL-130 | Material Delivery & Site Inspection for Finishes of Potable Water Network | 2026-11-09 → 2026-11-16 (+7d) | 2026-12-08 → 2026-12-15 (+7d) | -134d → -113d |  |
| 8 | **Road 16 Local 1 ( 527 LM )** |  | 2026-12-14 → 2026-12-21 (+7d) |  |  |
| 1 | **Main Line Sections** |  | 2026-12-08 → 2026-12-15 (+7d) |  |  |
| PRO-R16-PW-DL-110 | Material Delivery & Site Inspection of Valves for Potable Water Network | 2026-11-09 → 2026-11-16 (+7d) | 2026-12-08 → 2026-12-15 (+7d) | -256d → -62d |  |
| 4 | **Testing and Finishes** | 2026-11-15 → 2026-11-22 (+7d) | 2026-12-14 → 2026-12-21 (+7d) |  |  |
| PRO-R16-PW-DL-130 | Material Delivery & Site Inspection for Finishes of Potable Water Network | 2026-11-15 → 2026-11-22 (+7d) | 2026-12-14 → 2026-12-21 (+7d) | -134d → -113d |  |
| 7 | **Road 15 Local 1 ( 556 LM )** |  | 2026-12-20 → 2026-12-27 (+7d) |  |  |
| 1 | **Main Line Sections** |  | 2026-12-14 → 2026-12-21 (+7d) |  |  |
| PRO-R15-PW-DL-110 | Material Delivery & Site Inspection of Valves for Potable Water Network | 2026-11-15 → 2026-11-22 (+7d) | 2026-12-14 → 2026-12-21 (+7d) | -256d → -62d |  |
| 4 | **Testing and Finishes** | 2026-11-21 → 2026-11-28 (+7d) | 2026-12-20 → 2026-12-27 (+7d) |  |  |
| PRO-R15-PW-DL-130 | Material Delivery & Site Inspection for Finishes of Potable Water Network | 2026-11-21 → 2026-11-28 (+7d) | 2026-12-20 → 2026-12-27 (+7d) | -134d → -113d |  |
| 4 | **Road 10 Local 2 ( 2352 LM )** |  | 2026-12-26 → 2027-01-02 (+7d) |  |  |
| 1 | **Main Line Sections** |  | 2026-11-23 → 2026-12-27 (+34d) |  |  |
| PRO-R10-PW-DL-110 | Material Delivery & Site Inspection of Valves for Potable Water Network |  | 2026-11-23 → 2026-12-27 (+34d) | -256d → -62d | PRO-PW-1DL-110, PRO-R15-PW-DL-110 SS+5d → PRO-PW-1DL-110, PRO-R15-PW-DL-110 FF+5d |
| 4 | **Testing and Finishes** | 2026-11-26 → 2026-12-03 (+7d) | 2026-12-26 → 2027-01-02 (+7d) |  |  |
| PRO-R10-PW-DL-130 | Material Delivery & Site Inspection for Finishes of Potable Water Network | 2026-11-26 → 2026-12-03 (+7d) | 2026-12-26 → 2027-01-02 (+7d) | -134d → -113d |  |
| 3 | **Road 14 Local 1 ( 584 LM )** |  | 2026-11-21 → 2026-12-24 (+33d) |  |  |
| 1 | **Main Line Sections** |  | 2026-11-21 → 2026-12-24 (+33d) |  |  |
| PRO-R14-PW-DL-110 | Material Delivery & Site Inspection of Valves for Potable Water Network |  | 2026-11-21 → 2026-12-24 (+33d) | -204.5d → -62d |  |
| PRO-R14-PW-DL-130 | Material Delivery & Site Inspection for Finishes of Potable Water Network |  |  |  | PRO-PW-1DL-130, PRO-R10-PW-DL-130 → PRO-PW-1DL-130 |
| 2 | **Road 09 Local 2 ( 2278 LM )** |  | 2027-01-25 → 2026-12-09 (-47d) |  |  |
| PRO-R09-PW-DL-110 | Material Delivery & Site Inspection of Valves for Potable Water Network |  |  |  | PRO-PW-1DL-110, PRO-R14-PW-DL-110 → PRO-PW-1DL-110 |
| 4 | **Testing and Finishes** | 2026-12-27 → 2026-11-10 (-47d) | 2027-01-25 → 2026-12-09 (-47d) |  |  |
| PRO-R09-PW-DL-130 | Material Delivery & Site Inspection for Finishes of Potable Water Network | 2026-12-27 → 2026-11-10 (-47d) | 2027-01-25 → 2026-12-09 (-47d) | -134d → -86d |  |
| 5 | **Road 11 Local 1 ( 670 LM )** |  | 2027-01-31 → 2027-01-23 (-8d) |  |  |
| 1 | **Main Line Sections** |  | 2026-12-20 → 2027-01-23 (+34d) |  |  |
| PRO-R11-PW-DL-110 | Material Delivery & Site Inspection of Valves for Potable Water Network | 2026-11-21 → 2026-12-24 (+33d) | 2026-12-20 → 2027-01-23 (+34d) | -196d → -62d | PRO-PW-1DL-110, PRO-R09-PW-DL-110 SS+5d → PRO-PW-1DL-110, PRO-R09-PW-DL-110 SS+5d, PRO-R14-PW-DL-110 |
| 4 | **Testing and Finishes** | 2027-01-02 → 2026-11-16 (-47d) | 2027-01-31 → 2026-12-15 (-47d) |  |  |
| PRO-R11-PW-DL-130 | Material Delivery & Site Inspection for Finishes of Potable Water Network | 2027-01-02 → 2026-11-16 (-47d) | 2027-01-31 → 2026-12-15 (-47d) | -133d → -86d |  |
| IR | **Irrigation Network** |  | 2026-12-10 → 2026-12-17 (+7d) |  |  |
| 1DL | **1st Material Delivery & Site Inspection** |  | 2026-11-04 → 2026-11-11 (+7d) |  |  |
| 1 | **Main Line Pipes** |  | 2026-11-04 → 2026-11-11 (+7d) |  |  |
| PRO-IR-1DL-110 | 1ST Material Delivery for Valves of Irrigation Network |  | 2026-11-04 → 2026-11-11 (+7d) | -258d → -46d |  |
| DL | **Material Delivery & Site Inspection** |  | 2026-12-10 → 2026-12-17 (+7d) |  |  |
| 1 | **Road 18 Local 1 ( 479 LM )** |  | 2026-11-23 → 2026-11-30 (+7d) |  |  |
| 1 | **Main Line Pipes** |  | 2026-11-23 → 2026-11-30 (+7d) |  |  |
| PRO-R18-IR-DL-130 | Material Delivery & Site Inspection of Valves for Irrigation Network | 2026-11-05 → 2026-11-12 (+7d) | 2026-11-23 → 2026-11-30 (+7d) | -258d → -46d |  |
| 9 | **Road 17 Local 1 ( 500 LM )** |  | 2026-11-29 → 2026-12-06 (+7d) |  |  |
| 1 | **Main Line Pipes** |  | 2026-11-29 → 2026-12-06 (+7d) |  |  |
| PRO-R17-IR-DL-110 | Material Delivery & Site Inspection of Valves for Irrigation Network | 2026-11-11 → 2026-11-18 (+7d) | 2026-11-29 → 2026-12-06 (+7d) | -258d → -46d |  |
| 8 | **Road 16 Local 1 ( 527 LM )** |  | 2026-12-05 → 2026-12-12 (+7d) |  |  |
| 1 | **Main Line Pipes** |  | 2026-12-05 → 2026-12-12 (+7d) |  |  |
| PRO-R16-IR-DL-110 | Material Delivery & Site Inspection of Valves for Irrigation Network | 2026-11-17 → 2026-11-24 (+7d) | 2026-12-05 → 2026-12-12 (+7d) | -258d → -46d |  |
| 7 | **Road 15 Local 1 ( 556 LM )** |  | 2026-12-10 → 2026-12-17 (+7d) |  |  |
| 1 | **Main Line Pipes** |  | 2026-12-10 → 2026-12-17 (+7d) |  |  |
| PRO-R15-IR-DL-110 | Material Delivery & Site Inspection of Valves for Irrigation Network | 2026-11-23 → 2026-11-30 (+7d) | 2026-12-10 → 2026-12-17 (+7d) | -258d → -46d |  |
| PRO-R19.2-IR-DL-110 | Material Delivery & Site Inspection of Valves for Irrigation Network |  |  |  | PRO-IR-1DL-110, PRO-R15-IR-DL-110 → PRO-IR-MF-110 |
| PRO-R14-IR-DL-110 | Material Delivery & Site Inspection of Valves for Irrigation Network |  |  |  | PRO-IR-1DL-110, PRO-R19.2-IR-DL-110 → PRO-R19.2-IR-DL-110 |
| PRO-R09-IR-DL-110 | Material Delivery & Site Inspection of Valves for Irrigation Network |  |  |  | PRO-IR-1DL-110, PRO-R14-IR-DL-110 → PRO-R14-IR-DL-110 |
| PRO-R11-IR-DL-150 | Material Delivery & Site Inspection of Valves for Irrigation Network |  |  |  | PRO-IR-1DL-110, PRO-R09-IR-DL-110 → PRO-R09-IR-DL-110 |
| SL | **Street Lighting Network** |  | 2027-01-25 → 2027-03-01 (+35d) |  |  |
| 1DL | **1st Material Delivery & Site Inspection** |  | 2026-11-09 → 2026-11-16 (+7d) |  |  |
| 2 | **Lighting Poles Works** |  | 2026-11-09 → 2026-11-16 (+7d) |  |  |
| PRO-SL-1DL-140 | 1ST Material Delivery for Lighting Fixtures of Street Lighting Network | 2026-11-03 → 2026-11-10 (+7d) | 2026-11-09 → 2026-11-16 (+7d) | -197.5d → -204.5d |  |
| 4 | **Earthing System Works** | 2026-11-03 → 2026-11-10 (+7d) | 2026-11-09 → 2026-11-16 (+7d) |  |  |
| PRO-SL-1DL-150 | 1ST Material Delivery for Lighting Earthing of Street Lighting Network | 2026-11-03 → 2026-11-10 (+7d) | 2026-11-09 → 2026-11-16 (+7d) | -147d → -153d |  |
| DL | **Material Delivery & Site Inspection** |  | 2027-01-25 → 2027-03-01 (+35d) |  |  |
| 1 | **Road 18 Local 1 ( 479 LM )** |  | 2026-12-21 → 2026-12-28 (+7d) |  |  |
| 2 | **Lighting Poles Works** |  | 2026-12-09 → 2026-12-16 (+7d) |  |  |
| PRO-R18-SL-DL-220 | Material Delivery & Site Inspection of Lighting Fixtures for Street Lighting Network | 2026-11-10 → 2026-11-17 (+7d) | 2026-12-09 → 2026-12-16 (+7d) | -197.5d → -204.5d |  |
| 4 | **Termination and Testing Works** | 2026-11-16 → 2026-11-23 (+7d) | 2026-12-21 → 2026-12-28 (+7d) |  |  |
| PRO-R18-SL-DL-210 | Material Delivery & Site Inspection of Fuse Boxes for Street Lighting Network | 2026-11-16 → 2026-11-23 (+7d) | 2026-12-15 → 2026-12-22 (+7d) | -185.5d → -204.5d |  |
| PRO-R18-SL-DL-250 | Material Delivery & Site Inspection of Cable Lugs for Street Lighting Network | 2026-11-22 → 2026-11-29 (+7d) | 2026-12-21 → 2026-12-28 (+7d) | -142d → -171d |  |
| 9 | **Road 17 Local 1 ( 500 LM )** |  | 2026-12-27 → 2027-01-03 (+7d) |  |  |

| ID | Task | Start | Finish | Complete | Total float | Predecessors |
| --- | --- | --- | --- | --- | --- | --- |
| 2 | **Lighting Poles Works** |  | 2026-12-15 → 2026-12-22 (+7d) |  |  |  |
| PRO-R17-SL-DL-140 | Material Delivery & Site Inspection of Lighting Fixtures for Street Lighting Network | 2026-11-16 → 2026-11-23 (+7d) | 2026-12-15 → 2026-12-22 (+7d) |  | -197.5d → -193.5d |  |
| 4 | **Termination and Testing Works** | 2026-11-22 → 2026-11-29 (+7d) | 2026-12-27 → 2027-01-03 (+7d) |  |  |  |
| PRO-R17-SL-DL-130 | Material Delivery & Site Inspection of Fuse Boxes for Street Lighting Network | 2026-11-22 → 2026-11-29 (+7d) | 2026-12-21 → 2026-12-28 (+7d) |  | -185.5d → -204.5d |  |
| PRO-R17-SL-DL-170 | Material Delivery & Site Inspection of Cable Lugs for Street Lighting Network | 2026-11-28 → 2026-12-05 (+7d) | 2026-12-27 → 2027-01-03 (+7d) |  | -142d → -171d |  |
| 8 | **Road 16 Local 1 ( 527 LM )** |  | 2027-01-02 → 2027-01-09 (+7d) |  |  |  |
| 2 | **Lighting Poles Works** |  | 2026-12-21 → 2026-12-28 (+7d) |  |  |  |
| PRO-R16-SL-DL-140 | Material Delivery & Site Inspection of Lighting Fixtures for Street Lighting Network | 2026-11-22 → 2026-11-29 (+7d) | 2026-12-21 → 2026-12-28 (+7d) |  | -197.5d → -193.5d |  |
| 4 | **Termination and Testing Works** | 2026-11-28 → 2026-12-05 (+7d) | 2027-01-02 → 2027-01-09 (+7d) |  |  |  |
| PRO-R16-SL-DL-130 | Material Delivery & Site Inspection of Fuse Boxes for Street Lighting Network | 2026-11-28 → 2026-12-05 (+7d) | 2026-12-27 → 2027-01-03 (+7d) |  | -185.5d → -204.5d |  |
| PRO-R16-SL-DL-170 | Material Delivery & Site Inspection of Cable Lugs for Street Lighting Network | 2026-12-03 → 2026-12-10 (+7d) | 2027-01-02 → 2027-01-09 (+7d) |  | -142d → -171d |  |
| 7 | **Road 15 Local 1 ( 556 LM )** |  | 2027-01-07 → 2027-01-14 (+7d) |  |  |  |
| 2 | **Lighting Poles Works** |  | 2026-12-27 → 2027-01-03 (+7d) |  |  |  |
| PRO-R15-SL-DL-140 | Material Delivery & Site Inspection of Lighting Fixtures for Street Lighting Network | 2026-11-28 → 2026-12-05 (+7d) | 2026-12-27 → 2027-01-03 (+7d) |  | -197.5d → -193.5d |  |
| 4 | **Termination and Testing Works** | 2026-12-03 → 2026-12-10 (+7d) | 2027-01-07 → 2027-01-14 (+7d) |  |  |  |
| PRO-R15-SL-DL-130 | Material Delivery & Site Inspection of Fuse Boxes for Street Lighting Network | 2026-12-03 → 2026-12-10 (+7d) | 2027-01-02 → 2027-01-09 (+7d) |  | -185.5d → -204.5d |  |
| PRO-R15-SL-DL-170 | Material Delivery & Site Inspection of Cable Lugs for Street Lighting Network | 2026-12-09 → 2026-12-16 (+7d) | 2027-01-07 → 2027-01-14 (+7d) |  | -142d → -171d |  |
| 4 | **Road 10 Local 2 ( 2352 LM )** |  | 2027-01-02 → 2027-01-20 (+18d) |  |  |  |
| 2 | **Lighting Poles Works** |  | 2027-01-02 → 2027-01-09 (+7d) |  |  |  |
| PRO-R10-SL-DL-140 | Material Delivery & Site Inspection of Lighting Fixtures for Street Lighting Network | 2026-12-03 → 2026-12-10 (+7d) | 2027-01-02 → 2027-01-09 (+7d) |  | -197.5d → -193.5d |  |
| 3 | **Distribution Panel Board** |  | 2026-11-05 → 2026-11-12 (+7d) |  |  |  |
| PRO-R10-SL-DL-160 | Material Delivery & Site Inspection of Distrubution Panel Boards for Street Lighting Network |  | 2026-11-05 → 2026-11-12 (+7d) |  | -103d → -109d |  |
| 4 | **Termination and Testing Works** |  | 2026-12-17 → 2027-01-20 (+34d) |  |  |  |
| PRO-R10-SL-DL-130 | Material Delivery & Site Inspection of Fuse Boxes for Street Lighting Network |  | 2026-12-12 → 2027-01-14 (+33d) |  | -185.5d → -204.5d | PRO-SL-1DL-130, PRO-R15-SL-DL-130 SS+5d → PRO-SL-1DL-130, PRO-R15-SL-DL-130 FF+5d |
| PRO-R10-SL-DL-170 | Material Delivery & Site Inspection of Cable Lugs for Street Lighting Network |  | 2026-12-17 → 2027-01-20 (+34d) |  | -142d → -171d | PRO-SL-1DL-170, PRO-R15-SL-DL-170 SS+5d → PRO-SL-1DL-170, PRO-R15-SL-DL-170 FF+5d |
| 5 | **Earthing System Works** | 2026-11-10 → 2026-11-17 (+7d) | 2026-12-09 → 2026-12-16 (+7d) |  |  |  |
| PRO-R10-SL-DL-150 | Material Delivery & Site Inspection of Lighting Earthing for Street Lighting Network | 2026-11-10 → 2026-11-17 (+7d) | 2026-12-09 → 2026-12-16 (+7d) |  | -147d → -153d |  |
| 6 | **Road 14 Local 1 ( 584 LM )** |  | 2027-01-13 → 2027-02-16 (+34d) |  |  |  |
| 2 | **Lighting Poles Works** |  | 2027-01-07 → 2027-01-14 (+7d) |  |  |  |
| PRO-R14-SL-DL-140 | Material Delivery & Site Inspection of Lighting Fixtures for Street Lighting Network | 2026-12-09 → 2026-12-16 (+7d) | 2027-01-07 → 2027-01-14 (+7d) |  | -197.5d → -193.5d |  |
| 4 | **Termination and Testing Works** | 2026-12-09 → 2027-01-12 (+34d) | 2027-01-13 → 2027-02-16 (+34d) |  |  |  |
| PRO-R14-SL-DL-130 | Material Delivery & Site Inspection of Fuse Boxes for Street Lighting Network | 2026-12-09 → 2027-01-12 (+34d) | 2027-01-07 → 2027-02-10 (+34d) |  | -185.5d → -204.5d |  |
| PRO-R14-SL-DL-170 | Material Delivery & Site Inspection of Cable Lugs for Street Lighting Network | 2026-12-15 → 2027-01-18 (+34d) | 2027-01-13 → 2027-02-16 (+34d) |  | -142d → -171d |  |
| 2 | **Road 09 Local 2 ( 2278 LM )** |  | 2027-01-19 → 2027-02-23 (+35d) |  |  |  |
| 2 | **Lighting Poles Works** |  | 2027-01-13 → 2027-01-20 (+7d) |  |  |  |
| PRO-R09-SL-DL-140 | Material Delivery & Site Inspection of Lighting Fixtures for Street Lighting Network | 2026-12-15 → 2026-12-22 (+7d) | 2027-01-13 → 2027-01-20 (+7d) |  | -197.5d → -193.5d |  |
| 4 | **Termination and Testing Works** | 2026-12-15 → 2027-01-18 (+34d) | 2027-01-19 → 2027-02-23 (+35d) |  |  |  |
| PRO-R09-SL-DL-130 | Material Delivery & Site Inspection of Fuse Boxes for Street Lighting Network | 2026-12-15 → 2027-01-18 (+34d) | 2027-01-13 → 2027-02-16 (+34d) |  | -185.5d → -204.5d |  |
| PRO-R09-SL-DL-170 | Material Delivery & Site Inspection of Cable Lugs for Street Lighting Network | 2026-12-21 → 2027-01-24 (+34d) | 2027-01-19 → 2027-02-23 (+35d) |  | -142d → -171d |  |
| 5 | **Earthing System Works** | 2026-11-10 → 2026-11-17 (+7d) | 2026-12-09 → 2026-12-16 (+7d) |  |  |  |
| PRO-R09-SL-DL-150 | Material Delivery & Site Inspection of Lighting Earthing for Street Lighting Network | 2026-11-10 → 2026-11-17 (+7d) | 2026-12-09 → 2026-12-16 (+7d) |  | -143.5d → -139.5d |  |
| 5 | **Road 11 Local 1 ( 670 LM )** |  | 2027-01-25 → 2027-03-01 (+35d) |  |  |  |
| 2 | **Lighting Poles Works** |  | 2027-01-19 → 2027-01-26 (+7d) |  |  |  |
| PRO-R11-SL-DL-140 | Material Delivery & Site Inspection of Lighting Fixtures for Street Lighting Network | 2026-12-21 → 2026-12-28 (+7d) | 2027-01-19 → 2027-01-26 (+7d) |  | -102.5d → -108.5d |  |
| 4 | **Termination and Testing Works** | 2026-12-21 → 2027-01-24 (+34d) | 2027-01-25 → 2027-03-01 (+35d) |  |  |  |
| PRO-R11-SL-DL-130 | Material Delivery & Site Inspection of Fuse Boxes for Street Lighting Network | 2026-12-21 → 2027-01-24 (+34d) | 2027-01-19 → 2027-02-23 (+35d) |  | -133d → -162d |  |
| PRO-R11-SL-DL-170 | Material Delivery & Site Inspection of Cable Lugs for Street Lighting Network | 2026-12-27 → 2027-01-30 (+34d) | 2027-01-25 → 2027-03-01 (+35d) |  | -142d → -171d |  |
| 1 | **Superstructure Works** |  | 2026-11-09 → 2026-11-04 (-5d) |  |  |  |
| 4 | **Material Delivery & Site Inspection** |  | 2026-11-09 → 2026-11-04 (-5d) |  |  |  |
| TE | **Storm Drainage Ponds ( PO-J1 , PO-J2 )** |  | 2026-11-09 → 2026-11-04 (-5d) |  |  |  |
| PRO-DPO-CV-DL-10 | Material Delivery & Site Inspection for Civil Works for Storm Drainage Ponds ( PO-J1 ) |  | 2026-11-04 A | 97% → 100% | -135d → none |  |
| PRO-DPO-CV-DL-20 | Material Delivery & Site Inspection for Civil Works for Storm Drainage Ponds ( PO-J2 ) |  | 2026-11-09 → 2026-11-04 A (-5d) | 85% → 100% | -147d → none |  |
| LL | **Long Lead Time Items** |  | 2026-11-19 → 2026-11-26 (+7d) |  |  |  |
| 1 | **Superstructure Works** |  | 2026-11-19 → 2026-11-26 (+7d) |  |  |  |
| SL | **Sewage Pump Stations ( PS 06 )** |  | 2026-11-19 → 2026-11-26 (+7d) |  |  |  |
| 4 | **Material Site Inspection** |  | 2026-11-19 → 2026-11-26 (+7d) |  |  |  |
| PRO-SPS7-LL-MSI-10 | Material Site Inspection for Electromechanical Works for Sewage Pump Stations ( PS06 ) |  | 2026-11-19 → 2026-11-26 (+7d) |  | -31d → -37d |  |
| CON | **Construction Works** |  | 2027-10-25 → 2027-09-21 (-34d) |  |  |  |
| INF | **Infrastructure Networks** |  | 2027-10-25 → 2027-09-21 (-34d) |  |  |  |
| 1 | **Phase 2 Block "J"** |  | 2027-08-14 → 2027-07-05 (-40d) |  |  |  |
| SW | **Rising Main Network** |  | 2026-11-25 → 2026-11-29 (+4d) |  |  |  |
| CO-RM-SW-290 | Trench Excavation and Bedding Works for Main Lines of Rising Main Network |  |  |  |  | CO-R09.S01-SW-130, CO-R09.S02-SW-130 → CO-R09.S01-SW-130 |
| CO-RM-SW-310 | Trench Backfilling and Compaction Works for Main Lines of Rising Main Network |  |  |  |  | CO-RM-SW-300, CO-RM-SW-370, CO-RM-SW-440 FF → CO-RM-SW-300 |
| MH | **Manholes** |  | 2026-11-22 → 2026-11-09 (-13d) |  |  |  |
| CO-RM-SW-330 | Installation RC Footing Works for Main Line Manholes of Rising Main Network |  | 2026-11-07 → 2026-11-04 A (-3d) | 97% → 100% | 43d → none |  |
| CO-RM-SW-340 | Install Grp Liner Wall Works for Main Line Manholes of Rising Main Network |  | 2026-11-08 → 2026-11-04 A (-4d) | 98% → 100% | 43d → none | CO-RM-SW-330 → CO-RM-SW-330 FF |
| CO-RM-SW-350 | Pouring Grp Liner Wall Works for Main Line Manholes of Rising Main Network |  | 2026-11-10 → 2026-11-07 A (-3d) | 90% → 100% | 43d → none | CO-RM-SW-340 → CO-RM-SW-340 FF |
| CO-RM-SW-360 | Backfilling Works for Main Line Manholes of Rising Main Network |  | 2026-11-12 → 2026-11-07 A (-5d) | 80% → 100% | 43d → none | CO-RM-SW-350 → CO-RM-SW-350 FF |
| CO-RM-SW-370 | Testing Works for Main Line Manholes of Rising Main Network |  | 2026-11-22 → 2026-11-09 A (-13d) | 80% → 100% | 43d → none | CO-RM-SW-360 → CO-RM-SW-360 FF |
| VC | **Valves Chamber** |  | 2026-11-25 → 2026-11-29 (+4d) |  |  |  |

| ID | Task | Start | Finish | Complete | Total float | Predecessors |
| --- | --- | --- | --- | --- | --- | --- |
| CO-RM-SW-400 | RC Wall Works for Valve Chambers and Washout chamber of Rising Main Network |  | 2026-11-07 → 2026-11-10 (+3d) |  | 40d → -18d |  |
| CO-RM-SW-410 | RC Slab Works for Valve Chambers and Washout chamber of Rising Main Network | 2026-11-07 → 2026-11-10 (+3d) | 2026-11-14 → 2026-11-17 (+3d) |  | 40d → -18d |  |
| CO-RM-SW-420 | Insulation Works for Valve Chambers and Washout chamber of Rising Main Network | 2026-11-15 → 2026-11-18 (+3d) | 2026-11-16 → 2026-11-19 (+3d) |  | 40d → -18d |  |
| CO-RM-SW-430 | Backfilling Works for Valve Chambers and Washout chamber of Rising Main Network | 2026-11-17 → 2026-11-21 (+4d) | 2026-11-22 → 2026-11-25 (+3d) |  | 40d → -18d |  |
| CO-RM-SW-440 | Testing and Covering Works for Valve Chambers and Washout chamber of Rising Main Network | 2026-11-23 → 2026-11-26 (+3d) | 2026-11-25 → 2026-11-29 (+4d) |  | 40d → -18d |  |
| 2 | **Road 09 Local 2 ( 2278 LM )** |  | 2027-08-07 → 2027-07-05 (-33d) |  |  |  |
| SW_1 | **SW_1** |  | 2027-07-31 → 2027-06-28 (-33d) |  |  |  |
| SD | **Storm Drainage Network** |  | 2026-11-25 → 2026-11-17 (-8d) |  |  |  |
| CO-R09.S01-SD-130 | Trench Backfilling and Compaction Works for Main Lines of Storm Drainage Network-[Road 09] -[SW-1] |  |  |  |  | ENG-SH-SD-ML-A-110 FF, ENG-MS-SD-ML-A-110 FF, CO-R09.S01-SD-120, CO-R09.S01-SD-220 FF, CO-R09.S01-SD-170 FF, CO-R09.S01-SW-130, CO-R09.S02-SW-130 → ENG-SH-SD-ML-A-110 FF, ENG-MS-SD-ML-A-110 FF, CO-R09.S01-SD-120, CO-R09.S01-SD-220 FF, CO-R09.S01-SW-130 |
| MH | **Manholes** |  | 2026-11-18 → 2026-11-17 (-1d) |  |  |  |
| CO-R09.S01-SD-220 | Backfilling Works for Manholes of Storm Drainage Network-[Road 09] -[SW-1] |  |  |  |  | CO-R09.S01-SD-210 → CO-R09.S01-SD-200 |
| CO-R09.S01-SD-210 | Testing Works for Manholes of Storm Drainage Network-[Road 09] -[SW-1] |  | 2026-11-18 → 2026-11-17 (-1d) | 60% → 80% | -252d → 21d |  |
| CB | **Catch Basin Sections** |  | 2026-11-25 → 2026-11-12 (-13d) |  |  |  |
| CO-R09.S01-SD-160 | Testing Works for Catch Basins of Storm Drainage Network-[Road 09] -[SW-1] |  | 2026-11-24 → 2026-11-12 (-12d) | 90% → 95% | -252d → -153d | CO-R09.S01-SD-150, CO-R09.S01-SD-120 SS+3d, CO-R09.S01-SD-120 FF+3d, PRO-SD-1DL-120 → CO-R09.S01-SD-150 FF, CO-R09.S01-SD-120 SS+3d, CO-R09.S01-SD-120 FF+3d, PRO-SD-1DL-120 |
| CO-R09.S01-SD-140 | Trench Excavation and Bedding Works for Catch Basins of Storm Drainage Network-[Road 09] -[SW-1] |  | 2026-11-19 → 2026-11-10 (-9d) | 90% → 95% | -252d → -151d |  |
| CO-R09.S01-SD-150 | Installation and Pipes Laying Connection Works for Catch Basins of Storm Drainage Network-[Road 09] -[SW-1] |  | 2026-11-21 → 2026-11-10 (-11d) | 90% → 95% | -252d → -151d | CO-R09.S01-SD-140, PRO-SD-1DL-130 → CO-R09.S01-SD-140 FF, PRO-SD-1DL-130 |
| CO-R09.S01-SD-170 | Trench Backfilling and Compaction Works for Catch Basins of Storm Drainage Network-[Road 09] -[SW-1] |  | 2026-11-25 → 2026-11-12 (-13d) | 90% → 95% | -252d → -153d | CO-R09.S01-SD-160 → CO-R09.S01-SD-160 FF |
| IR | **Irrigation Network** |  | 2026-12-10 → 2026-11-19 (-21d) |  |  |  |
| ML | **Main Line Pipes** |  | 2026-12-10 → 2026-11-19 (-21d) |  |  |  |
| CO-R09.S01-IR-100 | Trench Excavation and Bedding Works for Main Lines of Irrigation Network-[Road 09] -[SW-1] |  |  |  |  | ENG-SH-IR-ML-A-110, CO-R09.S01-EW-110, ENG-MS-IR-ML-A-110, CO-R09.S01-SD-170 → ENG-SH-IR-ML-A-110, CO-R09.S01-EW-110, ENG-MS-IR-ML-A-110 |
| CO-R09.S01-IR-140 | Trench Backfilling and Compaction Works for Main Lines of Irrigation Network-[Road 09] -[SW-1] |  |  |  |  | CO-R09.S01-IR-120, CO-R09.S01-IR-110 → CO-R09.S01-IR-110 |
| CO-R09.S01-IR-120 | Installation Works for Main Line Valves of Irrigation Network-[Road 09] -[SW-1] | 2026-12-03 → 2026-11-12 (-21d) | 2026-12-10 → 2026-11-19 (-21d) |  | -258d → -19d |  |
| SL | **Street Lighting Network** | 2026-12-12 → 2026-11-10 (-32d) | 2027-06-19 → 2027-05-12 (-38d) |  |  |  |
| LP | **Lighting Poles Works** | 2026-12-12 → 2026-11-10 (-32d) | 2027-03-01 → 2027-01-27 (-33d) |  |  |  |
| CO-R09.S01-SL-100 | Foundation Excavation Works for Lighting Poles of Street Lighting Network-[Road 09] -[SW-1] | 2026-12-12 → 2026-11-10 (-32d) | 2026-12-22 → 2026-11-21 (-31d) |  | -258d → -219.5d |  |
| CO-R09.S01-SL-110 | Installation Works for Lighting Poles Foundation of Street Lighting Network-[Road 09] -[SW-1] | 2026-12-23 → 2026-11-22 (-31d) | 2027-01-05 → 2026-12-05 (-31d) |  | -258d → -219.5d |  |
| CO-R09.S01-SL-120 | Installation Works for Lighting Poles of Street Lighting Network-[Road 09] -[SW-1] | 2027-01-27 → 2026-12-27 (-31d) | 2027-02-08 → 2027-01-07 (-32d) |  | -256.5d → -219.5d |  |
| CO-R09.S01-SL-210 | Backfilling Works for Lighting Poles of Street Lighting Network-[Road 09] -[SW-1] | 2027-02-09 → 2027-01-09 (-31d) | 2027-02-23 → 2027-01-21 (-33d) |  | -256.5d → -219.5d |  |
| CO-R09.S01-SL-130 | Installation Works for Lighting Fixtures With Drop Wire of Street Lighting Network-[Road 09] -[SW-1] | 2027-02-15 → 2027-01-14 (-32d) | 2027-03-01 → 2027-01-27 (-33d) |  | -233.5d → -196.5d |  |
| CO-R09.S01-SL-200 | Testing Works for Lighting Poles of Street Lighting Network-[Road 09] -[SW-1] | 2027-02-24 → 2027-01-23 (-32d) | 2027-03-01 → 2027-01-27 (-33d) |  | -233.5d → -196.5d |  |
| CW | **Cabling Works** | 2026-12-23 → 2026-11-22 (-31d) | 2027-01-26 → 2026-12-26 (-31d) |  |  |  |
| CO-R09.S01-SL-140 | Trench Excavation and Bedding Works for Street Lighting Network-[Road 09] -[SW-1] | 2026-12-23 → 2026-11-22 (-31d) | 2027-01-03 → 2026-12-02 (-32d) |  | -258d → -219.5d |  |
| CO-R09.S01-SL-150 | Cable Laying Works for Street Lighting Network-[Road 09] -[SW-1] | 2027-01-04 → 2026-12-03 (-32d) | 2027-01-14 → 2026-12-14 (-31d) |  | -258d → -219.5d |  |
| CO-R09.S01-SL-160 | Trench Backfilling and Compaction Works for Street Lighting Network-[Road 09] -[SW-1] | 2027-01-16 → 2026-12-15 (-32d) | 2027-01-26 → 2026-12-26 (-31d) |  | -258d → -219.5d |  |
| DPB | **Distrubution Panel Boards** | 2027-04-29 → 2027-03-29 (-31d) | 2027-06-19 → 2027-05-12 (-38d) |  |  |  |
| CO-R09.S01-SL-170 | Foundation Excavation Works For Panel Boards of Street Lighting Network-[Road 09] -[SW-1] | 2027-04-29 → 2027-03-29 (-31d) | 2027-05-22 → 2027-04-14 (-38d) |  | -256.5d → -219.5d |  |
| CO-R09.S01-SL-180 | Installation Works for Panel Board Concrete Foundations of Street Lighting Network-[Road 09] -[SW-1] | 2027-05-23 → 2027-04-15 (-38d) | 2027-06-05 → 2027-04-28 (-38d) |  | -256.5d → -219.5d |  |
| CO-R09.S01-SL-190 | Installation Works for Lighting Panel Boards of Street Lighting Network-[Road 09] -[SW-1] | 2027-06-06 → 2027-04-29 (-38d) | 2027-06-19 → 2027-05-12 (-38d) |  | -256.5d → -219.5d |  |
| CO-R09.S01-SL-220 | A wall of concrete blocks to install the KWH meter of Street Lighting Network-[Road 09] -[SW-1] | 2027-06-06 → 2027-04-29 (-38d) | 2027-06-19 → 2027-05-12 (-38d) |  | -256.5d → -219.5d |  |
| MV | **Medium Voltage Network** |  | 2027-03-02 → 2026-12-26 (-66d) |  |  |  |
| CW | **Cabling Works** |  | 2027-03-02 → 2026-12-26 (-66d) |  |  |  |
| CO-R09.S01-MV-100 | Trench Excavation and Bedding Works for Medium Voltage Network-[Road 09] -[SW-1] |  | 2027-01-27 → 2026-12-26 (-32d) | 85% → 88% | -258d → -187d | ENG-SH-MV-A-110, CO-R09.S01-SD-170 SS+3d, CO-R09.S01-SD-170 FF+3d, CO-R09.S01-EW-110, ENG-MS-MV-A-110, CO-R09.S01-SL-160 → ENG-SH-MV-A-110, CO-R09.S01-SD-170 SS+3d, CO-R09.S01-SD-170 FF+3d, CO-R09.S01-EW-110, ENG-MS-MV-A-110, CO-R09.S01-SL-160 FF |
| CO-R09.S01-MV-110 | Cable Laying Works for Medium Voltage Network-[Road 09] -[SW-1] |  | 2027-02-13 → 2026-12-26 (-49d) | 85% → 88% | -258d → -187d | PRO-MV-1DL-100, CO-R09.S01-MV-100, MS-CS-MV, PRO-R09-MV-DL-100 FF+3d → PRO-MV-1DL-100, CO-R09.S01-MV-100 FF, PRO-R09-MV-DL-100 FF+3d |
| CO-R09.S01-MV-120 | Trench Backfilling and Compaction Works for Medium Voltage Network-[Road 09] -[SW-1] |  | 2027-03-02 → 2026-12-26 (-66d) | 85% → 88% | -258d → -187d | CO-R09.S01-MV-110 → CO-R09.S01-MV-110 FF |
| TE | **Telecom Network** | 2027-03-03 → 2027-01-21 (-41d) | 2027-04-19 → 2027-03-07 (-43d) |  |  |  |
| PD | **Ducts Works** | 2027-03-03 → 2027-01-21 (-41d) | 2027-03-20 → 2027-02-03 (-45d) |  |  |  |
| CO-R09.S01-TE-100 | Trench Excavation and Bedding Works for Ducts of Telecom Network-[Road 09] -[SW-1] | 2027-03-03 → 2027-01-21 (-41d) | 2027-03-04 → 2027-01-23 (-40d) |  | -258d → -209d |  |
| CO-R09.S01-TE-110 | Pipes Laying Works for Ducts of Telecom Network-[Road 09] -[SW-1] | 2027-03-06 → 2027-01-24 (-41d) | 2027-03-13 → 2027-01-27 (-45d) |  | -244d → -195d |  |
| CO-R09.S01-TE-120 | Pouring Plain Concrete Above Ducts of Telecom Network-[Road 09] -[SW-1] | 2027-03-14 → 2027-01-28 (-45d) | 2027-03-15 → 2027-01-30 (-44d) |  | -244d → -195d |  |
| CO-R09.S01-TE-130 | Trench Backfilling and Compaction Works for Ducts of Telecom Network-[Road 09] -[SW-1] | 2027-03-16 → 2027-01-31 (-44d) | 2027-03-20 → 2027-02-03 (-45d) |  | -244d → -195d |  |
| MH | **Manholes Works** | 2027-03-06 → 2027-01-24 (-41d) | 2027-04-19 → 2027-03-07 (-43d) |  |  |  |
| CO-R09.S01-TE-140 | Excavation Works for Manholes of Telecom Network-[Road 09] -[SW-1] | 2027-03-06 → 2027-01-24 (-41d) | 2027-03-22 → 2027-02-06 (-44d) |  | -258d → -209d |  |
| CO-R09.S01-TE-150 | Installation Works for Manholes of Telecom Network-[Road 09] -[SW-1] | 2027-03-23 → 2027-02-07 (-44d) | 2027-04-05 → 2027-02-20 (-44d) |  | -258d → -209d |  |
| CO-R09.S01-TE-160 | Backfilling Works for Manholes of Telecom Network-[Road 09] -[SW-1] | 2027-04-06 → 2027-02-21 (-44d) | 2027-04-19 → 2027-03-07 (-43d) |  | -258d → -209d |  |
| RD | **Road Works** |  | 2027-07-31 → 2027-06-28 (-33d) |  |  |  |
| RD | **Pre-Bituminous Construction** |  | 2027-05-13 → 2027-03-18 (-56d) |  |  |  |
| CO-R09.S01-RD-P-100 | Capping and Subgrade Layer for Road Works-[Road 09] -[SW-1] |  | 2027-05-05 → 2027-03-07 (-59d) | 60% → 65% | -237d → -188d | ENG-SH-RD-A-100, PRO-RD-1DL-100, CO-R09.S01-SD-130, CO-R09.S01-SW-130, CO-R09.S01-SL-160 SS+3d, CO-R09.S01-SL-160 FF+3d, ENG-MS-RD-A-10, CO-R09.S01-MV-120 SS+3d, CO-R09.S01-MV-120 FF+3d, CO-R09.S01-TE-130, CO-R09.S01-TE-160, CO-R09.S02-SW-130 → ENG-SH-RD-A-100, PRO-RD-1DL-100, CO-R09.S01-SD-130, CO-R09.S01-SW-130, CO-R09.S01-SL-160 FF+3d, ENG-MS-RD-A-10, CO-R09.S01-MV-120 SS+3d, CO-R09.S01-MV-120 FF+3d, CO-R09.S01-TE-130 FF, CO-R09.S01-TE-160 FF, CO-R09.S02-SW-130 FF |
| CO-R09.S01-RD-P-110 | Aggregate Base Course Layer for Road Works-[Road 09] -[SW-1] | 2027-04-20 → 2026-11-04 A (-167d) | 2027-05-13 → 2027-03-18 (-56d) | 0% → 10% | -208d → -65d |  |
| LS | **Pavement Works** |  | 2027-07-31 → 2027-06-28 (-33d) |  |  |  |
| CO-R09.S01-RD-P-120 | Fixing of Curbstone for Sidewalks Pavement-[Road 09] -[SW-1] |  |  |  |  | PRO-RD-1DL-150, ENG-SH-HS-A-110, ENG-MS-HS-A-10, CO-R09.S01-RD-P-110, ENG-MT-RD-A-150 → PRO-RD-1DL-150, ENG-SH-HS-A-110, ENG-MS-HS-A-10, ENG-MT-RD-A-150 |
| CO-R09.S01-RD-P-130 | Fixing of Interlock Tiles for Sidewalks Pavement-[Road 09] -[SW-1] | 2027-07-18 → 2027-06-14 (-34d) | 2027-07-31 → 2027-06-28 (-33d) |  | -258d → -219.5d |  |
| SW_2 | **SW_2** |  | 2027-08-07 → 2027-07-05 (-33d) |  |  |  |
| SW | **Sewage Network** |  | 2026-11-05 → 2026-11-10 (+5d) |  |  |  |
| ML | **Main Line Sections** |  | 2026-11-05 → 2026-11-10 (+5d) |  |  |  |
| CO-R09.S02-SW-100 | Trench Excavation and Bedding Works for Main Lines of Sewage Network-[Road 09]-[SW-2] |  | 2026-11-03 → 2026-11-10 (+7d) |  | -234d → -208d |  |
| CO-R09.S02-SW-120 | Pipes Laying Works for Main Lines of Sewage Network-[Road 09]-[SW-2] |  | 2026-11-04 → 2026-11-10 (+6d) |  | -234d → -208d | CO-R09.S02-SW-100 → CO-R09.S02-SW-100 FF |
| CO-R09.S02-SW-130 | Trench Backfilling and Compaction Works for Main Lines of Sewage Network-[Road 09]-[SW-2] |  | 2026-11-05 → 2026-11-10 (+5d) |  | -234d → -208d | CO-R09.S02-SW-120, CO-R09.S02-SW-210 FF → CO-R09.S02-SW-120 FF, CO-R09.S02-SW-210 FF |
| MH | **Manholes** |  | 2026-11-04 → 2026-11-10 (+6d) |  |  |  |
| CO-R09.S02-SW-210 | Testing Works for Main Line Manholes of Sewage Network-[Road 09]-[SW-2] | 2026-11-04 A | 2026-11-04 → 2026-11-10 (+6d) | 0% → 50% | -233d → -208d |  |
| SD | **Storm Drainage Network** |  | 2026-12-10 → 2026-11-26 (-14d) |  |  |  |

| ID | Task | Start | Finish | Complete | Total float | Predecessors |
| --- | --- | --- | --- | --- | --- | --- |
| CO-R09.S02-SD-100 | Trench Excavation and Bedding Works for Main Lines of Storm Drainage Network-[Road 09]-[SW-2] |  |  |  |  | CO-R09.S02-EW-120, CO-R09.S02-EW-110, CO-R09.S02-SW-130 SS+3d, CO-R09.S02-SW-130 FF+3d, CO-R09.S01-SD-100 → CO-R09.S02-EW-120, CO-R09.S02-EW-110, CO-R09.S02-SW-130 SS+3d, CO-R09.S01-SD-100 |
| CO-R09.S02-SD-130 | Trench Backfilling and Compaction Works for Main Lines of Storm Drainage Network-[Road 09]-[SW-2] |  |  |  |  | CO-R09.S02-SD-120, CO-R09.S02-SD-220 FF → CO-R09.S02-SD-120 |
| MH | **Manholes** |  | 2026-12-06 → 2026-11-26 (-10d) |  |  |  |
| CO-R09.S02-SD-220 | Backfilling Works for Manholes of Storm Drainage Network-[Road 09]-[SW-2] |  | 2026-12-06 → 2026-11-26 (-10d) | 90% → 95% | -232.5d → 11d | CO-R09.S02-SD-210 → CO-R09.S02-SD-210 FF |
| CO-R09.S02-SD-210 | Testing Works for Manholes of Storm Drainage Network-[Road 09]-[SW-2] |  | 2026-12-05 → 2026-11-25 (-10d) | 90% → 95% | -232.5d → 11d |  |
| CB | **Catch Basin Sections** |  | 2026-12-10 → 2026-11-26 (-14d) |  |  |  |
| CO-R09.S02-SD-140 | Trench Excavation and Bedding Works for Catch Basins of Storm Drainage Network-[Road 09]-[SW-2] |  | 2026-12-06 → 2026-11-26 (-10d) | 90% → 95% | -163d → 11d | CO-R09.S02-EW-120, CO-R09.S02-SD-220, CO-R09.S01-SD-140 → CO-R09.S02-EW-120, CO-R09.S02-SD-220 FF, CO-R09.S01-SD-140 FF |
| CO-R09.S02-SD-150 | Installation and Pipes Laying Connection Works for Catch Basins of Storm Drainage Network-[Road 09]-[SW-2] |  | 2026-12-07 → 2026-11-26 (-11d) | 90% → 95% | -99d → 11d | CO-R09.S02-SD-140, PRO-R09-SD-DL-130 FF+3d → CO-R09.S02-SD-140 FF, PRO-R09-SD-DL-130 FF+3d |
| CO-R09.S02-SD-170 | Trench Backfilling and Compaction Works for Catch Basins of Storm Drainage Network-[Road 09]-[SW-2] |  | 2026-12-10 → 2026-11-26 (-14d) | 90% → 95% | -99d → 11d | CO-R09.S02-SD-160 → CO-R09.S02-SD-160 FF |
| CO-R09.S02-SD-160 | Testing Works for Catch Basins of Storm Drainage Network-[Road 09]-[SW-2] |  | 2026-12-09 → 2026-11-26 (-13d) | 90% → 95% | -99d → 11d | CO-R09.S02-SD-150, CO-R09.S02-SD-120, PRO-R09-SD-DL-110 FF+3d → CO-R09.S02-SD-150 FF, CO-R09.S02-SD-120, PRO-R09-SD-DL-110 FF+3d |
| PW | **Potable Water Network** |  | 2026-12-24 → 2026-11-29 (-25d) |  |  |  |
| ML | **Main Line Sections** |  | 2026-12-24 → 2026-11-29 (-25d) |  |  |  |
| CO-R09.S02-PW-100 | Trench Excavation and Bedding Works for Main Lines of Potable Water Network-[Road 09]-[SW-2] |  | 2026-12-06 → 2026-11-10 (-26d) |  | -232.5d → -200.5d |  |
| CO-R09.S02-PW-110 | Pipes Laying and accessories for Main Lines of Potable Water Network-[Road 09]-[SW-2] |  | 2026-12-12 → 2026-11-15 (-27d) | 90% → 95% | -223.5d → -188.5d | CO-R09.S02-PW-100, PRO-R09-PW-DL-100 FF+3d, PRO-R09-PW-DL-110 FF+3d, MS-CS-PW SS → CO-R09.S02-PW-100 FF, PRO-R09-PW-DL-100 FF+3d, PRO-R09-PW-DL-110 FF+3d, MS-CS-PW SS |
| CO-R09.S02-PW-130 | Trench Backfilling and Compaction Works for Main Lines of Potable Water Network-[Road 09]-[SW-2] |  | 2026-12-24 → 2026-11-29 (-25d) | 90% → 95% | -232.5d → -200.5d | CO-R09.S02-PW-110, CO-R09.S02-PW-160 FF, CO-R09.S02-PW-210 FF → CO-R09.S02-PW-110 FF, CO-R09.S02-PW-160 FF, CO-R09.S02-PW-210 FF |
| VC | **Valve Chamber** | 2026-12-07 → 2026-11-11 (-26d) | 2026-12-13 → 2026-11-17 (-26d) |  |  |  |
| CO-R09.S02-PW-210 | Installation Works for Main Line Valves and Valve Chambers of Potable Water Network-[Road 09]-[SW-2] | 2026-12-07 → 2026-11-11 (-26d) | 2026-12-13 → 2026-11-17 (-26d) |  | -222.5d → -190.5d |  |
| FH | **Fire Hydrant** | 2026-12-07 → 2026-11-11 (-26d) | 2026-12-24 → 2026-11-29 (-25d) |  |  |  |
| CO-R09.S02-PW-140 | Excavation Works for Fire Hydrants of Potable Water Network-[Road 09]-[SW-2] | 2026-12-07 → 2026-11-11 (-26d) | 2026-12-12 → 2026-11-16 (-26d) |  | -232.5d → -200.5d |  |
| CO-R09.S02-PW-150 | Installation Works for Fire Hydrant of Potable Water Network-[Road 09]-[SW-2] | 2026-12-13 → 2026-11-17 (-26d) | 2026-12-19 → 2026-11-23 (-26d) |  | -232.5d → -200.5d |  |
| CO-R09.S02-PW-160 | Trench Backfilling and Compaction Works for Fire Hydrants of Potable Water Network-[Road 09]-[SW-2] | 2026-12-20 → 2026-11-24 (-26d) | 2026-12-24 → 2026-11-29 (-25d) |  | -232.5d → -200.5d |  |
| SL | **Street Lighting Network** | 2026-12-26 → 2026-11-30 (-26d) | 2027-06-30 → 2027-05-30 (-31d) |  |  |  |
| LP | **Lighting Poles Works** | 2026-12-26 → 2026-11-30 (-26d) | 2027-03-31 → 2027-02-24 (-35d) |  |  |  |
| CO-R09.S02-SL-100 | Foundation Excavation Works for Lighting Poles of Street Lighting Network-[Road 09]-[SW-2] | 2026-12-26 → 2026-11-30 (-26d) | 2027-01-04 → 2026-12-09 (-26d) |  | -232.5d → -200.5d |  |
| CO-R09.S02-SL-110 | Installation Works for Lighting Poles Foundation of Street Lighting Network-[Road 09]-[SW-2] | 2027-01-05 → 2026-12-10 (-26d) | 2027-01-14 → 2026-12-20 (-25d) |  | -232.5d → -200.5d |  |
| CO-R09.S02-SL-120 | Installation Works for Lighting Poles of Street Lighting Network-[Road 09]-[SW-2] | 2027-01-16 → 2026-12-21 (-26d) | 2027-01-25 → 2026-12-30 (-26d) |  | -232.5d → -200.5d |  |
| CO-R09.S02-SL-210 | Backfilling Works for Lighting Poles of Street Lighting Network-[Road 09]-[SW-2] | 2027-02-24 → 2027-01-23 (-32d) | 2027-03-22 → 2027-02-14 (-36d) |  | -256.5d → -219.5d |  |
| CO-R09.S02-SL-130 | Installation Works for Lighting Fixtures With Drop Wire of Street Lighting Network-[Road 09]-[SW-2] | 2027-03-13 → 2027-02-04 (-37d) | 2027-03-31 → 2027-02-24 (-35d) |  | -256.5d → -219.5d |  |
| CO-R09.S02-SL-200 | Testing Works for Lighting Poles of Street Lighting Network-[Road 09]-[SW-2] | 2027-03-23 → 2027-02-15 (-36d) | 2027-03-31 → 2027-02-24 (-35d) |  | -256.5d → -219.5d |  |
| CW | **Cabling Works** | 2027-01-26 → 2026-12-31 (-26d) | 2027-03-02 → 2027-02-03 (-27d) |  |  |  |
| CO-R09.S02-SL-140 | Trench Excavation and Bedding Works for Street Lighting Network-[Road 09]-[SW-2] | 2027-01-26 → 2026-12-31 (-26d) | 2027-02-06 → 2027-01-11 (-26d) |  | -192d → -165d |  |
| CO-R09.S02-SL-150 | Cable Laying Works for Street Lighting Network-[Road 09]-[SW-2] | 2027-02-07 → 2027-01-12 (-26d) | 2027-02-17 → 2027-01-23 (-25d) |  | -192d → -165d |  |
| CO-R09.S02-SL-160 | Trench Backfilling and Compaction Works for Street Lighting Network-[Road 09]-[SW-2] | 2027-02-18 → 2027-01-24 (-25d) | 2027-03-02 → 2027-02-03 (-27d) |  | -192d → -165d |  |
| DPB | **Distrubution Panel Boards** | 2027-04-29 → 2027-03-29 (-31d) | 2027-06-30 → 2027-05-30 (-31d) |  |  |  |
| CO-R09.S02-SL-170 | Foundation Excavation Works For Panel Boards of Street Lighting Network-[Road 09]-[SW-2] | 2027-04-29 → 2027-03-29 (-31d) | 2027-05-10 → 2027-04-08 (-32d) |  | -225.25d → -198.25d |  |
| CO-R09.S02-SL-180 | Installation Works for Panel Board Concrete Foundations of Street Lighting Network-[Road 09]-[SW-2] | 2027-05-11 → 2027-04-10 (-31d) | 2027-05-27 → 2027-04-20 (-37d) |  | -225.25d → -198.25d |  |
| CO-R09.S02-SL-190 | Installation Works for Lighting Panel Boards of Street Lighting Network-[Road 09]-[SW-2] | 2027-05-29 → 2027-04-21 (-38d) | 2027-06-08 → 2027-05-02 (-37d) |  | -225.25d → -198.25d |  |
| CO-R09.S02-SL-220 | A wall of concrete blocks to install the KWH meter of Street Lighting Network-[Road 09]-[SW-2] | 2027-06-09 → 2027-05-03 (-37d) | 2027-06-30 → 2027-05-30 (-31d) |  | -225.25d → -198.25d |  |
| TE | **Telecom Network** | 2027-03-21 → 2027-02-04 (-45d) | 2027-05-13 → 2027-04-04 (-39d) |  |  |  |
| PD | **Ducts Works** | 2027-03-21 → 2027-02-04 (-45d) | 2027-04-17 → 2027-03-04 (-44d) |  |  |  |
| CO-R09.S02-TE-100 | Trench Excavation and Bedding Works for Ducts of Telecom Network-[Road 09]-[SW-2] | 2027-03-21 → 2027-02-04 (-45d) | 2027-03-23 → 2027-02-07 (-44d) |  | -244d → -186d |  |
| CO-R09.S02-TE-110 | Pipes Laying Works for Ducts of Telecom Network-[Road 09]-[SW-2] | 2027-03-24 → 2027-02-08 (-44d) | 2027-03-31 → 2027-02-15 (-44d) |  | -235d → -186d |  |
| CO-R09.S02-TE-120 | Pouring Plain Concrete Above Ducts of Telecom Network-[Road 09]-[SW-2] | 2027-04-01 → 2027-02-16 (-44d) | 2027-04-08 → 2027-02-24 (-43d) |  | -235d → -186d |  |
| CO-R09.S02-TE-130 | Trench Backfilling and Compaction Works for Ducts of Telecom Network-[Road 09]-[SW-2] | 2027-04-10 → 2027-02-25 (-44d) | 2027-04-17 → 2027-03-04 (-44d) |  | -235d → -186d |  |
| MH | **Manholes Works** | 2027-04-20 → 2027-03-08 (-43d) | 2027-05-13 → 2027-04-04 (-39d) |  |  |  |
| CO-R09.S02-TE-140 | Excavation Works for Manholes of Telecom Network-[Road 09]-[SW-2] | 2027-04-20 → 2027-03-08 (-43d) | 2027-04-27 → 2027-03-18 (-40d) |  | -258d → -209d |  |
| CO-R09.S02-TE-150 | Installation Works for Manholes of Telecom Network-[Road 09]-[SW-2] | 2027-04-28 → 2027-03-20 (-39d) | 2027-05-05 → 2027-03-27 (-39d) |  | -258d → -209d |  |
| CO-R09.S02-TE-160 | Backfilling Works for Manholes of Telecom Network-[Road 09]-[SW-2] | 2027-05-06 → 2027-03-28 (-39d) | 2027-05-13 → 2027-04-04 (-39d) |  | -258d → -209d |  |
| RD | **Road Works** |  | 2027-08-07 → 2027-07-05 (-33d) |  |  |  |
| RD | **Pre-Bituminous Construction** |  | 2027-06-09 → 2027-04-08 (-62d) |  |  |  |
| CO-R09.S02-RD-P-100 | Capping and Subgrade Layer for Road Works-[Road 09]-[SW-2] |  | 2027-06-05 → 2027-04-04 (-62d) |  | -258d → -209d | CO-R09.S02-SD-130, CO-R09.S02-PW-130, CO-R09.S02-PW-160, CO-R09.S02-SL-160 SS+3d, CO-R09.S02-SL-160 FF+3d, PRO-R09-RD-DL-100 FF+3d, CO-R09.S02-TE-130, CO-R09.S02-TE-160 → CO-R09.S02-SD-130, CO-R09.S02-PW-130 FF, CO-R09.S02-PW-160 FF, CO-R09.S02-SL-160 FF+3d, PRO-R09-RD-DL-100 FF+3d, CO-R09.S02-TE-130 FF, CO-R09.S02-TE-160 FF |
| CO-R09.S02-RD-P-110 | Aggregate Base Course Layer for Road Works-[Road 09]-[SW-2] | 2027-05-20 → 2027-03-20 (-61d) | 2027-06-09 → 2027-04-08 (-62d) |  | -228d → -83d |  |
| LS | **Pavement Works** |  | 2027-08-07 → 2027-07-05 (-33d) |  |  |  |
| CO-R09.S02-RD-P-120 | Fixing of Curbstone for Sidewalks Pavement-[Road 09]-[SW-2] |  |  |  |  | PRO-R09-RD-DL-130 FF+3d, CO-R09.S02-RD-P-110 SS+3d, CO-R09.S02-RD-P-110 FF+3d → PRO-R09-RD-DL-130 FF+3d |
| CO-R09.S02-RD-P-130 | Fixing of Interlock Tiles for Sidewalks Pavement-[Road 09]-[SW-2] | 2027-07-18 → 2027-06-14 (-34d) | 2027-08-07 → 2027-07-05 (-33d) |  | -257d → -218.5d |  |
| 4 | **Road 10 Local 2 ( 2352 LM )** |  | 2027-07-17 → 2027-05-22 (-56d) |  |  |  |
| 1 | **SW-3** |  | 2027-07-14 → 2027-05-13 (-62d) |  |  |  |
| SW_3 | **SW_3-East** |  | 2027-07-14 → 2027-05-13 (-62d) |  |  |  |
| PW | **Potable Water Network** |  | 2026-12-14 → 2026-11-26 (-18d) |  |  |  |
| CO-R10.S03-ES-PW-110 | Pipes Laying and accessories for Main Lines of Potable Water Network-[Road 10]-[SW-3] |  |  |  |  | CO-R10.S03-ES-PW-100, PRO-R10-PW-DL-110 FF+3d → CO-R10.S03-ES-PW-100 |
| CO-R10.S03-ES-PW-130 | Trench Backfilling and Compaction Works for Main Lines of Potable Water Network-[Road 10]-[SW-3] |  |  |  |  | CO-R10.S03-ES-PW-110 SS+3d, CO-R10.S03-ES-PW-110 FF+3d, CO-R10.S03-ES-PW-220 FF, CO-R10.S03-ES-PW-160 FF → CO-R10.S03-ES-PW-110 SS+3d, CO-R10.S03-ES-PW-110 FF+3d, CO-R10.S03-ES-PW-220 FF |
| FH | **Fire Hydrant** | 2026-11-28 → 2026-11-10 (-18d) | 2026-12-14 → 2026-11-26 (-18d) |  |  |  |
| CO-R10.S03-ES-PW-140 | Excavation Works for Fire Hydrants of Potable Water Network-[Road 10]-[SW-3] | 2026-11-28 → 2026-11-10 (-18d) | 2026-12-03 → 2026-11-16 (-17d) |  | -256d → -94d |  |
| CO-R10.S03-ES-PW-150 | Installation Works for Fire Hydrant of Potable Water Network-[Road 10]-[SW-3] | 2026-12-05 → 2026-11-17 (-18d) | 2026-12-10 → 2026-11-23 (-17d) |  | -256d → -94d |  |
| CO-R10.S03-ES-PW-160 | Trench Backfilling and Compaction Works for Fire Hydrants of Potable Water Network-[Road 10]-[SW-3] | 2026-12-08 → 2026-11-21 (-17d) | 2026-12-14 → 2026-11-26 (-18d) |  | -256d → -94d |  |
| IR | **Irrigation Network** |  | 2026-12-16 → 2026-11-11 (-35d) |  |  |  |
| ML | **Main Line Pipes** |  | 2026-12-16 → 2026-11-11 (-35d) |  |  |  |
| CO-R10.S03-ES-IR-130 | Trench Backfilling and Compaction Works for Main Lines of Irrigation Network-[Road 10]-[SW-3] |  |  |  |  | CO-R10.S03-ES-IR-120, CO-R10.S03-ES-IR-110 → CO-R10.S03-ES-IR-110 |
| CO-R10.S03-ES-IR-120 | Installation Works for Main Line Valves of Irrigation Network-[Road 10]-[SW-3] | 2026-12-15 → 2026-11-10 (-35d) | 2026-12-16 → 2026-11-11 (-35d) |  | -256d → -12d |  |
| SL | **Street Lighting Network** | 2026-12-17 → 2026-11-10 (-37d) | 2027-04-20 → 2027-03-14 (-37d) |  |  |  |

| ID | Task | Start | Finish | Complete | Total float | Predecessors |
| --- | --- | --- | --- | --- | --- | --- |
| LP | **Lighting Poles Works** | 2026-12-17 → 2026-11-10 (-37d) | 2027-01-24 → 2026-12-17 (-38d) |  |  |  |
| CO-R10.S03-ES-SL-100 | Foundation Excavation Works for Lighting Poles of Street Lighting Network-[Road 10]-[SW-3] | 2026-12-17 → 2026-11-10 (-37d) | 2026-12-30 → 2026-11-23 (-37d) |  | -256d → -211.5d |  |
| CO-R10.S03-ES-SL-110 | Installation Works for Lighting Poles Foundation of Street Lighting Network-[Road 10]-[SW-3] | 2026-12-23 → 2026-11-16 (-37d) | 2027-01-05 → 2026-11-29 (-37d) |  | -256d → -211.5d |  |
| CO-R10.S03-ES-SL-120 | Installation Works for Lighting Poles of Street Lighting Network-[Road 10]-[SW-3] | 2026-12-29 → 2026-11-22 (-37d) | 2027-01-18 → 2026-12-12 (-37d) |  | -256d → -211.5d |  |
| CO-R10.S03-ES-SL-130 | Installation Works for Lighting Fixtures With Drop Wire of Street Lighting Network-[Road 10]-[SW-3] | 2027-01-04 → 2026-11-28 (-37d) | 2027-01-24 → 2026-12-17 (-38d) |  | -207d → -175d |  |
| CO-R10.S03-ES-SL-210 | Backfilling Works for Lighting Poles of Street Lighting Network-[Road 10]-[SW-3] | 2027-01-05 → 2026-11-29 (-37d) | 2027-01-18 → 2026-12-12 (-37d) |  | -253.5d → -211.5d |  |
| CO-R10.S03-ES-SL-200 | Testing Works for Lighting Poles of Street Lighting Network-[Road 10]-[SW-3] | 2027-01-19 → 2026-12-13 (-37d) | 2027-01-24 → 2026-12-17 (-38d) |  | -207d → -175d |  |
| CW | **Cabling Works** | 2027-01-19 → 2026-12-13 (-37d) | 2027-02-23 → 2027-01-16 (-38d) |  |  |  |
| CO-R10.S03-ES-SL-140 | Trench Excavation and Bedding Works for Street Lighting Network-[Road 10]-[SW-3] | 2027-01-19 → 2026-12-13 (-37d) | 2027-01-30 → 2026-12-23 (-38d) |  | -256d → -209d |  |
| CO-R10.S03-ES-SL-150 | Cable Laying Works for Street Lighting Network-[Road 10]-[SW-3] | 2027-01-31 → 2026-12-24 (-38d) | 2027-02-10 → 2027-01-04 (-37d) |  | -256d → -209d |  |
| CO-R10.S03-ES-SL-160 | Trench Backfilling and Compaction Works for Street Lighting Network-[Road 10]-[SW-3] | 2027-02-11 → 2027-01-05 (-37d) | 2027-02-23 → 2027-01-16 (-38d) |  | -256d → -209d |  |
| DPB | **Distrubution Panel Boards** | 2027-03-28 → 2027-02-14 (-42d) | 2027-04-20 → 2027-03-14 (-37d) |  |  |  |
| CO-R10.S03-ES-SL-170 | Foundation Excavation Works For Panel Boards of Street Lighting Network-[Road 10]-[SW-3] | 2027-03-28 → 2027-02-14 (-42d) | 2027-04-10 → 2027-02-28 (-41d) |  | -232d → -200d |  |
| CO-R10.S03-ES-SL-180 | Installation Works for Panel Board Concrete Foundations of Street Lighting Network-[Road 10]-[SW-3] | 2027-04-04 → 2027-02-21 (-42d) | 2027-04-17 → 2027-03-07 (-41d) |  | -232d → -200d |  |
| CO-R10.S03-ES-SL-220 | A wall of concrete blocks to install the KWH meter of Street Lighting Network-[Road 10]-[SW-3] | 2027-04-04 → 2027-02-21 (-42d) | 2027-04-17 → 2027-03-07 (-41d) |  | -229d → -197d |  |
| CO-R10.S03-ES-SL-190 | Installation Works for Lighting Panel Boards of Street Lighting Network-[Road 10]-[SW-3] | 2027-04-07 → 2027-02-25 (-41d) | 2027-04-20 → 2027-03-14 (-37d) |  | -232d → -200d |  |
| TE | **Telecom Network** | 2027-02-11 → 2027-01-05 (-37d) | 2027-03-20 → 2027-02-06 (-42d) |  |  |  |
| PD | **Ducts Works** | 2027-02-11 → 2027-01-05 (-37d) | 2027-03-20 → 2027-02-06 (-42d) |  |  |  |
| CO-R10.S03-ES-TE-100 | Trench Excavation and Bedding Works for Ducts of Telecom Network-[Road 10]-[SW-3] | 2027-02-11 → 2027-01-05 (-37d) | 2027-02-18 → 2027-01-12 (-37d) |  | -256d → -209d |  |
| CO-R10.S03-ES-TE-110 | Pipes Laying Works for Ducts of Telecom Network-[Road 10]-[SW-3] | 2027-02-20 → 2027-01-13 (-38d) | 2027-02-28 → 2027-01-20 (-39d) |  | -211d → -155d |  |
| CO-R10.S03-ES-TE-120 | Pouring Plain Concrete Above Ducts of Telecom Network-[Road 10]-[SW-3] | 2027-03-01 → 2027-01-21 (-39d) | 2027-03-08 → 2027-01-28 (-39d) |  | -211d → -155d |  |
| CO-R10.S03-ES-TE-130 | Trench Backfilling and Compaction Works for Ducts of Telecom Network-[Road 10]-[SW-3] | 2027-03-13 → 2027-01-30 (-42d) | 2027-03-20 → 2027-02-06 (-42d) |  | -211d → -155d |  |
| MH | **Manholes Works** | 2027-02-20 → 2027-01-13 (-38d) | 2027-03-20 → 2027-02-06 (-42d) |  |  |  |
| CO-R10.S03-ES-TE-140 | Excavation Works for Manholes of Telecom Network-[Road 10]-[SW-3] | 2027-02-20 → 2027-01-13 (-38d) | 2027-02-28 → 2027-01-20 (-39d) |  | -208d → -166d |  |
| CO-R10.S03-ES-TE-150 | Installation Works for Manholes of Telecom Network-[Road 10]-[SW-3] | 2027-03-01 → 2027-01-21 (-39d) | 2027-03-08 → 2027-01-28 (-39d) |  | -208d → -155d |  |
| CO-R10.S03-ES-TE-160 | Backfilling Works for Manholes of Telecom Network-[Road 10]-[SW-3] | 2027-03-13 → 2027-01-30 (-42d) | 2027-03-20 → 2027-02-06 (-42d) |  | -208d → -155d |  |
| CO-R10.S03-ES-MV-100 | Trench Excavation and Bedding Works for Medium Voltage Network-[Road 10]-[SW-3] |  |  |  |  | ENG-SH-MV-A-110, CO-R10.S03-ES-SD-170 SS+3d, CO-R10.S03-ES-SD-170 FF+3d, CO-R10.S03-ES-EW-110, CO-R10.S03-ES-TE-130 SS+3d, CO-R10.S03-ES-TE-130 FF+3d, ENG-MS-MV-A-110 → ENG-SH-MV-A-110, CO-R10.S03-ES-SD-170 SS+3d, CO-R10.S03-ES-SD-170 FF+3d, CO-R10.S03-ES-EW-110, ENG-MS-MV-A-110 |
| RD | **Road Works** |  | 2027-07-14 → 2027-05-13 (-62d) |  |  |  |
| RD | **Pre-Bituminous Construction** |  | 2027-04-13 → 2027-02-10 (-62d) |  |  |  |
| CO-R10.S03-ES-RD-100 | Capping and Subgrade Layer for Road Works-[Road 10]-[SW-3] |  | 2027-04-08 → 2027-02-06 (-61d) | 70% → 80% | -211d → -155d | ENG-SH-RD-A-100, CO-R10.S03-ES-SD-130, CO-R10.S03-ES-PW-130, CO-R10.S03-ES-PW-160, CO-R10.S03-ES-SL-160 SS+3d, CO-R10.S03-ES-SL-160 FF+3d, ENG-MS-RD-A-10, CO-R10.S03-ES-TE-130, CO-R10.S03-ES-TE-160, CO-R10.S03-ES-MV-120 SS+3d, CO-R10.S03-ES-MV-120 FF+3d → ENG-SH-RD-A-100, CO-R10.S03-ES-SD-130, CO-R10.S03-ES-PW-130, CO-R10.S03-ES-PW-160 FF, CO-R10.S03-ES-SL-160 FF+3d, ENG-MS-RD-A-10, CO-R10.S03-ES-TE-130 FF, CO-R10.S03-ES-TE-160 FF, CO-R10.S03-ES-MV-120 SS+3d, CO-R10.S03-ES-MV-120 FF+3d |
| CO-R10.S03-ES-RD-110 | Aggregate Base Course Layer for Road Works-[Road 10]-[SW-3] | 2027-03-24 → 2026-10-28 A (-147d) | 2027-04-13 → 2027-02-10 (-62d) | 0% → 40% | -187d → -38d |  |
| LS | **Pavement Works** |  | 2027-07-14 → 2027-05-13 (-62d) |  |  |  |
| CO-R10.S03-ES-RD-120 | Fixing of Curbstone for Sidewalks Pavement-[Road 10]-[SW-3] |  |  |  |  | CO-R10.S03-ES-RD-110 FF+3d, CO-R10.S03-ES-RD-110 SS+3d → CO-R10.S03-ES-PW-170 |
| CO-R10.S03-ES-RD-130 | Fixing of Interlock Tiles for Sidewalks Pavement-[Road 10]-[SW-3] | 2027-07-04 → 2027-05-03 (-62d) | 2027-07-14 → 2027-05-13 (-62d) |  | -248d → -190d |  |
| SW_31 | **SW_3-West** |  | 2027-07-14 → 2027-05-13 (-62d) |  |  |  |
| PW | **Potable Water Network** |  | 2026-12-14 → 2026-11-26 (-18d) |  |  |  |
| CO-R10.S03-WE-PW-110 | Pipes Laying and accessories for Main Lines of Potable Water Network-[Road 10]-[SW-3] |  |  |  |  | CO-R10.S03-WE-PW-100, PRO-R10-PW-DL-110 FF+3d → CO-R10.S03-WE-PW-100 |
| CO-R10.S03-WE-PW-130 | Trench Backfilling and Compaction Works for Main Lines of Potable Water Network-[Road 10]-[SW-3] |  |  |  |  | CO-R10.S03-WE-PW-110 SS+3d, CO-R10.S03-WE-PW-110 FF+3d, CO-R10.S03-WE-PW-220 FF, CO-R10.S03-WE-PW-160 FF → CO-R10.S03-WE-PW-110 SS+3d, CO-R10.S03-WE-PW-110 FF+3d, CO-R10.S03-WE-PW-220 FF |
| FH | **Fire Hydrant** | 2026-11-28 → 2026-11-10 (-18d) | 2026-12-14 → 2026-11-26 (-18d) |  |  |  |
| CO-R10.S03-WE-PW-140 | Excavation Works for Fire Hydrants of Potable Water Network-[Road 10]-[SW-3] | 2026-11-28 → 2026-11-10 (-18d) | 2026-12-03 → 2026-11-16 (-17d) |  | -232d → -94d |  |
| CO-R10.S03-WE-PW-150 | Installation Works for Fire Hydrant of Potable Water Network-[Road 10]-[SW-3] | 2026-12-05 → 2026-11-17 (-18d) | 2026-12-10 → 2026-11-23 (-17d) |  | -232d → -94d |  |
| CO-R10.S03-WE-PW-160 | Trench Backfilling and Compaction Works for Fire Hydrants of Potable Water Network-[Road 10]-[SW-3] | 2026-12-08 → 2026-11-21 (-17d) | 2026-12-14 → 2026-11-26 (-18d) |  | -232d → -94d |  |
| IR | **Irrigation Network** |  | 2026-12-16 → 2026-11-11 (-35d) |  |  |  |
| ML | **Main Line Pipes** |  | 2026-12-16 → 2026-11-11 (-35d) |  |  |  |
| CO-R10.S03-WE-IR-130 | Trench Backfilling and Compaction Works for Main Lines of Irrigation Network-[Road 10]-[SW-3] |  |  |  |  | CO-R10.S03-WE-IR-120, CO-R10.S03-WE-IR-110 → CO-R10.S03-WE-IR-110 |
| CO-R10.S03-WE-IR-120 | Installation Works for Main Line Valves of Irrigation Network-[Road 10]-[SW-3] | 2026-12-15 → 2026-11-10 (-35d) | 2026-12-16 → 2026-11-11 (-35d) |  | -232d → -12d |  |
| SL | **Street Lighting Network** | 2026-12-17 → 2026-11-10 (-37d) | 2027-04-20 → 2027-03-14 (-37d) |  |  |  |
| LP | **Lighting Poles Works** | 2026-12-17 → 2026-11-10 (-37d) | 2027-01-24 → 2026-12-17 (-38d) |  |  |  |
| CO-R10.S03-WE-SL-100 | Foundation Excavation Works for Lighting Poles of Street Lighting Network-[Road 10]-[SW-3] | 2026-12-17 → 2026-11-10 (-37d) | 2026-12-30 → 2026-11-23 (-37d) |  | -232d → -200d |  |
| CO-R10.S03-WE-SL-110 | Installation Works for Lighting Poles Foundation of Street Lighting Network-[Road 10]-[SW-3] | 2026-12-23 → 2026-11-16 (-37d) | 2027-01-05 → 2026-11-29 (-37d) |  | -232d → -200d |  |
| CO-R10.S03-WE-SL-120 | Installation Works for Lighting Poles of Street Lighting Network-[Road 10]-[SW-3] | 2026-12-29 → 2026-11-22 (-37d) | 2027-01-18 → 2026-12-12 (-37d) |  | -232d → -200d |  |
| CO-R10.S03-WE-SL-130 | Installation Works for Lighting Fixtures With Drop Wire of Street Lighting Network-[Road 10]-[SW-3] | 2027-01-04 → 2026-11-28 (-37d) | 2027-01-24 → 2026-12-17 (-38d) |  | -207d → -175d |  |
| CO-R10.S03-WE-SL-210 | Backfilling Works for Lighting Poles of Street Lighting Network-[Road 10]-[SW-3] | 2027-01-05 → 2026-11-29 (-37d) | 2027-01-18 → 2026-12-12 (-37d) |  | -207d → -175d |  |
| CO-R10.S03-WE-SL-200 | Testing Works for Lighting Poles of Street Lighting Network-[Road 10]-[SW-3] | 2027-01-19 → 2026-12-13 (-37d) | 2027-01-24 → 2026-12-17 (-38d) |  | -207d → -175d |  |
| CW | **Cabling Works** | 2027-01-19 → 2026-12-13 (-37d) | 2027-02-23 → 2027-01-16 (-38d) |  |  |  |
| CO-R10.S03-WE-SL-140 | Trench Excavation and Bedding Works for Street Lighting Network-[Road 10]-[SW-3] | 2027-01-19 → 2026-12-13 (-37d) | 2027-01-30 → 2026-12-23 (-38d) |  | -232d → -200d |  |
| CO-R10.S03-WE-SL-150 | Cable Laying Works for Street Lighting Network-[Road 10]-[SW-3] | 2027-01-31 → 2026-12-24 (-38d) | 2027-02-10 → 2027-01-04 (-37d) |  | -232d → -200d |  |
| CO-R10.S03-WE-SL-160 | Trench Backfilling and Compaction Works for Street Lighting Network-[Road 10]-[SW-3] | 2027-02-11 → 2027-01-05 (-37d) | 2027-02-23 → 2027-01-16 (-38d) |  | -232d → -200d |  |
| DPB | **Distrubution Panel Boards** | 2027-03-28 → 2027-02-14 (-42d) | 2027-04-20 → 2027-03-14 (-37d) |  |  |  |
| CO-R10.S03-WE-SL-170 | Foundation Excavation Works For Panel Boards of Street Lighting Network-[Road 10]-[SW-3] | 2027-03-28 → 2027-02-14 (-42d) | 2027-04-10 → 2027-02-28 (-41d) |  | -232d → -200d |  |
| CO-R10.S03-WE-SL-180 | Installation Works for Panel Board Concrete Foundations of Street Lighting Network-[Road 10]-[SW-3] | 2027-04-04 → 2027-02-21 (-42d) | 2027-04-17 → 2027-03-07 (-41d) |  | -232d → -200d |  |
| CO-R10.S03-WE-SL-220 | A wall of concrete blocks to install the KWH meter of Street Lighting Network-[Road 10]-[SW-3] | 2027-04-04 → 2027-02-21 (-42d) | 2027-04-17 → 2027-03-07 (-41d) |  | -229d → -197d |  |
| CO-R10.S03-WE-SL-190 | Installation Works for Lighting Panel Boards of Street Lighting Network-[Road 10]-[SW-3] | 2027-04-07 → 2027-02-25 (-41d) | 2027-04-20 → 2027-03-14 (-37d) |  | -232d → -200d |  |
| TE | **Telecom Network** | 2027-03-31 → 2027-01-05 (-85d) | 2027-04-27 → 2027-02-01 (-85d) |  |  |  |
| PD | **Ducts Works** | 2027-03-31 → 2027-01-05 (-85d) | 2027-04-27 → 2027-02-01 (-85d) |  |  |  |
| CO-R10.S03-WE-TE-100 | Trench Excavation and Bedding Works for Ducts of Telecom Network-[Road 10]-[SW-3] | 2027-03-31 → 2027-01-05 (-85d) | 2027-04-03 → 2027-01-07 (-86d) |  | -244d → -162d |  |
| CO-R10.S03-WE-TE-110 | Pipes Laying Works for Ducts of Telecom Network-[Road 10]-[SW-3] | 2027-04-04 → 2027-01-09 (-85d) | 2027-04-11 → 2027-01-16 (-85d) |  | -244d → -151d |  |
| CO-R10.S03-WE-TE-120 | Pouring Plain Concrete Above Ducts of Telecom Network-[Road 10]-[SW-3] | 2027-04-12 → 2027-01-17 (-85d) | 2027-04-19 → 2027-01-24 (-85d) |  | -244d → -151d |  |
| CO-R10.S03-WE-TE-130 | Trench Backfilling and Compaction Works for Ducts of Telecom Network-[Road 10]-[SW-3] | 2027-04-20 → 2027-01-25 (-85d) | 2027-04-27 → 2027-02-01 (-85d) |  | -244d → -151d |  |
| MH | **Manholes Works** | 2027-04-04 → 2027-01-09 (-85d) | 2027-04-27 → 2027-02-01 (-85d) |  |  |  |

| ID | Task | Start | Finish | Total float | Predecessors |
| --- | --- | --- | --- | --- | --- |
| CO-R10.S03-WE-TE-140 | Excavation Works for Manholes of Telecom Network-[Road 10]-[SW-3] | 2027-04-04 → 2027-01-09 (-85d) | 2027-04-11 → 2027-01-16 (-85d) | -241d → -162d |  |
| CO-R10.S03-WE-TE-150 | Installation Works for Manholes of Telecom Network-[Road 10]-[SW-3] | 2027-04-12 → 2027-01-17 (-85d) | 2027-04-19 → 2027-01-24 (-85d) | -241d → -151d |  |
| CO-R10.S03-WE-TE-160 | Backfilling Works for Manholes of Telecom Network-[Road 10]-[SW-3] | 2027-04-20 → 2027-01-25 (-85d) | 2027-04-27 → 2027-02-01 (-85d) | -241d → -151d |  |
| CO-R10.S03-WE-MV-100 | Trench Excavation and Bedding Works for Medium Voltage Network-[Road 10]-[SW-3] |  |  |  | ENG-SH-MV-A-110, CO-R10.S03-WE-SD-170 SS+3d, CO-R10.S03-WE-SD-170 FF+3d, CO-R10.S03-WE-EW-110, CO-R10.S03-WE-TE-130 SS+3d, CO-R10.S03-WE-TE-130 FF+3d, ENG-MS-MV-A-110 → ENG-SH-MV-A-110, CO-R10.S03-WE-SD-170 SS+3d, CO-R10.S03-WE-SD-170 FF+3d, CO-R10.S03-WE-EW-110, ENG-MS-MV-A-110 |
| RD | **Road Works** |  | 2027-07-14 → 2027-05-13 (-62d) |  |  |
| RD | **Pre-Bituminous Construction** |  | 2027-05-27 → 2027-02-06 (-110d) |  |  |
| CO-R10.S03-WE-RD-100 | Capping and Subgrade Layer for Road Works-[Road 10]-[SW-3] |  | 2027-05-23 → 2027-02-01 (-111d) | -244d → -151d | ENG-SH-RD-A-100, CO-R10.S03-WE-SD-130, CO-R10.S03-WE-PW-130, CO-R10.S03-WE-PW-160, CO-R10.S03-WE-SL-160 SS+3d, CO-R10.S03-WE-SL-160 FF+3d, ENG-MS-RD-A-10, CO-R10.S03-WE-TE-130, CO-R10.S03-WE-TE-160, CO-R10.S03-WE-MV-120 SS+3d, CO-R10.S03-WE-MV-120 FF+3d → ENG-SH-RD-A-100, CO-R10.S03-WE-SD-130, CO-R10.S03-WE-PW-130, CO-R10.S03-WE-PW-160 FF, CO-R10.S03-WE-SL-160 FF+3d, ENG-MS-RD-A-10, CO-R10.S03-WE-TE-130 FF, CO-R10.S03-WE-TE-160 FF, CO-R10.S03-WE-MV-120 SS+3d, CO-R10.S03-WE-MV-120 FF+3d |
| CO-R10.S03-WE-RD-110 | Aggregate Base Course Layer for Road Works-[Road 10]-[SW-3] | 2027-05-02 → 2027-01-17 (-105d) | 2027-05-27 → 2027-02-06 (-110d) | -220d → -34d |  |
| LS | **Pavement Works** |  | 2027-07-14 → 2027-05-13 (-62d) |  |  |
| CO-R10.S03-WE-RD-120 | Fixing of Curbstone for Sidewalks Pavement-[Road 10]-[SW-3] |  |  |  | CO-R10.S03-WE-RD-110 FF+3d, CO-R10.S03-WE-RD-110 SS+3d → CO-R10.S03-WE-PW-170 |
| CO-R10.S03-WE-RD-130 | Fixing of Interlock Tiles for Sidewalks Pavement-[Road 10]-[SW-3] | 2027-07-04 → 2027-05-03 (-62d) | 2027-07-14 → 2027-05-13 (-62d) | -248d → -190d |  |
| 2 | **SW-4** |  | 2027-07-17 → 2027-05-22 (-56d) |  |  |
| SW_4 | **SW_4-East** |  | 2027-07-14 → 2027-05-13 (-62d) |  |  |
| PW | **Potable Water Network** |  | 2026-12-21 → 2026-12-03 (-18d) |  |  |
| CO-R10.S04-ES-PW-110 | Pipes Laying and accessories for Main Lines of Potable Water Network-[Road 10]-[SW-4] |  |  |  | CO-R10.S04-ES-PW-100, PRO-R10-PW-DL-100 FF+3d, PRO-R10-PW-DL-110 FF+3d → CO-R10.S04-ES-PW-100, PRO-R10-PW-DL-100 FF+3d |
| CO-R10.S04-ES-PW-130 | Trench Backfilling and Compaction Works for Main Lines of Potable Water Network-[Road 10]-[SW-4] |  |  |  | CO-R10.S04-ES-PW-110, CO-R10.S04-ES-PW-220 FF, CO-R10.S04-ES-PW-160 FF → CO-R10.S04-ES-PW-110, CO-R10.S04-ES-PW-220 FF |
| FH | **Fire Hydrant** | 2026-11-28 → 2026-11-10 (-18d) | 2026-12-21 → 2026-12-03 (-18d) |  |  |
| CO-R10.S04-ES-PW-140 | Excavation Works for Fire Hydrants of Potable Water Network-[Road 10]-[SW-4] | 2026-11-28 → 2026-11-10 (-18d) | 2026-12-05 → 2026-11-17 (-18d) | -245d → -100d |  |
| CO-R10.S04-ES-PW-150 | Installation Works for Fire Hydrant of Potable Water Network-[Road 10]-[SW-4] | 2026-12-06 → 2026-11-18 (-18d) | 2026-12-13 → 2026-11-25 (-18d) | -245d → -100d |  |
| CO-R10.S04-ES-PW-160 | Trench Backfilling and Compaction Works for Fire Hydrants of Potable Water Network-[Road 10]-[SW-4] | 2026-12-14 → 2026-11-26 (-18d) | 2026-12-21 → 2026-12-03 (-18d) | -245d → -100d |  |
| IR | **Irrigation Network** |  | 2026-12-26 → 2026-11-14 (-42d) |  |  |
| ML | **Main Line Pipes** |  | 2026-12-26 → 2026-11-14 (-42d) |  |  |
| CO-R10.S04-ES-IR-130 | Trench Backfilling and Compaction Works for Main Lines of Irrigation Network-[Road 10]-[SW-4] |  |  |  | CO-R10.S04-ES-IR-120, CO-R10.S04-ES-IR-110 → CO-R10.S04-ES-IR-110 |
| CO-R10.S04-ES-IR-120 | Installation Works for Main Line Valves of Irrigation Network-[Road 10]-[SW-4] | 2026-12-22 → 2026-11-10 (-42d) | 2026-12-26 → 2026-11-14 (-42d) | -245d → -14d |  |
| SL | **Street Lighting Network** | 2026-12-27 → 2026-11-10 (-47d) | 2027-03-30 → 2027-02-07 (-51d) |  |  |
| LP | **Lighting Poles Works** | 2026-12-27 → 2026-11-10 (-47d) | 2027-02-13 → 2027-01-12 (-32d) |  |  |
| CO-R10.S04-ES-SL-100 | Foundation Excavation Works for Lighting Poles of Street Lighting Network-[Road 10]-[SW-4] | 2026-12-27 → 2026-11-10 (-47d) | 2027-01-03 → 2026-11-17 (-47d) | -245d → -193.5d |  |
| CO-R10.S04-ES-SL-110 | Installation Works for Lighting Poles Foundation of Street Lighting Network-[Road 10]-[SW-4] | 2027-01-02 → 2026-11-16 (-47d) | 2027-01-09 → 2026-11-23 (-47d) | -245d → -193.5d |  |
| CO-R10.S04-ES-SL-120 | Installation Works for Lighting Poles of Street Lighting Network-[Road 10]-[SW-4] | 2027-01-07 → 2026-11-22 (-46d) | 2027-01-14 → 2026-11-29 (-46d) | -245d → -193.5d |  |
| CO-R10.S04-ES-SL-210 | Backfilling Works for Lighting Poles of Street Lighting Network-[Road 10]-[SW-4] | 2027-01-19 → 2026-12-13 (-37d) | 2027-02-04 → 2026-12-29 (-37d) | -253.5d → -211.5d |  |
| CO-R10.S04-ES-SL-130 | Installation Works for Lighting Fixtures With Drop Wire of Street Lighting Network-[Road 10]-[SW-4] | 2027-01-24 → 2026-12-23 (-32d) | 2027-02-13 → 2027-01-12 (-32d) | -138.5d → -111.5d |  |
| CO-R10.S04-ES-SL-200 | Testing Works for Lighting Poles of Street Lighting Network-[Road 10]-[SW-4] | 2027-02-06 → 2026-12-30 (-38d) | 2027-02-13 → 2027-01-06 (-38d) | -138.5d → -106.5d |  |
| CW | **Cabling Works** | 2027-01-16 → 2026-11-30 (-47d) | 2027-02-08 → 2026-12-23 (-47d) |  |  |
| CO-R10.S04-ES-SL-140 | Trench Excavation and Bedding Works for Street Lighting Network-[Road 10]-[SW-4] | 2027-01-16 → 2026-11-30 (-47d) | 2027-01-23 → 2026-12-07 (-47d) | -245d → -190d |  |
| CO-R10.S04-ES-SL-150 | Cable Laying Works for Street Lighting Network-[Road 10]-[SW-4] | 2027-01-24 → 2026-12-08 (-47d) | 2027-01-31 → 2026-12-15 (-47d) | -245d → -190d |  |
| CO-R10.S04-ES-SL-160 | Trench Backfilling and Compaction Works for Street Lighting Network-[Road 10]-[SW-4] | 2027-02-01 → 2026-12-16 (-47d) | 2027-02-08 → 2026-12-23 (-47d) | -245d → -190d |  |
| DPB | **Distrubution Panel Boards** | 2027-02-09 → 2026-12-24 (-47d) | 2027-03-30 → 2027-02-07 (-51d) |  |  |
| CO-R10.S04-ES-SL-170 | Foundation Excavation Works For Panel Boards of Street Lighting Network-[Road 10]-[SW-4] | 2027-02-09 → 2026-12-24 (-47d) | 2027-03-02 → 2027-01-13 (-48d) | -223d → -183d |  |
| CO-R10.S04-ES-SL-180 | Installation Works for Panel Board Concrete Foundations of Street Lighting Network-[Road 10]-[SW-4] | 2027-02-20 → 2027-01-04 (-47d) | 2027-03-06 → 2027-01-17 (-48d) | -214d → -174d |  |
| CO-R10.S04-ES-SL-190 | Installation Works for Lighting Panel Boards of Street Lighting Network-[Road 10]-[SW-4] | 2027-03-07 → 2027-01-18 (-48d) | 2027-03-23 → 2027-01-31 (-51d) | -214d → -174d |  |
| CO-R10.S04-ES-SL-220 | A wall of concrete blocks to install the KWH meter of Street Lighting Network-[Road 10]-[SW-4] | 2027-03-07 → 2027-01-18 (-48d) | 2027-03-30 → 2027-02-07 (-51d) | -214d → -174d |  |
| TE | **Telecom Network** | 2027-02-20 → 2027-01-13 (-38d) | 2027-05-05 → 2027-02-14 (-80d) |  |  |
| PD | **Ducts Works** | 2027-02-20 → 2027-01-13 (-38d) | 2027-03-28 → 2027-02-14 (-42d) |  |  |
| CO-R10.S04-ES-TE-100 | Trench Excavation and Bedding Works for Ducts of Telecom Network-[Road 10]-[SW-4] | 2027-02-20 → 2027-01-13 (-38d) | 2027-02-28 → 2027-01-20 (-39d) | -256d → -209d |  |
| CO-R10.S04-ES-TE-110 | Pipes Laying Works for Ducts of Telecom Network-[Road 10]-[SW-4] | 2027-03-01 → 2027-01-21 (-39d) | 2027-03-08 → 2027-01-28 (-39d) | -208d → -162d |  |
| CO-R10.S04-ES-TE-120 | Pouring Plain Concrete Above Ducts of Telecom Network-[Road 10]-[SW-4] | 2027-03-13 → 2027-01-30 (-42d) | 2027-03-20 → 2027-02-06 (-42d) | -208d → -162d |  |
| CO-R10.S04-ES-TE-130 | Trench Backfilling and Compaction Works for Ducts of Telecom Network-[Road 10]-[SW-4] | 2027-03-21 → 2027-02-07 (-42d) | 2027-03-28 → 2027-02-14 (-42d) | -208d → -162d |  |
| MH | **Manholes Works** | 2027-04-12 → 2027-01-21 (-81d) | 2027-05-05 → 2027-02-14 (-80d) |  |  |
| CO-R10.S04-ES-TE-140 | Excavation Works for Manholes of Telecom Network-[Road 10]-[SW-4] | 2027-04-12 → 2027-01-21 (-81d) | 2027-04-19 → 2027-01-28 (-81d) | -241d → -162d |  |
| CO-R10.S04-ES-TE-150 | Installation Works for Manholes of Telecom Network-[Road 10]-[SW-4] | 2027-04-20 → 2027-01-30 (-80d) | 2027-04-27 → 2027-02-06 (-80d) | -241d → -162d |  |
| CO-R10.S04-ES-TE-160 | Backfilling Works for Manholes of Telecom Network-[Road 10]-[SW-4] | 2027-04-28 → 2027-02-07 (-80d) | 2027-05-05 → 2027-02-14 (-80d) | -241d → -162d |  |
| RD | **Road Works** |  | 2027-07-14 → 2027-05-13 (-62d) |  |  |
| RD | **Pre-Bituminous Construction** |  | 2027-05-31 → 2027-02-17 (-103d) |  |  |
| CO-R10.S04-ES-RD-100 | Capping and Subgrade Layer for Road Works-[Road 10]-[SW-4] |  | 2027-05-27 → 2027-02-14 (-102d) | -241d → -162d | CO-R10.S04-ES-SD-130, CO-R10.S04-ES-SW-130, CO-R10.S04-ES-PW-130, CO-R10.S04-ES-PW-160, CO-R10.S04-ES-SL-160 SS+3d, CO-R10.S04-ES-SL-160 FF+3d, PRO-R10-RD-DL-100 FF+3d, CO-R10.S04-ES-TE-130, CO-R10.S04-ES-TE-160 → CO-R10.S04-ES-SD-130, CO-R10.S04-ES-SW-130, CO-R10.S04-ES-PW-130, CO-R10.S04-ES-PW-160 FF, CO-R10.S04-ES-SL-160 FF+3d, PRO-R10-RD-DL-100 FF+3d, CO-R10.S04-ES-TE-130 FF, CO-R10.S04-ES-TE-160 FF |
| CO-R10.S04-ES-RD-110 | Aggregate Base Course Layer for Road Works-[Road 10]-[SW-4] | 2027-05-12 → 2027-02-04 (-97d) | 2027-05-31 → 2027-02-17 (-103d) | -221d → -44d |  |
| LS | **Pavement Works** |  | 2027-07-14 → 2027-05-13 (-62d) |  |  |
| CO-R10.S04-ES-RD-120 | Fixing of Curbstone for Sidewalks Pavement-[Road 10]-[SW-4] |  |  |  | PRO-R10-RD-DL-130 FF+3d, CO-R10.S04-ES-RD-110 SS+3d, CO-R10.S04-ES-RD-110 FF+3d → PRO-R10-RD-DL-130 FF+3d |
| CO-R10.S04-ES-RD-130 | Fixing of Interlock Tiles for Sidewalks Pavement-[Road 10]-[SW-4] | 2027-07-04 → 2027-05-03 (-62d) | 2027-07-14 → 2027-05-13 (-62d) | -246d → -188d |  |
| SW_41 | **SW_4-West** |  | 2027-07-17 → 2027-05-22 (-56d) |  |  |
| PW | **Potable Water Network** |  | 2026-12-21 → 2026-12-05 (-16d) |  |  |
| CO-R10.S04-WE-PW-110 | Pipes Laying and accessories for Main Lines of Potable Water Network-[Road 10]-[SW-4] |  |  |  | CO-R10.S04-WE-PW-100, PRO-R10-PW-DL-100 FF+3d, PRO-R10-PW-DL-110 FF+3d → CO-R10.S04-WE-PW-100, PRO-R10-PW-DL-100 FF+3d |
| CO-R10.S04-WE-PW-130 | Trench Backfilling and Compaction Works for Main Lines of Potable Water Network-[Road 10]-[SW-4] |  |  |  | CO-R10.S04-WE-PW-110, CO-R10.S04-WE-PW-220 FF, CO-R10.S04-WE-PW-160 FF → CO-R10.S04-WE-PW-110 |
| VC | **Valve Chamber** |  | 2026-11-28 → 2026-11-26 (-2d) |  |  |
| CO-R10.S04-WE-PW-210 | Insulation Works for Main Line Valves and Valve Chambers of Potable Water Network-[Road 10]-[SW-4] |  | 2026-11-24 → 2026-11-23 (-1d) | -228d → -7d | CO-R10.S04-WE-PW-200 → CO-R10.S04-WE-PW-200 FF |
| CO-R10.S04-WE-PW-220 | Backfilling Works for Main Line Valves and Valve Chambers of Potable Water Network-[Road 10]-[SW-4] | 2026-11-25 → 2026-11-24 (-1d) | 2026-11-28 → 2026-11-26 (-2d) | -228d → -7d |  |
| FH | **Fire Hydrant** | 2026-11-28 → 2026-11-11 (-17d) | 2026-12-21 → 2026-12-05 (-16d) |  |  |
| CO-R10.S04-WE-PW-140 | Excavation Works for Fire Hydrants of Potable Water Network-[Road 10]-[SW-4] | 2026-11-28 → 2026-11-11 (-17d) | 2026-12-05 → 2026-11-18 (-17d) | -248d → -105d |  |
| CO-R10.S04-WE-PW-150 | Installation Works for Fire Hydrant of Potable Water Network-[Road 10]-[SW-4] | 2026-12-06 → 2026-11-19 (-17d) | 2026-12-13 → 2026-11-26 (-17d) | -248d → -105d |  |
| CO-R10.S04-WE-PW-160 | Trench Backfilling and Compaction Works for Fire Hydrants of Potable Water Network-[Road 10]-[SW-4] | 2026-12-14 → 2026-11-28 (-16d) | 2026-12-21 → 2026-12-05 (-16d) | -248d → -105d |  |
| IR | **Irrigation Network** |  | 2026-12-31 → 2026-11-15 (-46d) |  |  |

| ID | Task | Start | Finish | Complete | Total float | Predecessors |
| --- | --- | --- | --- | --- | --- | --- |
| ML | **Main Line Pipes** |  | 2026-12-31 → 2026-11-15 (-46d) |  |  |  |
| CO-R10.S04-WE-IR-100 | Trench Excavation and Bedding Works for Main Lines of Irrigation Network-[Road 10]-[SW-4] |  | 2026-12-23 → 2026-11-11 (-42d) |  | -248d → -208d |  |
| CO-R10.S04-WE-IR-110 | Pipes Laying Works for Main Lines of Irrigation Network-[Road 10]-[SW-4] |  | 2026-12-26 → 2026-11-11 (-45d) |  | -248d → -208d | CO-R10.S04-WE-IR-100, PRO-R19.2-IR-DL-100 FF+3d → CO-R10.S04-WE-IR-100 FF, PRO-R19.2-IR-DL-100 FF+3d |
| CO-R10.S04-WE-IR-130 | Trench Backfilling and Compaction Works for Main Lines of Irrigation Network-[Road 10]-[SW-4] |  | 2026-12-31 → 2026-11-15 (-46d) |  | -248d → -208d | CO-R10.S04-WE-IR-120, CO-R10.S04-WE-IR-110 → CO-R10.S04-WE-IR-120 FF, CO-R10.S04-WE-IR-110 FF |
| CO-R10.S04-WE-IR-120 | Installation Works for Main Line Valves of Irrigation Network-[Road 10]-[SW-4] | 2026-12-27 → 2026-11-12 (-45d) | 2026-12-29 → 2026-11-15 (-44d) |  | -248d → -208d |  |
| SL | **Street Lighting Network** | 2027-01-02 → 2026-11-16 (-47d) | 2027-04-28 → 2027-03-13 (-46d) |  |  |  |
| LP | **Lighting Poles Works** | 2027-01-02 → 2026-11-16 (-47d) | 2027-02-13 → 2027-01-12 (-32d) |  |  |  |
| CO-R10.S04-WE-SL-100 | Foundation Excavation Works for Lighting Poles of Street Lighting Network-[Road 10]-[SW-4] | 2027-01-02 → 2026-11-16 (-47d) | 2027-01-12 → 2026-11-26 (-47d) |  | -248d → -208d |  |
| CO-R10.S04-WE-SL-110 | Installation Works for Lighting Poles Foundation of Street Lighting Network-[Road 10]-[SW-4] | 2027-01-07 → 2026-11-22 (-46d) | 2027-01-18 → 2026-12-02 (-47d) |  | -248d → -208d |  |
| CO-R10.S04-WE-SL-120 | Installation Works for Lighting Poles of Street Lighting Network-[Road 10]-[SW-4] | 2027-01-13 → 2026-11-28 (-46d) | 2027-02-02 → 2026-12-17 (-47d) |  | -248d → -208d |  |
| CO-R10.S04-WE-SL-210 | Backfilling Works for Lighting Poles of Street Lighting Network-[Road 10]-[SW-4] | 2027-01-19 → 2026-12-13 (-37d) | 2027-02-04 → 2026-12-29 (-37d) |  | -138.5d → -106.5d |  |
| CO-R10.S04-WE-SL-130 | Installation Works for Lighting Fixtures With Drop Wire of Street Lighting Network-[Road 10]-[SW-4] | 2027-01-24 → 2026-12-23 (-32d) | 2027-02-13 → 2027-01-12 (-32d) |  | -138.5d → -111.5d |  |
| CO-R10.S04-WE-SL-200 | Testing Works for Lighting Poles of Street Lighting Network-[Road 10]-[SW-4] | 2027-02-06 → 2026-12-30 (-38d) | 2027-02-13 → 2027-01-06 (-38d) |  | -138.5d → -106.5d |  |
| CW | **Cabling Works** | 2027-02-03 → 2026-12-19 (-46d) | 2027-03-14 → 2027-01-21 (-52d) |  |  |  |
| CO-R10.S04-WE-SL-140 | Trench Excavation and Bedding Works for Street Lighting Network-[Road 10]-[SW-4] | 2027-02-03 → 2026-12-19 (-46d) | 2027-02-14 → 2026-12-29 (-47d) |  | -248d → -208d |  |
| CO-R10.S04-WE-SL-150 | Cable Laying Works for Street Lighting Network-[Road 10]-[SW-4] | 2027-02-15 → 2026-12-30 (-47d) | 2027-02-27 → 2027-01-10 (-48d) |  | -248d → -208d |  |
| CO-R10.S04-WE-SL-160 | Trench Backfilling and Compaction Works for Street Lighting Network-[Road 10]-[SW-4] | 2027-02-28 → 2027-01-11 (-48d) | 2027-03-14 → 2027-01-21 (-52d) |  | -248d → -208d |  |
| DPB | **Distrubution Panel Boards** | 2027-03-15 → 2027-01-23 (-51d) | 2027-04-28 → 2027-03-13 (-46d) |  |  |  |
| CO-R10.S04-WE-SL-170 | Foundation Excavation Works For Panel Boards of Street Lighting Network-[Road 10]-[SW-4] | 2027-03-15 → 2027-01-23 (-51d) | 2027-04-04 → 2027-02-11 (-52d) |  | -248d → -208d |  |
| CO-R10.S04-WE-SL-180 | Installation Works for Panel Board Concrete Foundations of Street Lighting Network-[Road 10]-[SW-4] | 2027-03-25 → 2027-02-02 (-51d) | 2027-04-07 → 2027-02-15 (-51d) |  | -239d → -199d |  |
| CO-R10.S04-WE-SL-190 | Installation Works for Lighting Panel Boards of Street Lighting Network-[Road 10]-[SW-4] | 2027-04-08 → 2027-02-16 (-51d) | 2027-04-21 → 2027-03-02 (-50d) |  | -239d → -199d |  |
| CO-R10.S04-WE-SL-220 | A wall of concrete blocks to install the KWH meter of Street Lighting Network-[Road 10]-[SW-4] | 2027-04-08 → 2027-02-16 (-51d) | 2027-04-28 → 2027-03-13 (-46d) |  | -239d → -199d |  |
| TE | **Telecom Network** | 2027-04-04 → 2027-01-20 (-74d) | 2027-05-05 → 2027-02-21 (-73d) |  |  |  |
| PD | **Ducts Works** | 2027-04-04 → 2027-01-20 (-74d) | 2027-05-05 → 2027-02-21 (-73d) |  |  |  |
| CO-R10.S04-WE-TE-100 | Trench Excavation and Bedding Works for Ducts of Telecom Network-[Road 10]-[SW-4] | 2027-04-04 → 2027-01-20 (-74d) | 2027-04-11 → 2027-01-27 (-74d) |  | -236d → -172d |  |
| CO-R10.S04-WE-TE-110 | Pipes Laying Works for Ducts of Telecom Network-[Road 10]-[SW-4] | 2027-04-12 → 2027-01-28 (-74d) | 2027-04-19 → 2027-02-04 (-74d) |  | -236d → -172d |  |
| CO-R10.S04-WE-TE-120 | Pouring Plain Concrete Above Ducts of Telecom Network-[Road 10]-[SW-4] | 2027-04-20 → 2027-02-06 (-73d) | 2027-04-27 → 2027-02-13 (-73d) |  | -236d → -172d |  |
| CO-R10.S04-WE-TE-130 | Trench Backfilling and Compaction Works for Ducts of Telecom Network-[Road 10]-[SW-4] | 2027-04-28 → 2027-02-14 (-73d) | 2027-05-05 → 2027-02-21 (-73d) |  | -236d → -172d |  |
| MH | **Manholes Works** | 2027-04-12 → 2027-01-28 (-74d) | 2027-05-05 → 2027-02-21 (-73d) |  |  |  |
| CO-R10.S04-WE-TE-140 | Excavation Works for Manholes of Telecom Network-[Road 10]-[SW-4] | 2027-04-12 → 2027-01-28 (-74d) | 2027-04-19 → 2027-02-04 (-74d) |  | -236d → -172d |  |
| CO-R10.S04-WE-TE-150 | Installation Works for Manholes of Telecom Network-[Road 10]-[SW-4] | 2027-04-20 → 2027-02-06 (-73d) | 2027-04-27 → 2027-02-13 (-73d) |  | -236d → -172d |  |
| CO-R10.S04-WE-TE-160 | Backfilling Works for Manholes of Telecom Network-[Road 10]-[SW-4] | 2027-04-28 → 2027-02-14 (-73d) | 2027-05-05 → 2027-02-21 (-73d) |  | -236d → -172d |  |
| RD | **Road Works** |  | 2027-07-17 → 2027-05-22 (-56d) |  |  |  |
| RD | **Pre-Bituminous Construction** |  | 2027-05-25 → 2027-03-02 (-84d) |  |  |  |
| CO-R10.S04-WE-RD-100 | Capping and Subgrade Layer for Road Works-[Road 10]-[SW-4] |  | 2027-05-11 → 2027-02-21 (-79d) |  | -236d → -172d | CO-R10.S04-WE-SD-130, CO-R10.S04-WE-SW-130, CO-R10.S04-WE-PW-130, CO-R10.S04-WE-PW-160, CO-R10.S04-WE-SL-160 SS+3d, CO-R10.S04-WE-SL-160 FF+3d, PRO-R10-RD-DL-100 FF+3d, CO-R10.S04-WE-TE-130, CO-R10.S04-WE-TE-160 → CO-R10.S04-WE-SD-130, CO-R10.S04-WE-SW-130, CO-R10.S04-WE-PW-130, CO-R10.S04-WE-PW-160 FF, CO-R10.S04-WE-SL-160 FF+3d, PRO-R10-RD-DL-100 FF+3d, CO-R10.S04-WE-TE-130 FF, CO-R10.S04-WE-TE-160 FF |
| CO-R10.S04-WE-RD-110 | Aggregate Base Course Layer for Road Works-[Road 10]-[SW-4] | 2027-05-06 → 2026-11-04 A (-183d) | 2027-05-25 → 2027-03-02 (-84d) | 0% → 20% | -218d → -54d |  |
| LS | **Pavement Works** |  | 2027-07-17 → 2027-05-22 (-56d) |  |  |  |
| CO-R10.S04-WE-RD-120 | Fixing of Curbstone for Sidewalks Pavement-[Road 10]-[SW-4] |  |  |  |  | PRO-R10-RD-DL-130 FF+3d, CO-R10.S04-WE-RD-110 SS+3d, CO-R10.S04-WE-RD-110 FF+3d → PRO-R10-RD-DL-130 FF+3d |
| CO-R10.S04-WE-RD-130 | Fixing of Interlock Tiles for Sidewalks Pavement-[Road 10]-[SW-4] | 2027-07-04 → 2027-05-03 (-62d) | 2027-07-17 → 2027-05-22 (-56d) |  | -248d → -190d |  |
| 5 | **Road 11 Local 1 ( 670 LM )** |  | 2027-05-22 → 2027-03-30 (-53d) |  |  |  |
| SW_5 | **SW_5** |  | 2027-05-05 → 2027-02-14 (-80d) |  |  |  |
| IR | **Irrigation Network** |  | 2026-12-20 → 2026-11-23 (-27d) |  |  |  |
| ML | **Main Line Pipes** |  | 2026-12-20 → 2026-11-23 (-27d) |  |  |  |
| CO-R11.S05-IR-110 | Pipes Laying Works for Main Lines of Irrigation Network-[Road 11]-[SW-5] |  | 2026-12-08 → 2026-11-11 (-27d) |  | -162d → -72d |  |
| CO-R11.S05-IR-120 | Installation Works for Main Line Valves of Irrigation Network-[Road 11]-[SW-5] | 2026-12-09 → 2026-11-12 (-27d) | 2026-12-12 → 2026-11-15 (-27d) |  | -162d → -72d |  |
| CO-R11.S05-IR-130 | Trench Backfilling and Compaction Works for Main Lines of Irrigation Network-[Road 11]-[SW-5] | 2026-12-13 → 2026-11-16 (-27d) | 2026-12-20 → 2026-11-23 (-27d) |  | -162d → -72d |  |
| TE | **Telecom Network** |  | 2027-05-05 → 2027-02-14 (-80d) |  |  |  |
| CO-R11.S05-TE-100 | Trench Excavation and Bedding Works for Ducts of Telecom Network-[Road 11]-[SW-5] |  |  |  |  | CO-R11.S05-IR-130, CO-R11.S05-EW-110, CO-R14.S08-TE-100 → CO-R11.S05-EW-110 |
| CO-R11.S05-TE-110 | Pipes Laying Works for Ducts of Telecom Network-[Road 11]-[SW-5] |  |  |  |  | CO-R11.S05-TE-100, CO-R10.S03-ES-TE-110, CO-R10.S03-WE-TE-110 → CO-R11.S05-TE-100 |
| CO-R11.S05-TE-120 | Pouring Plain Concrete Above Ducts of Telecom Network-[Road 11]-[SW-5] |  |  |  |  | CO-R11.S05-TE-110, CO-R10.S03-ES-TE-120, CO-R10.S03-WE-TE-120 → CO-R11.S05-TE-110 |
| CO-R11.S05-TE-130 | Trench Backfilling and Compaction Works for Ducts of Telecom Network-[Road 11]-[SW-5] |  |  |  |  | CO-R11.S05-TE-120, CO-R11.S05-TE-120 FF+3d, CO-R10.S03-ES-TE-130, CO-R10.S03-WE-TE-130 → CO-R11.S05-TE-120, CO-R11.S05-TE-120 FF+3d |
| MH | **Manholes Works** | 2027-04-12 → 2027-01-21 (-81d) | 2027-05-05 → 2027-02-14 (-80d) |  |  |  |
| CO-R11.S05-TE-140 | Excavation Works for Manholes of Telecom Network-[Road 11]-[SW-5] | 2027-04-12 → 2027-01-21 (-81d) | 2027-04-19 → 2027-01-28 (-81d) |  | -227d → -155d |  |
| CO-R11.S05-TE-150 | Installation Works for Manholes of Telecom Network-[Road 11]-[SW-5] | 2027-04-20 → 2027-01-30 (-80d) | 2027-04-27 → 2027-02-06 (-80d) |  | -219d → -148d |  |
| CO-R11.S05-TE-160 | Backfilling Works for Manholes of Telecom Network-[Road 11]-[SW-5] | 2027-04-28 → 2027-02-07 (-80d) | 2027-05-05 → 2027-02-14 (-80d) |  | -219d → -148d |  |
| CO-R11.S05-RD-P-100 | Capping and Subgrade Layer for Road Works-[Road 11]-[SW-5] |  |  |  |  | ENG-SH-RD-A-100, CO-R11.S05-SD-130, CO-R11.S05-SW-130, ENG-MS-RD-A-10, CO-R11.S05-TE-130, CO-R11.S05-TE-160, CO-R11.S05-MV-120 SS+3d, CO-R11.S05-MV-120 FF+3d → ENG-SH-RD-A-100, CO-R11.S05-SD-130, CO-R11.S05-SW-130, ENG-MS-RD-A-10, CO-R11.S05-TE-130, CO-R11.S05-MV-120 SS+3d, CO-R11.S05-MV-120 FF+3d |
| CO-R11.S05-RD-P-110 | Aggregate Base Course Layer for Road Works-[Road 11]-[SW-5] |  |  |  |  | CO-R11.S05-RD-P-100 SS+3d, CO-R11.S05-RD-P-100 FF+3d, CO-R11.S05-SD-170 SS+3d, CO-R11.S05-SD-170 FF+3d, CO-R10.S03-ES-RD-110, CO-R10.S03-WE-RD-110 → CO-R11.S05-RD-P-100 SS+3d, CO-R11.S05-RD-P-100 FF+3d, CO-R11.S05-SD-170 SS+3d, CO-R11.S05-SD-170 FF+3d |
| CO-R11.S05-RD-P-130 | Fixing of Interlock Tiles for Sidewalks Pavement-[Road 11]-[SW-5] |  |  |  |  | CO-R11.S05-RD-P-120 SS+3d, CO-R11.S05-RD-P-120 FF+3d, CO-R10.S03-ES-RD-130, CO-R11-PW-TF-100, CO-R11-PW-TF-110, CO-R11-PW-TF-120, CO-R11-SW-TF-100, CO-R11-SW-TF-110, CO-R11-SW-TF-130, CO-R11-SD-TF-100, CO-R11-SL-TF-160, CO-R11-SL-TF-170, CO-R11-IR-TF-130, CO-R11-MV-TF-160, CO-R10.S03-WE-RD-130 → CO-R11.S05-RD-P-120 SS+3d, CO-R11.S05-RD-P-120 FF+3d, CO-R11-SW-TF-100, CO-R11-SD-TF-100 |
| SW_6 | **SW_6** |  | 2027-05-22 → 2027-03-30 (-53d) |  |  |  |
| PW | **Potable Water Network** |  | 2027-01-17 → 2026-12-03 (-45d) |  |  |  |
| CO-R11.S06-PW-110 | Pipes Laying and accessories for Main Lines of Potable Water Network-[Road 11]-[SW-6] |  |  |  |  | CO-R11.S06-PW-100, CO-R10.S04-ES-PW-110 SS, PRO-R11-PW-DL-100 FF+3d, PRO-R11-PW-DL-110 FF+3d, CO-R10.S04-WE-PW-110 SS → CO-R11.S06-PW-100, CO-R10.S04-ES-PW-110 SS, PRO-R11-PW-DL-100 FF+3d, CO-R10.S04-WE-PW-110 SS |
| CO-R11.S06-PW-130 | Trench Backfilling and Compaction Works for Main Lines of Potable Water Network-[Road 11]-[SW-6] |  |  |  |  | CO-R11.S06-PW-110, CO-R10.S04-ES-PW-130, CO-R11.S06-PW-160 FF, CO-R10.S04-WE-PW-130, CO-R11.S06-PW-210 FF → CO-R11.S06-PW-110, CO-R10.S04-ES-PW-130, CO-R10.S04-WE-PW-130 |
| FH | **Fire Hydrant** | 2026-12-24 → 2026-11-10 (-44d) | 2027-01-17 → 2026-12-03 (-45d) |  |  |  |
| CO-R11.S06-PW-140 | Excavation Works for Fire Hydrants of Potable Water Network-[Road 11]-[SW-6] | 2026-12-24 → 2026-11-10 (-44d) | 2026-12-31 → 2026-11-17 (-44d) |  | -196d → -13d |  |
| CO-R11.S06-PW-150 | Installation Works for Fire Hydrant of Potable Water Network-[Road 11]-[SW-6] | 2027-01-02 → 2026-11-18 (-45d) | 2027-01-09 → 2026-11-25 (-45d) |  | -196d → -13d |  |
| CO-R11.S06-PW-160 | Trench Backfilling and Compaction Works for Fire Hydrants of Potable Water Network-[Road 11]-[SW-6] | 2027-01-10 → 2026-11-26 (-45d) | 2027-01-17 → 2026-12-03 (-45d) |  | -196d → -13d |  |
| SL | **Street Lighting Network** |  | 2027-05-22 → 2027-03-30 (-53d) |  |  |  |
| LP | **Lighting Poles Works** |  | 2027-04-17 → 2027-02-02 (-74d) |  |  |  |
| CO-R11.S06-SL-110 | Installation Works for Lighting Poles Foundation of Street Lighting Network-[Road 11]-[SW-6] |  |  |  |  | CO-R11.S06-SL-100, CO-R10.S04-ES-SL-110, PRO-R11-SL-DL-110 FF+3d, CO-R10.S04-WE-SL-110 → CO-R11.S06-SL-100, PRO-R11-SL-DL-110 FF+3d |
| CO-R11.S06-SL-210 | Backfilling Works for Lighting Poles of Street Lighting Network-[Road 11]-[SW-6] | 2027-03-23 → 2026-11-10 (-133d) | 2027-04-08 → 2026-11-26 (-133d) |  | -170.5d → -60.5d |  |

| ID | Task | Start | Finish | Total float | Predecessors |
| --- | --- | --- | --- | --- | --- |
| CO-R11.S06-SL-200 | Testing Works for Lighting Poles of Street Lighting Network-[Road 11]-[SW-6] | 2027-04-10 → 2026-11-28 (-133d) | 2027-04-17 → 2026-12-05 (-133d) | -170.5d → -60.5d |  |
| CO-R11.S06-SL-130 | Installation Works for Lighting Fixtures With Drop Wire of Street Lighting Network-[Road 11]-[SW-6] | 2027-03-28 → 2027-01-13 (-74d) | 2027-04-17 → 2027-02-02 (-74d) | -170.5d → -111.5d |  |
| CW | **Cabling Works** |  | 2027-01-30 → 2026-11-21 (-70d) |  |  |
| CO-R11.S06-SL-160 | Trench Backfilling and Compaction Works for Street Lighting Network-[Road 11]-[SW-6] | 2027-01-19 → 2026-11-10 (-70d) | 2027-01-30 → 2026-11-21 (-70d) | -197d → -31d |  |
| DPB | **Distrubution Panel Boards** | 2027-04-05 → 2027-02-13 (-51d) | 2027-05-22 → 2027-03-30 (-53d) |  |  |
| CO-R11.S06-SL-170 | Foundation Excavation Works For Panel Boards of Street Lighting Network-[Road 11]-[SW-6] | 2027-04-05 → 2027-02-13 (-51d) | 2027-04-18 → 2027-02-27 (-50d) | -248d → -208d |  |
| CO-R11.S06-SL-180 | Installation Works for Panel Board Concrete Foundations of Street Lighting Network-[Road 11]-[SW-6] | 2027-04-19 → 2027-02-28 (-50d) | 2027-05-02 → 2027-03-16 (-47d) | -248d → -208d |  |
| CO-R11.S06-SL-190 | Installation Works for Lighting Panel Boards of Street Lighting Network-[Road 11]-[SW-6] | 2027-05-03 → 2027-03-17 (-47d) | 2027-05-22 → 2027-03-30 (-53d) | -248d → -208d |  |
| CO-R11.S06-SL-220 | A wall of concrete blocks to install the KWH meter of Street Lighting Network-[Road 11]-[SW-6] | 2027-05-03 → 2027-03-17 (-47d) | 2027-05-22 → 2027-03-30 (-53d) | -242d → -202d |  |
| TE | **Telecom Network** |  | 2027-05-13 → 2027-03-02 (-72d) |  |  |
| CO-R11.S06-TE-100 | Trench Excavation and Bedding Works for Ducts of Telecom Network-[Road 11]-[SW-6] |  |  |  | CO-R11.S06-SL-160, CO-R11.S06-EW-110, CO-R11.S05-TE-100 → CO-R11.S06-EW-110, CO-R11.S05-TE-100 |
| CO-R11.S06-TE-110 | Pipes Laying Works for Ducts of Telecom Network-[Road 11]-[SW-6] |  |  |  | CO-R11.S06-TE-100, CO-R10.S04-ES-TE-110, PRO-R11-TE-DL-100 FF+3d, CO-R10.S04-WE-TE-110 → CO-R11.S06-TE-100, PRO-R11-TE-DL-100 FF+3d |
| CO-R11.S06-TE-120 | Pouring Plain Concrete Above Ducts of Telecom Network-[Road 11]-[SW-6] |  |  |  | CO-R11.S06-TE-110, CO-R10.S04-ES-TE-120, CO-R10.S04-WE-TE-120 → CO-R11.S06-TE-110 |
| CO-R11.S06-TE-130 | Trench Backfilling and Compaction Works for Ducts of Telecom Network-[Road 11]-[SW-6] |  |  |  | CO-R11.S06-TE-120, CO-R10.S04-ES-TE-130, CO-R10.S04-WE-TE-130 → CO-R11.S06-TE-120 |
| MH | **Manholes Works** | 2027-04-20 → 2027-02-06 (-73d) | 2027-05-13 → 2027-03-02 (-72d) |  |  |
| CO-R11.S06-TE-140 | Excavation Works for Manholes of Telecom Network-[Road 11]-[SW-6] | 2027-04-20 → 2027-02-06 (-73d) | 2027-04-27 → 2027-02-13 (-73d) | -227d → -161d |  |
| CO-R11.S06-TE-150 | Installation Works for Manholes of Telecom Network-[Road 11]-[SW-6] | 2027-04-28 → 2027-02-14 (-73d) | 2027-05-05 → 2027-02-21 (-73d) | -227d → -161d |  |
| CO-R11.S06-TE-160 | Backfilling Works for Manholes of Telecom Network-[Road 11]-[SW-6] | 2027-05-06 → 2027-02-23 (-72d) | 2027-05-13 → 2027-03-02 (-72d) | -227d → -161d |  |
| CO-R11.S06-RD-P-100 | Capping and Subgrade Layer for Road Works-[Road 11]-[SW-6] |  |  |  | CO-R11.S06-SD-130, CO-R11.S06-PW-130, CO-R11.S06-PW-160, CO-R11.S06-SL-160 SS+3d, CO-R11.S06-SL-160 FF+3d, PRO-R11-RD-DL-100 FF+3d, CO-R11.S06-TE-130, CO-R11.S06-TE-160, CO-R11.S06-MV-120 SS+3d, CO-R11.S06-MV-120 FF+3d, CO-R11.S06-SW-130 → CO-R11.S06-SD-130, CO-R11.S06-PW-130, PRO-R11-RD-DL-100 FF+3d, CO-R11.S06-TE-130, CO-R11.S06-MV-120 SS+3d, CO-R11.S06-MV-120 FF+3d, CO-R11.S06-SW-130 |
| CO-R11.S06-RD-P-110 | Aggregate Base Course Layer for Road Works-[Road 11]-[SW-6] |  |  |  | CO-R11.S06-RD-P-100 SS+3d, CO-R11.S06-RD-P-100 FF+3d, CO-R11.S06-SD-170 SS+3d, CO-R11.S06-SD-170 FF+3d, CO-R10.S04-ES-RD-110, PRO-R11-RD-DL-110 FF+3d, CO-R10.S04-WE-RD-110 → CO-R11.S06-RD-P-100 SS+3d, CO-R11.S06-RD-P-100 FF+3d, CO-R11.S06-SD-170 SS+3d, CO-R11.S06-SD-170 FF+3d, PRO-R11-RD-DL-110 FF+3d |
| CO-R11.S06-RD-P-130 | Fixing of Interlock Tiles for Sidewalks Pavement-[Road 11]-[SW-6] |  |  |  | PRO-R11-RD-DL-120 FF+3d, CO-R11.S06-RD-P-120 SS+3d, CO-R11.S06-RD-P-120 FF+3d, CO-R10.S04-ES-RD-130, CO-R11-PW-TF-100, CO-R11-PW-TF-110, CO-R11-PW-TF-120, CO-R11-SW-TF-100, CO-R11-SW-TF-110, CO-R11-SW-TF-130, CO-R11-SD-TF-100, CO-R11-SD-TF-120, CO-R11-SL-TF-160, CO-R11-SL-TF-170, CO-R11-IR-TF-130, CO-R11-MV-TF-160, CO-R10.S04-WE-RD-130 → PRO-R11-RD-DL-120 FF+3d, CO-R11.S06-RD-P-120 SS+3d, CO-R11.S06-RD-P-120 FF+3d, CO-R11-SW-TF-100, CO-R11-SD-TF-100 |
| 6 | **Road 14 Local 1 ( 584 LM )** |  | 2027-08-14 → 2027-06-19 (-56d) |  |  |
| SW_7 | **SW_7** |  | 2027-08-14 → 2027-06-19 (-56d) |  |  |
| CO-R14.S07-SW-100 | Trench Excavation and Bedding Works for Main Lines of Sewage Network-[Road 14]-[SW-7] |  |  |  | CO-R14.S07-EW-110, ENG-MS-SW-ML-A-110, ENG-SH-SW-ML-A-110, CO-R09.S02-SW-100 → CO-R14.S07-EW-110, ENG-MS-SW-ML-A-110, ENG-SH-SW-ML-A-110 |
| CO-R14.S07-SD-140 | Trench Excavation and Bedding Works for Catch Basins of Storm Drainage Network-[Road 14]-[SW-7] |  |  |  | CO-R14.S07-EW-110, ENG-SH-SD-CB-A-110, ENG-MS-SD-CB-A-110, CO-R14.S07-SD-220, CO-R09.S02-SD-140 → CO-R14.S07-EW-110, ENG-SH-SD-CB-A-110, ENG-MS-SD-CB-A-110, CO-R14.S07-SD-220 |
| IR | **Irrigation Network** |  | 2026-12-19 → 2026-11-17 (-32d) |  |  |
| ML | **Main Line Pipes** |  | 2026-12-19 → 2026-11-17 (-32d) |  |  |
| CO-R14.S07-IR-130 | Trench Backfilling and Compaction Works for Main Lines of Irrigation Network-[Road 14]-[SW-7] |  |  |  | CO-R14.S07-IR-120, CO-R14.S07-IR-110 → CO-R14.S07-IR-110 |
| CO-R14.S07-IR-120 | Installation Works for Main Line Valves of Irrigation Network-[Road 14]-[SW-7] | 2026-12-12 → 2026-11-10 (-32d) | 2026-12-19 → 2026-11-17 (-32d) | -167d → -17d |  |
| SL | **Street Lighting Network** |  | 2027-03-28 → 2026-12-07 (-111d) |  |  |
| LP | **Lighting Poles Works** |  | 2027-03-28 → 2026-11-30 (-118d) |  |  |
| CO-R14.S07-SL-210 | Backfilling Works for Lighting Poles of Street Lighting Network-[Road 14]-[SW-7] |  |  |  | CO-R14.S07-SL-120 SS, CO-R14.S07-SL-120 FF, CO-R09.S02-SL-210 → CO-R14.S07-SL-120 SS, CO-R14.S07-SL-120 FF |
| CO-R14.S07-SL-130 | Installation Works for Lighting Fixtures With Drop Wire of Street Lighting Network-[Road 14]-[SW-7] | 2027-03-04 → 2026-11-10 (-114d) | 2027-03-28 → 2026-11-30 (-118d) | -184d → -87d |  |
| CO-R14.S07-SL-200 | Testing Works for Lighting Poles of Street Lighting Network-[Road 14]-[SW-7] | 2027-03-23 → 2026-11-10 (-133d) | 2027-03-28 → 2026-11-15 (-133d) | -184d → -74d |  |
| DPB | **Distrubution Panel Boards** | 2026-11-03 → 2026-11-10 (+7d) | 2026-11-30 → 2026-12-07 (+7d) |  |  |
| CO-R14.S07-SL-170 | Foundation Excavation Works For Panel Boards of Street Lighting Network-[Road 14]-[SW-7] | 2026-11-03 → 2026-11-10 (+7d) | 2026-11-23 → 2026-11-30 (+7d) | -91d → -97d |  |
| CO-R14.S07-SL-180 | Installation Works for Panel Board Concrete Foundations of Street Lighting Network-[Road 14]-[SW-7] | 2026-11-07 → 2026-11-14 (+7d) | 2026-11-26 → 2026-12-03 (+7d) | -91d → -97d |  |
| CO-R14.S07-SL-220 | A wall of concrete blocks to install the KWH meter of Street Lighting Network-[Road 14]-[SW-7] | 2026-11-07 → 2026-11-14 (+7d) | 2026-11-26 → 2026-12-03 (+7d) | -88d → -94d |  |
| CO-R14.S07-SL-190 | Installation Works for Lighting Panel Boards of Street Lighting Network-[Road 14]-[SW-7] | 2026-11-10 → 2026-11-17 (+7d) | 2026-11-30 → 2026-12-07 (+7d) | -91d → -97d |  |
| TE | **Telecom Network** | 2027-03-24 → 2027-02-08 (-44d) | 2027-05-13 → 2027-03-08 (-66d) |  |  |
| PD | **Ducts Works** | 2027-03-24 → 2027-02-08 (-44d) | 2027-05-05 → 2027-03-08 (-58d) |  |  |
| CO-R14.S07-TE-100 | Trench Excavation and Bedding Works for Ducts of Telecom Network-[Road 14]-[SW-7] | 2027-03-24 → 2027-02-08 (-44d) | 2027-03-27 → 2027-02-10 (-45d) | -244d → -166d |  |
| CO-R14.S07-TE-110 | Pipes Laying Works for Ducts of Telecom Network-[Road 14]-[SW-7] | 2027-04-12 → 2027-02-11 (-60d) | 2027-04-19 → 2027-02-18 (-60d) | -207d → -159d |  |
| CO-R14.S07-TE-120 | Pouring Plain Concrete Above Ducts of Telecom Network-[Road 14]-[SW-7] | 2027-04-20 → 2027-02-20 (-59d) | 2027-04-27 → 2027-02-28 (-58d) | -207d → -159d |  |
| CO-R14.S07-TE-130 | Trench Backfilling and Compaction Works for Ducts of Telecom Network-[Road 14]-[SW-7] | 2027-04-28 → 2027-03-01 (-58d) | 2027-05-05 → 2027-03-08 (-58d) | -207d → -159d |  |
| MH | **Manholes Works** | 2027-04-20 → 2027-02-11 (-68d) | 2027-05-13 → 2027-03-08 (-66d) |  |  |
| CO-R14.S07-TE-140 | Excavation Works for Manholes of Telecom Network-[Road 14]-[SW-7] | 2027-04-20 → 2027-02-11 (-68d) | 2027-04-27 → 2027-02-18 (-68d) | -227d → -166d |  |
| CO-R14.S07-TE-150 | Installation Works for Manholes of Telecom Network-[Road 14]-[SW-7] | 2027-04-28 → 2027-02-20 (-67d) | 2027-05-05 → 2027-02-28 (-66d) | -214d → -159d |  |
| CO-R14.S07-TE-160 | Backfilling Works for Manholes of Telecom Network-[Road 14]-[SW-7] | 2027-05-06 → 2027-03-01 (-66d) | 2027-05-13 → 2027-03-08 (-66d) | -214d → -159d |  |
| RD | **Road Works** |  | 2027-08-14 → 2027-06-19 (-56d) |  |  |
| CO-R14.S07-RD-P-100 | Capping and Subgrade Layer for Road Works-[Road 14]-[SW-7] |  |  |  | ENG-SH-RD-A-100, CO-R14.S07-SD-130, CO-R14.S07-SW-130, CO-R14.S07-SL-160 SS+3d, CO-R14.S07-SL-160 FF+3d, ENG-MS-RD-A-10, CO-R14.S07-TE-130, CO-R14.S07-TE-160 → ENG-SH-RD-A-100, CO-R14.S07-SD-130, CO-R14.S07-SW-130, CO-R14.S07-SL-160 SS+3d, CO-R14.S07-SL-160 FF+3d, ENG-MS-RD-A-10 |
| LS | **Pavement Works** |  | 2027-08-14 → 2027-06-19 (-56d) |  |  |
| CO-R14.S07-RD-P-130 | Fixing of Interlock Tiles for Sidewalks Pavement-[Road 14]-[SW-7] | 2027-08-01 → 2027-06-06 (-56d) | 2027-08-14 → 2027-06-19 (-56d) | -252d → -194d |  |
| SW_8 | **SW_8** |  | 2027-08-14 → 2027-06-19 (-56d) |  |  |
| PW | **Potable Water Network** |  | 2027-01-17 → 2026-12-03 (-45d) |  |  |
| CO-R14.S08-PW-110 | Pipes Laying and accessories for Main Lines of Potable Water Network-[Road 14]-[SW-8] |  |  |  | CO-R14.S08-PW-100, CO-R11.S06-PW-110, PRO-R14-PW-DL-100 FF+3d, PRO-R14-PW-DL-110 FF+3d → CO-R14.S08-PW-100, CO-R11.S06-PW-110, PRO-R14-PW-DL-100 FF+3d |
| CO-R14.S08-PW-130 | Trench Backfilling and Compaction Works for Main Lines of Potable Water Network-[Road 14]-[SW-8] |  |  |  | CO-R14.S08-PW-110, CO-R11.S06-PW-130, CO-R14.S08-PW-220 FF, CO-R14.S08-PW-160 FF → CO-R14.S08-PW-110, CO-R11.S06-PW-130, CO-R14.S08-PW-220 FF |
| FH | **Fire Hydrant** | 2026-12-24 → 2026-11-10 (-44d) | 2027-01-17 → 2026-12-03 (-45d) |  |  |
| CO-R14.S08-PW-140 | Excavation Works for Fire Hydrants of Potable Water Network-[Road 14]-[SW-8] | 2026-12-24 → 2026-11-10 (-44d) | 2026-12-31 → 2026-11-17 (-44d) | -189d → -13d |  |
| CO-R14.S08-PW-150 | Installation Works for Fire Hydrant of Potable Water Network-[Road 14]-[SW-8] | 2027-01-02 → 2026-11-18 (-45d) | 2027-01-09 → 2026-11-25 (-45d) | -189d → -13d |  |
| CO-R14.S08-PW-160 | Trench Backfilling and Compaction Works for Fire Hydrants of Potable Water Network-[Road 14]-[SW-8] | 2027-01-10 → 2026-11-26 (-45d) | 2027-01-17 → 2026-12-03 (-45d) | -189d → -13d |  |
| SL | **Street Lighting Network** |  | 2027-06-12 → 2027-04-20 (-53d) |  |  |
| LP | **Lighting Poles Works** |  | 2027-05-08 → 2027-02-24 (-73d) |  |  |
| CO-R14.S08-SL-200 | Testing Works for Lighting Poles of Street Lighting Network-[Road 14]-[SW-8] | 2027-03-23 → 2026-11-10 (-133d) | 2027-03-30 → 2026-11-17 (-133d) | -138d → -28d |  |
| CO-R14.S08-SL-850 | Installation Works for Lighting Fixtures With Drop Wire of Street Lighting Network-[Road 14]-[SW-8] | 2027-04-18 → 2027-02-03 (-74d) | 2027-05-08 → 2027-02-24 (-73d) | -170.5d → -111.5d |  |
| DPB | **Distrubution Panel Boards** | 2027-04-19 → 2027-02-28 (-50d) | 2027-06-12 → 2027-04-20 (-53d) |  |  |
| CO-R14.S08-SL-DB-640 | Foundation Excavation Works For Panel Boards of Street Lighting Network-[Road 14]-[SW-8] | 2027-04-19 → 2027-02-28 (-50d) | 2027-05-09 → 2027-03-23 (-47d) | -234d → -194d |  |
| CO-R14.S08-SL-220 | A wall of concrete blocks to install the KWH meter of Street Lighting Network-[Road 14]-[SW-8] | 2027-05-03 → 2027-03-17 (-47d) | 2027-06-06 → 2027-04-14 (-53d) | -243d → -203d |  |
| CO-R14.S08-SL-DB-650 | Installation Works for Panel Board Concrete Foundations of Street Lighting Network-[Road 14]-[SW-8] | 2027-05-03 → 2027-03-17 (-47d) | 2027-05-29 → 2027-04-06 (-53d) | -243d → -203d |  |
| CO-R14.S08-SL-DB-660 | Installation Works for Lighting Panel Boards of Street Lighting Network-[Road 14]-[SW-8] | 2027-05-23 → 2027-03-31 (-53d) | 2027-06-12 → 2027-04-20 (-53d) | -248d → -208d |  |

| ID | Task | Start | Finish | Total float | Predecessors |
| --- | --- | --- | --- | --- | --- |
| TE | **Telecom Network** | 2027-03-28 → 2027-02-11 (-45d) | 2027-05-27 → 2027-03-20 (-68d) |  |  |
| PD | **Ducts Works** | 2027-03-28 → 2027-02-11 (-45d) | 2027-05-13 → 2027-03-15 (-59d) |  |  |
| CO-R14.S08-TE-100 | Trench Excavation and Bedding Works for Ducts of Telecom Network-[Road 14]-[SW-8] | 2027-03-28 → 2027-02-11 (-45d) | 2027-03-30 → 2027-02-14 (-44d) | -244d → -162d |  |
| CO-R14.S08-TE-110 | Pipes Laying Works for Ducts of Telecom Network-[Road 14]-[SW-8] | 2027-04-20 → 2027-02-15 (-64d) | 2027-04-27 → 2027-02-23 (-63d) | -213d → -162d |  |
| CO-R14.S08-TE-120 | Pouring Plain Concrete Above Ducts of Telecom Network-[Road 14]-[SW-8] | 2027-04-28 → 2027-02-24 (-63d) | 2027-05-05 → 2027-03-03 (-63d) | -213d → -162d |  |
| CO-R14.S08-TE-130 | Trench Backfilling and Compaction Works for Ducts of Telecom Network-[Road 14]-[SW-8] | 2027-05-06 → 2027-03-04 (-63d) | 2027-05-13 → 2027-03-15 (-59d) | -213d → -162d |  |
| MH | **Manholes Works** | 2027-04-28 → 2027-02-20 (-67d) | 2027-05-27 → 2027-03-20 (-68d) |  |  |
| CO-R14.S08-TE-140 | Excavation Works for Manholes of Telecom Network-[Road 14]-[SW-8] | 2027-04-28 → 2027-02-20 (-67d) | 2027-05-05 → 2027-02-28 (-66d) | -227d → -166d |  |
| CO-R14.S08-TE-150 | Installation Works for Manholes of Telecom Network-[Road 14]-[SW-8] | 2027-05-06 → 2027-03-01 (-66d) | 2027-05-13 → 2027-03-08 (-66d) | -227d → -166d |  |
| CO-R14.S08-TE-160 | Backfilling Works for Manholes of Telecom Network-[Road 14]-[SW-8] | 2027-05-20 → 2027-03-13 (-68d) | 2027-05-27 → 2027-03-20 (-68d) | -227d → -166d |  |
| CO-R14.S08-MV-ML-640 | Trench Excavation and Bedding Works for Medium Voltage Network-[Road 14]-[SW-8] |  |  |  | CO-R14.S08-SD-170 SS+3d, CO-R14.S08-SD-170 FF+3d, CO-R14.S08-EW-110, CO-R14.S08-TE-130 SS+3d, CO-R14.S08-TE-130 FF+3d, CO-R11.S06-MV-100 → CO-R14.S08-SD-170 SS+3d, CO-R14.S08-SD-170 FF+3d, CO-R14.S08-EW-110, CO-R11.S06-MV-100 |
| RD | **Road Works** |  | 2027-08-14 → 2027-06-19 (-56d) |  |  |
| CO-R14.S08-RD-P-100 | Capping and Subgrade Layer for Road Works-[Road 14]-[SW-8] |  |  |  | CO-R14.S08-SD-130, CO-R14.S08-PW-130, CO-R14.S08-PW-160, CO-R14.S08-SL-660 SS+3d, CO-R14.S08-SL-660 FF+3d, PRO-R14-RD-DL-100 FF+3d, CO-R14.S08-TE-130, CO-R14.S08-TE-160, CO-R14.S08-MV-ML-660 SS+3d, CO-R14.S08-MV-ML-660 FF+3d, CO-R14.S08-SW-130 → CO-R14.S08-SD-130, CO-R14.S08-PW-130, CO-R14.S08-SL-660 SS+3d, CO-R14.S08-SL-660 FF+3d, PRO-R14-RD-DL-100 FF+3d, CO-R14.S08-MV-ML-660 SS+3d, CO-R14.S08-MV-ML-660 FF+3d, CO-R14.S08-SW-130 |
| LS | **Pavement Works** |  | 2027-08-14 → 2027-06-19 (-56d) |  |  |
| CO-R14.S08-RD-P-130 | Fixing of Interlock Tiles for Sidewalks Pavement-[Road 14]-[SW-8] | 2027-08-01 → 2027-06-06 (-56d) | 2027-08-14 → 2027-06-19 (-56d) | -250d → -192d |  |
| 7 | **Road 15 Local 1 ( 556 LM )** |  | 2027-01-13 → 2027-01-06 (-7d) |  |  |
| SW_9 | **SW_9** |  | 2026-12-14 → 2026-12-21 (+7d) |  |  |
| IR | **Irrigation Network** |  | 2026-12-14 → 2026-12-21 (+7d) |  |  |
| ML | **Main Line Pipes** |  | 2026-12-14 → 2026-12-21 (+7d) |  |  |
| CO-R15.S09-IR-130 | Trench Backfilling and Compaction Works for Main Lines of Irrigation Network-[Road 15]-[SW-9] |  |  |  | CO-R15.S09-IR-120, CO-R15.S09-IR-110 → CO-R15.S09-IR-110 |
| CO-R15.S09-IR-120 | Installation Works for Main Line Valves of Irrigation Network-[Road 15]-[SW-9] | 2026-12-07 → 2026-12-14 (+7d) | 2026-12-14 → 2026-12-21 (+7d) | -235.5d → -46d |  |
| CO-R15.S09-TE-110 | Pipes Laying Works for Ducts of Telecom Network-[Road 15]-[SW-9] |  |  |  | CO-R15.S09-TE-100, CO-R14.S07-TE-110 → CO-R15.S09-TE-100 |
| CO-R15.S09-TE-120 | Pouring Plain Concrete Above Ducts of Telecom Network-[Road 15]-[SW-9] |  |  |  | CO-R15.S09-TE-110, CO-R14.S07-TE-120 → CO-R15.S09-TE-110 |
| CO-R15.S09-TE-130 | Trench Backfilling and Compaction Works for Ducts of Telecom Network-[Road 15]-[SW-9] |  |  |  | CO-R15.S09-TE-120, CO-R14.S07-TE-130 → CO-R15.S09-TE-120 |
| CO-R15.S09-TE-140 | Excavation Works for Manholes of Telecom Network-[Road 15]-[SW-9] |  |  |  | CO-R14.S07-TE-140, CO-R15.S09-TE-100 → CO-R15.S09-TE-100 |
| CO-R15.S09-TE-150 | Installation Works for Manholes of Telecom Network-[Road 15]-[SW-9] |  |  |  | CO-R15.S09-TE-140, CO-R14.S07-TE-150 → CO-R15.S09-TE-140 |
| CO-R15.S09-TE-160 | Backfilling Works for Manholes of Telecom Network-[Road 15]-[SW-9] |  |  |  | CO-R15.S09-TE-150, CO-R14.S07-TE-160 → CO-R15.S09-TE-150 |
| CO-R15.S09-RD-P-130 | Fixing of Interlock Tiles for Sidewalks Pavement-[Road 15]-[SW-9] |  |  |  | CO-R15.S09-RD-P-120 SS+3d, CO-R15.S09-RD-P-120 FF+3d, CO-R14.S07-RD-P-130, CO-R15-PW-TF-100, CO-R15-PW-TF-110, CO-R15-PW-TF-120, CO-R15-SW-TF-100, CO-R15-SW-TF-110, CO-R15-SW-TF-130, CO-R15-SD-TF-100, CO-R15-SL-TF-200, CO-R15-SL-TF-210, CO-R15-IR-TF-150, CO-R15-MV-TF-200 → CO-R15.S09-RD-P-120 SS+3d, CO-R15.S09-RD-P-120 FF+3d, CO-R15-SW-TF-100, CO-R15-SD-TF-100 |
| SW_10 | **SW_10** |  | 2027-01-13 → 2027-01-06 (-7d) |  |  |
| SL | **Street Lighting Network** |  | 2027-01-04 → 2027-01-06 (+2d) |  |  |
| LP | **Lighting Poles Works** |  | 2027-01-04 → 2027-01-06 (+2d) |  |  |
| CO-R15.S10-SL-200 | Testing Works for Lighting Poles of Street Lighting Network-[Road 15]-[SW-10] | 2026-12-15 → 2026-11-10 (-35d) | 2026-12-20 → 2026-11-15 (-35d) | -177d → -147d |  |
| CO-R15.S10-SL-130 | Installation Works for Lighting Fixtures With Drop Wire of Street Lighting Network-[Road 15]-[SW-10] | 2026-12-15 → 2026-12-17 (+2d) | 2027-01-04 → 2027-01-06 (+2d) | -190d → -192d |  |
| DPB | **Distrubution Panel Boards** | 2026-11-03 → 2026-11-10 (+7d) | 2026-11-30 → 2026-12-07 (+7d) |  |  |
| CO-R15.S10-SL-170 | Foundation Excavation Works For Panel Boards of Street Lighting Network-[Road 15]-[SW-10] | 2026-11-03 → 2026-11-10 (+7d) | 2026-11-23 → 2026-11-30 (+7d) | -77d → -83d |  |
| CO-R15.S10-SL-180 | Installation Works for Panel Board Concrete Foundations of Street Lighting Network-[Road 15]-[SW-10] | 2026-11-07 → 2026-11-14 (+7d) | 2026-11-26 → 2026-12-03 (+7d) | -77d → -83d |  |
| CO-R15.S10-SL-220 | A wall of concrete blocks to install the KWH meter of Street Lighting Network-[Road 15]-[SW-10] | 2026-11-07 → 2026-11-14 (+7d) | 2026-11-26 → 2026-12-03 (+7d) | -74d → -80d |  |
| CO-R15.S10-SL-190 | Installation Works for Lighting Panel Boards of Street Lighting Network-[Road 15]-[SW-10] | 2026-11-10 → 2026-11-17 (+7d) | 2026-11-30 → 2026-12-07 (+7d) | -77d → -83d |  |
| PW | **Potable Water Network** |  | 2027-01-13 → 2026-11-30 (-44d) |  |  |
| CO-R15.S10-PW-110 | Pipes Laying and accessories for Main Lines of Potable Water Network-[Road 15]-[SW-10] |  |  |  | CO-R15.S10-PW-100, CO-R14.S08-PW-110 SS, PRO-R15-PW-DL-100 FF+3d, PRO-R15-PW-DL-110 FF+3d → CO-R15.S10-PW-100, CO-R14.S08-PW-110 SS, PRO-R15-PW-DL-100 FF+3d |
| CO-R15.S10-PW-130 | Trench Backfilling and Compaction Works for Main Lines of Potable Water Network-[Road 15]-[SW-10] |  |  |  | CO-R15.S10-PW-110, CO-R14.S08-PW-130 SS, CO-R15.S10-PW-160 FF, CO-R15.S10-PW-210 FF → CO-R15.S10-PW-110, CO-R14.S08-PW-130 SS |
| VC | **Valve Chamber** | 2026-12-24 → 2026-11-10 (-44d) | 2026-12-30 → 2026-11-16 (-44d) |  |  |
| CO-R15.S10-PW-210 | Installation Works for Main Line Valves and Valve Chambers of Potable Water Network-[Road 15]-[SW-10] | 2026-12-24 → 2026-11-10 (-44d) | 2026-12-30 → 2026-11-16 (-44d) | -84d → 2d |  |
| FH | **Fire Hydrant** | 2026-12-24 → 2026-11-10 (-44d) | 2027-01-13 → 2026-11-30 (-44d) |  |  |
| CO-R15.S10-PW-140 | Excavation Works for Fire Hydrants of Potable Water Network-[Road 15]-[SW-10] | 2026-12-24 → 2026-11-10 (-44d) | 2026-12-30 → 2026-11-16 (-44d) | -96d → -22d |  |
| CO-R15.S10-PW-150 | Installation Works for Fire Hydrant of Potable Water Network-[Road 15]-[SW-10] | 2026-12-31 → 2026-11-17 (-44d) | 2027-01-06 → 2026-11-23 (-44d) | -96d → -22d |  |
| CO-R15.S10-PW-160 | Trench Backfilling and Compaction Works for Fire Hydrants of Potable Water Network-[Road 15]-[SW-10] | 2027-01-07 → 2026-11-24 (-44d) | 2027-01-13 → 2026-11-30 (-44d) | -96d → -22d |  |
| CO-R15.S10-TE-110 | Pipes Laying Works for Ducts of Telecom Network-[Road 15]-[SW-10] |  |  |  | CO-R15.S10-TE-100, CO-R14.S08-TE-110, PRO-R15-TE-DL-100 FF+3d → CO-R15.S10-TE-100, PRO-R15-TE-DL-100 FF+3d |
| CO-R15.S10-TE-120 | Pouring Plain Concrete Above Ducts of Telecom Network-[Road 15]-[SW-10] |  |  |  | CO-R15.S10-TE-110, CO-R14.S08-TE-120 → CO-R15.S10-TE-110 |
| CO-R15.S10-TE-130 | Trench Backfilling and Compaction Works for Ducts of Telecom Network-[Road 15]-[SW-10] |  |  |  | CO-R15.S10-TE-120, CO-R14.S08-TE-130 → CO-R15.S10-TE-120 |
| CO-R15.S10-TE-140 | Excavation Works for Manholes of Telecom Network-[Road 15]-[SW-10] |  |  |  | CO-R14.S08-TE-140, CO-R15.S09-TE-140 SS, CO-R15.S10-TE-100 SS+6d, CO-R15.S10-TE-100 FF+6d → CO-R15.S09-TE-140 SS, CO-R15.S10-TE-100 SS+6d, CO-R15.S10-TE-100 FF+6d |
| CO-R15.S10-TE-150 | Installation Works for Manholes of Telecom Network-[Road 15]-[SW-10] |  |  |  | CO-R15.S10-TE-140, CO-R14.S08-TE-150, PRO-R15-TE-DL-110 FF+3d → CO-R15.S10-TE-140, PRO-R15-TE-DL-110 FF+3d |
| CO-R15.S10-TE-160 | Backfilling Works for Manholes of Telecom Network-[Road 15]-[SW-10] |  |  |  | CO-R15.S10-TE-150, CO-R14.S08-TE-160 → CO-R15.S10-TE-150 |
| CO-R15.S10-RD-P-100 | Capping and Subgrade Layer for Road Works-[Road 15]-[SW-10] |  |  |  | CO-R15.S10-SD-130, CO-R15.S10-SW-130, CO-R15.S10-PW-130, CO-R15.S10-PW-160, PRO-R15-RD-DL-100 FF+3d, CO-R15.S10-TE-130, CO-R15.S10-TE-160, CO-R15.S10-SL-160 SS+3d, CO-R15.S10-SL-160 FF+3d → CO-R15.S10-SD-130, CO-R15.S10-SW-130, CO-R15.S10-PW-130, PRO-R15-RD-DL-100 FF+3d, CO-R15.S10-TE-130, CO-R15.S10-TE-160, CO-R15.S10-SL-160 SS+3d, CO-R15.S10-SL-160 FF+3d |
| CO-R15.S10-RD-P-130 | Fixing of Interlock Tiles for Sidewalks Pavement-[Road 15]-[SW-10] |  |  |  | CO-R15.S10-RD-P-120 SS+3d, CO-R15.S10-RD-P-120 FF+3d, CO-R14.S08-RD-P-130, PRO-R15-RD-DL-120 FF+3d, CO-R15-PW-TF-100, CO-R15-PW-TF-110, CO-R15-PW-TF-120, CO-R15-SW-TF-100, CO-R15-SW-TF-110, CO-R15-SW-TF-130, CO-R15-SD-TF-100, CO-R15-SD-TF-120, CO-R15-SL-TF-200, CO-R15-SL-TF-210, CO-R15-IR-TF-150, CO-R15-MV-TF-200 → CO-R15.S10-RD-P-120 SS+3d, CO-R15.S10-RD-P-120 FF+3d, PRO-R15-RD-DL-120 FF+3d, CO-R15-SW-TF-100, CO-R15-SD-TF-100, CO-R15-SD-TF-120 |
| 8 | **Road 16 Local 1 ( 527 LM )** |  | 2027-01-20 → 2027-01-30 (+10d) |  |  |
| SW_13 | **SW_11** |  | 2026-12-08 → 2026-12-15 (+7d) |  |  |
| IR | **Irrigation Network** |  | 2026-12-08 → 2026-12-15 (+7d) |  |  |
| ML | **Main Line Pipes** |  | 2026-12-08 → 2026-12-15 (+7d) |  |  |
| CO-R16.S11-IR-130 | Trench Backfilling and Compaction Works for Main Lines of Irrigation Network-[Road 16]-[SW-11] |  |  |  | CO-R16.S11-IR-120, CO-R16.S11-IR-110 → CO-R16.S11-IR-110 |
| CO-R16.S11-IR-120 | Installation Works for Main Line Valves of Irrigation Network-[Road 16]-[SW-11] | 2026-12-01 → 2026-12-08 (+7d) | 2026-12-08 → 2026-12-15 (+7d) | -104d → -41d |  |
| CO-R16.S11-RD-P-130 | Fixing of Interlock Tiles for Sidewalks Pavement-[Road 16]-[SW-11] |  |  |  | CO-R16.S11-RD-P-120 SS+3d, CO-R16.S11-RD-P-120 FF+3d, CO-R15.S09-RD-P-130 SS, CO-R16-PW-TF-100, CO-R16-PW-TF-110, CO-R16-PW-TF-120, CO-R16-SW-TF-100, CO-R16-SW-TF-110, CO-R16-SW-TF-130, CO-R16-SD-TF-100, CO-R16-SL-TF-220, CO-R16-SL-TF-230 SS, CO-R16-IR-TF-160, CO-R16-MV-TF-220 → CO-R16.S11-RD-P-120 SS+3d, CO-R16.S11-RD-P-120 FF+3d, CO-R15.S09-RD-P-130 SS, CO-R16-SW-TF-100 |
| SW_14 | **SW_12** |  | 2027-01-20 → 2027-01-30 (+10d) |  |  |
| PW | **Potable Water Network** |  | 2027-01-20 → 2027-01-30 (+10d) |  |  |
| CO-R16.S12-PW-110 | Pipes Laying and accessories for Main Lines of Potable Water Network-[Road 16]-[SW-12] |  |  |  | CO-R16.S12-PW-100, CO-R15.S10-PW-110, PRO-R16-PW-DL-100 FF+3d, PRO-R16-PW-DL-110 FF+3d → CO-R16.S12-PW-100, CO-R15.S10-PW-110, PRO-R16-PW-DL-100 FF+3d |
| CO-R16.S12-PW-130 | Trench Backfilling and Compaction Works for Main Lines of Potable Water Network-[Road 16]-[SW-12] |  |  |  | CO-R16.S12-PW-110, CO-R15.S10-PW-130, CO-R16.S12-PW-210 FF → CO-R16.S12-PW-110, CO-R15.S10-PW-130 |
| VC | **Valve Chamber** | 2026-12-24 → 2027-01-24 (+31d) | 2026-12-30 → 2027-01-30 (+31d) |  |  |
| CO-R16.S12-PW-210 | Installation Works for Main Line Valves and Valve Chambers of Potable Water Network-[Road 16]-[SW-12] | 2026-12-24 → 2027-01-24 (+31d) | 2026-12-30 → 2027-01-30 (+31d) | -74d → -62d | CO-R16.S12-PW-110 → CO-R16.S12-PW-110, PRO-R11-PW-DL-110 |
| FH | **Fire Hydrant** | 2026-12-24 → 2026-11-10 (-44d) | 2027-01-20 → 2026-12-07 (-44d) |  |  |
| CO-R16.S12-PW-140 | Excavation Works for Fire Hydrants of Potable Water Network-[Road 16]-[SW-12] | 2026-12-24 → 2026-11-10 (-44d) | 2026-12-30 → 2026-11-16 (-44d) | -86d → -16d |  |

| ID | Task | Start | Finish | Total float | Predecessors |
| --- | --- | --- | --- | --- | --- |
| CO-R16.S12-PW-150 | Installation Works for Fire Hydrant of Potable Water Network-[Road 16]-[SW-12] | 2027-01-07 → 2026-11-24 (-44d) | 2027-01-13 → 2026-11-30 (-44d) | -92d → -22d |  |
| CO-R16.S12-PW-160 | Trench Backfilling and Compaction Works for Fire Hydrants of Potable Water Network-[Road 16]-[SW-12] | 2027-01-14 → 2026-12-01 (-44d) | 2027-01-20 → 2026-12-07 (-44d) | -92d → -22d |  |
| CO-R16.S12-RD-P-100 | Capping and Subgrade Layer for Road Works-[Road 16]-[SW-12] |  |  |  | CO-R16.S12-SD-130, CO-R16.S12-SW-130, CO-R16.S12-PW-130, CO-R16.S12-PW-160, PRO-R16-RD-DL-100 FF+3d, CO-R16.S12-TE-130, CO-R16.S12-TE-160 → CO-R16.S12-SD-130, CO-R16.S12-SW-130, CO-R16.S12-PW-130, PRO-R16-RD-DL-100 FF+3d, CO-R16.S12-TE-130, CO-R16.S12-TE-160 |
| CO-R16.S12-RD-P-130 | Fixing of Interlock Tiles for Sidewalks Pavement-[Road 16]-[SW-12] |  |  |  | CO-R16.S12-RD-P-120 SS+3d, CO-R16.S12-RD-P-120 FF+3d, CO-R15.S10-RD-P-130, PRO-R16-RD-DL-120 FF+3d, CO-R16-PW-TF-100, CO-R16-PW-TF-110, CO-R16-PW-TF-120, CO-R16-SW-TF-100, CO-R16-SW-TF-110, CO-R16-SW-TF-130, CO-R16-SD-TF-100, CO-R16-SD-TF-120, CO-R16-SL-TF-220, CO-R16-SL-TF-230, CO-R16-IR-TF-160, CO-R16-MV-TF-220 → CO-R16.S12-RD-P-120 SS+3d, CO-R16.S12-RD-P-120 FF+3d, CO-R15.S10-RD-P-130, PRO-R16-RD-DL-120 FF+3d, CO-R16-SW-TF-100, CO-R16-SD-TF-120 |
| 9 | **Road 17 Local 1 ( 500 LM )** |  | 2027-06-05 → 2026-12-26 (-161d) |  |  |
| SW_15 | **SW_13** |  | 2026-12-02 → 2026-12-09 (+7d) |  |  |
| IR | **Irrigation Network** |  | 2026-12-02 → 2026-12-09 (+7d) |  |  |
| ML | **Main Line Pipes** |  | 2026-12-02 → 2026-12-09 (+7d) |  |  |
| CO-R17.S13-IR-130 | Trench Backfilling and Compaction Works for Main Lines of Irrigation Network-[Road 17]-[SW-13] |  |  |  | CO-R17.S13-IR-120, CO-R17.S13-IR-110 → CO-R17.S13-IR-110 |
| CO-R17.S13-IR-120 | Installation Works for Main Line Valves of Irrigation Network-[Road 17]-[SW-13] | 2026-11-25 → 2026-12-02 (+7d) | 2026-12-02 → 2026-12-09 (+7d) | -225.5d → -36d |  |
| CO-R17.S13-RD-P-130 | Fixing of Interlock Tiles for Sidewalks Pavement-[Road 17]-[SW-13] |  |  |  | CO-R17.S13-RD-P-120 SS+3d, CO-R17.S13-RD-P-120 FF+3d, CO-R16.S11-RD-P-130, CO-R17-PW-TF-100, CO-R17-PW-TF-110, CO-R17-PW-TF-120, CO-R17-SW-TF-100, CO-R17-SW-TF-110, CO-R17-SW-TF-130, CO-R17-SD-TF-100, CO-R17-SL-TF-240, CO-R17-SL-TF-250, CO-R17-IR-TF-170, CO-R17-MV-TF-240 → CO-R17.S13-RD-P-120 SS+3d, CO-R17.S13-RD-P-120 FF+3d, CO-R16.S11-RD-P-130, CO-R17-SW-TF-100 |
| SW_16 | **SW_14** |  | 2027-06-05 → 2026-12-26 (-161d) |  |  |
| SL | **Street Lighting Network** |  | 2026-12-23 → 2026-12-26 (+3d) |  |  |
| LP | **Lighting Poles Works** |  | 2026-12-23 → 2026-12-26 (+3d) |  |  |
| CO-R17.S14-SL-200 | Testing Works for Lighting Poles of Street Lighting Network-[Road 17]-[SW-14] | 2026-12-03 → 2026-11-10 (-23d) | 2026-12-08 → 2026-11-15 (-23d) | -82d → -62d |  |
| CO-R17.S14-SL-130 | Installation Works for Lighting Fixtures With Drop Wire of Street Lighting Network-[Road 17]-[SW-14] | 2026-12-03 → 2026-12-06 (+3d) | 2026-12-23 → 2026-12-26 (+3d) | -95d → -97d |  |
| DPB | **Distrubution Panel Boards** | 2026-11-03 → 2026-11-10 (+7d) | 2026-11-30 → 2026-12-07 (+7d) |  |  |
| CO-R17.S14-SL-170 | Foundation Excavation Works For Panel Boards of Street Lighting Network-[Road 17]-[SW-14] | 2026-11-03 → 2026-11-10 (+7d) | 2026-11-23 → 2026-11-30 (+7d) | -53d → -59d |  |
| CO-R17.S14-SL-180 | Installation Works for Panel Board Concrete Foundations of Street Lighting Network-[Road 17]-[SW-14] | 2026-11-07 → 2026-11-14 (+7d) | 2026-11-26 → 2026-12-03 (+7d) | -53d → -59d |  |
| CO-R17.S14-SL-220 | A wall of concrete blocks to install the KWH meter of Street Lighting Network-[Road 17]-[SW-14] | 2026-11-07 → 2026-11-14 (+7d) | 2026-11-26 → 2026-12-03 (+7d) | -50d → -56d |  |
| CO-R17.S14-SL-190 | Installation Works for Lighting Panel Boards of Street Lighting Network-[Road 17]-[SW-14] | 2026-11-10 → 2026-11-17 (+7d) | 2026-11-30 → 2026-12-07 (+7d) | -53d → -59d |  |
| PW | **Potable Water Network** |  | 2027-01-27 → 2026-12-14 (-44d) |  |  |
| CO-R17.S14-PW-110 | Pipes Laying and accessories for Main Lines of Potable Water Network-[Road 17]-[SW-14] |  |  |  | CO-R17.S14-PW-100, CO-R16.S12-PW-110, PRO-R17-PW-DL-100 FF+3d, PRO-R17-PW-DL-110 FF+3d → CO-R17.S14-PW-100, CO-R16.S12-PW-110, PRO-R17-PW-DL-100 FF+3d |
| CO-R17.S14-PW-130 | Trench Backfilling and Compaction Works for Main Lines of Potable Water Network-[Road 17]-[SW-14] |  |  |  | CO-R17.S14-PW-110 SS+3d, CO-R17.S14-PW-110 FF+3d, CO-R16.S12-PW-130, CO-R17.S14-PW-210 FF → CO-R17.S14-PW-110 SS+3d, CO-R17.S14-PW-110 FF+3d, CO-R16.S12-PW-130 |
| VC | **Valve Chamber** | 2026-12-24 → 2026-11-10 (-44d) | 2026-12-30 → 2026-11-16 (-44d) |  |  |
| CO-R17.S14-PW-210 | Installation Works for Main Line Valves and Valve Chambers of Potable Water Network-[Road 17]-[SW-14] | 2026-12-24 → 2026-11-10 (-44d) | 2026-12-30 → 2026-11-16 (-44d) | -64d → 2d |  |
| FH | **Fire Hydrant** | 2026-12-24 → 2026-11-10 (-44d) | 2027-01-27 → 2026-12-14 (-44d) |  |  |
| CO-R17.S14-PW-140 | Excavation Works for Fire Hydrants of Potable Water Network-[Road 17]-[SW-14] | 2026-12-24 → 2026-11-10 (-44d) | 2026-12-30 → 2026-11-16 (-44d) | -76d → -10d |  |
| CO-R17.S14-PW-150 | Installation Works for Fire Hydrant of Potable Water Network-[Road 17]-[SW-14] | 2027-01-14 → 2026-12-01 (-44d) | 2027-01-20 → 2026-12-07 (-44d) | -88d → -22d |  |
| CO-R17.S14-PW-160 | Trench Backfilling and Compaction Works for Fire Hydrants of Potable Water Network-[Road 17]-[SW-14] | 2027-01-21 → 2026-12-08 (-44d) | 2027-01-27 → 2026-12-14 (-44d) | -88d → -22d |  |
| TE | **Telecom Network** |  | 2027-06-05 → 2026-12-03 (-184d) |  |  |
| MH | **Manholes Works** | 2027-05-06 → 2026-11-10 (-177d) | 2027-06-05 → 2026-12-03 (-184d) |  |  |
| CO-R17.S14-TE-140 | Excavation Works for Manholes of Telecom Network-[Road 17]-[SW-14] | 2027-05-06 → 2026-11-10 (-177d) | 2027-05-13 → 2026-11-17 (-177d) | -227d → -79d |  |
| CO-R17.S14-TE-150 | Installation Works for Manholes of Telecom Network-[Road 17]-[SW-14] | 2027-05-20 → 2026-11-18 (-183d) | 2027-05-27 → 2026-11-25 (-183d) | -227d → -79d |  |
| CO-R17.S14-TE-160 | Backfilling Works for Manholes of Telecom Network-[Road 17]-[SW-14] | 2027-05-29 → 2026-11-26 (-184d) | 2027-06-05 → 2026-12-03 (-184d) | -227d → -79d |  |
| CO-R17.S14-RD-P-100 | Capping and Subgrade Layer for Road Works-[Road 17]-[SW-14] |  |  |  | CO-R17.S14-SD-130, CO-R17.S14-SW-130, CO-R17.S14-PW-130, CO-R17.S14-PW-160, PRO-R17-RD-DL-120 FF+3d, CO-R17.S14-TE-130, CO-R17.S14-TE-160, CO-R17.S14-SL-160 SS+3d, CO-R17.S14-SL-160 FF+3d → CO-R17.S14-SD-130, CO-R17.S14-SW-130, CO-R17.S14-PW-130, PRO-R17-RD-DL-120 FF+3d, CO-R17.S14-TE-130, CO-R17.S14-SL-160 SS+3d, CO-R17.S14-SL-160 FF+3d |
| CO-R17.S14-RD-P-130 | Fixing of Interlock Tiles for Sidewalks Pavement-[Road 17]-[SW-14] |  |  |  | CO-R17.S14-RD-P-120 SS+3d, CO-R17.S14-RD-P-120 FF+3d, CO-R16.S12-RD-P-130, PRO-R17-RD-DL-100 FF+3d, CO-R17-PW-TF-100, CO-R17-PW-TF-110, CO-R17-PW-TF-120, CO-R17-SW-TF-100, CO-R17-SW-TF-110, CO-R17-SW-TF-130, CO-R17-SD-TF-100, CO-R17-SD-TF-120, CO-R17-SL-TF-240, CO-R17-SL-TF-250, CO-R17-IR-TF-170, CO-R17-MV-TF-240 → CO-R17.S14-RD-P-120 SS+3d, CO-R17.S14-RD-P-120 FF+3d, CO-R16.S12-RD-P-130, PRO-R17-RD-DL-100 FF+3d, CO-R17-SW-TF-100, CO-R17-SD-TF-120 |
| 1 | **Road 18 Local 1 ( 479 LM )** |  | 2026-12-17 → 2026-12-20 (+3d) |  |  |
| SW_15 | **SW_15** |  | 2026-11-26 → 2026-12-03 (+7d) |  |  |
| IR | **Irrigation Network** |  | 2026-11-26 → 2026-12-03 (+7d) |  |  |
| ML | **Main Line Pipes** |  | 2026-11-26 → 2026-12-03 (+7d) |  |  |
| CO-R18.S15-IR-170 | Trench Backfilling and Compaction Works for Main Lines of Irrigation Network-[Road 18]-[SW-15] |  |  |  | CO-R18.S15-IR-160, CO-R18.S15-IR-150 → CO-R18.S15-IR-150 |
| CO-R18.S15-IR-160 | Installation Works for Main Line Valves of Irrigation Network-[Road 18]-[SW-15] | 2026-11-19 → 2026-11-26 (+7d) | 2026-11-26 → 2026-12-03 (+7d) | -220.5d → -31d |  |
| SW_16 | **SW_16** |  | 2026-12-17 → 2026-12-20 (+3d) |  |  |
| SL | **Street Lighting Network** |  | 2026-12-17 → 2026-12-20 (+3d) |  |  |
| LP | **Lighting Poles Works** |  | 2026-12-17 → 2026-12-20 (+3d) |  |  |
| CO-R18.S16-SL-200 | Testing Works for Lighting Poles of Street Lighting Network-[Road 18]-[SW-16] | 2026-11-28 → 2026-11-10 (-18d) | 2026-12-02 → 2026-11-15 (-17d) | -53.25d → -38.25d |  |
| CO-R18.S16-SL-130 | Installation Works for Lighting Fixtures With Drop Wire of Street Lighting Network-[Road 18]-[SW-16] | 2026-11-28 → 2026-11-30 (+2d) | 2026-12-17 → 2026-12-20 (+3d) | -66.25d → -68.25d |  |
| DPB | **Distrubution Panel Boards** | 2026-11-03 → 2026-11-10 (+7d) | 2026-11-30 → 2026-12-07 (+7d) |  |  |
| CO-R18.S16-SL-170 | Foundation Excavation Works For Panel Boards of Street Lighting Network-[Road 18]-[SW-16] | 2026-11-03 → 2026-11-10 (+7d) | 2026-11-23 → 2026-11-30 (+7d) | -53d → -59d |  |
| CO-R18.S16-SL-180 | Installation Works for Panel Board Concrete Foundations of Street Lighting Network-[Road 18]-[SW-16] | 2026-11-07 → 2026-11-14 (+7d) | 2026-11-26 → 2026-12-03 (+7d) | -53d → -59d |  |
| CO-R18.S16-SL-220 | A wall of concrete blocks to install the KWH meter of Street Lighting Network-[Road 18]-[SW-16] | 2026-11-07 → 2026-11-14 (+7d) | 2026-11-26 → 2026-12-03 (+7d) | -50d → -56d |  |
| CO-R18.S16-SL-190 | Installation Works for Lighting Panel Boards of Street Lighting Network-[Road 18]-[SW-16] | 2026-11-10 → 2026-11-17 (+7d) | 2026-11-30 → 2026-12-07 (+7d) | -53d → -59d |  |
| PW | **Potable Water Network** |  | 2026-11-23 → 2026-11-30 (+7d) |  |  |
| CO-R18.S16-PW-280 | Trench Backfilling and Compaction Works for Main Lines of Potable Water Network-[Road 18]-[SW-16] |  |  |  | CO-R18.S16-PW-240 SS+3d, CO-R18.S16-PW-240 FF+3d, CO-R18.S16-PW-330 FF → CO-R18.S16-PW-240 SS+3d, CO-R18.S16-PW-240 FF+3d |
| VC | **Valve Chamber** | 2026-11-03 → 2026-11-10 (+7d) | 2026-11-09 → 2026-11-16 (+7d) |  |  |
| CO-R18.S16-PW-330 | Installation Works for Main Line Valves and Valve Chambers of Potable Water Network-[Road 18]-[SW-16] | 2026-11-03 → 2026-11-10 (+7d) | 2026-11-09 → 2026-11-16 (+7d) | 32d → 2d |  |
| FH | **Fire Hydrant** | 2026-11-03 → 2026-11-10 (+7d) | 2026-11-23 → 2026-11-30 (+7d) |  |  |
| CO-R18.S16-PW-250 | Excavation Works for Fire Hydrants of Potable Water Network-[Road 18]-[SW-16] | 2026-11-03 → 2026-11-10 (+7d) | 2026-11-09 → 2026-11-16 (+7d) | 20d → -10d |  |
| CO-R18.S16-PW-260 | Installation Works for Fire Hydrant of Potable Water Network-[Road 18]-[SW-16] | 2026-11-10 → 2026-11-17 (+7d) | 2026-11-16 → 2026-11-23 (+7d) | 20d → -10d |  |
| CO-R18.S16-PW-270 | Trench Backfilling and Compaction Works for Fire Hydrants of Potable Water Network-[Road 18]-[SW-16] | 2026-11-17 → 2026-11-24 (+7d) | 2026-11-23 → 2026-11-30 (+7d) | 20d → -10d |  |
| CO-R18.S16-RD-P-160 | Capping and Subgrade Layer for Road Works-[Road 18]-[SW-16] |  |  |  | CO-R18.S16-SD-250, CO-R18.S16-SW-240, CO-R18.S16-PW-280, CO-R18.S16-PW-270, CO-R18.S16-TE-190, CO-R18.S16-TE-220, CO-R18.S16-SL-160 SS+3d, CO-R18.S16-SL-160 FF+3d → CO-R18.S16-SD-250, CO-R18.S16-SW-240, CO-R18.S16-PW-280, CO-R18.S16-TE-190, CO-R18.S16-TE-220, CO-R18.S16-SL-160 SS+3d, CO-R18.S16-SL-160 FF+3d |
| 3 | **Finishes for Infrastructure Networks** |  | 2027-10-25 → 2027-09-21 (-34d) |  |  |
| 1 | **Phase 2 Block "J"** |  | 2027-10-25 → 2027-09-21 (-34d) |  |  |
| 2 | **Road 09 Local 2 ( 2278 LM )** |  | 2027-10-06 → 2027-09-02 (-34d) |  |  |
| 10 | **Sewage Network** |  | 2027-06-26 → 2027-04-25 (-62d) |  |  |
| TF | **Testing and Finishes** |  | 2027-06-26 → 2027-04-25 (-62d) |  |  |
| CO-R09-SW-TF-100 | Final Testing For Main Line of Sewage Network-[Road 09] |  | 2027-06-08 → 2027-04-07 (-62d) | -258d → -209d |  |
| CO-R09-SW-TF-110 | Install Manhole Cover Works for External Finishes of Sewage Network-[Road 09] | 2027-06-09 → 2027-04-08 (-62d) | 2027-06-22 → 2027-04-21 (-62d) | -253d → -195d |  |
| CO-R09-SW-TF-120 | Main Manhole Internal Finishes (Benching + Insulation) of Sewage Network-[Road 09] | 2027-06-13 → 2027-04-12 (-62d) | 2027-06-26 → 2027-04-25 (-62d) | -240d → -182d |  |

| ID | Task | Start | Finish | Total float | Predecessors |
| --- | --- | --- | --- | --- | --- |
| 11 | **Storm Drainage Network** | 2027-05-06 → 2027-03-08 (-59d) | 2027-07-11 → 2027-05-10 (-62d) |  |  |
| TF | **Testing and Finishes** | 2027-05-06 → 2027-03-08 (-59d) | 2027-07-11 → 2027-05-10 (-62d) |  |  |
| CO-R09-SD-TF-110 | Install Catch Basin Cover Works for External Finishes of Storm Drainage Network-[Road 09] | 2027-05-06 → 2027-03-08 (-59d) | 2027-05-30 → 2027-03-29 (-62d) | -233d → -175d |  |
| CO-R09-SD-TF-100 | Testing Work for Pipes of Storm Drainage Network-[Road 09] | 2027-05-26 → 2027-03-25 (-62d) | 2027-06-08 → 2027-04-07 (-62d) | -258d → -209d |  |
| CO-R09-SD-TF-120 | Main Manhole Internal Finishes (Benching + Insulation ) for Storm Drainage Network-[Road 09] | 2027-06-23 → 2027-04-22 (-62d) | 2027-07-11 → 2027-05-10 (-62d) | -253d → -195d |  |
| CO-R09-SD-TF-130 | Catch Basin Internal Finishes (Benching + Insulation ) for Storm Drainage Network-[Road 09] | 2027-06-23 → 2027-04-22 (-62d) | 2027-07-11 → 2027-05-10 (-62d) | -191d → -140d |  |
| 9 | **Potable Water Network** | 2027-06-09 → 2027-04-08 (-62d) | 2027-07-17 → 2027-05-22 (-56d) |  |  |
| TF | **Testing and Finishes** | 2027-06-09 → 2027-04-08 (-62d) | 2027-07-17 → 2027-05-22 (-56d) |  |  |
| CO-R09-PW-TF-110 | Testing Work for Main Line of Potable Water Network-[Road 09] | 2027-06-09 → 2027-04-08 (-62d) | 2027-06-19 → 2027-04-18 (-62d) | -258d → -209d |  |
| CO-R09-PW-TF-100 | Final Finishes works and Covers for Valves and Valve Chambers of Potable Water Network-[Road 09] | 2027-06-20 → 2027-04-19 (-62d) | 2027-07-03 → 2027-05-02 (-62d) | -258d → -200d |  |
| CO-R09-PW-TF-120 | Fire Hydrant Finishies (S.Box + Safety + Marker Post ) of Potable Water Network-[Road 09] | 2027-07-04 → 2027-05-03 (-62d) | 2027-07-17 → 2027-05-22 (-56d) | -258d → -200d |  |
| 13 | **Irrigation Network** | 2027-06-06 → 2027-04-05 (-62d) | 2027-06-23 → 2027-04-22 (-62d) |  |  |
| TF | **Testing and Finishes** | 2027-06-06 → 2027-04-05 (-62d) | 2027-06-23 → 2027-04-22 (-62d) |  |  |
| CO-R09-IR-TF-100 | Final Testing (pressure tests) of Irrigation Network-[Road 09] | 2027-06-06 → 2027-04-05 (-62d) | 2027-06-23 → 2027-04-22 (-62d) | -238d → -180d |  |
| 12 | **Street Lighting Network** | 2027-04-01 → 2027-02-25 (-35d) | 2027-07-15 → 2027-06-14 (-31d) |  |  |
| TR | **Termination and Testing Works** | 2027-04-01 → 2027-02-25 (-35d) | 2027-07-13 → 2027-06-12 (-31d) |  |  |
| CO-R09-SL-TF-100 | Termination Works For Lighting Poles Cables of Street Lighting Network-[Road 09] | 2027-04-01 → 2027-02-25 (-35d) | 2027-04-14 → 2027-03-14 (-31d) | -256.5d → -219.5d |  |
| CO-R09-SL-TF-110 | Termination Works For Panel Board Cables of Street Lighting Network-[Road 09] | 2027-06-20 → 2027-05-13 (-38d) | 2027-07-01 → 2027-05-31 (-31d) | -256.5d → -219.5d |  |
| CO-R09-SL-TF-380 | Testing Works For Panel Board Cables of Street Lighting Network-[Road 09] | 2027-07-01 → 2027-05-31 (-31d) | 2027-07-13 → 2027-06-12 (-31d) | -224.5d → -197.5d |  |
| ES | **Earthing System Works** | 2027-04-15 → 2027-03-15 (-31d) | 2027-07-15 → 2027-06-14 (-31d) |  |  |
| CO-R09-SL-ES-100 | Install Earthing System Works for Lighting Poles of Street Lighting Network-[Road 09] | 2027-04-15 → 2027-03-15 (-31d) | 2027-04-28 → 2027-03-28 (-31d) | -256.5d → -219.5d |  |
| CO-R09-SL-ES-110 | Install Earthing System Works for Lighting Panel Boards of Street Lighting Network-[Road 09] | 2027-07-01 → 2027-05-31 (-31d) | 2027-07-15 → 2027-06-14 (-31d) | -256.5d → -219.5d |  |
| 14 | **Medium Voltage Network** | 2027-04-20 → 2027-03-08 (-43d) | 2027-05-08 → 2027-03-29 (-40d) |  |  |
| TT | **Termination and Testing Works** | 2027-04-20 → 2027-03-08 (-43d) | 2027-05-08 → 2027-03-29 (-40d) |  |  |
| CO-R09-MV-TF-100 | Termination Works of Medium Voltage Network-[Road 09] | 2027-04-20 → 2027-03-08 (-43d) | 2027-05-08 → 2027-03-29 (-40d) | -203d → -159d |  |
| 1 | **Road Works** | 2027-08-01 → 2027-06-28 (-34d) | 2027-10-06 → 2027-09-02 (-34d) |  |  |
| 1 | **Bituminous Construction** | 2027-08-01 → 2027-06-28 (-34d) | 2027-08-31 → 2027-07-29 (-33d) |  |  |
| CO-R09-S1-RD-F-100 | Application of Prime Coat Layer for Road Works - S.W 01-[Road 09] | 2027-08-01 → 2027-06-28 (-34d) | 2027-08-14 → 2027-07-12 (-33d) | -258d → -219.5d |  |
| CO-R09-S1-RD-F-120 | Bituminous Base & Wearing Courses Layers for Road Works- S.W 01-[Road 09] | 2027-08-04 → 2027-07-01 (-34d) | 2027-08-17 → 2027-07-15 (-33d) | -258d → -219.5d |  |
| CO-R09-S2-RD-F-110 | Application of Prime Coat Layer for Road Works- S.W 02-[Road 09] | 2027-08-08 → 2027-07-05 (-34d) | 2027-08-28 → 2027-07-26 (-33d) | -257d → -218.5d |  |
| CO-R09-S2-RD-F-130 | Bituminous Base & Wearing Courses Layers for Road Works- S.W 02-[Road 09] | 2027-08-11 → 2027-07-08 (-34d) | 2027-08-31 → 2027-07-29 (-33d) | -257d → -218.5d |  |
| TS | **Traffic Signs Boards and Roads Marking** | 2027-08-18 → 2027-07-15 (-34d) | 2027-10-06 → 2027-09-02 (-34d) |  |  |
| CO-R09-S1-RD-F-140 | Application of Road Marking Works For Road Works- S.W 01-[Road 09] | 2027-08-18 → 2027-07-15 (-34d) | 2027-08-31 → 2027-07-29 (-33d) | -258d → -219.5d |  |
| CO-R09-S1-RD-F-150 | Installation Works of Traffic Signs Boards For Road Works- S.W 01-[Road 09] | 2027-09-01 → 2027-07-29 (-34d) | 2027-09-14 → 2027-08-12 (-33d) | -258d → -219.5d |  |
| CO-R09-S2-RD-F-160 | Application of Road Marking Works For Road Works- S.W 02-[Road 09] | 2027-09-01 → 2027-07-29 (-34d) | 2027-09-18 → 2027-08-16 (-33d) | -257d → -218.5d |  |
| CO-R09-S2-RD-F-170 | Installation Works of Traffic Signs Boards For Road Works- S.W 02-[Road 09] | 2027-09-19 → 2027-08-16 (-34d) | 2027-10-06 → 2027-09-02 (-34d) | -257d → -218.5d |  |
| 4 | **Road 10 Local 2 ( 2352 LM )** |  | 2027-08-15 → 2027-06-20 (-56d) |  |  |
| 10 | **Sewage Network** | 2027-05-12 → 2027-02-16 (-85d) | 2027-06-17 → 2027-03-23 (-86d) |  |  |
| TF | **Testing and Finishes** | 2027-05-12 → 2027-02-16 (-85d) | 2027-06-17 → 2027-03-23 (-86d) |  |  |
| CO-R10-SW-TF-100 | Final Testing For Main Line of Sewage Network-[Road 10] | 2027-05-12 → 2027-02-16 (-85d) | 2027-05-31 → 2027-03-02 (-90d) | -241d → -172d |  |
| CO-R10-SW-TF-110 | Install Manhole Cover Works for External Finishes of Sewage Network-[Road 10] | 2027-06-01 → 2027-03-03 (-90d) | 2027-06-14 → 2027-03-20 (-86d) | -241d → -172d |  |
| CO-R10-SW-TF-130 | Main Manhole Internal Finishes (Benching + Insulation) of Sewage Network-[Road 10] | 2027-06-05 → 2027-03-07 (-90d) | 2027-06-17 → 2027-03-23 (-86d) | -241d → -172d |  |
| 11 | **Storm Drainage Network** |  | 2027-06-23 → 2027-03-20 (-95d) |  |  |
| TF | **Testing and Finishes** |  | 2027-06-23 → 2027-03-20 (-95d) |  |  |
| CO-R10-SD-TF-100 | Testing Work for Pipes of Storm Drainage Network-[Road 10] |  |  |  | CO-R10.S03-ES-SD-130 SS+3d, CO-R10.S03-ES-RD-100 SS+3d, CO-R10.S03-ES-RD-100 FF+3d, CO-R10.S03-ES-SD-130 FF+3d, CO-R10.S03-ES-SD-120 SS, CO-R10.S03-ES-SD-120, ENG-SH-SD-ML-A-110, ENG-MS-SD-ML-A-110, PRO-R10-SD-DL-140 FF+3d, CO-R10.S04-ES-RD-100 SS+3d, CO-R10.S04-ES-RD-100 FF+3d, CO-R10.S03-WE-SD-130 SS+3d, CO-R10.S03-WE-RD-100 SS+3d, CO-R10.S03-WE-RD-100 FF+3d, CO-R10.S03-WE-SD-130 FF+3d, CO-R10.S03-WE-SD-120 SS, CO-R10.S03-WE-SD-120, CO-R10.S04-WE-RD-100 SS+3d, CO-R10.S04-WE-RD-100 FF+3d → CO-R10.S03-ES-SD-130 SS+3d, CO-R10.S03-ES-RD-100 SS+3d, CO-R10.S03-ES-SD-130 FF+3d, CO-R10.S03-ES-SD-120 SS, CO-R10.S03-ES-SD-120, ENG-SH-SD-ML-A-110, ENG-MS-SD-ML-A-110, CO-R10.S04-ES-RD-100 SS+3d, CO-R10.S03-WE-SD-130 SS+3d, CO-R10.S03-WE-RD-100 SS+3d, CO-R10.S03-WE-SD-130 FF+3d, CO-R10.S03-WE-SD-120 SS, CO-R10.S03-WE-SD-120, CO-R10.S04-WE-RD-100 SS+3d |
| CO-R10-SD-TF-110 | Install Catch Basin Cover Works for External Finishes of Storm Drainage Network-[Road 10] |  | 2027-05-31 → 2027-02-25 (-95d) | -221d → -137d | CO-R10.S03-ES-SD-170 SS+3d, PRO-R10-SD-DL-150 FF+3d, CO-R10.S03-ES-RD-100 SS+3d, CO-R10.S03-ES-RD-100 FF+3d, CO-R10.S03-ES-RD-100, CO-R10.S03-ES-SD-170 FF+3d, CO-R10.S04-ES-RD-100 SS+3d, CO-R10.S04-ES-RD-100 FF+3d, CO-R10.S03-WE-SD-170 SS+3d, CO-R10.S03-WE-RD-100 SS+3d, CO-R10.S03-WE-RD-100 FF+3d, CO-R10.S03-WE-RD-100, CO-R10.S03-WE-SD-170 FF+3d, CO-R10.S04-WE-RD-100 SS+3d, CO-R10.S04-WE-RD-100 FF+3d → CO-R10.S03-ES-SD-170 SS+3d, PRO-R10-SD-DL-150 FF+3d, CO-R10.S03-ES-RD-100 SS+3d, CO-R10.S03-ES-RD-100 FF+3d, CO-R10.S03-ES-SD-170 FF+3d, CO-R10.S04-ES-RD-100 SS+3d, CO-R10.S04-ES-RD-100 FF+3d, CO-R10.S03-WE-SD-170 SS+3d, CO-R10.S03-WE-RD-100 SS+3d, CO-R10.S03-WE-RD-100 FF+3d, CO-R10.S03-WE-SD-170 FF+3d, CO-R10.S04-WE-RD-100 SS+3d, CO-R10.S04-WE-RD-100 FF+3d |
| CO-R10-SD-TF-120 | Main Manhole Internal Finishes (Benching + Insulation ) for Storm Drainage Network-[Road 10] |  | 2027-06-15 → 2027-03-20 (-87d) | -233d → -153d | CO-R10-SD-TF-100 SS+3d, CO-R10-SD-TF-100 FF+3d, PRO-R10-SD-DL-160 FF+3d, CO-R10-SD-TF-100, CO-R10-SD-TF-110 SS, CO-R10-SD-TF-110, CO-R10-SD-TF-110 FF, CO-R10-SW-TF-110 SS, CO-R10-SW-TF-110, CO-R10-SW-TF-110 FF, ENG-SH-RD-A-100, ENG-SH-RD-A-100 FF, ENG-MS-RD-A-10, ENG-MS-RD-A-10 FF, PRO-R10-SD-DL-100 FF+3d → CO-R10-SD-TF-100 SS+3d, CO-R10-SD-TF-100 FF+3d, PRO-R10-SD-DL-160 FF+3d, CO-R10-SD-TF-100, CO-R10-SD-TF-110 SS, CO-R10-SD-TF-110 FF, CO-R10-SW-TF-110 FF, ENG-SH-RD-A-100, ENG-SH-RD-A-100 FF, ENG-MS-RD-A-10, ENG-MS-RD-A-10 FF, PRO-R10-SD-DL-100 FF+3d |
| CO-R10-SD-TF-130 | Catch Basin Internal Finishes (Benching + Insulation ) for Storm Drainage Network-[Road 10] |  | 2027-06-23 → 2027-03-20 (-95d) | -210d → -80d | CO-R10-SD-TF-110 SS+3d, CO-R10-SD-TF-110 FF+3d, PRO-R10-SD-DL-160 FF+3d, CO-R10-SD-TF-100 SS, CO-R10-SD-TF-100, CO-R10-SD-TF-100 FF, CO-R10-SD-TF-110, CO-R10-SW-TF-110 SS, CO-R10-SW-TF-110, CO-R10-SW-TF-110 FF, ENG-SH-RD-A-100, ENG-SH-RD-A-100 FF, ENG-MS-RD-A-10, ENG-MS-RD-A-10 FF → CO-R10-SD-TF-110 SS+3d, CO-R10-SD-TF-110 FF+3d, PRO-R10-SD-DL-160 FF+3d, CO-R10-SD-TF-100 SS, CO-R10-SD-TF-100, CO-R10-SD-TF-100 FF, CO-R10-SW-TF-110 FF, ENG-SH-RD-A-100, ENG-SH-RD-A-100 FF, ENG-MS-RD-A-10, ENG-MS-RD-A-10 FF |
| 9 | **Potable Water Network** | 2027-05-27 → 2027-02-10 (-106d) | 2027-07-03 → 2027-05-02 (-62d) |  |  |
| TF | **Testing and Finishes** | 2027-05-27 → 2027-02-10 (-106d) | 2027-07-03 → 2027-05-02 (-62d) |  |  |
| CO-R10-PW-TF-100 | Final Finishes works and Covers for Valves and Valve Chambers of Potable Water Network-[Road 10] | 2027-05-27 → 2027-02-10 (-106d) | 2027-06-09 → 2027-02-24 (-105d) | -244d → -155d |  |
| CO-R10-PW-TF-120 | Fire Hydrant Finishies (S.Box + Safety + Marker Post ) of Potable Water Network-[Road 10] | 2027-06-10 → 2027-02-25 (-105d) | 2027-06-23 → 2027-03-14 (-101d) | -244d → -155d |  |
| CO-R10-PW-TF-110 | Testing Work for Main Line of Potable Water Network-[Road 10] | 2027-06-20 → 2027-04-19 (-62d) | 2027-07-03 → 2027-05-02 (-62d) | -257d → -209d |  |
| 13 | **Irrigation Network** | 2027-05-29 → 2027-02-23 (-95d) | 2027-06-08 → 2027-03-06 (-94d) |  |  |
| TF | **Testing and Finishes** | 2027-05-29 → 2027-02-23 (-95d) | 2027-06-08 → 2027-03-06 (-94d) |  |  |
| CO-R10-IR-TF-120 | Final Testing (pressure tests) of Irrigation Network-[Road 10] | 2027-05-29 → 2027-02-23 (-95d) | 2027-06-08 → 2027-03-06 (-94d) | -232d → -159d |  |
| 12 | **Street Lighting Network** | 2027-02-24 → 2027-01-17 (-38d) | 2027-05-20 → 2027-03-30 (-51d) |  |  |
| TR | **Termination and Testing Works** | 2027-02-24 → 2027-01-17 (-38d) | 2027-05-20 → 2027-03-30 (-51d) |  |  |
| CO-R10-SL-TF-140 | Termination Works For Lighting Poles Cables of Street Lighting Network-[Road 10] | 2027-02-24 → 2027-01-17 (-38d) | 2027-03-13 → 2027-01-30 (-42d) | -232d → -200d |  |
| CO-R10-SL-TF-150 | Termination Works For Panel Board Cables of Street Lighting Network-[Road 10] | 2027-04-29 → 2027-03-15 (-45d) | 2027-05-12 → 2027-03-28 (-45d) | -239d → -200d |  |
| CO-R10-SL-TF-380 | Testing Works For Panel Board Cables of Street Lighting Network-[Road 10] | 2027-05-13 → 2027-03-29 (-45d) | 2027-05-20 → 2027-03-30 (-51d) | -219d → -180d |  |
| ES | **Earthing System Works** | 2027-03-14 → 2027-01-31 (-42d) | 2027-04-13 → 2027-03-03 (-41d) |  |  |
| CO-R10-SL-ES-140 | Install Earthing System Works for Lighting Poles of Street Lighting Network-[Road 10] | 2027-03-14 → 2027-01-31 (-42d) | 2027-03-27 → 2027-02-13 (-42d) | -232d → -200d |  |
| CO-R10-SL-ES-150 | Install Earthing System Works for Lighting Panel Boards of Street Lighting Network-[Road 10] | 2027-03-31 → 2027-02-17 (-42d) | 2027-04-13 → 2027-03-03 (-41d) | -232d → -200d |  |
| 14 | **Medium Voltage Network** | 2027-05-02 → 2026-11-10 (-173d) | 2027-05-09 → 2026-11-17 (-173d) |  |  |
| TT | **Termination and Testing Works** | 2027-05-02 → 2026-11-10 (-173d) | 2027-05-09 → 2026-11-17 (-173d) |  |  |
| CO-R10-MV-TF-140 | Termination Works of Medium Voltage Network-[Road 10] | 2027-05-02 → 2026-11-10 (-173d) | 2027-05-09 → 2026-11-17 (-173d) | -206d → -52d |  |
| 1 | **Road Works** | 2027-07-15 → 2027-05-20 (-56d) | 2027-08-15 → 2027-06-20 (-56d) |  |  |
| 1 | **Bituminous Construction** | 2027-07-15 → 2027-05-20 (-56d) | 2027-08-01 → 2027-06-06 (-56d) |  |  |
| CO-R10-S03-RD-F-110 | Application of Prime Coat Layer for Road Works- S.W 05-[Road 10] | 2027-07-15 → 2027-05-20 (-56d) | 2027-07-26 → 2027-05-31 (-56d) | -248d → -190d |  |

| ID | Task | Start | Finish | Complete | Total float | Predecessors |
| --- | --- | --- | --- | --- | --- | --- |
| CO-R10-S04-RD-F-140 | Application of Prime Coat Layer for Road Works- S.W 06-[Road 10] | 2027-07-18 → 2027-05-23 (-56d) | 2027-07-28 → 2027-06-02 (-56d) |  | -248d → -190d |  |
| CO-R10-S03-RD-F-120 | Bituminous Base & Wearing Courses Layers for Road Works- S.W 05-[Road 10] | 2027-07-19 → 2027-05-24 (-56d) | 2027-07-29 → 2027-06-03 (-56d) |  | -248d → -190d |  |
| CO-R10-S04-RD-F-150 | Bituminous Base & Wearing Courses Layers for Road Works- S.W 06-[Road 10] | 2027-07-21 → 2027-05-26 (-56d) | 2027-08-01 → 2027-06-06 (-56d) |  | -248d → -190d |  |
| TS | **Traffic Signs Boards and Roads Marking** | 2027-07-31 → 2027-06-05 (-56d) | 2027-08-15 → 2027-06-20 (-56d) |  |  |  |
| CO-R10-S03-RD-F-100 | Installation Works of Traffic Signs Boards For Road Works- S.W 05-[Road 10] | 2027-07-31 → 2027-06-05 (-56d) | 2027-08-12 → 2027-06-17 (-56d) |  | -248d → -190d |  |
| CO-R10-S03-RD-F-160 | Application of Road Marking Works For Road Works- S.W 05-[Road 10] | 2027-07-31 → 2027-06-05 (-56d) | 2027-08-12 → 2027-06-17 (-56d) |  | -248d → -190d |  |
| CO-R10-S04-RD-F-170 | Application of Road Marking Works For Road Works- S.W 06-[Road 10] | 2027-08-02 → 2027-06-07 (-56d) | 2027-08-15 → 2027-06-20 (-56d) |  | -248d → -190d |  |
| CO-R10-S04-RD-F-130 | Installation Works of Traffic Signs Boards For Road Works- S.W 06-[Road 10] | 2027-08-04 → 2027-06-09 (-56d) | 2027-08-15 → 2027-06-20 (-56d) |  | -247d → -189d |  |
| 5 | **Road 11 Local 1 ( 670 LM )** |  | 2027-08-26 → 2027-07-01 (-56d) |  |  |  |
| 10 | **Sewage Network** |  | 2027-07-01 → 2027-04-06 (-86d) |  |  |  |
| TF | **Testing and Finishes** |  | 2027-07-01 → 2027-04-06 (-86d) |  |  |  |
| CO-R11-SW-TF-100 | Final Testing For Main Line of Sewage Network-[Road 11] |  |  |  |  | CO-R11.S05-SW-130, CO-R11.S05-RD-P-100 SS+3d, CO-R11.S05-RD-P-100 FF+3d, CO-R10-SW-TF-100, CO-R11.S06-RD-P-100 SS+3d, CO-R11.S06-RD-P-100 FF+3d, CO-R11.S06-SW-130 → CO-R11.S05-SW-130, CO-R11.S05-RD-P-100 SS+3d, CO-R11.S05-RD-P-100 FF+3d, CO-R11.S06-RD-P-100 SS+3d, CO-R11.S06-RD-P-100 FF+3d, CO-R11.S06-SW-130 |
| CO-R11-SW-TF-110 | Install Manhole Cover Works for External Finishes of Sewage Network-[Road 11] | 2027-06-15 → 2027-03-21 (-86d) | 2027-06-28 → 2027-04-03 (-86d) |  | -241d → -172d |  |
| CO-R11-SW-TF-130 | Main Manhole Internal Finishes (Benching + Insulation) of Sewage Network-[Road 11] | 2027-06-19 → 2027-03-24 (-87d) | 2027-07-01 → 2027-04-06 (-86d) |  | -241d → -172d |  |
| 11 | **Storm Drainage Network** |  | 2027-07-05 → 2027-04-03 (-93d) |  |  |  |
| TF | **Testing and Finishes** |  | 2027-07-05 → 2027-04-03 (-93d) |  |  |  |
| CO-R11-SD-TF-130 | Catch Basin Internal Finishes (Benching + Insulation ) for Storm Drainage Network-[Road 11] |  | 2027-07-05 → 2027-04-03 (-93d) | 20% → 35% | -214d → -92d | CO-R11-SD-TF-110 SS+3d, CO-R11-SD-TF-110 FF+3d, PRO-R11-SD-DL-160 FF+3d, CO-R11-SD-TF-100 SS, CO-R11-SD-TF-100, CO-R11-SD-TF-100 FF, CO-R11-SD-TF-110, CO-R11-SW-TF-110 SS, CO-R11-SW-TF-110, CO-R11-SW-TF-110 FF, ENG-SH-RD-A-100, ENG-SH-RD-A-100 FF, CO-R10-SD-TF-130, ENG-MS-RD-A-10, ENG-MS-RD-A-10 FF → CO-R11-SD-TF-110 SS+3d, CO-R11-SD-TF-110 FF+3d, PRO-R11-SD-DL-160 FF+3d, CO-R11-SD-TF-100 SS, CO-R11-SD-TF-100, CO-R11-SD-TF-100 FF, CO-R11-SW-TF-110 FF, ENG-SH-RD-A-100, ENG-SH-RD-A-100 FF, CO-R10-SD-TF-130 FF, ENG-MS-RD-A-10, ENG-MS-RD-A-10 FF |
| CO-R11-SD-TF-120 | Main Manhole Internal Finishes (Benching + Insulation ) for Storm Drainage Network-[Road 11] |  | 2027-06-29 → 2027-04-03 (-87d) |  | -223d → -92d | CO-R11-SD-TF-100 SS+3d, CO-R11-SD-TF-100 FF+3d, PRO-R11-SD-DL-160 FF+3d, CO-R11-SD-TF-100, CO-R11-SD-TF-110 SS, CO-R11-SD-TF-110, CO-R11-SD-TF-110 FF, CO-R11-SW-TF-110 SS, CO-R11-SW-TF-110, CO-R11-SW-TF-110 FF, ENG-SH-RD-A-100, ENG-SH-RD-A-100 FF, CO-R10-SD-TF-120, ENG-MS-RD-A-10, ENG-MS-RD-A-10 FF, PRO-R11-SD-DL-100 FF+3d → CO-R11-SD-TF-100 SS+3d, CO-R11-SD-TF-100 FF+3d, PRO-R11-SD-DL-160 FF+3d, CO-R11-SD-TF-100, CO-R11-SD-TF-110 SS, CO-R11-SD-TF-110 FF, CO-R11-SW-TF-110 FF, ENG-SH-RD-A-100, ENG-SH-RD-A-100 FF, CO-R10-SD-TF-120 FF, ENG-MS-RD-A-10, ENG-MS-RD-A-10 FF, PRO-R11-SD-DL-100 FF+3d |
| CO-R11-SD-TF-100 | Testing Work for Pipes of Storm Drainage Network-[Road 11] |  |  |  |  | CO-R11.S05-SD-130 SS+3d, PRO-R11-SD-DL-140 FF+3d, CO-R11.S05-RD-P-100 SS+3d, CO-R11.S05-RD-P-100 FF+3d, CO-R11.S05-SD-130 FF+3d, CO-R11.S05-SD-120 SS, CO-R11.S05-SD-120, ENG-SH-SD-ML-A-110, CO-R10-SD-TF-100, ENG-MS-SD-ML-A-110, CO-R11.S06-RD-P-100 SS+3d, CO-R11.S06-RD-P-100 FF → CO-R11.S05-SD-130 SS+3d, CO-R11.S05-RD-P-100 SS+3d, CO-R11.S05-RD-P-100 FF+3d, CO-R11.S05-SD-130 FF+3d, CO-R11.S05-SD-120 SS, CO-R11.S05-SD-120, ENG-SH-SD-ML-A-110, CO-R10-SD-TF-100, ENG-MS-SD-ML-A-110, CO-R11.S06-RD-P-100 SS+3d, CO-R11.S06-RD-P-100 FF |
| CO-R11-SD-TF-110 | Install Catch Basin Cover Works for External Finishes of Storm Drainage Network-[Road 11] |  | 2027-06-08 → 2027-02-25 (-103d) | 20% → 35% | -206d → -67d | CO-R11.S05-SD-170 SS+3d, PRO-R11-SD-DL-150 FF+3d, CO-R11.S05-RD-P-100 SS+3d, CO-R11.S05-RD-P-100 FF+3d, CO-R11.S05-RD-P-100, CO-R11.S05-SD-170 FF+3d, CO-R10-SD-TF-110, CO-R11.S06-RD-P-100 SS+3d, CO-R11.S06-RD-P-100 FF+3d → CO-R11.S05-SD-170 SS+3d, PRO-R11-SD-DL-150 FF+3d, CO-R11.S05-RD-P-100 SS+3d, CO-R11.S05-RD-P-100 FF+3d, CO-R11.S05-RD-P-100, CO-R11.S05-SD-170 FF+3d, CO-R10-SD-TF-110 FF, CO-R11.S06-RD-P-100 SS+3d, CO-R11.S06-RD-P-100 FF+3d |
| 9 | **Potable Water Network** | 2027-06-10 → 2027-02-25 (-105d) | 2027-07-17 → 2027-05-22 (-56d) |  |  |  |
| TF | **Testing and Finishes** | 2027-06-10 → 2027-02-25 (-105d) | 2027-07-17 → 2027-05-22 (-56d) |  |  |  |
| CO-R11-PW-TF-100 | Final Finishes works and Covers for Valves and Valve Chambers of Potable Water Network-[Road 11] | 2027-06-10 → 2027-02-25 (-105d) | 2027-06-23 → 2027-03-14 (-101d) |  | -244d → -155d |  |
| CO-R11-PW-TF-120 | Fire Hydrant Finishies (S.Box + Safety + Marker Post ) of Potable Water Network-[Road 11] | 2027-06-24 → 2027-03-15 (-101d) | 2027-07-07 → 2027-03-28 (-101d) |  | -244d → -155d |  |
| CO-R11-PW-TF-110 | Testing Work for Main Line of Potable Water Network-[Road 11] | 2027-07-04 → 2027-05-03 (-62d) | 2027-07-17 → 2027-05-22 (-56d) |  | -257d → -209d |  |
| 13 | **Irrigation Network** | 2027-06-09 → 2027-03-07 (-94d) | 2027-06-20 → 2027-03-21 (-91d) |  |  |  |
| TF | **Testing and Finishes** | 2027-06-09 → 2027-03-07 (-94d) | 2027-06-20 → 2027-03-21 (-91d) |  |  |  |
| CO-R11-IR-TF-130 | Final Testing (pressure tests) of Irrigation Network-[Road 11] | 2027-06-09 → 2027-03-07 (-94d) | 2027-06-20 → 2027-03-21 (-91d) |  | -232d → -159d |  |
| 12 | **Street Lighting Network** | 2027-03-14 → 2027-02-13 (-29d) | 2027-06-07 → 2027-04-15 (-53d) |  |  |  |
| TR | **Termination and Testing Works** | 2027-03-14 → 2027-02-13 (-29d) | 2027-06-07 → 2027-04-15 (-53d) |  |  |  |
| CO-R11-SL-TF-160 | Termination Works For Lighting Poles Cables of Street Lighting Network-[Road 11] | 2027-03-14 → 2027-02-13 (-29d) | 2027-03-27 → 2027-02-27 (-28d) |  | -183d → -162d |  |
| CO-R11-SL-TF-170 | Termination Works For Panel Board Cables of Street Lighting Network-[Road 11] | 2027-05-23 → 2027-03-31 (-53d) | 2027-06-05 → 2027-04-13 (-53d) |  | -242d → -202d |  |
| CO-R11-SL-TF-380 | Testing Works For Panel Board Cables of Street Lighting Network-[Road 11] | 2027-06-06 → 2027-04-14 (-53d) | 2027-06-07 → 2027-04-15 (-53d) |  | -232d → -192d |  |
| 14 | **Medium Voltage Network** | 2027-05-10 → 2026-11-18 (-173d) | 2027-05-23 → 2026-11-25 (-179d) |  |  |  |
| TT | **Termination and Testing Works** | 2027-05-10 → 2026-11-18 (-173d) | 2027-05-23 → 2026-11-25 (-179d) |  |  |  |
| CO-R11-MV-TF-160 | Termination Works of Medium Voltage Network-[Road 11] | 2027-05-10 → 2026-11-18 (-173d) | 2027-05-23 → 2026-11-25 (-179d) |  | -200d → -52d |  |
| 1 | **Road Works** |  | 2027-08-26 → 2027-07-01 (-56d) |  |  |  |
| 1 | **Bituminous Construction** |  | 2027-08-15 → 2027-06-20 (-56d) |  |  |  |
| CO-R11-S05-RD-F-110 | Application of Prime Coat Layer for Road Works- S.W 07-[Road 11] |  |  |  |  | CO-R10-S03-RD-F-110, CO-R11.S05-RD-P-130, CO-SD-PO-K2-130 → CO-R11.S05-RD-P-130 |
| CO-R11-S06-RD-F-140 | Application of Prime Coat Layer for Road Works- S.W 08-[Road 11] |  |  |  |  | CO-R10-S04-RD-F-140, PRO-R11-RD-DL-160 FF+3d, CO-R11.S06-RD-P-130, CO-R11-S05-RD-F-110 SS, CO-SD-PO-K2-130 → PRO-R11-RD-DL-160 FF+3d, CO-R11.S06-RD-P-130, CO-R11-S05-RD-F-110 SS |
| CO-R11-S05-RD-F-120 | Bituminous Base & Wearing Courses Layers for Road Works- S.W 07-[Road 11] | 2027-07-31 → 2027-06-05 (-56d) | 2027-08-12 → 2027-06-17 (-56d) |  | -248d → -190d |  |
| CO-R11-S06-RD-F-150 | Bituminous Base & Wearing Courses Layers for Road Works- S.W 08-[Road 11] | 2027-08-02 → 2027-06-07 (-56d) | 2027-08-15 → 2027-06-20 (-56d) |  | -248d → -190d |  |
| TS | **Traffic Signs Boards and Roads Marking** | 2027-08-14 → 2027-06-19 (-56d) | 2027-08-26 → 2027-07-01 (-56d) |  |  |  |
| CO-R11-S05-RD-F-100 | Installation Works of Traffic Signs Boards For Road Works- S.W 07-[Road 11] | 2027-08-14 → 2027-06-19 (-56d) | 2027-08-24 → 2027-06-29 (-56d) |  | -248d → -190d |  |
| CO-R11-S05-RD-F-160 | Application of Road Marking Works For Road Works- S.W 07-[Road 11] | 2027-08-14 → 2027-06-19 (-56d) | 2027-08-24 → 2027-06-29 (-56d) |  | -248d → -190d |  |
| CO-R11-S06-RD-F-130 | Installation Works of Traffic Signs Boards For Road Works- S.W 08-[Road 11] | 2027-08-16 → 2027-06-21 (-56d) | 2027-08-26 → 2027-07-01 (-56d) |  | -247d → -189d |  |
| CO-R11-S06-RD-F-170 | Application of Road Marking Works For Road Works- S.W 08-[Road 11] | 2027-08-16 → 2027-06-21 (-56d) | 2027-08-26 → 2027-07-01 (-56d) |  | -248d → -190d |  |
| 6 | **Road 14 Local 1 ( 584 LM )** |  | 2027-09-12 → 2027-07-18 (-56d) |  |  |  |
| 10 | **Sewage Network** |  | 2027-07-15 → 2027-04-20 (-86d) |  |  |  |
| TF | **Testing and Finishes** |  | 2027-07-15 → 2027-04-20 (-86d) |  |  |  |
| CO-R14-SW-TF-110 | Install Manhole Cover Works for External Finishes of Sewage Network-[Road 14] | 2027-06-29 → 2027-04-04 (-86d) | 2027-07-12 → 2027-04-17 (-86d) |  | -241d → -172d |  |
| CO-R14-SW-TF-130 | Main Manhole Internal Finishes (Benching + Insulation) of Sewage Network-[Road 14] | 2027-07-03 → 2027-04-07 (-87d) | 2027-07-15 → 2027-04-20 (-86d) |  | -241d → -172d |  |
| CO-R14-SD-TF-110 | Install Catch Basin Cover Works for External Finishes of Storm Drainage Network-[Road 14] |  |  |  |  | CO-R14.S07-SD-170 SS+3d, PRO-R14-SD-DL-150 FF+3d, CO-R14.S07-RD-P-100 SS+3d, CO-R14.S07-RD-P-100 FF+3d, CO-R14.S07-RD-P-100, CO-R14.S07-SD-170 FF+3d, CO-R11-SD-TF-110, CO-R14.S08-RD-P-100 SS+3d, CO-R14.S08-RD-P-100 FF+3d, CO-R14-SD-TF-100, CO-R14.S07-SD-170 → CO-R14.S07-SD-170 SS+3d, CO-R14.S07-RD-P-100 SS+3d, CO-R14.S07-RD-P-100 FF+3d, CO-R14.S07-RD-P-100, CO-R14.S07-SD-170 FF+3d, CO-R14.S08-RD-P-100 SS+3d, CO-R14.S08-RD-P-100 FF+3d, CO-R14-SD-TF-100, CO-R14.S07-SD-170 |
| CO-R14-SD-TF-120 | Main Manhole Internal Finishes (Benching + Insulation ) for Storm Drainage Network-[Road 14] |  |  |  |  | PRO-R14-SD-DL-160 FF+3d, CO-R14-SD-TF-110 SS, CO-R14-SD-TF-110, CO-R14-SD-TF-110 FF, CO-R14-SW-TF-110 SS, CO-R14-SW-TF-110, CO-R14-SW-TF-110 FF, ENG-SH-RD-A-100, ENG-SH-RD-A-100 FF, CO-R11-SD-TF-120, ENG-MS-RD-A-10, ENG-MS-RD-A-10 FF, CO-R14.S07-SD-220, PRO-R14-SD-DL-100 FF+3d → PRO-R14-SD-DL-160 FF+3d, CO-R14-SD-TF-110 SS, CO-R14-SD-TF-110, CO-R14-SD-TF-110 FF, ENG-SH-RD-A-100, ENG-SH-RD-A-100 FF, ENG-MS-RD-A-10, ENG-MS-RD-A-10 FF, CO-R14.S07-SD-220, PRO-R14-SD-DL-100 FF+3d |
| CO-R14-SD-TF-130 | Catch Basin Internal Finishes (Benching + Insulation ) for Storm Drainage Network-[Road 14] |  |  |  |  | CO-R14-SD-TF-110 SS+3d, CO-R14-SD-TF-110 FF+3d, PRO-R14-SD-DL-160 FF+3d, CO-R14-SD-TF-110, CO-R14-SW-TF-110 SS, CO-R14-SW-TF-110, CO-R14-SW-TF-110 FF, ENG-SH-RD-A-100, ENG-SH-RD-A-100 FF, CO-R11-SD-TF-130, ENG-MS-RD-A-10, ENG-MS-RD-A-10 FF, CO-R14.S07-SD-150 → CO-R14-SD-TF-110 SS+3d, CO-R14-SD-TF-110 FF+3d, PRO-R14-SD-DL-160 FF+3d, CO-R14-SD-TF-110, ENG-SH-RD-A-100, ENG-SH-RD-A-100 FF, ENG-MS-RD-A-10, ENG-MS-RD-A-10 FF, CO-R14.S07-SD-150 |
| 9 | **Potable Water Network** | 2027-06-24 → 2027-03-15 (-101d) | 2027-07-31 → 2027-06-05 (-56d) |  |  |  |
| TF | **Testing and Finishes** | 2027-06-24 → 2027-03-15 (-101d) | 2027-07-31 → 2027-06-05 (-56d) |  |  |  |
| CO-R14-PW-TF-100 | Final Finishes works and Covers for Valves and Valve Chambers of Potable Water Network-[Road 14] | 2027-06-24 → 2027-03-15 (-101d) | 2027-07-07 → 2027-03-28 (-101d) |  | -244d → -155d |  |
| CO-R14-PW-TF-120 | Fire Hydrant Finishies (S.Box + Safety + Marker Post ) of Potable Water Network-[Road 14] | 2027-07-08 → 2027-03-29 (-101d) | 2027-07-21 → 2027-04-11 (-101d) |  | -244d → -155d |  |
| CO-R14-PW-TF-110 | Testing Work for Main Line of Potable Water Network-[Road 14] | 2027-07-18 → 2027-05-23 (-56d) | 2027-07-31 → 2027-06-05 (-56d) |  | -257d → -209d |  |
| 13 | **Irrigation Network** | 2027-06-21 → 2027-03-22 (-91d) | 2027-07-01 → 2027-04-01 (-91d) |  |  |  |
| TF | **Testing and Finishes** | 2027-06-21 → 2027-03-22 (-91d) | 2027-07-01 → 2027-04-01 (-91d) |  |  |  |
| CO-R11-IR-TF-140 | Final Testing (pressure tests) of Irrigation Network-[Road 14] | 2027-06-21 → 2027-03-22 (-91d) | 2027-07-01 → 2027-04-01 (-91d) |  | -232d → -159d |  |
| 12 | **Street Lighting Network** | 2027-03-29 → 2027-02-28 (-29d) | 2027-06-28 → 2027-05-06 (-53d) |  |  |  |
| TR | **Termination and Testing Works** | 2027-03-29 → 2027-02-28 (-29d) | 2027-06-28 → 2027-05-06 (-53d) |  |  |  |
| CO-R11-SL-TF-180 | Termination Works For Lighting Poles Cables of Street Lighting Network-[Road 14] | 2027-03-29 → 2027-02-28 (-29d) | 2027-04-11 → 2027-03-16 (-26d) |  | -184d → -162d |  |
| CO-R11-SL-TF-190 | Termination Works For Panel Board Cables of Street Lighting Network-[Road 14] | 2027-06-13 → 2027-04-21 (-53d) | 2027-06-26 → 2027-05-04 (-53d) |  | -248d → -208d |  |
| CO-R14-SL-TF-380 | Testing Works For Panel Board Cables of Street Lighting Network-[Road 14] | 2027-06-27 → 2027-05-05 (-53d) | 2027-06-28 → 2027-05-06 (-53d) |  | -248d → -208d |  |
| 14 | **Medium Voltage Network** | 2027-05-24 → 2026-11-26 (-179d) | 2027-05-31 → 2026-12-03 (-179d) |  |  |  |
| TT | **Termination and Testing Works** | 2027-05-24 → 2026-11-26 (-179d) | 2027-05-31 → 2026-12-03 (-179d) |  |  |  |

| ID | Task | Start | Finish | Total float | Predecessors |
| --- | --- | --- | --- | --- | --- |
| CO-R11-MV-TF-180 | Termination Works of Medium Voltage Network-[Road 14] | 2027-05-24 → 2026-11-26 (-179d) | 2027-05-31 → 2026-12-03 (-179d) | -200d → -52d |  |
| 1 | **Road Works** | 2027-08-15 → 2027-06-20 (-56d) | 2027-09-12 → 2027-07-18 (-56d) |  |  |
| 1 | **Bituminous Construction** | 2027-08-15 → 2027-06-20 (-56d) | 2027-08-31 → 2027-07-06 (-56d) |  |  |
| CO-R11-S07-RD-F-110 | Application of Prime Coat Layer for Road Works- S.W 09-[Road 14] | 2027-08-15 → 2027-06-20 (-56d) | 2027-08-28 → 2027-07-03 (-56d) | -252d → -194d |  |
| CO-R11-S08-RD-F-140 | Application of Prime Coat Layer for Road Works- S.W 10-[Road 14] | 2027-08-15 → 2027-06-20 (-56d) | 2027-08-25 → 2027-06-30 (-56d) | -250d → -192d |  |
| CO-R11-S07-RD-F-120 | Bituminous Base & Wearing Courses Layers for Road Works- S.W 09-[Road 14] | 2027-08-21 → 2027-06-26 (-56d) | 2027-08-31 → 2027-07-06 (-56d) | -252d → -194d |  |
| CO-R11-S08-RD-F-150 | Bituminous Base & Wearing Courses Layers for Road Works- S.W 10-[Road 14] | 2027-08-21 → 2027-06-26 (-56d) | 2027-08-31 → 2027-07-06 (-56d) | -252d → -194d |  |
| TS | **Traffic Signs Boards and Roads Marking** | 2027-08-30 → 2027-07-05 (-56d) | 2027-09-12 → 2027-07-18 (-56d) |  |  |
| CO-R11-S07-RD-F-100 | Installation Works of Traffic Signs Boards For Road Works- S.W 09-[Road 14] | 2027-08-30 → 2027-07-05 (-56d) | 2027-09-12 → 2027-07-18 (-56d) | -252d → -194d |  |
| CO-R11-S07-RD-F-160 | Application of Road Marking Works For Road Works- S.W 09-[Road 14] | 2027-09-01 → 2027-07-07 (-56d) | 2027-09-12 → 2027-07-18 (-56d) | -252d → -194d |  |
| CO-R11-S08-RD-F-130 | Installation Works of Traffic Signs Boards For Road Works- S.W 10-[Road 14] | 2027-09-01 → 2027-07-07 (-56d) | 2027-09-12 → 2027-07-18 (-56d) | -251d → -193d |  |
| CO-R11-S08-RD-F-170 | Application of Road Marking Works For Road Works- S.W 10-[Road 14] | 2027-09-01 → 2027-07-07 (-56d) | 2027-09-12 → 2027-07-18 (-56d) | -252d → -194d |  |
| 7 | **Road 15 Local 1 ( 556 LM )** |  | 2027-09-27 → 2027-08-01 (-57d) |  |  |
| 10 | **Sewage Network** |  | 2027-07-29 → 2027-05-04 (-86d) |  |  |
| TF | **Testing and Finishes** |  | 2027-07-29 → 2027-05-04 (-86d) |  |  |
| CO-R15-SW-TF-110 | Install Manhole Cover Works for External Finishes of Sewage Network-[Road 15] | 2027-07-13 → 2027-04-18 (-86d) | 2027-07-26 → 2027-05-01 (-86d) | -241d → -172d |  |
| CO-R15-SW-TF-130 | Main Manhole Internal Finishes (Benching + Insulation) of Sewage Network-[Road 15] | 2027-07-17 → 2027-04-21 (-87d) | 2027-07-29 → 2027-05-04 (-86d) | -241d → -172d |  |
| 11 | **Storm Drainage Network** |  | 2027-08-14 → 2027-05-25 (-81d) |  |  |
| TF | **Testing and Finishes** |  | 2027-08-14 → 2027-05-25 (-81d) |  |  |
| CO-R15-SD-TF-100 | Testing Work for Pipes of Storm Drainage Network-[Road 15] |  |  |  | CO-R15.S09-SD-130 SS+3d, PRO-R15-SD-DL-140 FF+3d, CO-R15.S09-RD-P-100 SS+3d, CO-R15.S09-RD-P-100 FF+3d, CO-R15.S09-SD-130 FF+3d, CO-R15.S09-SD-120 SS, CO-R15.S09-SD-120, ENG-SH-SD-ML-A-110, ENG-MS-SD-ML-A-110, CO-R15.S10-RD-P-100 SS+3d, CO-R15.S10-RD-P-100 FF+3d → CO-R15.S09-SD-130 SS+3d, CO-R15.S09-RD-P-100 SS+3d, CO-R15.S09-RD-P-100 FF+3d, CO-R15.S09-SD-130 FF+3d, CO-R15.S09-SD-120 SS, CO-R15.S09-SD-120, ENG-SH-SD-ML-A-110, ENG-MS-SD-ML-A-110, CO-R15.S10-RD-P-100 SS+3d, CO-R15.S10-RD-P-100 FF+3d |
| CO-R15-SD-TF-120 | Main Manhole Internal Finishes (Benching + Insulation ) for Storm Drainage Network-[Road 15] |  |  |  | CO-R15-SD-TF-100 SS+3d, CO-R15-SD-TF-100 FF+3d, PRO-R15-SD-DL-160 FF+3d, CO-R15-SD-TF-100, CO-R15-SD-TF-110 SS, CO-R15-SD-TF-110, CO-R15-SD-TF-110 FF, CO-R15-SW-TF-110 SS, CO-R15-SW-TF-110, CO-R15-SW-TF-110 FF, ENG-SH-RD-A-100, ENG-SH-RD-A-100 FF, CO-R14-SD-TF-120, ENG-MS-RD-A-10, ENG-MS-RD-A-10 FF, PRO-R15-SD-DL-100 FF+3d → CO-R15-SD-TF-100 SS+3d, CO-R15-SD-TF-100 FF+3d, CO-R15-SD-TF-100, ENG-SH-RD-A-100, ENG-SH-RD-A-100 FF, CO-R14-SD-TF-120, ENG-MS-RD-A-10, ENG-MS-RD-A-10 FF, PRO-R15-SD-DL-100 FF+3d |
| CO-R15-SD-TF-110 | Install Catch Basin Cover Works for External Finishes of Storm Drainage Network-[Road 15] | 2027-06-09 → 2026-11-10 (-211d) | 2027-06-22 → 2026-11-23 (-211d) | -203d → -28d |  |
| CO-R15-SD-TF-130 | Catch Basin Internal Finishes (Benching + Insulation ) for Storm Drainage Network-[Road 15] | 2027-07-27 → 2027-05-02 (-86d) | 2027-08-14 → 2027-05-25 (-81d) | -232d → -160d |  |
| 9 | **Potable Water Network** | 2027-07-08 → 2027-03-29 (-101d) | 2027-08-14 → 2027-06-19 (-56d) |  |  |
| TF | **Testing and Finishes** | 2027-07-08 → 2027-03-29 (-101d) | 2027-08-14 → 2027-06-19 (-56d) |  |  |
| CO-R15-PW-TF-100 | Final Finishes works and Covers for Valves and Valve Chambers of Potable Water Network-[Road 15] | 2027-07-08 → 2027-03-29 (-101d) | 2027-07-21 → 2027-04-11 (-101d) | -237d → -155d |  |
| CO-R15-PW-TF-120 | Fire Hydrant Finishies (S.Box + Safety + Marker Post ) of Potable Water Network-[Road 15] | 2027-07-22 → 2027-04-12 (-101d) | 2027-08-04 → 2027-04-25 (-101d) | -237d → -155d |  |
| CO-R15-PW-TF-110 | Testing Work for Main Line of Potable Water Network-[Road 15] | 2027-08-01 → 2027-06-06 (-56d) | 2027-08-14 → 2027-06-19 (-56d) | -257d → -209d |  |
| 13 | **Irrigation Network** | 2027-07-03 → 2027-04-03 (-91d) | 2027-07-13 → 2027-04-13 (-91d) |  |  |
| TF | **Testing and Finishes** | 2027-07-03 → 2027-04-03 (-91d) | 2027-07-13 → 2027-04-13 (-91d) |  |  |
| CO-R15-IR-TF-150 | Final Testing (pressure tests) of Irrigation Network-[Road 15] | 2027-07-03 → 2027-04-03 (-91d) | 2027-07-13 → 2027-04-13 (-91d) | -232d → -159d |  |
| 12 | **Street Lighting Network** | 2027-04-12 → 2027-03-17 (-26d) | 2027-07-31 → 2027-06-14 (-47d) |  |  |
| TR | **Termination and Testing Works** | 2027-04-12 → 2027-03-17 (-26d) | 2027-07-31 → 2027-06-14 (-47d) |  |  |
| CO-R15-SL-TF-200 | Termination Works For Lighting Poles Cables of Street Lighting Network-[Road 15] | 2027-04-12 → 2027-03-17 (-26d) | 2027-04-25 → 2027-03-30 (-26d) | -184d → -162d |  |
| CO-R15-SL-TF-210 | Termination Works For Panel Board Cables of Street Lighting Network-[Road 15] | 2027-06-29 → 2027-05-08 (-52d) | 2027-07-12 → 2027-05-26 (-47d) | -248d → -208d |  |
| CO-R15-SL-TF-380 | Testing Works For Panel Board Cables of Street Lighting Network-[Road 15] | 2027-07-13 → 2027-05-27 (-47d) | 2027-07-31 → 2027-06-14 (-47d) | -242d → -202d |  |
| 14 | **Medium Voltage Network** | 2027-06-01 → 2026-12-05 (-178d) | 2027-06-08 → 2026-12-12 (-178d) |  |  |
| TT | **Termination and Testing Works** | 2027-06-01 → 2026-12-05 (-178d) | 2027-06-08 → 2026-12-12 (-178d) |  |  |
| CO-R15-MV-TF-200 | Termination Works of Medium Voltage Network-[Road 15] | 2027-06-01 → 2026-12-05 (-178d) | 2027-06-08 → 2026-12-12 (-178d) | -196d → -52d |  |
| 1 | **Road Works** |  | 2027-09-27 → 2027-08-01 (-57d) |  |  |
| CO-R15-S09-RD-F-110 | Application of Prime Coat Layer for Road Works- S.W 11-[Road 15] |  |  |  | CO-R11-S07-RD-F-110, CO-R15.S09-RD-P-130 → CO-R15.S09-RD-P-130 |
| CO-R15-S09-RD-F-120 | Bituminous Base & Wearing Courses Layers for Road Works- S.W 11-[Road 15] |  |  |  | CO-R15-S09-RD-F-110 SS+3d, CO-R15-S09-RD-F-110 FF+3d, CO-R11-S07-RD-F-120 → CO-R15-S09-RD-F-110 SS+3d, CO-R15-S09-RD-F-110 FF+3d |
| CO-R15-S10-RD-F-140 | Application of Prime Coat Layer for Road Works- S.W 12-[Road 15] |  |  |  | CO-R11-S08-RD-F-140, PRO-R15-RD-DL-160 FF+3d, CO-R15.S10-RD-P-130, CO-R15-S09-RD-F-110 SS → PRO-R15-RD-DL-160 FF+3d, CO-R15.S10-RD-P-130, CO-R15-S09-RD-F-110 SS |
| CO-R15-S10-RD-F-150 | Bituminous Base & Wearing Courses Layers for Road Works- S.W 12-[Road 15] |  |  |  | CO-R15-S10-RD-F-140 SS+3d, CO-R15-S10-RD-F-140 FF+3d, CO-R11-S08-RD-F-150, PRO-R15-RD-DL-170 FF+3d, CO-R15-S09-RD-F-120 SS → CO-R15-S10-RD-F-140 SS+3d, CO-R15-S10-RD-F-140 FF+3d, PRO-R15-RD-DL-170 FF+3d, CO-R15-S09-RD-F-120 SS |
| TS | **Traffic Signs Boards and Roads Marking** | 2027-09-13 → 2027-07-19 (-56d) | 2027-09-27 → 2027-08-01 (-57d) |  |  |
| CO-R15-S09-RD-F-100 | Installation Works of Traffic Signs Boards For Road Works- S.W 11-[Road 15] | 2027-09-13 → 2027-07-19 (-56d) | 2027-09-25 → 2027-07-29 (-58d) | -252d → -194d |  |
| CO-R15-S09-RD-F-160 | Application of Road Marking Works For Road Works- S.W 11-[Road 15] | 2027-09-13 → 2027-07-19 (-56d) | 2027-09-25 → 2027-07-29 (-58d) | -252d → -194d |  |
| CO-R15-S10-RD-F-130 | Installation Works of Traffic Signs Boards For Road Works- S.W 12-[Road 15] | 2027-09-13 → 2027-07-19 (-56d) | 2027-09-27 → 2027-08-01 (-57d) | -251d → -193d |  |
| CO-R15-S10-RD-F-170 | Application of Road Marking Works For Road Works- S.W 12-[Road 15] | 2027-09-13 → 2027-07-19 (-56d) | 2027-09-25 → 2027-07-29 (-58d) | -252d → -194d |  |
| 8 | **Road 16 Local 1 ( 527 LM )** |  | 2027-10-09 → 2027-08-12 (-58d) |  |  |
| 10 | **Sewage Network** |  | 2027-08-12 → 2027-05-24 (-80d) |  |  |
| TF | **Testing and Finishes** |  | 2027-08-12 → 2027-05-24 (-80d) |  |  |
| CO-R16-SW-TF-110 | Install Manhole Cover Works for External Finishes of Sewage Network-[Road 16] | 2027-07-27 → 2027-05-02 (-86d) | 2027-08-09 → 2027-05-20 (-81d) | -241d → -172d |  |
| CO-R16-SW-TF-130 | Main Manhole Internal Finishes (Benching + Insulation) of Sewage Network-[Road 16] | 2027-07-31 → 2027-05-05 (-87d) | 2027-08-12 → 2027-05-24 (-80d) | -241d → -172d |  |
| 11 | **Storm Drainage Network** |  | 2027-09-01 → 2027-06-13 (-80d) |  |  |
| TF | **Testing and Finishes** |  | 2027-09-01 → 2027-06-13 (-80d) |  |  |
| CO-R16-SD-TF-120 | Main Manhole Internal Finishes (Benching + Insulation ) for Storm Drainage Network-[Road 16] |  |  |  | CO-R16-SD-TF-100 SS+3d, CO-R16-SD-TF-100 FF+3d, PRO-R16-SD-DL-160 FF+3d, CO-R16-SD-TF-100, CO-R16-SD-TF-110 SS, CO-R16-SD-TF-110, CO-R16-SD-TF-110 FF, CO-R16-SW-TF-110 SS, CO-R16-SW-TF-110, CO-R16-SW-TF-110 FF, ENG-SH-RD-A-100, ENG-SH-RD-A-100 FF, CO-R15-SD-TF-120, ENG-MS-RD-A-10, ENG-MS-RD-A-10 FF, PRO-R16-SD-DL-100 FF+3d → ENG-SH-RD-A-100, ENG-SH-RD-A-100 FF, CO-R15-SD-TF-120, ENG-MS-RD-A-10, ENG-MS-RD-A-10 FF, PRO-R16-SD-DL-100 FF+3d |
| CO-R16-SD-TF-110 | Install Catch Basin Cover Works for External Finishes of Storm Drainage Network-[Road 16] | 2027-06-23 → 2026-11-24 (-211d) | 2027-07-06 → 2026-12-07 (-211d) | -199d → -24d |  |
| CO-R16-SD-TF-100 | Testing Work for Pipes of Storm Drainage Network-[Road 16] | 2027-05-29 → 2026-12-01 (-179d) | 2027-06-15 → 2026-12-19 (-178d) | -181d → -34d |  |
| CO-R16-SD-TF-130 | Catch Basin Internal Finishes (Benching + Insulation ) for Storm Drainage Network-[Road 16] | 2027-08-15 → 2027-05-26 (-81d) | 2027-09-01 → 2027-06-13 (-80d) | -232d → -160d |  |
| 9 | **Potable Water Network** | 2027-07-22 → 2027-04-12 (-101d) | 2027-08-28 → 2027-07-03 (-56d) |  |  |
| TF | **Testing and Finishes** | 2027-07-22 → 2027-04-12 (-101d) | 2027-08-28 → 2027-07-03 (-56d) |  |  |
| CO-R16-PW-TF-100 | Final Finishes works and Covers for Valves and Valve Chambers of Potable Water Network-[Road 16] | 2027-07-22 → 2027-04-12 (-101d) | 2027-08-04 → 2027-04-25 (-101d) | -237d → -155d |  |
| CO-R16-PW-TF-120 | Fire Hydrant Finishies (S.Box + Safety + Marker Post ) of Potable Water Network-[Road 16] | 2027-08-05 → 2027-04-26 (-101d) | 2027-08-18 → 2027-05-09 (-101d) | -237d → -155d |  |
| CO-R16-PW-TF-110 | Testing Work for Main Line of Potable Water Network-[Road 16] | 2027-08-15 → 2027-06-20 (-56d) | 2027-08-28 → 2027-07-03 (-56d) | -257d → -209d |  |
| 13 | **Irrigation Network** | 2027-07-14 → 2027-04-14 (-91d) | 2027-07-25 → 2027-04-25 (-91d) |  |  |
| TF | **Testing and Finishes** | 2027-07-14 → 2027-04-14 (-91d) | 2027-07-25 → 2027-04-25 (-91d) |  |  |
| CO-R16-IR-TF-160 | Final Testing (pressure tests) of Irrigation Network-[Road 16] | 2027-07-14 → 2027-04-14 (-91d) | 2027-07-25 → 2027-04-25 (-91d) | -232d → -159d |  |
| 12 | **Street Lighting Network** | 2027-04-26 → 2027-03-31 (-26d) | 2027-08-02 → 2027-06-16 (-47d) |  |  |
| TR | **Termination and Testing Works** | 2027-04-26 → 2027-03-31 (-26d) | 2027-08-02 → 2027-06-16 (-47d) |  |  |

| ID | Task | Start | Finish | Complete | Total float | Predecessors |
| --- | --- | --- | --- | --- | --- | --- |
| CO-R16-SL-TF-220 | Termination Works For Lighting Poles Cables of Street Lighting Network-[Road 16] | 2027-04-26 → 2027-03-31 (-26d) | 2027-05-09 → 2027-04-13 (-26d) |  | -184d → -162d |  |
| CO-R16-SL-TF-230 | Termination Works For Panel Board Cables of Street Lighting Network-[Road 16] | 2027-07-13 → 2027-05-27 (-47d) | 2027-07-26 → 2027-06-09 (-47d) |  | -248d → -208d |  |
| CO-R16-SL-TF-380 | Testing Works For Panel Board Cables of Street Lighting Network-[Road 16] | 2027-08-01 → 2027-06-15 (-47d) | 2027-08-02 → 2027-06-16 (-47d) |  | -242d → -202d |  |
| 14 | **Medium Voltage Network** | 2027-06-09 → 2026-12-13 (-178d) | 2027-06-16 → 2026-12-20 (-178d) |  |  |  |
| TT | **Termination and Testing Works** | 2027-06-09 → 2026-12-13 (-178d) | 2027-06-16 → 2026-12-20 (-178d) |  |  |  |
| CO-R16-MV-TF-220 | Termination Works of Medium Voltage Network-[Road 16] | 2027-06-09 → 2026-12-13 (-178d) | 2027-06-16 → 2026-12-20 (-178d) |  | -196d → -52d |  |
| 1 | **Road Works** |  | 2027-10-09 → 2027-08-12 (-58d) |  |  |  |
| TS | **Traffic Signs Boards and Roads Marking** | 2027-09-26 → 2027-07-31 (-57d) | 2027-10-09 → 2027-08-12 (-58d) |  |  |  |
| CO-R16-S11-RD-F-100 | Installation Works of Traffic Signs Boards For Road Works- S.W 13-[Road 16] | 2027-09-26 → 2027-07-31 (-57d) | 2027-10-06 → 2027-08-10 (-57d) |  | -252d → -194d |  |
| CO-R16-S11-RD-F-160 | Application of Road Marking Works For Road Works- S.W 13-[Road 16] | 2027-09-26 → 2027-07-31 (-57d) | 2027-10-06 → 2027-08-10 (-57d) |  | -252d → -194d |  |
| CO-R16-S12-RD-F-170 | Application of Road Marking Works For Road Works- S.W 14-[Road 16] | 2027-09-26 → 2027-07-31 (-57d) | 2027-10-06 → 2027-08-10 (-57d) |  | -252d → -194d |  |
| CO-R16-S12-RD-F-130 | Installation Works of Traffic Signs Boards For Road Works- S.W 14-[Road 16] | 2027-09-28 → 2027-08-02 (-57d) | 2027-10-09 → 2027-08-12 (-58d) |  | -251d → -193d |  |
| 9 | **Road 17 Local 1 ( 500 LM )** |  | 2027-10-18 → 2027-08-22 (-57d) |  |  |  |
| 10 | **Sewage Network** |  | 2027-08-26 → 2027-06-07 (-80d) |  |  |  |
| TF | **Testing and Finishes** |  | 2027-08-26 → 2027-06-07 (-80d) |  |  |  |
| CO-R17-SW-TF-110 | Install Manhole Cover Works for External Finishes of Sewage Network-[Road 17] | 2027-08-10 → 2027-05-22 (-80d) | 2027-08-23 → 2027-06-03 (-81d) |  | -241d → -172d |  |
| CO-R17-SW-TF-130 | Main Manhole Internal Finishes (Benching + Insulation) of Sewage Network-[Road 17] | 2027-08-14 → 2027-05-25 (-81d) | 2027-08-26 → 2027-06-07 (-80d) |  | -241d → -172d |  |
| 11 | **Storm Drainage Network** |  | 2027-09-15 → 2027-06-27 (-80d) |  |  |  |
| TF | **Testing and Finishes** |  | 2027-09-15 → 2027-06-27 (-80d) |  |  |  |
| CO-R17-SD-TF-120 | Main Manhole Internal Finishes (Benching + Insulation ) for Storm Drainage Network-[Road 17] |  |  |  |  | CO-R17-SD-TF-100 SS+3d, CO-R17-SD-TF-100 FF+3d, PRO-R17-SD-DL-160 FF+3d, CO-R17-SD-TF-100, CO-R17-SD-TF-110 SS, CO-R17-SD-TF-110, CO-R17-SD-TF-110 FF, CO-R17-SW-TF-110 SS, CO-R17-SW-TF-110, CO-R17-SW-TF-110 FF, ENG-SH-RD-A-100, ENG-SH-RD-A-100 FF, CO-R16-SD-TF-120, ENG-MS-RD-A-10, ENG-MS-RD-A-10 FF, PRO-R17-SD-DL-100 FF+3d → ENG-SH-RD-A-100, ENG-SH-RD-A-100 FF, CO-R16-SD-TF-120, ENG-MS-RD-A-10, ENG-MS-RD-A-10 FF, PRO-R17-SD-DL-100 FF+3d |
| CO-R17-SD-TF-110 | Install Catch Basin Cover Works for External Finishes of Storm Drainage Network-[Road 17] | 2027-07-07 → 2026-12-08 (-211d) | 2027-07-20 → 2026-12-21 (-211d) |  | -195d → -20d |  |
| CO-R17-SD-TF-100 | Testing Work for Pipes of Storm Drainage Network-[Road 17] | 2027-06-16 → 2026-12-20 (-178d) | 2027-07-04 → 2027-01-06 (-179d) |  | -181d → -34d |  |
| CO-R17-SD-TF-130 | Catch Basin Internal Finishes (Benching + Insulation ) for Storm Drainage Network-[Road 17] | 2027-09-02 → 2027-06-14 (-80d) | 2027-09-15 → 2027-06-27 (-80d) |  | -232d → -160d |  |
| 9 | **Potable Water Network** | 2027-08-05 → 2027-04-26 (-101d) | 2027-09-11 → 2027-07-17 (-56d) |  |  |  |
| TF | **Testing and Finishes** | 2027-08-05 → 2027-04-26 (-101d) | 2027-09-11 → 2027-07-17 (-56d) |  |  |  |
| CO-R17-PW-TF-100 | Final Finishes works and Covers for Valves and Valve Chambers of Potable Water Network-[Road 17] | 2027-08-05 → 2027-04-26 (-101d) | 2027-08-18 → 2027-05-09 (-101d) |  | -237d → -155d |  |
| CO-R17-PW-TF-120 | Fire Hydrant Finishies (S.Box + Safety + Marker Post ) of Potable Water Network-[Road 17] | 2027-08-19 → 2027-05-10 (-101d) | 2027-09-01 → 2027-05-29 (-95d) |  | -237d → -155d |  |
| CO-R17-PW-TF-110 | Testing Work for Main Line of Potable Water Network-[Road 17] | 2027-08-29 → 2027-07-04 (-56d) | 2027-09-11 → 2027-07-17 (-56d) |  | -257d → -209d |  |
| 13 | **Irrigation Network** | 2027-07-26 → 2027-04-26 (-91d) | 2027-08-05 → 2027-05-06 (-91d) |  |  |  |
| TF | **Testing and Finishes** | 2027-07-26 → 2027-04-26 (-91d) | 2027-08-05 → 2027-05-06 (-91d) |  |  |  |
| CO-R17-IR-TF-170 | Final Testing (pressure tests) of Irrigation Network-[Road 17] | 2027-07-26 → 2027-04-26 (-91d) | 2027-08-05 → 2027-05-06 (-91d) |  | -232d → -159d |  |
| 12 | **Street Lighting Network** | 2027-05-10 → 2027-04-14 (-26d) | 2027-08-11 → 2027-06-26 (-46d) |  |  |  |
| TR | **Termination and Testing Works** | 2027-05-10 → 2027-04-14 (-26d) | 2027-08-11 → 2027-06-26 (-46d) |  |  |  |
| CO-R17-SL-TF-240 | Termination Works For Lighting Poles Cables of Street Lighting Network-[Road 17] | 2027-05-10 → 2027-04-14 (-26d) | 2027-05-29 → 2027-04-27 (-32d) |  | -184d → -162d |  |
| CO-R17-SL-TF-250 | Termination Works For Panel Board Cables of Street Lighting Network-[Road 17] | 2027-07-27 → 2027-06-10 (-47d) | 2027-08-09 → 2027-06-23 (-47d) |  | -248d → -208d |  |
| CO-R17-SL-TF-380 | Testing Works For Panel Board Cables of Street Lighting Network-[Road 17] | 2027-08-10 → 2027-06-24 (-47d) | 2027-08-11 → 2027-06-26 (-46d) |  | -248d → -208d |  |
| 14 | **Medium Voltage Network** | 2027-06-17 → 2026-12-21 (-178d) | 2027-06-24 → 2026-12-28 (-178d) |  |  |  |
| TT | **Termination and Testing Works** | 2027-06-17 → 2026-12-21 (-178d) | 2027-06-24 → 2026-12-28 (-178d) |  |  |  |
| CO-R17-MV-TF-240 | Termination Works of Medium Voltage Network-[Road 17] | 2027-06-17 → 2026-12-21 (-178d) | 2027-06-24 → 2026-12-28 (-178d) |  | -196d → -52d |  |
| 1 | **Road Works** |  | 2027-10-18 → 2027-08-22 (-57d) |  |  |  |
| TS | **Traffic Signs Boards and Roads Marking** | 2027-10-07 → 2027-08-11 (-57d) | 2027-10-18 → 2027-08-22 (-57d) |  |  |  |
| CO-R17-S13-RD-F-100 | Installation Works of Traffic Signs Boards For Road Works- S.W 15-[Road 17] | 2027-10-07 → 2027-08-11 (-57d) | 2027-10-18 → 2027-08-22 (-57d) |  | -252d → -194d |  |
| CO-R17-S13-RD-F-160 | Application of Road Marking Works For Road Works- S.W 15-[Road 17] | 2027-10-07 → 2027-08-11 (-57d) | 2027-10-18 → 2027-08-22 (-57d) |  | -252d → -194d |  |
| CO-R17-S14-RD-F-170 | Application of Road Marking Works For Road Works- S.W 16-[Road 17] | 2027-10-07 → 2027-08-11 (-57d) | 2027-10-18 → 2027-08-22 (-57d) |  | -252d → -194d |  |
| CO-R17-S14-RD-F-130 | Installation Works of Traffic Signs Boards For Road Works- S.W 16-[Road 17] | 2027-10-11 → 2027-08-15 (-57d) | 2027-10-18 → 2027-08-22 (-57d) |  | -252d → -194d |  |
| 3 | **Road 18 Local 1 ( 479 LM )** |  | 2027-10-25 → 2027-09-21 (-34d) |  |  |  |
| 10 | **Sewage Network** |  | 2027-07-10 → 2027-05-09 (-62d) |  |  |  |
| TF | **Testing and Finishes** |  | 2027-07-10 → 2027-05-09 (-62d) |  |  |  |
| CO-R18-SW-TF-100 | Final Testing For Main Line of Sewage Network-[Road 18] |  |  |  |  | CO-R09-SW-TF-100, CO-R11.S06-RD-P-100, CO-R18.S15-RD-P-160 SS, CO-R18.S15-RD-P-160 FF → CO-R11.S06-RD-P-100, CO-R18.S15-RD-P-160 SS, CO-R18.S15-RD-P-160 FF |
| CO-R18-SW-TF-110 | Install Manhole Cover Works for External Finishes of Sewage Network-[Road 18] | 2027-06-23 → 2026-11-04 A (-231d) | 2027-07-06 → 2027-05-05 (-62d) | 0% → 50% | -197d → -149d |  |
| CO-R18-SW-TF-130 | Main Manhole Internal Finishes (Benching + Insulation) of Sewage Network-[Road 18] | 2027-06-27 → 2026-11-04 A (-235d) | 2027-07-10 → 2027-05-09 (-62d) | 0% → 50% | -200d → -152d |  |
| 11 | **Storm Drainage Network** |  | 2027-07-29 → 2027-06-03 (-56d) |  |  |  |
| TF | **Testing and Finishes** |  | 2027-07-29 → 2027-06-03 (-56d) |  |  |  |
| CO-R18-SD-TF-120 | Main Manhole Internal Finishes (Benching + Insulation ) for Storm Drainage Network-[Road 18] |  |  |  |  | CO-R18-SD-TF-100 SS+3d, CO-R18-SD-TF-100 FF+3d, CO-R18-SD-TF-100, CO-R18-SD-TF-110 SS, CO-R18-SD-TF-110, CO-R18-SD-TF-110 FF, CO-R18-SW-TF-110 SS, CO-R18-SW-TF-110 FF, ENG-SH-RD-A-100, ENG-SH-RD-A-100 FF, CO-R09-SD-TF-120, ENG-MS-RD-A-10, ENG-MS-RD-A-10 FF, PRO-R18-SD-DL-190, PRO-R18-SD-DL-170 FF+3d → ENG-SH-RD-A-100, ENG-SH-RD-A-100 FF, ENG-MS-RD-A-10, ENG-MS-RD-A-10 FF, PRO-R18-SD-DL-170 FF+3d |
| CO-R18-SD-TF-100 | Testing Work for Pipes of Storm Drainage Network-[Road 18] | 2027-06-09 → 2026-11-04 A (-217d) | 2027-06-27 → 2027-04-26 (-62d) | 0% → 50% | -179d → -128d |  |
| CO-R18-SD-TF-110 | Install Catch Basin Cover Works for External Finishes of Storm Drainage Network-[Road 18] | 2027-05-31 → 2026-11-04 A (-208d) | 2027-06-17 → 2027-04-17 (-61d) | 0% → 50% | -171d → -120d |  |
| CO-R18-SD-TF-130 | Catch Basin Internal Finishes (Benching + Insulation ) for Storm Drainage Network-[Road 18] | 2027-07-12 → 2026-11-04 A (-250d) | 2027-07-29 → 2027-06-03 (-56d) | 0% → 50% | -191d → -140d |  |
| 9 | **Potable Water Network** | 2027-07-04 → 2026-11-04 (-242d) | 2027-09-26 → 2027-07-31 (-57d) |  |  |  |
| TF | **Testing and Finishes** | 2027-07-04 → 2026-11-04 (-242d) | 2027-09-26 → 2027-07-31 (-57d) |  |  |  |
| CO-R18-PW-TF-100 | Final Finishes works and Covers for Valves and Valve Chambers of Potable Water Network-[Road 18] | 2027-07-04 → 2026-11-04 A (-242d) | 2027-07-17 → 2027-05-22 (-56d) | 0% → 50% | -209d → -161d |  |
| CO-R18-PW-TF-110 | Testing Work for Main Line of Potable Water Network-[Road 18] | 2027-09-12 → 2026-11-04 A (-312d) | 2027-09-26 → 2027-07-31 (-57d) | 0% → 50% | -257d → -209d |  |
| CO-R18-PW-TF-120 | Fire Hydrant Finishies (S.Box + Safety + Marker Post ) of Potable Water Network-[Road 18] | 2027-07-18 → 2026-11-04 A (-256d) | 2027-07-31 → 2027-06-05 (-56d) | 0% → 50% | -209d → -161d |  |
| 13 | **Irrigation Network** | 2027-06-24 → 2026-11-04 (-232d) | 2027-07-12 → 2027-05-11 (-62d) |  |  |  |
| TF | **Testing and Finishes** | 2027-06-24 → 2026-11-04 (-232d) | 2027-07-12 → 2027-05-11 (-62d) |  |  |  |
| CO-R18-IR-TF-110 | Final Testing (pressure tests) of Irrigation Network-[Road 18] | 2027-06-24 → 2026-11-04 A (-232d) | 2027-07-12 → 2027-05-11 (-62d) | 0% → 50% | -211d → -163d |  |
| 12 | **Street Lighting Network** | 2027-04-15 → 2026-11-04 (-162d) | 2027-07-18 → 2027-06-16 (-32d) |  |  |  |
| TR | **Termination and Testing Works** | 2027-04-15 → 2026-11-04 (-162d) | 2027-07-18 → 2027-06-16 (-32d) |  |  |  |
| CO-R18-SL-TF-120 | Termination Works For Lighting Poles Cables of Street Lighting Network-[Road 18] | 2027-04-15 → 2026-11-04 A (-162d) | 2027-04-29 → 2027-03-29 (-31d) | 0% → 80% | -163.25d → -136.25d |  |
| CO-R18-SL-TF-130 | Termination Works For Panel Board Cables of Street Lighting Network-[Road 18] | 2027-07-01 → 2026-11-04 A (-239d) | 2027-07-15 → 2027-06-14 (-31d) | 0% → 50% | -226.5d → -199.5d |  |
| CO-R18-SL-TF-380 | Testing Works For Panel Board Cables of Street Lighting Network-[Road 18] | 2027-07-15 → 2026-11-04 A (-253d) | 2027-07-18 → 2027-06-16 (-32d) | 0% → 50% | -226.5d → -199.5d |  |

| ID | Task | Start | Finish | Complete | Total float | Predecessors |
| --- | --- | --- | --- | --- | --- | --- |
| 14 | **Medium Voltage Network** | 2027-05-09 → 2026-11-04 (-186d) | 2027-06-01 → 2027-04-17 (-45d) |  |  |  |
| TT | **Termination and Testing Works** | 2027-05-09 → 2026-11-04 (-186d) | 2027-06-01 → 2027-04-17 (-45d) |  |  |  |
| CO-R18-MV-TF-120 | Termination Works of Medium Voltage Network-[Road 18] | 2027-05-09 → 2026-11-04 A (-186d) | 2027-06-01 → 2027-04-17 (-45d) | 0% → 50% | -176d → -142d |  |
| 1 | **Road Works** |  | 2027-10-25 → 2027-09-21 (-34d) |  |  |  |
| CO-R18-S15-RD-F-100 | Application of Prime Coat Layer for Road Works- S.W 03-[Road 18] |  |  |  |  | CO-R09-S1-RD-F-100, CO-R18.S15-RD-P-140, PRO-R18-RD-DL-240 → CO-R18.S15-RD-P-140, PRO-R18-RD-DL-240 |
| CO-R18-S15-RD-F-110 | Bituminous Base & Wearing Courses Layers for Road Works- S.W 03-[Road 18] |  |  |  |  | CO-R18-S15-RD-F-100 SS+3d, CO-R18-S15-RD-F-100 FF+3d, CO-R09-S1-RD-F-120, PRO-R18-RD-DL-250 FF+3d → CO-R18-S15-RD-F-100 SS+3d, CO-R18-S15-RD-F-100 FF+3d, PRO-R18-RD-DL-250 FF+3d |
| CO-R18-S16-RD-F-150 | Application of Prime Coat Layer for Road Works- S.W 04-[Road 18] |  |  |  |  | CO-R09-S2-RD-F-110, CO-R18-S15-RD-F-100 SS, PRO-R18-RD-DL-240 → CO-R18-S15-RD-F-100 SS, PRO-R18-RD-DL-240 |
| CO-R18-S16-RD-F-170 | Bituminous Base & Wearing Courses Layers for Road Works- S.W 04-[Road 18] |  |  |  |  | CO-R18-S16-RD-F-150 SS+3d, CO-R18-S16-RD-F-150 FF+3d, CO-R09-S2-RD-F-130, CO-R18-S15-RD-F-110 SS, PRO-R18-RD-DL-250 FF+3d → CO-R18-S16-RD-F-150 SS+3d, CO-R18-S16-RD-F-150 FF+3d, CO-R18-S15-RD-F-110 SS, PRO-R18-RD-DL-250 FF+3d |
| TS | **Traffic Signs Boards and Roads Marking** | 2027-09-15 → 2026-11-04 (-315d) | 2027-10-25 → 2027-09-21 (-34d) |  |  |  |
| CO-R18-S15-RD-F-120 | Application of Road Marking Works For Road Works- S.W 03-[Road 18] | 2027-09-15 → 2026-11-04 A (-315d) | 2027-09-29 → 2027-08-26 (-34d) | 0% → 50% | -258d → -219.5d |  |
| CO-R18-S15-RD-F-130 | Installation Works of Traffic Signs Boards For Road Works- S.W 03-[Road 18] | 2027-09-30 → 2026-11-04 A (-330d) | 2027-10-13 → 2027-09-09 (-34d) | 0% → 50% | -258d → -219.5d |  |
| CO-R18-S16-RD-F-140 | Application of Road Marking Works For Road Works- S.W 04-[Road 18] | 2027-10-07 → 2026-11-04 A (-337d) | 2027-10-24 → 2027-09-20 (-34d) | 0% → 50% | -257d → -218.5d |  |
| CO-R18-S16-RD-F-160 | Installation Works of Traffic Signs Boards For Road Works- S.W 04-[Road 18] | 2027-10-14 → 2026-11-04 A (-344d) | 2027-10-25 → 2027-09-21 (-34d) | 0% → 50% | -258d → -219.5d |  |
| GEN | **Independent Works** |  | 2027-10-25 → 2027-09-21 (-34d) |  |  |  |
| CON | **Tie In To Existing Networks** | 2027-06-06 → 2027-04-05 (-62d) | 2027-10-25 → 2027-09-21 (-34d) |  |  |  |
| 1 | **Phase 2 Block "J"** | 2027-06-06 → 2027-04-05 (-62d) | 2027-10-25 → 2027-09-21 (-34d) |  |  |  |
| 2 | **Road 09 Local 2 ( 2278 LM )** | 2027-06-26 → 2027-04-18 (-69d) | 2027-10-10 → 2027-08-14 (-57d) |  |  |  |
| 15 | **Storm Drainage Network** | 2027-09-16 → 2027-06-28 (-80d) | 2027-09-25 → 2027-07-05 (-82d) |  |  |  |
| TIE-SD-R09 | TIE IN Existing Network For Storm Drainage Network | 2027-09-16 → 2027-06-28 (-80d) | 2027-09-25 → 2027-07-05 (-82d) |  | -232d → -150d |  |
| 16 | **Sewage Network** | 2027-08-28 → 2027-06-08 (-81d) | 2027-09-09 → 2027-06-21 (-80d) |  |  |  |
| TIE-SW-R09 | TIE IN Existing Network For Sewage Network | 2027-08-28 → 2027-06-08 (-81d) | 2027-09-09 → 2027-06-21 (-80d) |  | -207d → -138d |  |
| 17 | **Potable Water Network** | 2027-09-27 → 2027-08-01 (-57d) | 2027-10-10 → 2027-08-14 (-57d) |  |  |  |
| TIE-PW-R09 | TIE IN Existing Network For Potable Water Network | 2027-09-27 → 2027-08-01 (-57d) | 2027-10-10 → 2027-08-14 (-57d) |  | -245d → -184d |  |
| 1 | **Irrigation Network** | 2027-08-07 → 2027-05-12 (-87d) | 2027-08-19 → 2027-05-31 (-80d) |  |  |  |
| TIE-IR-R09 | TIE IN Existing Network For Irrigation Network | 2027-08-07 → 2027-05-12 (-87d) | 2027-08-19 → 2027-05-31 (-80d) |  | -203d → -120d |  |
| 18 | **Meduim Voltage Network** | 2027-06-26 → 2027-04-18 (-69d) | 2027-07-15 → 2027-05-08 (-68d) |  |  |  |
| TIE-R09-MV | TIE IN Existing Network For Medium Voltage Network | 2027-06-26 → 2027-04-18 (-69d) | 2027-07-15 → 2027-05-08 (-68d) |  | -176d → -105d |  |
| 2 | **Street Lighting Network** | 2027-08-12 → 2027-06-27 (-46d) | 2027-09-01 → 2027-07-17 (-46d) |  |  |  |
| TIE-R09-SL | TIE IN Existing Network For Street Lighting Network | 2027-08-12 → 2027-06-27 (-46d) | 2027-09-01 → 2027-07-17 (-46d) |  | -203d → -160d |  |
| 3 | **Telecom Network** | 2027-06-26 → 2027-04-18 (-69d) | 2027-07-06 → 2027-04-28 (-69d) |  |  |  |
| TIE-R09-TE | TIE IN Existing Network For Telecom Network | 2027-06-26 → 2027-04-18 (-69d) | 2027-07-06 → 2027-04-28 (-69d) |  | -172d → -97d |  |
| 4 | **Road 10 Local 2 ( 2352 LM )** | 2027-06-26 → 2027-04-18 (-69d) | 2027-10-25 → 2027-09-21 (-34d) |  |  |  |
| 15 | **Storm Drainage Network** | 2027-09-16 → 2027-06-28 (-80d) | 2027-09-25 → 2027-07-05 (-82d) |  |  |  |
| TIE-SD-R10 | TIE IN Existing Network For Storm Drainage Network | 2027-09-16 → 2027-06-28 (-80d) | 2027-09-25 → 2027-07-05 (-82d) |  | -232d → -150d |  |
| 16 | **Sewage Network** | 2027-08-28 → 2027-06-08 (-81d) | 2027-09-09 → 2027-06-21 (-80d) |  |  |  |
| TIE-SW-R10 | TIE IN Existing Network For Sewage Network | 2027-08-28 → 2027-06-08 (-81d) | 2027-09-09 → 2027-06-21 (-80d) |  | -207d → -138d |  |
| 17 | **Potable Water Network** | 2027-09-27 → 2027-08-01 (-57d) | 2027-10-10 → 2027-08-14 (-57d) |  |  |  |
| TIE-PW-R10 | TIE IN Existing Network For Potable Water Network | 2027-09-27 → 2027-08-01 (-57d) | 2027-10-10 → 2027-08-14 (-57d) |  | -245d → -184d |  |
| 1 | **Irrigation Network** | 2027-08-07 → 2027-05-12 (-87d) | 2027-08-19 → 2027-05-31 (-80d) |  |  |  |
| TIE-IR-R10 | TIE IN Existing Network For Irrigation Network | 2027-08-07 → 2027-05-12 (-87d) | 2027-08-19 → 2027-05-31 (-80d) |  | -203d → -120d |  |
| 18 | **Meduim Voltage Network** | 2027-06-26 → 2027-04-18 (-69d) | 2027-07-15 → 2027-05-08 (-68d) |  |  |  |
| TIE-R10-MV | TIE IN Existing Network For Medium Voltage Network | 2027-06-26 → 2027-04-18 (-69d) | 2027-07-15 → 2027-05-08 (-68d) |  | -176d → -105d |  |
| 2 | **Street Lighting Network** | 2027-08-12 → 2027-06-27 (-46d) | 2027-09-01 → 2027-07-17 (-46d) |  |  |  |
| TIE-R10-SL | TIE IN Existing Network For Street Lighting Network | 2027-08-12 → 2027-06-27 (-46d) | 2027-09-01 → 2027-07-17 (-46d) |  | -203d → -160d |  |
| 4 | **Telecom Network** | 2027-06-26 → 2027-04-18 (-69d) | 2027-07-06 → 2027-04-28 (-69d) |  |  |  |
| TIE-R10-TE | TIE IN Existing Network For Telecom Network | 2027-06-26 → 2027-04-18 (-69d) | 2027-07-06 → 2027-04-28 (-69d) |  | -172d → -102d |  |
| 3 | **Road Works** | 2027-10-20 → 2027-09-15 (-35d) | 2027-10-25 → 2027-09-21 (-34d) |  |  |  |
| TIE-R10-RD | TIE IN Existing Network For Road Works | 2027-10-20 → 2027-09-15 (-35d) | 2027-10-25 → 2027-09-21 (-34d) |  | -258d → -216.5d |  |
| 5 | **Road 11 Local 1 ( 670 LM )** | 2027-06-26 → 2027-04-18 (-69d) | 2027-10-25 → 2027-09-21 (-34d) |  |  |  |
| 15 | **Storm Drainage Network** | 2027-09-16 → 2027-06-28 (-80d) | 2027-09-25 → 2027-07-05 (-82d) |  |  |  |
| TIE-SD-R11 | TIE IN Existing Network For Storm Drainage Network | 2027-09-16 → 2027-06-28 (-80d) | 2027-09-25 → 2027-07-05 (-82d) |  | -232d → -150d |  |
| 16 | **Sewage Network** | 2027-08-28 → 2027-06-08 (-81d) | 2027-09-09 → 2027-06-21 (-80d) |  |  |  |
| TIE-SW-R11 | TIE IN Existing Network For Sewage Network | 2027-08-28 → 2027-06-08 (-81d) | 2027-09-09 → 2027-06-21 (-80d) |  | -207d → -138d |  |
| 17 | **Potable Water Network** | 2027-09-27 → 2027-08-01 (-57d) | 2027-10-10 → 2027-08-14 (-57d) |  |  |  |
| TIE-PW-R11 | TIE IN Existing Network For Potable Water Network | 2027-09-27 → 2027-08-01 (-57d) | 2027-10-10 → 2027-08-14 (-57d) |  | -245d → -184d |  |
| 1 | **Irrigation Network** | 2027-08-07 → 2027-05-12 (-87d) | 2027-08-19 → 2027-05-31 (-80d) |  |  |  |
| TIE-IR-R11 | TIE IN Existing Network For Irrigation Network | 2027-08-07 → 2027-05-12 (-87d) | 2027-08-19 → 2027-05-31 (-80d) |  | -203d → -120d |  |
| 18 | **Meduim Voltage Network** | 2027-06-26 → 2027-04-18 (-69d) | 2027-07-15 → 2027-05-08 (-68d) |  |  |  |
| TIE-R11-MV | TIE IN Existing Network For Medium Voltage Network | 2027-06-26 → 2027-04-18 (-69d) | 2027-07-15 → 2027-05-08 (-68d) |  | -176d → -105d |  |
| 2 | **Street Lighting Network** | 2027-08-12 → 2027-06-27 (-46d) | 2027-09-01 → 2027-07-17 (-46d) |  |  |  |
| TIE-R11-SL | TIE IN Existing Network For Street Lighting Network | 2027-08-12 → 2027-06-27 (-46d) | 2027-09-01 → 2027-07-17 (-46d) |  | -203d → -160d |  |
| 4 | **Telecom Network** | 2027-06-26 → 2027-04-18 (-69d) | 2027-07-06 → 2027-04-28 (-69d) |  |  |  |
| TIE-R11-TE | TIE IN Existing Network For Telecom Network | 2027-06-26 → 2027-04-18 (-69d) | 2027-07-06 → 2027-04-28 (-69d) |  | -172d → -98d |  |
| 3 | **Road Works** | 2027-10-20 → 2027-09-15 (-35d) | 2027-10-25 → 2027-09-21 (-34d) |  |  |  |
| TIE-R11-RD | TIE IN Existing Network For Road Works | 2027-10-20 → 2027-09-15 (-35d) | 2027-10-25 → 2027-09-21 (-34d) |  | -258d → -212.5d |  |
| 6 | **Road 14 Local 1 ( 584 LM )** | 2027-06-26 → 2027-04-18 (-69d) | 2027-10-25 → 2027-09-21 (-34d) |  |  |  |
| 15 | **Storm Drainage Network** | 2027-09-16 → 2027-06-28 (-80d) | 2027-09-25 → 2027-07-05 (-82d) |  |  |  |
| TIE-SD-R14 | TIE IN Existing Network For Storm Drainage Network | 2027-09-16 → 2027-06-28 (-80d) | 2027-09-25 → 2027-07-05 (-82d) |  | -232d → -150d |  |
| 16 | **Sewage Network** | 2027-08-28 → 2027-06-08 (-81d) | 2027-09-09 → 2027-06-21 (-80d) |  |  |  |
| TIE-SW-R14 | TIE IN Existing Network For Sewage Network | 2027-08-28 → 2027-06-08 (-81d) | 2027-09-09 → 2027-06-21 (-80d) |  | -207d → -138d |  |

| ID | Task | Start | Finish | Total float |
| --- | --- | --- | --- | --- |
| 17 | **Potable Water Network** | 2027-09-27 → 2027-08-01 (-57d) | 2027-10-10 → 2027-08-14 (-57d) |  |
| TIE-PW-R14 | TIE IN Existing Network For Potable Water Network | 2027-09-27 → 2027-08-01 (-57d) | 2027-10-10 → 2027-08-14 (-57d) | -245d → -184d |
| 1 | **Irrigation Network** | 2027-08-07 → 2027-05-12 (-87d) | 2027-08-19 → 2027-05-31 (-80d) |  |
| TIE-IR-R14 | TIE IN Existing Network For Irrigation Network | 2027-08-07 → 2027-05-12 (-87d) | 2027-08-19 → 2027-05-31 (-80d) | -203d → -120d |
| 18 | **Meduim Voltage Network** | 2027-06-26 → 2027-04-18 (-69d) | 2027-07-15 → 2027-05-08 (-68d) |  |
| TIE-R14-MV | TIE IN Existing Network For Medium Voltage Network | 2027-06-26 → 2027-04-18 (-69d) | 2027-07-15 → 2027-05-08 (-68d) | -176d → -105d |
| 2 | **Street Lighting Network** | 2027-08-12 → 2027-06-27 (-46d) | 2027-09-01 → 2027-07-17 (-46d) |  |
| TIE-R14-SL | TIE IN Existing Network For Street Lighting Network | 2027-08-12 → 2027-06-27 (-46d) | 2027-09-01 → 2027-07-17 (-46d) | -203d → -160d |
| 4 | **Telecom Network** | 2027-06-26 → 2027-04-18 (-69d) | 2027-07-06 → 2027-04-28 (-69d) |  |
| TIE-R14-TE | TIE IN Existing Network For Telecom Network | 2027-06-26 → 2027-04-18 (-69d) | 2027-07-06 → 2027-04-28 (-69d) | -172d → -97d |
| 3 | **Road Works** | 2027-10-20 → 2027-09-15 (-35d) | 2027-10-25 → 2027-09-21 (-34d) |  |
| TIE-R14-RD | TIE IN Existing Network For Road Works | 2027-10-20 → 2027-09-15 (-35d) | 2027-10-25 → 2027-09-21 (-34d) | -258d → -216.5d |
| 7 | **Road 15 Local 1 ( 556 LM )** | 2027-06-26 → 2027-04-18 (-69d) | 2027-10-10 → 2027-08-14 (-57d) |  |
| 15 | **Storm Drainage Network** | 2027-09-16 → 2027-06-28 (-80d) | 2027-09-25 → 2027-07-05 (-82d) |  |
| TIE-SD-R15 | TIE IN Existing Network For Storm Drainage Network | 2027-09-16 → 2027-06-28 (-80d) | 2027-09-25 → 2027-07-05 (-82d) | -232d → -150d |
| 16 | **Sewage Network** | 2027-08-28 → 2027-06-08 (-81d) | 2027-09-09 → 2027-06-21 (-80d) |  |
| TIE-SW-R15 | TIE IN Existing Network For Sewage Network | 2027-08-28 → 2027-06-08 (-81d) | 2027-09-09 → 2027-06-21 (-80d) | -207d → -138d |
| 17 | **Potable Water Network** | 2027-09-27 → 2027-08-01 (-57d) | 2027-10-10 → 2027-08-14 (-57d) |  |
| TIE-PW-R15 | TIE IN Existing Network For Potable Water Network | 2027-09-27 → 2027-08-01 (-57d) | 2027-10-10 → 2027-08-14 (-57d) | -245d → -184d |
| 1 | **Irrigation Network** | 2027-08-07 → 2027-05-12 (-87d) | 2027-08-19 → 2027-05-31 (-80d) |  |
| TIE-IR-R15 | TIE IN Existing Network For Irrigation Network | 2027-08-07 → 2027-05-12 (-87d) | 2027-08-19 → 2027-05-31 (-80d) | -203d → -120d |
| 18 | **Meduim Voltage Network** | 2027-06-26 → 2027-04-18 (-69d) | 2027-07-15 → 2027-05-08 (-68d) |  |
| TIE-R15-MV | TIE IN Existing Network For Medium Voltage Network | 2027-06-26 → 2027-04-18 (-69d) | 2027-07-15 → 2027-05-08 (-68d) | -176d → -105d |
| 2 | **Street Lighting Network** | 2027-08-12 → 2027-06-27 (-46d) | 2027-09-01 → 2027-07-17 (-46d) |  |
| TIE-R15-SL | TIE IN Existing Network For Street Lighting Network | 2027-08-12 → 2027-06-27 (-46d) | 2027-09-01 → 2027-07-17 (-46d) | -203d → -160d |
| 3 | **Telecom Network** | 2027-06-26 → 2027-04-18 (-69d) | 2027-07-06 → 2027-04-28 (-69d) |  |
| TIE-R15-TE | TIE IN Existing Network For Telecom Network | 2027-06-26 → 2027-04-18 (-69d) | 2027-07-06 → 2027-04-28 (-69d) | -172d → -97d |
| 8 | **Road 16 Local 1 ( 527 LM )** | 2027-06-26 → 2027-04-18 (-69d) | 2027-10-10 → 2027-08-14 (-57d) |  |
| 15 | **Storm Drainage Network** | 2027-09-16 → 2027-06-28 (-80d) | 2027-09-25 → 2027-07-05 (-82d) |  |
| TIE-SD-R16 | TIE IN Existing Network For Storm Drainage Network | 2027-09-16 → 2027-06-28 (-80d) | 2027-09-25 → 2027-07-05 (-82d) | -232d → -150d |
| 16 | **Sewage Network** | 2027-08-28 → 2027-06-08 (-81d) | 2027-09-09 → 2027-06-21 (-80d) |  |
| TIE-SW-R16 | TIE IN Existing Network For Sewage Network | 2027-08-28 → 2027-06-08 (-81d) | 2027-09-09 → 2027-06-21 (-80d) | -207d → -138d |
| 17 | **Potable Water Network** | 2027-09-27 → 2027-08-01 (-57d) | 2027-10-10 → 2027-08-14 (-57d) |  |
| TIE-PW-R16 | TIE IN Existing Network For Potable Water Network | 2027-09-27 → 2027-08-01 (-57d) | 2027-10-10 → 2027-08-14 (-57d) | -245d → -184d |
| 1 | **Irrigation Network** | 2027-08-07 → 2027-05-12 (-87d) | 2027-08-19 → 2027-05-31 (-80d) |  |
| TIE-IR-R16 | TIE IN Existing Network For Irrigation Network | 2027-08-07 → 2027-05-12 (-87d) | 2027-08-19 → 2027-05-31 (-80d) | -203d → -120d |
| 18 | **Meduim Voltage Network** | 2027-06-26 → 2027-04-18 (-69d) | 2027-07-15 → 2027-05-08 (-68d) |  |
| TIE-R16-MV | TIE IN Existing Network For Medium Voltage Network | 2027-06-26 → 2027-04-18 (-69d) | 2027-07-15 → 2027-05-08 (-68d) | -176d → -105d |
| 2 | **Street Lighting Network** | 2027-08-12 → 2027-06-27 (-46d) | 2027-09-01 → 2027-07-17 (-46d) |  |
| TIE-R16-SL | TIE IN Existing Network For Street Lighting Network | 2027-08-12 → 2027-06-27 (-46d) | 2027-09-01 → 2027-07-17 (-46d) | -203d → -160d |
| 3 | **Telecom Network** | 2027-06-26 → 2027-04-18 (-69d) | 2027-07-06 → 2027-04-28 (-69d) |  |
| TIE-R16-TE | TIE IN Existing Network For Telecom Network | 2027-06-26 → 2027-04-18 (-69d) | 2027-07-06 → 2027-04-28 (-69d) | -172d → -97d |
| 9 | **Road 17 Local 1 ( 500 LM )** | 2027-06-26 → 2027-04-18 (-69d) | 2027-10-10 → 2027-08-14 (-57d) |  |
| 15 | **Storm Drainage Network** | 2027-09-16 → 2027-06-28 (-80d) | 2027-09-25 → 2027-07-05 (-82d) |  |
| TIE-SD-R17 | TIE IN Existing Network For Storm Drainage Network | 2027-09-16 → 2027-06-28 (-80d) | 2027-09-25 → 2027-07-05 (-82d) | -232d → -150d |
| 16 | **Sewage Network** | 2027-08-28 → 2027-06-08 (-81d) | 2027-09-09 → 2027-06-21 (-80d) |  |
| TIE-SW-R17 | TIE IN Existing Network For Sewage Network | 2027-08-28 → 2027-06-08 (-81d) | 2027-09-09 → 2027-06-21 (-80d) | -207d → -138d |
| 17 | **Potable Water Network** | 2027-09-27 → 2027-08-01 (-57d) | 2027-10-10 → 2027-08-14 (-57d) |  |
| TIE-PW-R17 | TIE IN Existing Network For Potable Water Network | 2027-09-27 → 2027-08-01 (-57d) | 2027-10-10 → 2027-08-14 (-57d) | -245d → -184d |
| 1 | **Irrigation Network** | 2027-08-07 → 2027-05-12 (-87d) | 2027-08-19 → 2027-05-31 (-80d) |  |
| TIE-IR-R17 | TIE IN Existing Network For Irrigation Network | 2027-08-07 → 2027-05-12 (-87d) | 2027-08-19 → 2027-05-31 (-80d) | -203d → -120d |
| 18 | **Meduim Voltage Network** | 2027-06-26 → 2027-04-18 (-69d) | 2027-07-15 → 2027-05-08 (-68d) |  |
| TIE-R17-MV | TIE IN Existing Network For Medium Voltage Network | 2027-06-26 → 2027-04-18 (-69d) | 2027-07-15 → 2027-05-08 (-68d) | -176d → -105d |
| 2 | **Street Lighting Network** | 2027-08-12 → 2027-06-27 (-46d) | 2027-09-01 → 2027-07-17 (-46d) |  |
| TIE-R17-SL | TIE IN Existing Network For Street Lighting Network | 2027-08-12 → 2027-06-27 (-46d) | 2027-09-01 → 2027-07-17 (-46d) | -203d → -160d |
| 3 | **Telecom Network** | 2027-06-26 → 2027-04-18 (-69d) | 2027-07-06 → 2027-04-28 (-69d) |  |
| TIE-R17-TE | TIE IN Existing Network For Telecom Network | 2027-06-26 → 2027-04-18 (-69d) | 2027-07-06 → 2027-04-28 (-69d) | -172d → -97d |
| 1 | **Road 18 Local 1 ( 479 LM )** | 2027-06-06 → 2027-04-05 (-62d) | 2027-10-10 → 2027-08-14 (-57d) |  |
| 15 | **Storm Drainage Network** | 2027-09-16 → 2027-06-28 (-80d) | 2027-09-25 → 2027-07-05 (-82d) |  |
| TIE-SD-R18 | TIE IN Existing Network For Storm Drainage Network | 2027-09-16 → 2027-06-28 (-80d) | 2027-09-25 → 2027-07-05 (-82d) | -232d → -146d |
| 16 | **Sewage Network** | 2027-08-28 → 2027-06-08 (-81d) | 2027-09-09 → 2027-06-21 (-80d) |  |
| TIE-SW-R18 | TIE IN Existing Network For Sewage Network | 2027-08-28 → 2027-06-08 (-81d) | 2027-09-09 → 2027-06-21 (-80d) | -205d → -134d |
| 17 | **Potable Water Network** | 2027-09-27 → 2027-08-01 (-57d) | 2027-10-10 → 2027-08-14 (-57d) |  |
| TIE-PW-R18 | TIE IN Existing Network For Potable Water Network | 2027-09-27 → 2027-08-01 (-57d) | 2027-10-10 → 2027-08-14 (-57d) | -245d → -180d |
| 1 | **Irrigation Network** | 2027-08-07 → 2027-05-12 (-87d) | 2027-08-19 → 2027-05-31 (-80d) |  |
| TIE-IR-R18 | TIE IN Existing Network For Irrigation Network | 2027-08-07 → 2027-05-12 (-87d) | 2027-08-19 → 2027-05-31 (-80d) | -203d → -116d |
| 18 | **Meduim Voltage Network** | 2027-06-26 → 2027-04-18 (-69d) | 2027-07-15 → 2027-05-08 (-68d) |  |
| TIE-R18-MV10 | TIE IN Existing Network For Medium Voltage Network | 2027-06-26 → 2027-04-18 (-69d) | 2027-07-15 → 2027-05-08 (-68d) | -176d → -101d |
| 2 | **Street Lighting Network** | 2027-08-12 → 2027-06-27 (-46d) | 2027-09-01 → 2027-07-17 (-46d) |  |
| TIE-R18-SL10 | TIE IN Existing Network For Street Lighting Network | 2027-08-12 → 2027-06-27 (-46d) | 2027-09-01 → 2027-07-17 (-46d) | -203d → -156d |

| ID | Task | Start | Finish | Complete | Total float | Predecessors |
| --- | --- | --- | --- | --- | --- | --- |
| 3 | **Telecom Network** | 2027-06-06 → 2027-04-05 (-62d) | 2027-06-19 → 2027-04-18 (-62d) |  |  |  |
| TIE-R18-TE10 | TIE IN Existing Network For Telecom Network | 2027-06-06 → 2027-04-05 (-62d) | 2027-06-19 → 2027-04-18 (-62d) |  | -157d → -84d |  |
| CO-SD-PO-K1-100-P3 | Excavation & Filling Works - PART 3 |  |  |  |  | CO-SD-PO-K1-100-P2, PRO-DPO-CV-DL-10 → CO-SD-PO-K1-100-P2 |
| CO-SD-PO-K1-110-P1 | Finished Grouted Riprap - PART 1 | 2026-11-10 A |  | 0% → 50% | -181d → -171d |  |
| CO-SD-PO-K1-110-P2 | Finished Grouted Riprap - PART 2 | 2026-12-05 A |  | 0% → 50% | -181d → -171d |  |
| CO-SD-PO-K1-110-P3 | Finished Grouted Riprap - PART 3 | 2026-12-29 A |  | 0% → 50% | -181d → -171d |  |
| CO-SD-PO-K1-110-P4 | Finished Grouted Riprap - PART 4 | 2027-01-23 A |  | 0% → 50% | -181d → -171d |  |
| CO-SD-PO-K1-120 | Outfall structure | 2027-02-16 A |  | 0% → 50% | -181d → -171d |  |
| CO-SD-PO-K1-130 | Acess Entrace Ramp | 2027-03-23 A |  | 0% → 50% | -181d → -171d |  |
| CO-SD-PO-K2-100-P1 | Excavation & Filling Works - PART 1 | 2026-11-10 A |  | 0% → 30% | -189d → -164d |  |
| CO-SD-PO-K2-100-P2 | Excavation & Filling Works - PART 2 | 2026-12-05 A |  | 0% → 30% | -189d → -164d |  |
| CO-SD-PO-K2-100-P3 | Excavation & Filling Works - PART 3 | 2026-12-29 A |  | 0% → 30% | -189d → -164d |  |
| CO-SD-PO-K2-100-P4 | Excavation & Filling Works - PART 4 | 2027-01-23 A |  | 0% → 30% | -189d → -164d |  |
| TC | **Testing and Comissioning** |  | 2027-11-14 → 2027-09-21 (-54d) |  |  |  |
| INF | **Infrastructure Networks** |  | 2027-11-14 → 2027-09-21 (-54d) |  |  |  |
| PW1 | **Irrigation Network** |  | 2027-09-09 → 2027-05-31 (-101d) |  |  |  |
| T/C-IR | Testing and Commissioning of Irrigation Network |  | 2027-09-09 → 2027-05-31 (-101d) |  | -203d → -116d | TIE-IR-R09, TIE-IR-R10, TIE-IR-R11, TIE-IR-R14, TIE-IR-R15, TIE-IR-R16, TIE-IR-R17, TIE-IR-R18 → TIE-IR-R09 FF, TIE-IR-R10 FF, TIE-IR-R11 FF, TIE-IR-R14 FF, TIE-IR-R15 FF, TIE-IR-R16 FF, TIE-IR-R17 FF, TIE-IR-R18 FF |
| PW | **Potable Water Network** |  | 2027-10-30 → 2027-08-14 (-77d) |  |  |  |
| T/C-PW | Testing and Commissioning of Potable Water Network |  | 2027-10-30 → 2027-08-14 (-77d) |  | -245d → -180d | TIE-PW-R09, TIE-PW-R10, TIE-PW-R11, TIE-PW-R14, TIE-PW-R15, TIE-PW-R16, TIE-PW-R17, TIE-PW-R18 → TIE-PW-R09 FF, TIE-PW-R10 FF, TIE-PW-R11 FF, TIE-PW-R14 FF, TIE-PW-R15 FF, TIE-PW-R16 FF, TIE-PW-R17 FF, TIE-PW-R18 FF |
| SW | **Sewage Network** |  | 2027-09-12 → 2027-07-26 (-48d) |  |  |  |
| T/C-SW | Testing and Commissioning of Sewage Network |  | 2027-09-12 → 2027-07-26 (-48d) |  | -205d → -164d | TIE-SW-R09, TIE-SW-R10, TIE-SW-R11, TIE-SW-R14, TIE-SW-R15, TIE-SW-R16, TIE-SW-R17, T/C-SPS FF, TIE-SW-R18 → TIE-SW-R09 FF, TIE-SW-R10 FF, TIE-SW-R11 FF, TIE-SW-R14 FF, TIE-SW-R15 FF, TIE-SW-R16 FF, TIE-SW-R17 FF, T/C-SPS FF, TIE-SW-R18 FF |
| SD | **Storm Drainage Network** |  | 2027-10-14 → 2027-07-05 (-101d) |  |  |  |
| T/C-SD | Testing and Commissioning of Storm Drainage Network |  | 2027-10-14 → 2027-07-05 (-101d) |  | -232d → -146d | TIE-SD-R09, TIE-SD-R10, TIE-SD-R11, TIE-SD-R14, TIE-SD-R15, TIE-SD-R16, TIE-SD-R17, T/C-DPO FF, TIE-SD-R18 → TIE-SD-R09 FF, TIE-SD-R10 FF, TIE-SD-R11 FF, TIE-SD-R14 FF, TIE-SD-R15 FF, TIE-SD-R16 FF, TIE-SD-R17 FF, T/C-DPO FF, TIE-SD-R18 FF |
| SL | **Street Lighting Network** |  | 2027-09-09 → 2027-07-17 (-54d) |  |  |  |
| T/C-SL | Testing and Commissioning of Street Lighting Network |  | 2027-09-09 → 2027-07-17 (-54d) |  | -203d → -156d | TIE-R09-SL, TIE-R10-SL, TIE-R11-SL, TIE-R14-SL, TIE-R15-SL, TIE-R16-SL, TIE-R17-SL, TIE-R18-SL10 → TIE-R09-SL FF, TIE-R10-SL FF, TIE-R11-SL FF, TIE-R14-SL FF, TIE-R15-SL FF, TIE-R16-SL FF, TIE-R17-SL FF, TIE-R18-SL10 FF |
| TE | **Telecom Network** |  | 2027-07-11 → 2027-06-26 (-15d) |  |  |  |
| T/C-TE | Testing and Commissioning of Telecom Network |  | 2027-07-11 → 2027-06-26 (-15d) |  | -172d → -138d | TIE-R09-TE, TIE-R10-TE, TIE-R11-TE, TIE-R14-TE, TIE-R15-TE, TIE-R16-TE, TIE-R17-TE, T/C-DPO, TIE-R18-TE10 → TIE-R09-TE FF, TIE-R10-TE FF, TIE-R11-TE FF, TIE-R14-TE FF, TIE-R15-TE FF, TIE-R16-TE FF, TIE-R17-TE FF, T/C-DPO FF, TIE-R18-TE10 FF |
| MV | **Medium Voltage Network** |  | 2027-07-20 → 2027-06-26 (-24d) |  |  |  |
| T/C-MV | Testing and Commissioning of Medium Voltage Network |  | 2027-07-20 → 2027-06-26 (-24d) |  | -176d → -138d | TIE-R09-MV, TIE-R10-MV, TIE-R11-MV, TIE-R14-MV, TIE-R15-MV, TIE-R16-MV, TIE-R17-MV, T/C-TE, TIE-R18-MV10 → TIE-R09-MV FF, TIE-R10-MV FF, TIE-R11-MV FF, TIE-R14-MV FF, TIE-R15-MV FF, TIE-R16-MV FF, TIE-R17-MV FF, T/C-TE FF, TIE-R18-MV10 FF |
| RD | **Road Works** |  | 2027-11-14 → 2027-09-21 (-54d) |  |  |  |
| T/C-RD | Testing and Commissioning of Road Works |  | 2027-11-14 → 2027-09-21 (-54d) |  | -258d → -212.5d | TIE-R10-RD, TIE-R11-RD, TIE-R14-RD, T/C-MV → TIE-R10-RD FF, TIE-R11-RD FF, TIE-R14-RD FF, T/C-MV FF |
| 1 | **Handing over and close out** | 2027-06-13 → 2027-05-12 (-32d) | 2027-11-20 → 2027-10-06 (-45d) |  |  |  |
| 2 | **As-Built** | 2027-06-13 → 2027-05-12 (-32d) | 2027-11-02 → 2027-09-30 (-33d) |  |  |  |
| HO-180 | Submission As-Built Drawing For Irrigation Network | 2027-08-07 → 2027-05-12 (-87d) | 2027-08-19 → 2027-05-31 (-80d) |  | -199d → -130d |  |
| HO-130 | Submission As-Built Drawing For Pond | 2027-08-21 → 2027-06-01 (-81d) | 2027-09-02 → 2027-06-14 (-80d) |  | -199d → -130d |  |
| HO-160 | Submission As-Built Drawing For Telecom Network | 2027-08-21 → 2027-06-01 (-81d) | 2027-09-02 → 2027-06-14 (-80d) |  | -199d → -130d |  |
| HO-170 | Submission As-Built Drawing For Medium Voltage Network | 2027-08-21 → 2027-06-01 (-81d) | 2027-09-02 → 2027-06-14 (-80d) |  | -199d → -130d |  |
| HO-150 | Submission As-Built Drawing For Street Lighting Network | 2027-08-12 → 2027-06-27 (-46d) | 2027-08-25 → 2027-07-10 (-46d) |  | -192d → -152d |  |
| HO-200 | Submission As-Built Drawing For Storm Network | 2027-09-16 → 2027-06-28 (-80d) | 2027-09-30 → 2027-07-11 (-81d) |  | -222d → -153d |  |
| HO-190 | As-Built Drawing For Potable Water Network | 2027-09-27 → 2027-08-01 (-57d) | 2027-10-10 → 2027-08-14 (-57d) |  | -230d → -182d |  |
| HO-100 | Submission As-Built Drawing For Sewage Network | 2027-10-26 → 2027-09-21 (-35d) | 2027-11-02 → 2027-09-30 (-33d) |  | -245d → -216.5d |  |
| HO-140 | Submission As-Built Drawing For Roads Network | 2027-10-26 → 2027-09-21 (-35d) | 2027-10-31 → 2027-09-28 (-33d) |  | -248d → -219.5d |  |
| 1 | **De-Mobilization Works** | 2027-11-15 → 2027-09-25 (-51d) | 2027-11-20 → 2027-09-30 (-51d) |  |  |  |
| HO-120 | Remove material stock & Storage area | 2027-11-15 → 2027-09-25 (-51d) | 2027-11-20 → 2027-09-30 (-51d) |  | -258d → -214.5d |  |
| HO-220 | Removing Portable Caravan | 2027-11-15 → 2027-09-25 (-51d) | 2027-11-20 → 2027-09-30 (-51d) |  | -258d → -214.5d |  |
| HO-230 | Remove Temporary Car Shades | 2027-11-15 → 2027-09-25 (-51d) | 2027-11-20 → 2027-09-30 (-51d) |  | -258d → -214.5d |  |
| 3 | **Handing Over** | 2027-11-01 → 2027-09-25 (-37d) | 2027-11-20 → 2027-10-06 (-45d) |  |  |  |
| HO-110 | Final Testing Work | 2027-11-15 → 2027-09-25 (-51d) | 2027-11-20 → 2027-09-30 (-51d) |  | -258d → -214.5d |  |
| HO-250 | Review B.O.Q Qty. to ensure compliance with the actual status | 2027-11-01 → 2027-09-28 (-34d) | 2027-11-06 → 2027-10-04 (-33d) |  | -248d → -219.5d |  |
| HO-260 | Review FIR Approval to ensure compliance with the actual status | 2027-11-01 → 2027-09-28 (-34d) | 2027-11-06 → 2027-10-04 (-33d) |  | -248d → -219.5d |  |
| HO-270 | Review the sample drawing to ensure compliance with the actual status | 2027-11-01 → 2027-09-28 (-34d) | 2027-11-06 → 2027-10-04 (-33d) |  | -248d → -219.5d |  |
| HO-240 | Final Walkthrough and Inspection | 2027-11-07 → 2027-10-04 (-34d) | 2027-11-08 → 2027-10-06 (-33d) |  | -248d → -219.5d |  |
| HO-280 | Punch List Completion | 2027-11-18 → 2027-10-04 (-45d) | 2027-11-20 → 2027-10-06 (-45d) |  | -258d → -219.5d |  |

## Version 9 (data date 2026-11-17, saved 2026-11-17, file 03.DAM3-02-007-UPS Level 5 -17-11-2026.xer)

Last finish 2027-10-06 → 2027-09-25 (-11d). Complete tasks 1262 → 1268.

Changed:

| ID | Task | Start | Finish | Total float | Predecessors |
| --- | --- | --- | --- | --- | --- |
| MS | **Key Milestones** |  | 2027-10-06 → 2027-09-25 (-11d) |  |  |
| CM | **Contractual Milestones** |  | 2027-10-06 → 2027-09-25 (-11d) |  |  |
| MS-CF-EBL | Completion of Work Plan and Baseline Schedule |  |  |  | PRE-CON-MDC-20 FF, PRE-CON-MDC-30 FF, PRE-CON-MDC-40 FF, PRE-CON-MDC-50 FF, PRE-CON-MDC-60 FF, PRE-CON-MDC-70 FF, PRE-CON-MDC-80 FF → PRE-CON-MDC-20, PRE-CON-MDC-30, PRE-CON-MDC-40, PRE-CON-MDC-50, PRE-CON-MDC-60, PRE-CON-MDC-70, PRE-CON-MDC-80 |
| MS-CF-ENG | Completion of Submitting and Approval of Shopdrwing and Material |  |  |  | ENG-SH-PW-ML-A-110 FF, ENG-SH-SW-ML-A-110 FF, ENG-SH-SD-ML-A-110 FF, ENG-SH-SD-CB-A-110 FF, ENG-SH-IR-ML-A-110 FF, ENG-SH-IR-LL-A-110 FF, ENG-SH-SL-A-110 FF, ENG-SH-TE-A-110 FF, ENG-SH-MV-A-110 FF, ENG-SH-RD-A-130 FF, ENG-SH-MRK-A-110 FF, ENG-SH-HS-A-110 FF, ENG-SH-RD-A-110 FF, ENG-SH-RD-A-120 FF, ENG-MS-PW-ML-A-110 FF, ENG-MS-SW-ML-A-110 FF, ENG-MS-SD-ML-A-110 FF, ENG-MS-SD-CB-A-110 FF, ENG-MS-IR-ML-A-110 FF, ENG-MS-IR-LL-A-110 FF, ENG-MS-SL-A-110 FF, ENG-MS-TE-A-110 FF, ENG-MS-MV-A-110 FF, ENG-MS-RD-A-40 FF, ENG-MS-MRK-A-10 FF, ENG-MS-HS-A-10 FF, ENG-MS-RD-A-20 FF, ENG-MS-RD-A-30 FF, ENG-SH-PW-FH-A-110 FF, ENG-MT-SW-ML-A-110 FF, ENG-MT-SW-ML-A-100 FF, ENG-MT-SW-TF-A-100 FF, ENG-MT-SW-TF-A-120 FF, ENG-MT-SD-ML-A-100 FF, ENG-MT-SD-ML-A-110 FF, ENG-MT-SD-CB-A-110 FF, ENG-MT-SD-CB-A-100 FF, ENG-MT-SD-TF-A-100 FF, ENG-MT-SD-TF-A-110 FF, ENG-MT-SD-TF-A-120 FF, ENG-MT-PW-ML-A-100 FF, ENG-MT-PW-ML-A-110 FF, ENG-MT-PW-FH-A-100 FF, ENG-MT-PW-TF-A-100 FF, ENG-MT-IR-ML-A-100 FF, ENG-MT-IR-ML-A-110 FF, ENG-MT-MV-ML-A-100 FF, ENG-MT-MV-SS-A-100 FF, ENG-MT-MV-TF-A-100 FF, ENG-MT-SL-ML-A-100 FF, ENG-MT-SL-A-100 FF, ENG-MT-SL-A-110 FF, ENG-MT-SL-A-120 FF, ENG-MT-SL-DB-A-100 FF, ENG-MT-SL-TF-A-100 FF, ENG-MT-SL-TF-A-110 FF, ENG-MT-SL-ES-A-100 FF, ENG-MT-TE-A-100 FF, ENG-MT-TE-A-110 FF, ENG-MT-SPS-CV-A-110 FF, ENG-MT-DPO-CV-A-110 FF, ENG-MT-MV-A-10 FF, ENG-MT-SPS-MC-A-110 FF, ENG-MS-CTV-A-110 FF, ENG-SH-CTV-A-110 FF → ENG-SH-PW-ML-A-110, ENG-SH-SW-ML-A-110, ENG-SH-SD-ML-A-110, ENG-SH-SD-CB-A-110, ENG-SH-IR-ML-A-110, ENG-SH-IR-LL-A-110, ENG-SH-SL-A-110, ENG-SH-TE-A-110, ENG-SH-MV-A-110, ENG-SH-RD-A-130, ENG-SH-MRK-A-110, ENG-SH-HS-A-110, ENG-SH-RD-A-110, ENG-SH-RD-A-120, ENG-MS-PW-ML-A-110, ENG-MS-SW-ML-A-110, ENG-MS-SD-ML-A-110, ENG-MS-SD-CB-A-110, ENG-MS-IR-ML-A-110, ENG-MS-IR-LL-A-110, ENG-MS-SL-A-110, ENG-MS-TE-A-110, ENG-MS-MV-A-110, ENG-MS-RD-A-40, ENG-MS-MRK-A-10, ENG-MS-HS-A-10, ENG-MS-RD-A-20, ENG-MS-RD-A-30, ENG-SH-PW-FH-A-110, ENG-MT-SW-ML-A-110, ENG-MT-SW-ML-A-100, ENG-MT-SW-TF-A-100, ENG-MT-SW-TF-A-120, ENG-MT-SD-ML-A-100, ENG-MT-SD-ML-A-110, ENG-MT-SD-CB-A-110, ENG-MT-SD-CB-A-100, ENG-MT-SD-TF-A-100, ENG-MT-SD-TF-A-110, ENG-MT-SD-TF-A-120, ENG-MT-PW-ML-A-100, ENG-MT-PW-ML-A-110, ENG-MT-PW-FH-A-100, ENG-MT-PW-TF-A-100, ENG-MT-IR-ML-A-100, ENG-MT-IR-ML-A-110, ENG-MT-MV-ML-A-100, ENG-MT-MV-SS-A-100, ENG-MT-MV-TF-A-100, ENG-MT-SL-ML-A-100, ENG-MT-SL-A-100, ENG-MT-SL-A-110, ENG-MT-SL-A-120, ENG-MT-SL-DB-A-100, ENG-MT-SL-TF-A-100, ENG-MT-SL-TF-A-110, ENG-MT-SL-ES-A-100, ENG-MT-TE-A-100, ENG-MT-TE-A-110, ENG-MT-SPS-CV-A-110, ENG-MT-DPO-CV-A-110, ENG-MT-MV-A-10, ENG-MT-SPS-MC-A-110, ENG-MS-CTV-A-110, ENG-SH-CTV-A-110 |
| MS-CF-MV | Completion of Construction Works for Medium Voltage Network | 2027-04-17 → 2027-03-14 (-34d) | 2027-04-17 → 2027-03-14 (-34d) | -142d → -113d |  |
| MS-CF-TE | Completion of Construction Works for Telecom Network | 2027-04-04 → 2027-03-20 (-15d) | 2027-04-04 → 2027-03-20 (-15d) | -179d → -166d |  |
| MS-CF-IR | Completion of Construction Works for Irrigation Network | 2027-05-11 → 2027-04-07 (-34d) | 2027-05-11 → 2027-04-07 (-34d) | -163d → -134d |  |
| MS-CF-SW | Completion of Construction Works for Sewage Network | 2027-06-07 → 2027-04-24 (-44d) | 2027-06-07 → 2027-04-24 (-44d) | -172d → -139d |  |
| MS-CF-SD | Completion of Construction Works for Storm Drainage Network | 2027-06-27 → 2027-05-13 (-45d) | 2027-06-27 → 2027-05-13 (-45d) | -160d → -127d |  |
| MS-CF-SL | Completion of Construction Works for Street Lighting Network | 2027-06-26 → 2027-06-21 (-5d) | 2027-06-26 → 2027-06-21 (-5d) | -208d → -203.5d |  |
| MS-CF-PW | Completion of Construction Works for Potable Water Network | 2027-07-31 → 2027-07-01 (-30d) | 2027-07-31 → 2027-07-01 (-30d) | -209d → -184d |  |
| MS-CF-RD | Completion of Construction Works for Road Works | 2027-09-21 → 2027-09-09 (-12d) | 2027-09-21 → 2027-09-09 (-12d) | -219.5d → -209.5d |  |
| MS-CF-PF | Project Completion Date | 2027-10-06 → 2027-09-25 (-11d) | 2027-10-06 → 2027-09-25 (-11d) | -219.5d → -209.5d |  |
| CM1 | **Control Milestones** |  | 2026-12-26 → 2027-01-02 (+7d) |  |  |
| MS-CS-MV | The Employer Approval NOC for Medium Voltage Network | 2026-12-26 → 2027-01-02 (+7d) | 2026-12-26 → 2027-01-02 (+7d) | -49d → -55d |  |
| MM | **Intermediate Milestones** | 2027-05-22 → 2027-05-29 (+7d) | 2027-09-21 → 2027-09-09 (-12d) |  |  |
| MS-MO-20 | Completion of Storm Drainage Ponds | 2027-05-22 → 2027-05-29 (+7d) | 2027-05-22 → 2027-05-29 (+7d) | -122d → -128d |  |
| MS-MO-10 | Completion of Sewage Pump Stations | 2027-06-12 → 2027-06-19 (+7d) | 2027-06-12 → 2027-06-19 (+7d) | -140d → -146d |  |
| MS-MO-30 | Completion of Tie In To Existing Networks | 2027-09-21 → 2027-09-09 (-12d) | 2027-09-21 → 2027-09-09 (-12d) | -216.5d → -206.5d | TIE-SD-R09 FF, TIE-SW-R09 FF, TIE-PW-R09 FF, TIE-IR-R09 FF, TIE-R09-MV FF, TIE-R09-SL FF, TIE-R09-TE FF, TIE-SD-R10 FF, TIE-SW-R10 FF, TIE-PW-R10 FF, TIE-IR-R10 FF, TIE-R10-MV FF, TIE-R10-SL FF, TIE-R10-TE FF, TIE-R10-RD FF, TIE-SD-R11 FF, TIE-SW-R11 FF, TIE-PW-R11 FF, TIE-IR-R11 FF, TIE-R11-MV FF, TIE-R11-SL FF, TIE-R11-TE FF, TIE-SD-R14 FF, TIE-SW-R14 FF, TIE-PW-R14 FF, TIE-IR-R14 FF, TIE-R14-MV FF, TIE-R14-SL FF, TIE-R14-TE FF, TIE-R14-RD FF, TIE-SD-R15 FF, TIE-SW-R15 FF, TIE-PW-R15 FF, TIE-IR-R15 FF, TIE-R15-MV FF, TIE-R15-SL FF, TIE-R15-TE FF, TIE-SD-R16 FF, TIE-SW-R16 FF, TIE-PW-R16 FF, TIE-IR-R16 FF, TIE-R16-MV FF, TIE-R16-SL FF, TIE-R16-TE FF, TIE-SD-R17 FF, TIE-SW-R17 FF, TIE-PW-R17 FF, TIE-IR-R17 FF, TIE-R17-MV FF, TIE-R17-SL FF, TIE-R17-TE FF → TIE-SD-R09, TIE-SW-R09, TIE-PW-R09, TIE-IR-R09, TIE-R09-MV, TIE-R09-SL, TIE-R09-TE, TIE-SD-R10, TIE-SW-R10, TIE-PW-R10, TIE-IR-R10, TIE-R10-MV, TIE-R10-SL, TIE-R10-TE, TIE-R10-RD, TIE-SD-R11, TIE-SW-R11, TIE-PW-R11, TIE-IR-R11, TIE-R11-MV, TIE-R11-SL, TIE-R11-TE, TIE-SD-R14, TIE-SW-R14, TIE-PW-R14, TIE-IR-R14, TIE-R14-MV, TIE-R14-SL, TIE-R14-TE, TIE-R14-RD, TIE-SD-R15, TIE-SW-R15, TIE-PW-R15, TIE-IR-R15, TIE-R15-MV, TIE-R15-SL, TIE-R15-TE, TIE-SD-R16, TIE-SW-R16, TIE-PW-R16, TIE-IR-R16, TIE-R16-MV, TIE-R16-SL, TIE-R16-TE, TIE-SD-R17, TIE-SW-R17, TIE-PW-R17, TIE-IR-R17, TIE-R17-MV, TIE-R17-SL, TIE-R17-TE |
| MOB-10 | Clear and Grub for Offices and Access Roads |  |  |  | MS-CS-PS SS → MS-CS-PS |
| MOB-20 | Project Site Layout Plan Approval |  |  |  | MS-CS-PS SS → MS-CS-PS |
| MOB-30 | Supply & Install of Project Supervision Offices |  |  |  | MS-CS-PS SS, MOB-20, MOB-10 → MS-CS-PS, MOB-20, MOB-10 |
| PRE-EMP-MDC-20 | Receive of Site Benchmark Coordinates (Original Point) From The Employer |  |  |  | MS-CS-PS SS → MS-CS-PS |
| PRE-CON-MDC-20 | Submission Project Baseline Schedule |  |  |  | MS-CS-PS SS → MS-CS-PS |
| PRE-CON-MDC-30 | Submission Project Health & Safety Plan |  |  |  | MS-CS-PS SS → MS-CS-PS |
| PRE-CON-MDC-40 | Submission Project Quality Control Plan |  |  |  | MS-CS-PS SS → MS-CS-PS |
| PRE-CON-MDC-50 | Submission Project Surveying Report |  |  |  | MS-CS-PS SS → MS-CS-PS |
| PRE-CON-MDC-60 | Submission Project Geotechnical Soil Report |  |  |  | MS-CS-PS SS → MS-CS-PS |
| PRE-CON-MDC-70 | Submission Project Environmental Plan |  |  |  | MS-CS-PS SS → MS-CS-PS |
| PRE-CON-MDC-80 | Submission Project Organization Chart and Communications Plan |  |  |  | MS-CS-PS SS → MS-CS-PS |
| PROC | **Procurement Cycle** |  | 2027-03-01 → 2027-02-23 (-6d) |  |  |
| NLL | **Short Lead Time Items** |  | 2027-03-01 → 2027-02-23 (-6d) |  |  |
| INF | **Infrastructure Networks** |  | 2027-03-01 → 2027-02-23 (-6d) |  |  |
| RD | **Road Works** |  | 2027-02-01 → 2027-02-08 (+7d) |  |  |
| 1DL | **1st Material Delivery & Site Inspection** |  | 2026-11-16 → 2026-11-23 (+7d) |  |  |
| 3 | **Traffic Signs Boards and Roads Marking** | 2026-11-10 → 2026-11-17 (+7d) | 2026-11-16 → 2026-11-23 (+7d) |  |  |
| PRO-RD-1DL-160 | 1ST Material Delivery for Traffic Signs Boards of Road Works | 2026-11-10 → 2026-11-17 (+7d) | 2026-11-16 → 2026-11-23 (+7d) | -73d → -79d |  |
| PRO-RD-1DL-170 | 1ST Material Delivery for Road Markings of Road Works | 2026-11-10 → 2026-11-17 (+7d) | 2026-11-16 → 2026-11-23 (+7d) | -68d → -74d |  |
| DL | **Material Delivery & Site Inspection** |  | 2027-02-01 → 2027-02-08 (+7d) |  |  |
| 1 | **Road 18 Local 1 ( 479 LM )** |  | 2026-12-22 → 2026-12-29 (+7d) |  |  |
| 3 | **Traffic Signs Boards and Roads Marking** | 2026-11-17 → 2026-11-24 (+7d) | 2026-12-22 → 2026-12-29 (+7d) |  |  |
| PRO-R18-RD-DL-200 | Material Delivery & Site Inspection of Traffic Signs Boards For Road Works | 2026-11-17 → 2026-11-24 (+7d) | 2026-12-16 → 2026-12-23 (+7d) | -73d → -79d |  |
| PRO-R18-RD-DL-210 | Material Delivery & Site Inspection of Road Markings For Road Works | 2026-11-23 → 2026-11-30 (+7d) | 2026-12-22 → 2026-12-29 (+7d) | -73d → -79d | PRO-R18-RD-DL-200 S1, PRO-RD-1DL-170, PRO-R18-RD-DL-200 SS+5d → PRO-R18-RD-DL-200 SS, PRO-RD-1DL-170, PRO-R18-RD-DL-200 SS+5d |
| 9 | **Road 17 Local 1 ( 500 LM )** |  | 2026-12-28 → 2027-01-04 (+7d) |  |  |
| 3 | **Traffic Signs Boards and Roads Marking** | 2026-11-23 → 2026-11-30 (+7d) | 2026-12-28 → 2027-01-04 (+7d) |  |  |
| PRO-R17-RD-DL-140 | Material Delivery & Site Inspection of Traffic Signs Boards For Road Works | 2026-11-23 → 2026-11-30 (+7d) | 2026-12-22 → 2026-12-29 (+7d) | -73d → -79d |  |
| PRO-R17-RD-DL-150 | Material Delivery & Site Inspection of Road Markings For Road Works | 2026-11-29 → 2026-12-06 (+7d) | 2026-12-28 → 2027-01-04 (+7d) | -73d → -79d | PRO-RD-1DL-170, PRO-R17-RD-DL-140 S1, PRO-R18-RD-DL-210 SS+5d, PRO-R17-RD-DL-140 SS+5d → PRO-RD-1DL-170, PRO-R17-RD-DL-140 SS, PRO-R18-RD-DL-210 SS+5d, PRO-R17-RD-DL-140 SS+5d |
| 8 | **Road 16 Local 1 ( 527 LM )** |  | 2027-01-03 → 2027-01-10 (+7d) |  |  |
| 3 | **Traffic Signs Boards and Roads Marking** | 2026-11-29 → 2026-12-06 (+7d) | 2027-01-03 → 2027-01-10 (+7d) |  |  |
| PRO-R16-RD-DL-140 | Material Delivery & Site Inspection of Traffic Signs Boards For Road Works | 2026-11-29 → 2026-12-06 (+7d) | 2026-12-28 → 2027-01-04 (+7d) | -68d → -74d |  |
| PRO-R16-RD-DL-150 | Material Delivery & Site Inspection of Road Markings For Road Works | 2026-12-05 → 2026-12-12 (+7d) | 2027-01-03 → 2027-01-10 (+7d) | -73d → -79d |  |
| 7 | **Road 15 Local 1 ( 556 LM )** |  | 2027-01-09 → 2027-01-16 (+7d) |  |  |
| 3 | **Traffic Signs Boards and Roads Marking** | 2026-12-05 → 2026-12-12 (+7d) | 2027-01-09 → 2027-01-16 (+7d) |  |  |
| PRO-R15-RD-DL-140 | Material Delivery & Site Inspection of Traffic Signs Boards For Road Works | 2026-12-05 → 2026-12-12 (+7d) | 2027-01-03 → 2027-01-10 (+7d) | -68d → -74d |  |
| PRO-R15-RD-DL-150 | Material Delivery & Site Inspection of Road Markings For Road Works | 2026-12-10 → 2026-12-17 (+7d) | 2027-01-09 → 2027-01-16 (+7d) | -73d → -79d |  |
| 4 | **Road 10 Local 2 ( 2352 LM )** |  | 2027-01-14 → 2027-01-21 (+7d) |  |  |
| 4 | **Bituminous Construction** | 2026-11-10 → 2026-11-17 (+7d) | 2026-12-09 → 2026-12-16 (+7d) |  |  |
| PRO-R10-RD-DL-160 | Material Delivery & Site Inspection for Prime Coat of Road Works | 2026-11-10 → 2026-11-17 (+7d) | 2026-12-09 → 2026-12-16 (+7d) | -52d → -58d |  |
| PRO-R10-RD-DL-170 | Material Delivery & Site Inspection for Bituminous Base & Wearing Courses of Road Works | 2026-11-10 → 2026-11-17 (+7d) | 2026-12-09 → 2026-12-16 (+7d) | -49d → -55d |  |
| 3 | **Traffic Signs Boards and Roads Marking** | 2026-12-10 → 2026-12-17 (+7d) | 2027-01-14 → 2027-01-21 (+7d) |  |  |
| PRO-R10-RD-DL-140 | Material Delivery & Site Inspection of Traffic Signs Boards For Road Works | 2026-12-10 → 2026-12-17 (+7d) | 2027-01-09 → 2027-01-16 (+7d) | -68d → -74d |  |
| PRO-R10-RD-DL-150 | Material Delivery & Site Inspection of Road Markings For Road Works | 2026-12-16 → 2026-12-23 (+7d) | 2027-01-14 → 2027-01-21 (+7d) | -73d → -79d |  |
| 6 | **Road 14 Local 1 ( 584 LM )** |  | 2027-01-20 → 2027-01-27 (+7d) |  |  |
| 3 | **Traffic Signs Boards and Roads Marking** | 2026-12-16 → 2026-12-23 (+7d) | 2027-01-20 → 2027-01-27 (+7d) |  |  |
| PRO-R14-RD-DL-140 | Material Delivery & Site Inspection of Traffic Signs Boards For Road Works | 2026-12-16 → 2026-12-23 (+7d) | 2027-01-14 → 2027-01-21 (+7d) | -68d → -74d |  |
| PRO-R14-RD-DL-150 | Material Delivery & Site Inspection of Road Markings For Road Works | 2026-12-22 → 2026-12-29 (+7d) | 2027-01-20 → 2027-01-27 (+7d) | -73d → -79d |  |
| 2 | **Road 09 Local 2 ( 2278 LM )** |  | 2027-01-26 → 2027-02-02 (+7d) |  |  |
| 4 | **Bituminous Construction** | 2026-11-10 → 2026-11-17 (+7d) | 2026-12-09 → 2026-12-16 (+7d) |  |  |
| PRO-R09-RD-DL-160 | Material Delivery & Site Inspection for Prime Coat of Road Works | 2026-11-10 → 2026-11-17 (+7d) | 2026-12-09 → 2026-12-16 (+7d) | -35d → -26d |  |
| PRO-R09-RD-DL-170 | Material Delivery & Site Inspection for Bituminous Base & Wearing Courses of Road Works | 2026-11-10 → 2026-11-17 (+7d) | 2026-12-09 → 2026-12-16 (+7d) | -37d → -43d |  |

| ID | Task | Start | Finish | Total float | Predecessors |
| --- | --- | --- | --- | --- | --- |
| 3 | **Traffic Signs Boards and Roads Marking** | 2026-12-22 → 2026-12-29 (+7d) | 2027-01-26 → 2027-02-02 (+7d) |  |  |
| PRO-R09-RD-DL-140 | Material Delivery & Site Inspection of Traffic Signs Boards For Road Works | 2026-12-22 → 2026-12-29 (+7d) | 2027-01-20 → 2027-01-27 (+7d) | -68d → -74d |  |
| PRO-R09-RD-DL-150 | Material Delivery & Site Inspection of Road Markings For Road Works | 2026-12-28 → 2027-01-04 (+7d) | 2027-01-26 → 2027-02-02 (+7d) | -73d → -79d |  |
| 5 | **Road 11 Local 1 ( 670 LM )** |  | 2027-02-01 → 2027-02-08 (+7d) |  |  |
| 3 | **Traffic Signs Boards and Roads Marking** | 2026-12-28 → 2027-01-04 (+7d) | 2027-02-01 → 2027-02-08 (+7d) |  |  |
| PRO-R11-RD-DL-140 | Material Delivery & Site Inspection of Traffic Signs Boards For Road Works | 2026-12-28 → 2027-01-04 (+7d) | 2027-01-26 → 2027-02-02 (+7d) | -68d → -74d |  |
| PRO-R11-RD-DL-150 | Material Delivery & Site Inspection of Road Markings For Road Works | 2027-01-03 → 2027-01-10 (+7d) | 2027-02-01 → 2027-02-08 (+7d) | -73d → -79d |  |
| SD | **Storm Drainage Network** |  | 2027-01-13 → 2027-02-14 (+32d) |  |  |
| DL | **Material Delivery & Site Inspection** |  | 2027-01-13 → 2027-02-14 (+32d) |  |  |
| 1 | **Road 18 Local 1 ( 479 LM )** |  | 2026-12-09 → 2026-12-16 (+7d) |  |  |
| 3 | **Testing and Finishes** |  | 2026-12-09 → 2026-12-16 (+7d) |  |  |
| PRO-R18-SD-DL-190 | Material Delivery & Site Inspection of Manholes Covers for Storm Drainage Network | 2026-11-10 → 2026-11-17 (+7d) | 2026-12-09 → 2026-12-16 (+7d) | -139d → -154d |  |
| 9 | **Road 17 Local 1 ( 500 LM )** |  | 2026-11-15 → 2026-11-22 (+7d) |  |  |
| 3 | **Testing and Finishes** |  | 2026-11-15 → 2026-11-22 (+7d) |  |  |
| PRO-R17-SD-DL-160 | Material Delivery & Site Inspection of Epoxy Insulation for Storm Drainage Network |  | 2026-11-15 → 2026-11-22 (+7d) | 0d → -6d |  |
| PRO-R17-SD-DL-140 | Material Delivery & Site Inspection of Manholes Covers for Storm Drainage Network |  |  |  | PRO-SD-1DL-140, PRO-R18-SD-DL-190 SS+5d → PRO-SD-1DL-140 |
| 8 | **Road 16 Local 1 ( 527 LM )** |  | 2026-12-15 → 2027-01-16 (+32d) |  |  |
| 3 | **Testing and Finishes** |  | 2026-12-15 → 2027-01-16 (+32d) |  |  |
| PRO-R16-SD-DL-140 | Material Delivery & Site Inspection of Manholes Covers for Storm Drainage Network | 2026-11-16 → 2026-12-17 (+31d) | 2026-12-15 → 2027-01-16 (+32d) | -139d → -154d | PRO-SD-1DL-140, PRO-R17-SD-DL-140 SS+5d → PRO-SD-1DL-140, PRO-R17-SD-DL-140 SS+5d, PRO-R18-SD-DL-190 |
| 7 | **Road 15 Local 1 ( 556 LM )** |  | 2026-12-21 → 2027-01-21 (+31d) |  |  |
| 3 | **Testing and Finishes** |  | 2026-12-21 → 2027-01-21 (+31d) |  |  |
| PRO-R15-SD-DL-140 | Material Delivery & Site Inspection of Manholes Covers for Storm Drainage Network | 2026-11-22 → 2026-12-23 (+31d) | 2026-12-21 → 2027-01-21 (+31d) | -139d → -154d |  |
| 4 | **Road 10 Local 2 ( 2352 LM )** |  | 2026-12-27 → 2027-01-27 (+31d) |  |  |
| 3 | **Testing and Finishes** |  | 2026-12-27 → 2027-01-27 (+31d) |  |  |
| PRO-R10-SD-DL-140 | Material Delivery & Site Inspection of Manholes Covers for Storm Drainage Network | 2026-11-28 → 2026-12-29 (+31d) | 2026-12-27 → 2027-01-27 (+31d) | -139d → -154d | PRO-SD-1DL-140, PRO-R15-SD-DL-140 SS+5d → PRO-SD-1DL-140, PRO-R15-SD-DL-140 SS+5d, PRO-R15-SD-DL-140 FF |
| 6 | **Road 14 Local 1 ( 584 LM )** |  | 2027-01-02 → 2027-02-02 (+31d) |  |  |
| 3 | **Testing and Finishes** |  | 2027-01-02 → 2027-02-02 (+31d) |  |  |
| PRO-R14-SD-DL-140 | Material Delivery & Site Inspection of Manholes Covers for Storm Drainage Network | 2026-12-03 → 2027-01-04 (+32d) | 2027-01-02 → 2027-02-02 (+31d) | -139d → -154d | PRO-SD-1DL-140, PRO-R10-SD-DL-140 SS+5d → PRO-SD-1DL-140, PRO-R10-SD-DL-140 SS+5d, PRO-R10-SD-DL-140 FF |
| 2 | **Road 09 Local 2 ( 2278 LM )** |  | 2027-01-07 → 2027-02-08 (+32d) |  |  |
| 3 | **Testing and Finishes** |  | 2027-01-07 → 2027-02-08 (+32d) |  |  |
| PRO-R09-SD-DL-150 | Material Delivery & Site Inspection of Catch Basin Covers for Storm Drainage Network |  |  |  | PRO-SD-1DL-150, PRO-R14-SD-DL-150 SS+5d → PRO-SD-1DL-150, PRO-R14-SD-DL-150 SS+5d, PRO-R14-SD-DL-150 FF |
| PRO-R09-SD-DL-140 | Material Delivery & Site Inspection of Manholes Covers for Storm Drainage Network | 2026-12-09 → 2027-01-10 (+32d) | 2027-01-07 → 2027-02-08 (+32d) | -139d → -154d | PRO-SD-1DL-140, PRO-R14-SD-DL-140 SS+5d → PRO-SD-1DL-140, PRO-R14-SD-DL-140 SS+5d, PRO-R14-SD-DL-140 FF |
| 5 | **Road 11 Local 1 ( 670 LM )** |  | 2027-01-13 → 2027-02-14 (+32d) |  |  |
| 3 | **Testing and Finishes** |  | 2027-01-13 → 2027-02-14 (+32d) |  |  |
| PRO-R11-SD-DL-140 | Material Delivery & Site Inspection of Manholes Covers for Storm Drainage Network | 2026-12-15 → 2027-01-16 (+32d) | 2027-01-13 → 2027-02-14 (+32d) | -28d → -55d |  |
| PW | **Potable Water Network** |  | 2027-01-23 → 2027-02-02 (+10d) |  |  |
| DL | **Material Delivery & Site Inspection** |  | 2027-01-23 → 2027-02-02 (+10d) |  |  |
| 1 | **Road 18 Local 1 ( 479 LM )** |  | 2026-12-09 → 2026-12-16 (+7d) |  |  |
| 4 | **Testing and Finishes** | 2026-11-10 → 2026-11-17 (+7d) | 2026-12-09 → 2026-12-16 (+7d) |  |  |
| PRO-R18-PW-DL-170 | Material Delivery & Site Inspection for Finishes of Potable Water Network | 2026-11-10 → 2026-11-17 (+7d) | 2026-12-09 → 2026-12-16 (+7d) | -113d → -119d |  |
| 9 | **Road 17 Local 1 ( 500 LM )** |  | 2026-12-15 → 2026-12-22 (+7d) |  |  |
| 1 | **Main Line Sections** |  | 2026-12-09 → 2026-12-16 (+7d) |  |  |
| PRO-R17-PW-DL-110 | Material Delivery & Site Inspection of Valves for Potable Water Network | 2026-11-10 → 2026-11-17 (+7d) | 2026-12-09 → 2026-12-16 (+7d) | -62d → -71d |  |
| 4 | **Testing and Finishes** | 2026-11-16 → 2026-11-23 (+7d) | 2026-12-15 → 2026-12-22 (+7d) |  |  |
| PRO-R17-PW-DL-130 | Material Delivery & Site Inspection for Finishes of Potable Water Network | 2026-11-16 → 2026-11-23 (+7d) | 2026-12-15 → 2026-12-22 (+7d) | -113d → -119d |  |
| 8 | **Road 16 Local 1 ( 527 LM )** |  | 2026-12-21 → 2026-12-28 (+7d) |  |  |
| 1 | **Main Line Sections** |  | 2026-12-15 → 2026-12-22 (+7d) |  |  |
| PRO-R16-PW-DL-110 | Material Delivery & Site Inspection of Valves for Potable Water Network | 2026-11-16 → 2026-11-23 (+7d) | 2026-12-15 → 2026-12-22 (+7d) | -62d → -71d | PRO-PW-1DL-110, PRO-R17-PW-DL-110 SS+5d → PRO-PW-1DL-110, PRO-R17-PW-DL-110 SS+5d, PRO-R17-PW-DL-110 FF |
| 4 | **Testing and Finishes** | 2026-11-22 → 2026-11-29 (+7d) | 2026-12-21 → 2026-12-28 (+7d) |  |  |
| PRO-R16-PW-DL-130 | Material Delivery & Site Inspection for Finishes of Potable Water Network | 2026-11-22 → 2026-11-29 (+7d) | 2026-12-21 → 2026-12-28 (+7d) | -113d → -119d |  |
| 7 | **Road 15 Local 1 ( 556 LM )** |  | 2026-12-27 → 2027-01-03 (+7d) |  |  |
| 1 | **Main Line Sections** |  | 2026-12-21 → 2026-12-28 (+7d) |  |  |
| PRO-R15-PW-DL-110 | Material Delivery & Site Inspection of Valves for Potable Water Network | 2026-11-22 → 2026-11-29 (+7d) | 2026-12-21 → 2026-12-28 (+7d) | -62d → -71d | PRO-PW-1DL-110, PRO-R16-PW-DL-110 SS+5d → PRO-PW-1DL-110, PRO-R16-PW-DL-110 SS+5d, PRO-R16-PW-DL-110 FF |
| 4 | **Testing and Finishes** | 2026-11-28 → 2026-12-05 (+7d) | 2026-12-27 → 2027-01-03 (+7d) |  |  |
| PRO-R15-PW-DL-130 | Material Delivery & Site Inspection for Finishes of Potable Water Network | 2026-11-28 → 2026-12-05 (+7d) | 2026-12-27 → 2027-01-03 (+7d) | -113d → -119d |  |
| 4 | **Road 10 Local 2 ( 2352 LM )** |  | 2027-01-02 → 2027-01-09 (+7d) |  |  |
| 1 | **Main Line Sections** |  | 2026-12-27 → 2027-01-03 (+7d) |  |  |
| PRO-R10-PW-DL-110 | Material Delivery & Site Inspection of Valves for Potable Water Network |  | 2026-12-27 → 2027-01-03 (+7d) | -62d → -71d |  |
| 4 | **Testing and Finishes** | 2026-12-03 → 2026-12-10 (+7d) | 2027-01-02 → 2027-01-09 (+7d) |  |  |
| PRO-R10-PW-DL-130 | Material Delivery & Site Inspection for Finishes of Potable Water Network | 2026-12-03 → 2026-12-10 (+7d) | 2027-01-02 → 2027-01-09 (+7d) | -113d → -119d |  |
| 3 | **Road 14 Local 1 ( 584 LM )** |  | 2026-12-24 → 2027-01-04 (+11d) |  |  |
| 1 | **Main Line Sections** |  | 2026-12-24 → 2027-01-04 (+11d) |  |  |
| PRO-R14-PW-DL-110 | Material Delivery & Site Inspection of Valves for Potable Water Network |  | 2026-12-24 → 2027-01-04 (+11d) | -62d → -71d | PRO-PW-1DL-110, PRO-R10-PW-DL-110 SS+5d → PRO-PW-1DL-110, PRO-R10-PW-DL-110 SS+5d, PRO-R10-PW-DL-110 FF |
| 2 | **Road 09 Local 2 ( 2278 LM )** |  | 2026-12-09 → 2026-12-16 (+7d) |  |  |
| 4 | **Testing and Finishes** | 2026-11-10 → 2026-11-17 (+7d) | 2026-12-09 → 2026-12-16 (+7d) |  |  |
| PRO-R09-PW-DL-130 | Material Delivery & Site Inspection for Finishes of Potable Water Network | 2026-11-10 → 2026-11-17 (+7d) | 2026-12-09 → 2026-12-16 (+7d) | -86d → -92d |  |
| 5 | **Road 11 Local 1 ( 670 LM )** |  | 2027-01-23 → 2027-02-02 (+10d) |  |  |
| 1 | **Main Line Sections** |  | 2027-01-23 → 2027-02-02 (+10d) |  |  |
| PRO-R11-PW-DL-110 | Material Delivery & Site Inspection of Valves for Potable Water Network | 2026-12-24 → 2027-01-04 (+11d) | 2027-01-23 → 2027-02-02 (+10d) | -62d → -71d |  |
| 4 | **Testing and Finishes** | 2026-11-16 → 2026-11-23 (+7d) | 2026-12-15 → 2026-12-22 (+7d) |  |  |

| ID | Task | Start | Finish | Complete | Total float | Predecessors |
| --- | --- | --- | --- | --- | --- | --- |
| PRO-R11-PW-DL-130 | Material Delivery & Site Inspection for Finishes of Potable Water Network | 2026-11-16 → 2026-11-23 (+7d) | 2026-12-15 → 2026-12-22 (+7d) |  | -86d → -92d |  |
| IR | **Irrigation Network** |  | 2026-12-17 → 2026-12-24 (+7d) |  |  |  |
| 1DL | **1st Material Delivery & Site Inspection** |  | 2026-11-11 → 2026-11-18 (+7d) |  |  |  |
| 1 | **Main Line Pipes** |  | 2026-11-11 → 2026-11-18 (+7d) |  |  |  |
| PRO-IR-1DL-110 | 1ST Material Delivery for Valves of Irrigation Network |  | 2026-11-11 → 2026-11-18 (+7d) |  | -46d → -52d |  |
| DL | **Material Delivery & Site Inspection** |  | 2026-12-17 → 2026-12-24 (+7d) |  |  |  |
| 1 | **Road 18 Local 1 ( 479 LM )** |  | 2026-11-30 → 2026-12-07 (+7d) |  |  |  |
| 1 | **Main Line Pipes** |  | 2026-11-30 → 2026-12-07 (+7d) |  |  |  |
| PRO-R18-IR-DL-130 | Material Delivery & Site Inspection of Valves for Irrigation Network | 2026-11-12 → 2026-11-19 (+7d) | 2026-11-30 → 2026-12-07 (+7d) |  | -46d → -52d |  |
| 9 | **Road 17 Local 1 ( 500 LM )** |  | 2026-12-06 → 2026-12-13 (+7d) |  |  |  |
| 1 | **Main Line Pipes** |  | 2026-12-06 → 2026-12-13 (+7d) |  |  |  |
| PRO-R17-IR-DL-110 | Material Delivery & Site Inspection of Valves for Irrigation Network | 2026-11-18 → 2026-11-25 (+7d) | 2026-12-06 → 2026-12-13 (+7d) |  | -46d → -52d |  |
| 8 | **Road 16 Local 1 ( 527 LM )** |  | 2026-12-12 → 2026-12-19 (+7d) |  |  |  |
| 1 | **Main Line Pipes** |  | 2026-12-12 → 2026-12-19 (+7d) |  |  |  |
| PRO-R16-IR-DL-110 | Material Delivery & Site Inspection of Valves for Irrigation Network | 2026-11-24 → 2026-12-01 (+7d) | 2026-12-12 → 2026-12-19 (+7d) |  | -46d → -52d |  |
| 7 | **Road 15 Local 1 ( 556 LM )** |  | 2026-12-17 → 2026-12-24 (+7d) |  |  |  |
| 1 | **Main Line Pipes** |  | 2026-12-17 → 2026-12-24 (+7d) |  |  |  |
| PRO-R15-IR-DL-110 | Material Delivery & Site Inspection of Valves for Irrigation Network | 2026-11-30 → 2026-12-07 (+7d) | 2026-12-17 → 2026-12-24 (+7d) |  | -46d → -52d |  |
| SL | **Street Lighting Network** |  | 2027-03-01 → 2027-02-23 (-6d) |  |  |  |
| 1DL | **1st Material Delivery & Site Inspection** |  | 2026-11-16 → 2026-11-23 (+7d) |  |  |  |
| 2 | **Lighting Poles Works** |  | 2026-11-16 → 2026-11-15 (-1d) |  |  |  |
| PRO-SL-1DL-140 | 1ST Material Delivery for Lighting Fixtures of Street Lighting Network | 2026-11-10 → 2026-11-14 A (+4d) | 2026-11-16 → 2026-11-15 A (-1d) | 0% → 100% | -204.5d → none |  |
| 4 | **Earthing System Works** | 2026-11-10 → 2026-11-17 (+7d) | 2026-11-16 → 2026-11-23 (+7d) |  |  |  |
| PRO-SL-1DL-150 | 1ST Material Delivery for Lighting Earthing of Street Lighting Network | 2026-11-10 → 2026-11-17 (+7d) | 2026-11-16 → 2026-11-23 (+7d) |  | -153d → -159d |  |
| DL | **Material Delivery & Site Inspection** |  | 2027-03-01 → 2027-02-23 (-6d) |  |  |  |
| 1 | **Road 18 Local 1 ( 479 LM )** |  | 2026-12-28 → 2026-12-22 (-6d) |  |  |  |
| 2 | **Lighting Poles Works** |  | 2026-12-16 → 2026-11-16 (-30d) |  |  |  |
| PRO-R18-SL-DL-220 | Material Delivery & Site Inspection of Lighting Fixtures for Street Lighting Network | 2026-11-17 → 2026-11-11 A (-6d) | 2026-12-16 → 2026-11-16 A (-30d) | 0% → 100% | -204.5d → none |  |
| 4 | **Termination and Testing Works** | 2026-11-23 → 2026-11-17 (-6d) | 2026-12-28 → 2026-12-22 (-6d) |  |  |  |
| PRO-R18-SL-DL-210 | Material Delivery & Site Inspection of Fuse Boxes for Street Lighting Network | 2026-11-23 → 2026-11-17 (-6d) | 2026-12-22 → 2026-12-16 (-6d) |  | -204.5d → -185d |  |
| PRO-R18-SL-DL-250 | Material Delivery & Site Inspection of Cable Lugs for Street Lighting Network | 2026-11-29 → 2026-11-23 (-6d) | 2026-12-28 → 2026-12-22 (-6d) |  | -171d → -166d |  |
| 9 | **Road 17 Local 1 ( 500 LM )** |  | 2027-01-03 → 2026-12-28 (-6d) |  |  |  |
| 2 | **Lighting Poles Works** |  | 2026-12-22 → 2026-11-16 (-36d) |  |  |  |
| PRO-R17-SL-DL-140 | Material Delivery & Site Inspection of Lighting Fixtures for Street Lighting Network | 2026-11-23 → 2026-11-11 A (-12d) | 2026-12-22 → 2026-11-16 A (-36d) | 0% → 100% | -193.5d → none |  |
| 4 | **Termination and Testing Works** | 2026-11-29 → 2026-11-23 (-6d) | 2027-01-03 → 2026-12-28 (-6d) |  |  |  |
| PRO-R17-SL-DL-130 | Material Delivery & Site Inspection of Fuse Boxes for Street Lighting Network | 2026-11-29 → 2026-11-23 (-6d) | 2026-12-28 → 2026-12-22 (-6d) |  | -204.5d → -185d |  |
| PRO-R17-SL-DL-170 | Material Delivery & Site Inspection of Cable Lugs for Street Lighting Network | 2026-12-05 → 2026-11-29 (-6d) | 2027-01-03 → 2026-12-28 (-6d) |  | -171d → -166d |  |
| 8 | **Road 16 Local 1 ( 527 LM )** |  | 2027-01-09 → 2027-01-03 (-6d) |  |  |  |
| 2 | **Lighting Poles Works** |  | 2026-12-28 → 2026-11-16 (-42d) |  |  |  |
| PRO-R16-SL-DL-140 | Material Delivery & Site Inspection of Lighting Fixtures for Street Lighting Network | 2026-11-29 → 2026-11-11 A (-18d) | 2026-12-28 → 2026-11-16 A (-42d) | 0% → 100% | -193.5d → none |  |
| 4 | **Termination and Testing Works** | 2026-12-05 → 2026-11-29 (-6d) | 2027-01-09 → 2027-01-03 (-6d) |  |  |  |
| PRO-R16-SL-DL-130 | Material Delivery & Site Inspection of Fuse Boxes for Street Lighting Network | 2026-12-05 → 2026-11-29 (-6d) | 2027-01-03 → 2026-12-28 (-6d) |  | -204.5d → -185d |  |
| PRO-R16-SL-DL-170 | Material Delivery & Site Inspection of Cable Lugs for Street Lighting Network | 2026-12-10 → 2026-12-05 (-5d) | 2027-01-09 → 2027-01-03 (-6d) |  | -171d → -166d |  |
| 7 | **Road 15 Local 1 ( 556 LM )** |  | 2027-01-14 → 2027-01-09 (-5d) |  |  |  |
| 2 | **Lighting Poles Works** |  | 2027-01-03 → 2026-11-16 (-48d) |  |  |  |
| PRO-R15-SL-DL-140 | Material Delivery & Site Inspection of Lighting Fixtures for Street Lighting Network | 2026-12-05 → 2026-11-11 A (-24d) | 2027-01-03 → 2026-11-16 A (-48d) | 0% → 100% | -193.5d → none | PRO-SL-1DL-140, PRO-R16-SL-DL-140 SS+5d → PRO-SL-1DL-140, PRO-R16-SL-DL-140 SS+5d, PRO-R16-SL-DL-140 FF |
| 4 | **Termination and Testing Works** | 2026-12-10 → 2026-12-05 (-5d) | 2027-01-14 → 2027-01-09 (-5d) |  |  |  |
| PRO-R15-SL-DL-130 | Material Delivery & Site Inspection of Fuse Boxes for Street Lighting Network | 2026-12-10 → 2026-12-05 (-5d) | 2027-01-09 → 2027-01-03 (-6d) |  | -204.5d → -185d |  |
| PRO-R15-SL-DL-170 | Material Delivery & Site Inspection of Cable Lugs for Street Lighting Network | 2026-12-16 → 2026-12-10 (-6d) | 2027-01-14 → 2027-01-09 (-5d) |  | -171d → -166d |  |
| 4 | **Road 10 Local 2 ( 2352 LM )** |  | 2027-01-20 → 2027-01-14 (-6d) |  |  |  |
| 2 | **Lighting Poles Works** |  | 2027-01-09 → 2026-11-16 (-54d) |  |  |  |
| PRO-R10-SL-DL-140 | Material Delivery & Site Inspection of Lighting Fixtures for Street Lighting Network | 2026-12-10 → 2026-11-11 A (-29d) | 2027-01-09 → 2026-11-16 A (-54d) | 0% → 100% | -193.5d → none |  |
| 3 | **Distribution Panel Board** |  | 2026-11-12 → 2026-11-19 (+7d) |  |  |  |
| PRO-R10-SL-DL-160 | Material Delivery & Site Inspection of Distrubution Panel Boards for Street Lighting Network |  | 2026-11-12 → 2026-11-19 (+7d) |  | -109d → -115d |  |
| 4 | **Termination and Testing Works** |  | 2027-01-20 → 2027-01-14 (-6d) |  |  |  |
| PRO-R10-SL-DL-130 | Material Delivery & Site Inspection of Fuse Boxes for Street Lighting Network |  | 2027-01-14 → 2027-01-09 (-5d) |  | -204.5d → -185d |  |
| PRO-R10-SL-DL-170 | Material Delivery & Site Inspection of Cable Lugs for Street Lighting Network |  | 2027-01-20 → 2027-01-14 (-6d) |  | -171d → -166d |  |
| 5 | **Earthing System Works** | 2026-11-17 → 2026-11-24 (+7d) | 2026-12-16 → 2026-12-23 (+7d) |  |  |  |
| PRO-R10-SL-DL-150 | Material Delivery & Site Inspection of Lighting Earthing for Street Lighting Network | 2026-11-17 → 2026-11-24 (+7d) | 2026-12-16 → 2026-12-23 (+7d) |  | -153d → -159d |  |
| 6 | **Road 14 Local 1 ( 584 LM )** |  | 2027-02-16 → 2027-02-10 (-6d) |  |  |  |
| 2 | **Lighting Poles Works** |  | 2027-01-14 → 2026-12-16 (-29d) |  |  |  |
| PRO-R14-SL-DL-140 | Material Delivery & Site Inspection of Lighting Fixtures for Street Lighting Network | 2026-12-16 → 2026-11-17 (-29d) | 2027-01-14 → 2026-12-16 (-29d) |  | -193.5d → -152.5d |  |
| 4 | **Termination and Testing Works** | 2027-01-12 → 2027-01-06 (-6d) | 2027-02-16 → 2027-02-10 (-6d) |  |  |  |
| PRO-R14-SL-DL-130 | Material Delivery & Site Inspection of Fuse Boxes for Street Lighting Network | 2027-01-12 → 2027-01-06 (-6d) | 2027-02-10 → 2027-02-04 (-6d) |  | -204.5d → -183.5d |  |
| PRO-R14-SL-DL-170 | Material Delivery & Site Inspection of Cable Lugs for Street Lighting Network | 2027-01-18 → 2027-01-12 (-6d) | 2027-02-16 → 2027-02-10 (-6d) |  | -171d → -166d |  |
| 2 | **Road 09 Local 2 ( 2278 LM )** |  | 2027-02-23 → 2027-02-16 (-7d) |  |  |  |
| 2 | **Lighting Poles Works** |  | 2027-01-20 → 2026-12-22 (-29d) |  |  |  |
| PRO-R09-SL-DL-140 | Material Delivery & Site Inspection of Lighting Fixtures for Street Lighting Network | 2026-12-22 → 2026-11-23 (-29d) | 2027-01-20 → 2026-12-22 (-29d) |  | -193.5d → -152.5d |  |
| 4 | **Termination and Testing Works** | 2027-01-18 → 2027-01-12 (-6d) | 2027-02-23 → 2027-02-16 (-7d) |  |  |  |
| PRO-R09-SL-DL-130 | Material Delivery & Site Inspection of Fuse Boxes for Street Lighting Network | 2027-01-18 → 2027-01-12 (-6d) | 2027-02-16 → 2027-02-10 (-6d) |  | -204.5d → -183.5d |  |

| ID | Task | Start | Finish | Total float | Predecessors |
| --- | --- | --- | --- | --- | --- |
| PRO-R09-SL-DL-170 | Material Delivery & Site Inspection of Cable Lugs for Street Lighting Network | 2027-01-24 → 2027-01-18 (-6d) | 2027-02-23 → 2027-02-16 (-7d) | -171d → -166d |  |
| 5 | **Earthing System Works** | 2026-11-17 → 2026-11-24 (+7d) | 2026-12-16 → 2026-12-23 (+7d) |  |  |
| PRO-R09-SL-DL-150 | Material Delivery & Site Inspection of Lighting Earthing for Street Lighting Network | 2026-11-17 → 2026-11-24 (+7d) | 2026-12-16 → 2026-12-23 (+7d) | -139.5d → -129.5d |  |
| 5 | **Road 11 Local 1 ( 670 LM )** |  | 2027-03-01 → 2027-02-23 (-6d) |  |  |
| 2 | **Lighting Poles Works** |  | 2027-01-26 → 2026-12-28 (-29d) |  |  |
| PRO-R11-SL-DL-140 | Material Delivery & Site Inspection of Lighting Fixtures for Street Lighting Network | 2026-12-28 → 2026-11-29 (-29d) | 2027-01-26 → 2026-12-28 (-29d) | -108.5d → -83.5d |  |
| 4 | **Termination and Testing Works** | 2027-01-24 → 2027-01-18 (-6d) | 2027-03-01 → 2027-02-23 (-6d) |  |  |
| PRO-R11-SL-DL-130 | Material Delivery & Site Inspection of Fuse Boxes for Street Lighting Network | 2027-01-24 → 2027-01-18 (-6d) | 2027-02-23 → 2027-02-16 (-7d) | -162d → -157d |  |
| PRO-R11-SL-DL-170 | Material Delivery & Site Inspection of Cable Lugs for Street Lighting Network | 2027-01-30 → 2027-01-24 (-6d) | 2027-03-01 → 2027-02-23 (-6d) | -171d → -166d |  |
| LL | **Long Lead Time Items** |  | 2026-11-26 → 2026-12-03 (+7d) |  |  |
| 1 | **Superstructure Works** |  | 2026-11-26 → 2026-12-03 (+7d) |  |  |
| SL | **Sewage Pump Stations ( PS 06 )** |  | 2026-11-26 → 2026-12-03 (+7d) |  |  |
| 4 | **Material Site Inspection** |  | 2026-11-26 → 2026-12-03 (+7d) |  |  |
| PRO-SPS7-LL-MSI-10 | Material Site Inspection for Electromechanical Works for Sewage Pump Stations ( PS06 ) |  | 2026-11-26 → 2026-12-03 (+7d) | -37d → -43d |  |
| CON | **Construction Works** |  | 2027-09-21 → 2027-09-09 (-12d) |  |  |
| INF | **Infrastructure Networks** |  | 2027-09-21 → 2027-09-09 (-12d) |  |  |
| 1 | **Phase 2 Block "J"** |  | 2027-07-05 → 2027-07-12 (+7d) |  |  |
| SW | **Rising Main Network** |  | 2026-11-29 → 2026-12-06 (+7d) |  |  |
| CO-RM-SW-340 | Install Grp Liner Wall Works for Main Line Manholes of Rising Main Network |  |  |  | CO-RM-SW-330 FF → CO-RM-SW-330 FF, CO-RM-SW-330 SS |
| CO-RM-SW-350 | Pouring Grp Liner Wall Works for Main Line Manholes of Rising Main Network |  |  |  | CO-RM-SW-340 FF → CO-RM-SW-340 FF, CO-RM-SW-340 SS |
| CO-RM-SW-360 | Backfilling Works for Main Line Manholes of Rising Main Network |  |  |  | CO-RM-SW-350 FF → CO-RM-SW-350 FF, CO-RM-SW-350 SS |
| CO-RM-SW-370 | Testing Works for Main Line Manholes of Rising Main Network |  |  |  | CO-RM-SW-360 FF → CO-RM-SW-360 FF, CO-RM-SW-360 SS |
| VC | **Valves Chamber** |  | 2026-11-29 → 2026-12-06 (+7d) |  |  |
| CO-RM-SW-400 | RC Wall Works for Valve Chambers and Washout chamber of Rising Main Network |  | 2026-11-10 → 2026-11-17 (+7d) | -18d → -24d |  |
| CO-RM-SW-410 | RC Slab Works for Valve Chambers and Washout chamber of Rising Main Network | 2026-11-10 → 2026-11-17 (+7d) | 2026-11-17 → 2026-11-24 (+7d) | -18d → -24d |  |
| CO-RM-SW-420 | Insulation Works for Valve Chambers and Washout chamber of Rising Main Network | 2026-11-18 → 2026-11-25 (+7d) | 2026-11-19 → 2026-11-26 (+7d) | -18d → -24d |  |
| CO-RM-SW-430 | Backfilling Works for Valve Chambers and Washout chamber of Rising Main Network | 2026-11-21 → 2026-11-28 (+7d) | 2026-11-25 → 2026-12-02 (+7d) | -18d → -24d |  |
| CO-RM-SW-440 | Testing and Covering Works for Valve Chambers and Washout chamber of Rising Main Network | 2026-11-26 → 2026-12-03 (+7d) | 2026-11-29 → 2026-12-06 (+7d) | -18d → -24d |  |
| 2 | **Road 09 Local 2 ( 2278 LM )** |  | 2027-07-05 → 2027-07-12 (+7d) |  |  |
| SW_1 | **SW_1** |  | 2027-06-28 → 2027-07-05 (+7d) |  |  |
| SD | **Storm Drainage Network** |  | 2026-11-17 → 2026-11-24 (+7d) |  |  |
| CO-R09.S01-SD-100 | Trench Excavation and Bedding Works for Main Lines of Storm Drainage Network-[Road 09] -[SW-1] |  |  |  | ENG-SH-SD-ML-A-110, CO-R09.S01-EW-110, CO-R09.S01-EW-100, MS-CS-PS SS, ENG-MS-SD-ML-A-110, CO-R09.S01-SW-130 SS+3d, CO-R09.S01-SW-130 FF+3d, CO-R10.S04-ES-SD-100 → ENG-SH-SD-ML-A-110, CO-R09.S01-EW-110, CO-R09.S01-EW-100, MS-CS-PS, ENG-MS-SD-ML-A-110, CO-R09.S01-SW-130 SS+3d, CO-R09.S01-SW-130 FF+3d, CO-R10.S04-ES-SD-100 |
| MH | **Manholes** |  | 2026-11-17 → 2026-11-24 (+7d) |  |  |
| CO-R09.S01-SD-210 | Testing Works for Manholes of Storm Drainage Network-[Road 09] -[SW-1] |  | 2026-11-17 → 2026-11-24 (+7d) | 21d → 15d |  |
| CB | **Catch Basin Sections** |  | 2026-11-12 → 2026-11-19 (+7d) |  |  |
| CO-R09.S01-SD-160 | Testing Works for Catch Basins of Storm Drainage Network-[Road 09] -[SW-1] |  | 2026-11-12 → 2026-11-19 (+7d) | -153d → -147d |  |
| CO-R09.S01-SD-140 | Trench Excavation and Bedding Works for Catch Basins of Storm Drainage Network-[Road 09] -[SW-1] |  | 2026-11-10 → 2026-11-17 (+7d) | -151d → -145d |  |
| CO-R09.S01-SD-150 | Installation and Pipes Laying Connection Works for Catch Basins of Storm Drainage Network-[Road 09] -[SW-1] |  | 2026-11-10 → 2026-11-17 (+7d) | -151d → -145d |  |
| CO-R09.S01-SD-170 | Trench Backfilling and Compaction Works for Catch Basins of Storm Drainage Network-[Road 09] -[SW-1] |  | 2026-11-12 → 2026-11-19 (+7d) | -153d → -147d | CO-R09.S01-SD-160 FF → CO-R09.S01-SD-160 FF, CO-R09.S01-SD-160 SS |
| IR | **Irrigation Network** |  | 2026-11-19 → 2026-11-26 (+7d) |  |  |
| ML | **Main Line Pipes** |  | 2026-11-19 → 2026-11-26 (+7d) |  |  |
| CO-R09.S01-IR-120 | Installation Works for Main Line Valves of Irrigation Network-[Road 09] -[SW-1] | 2026-11-12 → 2026-11-19 (+7d) | 2026-11-19 → 2026-11-26 (+7d) | -19d → -25d |  |
| SL | **Street Lighting Network** | 2026-11-10 → 2026-11-17 (+7d) | 2027-05-12 → 2027-05-25 (+13d) |  |  |
| LP | **Lighting Poles Works** | 2026-11-10 → 2026-11-17 (+7d) | 2027-01-27 → 2027-02-03 (+7d) |  |  |
| CO-R09.S01-SL-100 | Foundation Excavation Works for Lighting Poles of Street Lighting Network-[Road 09] -[SW-1] | 2026-11-10 → 2026-11-17 (+7d) | 2026-11-21 → 2026-11-28 (+7d) | -219.5d → -209.5d |  |
| CO-R09.S01-SL-110 | Installation Works for Lighting Poles Foundation of Street Lighting Network-[Road 09] -[SW-1] | 2026-11-22 → 2026-11-29 (+7d) | 2026-12-05 → 2026-12-12 (+7d) | -219.5d → -209.5d |  |
| CO-R09.S01-SL-120 | Installation Works for Lighting Poles of Street Lighting Network-[Road 09] -[SW-1] | 2026-12-27 → 2027-01-03 (+7d) | 2027-01-07 → 2027-01-14 (+7d) | -219.5d → -209.5d |  |
| CO-R09.S01-SL-210 | Backfilling Works for Lighting Poles of Street Lighting Network-[Road 09] -[SW-1] | 2027-01-09 → 2027-01-16 (+7d) | 2027-01-21 → 2027-01-28 (+7d) | -219.5d → -209.5d |  |
| CO-R09.S01-SL-130 | Installation Works for Lighting Fixtures With Drop Wire of Street Lighting Network-[Road 09] -[SW-1] | 2027-01-14 → 2027-01-21 (+7d) | 2027-01-27 → 2027-02-03 (+7d) | -196.5d → -186.5d |  |
| CO-R09.S01-SL-200 | Testing Works for Lighting Poles of Street Lighting Network-[Road 09] -[SW-1] | 2027-01-23 → 2027-01-30 (+7d) | 2027-01-27 → 2027-02-03 (+7d) | -196.5d → -186.5d |  |
| CW | **Cabling Works** | 2026-11-22 → 2026-11-29 (+7d) | 2026-12-26 → 2027-01-02 (+7d) |  |  |
| CO-R09.S01-SL-140 | Trench Excavation and Bedding Works for Street Lighting Network-[Road 09] -[SW-1] | 2026-11-22 → 2026-11-29 (+7d) | 2026-12-02 → 2026-12-09 (+7d) | -219.5d → -209.5d |  |
| CO-R09.S01-SL-150 | Cable Laying Works for Street Lighting Network-[Road 09] -[SW-1] | 2026-12-03 → 2026-12-10 (+7d) | 2026-12-14 → 2026-12-21 (+7d) | -219.5d → -209.5d |  |
| CO-R09.S01-SL-160 | Trench Backfilling and Compaction Works for Street Lighting Network-[Road 09] -[SW-1] | 2026-12-15 → 2026-12-22 (+7d) | 2026-12-26 → 2027-01-02 (+7d) | -219.5d → -209.5d |  |
| DPB | **Distrubution Panel Boards** | 2027-03-29 → 2027-04-05 (+7d) | 2027-05-12 → 2027-05-25 (+13d) |  |  |
| CO-R09.S01-SL-170 | Foundation Excavation Works For Panel Boards of Street Lighting Network-[Road 09] -[SW-1] | 2027-03-29 → 2027-04-05 (+7d) | 2027-04-14 → 2027-04-21 (+7d) | -219.5d → -209.5d |  |
| CO-R09.S01-SL-180 | Installation Works for Panel Board Concrete Foundations of Street Lighting Network-[Road 09] -[SW-1] | 2027-04-15 → 2027-04-22 (+7d) | 2027-04-28 → 2027-05-05 (+7d) | -219.5d → -209.5d |  |
| CO-R09.S01-SL-190 | Installation Works for Lighting Panel Boards of Street Lighting Network-[Road 09] -[SW-1] | 2027-04-29 → 2027-05-06 (+7d) | 2027-05-12 → 2027-05-25 (+13d) | -219.5d → -209.5d |  |
| CO-R09.S01-SL-220 | A wall of concrete blocks to install the KWH meter of Street Lighting Network-[Road 09] -[SW-1] | 2027-04-29 → 2027-05-06 (+7d) | 2027-05-12 → 2027-05-25 (+13d) | -219.5d → -209.5d |  |
| MV | **Medium Voltage Network** |  | 2026-12-26 → 2027-01-02 (+7d) |  |  |
| CW | **Cabling Works** |  | 2026-12-26 → 2027-01-02 (+7d) |  |  |
| CO-R09.S01-MV-100 | Trench Excavation and Bedding Works for Medium Voltage Network-[Road 09] -[SW-1] |  | 2026-12-26 → 2027-01-02 (+7d) | -187d → -181d |  |
| CO-R09.S01-MV-110 | Cable Laying Works for Medium Voltage Network-[Road 09] -[SW-1] |  | 2026-12-26 → 2027-01-02 (+7d) | -187d → -181d |  |
| CO-R09.S01-MV-120 | Trench Backfilling and Compaction Works for Medium Voltage Network-[Road 09] -[SW-1] |  | 2026-12-26 → 2027-01-02 (+7d) | -187d → -181d | CO-R09.S01-MV-110 FF → CO-R09.S01-MV-110 FF, CO-R09.S01-MV-110 SS |
| TE | **Telecom Network** | 2027-01-21 → 2027-01-06 (-15d) | 2027-03-07 → 2027-02-18 (-17d) |  |  |
| PD | **Ducts Works** | 2027-01-21 → 2027-01-06 (-15d) | 2027-02-03 → 2027-01-19 (-15d) |  |  |
| CO-R09.S01-TE-100 | Trench Excavation and Bedding Works for Ducts of Telecom Network-[Road 09] -[SW-1] | 2027-01-21 → 2027-01-06 (-15d) | 2027-01-23 → 2027-01-07 (-16d) | -209d → -184d |  |
| CO-R09.S01-TE-110 | Pipes Laying Works for Ducts of Telecom Network-[Road 09] -[SW-1] | 2027-01-24 → 2027-01-09 (-15d) | 2027-01-27 → 2027-01-12 (-15d) | -195d → -170d |  |
| CO-R09.S01-TE-120 | Pouring Plain Concrete Above Ducts of Telecom Network-[Road 09] -[SW-1] | 2027-01-28 → 2027-01-13 (-15d) | 2027-01-30 → 2027-01-14 (-16d) | -195d → -170d |  |
| CO-R09.S01-TE-130 | Trench Backfilling and Compaction Works for Ducts of Telecom Network-[Road 09] -[SW-1] | 2027-01-31 → 2027-01-16 (-15d) | 2027-02-03 → 2027-01-19 (-15d) | -195d → -170d |  |

| ID | Task | Start | Finish | Total float | Predecessors |
| --- | --- | --- | --- | --- | --- |
| MH | **Manholes Works** | 2027-01-24 → 2027-01-09 (-15d) | 2027-03-07 → 2027-02-18 (-17d) |  |  |
| CO-R09.S01-TE-140 | Excavation Works for Manholes of Telecom Network-[Road 09] -[SW-1] | 2027-01-24 → 2027-01-09 (-15d) | 2027-02-06 → 2027-01-21 (-16d) | -209d → -184d |  |
| CO-R09.S01-TE-150 | Installation Works for Manholes of Telecom Network-[Road 09] -[SW-1] | 2027-02-07 → 2027-01-23 (-15d) | 2027-02-20 → 2027-02-04 (-16d) | -209d → -184d |  |
| CO-R09.S01-TE-160 | Backfilling Works for Manholes of Telecom Network-[Road 09] -[SW-1] | 2027-02-21 → 2027-02-06 (-15d) | 2027-03-07 → 2027-02-18 (-17d) | -209d → -184d |  |
| RD | **Road Works** |  | 2027-06-28 → 2027-07-05 (+7d) |  |  |
| RD | **Pre-Bituminous Construction** |  | 2027-03-18 → 2027-02-28 (-18d) |  |  |
| CO-R09.S01-RD-P-100 | Capping and Subgrade Layer for Road Works-[Road 09] -[SW-1] |  | 2027-03-07 → 2027-02-18 (-17d) | -188d → -163d |  |
| CO-R09.S01-RD-P-110 | Aggregate Base Course Layer for Road Works-[Road 09] -[SW-1] |  | 2027-03-18 → 2027-02-28 (-18d) | -65d → -52d |  |
| LS | **Pavement Works** |  | 2027-06-28 → 2027-07-05 (+7d) |  |  |
| CO-R09.S01-RD-P-130 | Fixing of Interlock Tiles for Sidewalks Pavement-[Road 09] -[SW-1] | 2027-06-14 → 2027-06-21 (+7d) | 2027-06-28 → 2027-07-05 (+7d) | -219.5d → -203.5d |  |
| SW_2 | **SW_2** |  | 2027-07-05 → 2027-07-12 (+7d) |  |  |
| SW | **Sewage Network** |  | 2026-11-10 → 2026-11-17 (+7d) |  |  |
| ML | **Main Line Sections** |  | 2026-11-10 → 2026-11-17 (+7d) |  |  |
| CO-R09.S02-SW-100 | Trench Excavation and Bedding Works for Main Lines of Sewage Network-[Road 09]-[SW-2] |  | 2026-11-10 → 2026-11-17 (+7d) | -208d → -190.5d |  |
| CO-R09.S02-SW-120 | Pipes Laying Works for Main Lines of Sewage Network-[Road 09]-[SW-2] |  | 2026-11-10 → 2026-11-17 (+7d) | -208d → -190.5d | CO-R09.S02-SW-100 FF → CO-R09.S02-SW-100 FF, CO-R09.S02-SW-100 SS |
| CO-R09.S02-SW-130 | Trench Backfilling and Compaction Works for Main Lines of Sewage Network-[Road 09]-[SW-2] |  | 2026-11-10 → 2026-11-17 (+7d) | -208d → -190.5d | CO-R09.S02-SW-120 FF, CO-R09.S02-SW-210 FF → CO-R09.S02-SW-120 FF, CO-R09.S02-SW-210 FF, CO-R09.S02-SW-120 SS, CO-R09.S02-SW-210 SS |
| MH | **Manholes** |  | 2026-11-10 → 2026-11-17 (+7d) |  |  |
| CO-R09.S02-SW-210 | Testing Works for Main Line Manholes of Sewage Network-[Road 09]-[SW-2] |  | 2026-11-10 → 2026-11-17 (+7d) | -208d → -190.5d |  |
| SD | **Storm Drainage Network** |  | 2026-11-26 → 2026-12-03 (+7d) |  |  |
| MH | **Manholes** |  | 2026-11-26 → 2026-12-03 (+7d) |  |  |
| CO-R09.S02-SD-220 | Backfilling Works for Manholes of Storm Drainage Network-[Road 09]-[SW-2] |  | 2026-11-26 → 2026-12-03 (+7d) | 11d → 5d | CO-R09.S02-SD-210 FF → CO-R09.S02-SD-210 FF, CO-R09.S02-SD-210 SS |
| CO-R09.S02-SD-210 | Testing Works for Manholes of Storm Drainage Network-[Road 09]-[SW-2] |  | 2026-11-25 → 2026-12-02 (+7d) | 11d → 5d |  |
| CB | **Catch Basin Sections** |  | 2026-11-26 → 2026-12-03 (+7d) |  |  |
| CO-R09.S02-SD-140 | Trench Excavation and Bedding Works for Catch Basins of Storm Drainage Network-[Road 09]-[SW-2] |  | 2026-11-26 → 2026-12-03 (+7d) | 11d → 5d |  |
| CO-R09.S02-SD-150 | Installation and Pipes Laying Connection Works for Catch Basins of Storm Drainage Network-[Road 09]-[SW-2] |  | 2026-11-26 → 2026-12-02 (+6d) | 11d → 5d | CO-R09.S02-SD-140 FF, PRO-R09-SD-DL-130 FF+3d → CO-R09.S02-SD-140 FF, PRO-R09-SD-DL-130 FF+3d, CO-R09.S02-SD-140 SS, PRO-R09-SD-DL-130 SS |
| CO-R09.S02-SD-170 | Trench Backfilling and Compaction Works for Catch Basins of Storm Drainage Network-[Road 09]-[SW-2] |  | 2026-11-26 → 2026-12-02 (+6d) | 11d → 5d | CO-R09.S02-SD-160 FF → CO-R09.S02-SD-160 FF, CO-R09.S02-SD-160 SS |
| CO-R09.S02-SD-160 | Testing Works for Catch Basins of Storm Drainage Network-[Road 09]-[SW-2] |  | 2026-11-26 → 2026-12-02 (+6d) | 11d → 5d |  |
| PW | **Potable Water Network** |  | 2026-11-29 → 2026-12-06 (+7d) |  |  |
| ML | **Main Line Sections** |  | 2026-11-29 → 2026-12-06 (+7d) |  |  |
| CO-R09.S02-PW-100 | Trench Excavation and Bedding Works for Main Lines of Potable Water Network-[Road 09]-[SW-2] |  | 2026-11-10 → 2026-11-17 (+7d) | -200.5d → -190.5d |  |
| CO-R09.S02-PW-110 | Pipes Laying and accessories for Main Lines of Potable Water Network-[Road 09]-[SW-2] |  | 2026-11-15 → 2026-11-22 (+7d) | -188.5d → -178.5d | CO-R09.S02-PW-100 FF, PRO-R09-PW-DL-100 FF+3d, PRO-R09-PW-DL-110 FF+3d, MS-CS-PW SS → CO-R09.S02-PW-100 FF, PRO-R09-PW-DL-100 FF+3d, PRO-R09-PW-DL-110 FF+3d, MS-CS-PW |
| CO-R09.S02-PW-130 | Trench Backfilling and Compaction Works for Main Lines of Potable Water Network-[Road 09]-[SW-2] |  | 2026-11-29 → 2026-12-06 (+7d) | -200.5d → -190.5d | CO-R09.S02-PW-110 FF, CO-R09.S02-PW-160 FF, CO-R09.S02-PW-210 FF → CO-R09.S02-PW-110 FF, CO-R09.S02-PW-160 FF, CO-R09.S02-PW-210 FF, CO-R09.S02-PW-110 SS |
| VC | **Valve Chamber** | 2026-11-11 → 2026-11-18 (+7d) | 2026-11-17 → 2026-11-24 (+7d) |  |  |
| CO-R09.S02-PW-210 | Installation Works for Main Line Valves and Valve Chambers of Potable Water Network-[Road 09]-[SW-2] | 2026-11-11 → 2026-11-18 (+7d) | 2026-11-17 → 2026-11-24 (+7d) | -190.5d → -180.5d |  |
| FH | **Fire Hydrant** | 2026-11-11 → 2026-11-18 (+7d) | 2026-11-29 → 2026-12-06 (+7d) |  |  |
| CO-R09.S02-PW-140 | Excavation Works for Fire Hydrants of Potable Water Network-[Road 09]-[SW-2] | 2026-11-11 → 2026-11-18 (+7d) | 2026-11-16 → 2026-11-23 (+7d) | -200.5d → -190.5d |  |
| CO-R09.S02-PW-150 | Installation Works for Fire Hydrant of Potable Water Network-[Road 09]-[SW-2] | 2026-11-17 → 2026-11-24 (+7d) | 2026-11-23 → 2026-11-30 (+7d) | -200.5d → -190.5d |  |
| CO-R09.S02-PW-160 | Trench Backfilling and Compaction Works for Fire Hydrants of Potable Water Network-[Road 09]-[SW-2] | 2026-11-24 → 2026-12-01 (+7d) | 2026-11-29 → 2026-12-06 (+7d) | -200.5d → -190.5d |  |
| SL | **Street Lighting Network** | 2026-11-30 → 2026-12-07 (+7d) | 2027-05-30 → 2027-06-06 (+7d) |  |  |
| LP | **Lighting Poles Works** | 2026-11-30 → 2026-12-07 (+7d) | 2027-02-24 → 2027-03-03 (+7d) |  |  |
| CO-R09.S02-SL-100 | Foundation Excavation Works for Lighting Poles of Street Lighting Network-[Road 09]-[SW-2] | 2026-11-30 → 2026-12-07 (+7d) | 2026-12-09 → 2026-12-16 (+7d) | -200.5d → -190.5d |  |
| CO-R09.S02-SL-110 | Installation Works for Lighting Poles Foundation of Street Lighting Network-[Road 09]-[SW-2] | 2026-12-10 → 2026-12-17 (+7d) | 2026-12-20 → 2026-12-27 (+7d) | -200.5d → -190.5d |  |
| CO-R09.S02-SL-120 | Installation Works for Lighting Poles of Street Lighting Network-[Road 09]-[SW-2] | 2026-12-21 → 2026-12-28 (+7d) | 2026-12-30 → 2027-01-06 (+7d) | -200.5d → -190.5d |  |
| CO-R09.S02-SL-210 | Backfilling Works for Lighting Poles of Street Lighting Network-[Road 09]-[SW-2] | 2027-01-23 → 2027-01-30 (+7d) | 2027-02-14 → 2027-02-21 (+7d) | -219.5d → -209.5d |  |
| CO-R09.S02-SL-130 | Installation Works for Lighting Fixtures With Drop Wire of Street Lighting Network-[Road 09]-[SW-2] | 2027-02-04 → 2027-02-11 (+7d) | 2027-02-24 → 2027-03-03 (+7d) | -219.5d → -209.5d |  |
| CO-R09.S02-SL-200 | Testing Works for Lighting Poles of Street Lighting Network-[Road 09]-[SW-2] | 2027-02-15 → 2027-02-23 (+8d) | 2027-02-24 → 2027-03-03 (+7d) | -219.5d → -209.5d |  |
| CW | **Cabling Works** | 2026-12-31 → 2027-01-07 (+7d) | 2027-02-03 → 2027-02-10 (+7d) |  |  |
| CO-R09.S02-SL-140 | Trench Excavation and Bedding Works for Street Lighting Network-[Road 09]-[SW-2] | 2026-12-31 → 2027-01-07 (+7d) | 2027-01-11 → 2027-01-18 (+7d) | -165d → -159d |  |
| CO-R09.S02-SL-150 | Cable Laying Works for Street Lighting Network-[Road 09]-[SW-2] | 2027-01-12 → 2027-01-19 (+7d) | 2027-01-23 → 2027-01-30 (+7d) | -165d → -159d |  |
| CO-R09.S02-SL-160 | Trench Backfilling and Compaction Works for Street Lighting Network-[Road 09]-[SW-2] | 2027-01-24 → 2027-01-31 (+7d) | 2027-02-03 → 2027-02-10 (+7d) | -165d → -159d |  |
| DPB | **Distrubution Panel Boards** | 2027-03-29 → 2027-04-05 (+7d) | 2027-05-30 → 2027-06-06 (+7d) |  |  |
| CO-R09.S02-SL-170 | Foundation Excavation Works For Panel Boards of Street Lighting Network-[Road 09]-[SW-2] | 2027-03-29 → 2027-04-05 (+7d) | 2027-04-08 → 2027-04-15 (+7d) | -198.25d → -190.25d |  |
| CO-R09.S02-SL-180 | Installation Works for Panel Board Concrete Foundations of Street Lighting Network-[Road 09]-[SW-2] | 2027-04-10 → 2027-04-17 (+7d) | 2027-04-20 → 2027-04-27 (+7d) | -198.25d → -190.25d |  |
| CO-R09.S02-SL-190 | Installation Works for Lighting Panel Boards of Street Lighting Network-[Road 09]-[SW-2] | 2027-04-21 → 2027-04-28 (+7d) | 2027-05-02 → 2027-05-09 (+7d) | -198.25d → -190.25d |  |
| CO-R09.S02-SL-220 | A wall of concrete blocks to install the KWH meter of Street Lighting Network-[Road 09]-[SW-2] | 2027-05-03 → 2027-05-10 (+7d) | 2027-05-30 → 2027-06-06 (+7d) | -198.25d → -190.25d |  |
| TE | **Telecom Network** | 2027-02-04 → 2027-01-20 (-15d) | 2027-04-04 → 2027-03-20 (-15d) |  |  |
| PD | **Ducts Works** | 2027-02-04 → 2027-01-20 (-15d) | 2027-03-04 → 2027-02-16 (-16d) |  |  |
| CO-R09.S02-TE-100 | Trench Excavation and Bedding Works for Ducts of Telecom Network-[Road 09]-[SW-2] | 2027-02-04 → 2027-01-20 (-15d) | 2027-02-07 → 2027-01-23 (-15d) | -186d → -161d |  |
| CO-R09.S02-TE-110 | Pipes Laying Works for Ducts of Telecom Network-[Road 09]-[SW-2] | 2027-02-08 → 2027-01-24 (-15d) | 2027-02-15 → 2027-01-31 (-15d) | -186d → -161d |  |
| CO-R09.S02-TE-120 | Pouring Plain Concrete Above Ducts of Telecom Network-[Road 09]-[SW-2] | 2027-02-16 → 2027-02-01 (-15d) | 2027-02-24 → 2027-02-08 (-16d) | -186d → -161d |  |
| CO-R09.S02-TE-130 | Trench Backfilling and Compaction Works for Ducts of Telecom Network-[Road 09]-[SW-2] | 2027-02-25 → 2027-02-09 (-16d) | 2027-03-04 → 2027-02-16 (-16d) | -186d → -161d |  |
| MH | **Manholes Works** | 2027-03-08 → 2027-02-20 (-16d) | 2027-04-04 → 2027-03-20 (-15d) |  |  |
| CO-R09.S02-TE-140 | Excavation Works for Manholes of Telecom Network-[Road 09]-[SW-2] | 2027-03-08 → 2027-02-20 (-16d) | 2027-03-18 → 2027-02-28 (-18d) | -209d → -184d |  |
| CO-R09.S02-TE-150 | Installation Works for Manholes of Telecom Network-[Road 09]-[SW-2] | 2027-03-20 → 2027-03-01 (-19d) | 2027-03-27 → 2027-03-08 (-19d) | -209d → -184d |  |
| CO-R09.S02-TE-160 | Backfilling Works for Manholes of Telecom Network-[Road 09]-[SW-2] | 2027-03-28 → 2027-03-13 (-15d) | 2027-04-04 → 2027-03-20 (-15d) | -209d → -184d |  |
| RD | **Road Works** |  | 2027-07-05 → 2027-07-12 (+7d) |  |  |
| RD | **Pre-Bituminous Construction** |  | 2027-04-08 → 2027-03-24 (-15d) |  |  |
| CO-R09.S02-RD-P-100 | Capping and Subgrade Layer for Road Works-[Road 09]-[SW-2] |  | 2027-04-04 → 2027-03-20 (-15d) | -209d → -184d |  |
| CO-R09.S02-RD-P-110 | Aggregate Base Course Layer for Road Works-[Road 09]-[SW-2] | 2027-03-20 → 2027-03-01 (-19d) | 2027-04-08 → 2027-03-24 (-15d) | -83d → -70d |  |
| LS | **Pavement Works** |  | 2027-07-05 → 2027-07-12 (+7d) |  |  |

| ID | Task | Start | Finish | Complete | Total float | Predecessors |
| --- | --- | --- | --- | --- | --- | --- |
| CO-R09.S02-RD-P-120 | Fixing of Curbstone for Sidewalks Pavement-[Road 09]-[SW-2] |  |  |  |  | PRO-R09-RD-DL-130 FF+3d → PRO-R09-RD-DL-130 FF+3d, PRO-R09-RD-DL-130 SS |
| CO-R09.S02-RD-P-130 | Fixing of Interlock Tiles for Sidewalks Pavement-[Road 09]-[SW-2] | 2027-06-14 → 2027-06-21 (+7d) | 2027-07-05 → 2027-07-12 (+7d) |  | -218.5d → -209.5d |  |
| 4 | **Road 10 Local 2 ( 2352 LM )** |  | 2027-05-22 → 2027-05-01 (-21d) |  |  |  |
| 1 | **SW-3** |  | 2027-05-13 → 2027-04-28 (-15d) |  |  |  |
| SW_3 | **SW_3-East** |  | 2027-05-13 → 2027-04-28 (-15d) |  |  |  |
| PW | **Potable Water Network** |  | 2026-11-26 → 2026-12-03 (+7d) |  |  |  |
| FH | **Fire Hydrant** | 2026-11-10 → 2026-11-17 (+7d) | 2026-11-26 → 2026-12-03 (+7d) |  |  |  |
| CO-R10.S03-ES-PW-140 | Excavation Works for Fire Hydrants of Potable Water Network-[Road 10]-[SW-3] | 2026-11-10 → 2026-11-17 (+7d) | 2026-11-16 → 2026-11-23 (+7d) |  | -94d → -100d |  |
| CO-R10.S03-ES-PW-150 | Installation Works for Fire Hydrant of Potable Water Network-[Road 10]-[SW-3] | 2026-11-17 → 2026-11-24 (+7d) | 2026-11-23 → 2026-11-30 (+7d) |  | -94d → -100d |  |
| CO-R10.S03-ES-PW-160 | Trench Backfilling and Compaction Works for Fire Hydrants of Potable Water Network-[Road 10]-[SW-3] | 2026-11-21 → 2026-11-28 (+7d) | 2026-11-26 → 2026-12-03 (+7d) |  | -94d → -100d |  |
| IR | **Irrigation Network** |  | 2026-11-11 → 2026-11-18 (+7d) |  |  |  |
| ML | **Main Line Pipes** |  | 2026-11-11 → 2026-11-18 (+7d) |  |  |  |
| CO-R10.S03-ES-IR-120 | Installation Works for Main Line Valves of Irrigation Network-[Road 10]-[SW-3] | 2026-11-10 → 2026-11-17 (+7d) | 2026-11-11 → 2026-11-18 (+7d) |  | -12d → -18d |  |
| SL | **Street Lighting Network** |  | 2027-03-14 → 2027-02-20 (-22d) |  |  |  |
| LP | **Lighting Poles Works** |  | 2026-12-17 → 2026-12-20 (+3d) |  |  |  |
| CO-R10.S03-ES-SL-100 | Foundation Excavation Works for Lighting Poles of Street Lighting Network-[Road 10]-[SW-3] | 2026-11-10 A | 2026-11-23 → 2026-11-30 (+7d) | 0% → 40% | -211.5d → -185.5d |  |
| CO-R10.S03-ES-SL-110 | Installation Works for Lighting Poles Foundation of Street Lighting Network-[Road 10]-[SW-3] | 2026-11-16 → 2026-11-12 A (-4d) | 2026-11-29 → 2026-12-06 (+7d) | 0% → 40% | -211.5d → -185.5d |  |
| CO-R10.S03-ES-SL-210 | Backfilling Works for Lighting Poles of Street Lighting Network-[Road 10]-[SW-3] | 2026-11-29 → 2026-11-14 A (-15d) | 2026-12-12 → 2026-12-14 (+2d) | 0% → 40% | -211.5d → -185.5d | CO-R10.S03-ES-SL-120 SS, CO-R10.S03-ES-SL-120 FF, CO-R15.S10-SL-210 → CO-R10.S03-ES-SL-120 FF, CO-R15.S10-SL-210 |
| CO-R10.S03-ES-SL-120 | Installation Works for Lighting Poles of Street Lighting Network-[Road 10]-[SW-3] | 2026-11-22 → 2026-11-24 (+2d) | 2026-12-12 → 2026-12-14 (+2d) |  | -211.5d → -185.5d |  |
| CO-R10.S03-ES-SL-130 | Installation Works for Lighting Fixtures With Drop Wire of Street Lighting Network-[Road 10]-[SW-3] | 2026-11-28 → 2026-11-30 (+2d) | 2026-12-17 → 2026-12-20 (+3d) |  | -175d → -177d |  |
| CO-R10.S03-ES-SL-200 | Testing Works for Lighting Poles of Street Lighting Network-[Road 10]-[SW-3] | 2026-12-13 → 2026-12-15 (+2d) | 2026-12-17 → 2026-12-20 (+3d) |  | -175d → -177d |  |
| CW | **Cabling Works** | 2026-12-13 → 2026-11-11 (-32d) | 2027-01-16 → 2026-12-14 (-33d) |  |  |  |
| CO-R10.S03-ES-SL-140 | Trench Excavation and Bedding Works for Street Lighting Network-[Road 10]-[SW-3] | 2026-12-13 → 2026-11-11 A (-32d) | 2026-12-23 → 2026-12-14 (-9d) |  | -209d → -172d | ENG-SH-SL-A-110, CO-R10.S03-ES-IR-130, CO-R10.S03-ES-EW-110, CO-R10.S03-ES-SL-120, CO-R10.S03-ES-SL-110, ENG-MS-SL-A-110 → ENG-SH-SL-A-110, CO-R10.S03-ES-IR-130, CO-R10.S03-ES-EW-110, CO-R10.S03-ES-SL-120 FF, CO-R10.S03-ES-SL-110 FF, ENG-MS-SL-A-110 |
| CO-R10.S03-ES-SL-150 | Cable Laying Works for Street Lighting Network-[Road 10]-[SW-3] | 2026-12-24 → 2026-11-12 A (-42d) | 2027-01-04 → 2026-12-14 (-21d) |  | -209d → -172d | CO-R10.S03-ES-SL-140 → CO-R10.S03-ES-SL-140 FF, CO-R10.S03-ES-SL-140 SS |
| CO-R10.S03-ES-SL-160 | Trench Backfilling and Compaction Works for Street Lighting Network-[Road 10]-[SW-3] | 2027-01-05 → 2026-11-14 A (-52d) | 2027-01-16 → 2026-12-14 (-33d) |  | -209d → -172d | CO-R10.S03-ES-SL-150, CO-R10.S03-ES-IR-130 → CO-R10.S03-ES-SL-150 FF, CO-R10.S03-ES-IR-130 |
| DPB | **Distrubution Panel Boards** | 2027-02-14 → 2027-01-27 (-18d) | 2027-03-14 → 2027-02-20 (-22d) |  |  |  |
| CO-R10.S03-ES-SL-170 | Foundation Excavation Works For Panel Boards of Street Lighting Network-[Road 10]-[SW-3] | 2027-02-14 → 2027-01-27 (-18d) | 2027-02-28 → 2027-02-09 (-19d) |  | -200d → -185d |  |
| CO-R10.S03-ES-SL-180 | Installation Works for Panel Board Concrete Foundations of Street Lighting Network-[Road 10]-[SW-3] | 2027-02-21 → 2027-02-03 (-18d) | 2027-03-07 → 2027-02-16 (-19d) |  | -200d → -185d |  |
| CO-R10.S03-ES-SL-220 | A wall of concrete blocks to install the KWH meter of Street Lighting Network-[Road 10]-[SW-3] | 2027-02-21 → 2027-02-03 (-18d) | 2027-03-07 → 2027-02-16 (-19d) |  | -197d → -182d |  |
| CO-R10.S03-ES-SL-190 | Installation Works for Lighting Panel Boards of Street Lighting Network-[Road 10]-[SW-3] | 2027-02-25 → 2027-02-07 (-18d) | 2027-03-14 → 2027-02-20 (-22d) |  | -200d → -185d |  |
| TE | **Telecom Network** | 2027-01-05 → 2026-12-03 (-33d) | 2027-02-06 → 2027-01-04 (-33d) |  |  |  |
| PD | **Ducts Works** | 2027-01-05 → 2026-12-03 (-33d) | 2027-02-06 → 2027-01-04 (-33d) |  |  |  |
| CO-R10.S03-ES-TE-100 | Trench Excavation and Bedding Works for Ducts of Telecom Network-[Road 10]-[SW-3] | 2027-01-05 → 2026-12-03 (-33d) | 2027-01-12 → 2026-12-10 (-33d) |  | -209d → -169d |  |
| CO-R10.S03-ES-TE-110 | Pipes Laying Works for Ducts of Telecom Network-[Road 10]-[SW-3] | 2027-01-13 → 2026-12-12 (-32d) | 2027-01-20 → 2026-12-19 (-32d) |  | -155d → -127d |  |
| CO-R10.S03-ES-TE-120 | Pouring Plain Concrete Above Ducts of Telecom Network-[Road 10]-[SW-3] | 2027-01-21 → 2026-12-20 (-32d) | 2027-01-28 → 2026-12-27 (-32d) |  | -155d → -127d |  |
| CO-R10.S03-ES-TE-130 | Trench Backfilling and Compaction Works for Ducts of Telecom Network-[Road 10]-[SW-3] | 2027-01-30 → 2026-12-28 (-33d) | 2027-02-06 → 2027-01-04 (-33d) |  | -155d → -127d |  |
| MH | **Manholes Works** | 2027-01-13 → 2026-12-12 (-32d) | 2027-02-06 → 2027-01-04 (-33d) |  |  |  |
| CO-R10.S03-ES-TE-140 | Excavation Works for Manholes of Telecom Network-[Road 10]-[SW-3] | 2027-01-13 → 2026-12-12 (-32d) | 2027-01-20 → 2026-12-19 (-32d) |  | -166d → -138d |  |
| CO-R10.S03-ES-TE-150 | Installation Works for Manholes of Telecom Network-[Road 10]-[SW-3] | 2027-01-21 → 2026-12-20 (-32d) | 2027-01-28 → 2026-12-27 (-32d) |  | -155d → -127d |  |
| CO-R10.S03-ES-TE-160 | Backfilling Works for Manholes of Telecom Network-[Road 10]-[SW-3] | 2027-01-30 → 2026-12-28 (-33d) | 2027-02-06 → 2027-01-04 (-33d) |  | -155d → -127d |  |
| RD | **Road Works** |  | 2027-05-13 → 2027-04-28 (-15d) |  |  |  |
| RD | **Pre-Bituminous Construction** |  | 2027-02-10 → 2027-01-09 (-32d) |  |  |  |
| CO-R10.S03-ES-RD-100 | Capping and Subgrade Layer for Road Works-[Road 10]-[SW-3] |  | 2027-02-06 → 2027-01-04 (-33d) | 80% → 90% | -155d → -127d |  |
| CO-R10.S03-ES-RD-110 | Aggregate Base Course Layer for Road Works-[Road 10]-[SW-3] |  | 2027-02-10 → 2027-01-09 (-32d) | 40% → 45% | -38d → -10d |  |
| LS | **Pavement Works** |  | 2027-05-13 → 2027-04-28 (-15d) |  |  |  |
| CO-R10.S03-ES-RD-130 | Fixing of Interlock Tiles for Sidewalks Pavement-[Road 10]-[SW-3] | 2027-05-03 → 2027-04-18 (-15d) | 2027-05-13 → 2027-04-28 (-15d) |  | -190d → -177d |  |
| SW_31 | **SW_3-West** |  | 2027-05-13 → 2027-04-28 (-15d) |  |  |  |
| PW | **Potable Water Network** |  | 2026-11-26 → 2026-12-03 (+7d) |  |  |  |
| FH | **Fire Hydrant** | 2026-11-10 → 2026-11-17 (+7d) | 2026-11-26 → 2026-12-03 (+7d) |  |  |  |
| CO-R10.S03-WE-PW-140 | Excavation Works for Fire Hydrants of Potable Water Network-[Road 10]-[SW-3] | 2026-11-10 → 2026-11-17 (+7d) | 2026-11-16 → 2026-11-23 (+7d) |  | -94d → -100d |  |
| CO-R10.S03-WE-PW-150 | Installation Works for Fire Hydrant of Potable Water Network-[Road 10]-[SW-3] | 2026-11-17 → 2026-11-24 (+7d) | 2026-11-23 → 2026-11-30 (+7d) |  | -94d → -100d |  |
| CO-R10.S03-WE-PW-160 | Trench Backfilling and Compaction Works for Fire Hydrants of Potable Water Network-[Road 10]-[SW-3] | 2026-11-21 → 2026-11-28 (+7d) | 2026-11-26 → 2026-12-03 (+7d) |  | -94d → -100d |  |
| IR | **Irrigation Network** |  | 2026-11-11 → 2026-11-18 (+7d) |  |  |  |
| ML | **Main Line Pipes** |  | 2026-11-11 → 2026-11-18 (+7d) |  |  |  |
| CO-R10.S03-WE-IR-120 | Installation Works for Main Line Valves of Irrigation Network-[Road 10]-[SW-3] | 2026-11-10 → 2026-11-17 (+7d) | 2026-11-11 → 2026-11-18 (+7d) |  | -12d → -18d |  |
| SL | **Street Lighting Network** |  | 2027-03-14 → 2027-02-20 (-22d) |  |  |  |
| LP | **Lighting Poles Works** |  | 2026-12-17 → 2026-12-19 (+2d) |  |  |  |
| CO-R10.S03-WE-SL-100 | Foundation Excavation Works for Lighting Poles of Street Lighting Network-[Road 10]-[SW-3] | 2026-11-10 A | 2026-11-23 → 2026-11-30 (+7d) | 0% → 40% | -200d → -176d |  |
| CO-R10.S03-WE-SL-110 | Installation Works for Lighting Poles Foundation of Street Lighting Network-[Road 10]-[SW-3] | 2026-11-16 → 2026-11-11 A (-5d) | 2026-11-29 → 2026-12-06 (+7d) | 0% → 40% | -200d → -176d |  |
| CO-R10.S03-WE-SL-210 | Backfilling Works for Lighting Poles of Street Lighting Network-[Road 10]-[SW-3] | 2026-11-29 → 2026-11-12 A (-17d) | 2026-12-12 → 2026-12-13 (+1d) | 0% → 40% | -175d → -176d | CO-R10.S03-WE-SL-120 SS, CO-R10.S03-WE-SL-120 FF → CO-R10.S03-WE-SL-120 FF, CO-R10.S03-WE-SL-110 SS |
| CO-R10.S03-WE-SL-120 | Installation Works for Lighting Poles of Street Lighting Network-[Road 10]-[SW-3] | 2026-11-22 → 2026-11-23 (+1d) | 2026-12-12 → 2026-12-13 (+1d) |  | -200d → -176d |  |
| CO-R10.S03-WE-SL-130 | Installation Works for Lighting Fixtures With Drop Wire of Street Lighting Network-[Road 10]-[SW-3] | 2026-11-28 → 2026-11-29 (+1d) | 2026-12-17 → 2026-12-19 (+2d) |  | -175d → -176d |  |
| CO-R10.S03-WE-SL-200 | Testing Works for Lighting Poles of Street Lighting Network-[Road 10]-[SW-3] | 2026-12-13 → 2026-12-14 (+1d) | 2026-12-17 → 2026-12-19 (+2d) |  | -175d → -176d |  |
| CW | **Cabling Works** | 2026-12-13 → 2026-11-11 (-32d) | 2027-01-16 → 2026-12-13 (-34d) |  |  |  |
| CO-R10.S03-WE-SL-140 | Trench Excavation and Bedding Works for Street Lighting Network-[Road 10]-[SW-3] | 2026-12-13 → 2026-11-11 A (-32d) | 2026-12-23 → 2026-12-13 (-10d) | 0% → 40% | -200d → -171d | ENG-SH-SL-A-110, CO-R10.S03-WE-IR-130, CO-R10.S03-WE-EW-110, CO-R10.S03-WE-SL-120, CO-R10.S03-WE-SL-110, ENG-MS-SL-A-110 → ENG-SH-SL-A-110, CO-R10.S03-WE-IR-130, CO-R10.S03-WE-EW-110, CO-R10.S03-WE-SL-120 FF, CO-R10.S03-WE-SL-110 FF, ENG-MS-SL-A-110 |
| CO-R10.S03-WE-SL-160 | Trench Backfilling and Compaction Works for Street Lighting Network-[Road 10]-[SW-3] | 2027-01-05 → 2026-11-12 A (-54d) | 2027-01-16 → 2026-12-13 (-34d) | 0% → 40% | -200d → -171d | CO-R10.S03-WE-SL-150, CO-R10.S03-WE-IR-130 → CO-R10.S03-WE-SL-150 FF, CO-R10.S03-WE-IR-130 |
| CO-R10.S03-WE-SL-150 | Cable Laying Works for Street Lighting Network-[Road 10]-[SW-3] | 2026-12-24 → 2026-11-14 A (-40d) | 2027-01-04 → 2026-12-13 (-22d) | 0% → 40% | -200d → -171d | CO-R10.S03-WE-SL-140 → CO-R10.S03-WE-SL-140 FF, CO-R10.S03-WE-SL-140 SS |
| DPB | **Distrubution Panel Boards** | 2027-02-14 → 2027-01-27 (-18d) | 2027-03-14 → 2027-02-20 (-22d) |  |  |  |
| CO-R10.S03-WE-SL-170 | Foundation Excavation Works For Panel Boards of Street Lighting Network-[Road 10]-[SW-3] | 2027-02-14 → 2027-01-27 (-18d) | 2027-02-28 → 2027-02-09 (-19d) |  | -200d → -185d |  |
| CO-R10.S03-WE-SL-180 | Installation Works for Panel Board Concrete Foundations of Street Lighting Network-[Road 10]-[SW-3] | 2027-02-21 → 2027-02-03 (-18d) | 2027-03-07 → 2027-02-16 (-19d) |  | -200d → -185d |  |

| ID | Task | Start | Finish | Complete | Total float | Predecessors |
| --- | --- | --- | --- | --- | --- | --- |
| CO-R10.S03-WE-SL-220 | A wall of concrete blocks to install the KWH meter of Street Lighting Network-[Road 10]-[SW-3] | 2027-02-21 → 2027-02-03 (-18d) | 2027-03-07 → 2027-02-16 (-19d) |  | -197d → -182d |  |
| CO-R10.S03-WE-SL-190 | Installation Works for Lighting Panel Boards of Street Lighting Network-[Road 10]-[SW-3] | 2027-02-25 → 2027-02-07 (-18d) | 2027-03-14 → 2027-02-20 (-22d) |  | -200d → -185d |  |
| TE | **Telecom Network** | 2027-01-05 → 2026-12-02 (-34d) | 2027-02-01 → 2026-12-29 (-34d) |  |  |  |
| PD | **Ducts Works** | 2027-01-05 → 2026-12-02 (-34d) | 2027-02-01 → 2026-12-29 (-34d) |  |  |  |
| CO-R10.S03-WE-TE-100 | Trench Excavation and Bedding Works for Ducts of Telecom Network-[Road 10]-[SW-3] | 2027-01-05 → 2026-12-02 (-34d) | 2027-01-07 → 2026-12-05 (-33d) |  | -162d → -133d |  |
| CO-R10.S03-WE-TE-110 | Pipes Laying Works for Ducts of Telecom Network-[Road 10]-[SW-3] | 2027-01-09 → 2026-12-06 (-34d) | 2027-01-16 → 2026-12-13 (-34d) |  | -151d → -122d |  |
| CO-R10.S03-WE-TE-120 | Pouring Plain Concrete Above Ducts of Telecom Network-[Road 10]-[SW-3] | 2027-01-17 → 2026-12-14 (-34d) | 2027-01-24 → 2026-12-21 (-34d) |  | -151d → -122d |  |
| CO-R10.S03-WE-TE-130 | Trench Backfilling and Compaction Works for Ducts of Telecom Network-[Road 10]-[SW-3] | 2027-01-25 → 2026-12-22 (-34d) | 2027-02-01 → 2026-12-29 (-34d) |  | -151d → -122d |  |
| MH | **Manholes Works** | 2027-01-09 → 2026-12-06 (-34d) | 2027-02-01 → 2026-12-29 (-34d) |  |  |  |
| CO-R10.S03-WE-TE-140 | Excavation Works for Manholes of Telecom Network-[Road 10]-[SW-3] | 2027-01-09 → 2026-12-06 (-34d) | 2027-01-16 → 2026-12-13 (-34d) |  | -162d → -133d |  |
| CO-R10.S03-WE-TE-150 | Installation Works for Manholes of Telecom Network-[Road 10]-[SW-3] | 2027-01-17 → 2026-12-14 (-34d) | 2027-01-24 → 2026-12-21 (-34d) |  | -151d → -122d |  |
| CO-R10.S03-WE-TE-160 | Backfilling Works for Manholes of Telecom Network-[Road 10]-[SW-3] | 2027-01-25 → 2026-12-22 (-34d) | 2027-02-01 → 2026-12-29 (-34d) |  | -151d → -122d |  |
| RD | **Road Works** |  | 2027-05-13 → 2027-04-28 (-15d) |  |  |  |
| RD | **Pre-Bituminous Construction** |  | 2027-02-06 → 2027-01-03 (-34d) |  |  |  |
| CO-R10.S03-WE-RD-100 | Capping and Subgrade Layer for Road Works-[Road 10]-[SW-3] |  | 2027-02-01 → 2026-12-29 (-34d) | 80% → 85% | -151d → -122d |  |
| CO-R10.S03-WE-RD-110 | Aggregate Base Course Layer for Road Works-[Road 10]-[SW-3] | 2027-01-17 → 2026-11-12 A (-66d) | 2027-02-06 → 2027-01-03 (-34d) | 0% → 35% | -34d → -5d |  |
| LS | **Pavement Works** |  | 2027-05-13 → 2027-04-28 (-15d) |  |  |  |
| CO-R10.S03-WE-RD-130 | Fixing of Interlock Tiles for Sidewalks Pavement-[Road 10]-[SW-3] | 2027-05-03 → 2027-04-18 (-15d) | 2027-05-13 → 2027-04-28 (-15d) |  | -190d → -177d |  |
| 2 | **SW-4** |  | 2027-05-22 → 2027-05-01 (-21d) |  |  |  |
| SW_4 | **SW_4-East** |  | 2027-05-13 → 2027-04-28 (-15d) |  |  |  |
| PW | **Potable Water Network** |  | 2026-12-03 → 2026-12-10 (+7d) |  |  |  |
| FH | **Fire Hydrant** | 2026-11-10 → 2026-11-17 (+7d) | 2026-12-03 → 2026-12-10 (+7d) |  |  |  |
| CO-R10.S04-ES-PW-140 | Excavation Works for Fire Hydrants of Potable Water Network-[Road 10]-[SW-4] | 2026-11-10 → 2026-11-17 (+7d) | 2026-11-17 → 2026-11-24 (+7d) |  | -100d → -106d |  |
| CO-R10.S04-ES-PW-150 | Installation Works for Fire Hydrant of Potable Water Network-[Road 10]-[SW-4] | 2026-11-18 → 2026-11-25 (+7d) | 2026-11-25 → 2026-12-02 (+7d) |  | -100d → -106d |  |
| CO-R10.S04-ES-PW-160 | Trench Backfilling and Compaction Works for Fire Hydrants of Potable Water Network-[Road 10]-[SW-4] | 2026-11-26 → 2026-12-03 (+7d) | 2026-12-03 → 2026-12-10 (+7d) |  | -100d → -106d |  |
| IR | **Irrigation Network** |  | 2026-11-14 → 2026-11-21 (+7d) |  |  |  |
| ML | **Main Line Pipes** |  | 2026-11-14 → 2026-11-21 (+7d) |  |  |  |
| CO-R10.S04-ES-IR-120 | Installation Works for Main Line Valves of Irrigation Network-[Road 10]-[SW-4] | 2026-11-10 → 2026-11-17 (+7d) | 2026-11-14 → 2026-11-21 (+7d) |  | -14d → -20d |  |
| SL | **Street Lighting Network** | 2026-11-10 → 2026-11-11 (+1d) | 2027-02-07 → 2027-01-20 (-18d) |  |  |  |
| LP | **Lighting Poles Works** | 2026-11-10 → 2026-11-11 (+1d) | 2027-01-12 → 2026-12-26 (-17d) |  |  |  |
| CO-R10.S04-ES-SL-100 | Foundation Excavation Works for Lighting Poles of Street Lighting Network-[Road 10]-[SW-4] | 2026-11-10 → 2026-11-11 A (+1d) | 2026-11-17 → 2026-11-24 (+7d) | 0% → 40% | -193.5d → -175.5d |  |
| CO-R10.S04-ES-SL-110 | Installation Works for Lighting Poles Foundation of Street Lighting Network-[Road 10]-[SW-4] | 2026-11-16 → 2026-11-11 A (-5d) | 2026-11-23 → 2026-11-30 (+7d) | 0% → 40% | -193.5d → -175.5d |  |
| CO-R10.S04-ES-SL-210 | Backfilling Works for Lighting Poles of Street Lighting Network-[Road 10]-[SW-4] | 2026-12-13 → 2026-11-12 A (-31d) | 2026-12-29 → 2026-12-17 (-12d) | 0% → 40% | -211.5d → -185.5d | CO-R10.S04-ES-SL-120 SS, CO-R10.S04-ES-SL-120 FF, CO-R10.S03-ES-SL-210 → CO-R10.S04-ES-SL-120 FF, CO-R10.S03-ES-SL-210 FF, CO-R10.S03-ES-SL-210 SS |
| CO-R10.S04-ES-SL-120 | Installation Works for Lighting Poles of Street Lighting Network-[Road 10]-[SW-4] | 2026-11-22 → 2026-11-29 (+7d) | 2026-11-29 → 2026-12-06 (+7d) |  | -193.5d → -175.5d |  |
| CO-R10.S04-ES-SL-130 | Installation Works for Lighting Fixtures With Drop Wire of Street Lighting Network-[Road 10]-[SW-4] | 2026-12-23 → 2026-12-06 (-17d) | 2027-01-12 → 2026-12-26 (-17d) |  | -111.5d → -96.5d |  |
| CO-R10.S04-ES-SL-200 | Testing Works for Lighting Poles of Street Lighting Network-[Road 10]-[SW-4] | 2026-12-30 → 2026-12-19 (-11d) | 2027-01-06 → 2026-12-26 (-11d) |  | -106.5d → -96.5d |  |
| CW | **Cabling Works** | 2026-11-30 → 2026-11-11 (-19d) | 2026-12-23 → 2026-12-06 (-17d) |  |  |  |
| CO-R10.S04-ES-SL-140 | Trench Excavation and Bedding Works for Street Lighting Network-[Road 10]-[SW-4] | 2026-11-30 → 2026-11-11 A (-19d) | 2026-12-07 → 2026-12-06 (-1d) | 0% → 40% | -190d → -168d | CO-R10.S04-ES-IR-130, CO-R10.S04-ES-EW-110, CO-R10.S04-ES-SL-120, CO-R10.S04-ES-SL-110 → CO-R10.S04-ES-IR-130, CO-R10.S04-ES-EW-110, CO-R10.S04-ES-SL-120 FF, CO-R10.S04-ES-SL-110 FF |
| CO-R10.S04-ES-SL-150 | Cable Laying Works for Street Lighting Network-[Road 10]-[SW-4] | 2026-12-08 → 2026-11-12 A (-26d) | 2026-12-15 → 2026-12-06 (-9d) | 0% → 40% | -190d → -168d | CO-R10.S04-ES-SL-140, PRO-R10-SL-DL-100 FF+3d → CO-R10.S04-ES-SL-140 FF, PRO-R10-SL-DL-100 FF+3d, CO-R10.S04-ES-SL-140 SS, PRO-R10-SL-DL-100 SS |
| CO-R10.S04-ES-SL-160 | Trench Backfilling and Compaction Works for Street Lighting Network-[Road 10]-[SW-4] | 2026-12-16 → 2026-11-14 A (-32d) | 2026-12-23 → 2026-12-06 (-17d) | 0% → 40% | -190d → -168d | CO-R10.S04-ES-SL-150, CO-R10.S04-ES-IR-130 → CO-R10.S04-ES-SL-150 FF, CO-R10.S04-ES-IR-130 |
| DPB | **Distrubution Panel Boards** | 2026-12-24 → 2026-12-07 (-17d) | 2027-02-07 → 2027-01-20 (-18d) |  |  |  |
| CO-R10.S04-ES-SL-170 | Foundation Excavation Works For Panel Boards of Street Lighting Network-[Road 10]-[SW-4] | 2026-12-24 → 2026-12-07 (-17d) | 2027-01-13 → 2026-12-27 (-17d) |  | -183d → -168d |  |
| CO-R10.S04-ES-SL-180 | Installation Works for Panel Board Concrete Foundations of Street Lighting Network-[Road 10]-[SW-4] | 2027-01-04 → 2026-12-17 (-18d) | 2027-01-17 → 2026-12-30 (-18d) |  | -174d → -159d |  |
| CO-R10.S04-ES-SL-190 | Installation Works for Lighting Panel Boards of Street Lighting Network-[Road 10]-[SW-4] | 2027-01-18 → 2026-12-31 (-18d) | 2027-01-31 → 2027-01-13 (-18d) |  | -174d → -159d |  |
| CO-R10.S04-ES-SL-220 | A wall of concrete blocks to install the KWH meter of Street Lighting Network-[Road 10]-[SW-4] | 2027-01-18 → 2026-12-31 (-18d) | 2027-02-07 → 2027-01-20 (-18d) |  | -174d → -159d |  |
| TE | **Telecom Network** | 2027-01-13 → 2026-12-12 (-32d) | 2027-02-14 → 2027-01-12 (-33d) |  |  |  |
| PD | **Ducts Works** | 2027-01-13 → 2026-12-12 (-32d) | 2027-02-14 → 2027-01-12 (-33d) |  |  |  |
| CO-R10.S04-ES-TE-100 | Trench Excavation and Bedding Works for Ducts of Telecom Network-[Road 10]-[SW-4] | 2027-01-13 → 2026-12-12 (-32d) | 2027-01-20 → 2026-12-19 (-32d) |  | -209d → -169d |  |
| CO-R10.S04-ES-TE-110 | Pipes Laying Works for Ducts of Telecom Network-[Road 10]-[SW-4] | 2027-01-21 → 2026-12-20 (-32d) | 2027-01-28 → 2026-12-27 (-32d) |  | -162d → -134d |  |
| CO-R10.S04-ES-TE-120 | Pouring Plain Concrete Above Ducts of Telecom Network-[Road 10]-[SW-4] | 2027-01-30 → 2026-12-28 (-33d) | 2027-02-06 → 2027-01-04 (-33d) |  | -162d → -134d |  |
| CO-R10.S04-ES-TE-130 | Trench Backfilling and Compaction Works for Ducts of Telecom Network-[Road 10]-[SW-4] | 2027-02-07 → 2027-01-05 (-33d) | 2027-02-14 → 2027-01-12 (-33d) |  | -162d → -134d |  |
| MH | **Manholes Works** | 2027-01-21 → 2026-12-20 (-32d) | 2027-02-14 → 2027-01-12 (-33d) |  |  |  |
| CO-R10.S04-ES-TE-140 | Excavation Works for Manholes of Telecom Network-[Road 10]-[SW-4] | 2027-01-21 → 2026-12-20 (-32d) | 2027-01-28 → 2026-12-27 (-32d) |  | -162d → -134d |  |
| CO-R10.S04-ES-TE-150 | Installation Works for Manholes of Telecom Network-[Road 10]-[SW-4] | 2027-01-30 → 2026-12-28 (-33d) | 2027-02-06 → 2027-01-04 (-33d) |  | -162d → -134d |  |
| CO-R10.S04-ES-TE-160 | Backfilling Works for Manholes of Telecom Network-[Road 10]-[SW-4] | 2027-02-07 → 2027-01-05 (-33d) | 2027-02-14 → 2027-01-12 (-33d) |  | -162d → -134d |  |
| RD | **Road Works** |  | 2027-05-13 → 2027-04-28 (-15d) |  |  |  |
| RD | **Pre-Bituminous Construction** |  | 2027-02-17 → 2027-01-16 (-32d) |  |  |  |
| CO-R10.S04-ES-RD-100 | Capping and Subgrade Layer for Road Works-[Road 10]-[SW-4] |  | 2027-02-14 → 2027-01-12 (-33d) | 85% → 90% | -162d → -134d |  |
| CO-R10.S04-ES-RD-110 | Aggregate Base Course Layer for Road Works-[Road 10]-[SW-4] | 2027-02-04 → 2026-11-11 A (-85d) | 2027-02-17 → 2027-01-16 (-32d) | 0% → 40% | -44d → -16d |  |
| LS | **Pavement Works** |  | 2027-05-13 → 2027-04-28 (-15d) |  |  |  |
| CO-R10.S04-ES-RD-120 | Fixing of Curbstone for Sidewalks Pavement-[Road 10]-[SW-4] |  |  |  |  | PRO-R10-RD-DL-130 FF+3d → PRO-R10-RD-DL-130 FF+3d, PRO-R10-RD-DL-130 SS |
| CO-R10.S04-ES-RD-130 | Fixing of Interlock Tiles for Sidewalks Pavement-[Road 10]-[SW-4] | 2027-05-03 → 2027-04-18 (-15d) | 2027-05-13 → 2027-04-28 (-15d) |  | -188d → -175d |  |
| SW_41 | **SW_4-West** |  | 2027-05-22 → 2027-05-01 (-21d) |  |  |  |
| PW | **Potable Water Network** |  | 2026-12-05 → 2026-12-12 (+7d) |  |  |  |
| VC | **Valve Chamber** |  | 2026-11-26 → 2026-12-03 (+7d) |  |  |  |
| CO-R10.S04-WE-PW-210 | Insulation Works for Main Line Valves and Valve Chambers of Potable Water Network-[Road 10]-[SW-4] |  | 2026-11-23 → 2026-11-30 (+7d) |  | -7d → -13d | CO-R10.S04-WE-PW-200 FF → CO-R10.S04-WE-PW-200 FF, CO-R10.S04-WE-PW-100 SS |
| CO-R10.S04-WE-PW-170 | Excavation Works for Main Line Valves and Valve Chambers of Potable Water Network-[Road 10]-[SW-4] | 2026-11-10 → 2026-11-17 (+7d) | 2026-11-10 → 2026-11-17 (+7d) |  | -105d → -111d |  |
| CO-R10.S04-WE-PW-180 | RC Footing Works for Main Line Valves and Valve Chambers of Potable Water Network-[Road 10]-[SW-4] | 2026-11-11 → 2026-11-18 (+7d) | 2026-11-14 → 2026-11-21 (+7d) |  | -7d → -13d |  |
| CO-R10.S04-WE-PW-190 | RC Wall Works for Main Line Valves and Valve Chambers of Potable Water Network-[Road 10]-[SW-4] | 2026-11-15 → 2026-11-22 (+7d) | 2026-11-21 → 2026-11-28 (+7d) |  | -7d → -13d |  |
| CO-R10.S04-WE-PW-200 | RC Slab Works for Main Line Valves and Valve Chambers of Potable Water Network-[Road 10]-[SW-4] | 2026-11-22 → 2026-11-29 (+7d) | 2026-11-23 → 2026-11-30 (+7d) |  | -7d → -13d |  |

| ID | Task | Start | Finish | Complete | Total float | Predecessors |
| --- | --- | --- | --- | --- | --- | --- |
| CO-R10.S04-WE-PW-220 | Backfilling Works for Main Line Valves and Valve Chambers of Potable Water Network-[Road 10]-[SW-4] | 2026-11-24 → 2026-12-01 (+7d) | 2026-11-26 → 2026-12-03 (+7d) |  | -7d → -13d |  |
| FH | **Fire Hydrant** | 2026-11-11 → 2026-11-18 (+7d) | 2026-12-05 → 2026-12-12 (+7d) |  |  |  |
| CO-R10.S04-WE-PW-140 | Excavation Works for Fire Hydrants of Potable Water Network-[Road 10]-[SW-4] | 2026-11-11 → 2026-11-18 (+7d) | 2026-11-18 → 2026-11-25 (+7d) |  | -105d → -111d |  |
| CO-R10.S04-WE-PW-150 | Installation Works for Fire Hydrant of Potable Water Network-[Road 10]-[SW-4] | 2026-11-19 → 2026-11-26 (+7d) | 2026-11-26 → 2026-12-03 (+7d) |  | -105d → -111d |  |
| CO-R10.S04-WE-PW-160 | Trench Backfilling and Compaction Works for Fire Hydrants of Potable Water Network-[Road 10]-[SW-4] | 2026-11-28 → 2026-12-05 (+7d) | 2026-12-05 → 2026-12-12 (+7d) |  | -105d → -111d |  |
| IR | **Irrigation Network** |  | 2026-11-15 → 2026-11-22 (+7d) |  |  |  |
| ML | **Main Line Pipes** |  | 2026-11-15 → 2026-11-22 (+7d) |  |  |  |
| CO-R10.S04-WE-IR-100 | Trench Excavation and Bedding Works for Main Lines of Irrigation Network-[Road 10]-[SW-4] |  | 2026-11-11 → 2026-11-18 (+7d) |  | -208d → -170d |  |
| CO-R10.S04-WE-IR-110 | Pipes Laying Works for Main Lines of Irrigation Network-[Road 10]-[SW-4] |  | 2026-11-11 → 2026-11-18 (+7d) |  | -208d → -170d | CO-R10.S04-WE-IR-100 FF, PRO-R19.2-IR-DL-100 FF+3d → CO-R10.S04-WE-IR-100 FF, PRO-R19.2-IR-DL-100 FF+3d, CO-R10.S04-WE-IR-100 SS, PRO-R19.2-IR-DL-100 SS |
| CO-R10.S04-WE-IR-130 | Trench Backfilling and Compaction Works for Main Lines of Irrigation Network-[Road 10]-[SW-4] |  | 2026-11-15 → 2026-11-22 (+7d) |  | -208d → -170d | CO-R10.S04-WE-IR-120 FF, CO-R10.S04-WE-IR-110 FF → CO-R10.S04-WE-IR-120 FF, CO-R10.S04-WE-IR-110 FF, CO-R10.S04-WE-IR-110 SS |
| CO-R10.S04-WE-IR-120 | Installation Works for Main Line Valves of Irrigation Network-[Road 10]-[SW-4] | 2026-11-12 → 2026-11-19 (+7d) | 2026-11-15 → 2026-11-22 (+7d) |  | -208d → -170d |  |
| SL | **Street Lighting Network** | 2026-11-16 → 2026-11-11 (-5d) | 2027-03-13 → 2027-01-28 (-44d) |  |  |  |
| LP | **Lighting Poles Works** | 2026-11-16 → 2026-11-11 (-5d) | 2027-01-12 → 2026-12-24 (-19d) |  |  |  |
| CO-R10.S04-WE-SL-100 | Foundation Excavation Works for Lighting Poles of Street Lighting Network-[Road 10]-[SW-4] | 2026-11-16 → 2026-11-11 A (-5d) | 2026-11-26 → 2026-11-28 (+2d) | 0% → 40% | -208d → -175d | CO-R10.S04-WE-EW-110, CO-R10.S04-WE-EW-100, CO-R10.S04-WE-IR-130 → CO-R10.S04-WE-EW-110, CO-R10.S04-WE-EW-100, CO-R10.S04-WE-IR-130 FF |
| CO-R10.S04-WE-SL-110 | Installation Works for Lighting Poles Foundation of Street Lighting Network-[Road 10]-[SW-4] | 2026-11-22 → 2026-11-12 A (-10d) | 2026-12-02 → 2026-12-03 (+1d) | 0% → 40% | -208d → -175d |  |
| CO-R10.S04-WE-SL-210 | Backfilling Works for Lighting Poles of Street Lighting Network-[Road 10]-[SW-4] | 2026-12-13 → 2026-11-12 A (-31d) | 2026-12-29 → 2026-12-16 (-13d) | 0% → 40% | -106.5d → -95.5d | CO-R10.S04-WE-SL-120 SS, CO-R10.S04-WE-SL-120 FF, CO-R10.S03-WE-SL-210 → CO-R10.S04-WE-SL-120 FF, CO-R10.S03-WE-SL-210 FF, CO-R10.S03-WE-SL-210 SS |
| CO-R10.S04-WE-SL-120 | Installation Works for Lighting Poles of Street Lighting Network-[Road 10]-[SW-4] | 2026-11-28 → 2026-11-24 (-4d) | 2026-12-17 → 2026-12-14 (-3d) |  | -208d → -175d |  |
| CO-R10.S04-WE-SL-130 | Installation Works for Lighting Fixtures With Drop Wire of Street Lighting Network-[Road 10]-[SW-4] | 2026-12-23 → 2026-12-05 (-18d) | 2027-01-12 → 2026-12-24 (-19d) |  | -111.5d → -95.5d |  |
| CO-R10.S04-WE-SL-200 | Testing Works for Lighting Poles of Street Lighting Network-[Road 10]-[SW-4] | 2026-12-30 → 2026-12-17 (-13d) | 2027-01-06 → 2026-12-24 (-13d) |  | -106.5d → -95.5d |  |
| CW | **Cabling Works** | 2026-12-19 → 2026-11-11 (-38d) | 2027-01-21 → 2026-12-14 (-38d) |  |  |  |
| CO-R10.S04-WE-SL-140 | Trench Excavation and Bedding Works for Street Lighting Network-[Road 10]-[SW-4] | 2026-12-19 → 2026-11-11 A (-38d) | 2026-12-29 → 2026-12-14 (-15d) |  | -208d → -175d | CO-R10.S04-WE-IR-130, CO-R10.S04-WE-EW-110, CO-R10.S04-WE-SL-120, CO-R10.S04-WE-SL-110 → CO-R10.S04-WE-IR-130 FF, CO-R10.S04-WE-EW-110, CO-R10.S04-WE-SL-120 FF, CO-R10.S04-WE-SL-110 FF |
| CO-R10.S04-WE-SL-160 | Trench Backfilling and Compaction Works for Street Lighting Network-[Road 10]-[SW-4] | 2027-01-11 → 2026-11-12 A (-60d) | 2027-01-21 → 2026-12-14 (-38d) |  | -208d → -175d | CO-R10.S04-WE-SL-150, CO-R10.S04-WE-IR-130 → CO-R10.S04-WE-SL-150 FF, CO-R10.S04-WE-IR-130 FF, CO-R10.S04-WE-SL-150 SS, CO-R10.S04-WE-IR-130 SS |
| CO-R10.S04-WE-SL-150 | Cable Laying Works for Street Lighting Network-[Road 10]-[SW-4] | 2026-12-30 → 2026-11-14 A (-46d) | 2027-01-10 → 2026-12-14 (-27d) |  | -208d → -175d | CO-R10.S04-WE-SL-140, PRO-R10-SL-DL-100 FF+3d → CO-R10.S04-WE-SL-140 FF, PRO-R10-SL-DL-100 FF+3d, CO-R10.S04-WE-SL-140 SS, PRO-R10-SL-DL-100 SS |
| DPB | **Distrubution Panel Boards** | 2027-01-23 → 2026-12-15 (-39d) | 2027-03-13 → 2027-01-28 (-44d) |  |  |  |
| CO-R10.S04-WE-SL-170 | Foundation Excavation Works For Panel Boards of Street Lighting Network-[Road 10]-[SW-4] | 2027-01-23 → 2026-12-15 (-39d) | 2027-02-11 → 2027-01-04 (-38d) |  | -208d → -175d |  |
| CO-R10.S04-WE-SL-180 | Installation Works for Panel Board Concrete Foundations of Street Lighting Network-[Road 10]-[SW-4] | 2027-02-02 → 2026-12-26 (-38d) | 2027-02-15 → 2027-01-07 (-39d) |  | -199d → -166d |  |
| CO-R10.S04-WE-SL-190 | Installation Works for Lighting Panel Boards of Street Lighting Network-[Road 10]-[SW-4] | 2027-02-16 → 2027-01-09 (-38d) | 2027-03-02 → 2027-01-21 (-40d) |  | -199d → -166d |  |
| CO-R10.S04-WE-SL-220 | A wall of concrete blocks to install the KWH meter of Street Lighting Network-[Road 10]-[SW-4] | 2027-02-16 → 2027-01-09 (-38d) | 2027-03-13 → 2027-01-28 (-44d) |  | -199d → -166d |  |
| TE | **Telecom Network** | 2027-01-20 → 2026-12-13 (-38d) | 2027-02-21 → 2027-01-13 (-39d) |  |  |  |
| PD | **Ducts Works** | 2027-01-20 → 2026-12-13 (-38d) | 2027-02-21 → 2027-01-13 (-39d) |  |  |  |
| CO-R10.S04-WE-TE-100 | Trench Excavation and Bedding Works for Ducts of Telecom Network-[Road 10]-[SW-4] | 2027-01-20 → 2026-12-13 (-38d) | 2027-01-27 → 2026-12-20 (-38d) |  | -172d → -139d |  |
| CO-R10.S04-WE-TE-110 | Pipes Laying Works for Ducts of Telecom Network-[Road 10]-[SW-4] | 2027-01-28 → 2026-12-21 (-38d) | 2027-02-04 → 2026-12-28 (-38d) |  | -172d → -139d |  |
| CO-R10.S04-WE-TE-120 | Pouring Plain Concrete Above Ducts of Telecom Network-[Road 10]-[SW-4] | 2027-02-06 → 2026-12-29 (-39d) | 2027-02-13 → 2027-01-05 (-39d) |  | -172d → -139d |  |
| CO-R10.S04-WE-TE-130 | Trench Backfilling and Compaction Works for Ducts of Telecom Network-[Road 10]-[SW-4] | 2027-02-14 → 2027-01-06 (-39d) | 2027-02-21 → 2027-01-13 (-39d) |  | -172d → -139d |  |
| MH | **Manholes Works** | 2027-01-28 → 2026-12-21 (-38d) | 2027-02-21 → 2027-01-13 (-39d) |  |  |  |
| CO-R10.S04-WE-TE-140 | Excavation Works for Manholes of Telecom Network-[Road 10]-[SW-4] | 2027-01-28 → 2026-12-21 (-38d) | 2027-02-04 → 2026-12-28 (-38d) |  | -172d → -139d |  |
| CO-R10.S04-WE-TE-150 | Installation Works for Manholes of Telecom Network-[Road 10]-[SW-4] | 2027-02-06 → 2026-12-29 (-39d) | 2027-02-13 → 2027-01-05 (-39d) |  | -172d → -139d |  |
| CO-R10.S04-WE-TE-160 | Backfilling Works for Manholes of Telecom Network-[Road 10]-[SW-4] | 2027-02-14 → 2027-01-06 (-39d) | 2027-02-21 → 2027-01-13 (-39d) |  | -172d → -139d |  |
| RD | **Road Works** |  | 2027-05-22 → 2027-05-01 (-21d) |  |  |  |
| RD | **Pre-Bituminous Construction** |  | 2027-03-02 → 2027-01-21 (-40d) |  |  |  |
| CO-R10.S04-WE-RD-100 | Capping and Subgrade Layer for Road Works-[Road 10]-[SW-4] |  | 2027-02-21 → 2027-01-13 (-39d) | 80% → 85% | -172d → -139d |  |
| CO-R10.S04-WE-RD-110 | Aggregate Base Course Layer for Road Works-[Road 10]-[SW-4] |  | 2027-03-02 → 2027-01-21 (-40d) | 20% → 40% | -54d → -21d |  |
| LS | **Pavement Works** |  | 2027-05-22 → 2027-05-01 (-21d) |  |  |  |
| CO-R10.S04-WE-RD-120 | Fixing of Curbstone for Sidewalks Pavement-[Road 10]-[SW-4] |  |  |  |  | PRO-R10-RD-DL-130 FF+3d → PRO-R10-RD-DL-130 FF+3d, PRO-R10-RD-DL-130 SS |
| CO-R10.S04-WE-RD-130 | Fixing of Interlock Tiles for Sidewalks Pavement-[Road 10]-[SW-4] | 2027-05-03 → 2027-04-18 (-15d) | 2027-05-22 → 2027-05-01 (-21d) |  | -190d → -177d |  |
| 5 | **Road 11 Local 1 ( 670 LM )** |  | 2027-03-30 → 2027-02-15 (-43d) |  |  |  |
| SW_5 | **SW_5** |  | 2027-02-14 → 2027-01-12 (-33d) |  |  |  |
| IR | **Irrigation Network** |  | 2026-11-23 → 2026-11-30 (+7d) |  |  |  |
| ML | **Main Line Pipes** |  | 2026-11-23 → 2026-11-30 (+7d) |  |  |  |
| CO-R11.S05-IR-110 | Pipes Laying Works for Main Lines of Irrigation Network-[Road 11]-[SW-5] |  | 2026-11-11 → 2026-11-18 (+7d) |  | -72d → -78d |  |
| CO-R11.S05-IR-120 | Installation Works for Main Line Valves of Irrigation Network-[Road 11]-[SW-5] | 2026-11-12 → 2026-11-19 (+7d) | 2026-11-15 → 2026-11-22 (+7d) |  | -72d → -78d |  |
| CO-R11.S05-IR-130 | Trench Backfilling and Compaction Works for Main Lines of Irrigation Network-[Road 11]-[SW-5] | 2026-11-16 → 2026-11-23 (+7d) | 2026-11-23 → 2026-11-30 (+7d) |  | -72d → -78d |  |
| TE | **Telecom Network** |  | 2027-02-14 → 2027-01-12 (-33d) |  |  |  |
| MH | **Manholes Works** | 2027-01-21 → 2026-12-20 (-32d) | 2027-02-14 → 2027-01-12 (-33d) |  |  |  |
| CO-R11.S05-TE-140 | Excavation Works for Manholes of Telecom Network-[Road 11]-[SW-5] | 2027-01-21 → 2026-12-20 (-32d) | 2027-01-28 → 2026-12-27 (-32d) |  | -155d → -127d |  |
| CO-R11.S05-TE-150 | Installation Works for Manholes of Telecom Network-[Road 11]-[SW-5] | 2027-01-30 → 2026-12-28 (-33d) | 2027-02-06 → 2027-01-04 (-33d) |  | -148d → -120d |  |
| CO-R11.S05-TE-160 | Backfilling Works for Manholes of Telecom Network-[Road 11]-[SW-5] | 2027-02-07 → 2027-01-05 (-33d) | 2027-02-14 → 2027-01-12 (-33d) |  | -148d → -120d |  |
| SW_6 | **SW_6** |  | 2027-03-30 → 2027-02-15 (-43d) |  |  |  |
| PW | **Potable Water Network** |  | 2026-12-03 → 2026-12-10 (+7d) |  |  |  |
| VC | **Valve Chamber** | 2026-11-10 → 2026-11-17 (+7d) | 2026-11-16 → 2026-11-23 (+7d) |  |  |  |
| CO-R11.S06-PW-210 | Installation Works for Main Line Valves and Valve Chambers of Potable Water Network-[Road 11]-[SW-6] | 2026-11-10 → 2026-11-17 (+7d) | 2026-11-16 → 2026-11-23 (+7d) |  | 2d → -4d |  |
| FH | **Fire Hydrant** | 2026-11-10 → 2026-11-17 (+7d) | 2026-12-03 → 2026-12-10 (+7d) |  |  |  |
| CO-R11.S06-PW-140 | Excavation Works for Fire Hydrants of Potable Water Network-[Road 11]-[SW-6] | 2026-11-10 → 2026-11-17 (+7d) | 2026-11-17 → 2026-11-24 (+7d) |  | -13d → -19d |  |
| CO-R11.S06-PW-150 | Installation Works for Fire Hydrant of Potable Water Network-[Road 11]-[SW-6] | 2026-11-18 → 2026-11-25 (+7d) | 2026-11-25 → 2026-12-02 (+7d) |  | -13d → -19d |  |
| CO-R11.S06-PW-160 | Trench Backfilling and Compaction Works for Fire Hydrants of Potable Water Network-[Road 11]-[SW-6] | 2026-11-26 → 2026-12-03 (+7d) | 2026-12-03 → 2026-12-10 (+7d) |  | -13d → -19d |  |
| SL | **Street Lighting Network** |  | 2027-03-30 → 2027-02-15 (-43d) |  |  |  |
| LP | **Lighting Poles Works** |  | 2027-02-02 → 2027-01-16 (-17d) |  |  |  |
| CO-R11.S06-SL-210 | Backfilling Works for Lighting Poles of Street Lighting Network-[Road 11]-[SW-6] | 2026-11-10 → 2026-11-17 (+7d) | 2026-11-26 → 2026-12-03 (+7d) |  | -60.5d → -66.5d |  |
| CO-R11.S06-SL-200 | Testing Works for Lighting Poles of Street Lighting Network-[Road 11]-[SW-6] | 2026-11-28 → 2026-12-05 (+7d) | 2026-12-05 → 2026-12-12 (+7d) |  | -60.5d → -66.5d |  |
| CO-R11.S06-SL-130 | Installation Works for Lighting Fixtures With Drop Wire of Street Lighting Network-[Road 11]-[SW-6] | 2027-01-13 → 2026-12-27 (-17d) | 2027-02-02 → 2027-01-16 (-17d) |  | -111.5d → -96.5d |  |

| ID | Task | Start | Finish | Total float |
| --- | --- | --- | --- | --- |
| CW | **Cabling Works** |  | 2026-11-21 → 2026-11-28 (+7d) |  |
| CO-R11.S06-SL-160 | Trench Backfilling and Compaction Works for Street Lighting Network-[Road 11]-[SW-6] | 2026-11-10 → 2026-11-17 (+7d) | 2026-11-21 → 2026-11-28 (+7d) | -31d → -37d |
| DPB | **Distrubution Panel Boards** | 2027-02-13 → 2027-01-05 (-39d) | 2027-03-30 → 2027-02-15 (-43d) |  |
| CO-R11.S06-SL-170 | Foundation Excavation Works For Panel Boards of Street Lighting Network-[Road 11]-[SW-6] | 2027-02-13 → 2027-01-05 (-39d) | 2027-02-27 → 2027-01-18 (-40d) | -208d → -175d |
| CO-R11.S06-SL-180 | Installation Works for Panel Board Concrete Foundations of Street Lighting Network-[Road 11]-[SW-6] | 2027-02-28 → 2027-01-19 (-40d) | 2027-03-16 → 2027-02-01 (-43d) | -208d → -175d |
| CO-R11.S06-SL-190 | Installation Works for Lighting Panel Boards of Street Lighting Network-[Road 11]-[SW-6] | 2027-03-17 → 2027-02-02 (-43d) | 2027-03-30 → 2027-02-15 (-43d) | -208d → -175d |
| CO-R11.S06-SL-220 | A wall of concrete blocks to install the KWH meter of Street Lighting Network-[Road 11]-[SW-6] | 2027-03-17 → 2027-02-02 (-43d) | 2027-03-30 → 2027-02-15 (-43d) | -202d → -169d |
| TE | **Telecom Network** |  | 2027-03-02 → 2027-01-21 (-40d) |  |
| MH | **Manholes Works** | 2027-02-06 → 2026-12-29 (-39d) | 2027-03-02 → 2027-01-21 (-40d) |  |
| CO-R11.S06-TE-140 | Excavation Works for Manholes of Telecom Network-[Road 11]-[SW-6] | 2027-02-06 → 2026-12-29 (-39d) | 2027-02-13 → 2027-01-05 (-39d) | -161d → -128d |
| CO-R11.S06-TE-150 | Installation Works for Manholes of Telecom Network-[Road 11]-[SW-6] | 2027-02-14 → 2027-01-06 (-39d) | 2027-02-21 → 2027-01-13 (-39d) | -161d → -128d |
| CO-R11.S06-TE-160 | Backfilling Works for Manholes of Telecom Network-[Road 11]-[SW-6] | 2027-02-23 → 2027-01-14 (-40d) | 2027-03-02 → 2027-01-21 (-40d) | -161d → -128d |
| 6 | **Road 14 Local 1 ( 584 LM )** |  | 2027-06-19 → 2027-06-03 (-16d) |  |
| SW_7 | **SW_7** |  | 2027-06-19 → 2027-06-03 (-16d) |  |
| IR | **Irrigation Network** |  | 2026-11-17 → 2026-11-24 (+7d) |  |
| ML | **Main Line Pipes** |  | 2026-11-17 → 2026-11-24 (+7d) |  |
| CO-R14.S07-IR-120 | Installation Works for Main Line Valves of Irrigation Network-[Road 14]-[SW-7] | 2026-11-10 → 2026-11-17 (+7d) | 2026-11-17 → 2026-11-24 (+7d) | -17d → -23d |
| SL | **Street Lighting Network** |  | 2026-12-07 → 2026-12-14 (+7d) |  |
| LP | **Lighting Poles Works** |  | 2026-11-30 → 2026-12-07 (+7d) |  |
| CO-R14.S07-SL-130 | Installation Works for Lighting Fixtures With Drop Wire of Street Lighting Network-[Road 14]-[SW-7] | 2026-11-10 → 2026-11-17 (+7d) | 2026-11-30 → 2026-12-07 (+7d) | -87d → -93d |
| CO-R14.S07-SL-200 | Testing Works for Lighting Poles of Street Lighting Network-[Road 14]-[SW-7] | 2026-11-10 → 2026-11-17 (+7d) | 2026-11-15 → 2026-11-22 (+7d) | -74d → -80d |
| DPB | **Distrubution Panel Boards** | 2026-11-10 → 2026-11-17 (+7d) | 2026-12-07 → 2026-12-14 (+7d) |  |
| CO-R14.S07-SL-170 | Foundation Excavation Works For Panel Boards of Street Lighting Network-[Road 14]-[SW-7] | 2026-11-10 → 2026-11-17 (+7d) | 2026-11-30 → 2026-12-07 (+7d) | -97d → -103d |
| CO-R14.S07-SL-180 | Installation Works for Panel Board Concrete Foundations of Street Lighting Network-[Road 14]-[SW-7] | 2026-11-14 → 2026-11-21 (+7d) | 2026-12-03 → 2026-12-10 (+7d) | -97d → -103d |
| CO-R14.S07-SL-220 | A wall of concrete blocks to install the KWH meter of Street Lighting Network-[Road 14]-[SW-7] | 2026-11-14 → 2026-11-21 (+7d) | 2026-12-03 → 2026-12-10 (+7d) | -94d → -100d |
| CO-R14.S07-SL-190 | Installation Works for Lighting Panel Boards of Street Lighting Network-[Road 14]-[SW-7] | 2026-11-17 → 2026-11-24 (+7d) | 2026-12-07 → 2026-12-14 (+7d) | -97d → -103d |
| TE | **Telecom Network** | 2027-02-08 → 2027-01-24 (-15d) | 2027-03-08 → 2027-02-20 (-16d) |  |
| PD | **Ducts Works** | 2027-02-08 → 2027-01-24 (-15d) | 2027-03-08 → 2027-02-20 (-16d) |  |
| CO-R14.S07-TE-100 | Trench Excavation and Bedding Works for Ducts of Telecom Network-[Road 14]-[SW-7] | 2027-02-08 → 2027-01-24 (-15d) | 2027-02-10 → 2027-01-26 (-15d) | -166d → -153d |
| CO-R14.S07-TE-110 | Pipes Laying Works for Ducts of Telecom Network-[Road 14]-[SW-7] | 2027-02-11 → 2027-01-27 (-15d) | 2027-02-18 → 2027-02-03 (-15d) | -159d → -146d |
| CO-R14.S07-TE-120 | Pouring Plain Concrete Above Ducts of Telecom Network-[Road 14]-[SW-7] | 2027-02-20 → 2027-02-04 (-16d) | 2027-02-28 → 2027-02-11 (-17d) | -159d → -146d |
| CO-R14.S07-TE-130 | Trench Backfilling and Compaction Works for Ducts of Telecom Network-[Road 14]-[SW-7] | 2027-03-01 → 2027-02-13 (-16d) | 2027-03-08 → 2027-02-20 (-16d) | -159d → -146d |
| MH | **Manholes Works** | 2027-02-11 → 2027-01-27 (-15d) | 2027-03-08 → 2027-02-20 (-16d) |  |
| CO-R14.S07-TE-140 | Excavation Works for Manholes of Telecom Network-[Road 14]-[SW-7] | 2027-02-11 → 2027-01-27 (-15d) | 2027-02-18 → 2027-02-03 (-15d) | -166d → -153d |
| CO-R14.S07-TE-150 | Installation Works for Manholes of Telecom Network-[Road 14]-[SW-7] | 2027-02-20 → 2027-02-04 (-16d) | 2027-02-28 → 2027-02-11 (-17d) | -159d → -146d |
| CO-R14.S07-TE-160 | Backfilling Works for Manholes of Telecom Network-[Road 14]-[SW-7] | 2027-03-01 → 2027-02-13 (-16d) | 2027-03-08 → 2027-02-20 (-16d) | -159d → -146d |
| RD | **Road Works** |  | 2027-06-19 → 2027-06-03 (-16d) |  |
| LS | **Pavement Works** |  | 2027-06-19 → 2027-06-03 (-16d) |  |
| CO-R14.S07-RD-P-130 | Fixing of Interlock Tiles for Sidewalks Pavement-[Road 14]-[SW-7] | 2027-06-06 → 2027-05-22 (-15d) | 2027-06-19 → 2027-06-03 (-16d) | -194d → -181d |
| SW_8 | **SW_8** |  | 2027-06-19 → 2027-06-03 (-16d) |  |
| PW | **Potable Water Network** |  | 2026-12-03 → 2026-12-10 (+7d) |  |
| FH | **Fire Hydrant** | 2026-11-10 → 2026-11-17 (+7d) | 2026-12-03 → 2026-12-10 (+7d) |  |
| CO-R14.S08-PW-140 | Excavation Works for Fire Hydrants of Potable Water Network-[Road 14]-[SW-8] | 2026-11-10 → 2026-11-17 (+7d) | 2026-11-17 → 2026-11-24 (+7d) | -13d → -19d |
| CO-R14.S08-PW-150 | Installation Works for Fire Hydrant of Potable Water Network-[Road 14]-[SW-8] | 2026-11-18 → 2026-11-25 (+7d) | 2026-11-25 → 2026-12-02 (+7d) | -13d → -19d |
| CO-R14.S08-PW-160 | Trench Backfilling and Compaction Works for Fire Hydrants of Potable Water Network-[Road 14]-[SW-8] | 2026-11-26 → 2026-12-03 (+7d) | 2026-12-03 → 2026-12-10 (+7d) | -13d → -19d |
| SL | **Street Lighting Network** |  | 2027-04-20 → 2027-03-13 (-38d) |  |
| LP | **Lighting Poles Works** |  | 2027-02-24 → 2027-02-06 (-18d) |  |
| CO-R14.S08-SL-200 | Testing Works for Lighting Poles of Street Lighting Network-[Road 14]-[SW-8] | 2026-11-10 → 2026-11-17 (+7d) | 2026-11-17 → 2026-11-24 (+7d) | -28d → -34d |
| CO-R14.S08-SL-850 | Installation Works for Lighting Fixtures With Drop Wire of Street Lighting Network-[Road 14]-[SW-8] | 2027-02-03 → 2027-01-17 (-17d) | 2027-02-24 → 2027-02-06 (-18d) | -111.5d → -96.5d |
| DPB | **Distrubution Panel Boards** | 2027-02-28 → 2027-01-19 (-40d) | 2027-04-20 → 2027-03-13 (-38d) |  |
| CO-R14.S08-SL-DB-640 | Foundation Excavation Works For Panel Boards of Street Lighting Network-[Road 14]-[SW-8] | 2027-02-28 → 2027-01-19 (-40d) | 2027-03-23 → 2027-02-08 (-43d) | -194d → -161d |
| CO-R14.S08-SL-220 | A wall of concrete blocks to install the KWH meter of Street Lighting Network-[Road 14]-[SW-8] | 2027-03-17 → 2027-02-02 (-43d) | 2027-04-14 → 2027-03-03 (-42d) | -203d → -170d |
| CO-R14.S08-SL-DB-650 | Installation Works for Panel Board Concrete Foundations of Street Lighting Network-[Road 14]-[SW-8] | 2027-03-17 → 2027-02-02 (-43d) | 2027-04-06 → 2027-02-23 (-42d) | -203d → -170d |
| CO-R14.S08-SL-DB-660 | Installation Works for Lighting Panel Boards of Street Lighting Network-[Road 14]-[SW-8] | 2027-03-31 → 2027-02-16 (-43d) | 2027-04-20 → 2027-03-13 (-38d) | -208d → -175d |
| TE | **Telecom Network** | 2027-02-11 → 2027-01-27 (-15d) | 2027-03-20 → 2027-03-01 (-19d) |  |
| PD | **Ducts Works** | 2027-02-11 → 2027-01-27 (-15d) | 2027-03-15 → 2027-02-24 (-19d) |  |
| CO-R14.S08-TE-100 | Trench Excavation and Bedding Works for Ducts of Telecom Network-[Road 14]-[SW-8] | 2027-02-11 → 2027-01-27 (-15d) | 2027-02-14 → 2027-01-30 (-15d) | -162d → -149d |
| CO-R14.S08-TE-110 | Pipes Laying Works for Ducts of Telecom Network-[Road 14]-[SW-8] | 2027-02-15 → 2027-01-31 (-15d) | 2027-02-23 → 2027-02-07 (-16d) | -162d → -149d |
| CO-R14.S08-TE-120 | Pouring Plain Concrete Above Ducts of Telecom Network-[Road 14]-[SW-8] | 2027-02-24 → 2027-02-08 (-16d) | 2027-03-03 → 2027-02-15 (-16d) | -162d → -149d |
| CO-R14.S08-TE-130 | Trench Backfilling and Compaction Works for Ducts of Telecom Network-[Road 14]-[SW-8] | 2027-03-04 → 2027-02-16 (-16d) | 2027-03-15 → 2027-02-24 (-19d) | -162d → -149d |
| MH | **Manholes Works** | 2027-02-20 → 2027-02-04 (-16d) | 2027-03-20 → 2027-03-01 (-19d) |  |
| CO-R14.S08-TE-140 | Excavation Works for Manholes of Telecom Network-[Road 14]-[SW-8] | 2027-02-20 → 2027-02-04 (-16d) | 2027-02-28 → 2027-02-11 (-17d) | -166d → -153d |
| CO-R14.S08-TE-150 | Installation Works for Manholes of Telecom Network-[Road 14]-[SW-8] | 2027-03-01 → 2027-02-13 (-16d) | 2027-03-08 → 2027-02-20 (-16d) | -166d → -153d |
| CO-R14.S08-TE-160 | Backfilling Works for Manholes of Telecom Network-[Road 14]-[SW-8] | 2027-03-13 → 2027-02-21 (-20d) | 2027-03-20 → 2027-03-01 (-19d) | -166d → -153d |
| RD | **Road Works** |  | 2027-06-19 → 2027-06-03 (-16d) |  |
| LS | **Pavement Works** |  | 2027-06-19 → 2027-06-03 (-16d) |  |
| CO-R14.S08-RD-P-130 | Fixing of Interlock Tiles for Sidewalks Pavement-[Road 14]-[SW-8] | 2027-06-06 → 2027-05-22 (-15d) | 2027-06-19 → 2027-06-03 (-16d) | -192d → -179d |
| 7 | **Road 15 Local 1 ( 556 LM )** |  | 2027-01-06 → 2026-12-28 (-9d) |  |
| SW_9 | **SW_9** |  | 2026-12-21 → 2026-12-28 (+7d) |  |
| IR | **Irrigation Network** |  | 2026-12-21 → 2026-12-28 (+7d) |  |

| ID | Task | Start | Finish | Total float |
| --- | --- | --- | --- | --- |
| ML | **Main Line Pipes** |  | 2026-12-21 → 2026-12-28 (+7d) |  |
| CO-R15.S09-IR-120 | Installation Works for Main Line Valves of Irrigation Network-[Road 15]-[SW-9] | 2026-12-14 → 2026-12-21 (+7d) | 2026-12-21 → 2026-12-28 (+7d) | -46d → -52d |
| SW_10 | **SW_10** |  | 2027-01-06 → 2026-12-14 (-23d) |  |
| SL | **Street Lighting Network** |  | 2027-01-06 → 2026-12-14 (-23d) |  |
| LP | **Lighting Poles Works** |  | 2027-01-06 → 2026-12-07 (-30d) |  |
| CO-R15.S10-SL-130 | Installation Works for Lighting Fixtures With Drop Wire of Street Lighting Network-[Road 15]-[SW-10] | 2026-12-17 → 2026-11-17 (-30d) | 2027-01-06 → 2026-12-07 (-30d) | -192d → -166d |
| CO-R15.S10-SL-200 | Testing Works for Lighting Poles of Street Lighting Network-[Road 15]-[SW-10] | 2026-11-10 → 2026-11-17 (+7d) | 2026-11-15 → 2026-11-22 (+7d) | -147d → -153d |
| DPB | **Distrubution Panel Boards** | 2026-11-10 → 2026-11-17 (+7d) | 2026-12-07 → 2026-12-14 (+7d) |  |
| CO-R15.S10-SL-170 | Foundation Excavation Works For Panel Boards of Street Lighting Network-[Road 15]-[SW-10] | 2026-11-10 → 2026-11-17 (+7d) | 2026-11-30 → 2026-12-07 (+7d) | -83d → -89d |
| CO-R15.S10-SL-180 | Installation Works for Panel Board Concrete Foundations of Street Lighting Network-[Road 15]-[SW-10] | 2026-11-14 → 2026-11-21 (+7d) | 2026-12-03 → 2026-12-10 (+7d) | -83d → -89d |
| CO-R15.S10-SL-220 | A wall of concrete blocks to install the KWH meter of Street Lighting Network-[Road 15]-[SW-10] | 2026-11-14 → 2026-11-21 (+7d) | 2026-12-03 → 2026-12-10 (+7d) | -80d → -86d |
| CO-R15.S10-SL-190 | Installation Works for Lighting Panel Boards of Street Lighting Network-[Road 15]-[SW-10] | 2026-11-17 → 2026-11-24 (+7d) | 2026-12-07 → 2026-12-14 (+7d) | -83d → -89d |
| PW | **Potable Water Network** |  | 2026-11-30 → 2026-12-07 (+7d) |  |
| VC | **Valve Chamber** | 2026-11-10 → 2026-11-17 (+7d) | 2026-11-16 → 2026-11-23 (+7d) |  |
| CO-R15.S10-PW-210 | Installation Works for Main Line Valves and Valve Chambers of Potable Water Network-[Road 15]-[SW-10] | 2026-11-10 → 2026-11-17 (+7d) | 2026-11-16 → 2026-11-23 (+7d) | 2d → -4d |
| FH | **Fire Hydrant** | 2026-11-10 → 2026-11-17 (+7d) | 2026-11-30 → 2026-12-07 (+7d) |  |
| CO-R15.S10-PW-140 | Excavation Works for Fire Hydrants of Potable Water Network-[Road 15]-[SW-10] | 2026-11-10 → 2026-11-17 (+7d) | 2026-11-16 → 2026-11-23 (+7d) | -22d → -28d |
| CO-R15.S10-PW-150 | Installation Works for Fire Hydrant of Potable Water Network-[Road 15]-[SW-10] | 2026-11-17 → 2026-11-24 (+7d) | 2026-11-23 → 2026-11-30 (+7d) | -22d → -28d |
| CO-R15.S10-PW-160 | Trench Backfilling and Compaction Works for Fire Hydrants of Potable Water Network-[Road 15]-[SW-10] | 2026-11-24 → 2026-12-01 (+7d) | 2026-11-30 → 2026-12-07 (+7d) | -22d → -28d |
| 8 | **Road 16 Local 1 ( 527 LM )** |  | 2027-01-30 → 2027-02-09 (+10d) |  |
| SW_13 | **SW_11** |  | 2026-12-15 → 2026-12-22 (+7d) |  |
| IR | **Irrigation Network** |  | 2026-12-15 → 2026-12-22 (+7d) |  |
| ML | **Main Line Pipes** |  | 2026-12-15 → 2026-12-22 (+7d) |  |
| CO-R16.S11-IR-120 | Installation Works for Main Line Valves of Irrigation Network-[Road 16]-[SW-11] | 2026-12-08 → 2026-12-15 (+7d) | 2026-12-15 → 2026-12-22 (+7d) | -41d → -47d |
| SW_14 | **SW_12** |  | 2027-01-30 → 2027-02-09 (+10d) |  |
| PW | **Potable Water Network** |  | 2027-01-30 → 2027-02-09 (+10d) |  |
| VC | **Valve Chamber** | 2027-01-24 → 2027-02-03 (+10d) | 2027-01-30 → 2027-02-09 (+10d) |  |
| CO-R16.S12-PW-210 | Installation Works for Main Line Valves and Valve Chambers of Potable Water Network-[Road 16]-[SW-12] | 2027-01-24 → 2027-02-03 (+10d) | 2027-01-30 → 2027-02-09 (+10d) | -62d → -71d |
| FH | **Fire Hydrant** | 2026-11-10 → 2026-11-17 (+7d) | 2026-12-07 → 2026-12-14 (+7d) |  |
| CO-R16.S12-PW-140 | Excavation Works for Fire Hydrants of Potable Water Network-[Road 16]-[SW-12] | 2026-11-10 → 2026-11-17 (+7d) | 2026-11-16 → 2026-11-23 (+7d) | -16d → -22d |
| CO-R16.S12-PW-150 | Installation Works for Fire Hydrant of Potable Water Network-[Road 16]-[SW-12] | 2026-11-24 → 2026-12-01 (+7d) | 2026-11-30 → 2026-12-07 (+7d) | -22d → -28d |
| CO-R16.S12-PW-160 | Trench Backfilling and Compaction Works for Fire Hydrants of Potable Water Network-[Road 16]-[SW-12] | 2026-12-01 → 2026-12-08 (+7d) | 2026-12-07 → 2026-12-14 (+7d) | -22d → -28d |
| 9 | **Road 17 Local 1 ( 500 LM )** |  | 2026-12-26 → 2026-12-21 (-5d) |  |
| SW_15 | **SW_13** |  | 2026-12-09 → 2026-12-16 (+7d) |  |
| IR | **Irrigation Network** |  | 2026-12-09 → 2026-12-16 (+7d) |  |
| ML | **Main Line Pipes** |  | 2026-12-09 → 2026-12-16 (+7d) |  |
| CO-R17.S13-IR-120 | Installation Works for Main Line Valves of Irrigation Network-[Road 17]-[SW-13] | 2026-12-02 → 2026-12-09 (+7d) | 2026-12-09 → 2026-12-16 (+7d) | -36d → -42d |
| SW_16 | **SW_14** |  | 2026-12-26 → 2026-12-21 (-5d) |  |
| SL | **Street Lighting Network** |  | 2026-12-26 → 2026-12-14 (-12d) |  |
| LP | **Lighting Poles Works** |  | 2026-12-26 → 2026-12-07 (-19d) |  |
| CO-R17.S14-SL-130 | Installation Works for Lighting Fixtures With Drop Wire of Street Lighting Network-[Road 17]-[SW-14] | 2026-12-06 → 2026-11-17 (-19d) | 2026-12-26 → 2026-12-07 (-19d) | -97d → -81d |
| CO-R17.S14-SL-200 | Testing Works for Lighting Poles of Street Lighting Network-[Road 17]-[SW-14] | 2026-11-10 → 2026-11-17 (+7d) | 2026-11-15 → 2026-11-22 (+7d) | -62d → -68d |
| DPB | **Distrubution Panel Boards** | 2026-11-10 → 2026-11-17 (+7d) | 2026-12-07 → 2026-12-14 (+7d) |  |
| CO-R17.S14-SL-170 | Foundation Excavation Works For Panel Boards of Street Lighting Network-[Road 17]-[SW-14] | 2026-11-10 → 2026-11-17 (+7d) | 2026-11-30 → 2026-12-07 (+7d) | -59d → -65d |
| CO-R17.S14-SL-180 | Installation Works for Panel Board Concrete Foundations of Street Lighting Network-[Road 17]-[SW-14] | 2026-11-14 → 2026-11-21 (+7d) | 2026-12-03 → 2026-12-10 (+7d) | -59d → -65d |
| CO-R17.S14-SL-220 | A wall of concrete blocks to install the KWH meter of Street Lighting Network-[Road 17]-[SW-14] | 2026-11-14 → 2026-11-21 (+7d) | 2026-12-03 → 2026-12-10 (+7d) | -56d → -62d |
| CO-R17.S14-SL-190 | Installation Works for Lighting Panel Boards of Street Lighting Network-[Road 17]-[SW-14] | 2026-11-17 → 2026-11-24 (+7d) | 2026-12-07 → 2026-12-14 (+7d) | -59d → -65d |
| PW | **Potable Water Network** |  | 2026-12-14 → 2026-12-21 (+7d) |  |
| VC | **Valve Chamber** | 2026-11-10 → 2026-11-17 (+7d) | 2026-11-16 → 2026-11-23 (+7d) |  |
| CO-R17.S14-PW-210 | Installation Works for Main Line Valves and Valve Chambers of Potable Water Network-[Road 17]-[SW-14] | 2026-11-10 → 2026-11-17 (+7d) | 2026-11-16 → 2026-11-23 (+7d) | 2d → -4d |
| FH | **Fire Hydrant** | 2026-11-10 → 2026-11-17 (+7d) | 2026-12-14 → 2026-12-21 (+7d) |  |
| CO-R17.S14-PW-140 | Excavation Works for Fire Hydrants of Potable Water Network-[Road 17]-[SW-14] | 2026-11-10 → 2026-11-17 (+7d) | 2026-11-16 → 2026-11-23 (+7d) | -10d → -16d |
| CO-R17.S14-PW-150 | Installation Works for Fire Hydrant of Potable Water Network-[Road 17]-[SW-14] | 2026-12-01 → 2026-12-08 (+7d) | 2026-12-07 → 2026-12-14 (+7d) | -22d → -28d |
| CO-R17.S14-PW-160 | Trench Backfilling and Compaction Works for Fire Hydrants of Potable Water Network-[Road 17]-[SW-14] | 2026-12-08 → 2026-12-15 (+7d) | 2026-12-14 → 2026-12-21 (+7d) | -22d → -28d |
| TE | **Telecom Network** |  | 2026-12-03 → 2026-12-10 (+7d) |  |
| MH | **Manholes Works** | 2026-11-10 → 2026-11-17 (+7d) | 2026-12-03 → 2026-12-10 (+7d) |  |
| CO-R17.S14-TE-140 | Excavation Works for Manholes of Telecom Network-[Road 17]-[SW-14] | 2026-11-10 → 2026-11-17 (+7d) | 2026-11-17 → 2026-11-24 (+7d) | -79d → -85d |
| CO-R17.S14-TE-150 | Installation Works for Manholes of Telecom Network-[Road 17]-[SW-14] | 2026-11-18 → 2026-11-25 (+7d) | 2026-11-25 → 2026-12-02 (+7d) | -79d → -85d |
| CO-R17.S14-TE-160 | Backfilling Works for Manholes of Telecom Network-[Road 17]-[SW-14] | 2026-11-26 → 2026-12-03 (+7d) | 2026-12-03 → 2026-12-10 (+7d) | -79d → -85d |
| 1 | **Road 18 Local 1 ( 479 LM )** |  | 2026-12-20 → 2026-12-14 (-6d) |  |
| SW_15 | **SW_15** |  | 2026-12-03 → 2026-12-10 (+7d) |  |
| IR | **Irrigation Network** |  | 2026-12-03 → 2026-12-10 (+7d) |  |
| ML | **Main Line Pipes** |  | 2026-12-03 → 2026-12-10 (+7d) |  |
| CO-R18.S15-IR-160 | Installation Works for Main Line Valves of Irrigation Network-[Road 18]-[SW-15] | 2026-11-26 → 2026-12-03 (+7d) | 2026-12-03 → 2026-12-10 (+7d) | -31d → -37d |
| SW_16 | **SW_16** |  | 2026-12-20 → 2026-12-14 (-6d) |  |
| SL | **Street Lighting Network** |  | 2026-12-20 → 2026-12-14 (-6d) |  |
| LP | **Lighting Poles Works** |  | 2026-12-20 → 2026-12-07 (-13d) |  |
| CO-R18.S16-SL-130 | Installation Works for Lighting Fixtures With Drop Wire of Street Lighting Network-[Road 18]-[SW-16] | 2026-11-30 → 2026-11-17 (-13d) | 2026-12-20 → 2026-12-07 (-13d) | -68.25d → -45d |
| CO-R18.S16-SL-200 | Testing Works for Lighting Poles of Street Lighting Network-[Road 18]-[SW-16] | 2026-11-10 → 2026-11-17 (+7d) | 2026-11-15 → 2026-11-22 (+7d) | -38.25d → -32d |
| DPB | **Distrubution Panel Boards** | 2026-11-10 → 2026-11-17 (+7d) | 2026-12-07 → 2026-12-14 (+7d) |  |

| ID | Task | Start | Finish | Total float |
| --- | --- | --- | --- | --- |
| CO-R18.S16-SL-170 | Foundation Excavation Works For Panel Boards of Street Lighting Network-[Road 18]-[SW-16] | 2026-11-10 → 2026-11-17 (+7d) | 2026-11-30 → 2026-12-07 (+7d) | -59d → -51d |
| CO-R18.S16-SL-180 | Installation Works for Panel Board Concrete Foundations of Street Lighting Network-[Road 18]-[SW-16] | 2026-11-14 → 2026-11-21 (+7d) | 2026-12-03 → 2026-12-10 (+7d) | -59d → -51d |
| CO-R18.S16-SL-220 | A wall of concrete blocks to install the KWH meter of Street Lighting Network-[Road 18]-[SW-16] | 2026-11-14 → 2026-11-21 (+7d) | 2026-12-03 → 2026-12-10 (+7d) | -56d → -48d |
| CO-R18.S16-SL-190 | Installation Works for Lighting Panel Boards of Street Lighting Network-[Road 18]-[SW-16] | 2026-11-17 → 2026-11-24 (+7d) | 2026-12-07 → 2026-12-14 (+7d) | -59d → -51d |
| PW | **Potable Water Network** |  | 2026-11-30 → 2026-12-07 (+7d) |  |
| VC | **Valve Chamber** | 2026-11-10 → 2026-11-17 (+7d) | 2026-11-16 → 2026-11-23 (+7d) |  |
| CO-R18.S16-PW-330 | Installation Works for Main Line Valves and Valve Chambers of Potable Water Network-[Road 18]-[SW-16] | 2026-11-10 → 2026-11-17 (+7d) | 2026-11-16 → 2026-11-23 (+7d) | 2d → -4d |
| FH | **Fire Hydrant** | 2026-11-10 → 2026-11-17 (+7d) | 2026-11-30 → 2026-12-07 (+7d) |  |
| CO-R18.S16-PW-250 | Excavation Works for Fire Hydrants of Potable Water Network-[Road 18]-[SW-16] | 2026-11-10 → 2026-11-17 (+7d) | 2026-11-16 → 2026-11-23 (+7d) | -10d → -16d |
| CO-R18.S16-PW-260 | Installation Works for Fire Hydrant of Potable Water Network-[Road 18]-[SW-16] | 2026-11-17 → 2026-11-24 (+7d) | 2026-11-23 → 2026-11-30 (+7d) | -10d → -16d |
| CO-R18.S16-PW-270 | Trench Backfilling and Compaction Works for Fire Hydrants of Potable Water Network-[Road 18]-[SW-16] | 2026-11-24 → 2026-12-01 (+7d) | 2026-11-30 → 2026-12-07 (+7d) | -10d → -16d |
| 3 | **Finishes for Infrastructure Networks** |  | 2027-09-21 → 2027-09-09 (-12d) |  |
| 1 | **Phase 2 Block "J"** |  | 2027-09-21 → 2027-09-09 (-12d) |  |
| 2 | **Road 09 Local 2 ( 2278 LM )** |  | 2027-09-02 → 2027-09-09 (+7d) |  |
| 10 | **Sewage Network** |  | 2027-04-25 → 2027-04-10 (-15d) |  |
| TF | **Testing and Finishes** |  | 2027-04-25 → 2027-04-10 (-15d) |  |
| CO-R09-SW-TF-100 | Final Testing For Main Line of Sewage Network-[Road 09] |  | 2027-04-07 → 2027-03-23 (-15d) | -209d → -184d |
| CO-R09-SW-TF-110 | Install Manhole Cover Works for External Finishes of Sewage Network-[Road 09] | 2027-04-08 → 2027-03-24 (-15d) | 2027-04-21 → 2027-04-06 (-15d) | -195d → -166d |
| CO-R09-SW-TF-120 | Main Manhole Internal Finishes (Benching + Insulation) of Sewage Network-[Road 09] | 2027-04-12 → 2027-03-28 (-15d) | 2027-04-25 → 2027-04-10 (-15d) | -182d → -153d |
| 11 | **Storm Drainage Network** | 2027-03-08 → 2027-02-20 (-16d) | 2027-05-10 → 2027-04-25 (-15d) |  |
| TF | **Testing and Finishes** | 2027-03-08 → 2027-02-20 (-16d) | 2027-05-10 → 2027-04-25 (-15d) |  |
| CO-R09-SD-TF-110 | Install Catch Basin Cover Works for External Finishes of Storm Drainage Network-[Road 09] | 2027-03-08 → 2027-02-20 (-16d) | 2027-03-29 → 2027-03-14 (-15d) | -175d → -146d |
| CO-R09-SD-TF-100 | Testing Work for Pipes of Storm Drainage Network-[Road 09] | 2027-03-25 → 2027-03-07 (-18d) | 2027-04-07 → 2027-03-23 (-15d) | -209d → -184d |
| CO-R09-SD-TF-120 | Main Manhole Internal Finishes (Benching + Insulation ) for Storm Drainage Network-[Road 09] | 2027-04-22 → 2027-04-07 (-15d) | 2027-05-10 → 2027-04-25 (-15d) | -195d → -166d |
| CO-R09-SD-TF-130 | Catch Basin Internal Finishes (Benching + Insulation ) for Storm Drainage Network-[Road 09] | 2027-04-22 → 2027-04-07 (-15d) | 2027-05-10 → 2027-04-25 (-15d) | -140d → -111d |
| 9 | **Potable Water Network** | 2027-04-08 → 2027-03-24 (-15d) | 2027-05-22 → 2027-05-01 (-21d) |  |
| TF | **Testing and Finishes** | 2027-04-08 → 2027-03-24 (-15d) | 2027-05-22 → 2027-05-01 (-21d) |  |
| CO-R09-PW-TF-110 | Testing Work for Main Line of Potable Water Network-[Road 09] | 2027-04-08 → 2027-03-24 (-15d) | 2027-04-18 → 2027-04-03 (-15d) | -209d → -184d |
| CO-R09-PW-TF-100 | Final Finishes works and Covers for Valves and Valve Chambers of Potable Water Network-[Road 09] | 2027-04-19 → 2027-04-04 (-15d) | 2027-05-02 → 2027-04-17 (-15d) | -200d → -171d |
| CO-R09-PW-TF-120 | Fire Hydrant Finishies (S.Box + Safety + Marker Post ) of Potable Water Network-[Road 09] | 2027-05-03 → 2027-04-18 (-15d) | 2027-05-22 → 2027-05-01 (-21d) | -200d → -171d |
| 13 | **Irrigation Network** | 2027-04-05 → 2027-03-21 (-15d) | 2027-04-22 → 2027-04-07 (-15d) |  |
| TF | **Testing and Finishes** | 2027-04-05 → 2027-03-21 (-15d) | 2027-04-22 → 2027-04-07 (-15d) |  |
| CO-R09-IR-TF-100 | Final Testing (pressure tests) of Irrigation Network-[Road 09] | 2027-04-05 → 2027-03-21 (-15d) | 2027-04-22 → 2027-04-07 (-15d) | -180d → -151d |
| 12 | **Street Lighting Network** | 2027-02-25 → 2027-03-04 (+7d) | 2027-06-14 → 2027-06-21 (+7d) |  |
| TR | **Termination and Testing Works** | 2027-02-25 → 2027-03-04 (+7d) | 2027-06-12 → 2027-06-19 (+7d) |  |
| CO-R09-SL-TF-100 | Termination Works For Lighting Poles Cables of Street Lighting Network-[Road 09] | 2027-02-25 → 2027-03-04 (+7d) | 2027-03-14 → 2027-03-21 (+7d) | -219.5d → -209.5d |
| CO-R09-SL-TF-110 | Termination Works For Panel Board Cables of Street Lighting Network-[Road 09] | 2027-05-13 → 2027-05-26 (+13d) | 2027-05-31 → 2027-06-07 (+7d) | -219.5d → -209.5d |
| CO-R09-SL-TF-380 | Testing Works For Panel Board Cables of Street Lighting Network-[Road 09] | 2027-05-31 → 2027-06-07 (+7d) | 2027-06-12 → 2027-06-19 (+7d) | -197.5d → -201.5d |
| ES | **Earthing System Works** | 2027-03-15 → 2027-03-22 (+7d) | 2027-06-14 → 2027-06-21 (+7d) |  |
| CO-R09-SL-ES-100 | Install Earthing System Works for Lighting Poles of Street Lighting Network-[Road 09] | 2027-03-15 → 2027-03-22 (+7d) | 2027-03-28 → 2027-04-04 (+7d) | -219.5d → -209.5d |
| CO-R09-SL-ES-110 | Install Earthing System Works for Lighting Panel Boards of Street Lighting Network-[Road 09] | 2027-05-31 → 2027-06-07 (+7d) | 2027-06-14 → 2027-06-21 (+7d) | -219.5d → -209.5d |
| 14 | **Medium Voltage Network** | 2027-03-08 → 2027-02-20 (-16d) | 2027-03-29 → 2027-03-14 (-15d) |  |
| TT | **Termination and Testing Works** | 2027-03-08 → 2027-02-20 (-16d) | 2027-03-29 → 2027-03-14 (-15d) |  |
| CO-R09-MV-TF-100 | Termination Works of Medium Voltage Network-[Road 09] | 2027-03-08 → 2027-02-20 (-16d) | 2027-03-29 → 2027-03-14 (-15d) | -159d → -130d |
| 1 | **Road Works** | 2027-06-28 → 2027-07-05 (+7d) | 2027-09-02 → 2027-09-09 (+7d) |  |
| 1 | **Bituminous Construction** | 2027-06-28 → 2027-07-05 (+7d) | 2027-07-29 → 2027-08-05 (+7d) |  |
| CO-R09-S1-RD-F-100 | Application of Prime Coat Layer for Road Works - S.W 01-[Road 09] | 2027-06-28 → 2027-07-05 (+7d) | 2027-07-12 → 2027-07-19 (+7d) | -219.5d → -203.5d |
| CO-R09-S1-RD-F-120 | Bituminous Base & Wearing Courses Layers for Road Works- S.W 01-[Road 09] | 2027-07-01 → 2027-07-08 (+7d) | 2027-07-15 → 2027-07-22 (+7d) | -219.5d → -203.5d |
| CO-R09-S2-RD-F-110 | Application of Prime Coat Layer for Road Works- S.W 02-[Road 09] | 2027-07-05 → 2027-07-12 (+7d) | 2027-07-26 → 2027-08-02 (+7d) | -218.5d → -209.5d |
| CO-R09-S2-RD-F-130 | Bituminous Base & Wearing Courses Layers for Road Works- S.W 02-[Road 09] | 2027-07-08 → 2027-07-15 (+7d) | 2027-07-29 → 2027-08-05 (+7d) | -218.5d → -209.5d |
| TS | **Traffic Signs Boards and Roads Marking** | 2027-07-15 → 2027-07-22 (+7d) | 2027-09-02 → 2027-09-09 (+7d) |  |
| CO-R09-S1-RD-F-140 | Application of Road Marking Works For Road Works- S.W 01-[Road 09] | 2027-07-15 → 2027-07-22 (+7d) | 2027-07-29 → 2027-08-05 (+7d) | -219.5d → -191.5d |
| CO-R09-S1-RD-F-150 | Installation Works of Traffic Signs Boards For Road Works- S.W 01-[Road 09] | 2027-07-29 → 2027-08-05 (+7d) | 2027-08-12 → 2027-08-19 (+7d) | -219.5d → -191.5d |
| CO-R09-S2-RD-F-160 | Application of Road Marking Works For Road Works- S.W 02-[Road 09] | 2027-07-29 → 2027-08-05 (+7d) | 2027-08-16 → 2027-08-23 (+7d) | -218.5d → -209.5d |
| CO-R09-S2-RD-F-170 | Installation Works of Traffic Signs Boards For Road Works- S.W 02-[Road 09] | 2027-08-16 → 2027-08-23 (+7d) | 2027-09-02 → 2027-09-09 (+7d) | -218.5d → -209.5d |
| 4 | **Road 10 Local 2 ( 2352 LM )** |  | 2027-06-20 → 2027-06-05 (-15d) |  |
| 10 | **Sewage Network** | 2027-02-16 → 2027-01-09 (-38d) | 2027-03-23 → 2027-02-08 (-43d) |  |
| TF | **Testing and Finishes** | 2027-02-16 → 2027-01-09 (-38d) | 2027-03-23 → 2027-02-08 (-43d) |  |
| CO-R10-SW-TF-100 | Final Testing For Main Line of Sewage Network-[Road 10] | 2027-02-16 → 2027-01-09 (-38d) | 2027-03-02 → 2027-01-21 (-40d) | -172d → -139d |
| CO-R10-SW-TF-110 | Install Manhole Cover Works for External Finishes of Sewage Network-[Road 10] | 2027-03-03 → 2027-01-23 (-39d) | 2027-03-20 → 2027-02-04 (-44d) | -172d → -139d |
| CO-R10-SW-TF-130 | Main Manhole Internal Finishes (Benching + Insulation) of Sewage Network-[Road 10] | 2027-03-07 → 2027-01-26 (-40d) | 2027-03-23 → 2027-02-08 (-43d) | -172d → -139d |
| 11 | **Storm Drainage Network** |  | 2027-03-20 → 2027-02-04 (-44d) |  |
| TF | **Testing and Finishes** |  | 2027-03-20 → 2027-02-04 (-44d) |  |
| CO-R10-SD-TF-110 | Install Catch Basin Cover Works for External Finishes of Storm Drainage Network-[Road 10] |  | 2027-02-25 → 2027-01-17 (-39d) | -137d → -104d |
| CO-R10-SD-TF-120 | Main Manhole Internal Finishes (Benching + Insulation ) for Storm Drainage Network-[Road 10] |  | 2027-03-20 → 2027-02-04 (-44d) | -153d → -120d |
| CO-R10-SD-TF-130 | Catch Basin Internal Finishes (Benching + Insulation ) for Storm Drainage Network-[Road 10] |  | 2027-03-20 → 2027-02-04 (-44d) | -80d → -47d |
| 9 | **Potable Water Network** | 2027-02-10 → 2027-01-09 (-32d) | 2027-05-02 → 2027-04-17 (-15d) |  |
| TF | **Testing and Finishes** | 2027-02-10 → 2027-01-09 (-32d) | 2027-05-02 → 2027-04-17 (-15d) |  |
| CO-R10-PW-TF-100 | Final Finishes works and Covers for Valves and Valve Chambers of Potable Water Network-[Road 10] | 2027-02-10 → 2027-01-09 (-32d) | 2027-02-24 → 2027-01-21 (-34d) | -155d → -127d |
| CO-R10-PW-TF-120 | Fire Hydrant Finishies (S.Box + Safety + Marker Post ) of Potable Water Network-[Road 10] | 2027-02-25 → 2027-01-23 (-33d) | 2027-03-14 → 2027-02-04 (-38d) | -155d → -127d |

| ID | Task | Start | Finish | Total float |
| --- | --- | --- | --- | --- |
| CO-R10-PW-TF-110 | Testing Work for Main Line of Potable Water Network-[Road 10] | 2027-04-19 → 2027-04-04 (-15d) | 2027-05-02 → 2027-04-17 (-15d) | -209d → -184d |
| 13 | **Irrigation Network** | 2027-02-23 → 2027-01-14 (-40d) | 2027-03-06 → 2027-01-25 (-40d) |  |
| TF | **Testing and Finishes** | 2027-02-23 → 2027-01-14 (-40d) | 2027-03-06 → 2027-01-25 (-40d) |  |
| CO-R10-IR-TF-120 | Final Testing (pressure tests) of Irrigation Network-[Road 10] | 2027-02-23 → 2027-01-14 (-40d) | 2027-03-06 → 2027-01-25 (-40d) | -159d → -126d |
| 12 | **Street Lighting Network** | 2027-01-17 → 2026-12-30 (-18d) | 2027-03-30 → 2027-03-13 (-17d) |  |
| TR | **Termination and Testing Works** | 2027-01-17 → 2026-12-30 (-18d) | 2027-03-30 → 2027-03-13 (-17d) |  |
| CO-R10-SL-TF-140 | Termination Works For Lighting Poles Cables of Street Lighting Network-[Road 10] | 2027-01-17 → 2026-12-30 (-18d) | 2027-01-30 → 2027-01-12 (-18d) | -200d → -185d |
| CO-R10-SL-TF-150 | Termination Works For Panel Board Cables of Street Lighting Network-[Road 10] | 2027-03-15 → 2027-02-21 (-22d) | 2027-03-28 → 2027-03-07 (-21d) | -200d → -185d |
| CO-R10-SL-TF-380 | Testing Works For Panel Board Cables of Street Lighting Network-[Road 10] | 2027-03-29 → 2027-03-08 (-21d) | 2027-03-30 → 2027-03-13 (-17d) | -180d → -165d |
| ES | **Earthing System Works** | 2027-01-31 → 2027-01-13 (-18d) | 2027-03-03 → 2027-02-13 (-18d) |  |
| CO-R10-SL-ES-140 | Install Earthing System Works for Lighting Poles of Street Lighting Network-[Road 10] | 2027-01-31 → 2027-01-13 (-18d) | 2027-02-13 → 2027-01-26 (-18d) | -200d → -185d |
| CO-R10-SL-ES-150 | Install Earthing System Works for Lighting Panel Boards of Street Lighting Network-[Road 10] | 2027-02-17 → 2027-01-31 (-17d) | 2027-03-03 → 2027-02-13 (-18d) | -200d → -185d |
| 14 | **Medium Voltage Network** | 2026-11-10 → 2026-11-17 (+7d) | 2026-11-17 → 2026-11-24 (+7d) |  |
| TT | **Termination and Testing Works** | 2026-11-10 → 2026-11-17 (+7d) | 2026-11-17 → 2026-11-24 (+7d) |  |
| CO-R10-MV-TF-140 | Termination Works of Medium Voltage Network-[Road 10] | 2026-11-10 → 2026-11-17 (+7d) | 2026-11-17 → 2026-11-24 (+7d) | -52d → -58d |
| 1 | **Road Works** | 2027-05-20 → 2027-04-29 (-21d) | 2027-06-20 → 2027-06-05 (-15d) |  |
| 1 | **Bituminous Construction** | 2027-05-20 → 2027-04-29 (-21d) | 2027-06-06 → 2027-05-22 (-15d) |  |
| CO-R10-S03-RD-F-110 | Application of Prime Coat Layer for Road Works- S.W 05-[Road 10] | 2027-05-20 → 2027-04-29 (-21d) | 2027-05-31 → 2027-05-10 (-21d) | -190d → -177d |
| CO-R10-S04-RD-F-140 | Application of Prime Coat Layer for Road Works- S.W 06-[Road 10] | 2027-05-23 → 2027-05-02 (-21d) | 2027-06-02 → 2027-05-12 (-21d) | -190d → -177d |
| CO-R10-S03-RD-F-120 | Bituminous Base & Wearing Courses Layers for Road Works- S.W 05-[Road 10] | 2027-05-24 → 2027-05-03 (-21d) | 2027-06-03 → 2027-05-13 (-21d) | -190d → -177d |
| CO-R10-S04-RD-F-150 | Bituminous Base & Wearing Courses Layers for Road Works- S.W 06-[Road 10] | 2027-05-26 → 2027-05-05 (-21d) | 2027-06-06 → 2027-05-22 (-15d) | -190d → -177d |
| TS | **Traffic Signs Boards and Roads Marking** | 2027-06-05 → 2027-05-20 (-16d) | 2027-06-20 → 2027-06-05 (-15d) |  |
| CO-R10-S03-RD-F-100 | Installation Works of Traffic Signs Boards For Road Works- S.W 05-[Road 10] | 2027-06-05 → 2027-05-20 (-16d) | 2027-06-17 → 2027-06-02 (-15d) | -190d → -177d |
| CO-R10-S03-RD-F-160 | Application of Road Marking Works For Road Works- S.W 05-[Road 10] | 2027-06-05 → 2027-05-20 (-16d) | 2027-06-17 → 2027-06-02 (-15d) | -190d → -177d |
| CO-R10-S04-RD-F-170 | Application of Road Marking Works For Road Works- S.W 06-[Road 10] | 2027-06-07 → 2027-05-23 (-15d) | 2027-06-20 → 2027-06-05 (-15d) | -190d → -177d |
| CO-R10-S04-RD-F-130 | Installation Works of Traffic Signs Boards For Road Works- S.W 06-[Road 10] | 2027-06-09 → 2027-05-25 (-15d) | 2027-06-20 → 2027-06-05 (-15d) | -189d → -176d |
| 5 | **Road 11 Local 1 ( 670 LM )** |  | 2027-07-01 → 2027-06-16 (-15d) |  |
| 10 | **Sewage Network** |  | 2027-04-06 → 2027-02-23 (-42d) |  |
| TF | **Testing and Finishes** |  | 2027-04-06 → 2027-02-23 (-42d) |  |
| CO-R11-SW-TF-110 | Install Manhole Cover Works for External Finishes of Sewage Network-[Road 11] | 2027-03-21 → 2027-02-06 (-43d) | 2027-04-03 → 2027-02-18 (-44d) | -172d → -139d |
| CO-R11-SW-TF-130 | Main Manhole Internal Finishes (Benching + Insulation) of Sewage Network-[Road 11] | 2027-03-24 → 2027-02-09 (-43d) | 2027-04-06 → 2027-02-23 (-42d) | -172d → -139d |
| 11 | **Storm Drainage Network** |  | 2027-04-03 → 2027-02-18 (-44d) |  |
| TF | **Testing and Finishes** |  | 2027-04-03 → 2027-02-18 (-44d) |  |
| CO-R11-SD-TF-130 | Catch Basin Internal Finishes (Benching + Insulation ) for Storm Drainage Network-[Road 11] |  | 2027-04-03 → 2027-02-18 (-44d) | -92d → -59d |
| CO-R11-SD-TF-120 | Main Manhole Internal Finishes (Benching + Insulation ) for Storm Drainage Network-[Road 11] |  | 2027-04-03 → 2027-02-18 (-44d) | -92d → -59d |
| CO-R11-SD-TF-110 | Install Catch Basin Cover Works for External Finishes of Storm Drainage Network-[Road 11] |  | 2027-02-25 → 2027-01-17 (-39d) | -67d → -34d |
| 9 | **Potable Water Network** | 2027-02-25 → 2027-01-23 (-33d) | 2027-05-22 → 2027-05-01 (-21d) |  |
| TF | **Testing and Finishes** | 2027-02-25 → 2027-01-23 (-33d) | 2027-05-22 → 2027-05-01 (-21d) |  |
| CO-R11-PW-TF-100 | Final Finishes works and Covers for Valves and Valve Chambers of Potable Water Network-[Road 11] | 2027-02-25 → 2027-01-23 (-33d) | 2027-03-14 → 2027-02-04 (-38d) | -155d → -127d |
| CO-R11-PW-TF-120 | Fire Hydrant Finishies (S.Box + Safety + Marker Post ) of Potable Water Network-[Road 11] | 2027-03-15 → 2027-02-06 (-37d) | 2027-03-28 → 2027-02-18 (-38d) | -155d → -127d |
| CO-R11-PW-TF-110 | Testing Work for Main Line of Potable Water Network-[Road 11] | 2027-05-03 → 2027-04-18 (-15d) | 2027-05-22 → 2027-05-01 (-21d) | -209d → -184d |
| 13 | **Irrigation Network** | 2027-03-07 → 2027-01-26 (-40d) | 2027-03-21 → 2027-02-06 (-43d) |  |
| TF | **Testing and Finishes** | 2027-03-07 → 2027-01-26 (-40d) | 2027-03-21 → 2027-02-06 (-43d) |  |
| CO-R11-IR-TF-130 | Final Testing (pressure tests) of Irrigation Network-[Road 11] | 2027-03-07 → 2027-01-26 (-40d) | 2027-03-21 → 2027-02-06 (-43d) | -159d → -126d |
| 12 | **Street Lighting Network** | 2027-02-13 → 2027-02-07 (-6d) | 2027-04-15 → 2027-03-27 (-19d) |  |
| TR | **Termination and Testing Works** | 2027-02-13 → 2027-02-07 (-6d) | 2027-04-15 → 2027-03-27 (-19d) |  |
| CO-R11-SL-TF-160 | Termination Works For Lighting Poles Cables of Street Lighting Network-[Road 11] | 2027-02-13 → 2027-02-07 (-6d) | 2027-02-27 → 2027-02-20 (-7d) | -162d → -157d |
| CO-R11-SL-TF-170 | Termination Works For Panel Board Cables of Street Lighting Network-[Road 11] | 2027-03-31 → 2027-03-08 (-23d) | 2027-04-13 → 2027-03-24 (-20d) | -202d → -185d |
| CO-R11-SL-TF-380 | Testing Works For Panel Board Cables of Street Lighting Network-[Road 11] | 2027-04-14 → 2027-03-25 (-20d) | 2027-04-15 → 2027-03-27 (-19d) | -192d → -175d |
| 14 | **Medium Voltage Network** | 2026-11-18 → 2026-11-25 (+7d) | 2026-11-25 → 2026-12-02 (+7d) |  |
| TT | **Termination and Testing Works** | 2026-11-18 → 2026-11-25 (+7d) | 2026-11-25 → 2026-12-02 (+7d) |  |
| CO-R11-MV-TF-160 | Termination Works of Medium Voltage Network-[Road 11] | 2026-11-18 → 2026-11-25 (+7d) | 2026-11-25 → 2026-12-02 (+7d) | -52d → -58d |
| 1 | **Road Works** |  | 2027-07-01 → 2027-06-16 (-15d) |  |
| 1 | **Bituminous Construction** |  | 2027-06-20 → 2027-06-05 (-15d) |  |
| CO-R11-S05-RD-F-120 | Bituminous Base & Wearing Courses Layers for Road Works- S.W 07-[Road 11] | 2027-06-05 → 2027-05-20 (-16d) | 2027-06-17 → 2027-06-02 (-15d) | -190d → -177d |
| CO-R11-S06-RD-F-150 | Bituminous Base & Wearing Courses Layers for Road Works- S.W 08-[Road 11] | 2027-06-07 → 2027-05-23 (-15d) | 2027-06-20 → 2027-06-05 (-15d) | -190d → -177d |
| TS | **Traffic Signs Boards and Roads Marking** | 2027-06-19 → 2027-06-03 (-16d) | 2027-07-01 → 2027-06-16 (-15d) |  |
| CO-R11-S05-RD-F-100 | Installation Works of Traffic Signs Boards For Road Works- S.W 07-[Road 11] | 2027-06-19 → 2027-06-03 (-16d) | 2027-06-29 → 2027-06-14 (-15d) | -190d → -177d |
| CO-R11-S05-RD-F-160 | Application of Road Marking Works For Road Works- S.W 07-[Road 11] | 2027-06-19 → 2027-06-03 (-16d) | 2027-06-29 → 2027-06-14 (-15d) | -190d → -177d |
| CO-R11-S06-RD-F-130 | Installation Works of Traffic Signs Boards For Road Works- S.W 08-[Road 11] | 2027-06-21 → 2027-06-06 (-15d) | 2027-07-01 → 2027-06-16 (-15d) | -189d → -176d |
| CO-R11-S06-RD-F-170 | Application of Road Marking Works For Road Works- S.W 08-[Road 11] | 2027-06-21 → 2027-06-06 (-15d) | 2027-07-01 → 2027-06-16 (-15d) | -190d → -177d |
| 6 | **Road 14 Local 1 ( 584 LM )** |  | 2027-07-18 → 2027-07-03 (-15d) |  |
| 10 | **Sewage Network** |  | 2027-04-20 → 2027-03-13 (-38d) |  |
| TF | **Testing and Finishes** |  | 2027-04-20 → 2027-03-13 (-38d) |  |
| CO-R14-SW-TF-110 | Install Manhole Cover Works for External Finishes of Sewage Network-[Road 14] | 2027-04-04 → 2027-02-20 (-43d) | 2027-04-17 → 2027-03-06 (-42d) | -172d → -139d |
| CO-R14-SW-TF-130 | Main Manhole Internal Finishes (Benching + Insulation) of Sewage Network-[Road 14] | 2027-04-07 → 2027-02-24 (-42d) | 2027-04-20 → 2027-03-13 (-38d) | -172d → -139d |
| 9 | **Potable Water Network** | 2027-03-15 → 2027-02-06 (-37d) | 2027-06-05 → 2027-05-20 (-16d) |  |
| TF | **Testing and Finishes** | 2027-03-15 → 2027-02-06 (-37d) | 2027-06-05 → 2027-05-20 (-16d) |  |
| CO-R14-PW-TF-100 | Final Finishes works and Covers for Valves and Valve Chambers of Potable Water Network-[Road 14] | 2027-03-15 → 2027-02-06 (-37d) | 2027-03-28 → 2027-02-18 (-38d) | -155d → -127d |
| CO-R14-PW-TF-120 | Fire Hydrant Finishies (S.Box + Safety + Marker Post ) of Potable Water Network-[Road 14] | 2027-03-29 → 2027-02-20 (-37d) | 2027-04-11 → 2027-03-06 (-36d) | -155d → -127d |

| ID | Task | Start | Finish | Total float |
| --- | --- | --- | --- | --- |
| CO-R14-PW-TF-110 | Testing Work for Main Line of Potable Water Network-[Road 14] | 2027-05-23 → 2027-05-02 (-21d) | 2027-06-05 → 2027-05-20 (-16d) | -209d → -184d |
| 13 | **Irrigation Network** | 2027-03-22 → 2027-02-07 (-43d) | 2027-04-01 → 2027-02-17 (-43d) |  |
| TF | **Testing and Finishes** | 2027-03-22 → 2027-02-07 (-43d) | 2027-04-01 → 2027-02-17 (-43d) |  |
| CO-R11-IR-TF-140 | Final Testing (pressure tests) of Irrigation Network-[Road 14] | 2027-03-22 → 2027-02-07 (-43d) | 2027-04-01 → 2027-02-17 (-43d) | -159d → -126d |
| 12 | **Street Lighting Network** | 2027-02-28 → 2027-02-21 (-7d) | 2027-05-06 → 2027-04-10 (-26d) |  |
| TR | **Termination and Testing Works** | 2027-02-28 → 2027-02-21 (-7d) | 2027-05-06 → 2027-04-10 (-26d) |  |
| CO-R11-SL-TF-180 | Termination Works For Lighting Poles Cables of Street Lighting Network-[Road 14] | 2027-02-28 → 2027-02-21 (-7d) | 2027-03-16 → 2027-03-07 (-9d) | -162d → -157d |
| CO-R11-SL-TF-190 | Termination Works For Panel Board Cables of Street Lighting Network-[Road 14] | 2027-04-21 → 2027-03-25 (-27d) | 2027-05-04 → 2027-04-07 (-27d) | -208d → -185d |
| CO-R14-SL-TF-380 | Testing Works For Panel Board Cables of Street Lighting Network-[Road 14] | 2027-05-05 → 2027-04-08 (-27d) | 2027-05-06 → 2027-04-10 (-26d) | -208d → -185d |
| 14 | **Medium Voltage Network** | 2026-11-26 → 2026-12-03 (+7d) | 2026-12-03 → 2026-12-10 (+7d) |  |
| TT | **Termination and Testing Works** | 2026-11-26 → 2026-12-03 (+7d) | 2026-12-03 → 2026-12-10 (+7d) |  |
| CO-R11-MV-TF-180 | Termination Works of Medium Voltage Network-[Road 14] | 2026-11-26 → 2026-12-03 (+7d) | 2026-12-03 → 2026-12-10 (+7d) | -52d → -58d |
| 1 | **Road Works** | 2027-06-20 → 2027-06-05 (-15d) | 2027-07-18 → 2027-07-03 (-15d) |  |
| 1 | **Bituminous Construction** | 2027-06-20 → 2027-06-05 (-15d) | 2027-07-06 → 2027-06-21 (-15d) |  |
| CO-R11-S07-RD-F-110 | Application of Prime Coat Layer for Road Works- S.W 09-[Road 14] | 2027-06-20 → 2027-06-05 (-15d) | 2027-07-03 → 2027-06-17 (-16d) | -194d → -181d |
| CO-R11-S08-RD-F-140 | Application of Prime Coat Layer for Road Works- S.W 10-[Road 14] | 2027-06-20 → 2027-06-05 (-15d) | 2027-06-30 → 2027-06-15 (-15d) | -192d → -179d |
| CO-R11-S07-RD-F-120 | Bituminous Base & Wearing Courses Layers for Road Works- S.W 09-[Road 14] | 2027-06-26 → 2027-06-10 (-16d) | 2027-07-06 → 2027-06-21 (-15d) | -194d → -181d |
| CO-R11-S08-RD-F-150 | Bituminous Base & Wearing Courses Layers for Road Works- S.W 10-[Road 14] | 2027-06-26 → 2027-06-10 (-16d) | 2027-07-06 → 2027-06-21 (-15d) | -194d → -181d |
| TS | **Traffic Signs Boards and Roads Marking** | 2027-07-05 → 2027-06-20 (-15d) | 2027-07-18 → 2027-07-03 (-15d) |  |
| CO-R11-S07-RD-F-100 | Installation Works of Traffic Signs Boards For Road Works- S.W 09-[Road 14] | 2027-07-05 → 2027-06-20 (-15d) | 2027-07-18 → 2027-07-03 (-15d) | -194d → -181d |
| CO-R11-S07-RD-F-160 | Application of Road Marking Works For Road Works- S.W 09-[Road 14] | 2027-07-07 → 2027-06-22 (-15d) | 2027-07-18 → 2027-07-03 (-15d) | -194d → -181d |
| CO-R11-S08-RD-F-130 | Installation Works of Traffic Signs Boards For Road Works- S.W 10-[Road 14] | 2027-07-07 → 2027-06-22 (-15d) | 2027-07-18 → 2027-07-03 (-15d) | -193d → -180d |
| CO-R11-S08-RD-F-170 | Application of Road Marking Works For Road Works- S.W 10-[Road 14] | 2027-07-07 → 2027-06-22 (-15d) | 2027-07-18 → 2027-07-03 (-15d) | -194d → -181d |
| 7 | **Road 15 Local 1 ( 556 LM )** |  | 2027-08-01 → 2027-07-17 (-15d) |  |
| 10 | **Sewage Network** |  | 2027-05-04 → 2027-03-27 (-38d) |  |
| TF | **Testing and Finishes** |  | 2027-05-04 → 2027-03-27 (-38d) |  |
| CO-R15-SW-TF-110 | Install Manhole Cover Works for External Finishes of Sewage Network-[Road 15] | 2027-04-18 → 2027-03-07 (-42d) | 2027-05-01 → 2027-03-23 (-39d) | -172d → -139d |
| CO-R15-SW-TF-130 | Main Manhole Internal Finishes (Benching + Insulation) of Sewage Network-[Road 15] | 2027-04-21 → 2027-03-14 (-38d) | 2027-05-04 → 2027-03-27 (-38d) | -172d → -139d |
| 11 | **Storm Drainage Network** |  | 2027-05-25 → 2027-04-11 (-44d) |  |
| TF | **Testing and Finishes** |  | 2027-05-25 → 2027-04-11 (-44d) |  |
| CO-R15-SD-TF-110 | Install Catch Basin Cover Works for External Finishes of Storm Drainage Network-[Road 15] | 2026-11-10 → 2026-11-17 (+7d) | 2026-11-23 → 2026-11-30 (+7d) | -28d → -34d |
| CO-R15-SD-TF-130 | Catch Basin Internal Finishes (Benching + Insulation ) for Storm Drainage Network-[Road 15] | 2027-05-02 → 2027-03-24 (-39d) | 2027-05-25 → 2027-04-11 (-44d) | -160d → -127d |
| 9 | **Potable Water Network** | 2027-03-29 → 2027-02-20 (-37d) | 2027-06-19 → 2027-06-03 (-16d) |  |
| TF | **Testing and Finishes** | 2027-03-29 → 2027-02-20 (-37d) | 2027-06-19 → 2027-06-03 (-16d) |  |
| CO-R15-PW-TF-100 | Final Finishes works and Covers for Valves and Valve Chambers of Potable Water Network-[Road 15] | 2027-03-29 → 2027-02-20 (-37d) | 2027-04-11 → 2027-03-06 (-36d) | -155d → -127d |
| CO-R15-PW-TF-120 | Fire Hydrant Finishies (S.Box + Safety + Marker Post ) of Potable Water Network-[Road 15] | 2027-04-12 → 2027-03-07 (-36d) | 2027-04-25 → 2027-03-23 (-33d) | -155d → -127d |
| CO-R15-PW-TF-110 | Testing Work for Main Line of Potable Water Network-[Road 15] | 2027-06-06 → 2027-05-22 (-15d) | 2027-06-19 → 2027-06-03 (-16d) | -209d → -184d |
| 13 | **Irrigation Network** | 2027-04-03 → 2027-02-18 (-44d) | 2027-04-13 → 2027-03-02 (-42d) |  |
| TF | **Testing and Finishes** | 2027-04-03 → 2027-02-18 (-44d) | 2027-04-13 → 2027-03-02 (-42d) |  |
| CO-R15-IR-TF-150 | Final Testing (pressure tests) of Irrigation Network-[Road 15] | 2027-04-03 → 2027-02-18 (-44d) | 2027-04-13 → 2027-03-02 (-42d) | -159d → -126d |
| 12 | **Street Lighting Network** | 2027-03-17 → 2027-03-08 (-9d) | 2027-06-14 → 2027-05-12 (-33d) |  |
| TR | **Termination and Testing Works** | 2027-03-17 → 2027-03-08 (-9d) | 2027-06-14 → 2027-05-12 (-33d) |  |
| CO-R15-SL-TF-200 | Termination Works For Lighting Poles Cables of Street Lighting Network-[Road 15] | 2027-03-17 → 2027-03-08 (-9d) | 2027-03-30 → 2027-03-24 (-6d) | -162d → -157d |
| CO-R15-SL-TF-210 | Termination Works For Panel Board Cables of Street Lighting Network-[Road 15] | 2027-05-08 → 2027-04-11 (-27d) | 2027-05-26 → 2027-04-24 (-32d) | -208d → -185d |
| CO-R15-SL-TF-380 | Testing Works For Panel Board Cables of Street Lighting Network-[Road 15] | 2027-05-27 → 2027-04-25 (-32d) | 2027-06-14 → 2027-05-12 (-33d) | -202d → -179d |
| 14 | **Medium Voltage Network** | 2026-12-05 → 2026-12-12 (+7d) | 2026-12-12 → 2026-12-19 (+7d) |  |
| TT | **Termination and Testing Works** | 2026-12-05 → 2026-12-12 (+7d) | 2026-12-12 → 2026-12-19 (+7d) |  |
| CO-R15-MV-TF-200 | Termination Works of Medium Voltage Network-[Road 15] | 2026-12-05 → 2026-12-12 (+7d) | 2026-12-12 → 2026-12-19 (+7d) | -52d → -58d |
| 1 | **Road Works** |  | 2027-08-01 → 2027-07-17 (-15d) |  |
| TS | **Traffic Signs Boards and Roads Marking** | 2027-07-19 → 2027-07-04 (-15d) | 2027-08-01 → 2027-07-17 (-15d) |  |
| CO-R15-S09-RD-F-100 | Installation Works of Traffic Signs Boards For Road Works- S.W 11-[Road 15] | 2027-07-19 → 2027-07-04 (-15d) | 2027-07-29 → 2027-07-14 (-15d) | -194d → -181d |
| CO-R15-S09-RD-F-160 | Application of Road Marking Works For Road Works- S.W 11-[Road 15] | 2027-07-19 → 2027-07-04 (-15d) | 2027-07-29 → 2027-07-14 (-15d) | -194d → -181d |
| CO-R15-S10-RD-F-130 | Installation Works of Traffic Signs Boards For Road Works- S.W 12-[Road 15] | 2027-07-19 → 2027-07-04 (-15d) | 2027-08-01 → 2027-07-17 (-15d) | -193d → -180d |
| CO-R15-S10-RD-F-170 | Application of Road Marking Works For Road Works- S.W 12-[Road 15] | 2027-07-19 → 2027-07-04 (-15d) | 2027-07-29 → 2027-07-14 (-15d) | -194d → -181d |
| 8 | **Road 16 Local 1 ( 527 LM )** |  | 2027-08-12 → 2027-07-28 (-15d) |  |
| 10 | **Sewage Network** |  | 2027-05-24 → 2027-04-10 (-44d) |  |
| TF | **Testing and Finishes** |  | 2027-05-24 → 2027-04-10 (-44d) |  |
| CO-R16-SW-TF-110 | Install Manhole Cover Works for External Finishes of Sewage Network-[Road 16] | 2027-05-02 → 2027-03-24 (-39d) | 2027-05-20 → 2027-04-06 (-44d) | -172d → -139d |
| CO-R16-SW-TF-130 | Main Manhole Internal Finishes (Benching + Insulation) of Sewage Network-[Road 16] | 2027-05-05 → 2027-03-28 (-38d) | 2027-05-24 → 2027-04-10 (-44d) | -172d → -139d |
| 11 | **Storm Drainage Network** |  | 2027-06-13 → 2027-04-29 (-45d) |  |
| TF | **Testing and Finishes** |  | 2027-06-13 → 2027-04-29 (-45d) |  |
| CO-R16-SD-TF-110 | Install Catch Basin Cover Works for External Finishes of Storm Drainage Network-[Road 16] | 2026-11-24 → 2026-12-01 (+7d) | 2026-12-07 → 2026-12-14 (+7d) | -24d → -30d |
| CO-R16-SD-TF-100 | Testing Work for Pipes of Storm Drainage Network-[Road 16] | 2026-12-01 → 2027-01-02 (+32d) | 2026-12-19 → 2027-01-19 (+31d) | -34d → -61d |
| CO-R16-SD-TF-130 | Catch Basin Internal Finishes (Benching + Insulation ) for Storm Drainage Network-[Road 16] | 2027-05-26 → 2027-04-12 (-44d) | 2027-06-13 → 2027-04-29 (-45d) | -160d → -127d |
| 9 | **Potable Water Network** | 2027-04-12 → 2027-03-07 (-36d) | 2027-07-03 → 2027-06-17 (-16d) |  |
| TF | **Testing and Finishes** | 2027-04-12 → 2027-03-07 (-36d) | 2027-07-03 → 2027-06-17 (-16d) |  |
| CO-R16-PW-TF-100 | Final Finishes works and Covers for Valves and Valve Chambers of Potable Water Network-[Road 16] | 2027-04-12 → 2027-03-07 (-36d) | 2027-04-25 → 2027-03-23 (-33d) | -155d → -127d |
| CO-R16-PW-TF-120 | Fire Hydrant Finishies (S.Box + Safety + Marker Post ) of Potable Water Network-[Road 16] | 2027-04-26 → 2027-03-24 (-33d) | 2027-05-09 → 2027-04-06 (-33d) | -155d → -127d |
| CO-R16-PW-TF-110 | Testing Work for Main Line of Potable Water Network-[Road 16] | 2027-06-20 → 2027-06-05 (-15d) | 2027-07-03 → 2027-06-17 (-16d) | -209d → -184d |
| 13 | **Irrigation Network** | 2027-04-14 → 2027-03-03 (-42d) | 2027-04-25 → 2027-03-17 (-39d) |  |

| ID | Task | Start | Finish | Total float | Predecessors |
| --- | --- | --- | --- | --- | --- |
| TF | **Testing and Finishes** | 2027-04-14 → 2027-03-03 (-42d) | 2027-04-25 → 2027-03-17 (-39d) |  |  |
| CO-R16-IR-TF-160 | Final Testing (pressure tests) of Irrigation Network-[Road 16] | 2027-04-14 → 2027-03-03 (-42d) | 2027-04-25 → 2027-03-17 (-39d) | -159d → -126d |  |
| 12 | **Street Lighting Network** | 2027-03-31 → 2027-03-25 (-6d) | 2027-06-16 → 2027-05-20 (-27d) |  |  |
| TR | **Termination and Testing Works** | 2027-03-31 → 2027-03-25 (-6d) | 2027-06-16 → 2027-05-20 (-27d) |  |  |
| CO-R16-SL-TF-220 | Termination Works For Lighting Poles Cables of Street Lighting Network-[Road 16] | 2027-03-31 → 2027-03-25 (-6d) | 2027-04-13 → 2027-04-07 (-6d) | -162d → -157d |  |
| CO-R16-SL-TF-230 | Termination Works For Panel Board Cables of Street Lighting Network-[Road 16] | 2027-05-27 → 2027-04-25 (-32d) | 2027-06-09 → 2027-05-08 (-32d) | -208d → -185d |  |
| CO-R16-SL-TF-380 | Testing Works For Panel Board Cables of Street Lighting Network-[Road 16] | 2027-06-15 → 2027-05-13 (-33d) | 2027-06-16 → 2027-05-20 (-27d) | -202d → -179d |  |
| 14 | **Medium Voltage Network** | 2026-12-13 → 2026-12-20 (+7d) | 2026-12-20 → 2026-12-27 (+7d) |  |  |
| TT | **Termination and Testing Works** | 2026-12-13 → 2026-12-20 (+7d) | 2026-12-20 → 2026-12-27 (+7d) |  |  |
| CO-R16-MV-TF-220 | Termination Works of Medium Voltage Network-[Road 16] | 2026-12-13 → 2026-12-20 (+7d) | 2026-12-20 → 2026-12-27 (+7d) | -52d → -58d |  |
| 1 | **Road Works** |  | 2027-08-12 → 2027-07-28 (-15d) |  |  |
| TS | **Traffic Signs Boards and Roads Marking** | 2027-07-31 → 2027-07-15 (-16d) | 2027-08-12 → 2027-07-28 (-15d) |  |  |
| CO-R16-S11-RD-F-100 | Installation Works of Traffic Signs Boards For Road Works- S.W 13-[Road 16] | 2027-07-31 → 2027-07-15 (-16d) | 2027-08-10 → 2027-07-26 (-15d) | -194d → -181d |  |
| CO-R16-S11-RD-F-160 | Application of Road Marking Works For Road Works- S.W 13-[Road 16] | 2027-07-31 → 2027-07-15 (-16d) | 2027-08-10 → 2027-07-26 (-15d) | -194d → -181d |  |
| CO-R16-S12-RD-F-170 | Application of Road Marking Works For Road Works- S.W 14-[Road 16] | 2027-07-31 → 2027-07-15 (-16d) | 2027-08-10 → 2027-07-26 (-15d) | -194d → -181d |  |
| CO-R16-S12-RD-F-130 | Installation Works of Traffic Signs Boards For Road Works- S.W 14-[Road 16] | 2027-08-02 → 2027-07-18 (-15d) | 2027-08-12 → 2027-07-28 (-15d) | -193d → -180d |  |
| 9 | **Road 17 Local 1 ( 500 LM )** |  | 2027-08-22 → 2027-08-07 (-15d) |  |  |
| 10 | **Sewage Network** |  | 2027-06-07 → 2027-04-24 (-44d) |  |  |
| TF | **Testing and Finishes** |  | 2027-06-07 → 2027-04-24 (-44d) |  |  |
| CO-R17-SW-TF-110 | Install Manhole Cover Works for External Finishes of Sewage Network-[Road 17] | 2027-05-22 → 2027-04-07 (-45d) | 2027-06-03 → 2027-04-20 (-44d) | -172d → -139d |  |
| CO-R17-SW-TF-130 | Main Manhole Internal Finishes (Benching + Insulation) of Sewage Network-[Road 17] | 2027-05-25 → 2027-04-11 (-44d) | 2027-06-07 → 2027-04-24 (-44d) | -172d → -139d |  |
| 11 | **Storm Drainage Network** |  | 2027-06-27 → 2027-05-13 (-45d) |  |  |
| TF | **Testing and Finishes** |  | 2027-06-27 → 2027-05-13 (-45d) |  |  |
| CO-R17-SD-TF-110 | Install Catch Basin Cover Works for External Finishes of Storm Drainage Network-[Road 17] | 2026-12-08 → 2026-12-15 (+7d) | 2026-12-21 → 2026-12-28 (+7d) | -20d → -26d |  |
| CO-R17-SD-TF-100 | Testing Work for Pipes of Storm Drainage Network-[Road 17] | 2026-12-20 → 2027-01-20 (+31d) | 2027-01-06 → 2027-02-07 (+32d) | -34d → -61d |  |
| CO-R17-SD-TF-130 | Catch Basin Internal Finishes (Benching + Insulation ) for Storm Drainage Network-[Road 17] | 2027-06-14 → 2027-05-01 (-44d) | 2027-06-27 → 2027-05-13 (-45d) | -160d → -127d |  |
| 9 | **Potable Water Network** | 2027-04-26 → 2027-03-24 (-33d) | 2027-07-17 → 2027-07-01 (-16d) |  |  |
| TF | **Testing and Finishes** | 2027-04-26 → 2027-03-24 (-33d) | 2027-07-17 → 2027-07-01 (-16d) |  |  |
| CO-R17-PW-TF-100 | Final Finishes works and Covers for Valves and Valve Chambers of Potable Water Network-[Road 17] | 2027-04-26 → 2027-03-24 (-33d) | 2027-05-09 → 2027-04-06 (-33d) | -155d → -127d |  |
| CO-R17-PW-TF-120 | Fire Hydrant Finishies (S.Box + Safety + Marker Post ) of Potable Water Network-[Road 17] | 2027-05-10 → 2027-04-07 (-33d) | 2027-05-29 → 2027-04-20 (-39d) | -155d → -127d |  |
| CO-R17-PW-TF-110 | Testing Work for Main Line of Potable Water Network-[Road 17] | 2027-07-04 → 2027-06-19 (-15d) | 2027-07-17 → 2027-07-01 (-16d) | -209d → -184d |  |
| 13 | **Irrigation Network** | 2027-04-26 → 2027-03-18 (-39d) | 2027-05-06 → 2027-03-29 (-38d) |  |  |
| TF | **Testing and Finishes** | 2027-04-26 → 2027-03-18 (-39d) | 2027-05-06 → 2027-03-29 (-38d) |  |  |
| CO-R17-IR-TF-170 | Final Testing (pressure tests) of Irrigation Network-[Road 17] | 2027-04-26 → 2027-03-18 (-39d) | 2027-05-06 → 2027-03-29 (-38d) | -159d → -126d |  |
| 12 | **Street Lighting Network** | 2027-04-14 → 2027-04-08 (-6d) | 2027-06-26 → 2027-05-30 (-27d) |  |  |
| TR | **Termination and Testing Works** | 2027-04-14 → 2027-04-08 (-6d) | 2027-06-26 → 2027-05-30 (-27d) |  |  |
| CO-R17-SL-TF-240 | Termination Works For Lighting Poles Cables of Street Lighting Network-[Road 17] | 2027-04-14 → 2027-04-08 (-6d) | 2027-04-27 → 2027-04-21 (-6d) | -162d → -157d |  |
| CO-R17-SL-TF-250 | Termination Works For Panel Board Cables of Street Lighting Network-[Road 17] | 2027-06-10 → 2027-05-09 (-32d) | 2027-06-23 → 2027-05-27 (-27d) | -208d → -185d |  |
| CO-R17-SL-TF-380 | Testing Works For Panel Board Cables of Street Lighting Network-[Road 17] | 2027-06-24 → 2027-05-29 (-26d) | 2027-06-26 → 2027-05-30 (-27d) | -208d → -185d |  |
| 14 | **Medium Voltage Network** | 2026-12-21 → 2026-12-28 (+7d) | 2026-12-28 → 2027-01-04 (+7d) |  |  |
| TT | **Termination and Testing Works** | 2026-12-21 → 2026-12-28 (+7d) | 2026-12-28 → 2027-01-04 (+7d) |  |  |
| CO-R17-MV-TF-240 | Termination Works of Medium Voltage Network-[Road 17] | 2026-12-21 → 2026-12-28 (+7d) | 2026-12-28 → 2027-01-04 (+7d) | -52d → -58d |  |
| 1 | **Road Works** |  | 2027-08-22 → 2027-08-07 (-15d) |  |  |
| TS | **Traffic Signs Boards and Roads Marking** | 2027-08-11 → 2027-07-27 (-15d) | 2027-08-22 → 2027-08-07 (-15d) |  |  |
| CO-R17-S13-RD-F-100 | Installation Works of Traffic Signs Boards For Road Works- S.W 15-[Road 17] | 2027-08-11 → 2027-07-27 (-15d) | 2027-08-22 → 2027-08-07 (-15d) | -194d → -181d |  |
| CO-R17-S13-RD-F-160 | Application of Road Marking Works For Road Works- S.W 15-[Road 17] | 2027-08-11 → 2027-07-27 (-15d) | 2027-08-22 → 2027-08-07 (-15d) | -194d → -181d |  |
| CO-R17-S14-RD-F-170 | Application of Road Marking Works For Road Works- S.W 16-[Road 17] | 2027-08-11 → 2027-07-27 (-15d) | 2027-08-22 → 2027-08-07 (-15d) | -194d → -181d |  |
| CO-R17-S14-RD-F-130 | Installation Works of Traffic Signs Boards For Road Works- S.W 16-[Road 17] | 2027-08-15 → 2027-07-31 (-15d) | 2027-08-22 → 2027-08-07 (-15d) | -194d → -181d |  |
| 3 | **Road 18 Local 1 ( 479 LM )** |  | 2027-09-21 → 2027-09-09 (-12d) |  |  |
| 10 | **Sewage Network** |  | 2027-05-09 → 2027-04-10 (-29d) |  |  |
| TF | **Testing and Finishes** |  | 2027-05-09 → 2027-04-10 (-29d) |  |  |
| CO-R18-SW-TF-110 | Install Manhole Cover Works for External Finishes of Sewage Network-[Road 18] |  | 2027-05-05 → 2027-04-06 (-29d) | -149d → -124d | CO-R18-SW-TF-100, ENG-SH-SW-ML-A-110, ENG-SH-SW-ML-A-110 FF, CO-R09-SW-TF-110, ENG-MS-SW-ML-A-110, ENG-MS-SW-ML-A-110 FF, PRO-R18-SW-DL-170 → CO-R18-SW-TF-100, ENG-SH-SW-ML-A-110, ENG-SH-SW-ML-A-110 FF, CO-R09-SW-TF-110 FF, ENG-MS-SW-ML-A-110, ENG-MS-SW-ML-A-110 FF, PRO-R18-SW-DL-170 |
| CO-R18-SW-TF-130 | Main Manhole Internal Finishes (Benching + Insulation) of Sewage Network-[Road 18] |  | 2027-05-09 → 2027-04-10 (-29d) | -152d → -127d | CO-R09-SW-TF-120, CO-R18-SW-TF-110 SS, CO-R18-SW-TF-110 FF, PRO-R18-SW-DL-190 → CO-R09-SW-TF-120 FF, CO-R18-SW-TF-110 SS, CO-R18-SW-TF-110 FF, PRO-R18-SW-DL-190 |
| 11 | **Storm Drainage Network** |  | 2027-06-03 → 2027-04-25 (-39d) |  |  |
| TF | **Testing and Finishes** |  | 2027-06-03 → 2027-04-25 (-39d) |  |  |
| CO-R18-SD-TF-100 | Testing Work for Pipes of Storm Drainage Network-[Road 18] |  | 2027-04-26 → 2027-03-23 (-34d) | -128d → -83d | ENG-SH-SD-ML-A-110, CO-R09-SD-TF-100, ENG-MS-SD-ML-A-110, CO-R17.S13-RD-P-100 SS+3d, CO-R17.S13-RD-P-100 FF+3d → ENG-SH-SD-ML-A-110, CO-R09-SD-TF-100 FF, ENG-MS-SD-ML-A-110, CO-R17.S13-RD-P-100 SS+3d, CO-R17.S13-RD-P-100 FF+3d |
| CO-R18-SD-TF-110 | Install Catch Basin Cover Works for External Finishes of Storm Drainage Network-[Road 18] |  | 2027-04-17 → 2027-03-14 (-34d) | -120d → -78d | CO-R09-SD-TF-110, CO-R18.S15-RD-P-160 SS, CO-R18.S15-RD-P-160 FF, PRO-R18-SD-DL-210 → CO-R09-SD-TF-110 FF, CO-R18.S15-RD-P-160 SS, CO-R18.S15-RD-P-160 FF, PRO-R18-SD-DL-210 |
| CO-R18-SD-TF-130 | Catch Basin Internal Finishes (Benching + Insulation ) for Storm Drainage Network-[Road 18] |  | 2027-06-03 → 2027-04-25 (-39d) | -140d → -111d | CO-R18-SD-TF-110 SS+3d, CO-R18-SD-TF-110 FF+3d, CO-R18-SD-TF-100 SS, CO-R18-SD-TF-100, CO-R18-SD-TF-100 FF, CO-R18-SD-TF-110, CO-R18-SW-TF-110 SS, CO-R18-SW-TF-110 FF, ENG-SH-RD-A-100, ENG-SH-RD-A-100 FF, CO-R09-SD-TF-130, ENG-MS-RD-A-10, ENG-MS-RD-A-10 FF, PRO-R18-SD-DL-230 → CO-R18-SD-TF-110 SS+3d, CO-R18-SD-TF-110 FF+3d, CO-R18-SD-TF-100 SS, CO-R18-SD-TF-100 FF, CO-R18-SW-TF-110 SS, CO-R18-SW-TF-110 FF, ENG-SH-RD-A-100, ENG-SH-RD-A-100 FF, CO-R09-SD-TF-130 FF, ENG-MS-RD-A-10, ENG-MS-RD-A-10 FF, PRO-R18-SD-DL-230 |
| 9 | **Potable Water Network** |  | 2027-07-31 → 2027-07-01 (-30d) |  |  |
| TF | **Testing and Finishes** |  | 2027-07-31 → 2027-07-01 (-30d) |  |  |
| CO-R18-PW-TF-100 | Final Finishes works and Covers for Valves and Valve Chambers of Potable Water Network-[Road 18] |  | 2027-05-22 → 2027-04-17 (-35d) | -161d → -124d | CO-R09-PW-TF-100, CO-R18.S15-RD-P-160 SS, CO-R18.S15-RD-P-160 FF → CO-R09-PW-TF-100 FF, CO-R18.S15-RD-P-160 SS, CO-R18.S15-RD-P-160 FF |
| CO-R18-PW-TF-110 | Testing Work for Main Line of Potable Water Network-[Road 18] |  | 2027-07-31 → 2027-07-01 (-30d) | -209d → -184d | CO-R09-PW-TF-110, CO-R17-PW-TF-110, PRO-R18-PW-DL-170 → CO-R09-PW-TF-110 FF, CO-R17-PW-TF-110 FF, PRO-R18-PW-DL-170 FF, PRO-R17-SD-DL-140 SS |
| CO-R18-PW-TF-120 | Fire Hydrant Finishies (S.Box + Safety + Marker Post ) of Potable Water Network-[Road 18] |  | 2027-06-05 → 2027-05-01 (-35d) | -161d → -136d | CO-R18-PW-TF-100, CO-R09-PW-TF-120 → CO-R18-PW-TF-100 FF, CO-R09-PW-TF-120 FF, CO-R18-PW-TF-100 SS |
| 13 | **Irrigation Network** |  | 2027-05-11 → 2027-04-07 (-34d) |  |  |
| TF | **Testing and Finishes** |  | 2027-05-11 → 2027-04-07 (-34d) |  |  |
| CO-R18-IR-TF-110 | Final Testing (pressure tests) of Irrigation Network-[Road 18] |  | 2027-05-11 → 2027-04-07 (-34d) | -163d → -134d | CO-R09-IR-TF-100, CO-R18.S15-RD-P-160 SS, CO-R18.S15-RD-P-160 FF → CO-R09-IR-TF-100 FF, CO-R18.S15-RD-P-160 SS, CO-R18.S15-RD-P-160 FF |
| 12 | **Street Lighting Network** |  | 2027-06-16 → 2027-06-19 (+3d) |  |  |
| TR | **Termination and Testing Works** |  | 2027-06-16 → 2027-06-19 (+3d) |  |  |
| CO-R18-SL-TF-120 | Termination Works For Lighting Poles Cables of Street Lighting Network-[Road 18] |  | 2027-03-29 → 2027-03-21 (-8d) | -136.25d → -130d | CO-R09-SL-TF-100, PRO-R18-SL-DL-210, PRO-R18-SL-DL-250, CO-R18.S16-SL-130 → CO-R09-SL-TF-100 FF, PRO-R18-SL-DL-210 FF, PRO-R18-SL-DL-250 FF, CO-R18.S16-SL-130 FF, PRO-R10-SL-DL-130 SS |
| CO-R18-SL-TF-130 | Termination Works For Panel Board Cables of Street Lighting Network-[Road 18] |  | 2027-06-14 → 2027-06-07 (-7d) | -199.5d → -191.5d | CO-R09-SL-TF-110, CO-R09.S02-SL-220, CO-R18.S16-SL-160, CO-R18.S16-SL-190, CO-R18.S16-SL-220 → CO-R09-SL-TF-110 FF, CO-R09.S02-SL-220 FF, CO-R18.S16-SL-160, CO-R18.S16-SL-190 FF, CO-R18.S16-SL-220 FF |

| ID | Task | Start | Finish | Total float | Predecessors |
| --- | --- | --- | --- | --- | --- |
| CO-R18-SL-TF-380 | Testing Works For Panel Board Cables of Street Lighting Network-[Road 18] |  | 2027-06-16 → 2027-06-19 (+3d) | -199.5d → -201.5d | CO-R18-SL-TF-130, CO-R09-SL-TF-380 → CO-R18-SL-TF-130 FF, CO-R09-SL-TF-380 FF, CO-R18-SL-TF-130 SS |
| 14 | **Medium Voltage Network** |  | 2027-04-17 → 2027-03-14 (-34d) |  |  |
| TT | **Termination and Testing Works** |  | 2027-04-17 → 2027-03-14 (-34d) |  |  |
| CO-R18-MV-TF-120 | Termination Works of Medium Voltage Network-[Road 18] |  | 2027-04-17 → 2027-03-14 (-34d) | -142d → -113d | CO-R09-MV-TF-100, CO-R18.S15-MV-ML-360, PRO-R18-MV-DL-130 → CO-R09-MV-TF-100 FF, CO-R18.S15-MV-ML-360, PRO-R18-MV-DL-130 |
| 1 | **Road Works** |  | 2027-09-21 → 2027-09-09 (-12d) |  |  |
| TS | **Traffic Signs Boards and Roads Marking** |  | 2027-09-21 → 2027-09-09 (-12d) |  |  |
| CO-R18-S15-RD-F-120 | Application of Road Marking Works For Road Works- S.W 03-[Road 18] |  | 2027-08-26 → 2027-08-19 (-7d) | -219.5d → -191.5d | CO-R09-S1-RD-F-140, CO-R18-S15-RD-F-110, CO-R09-S1-RD-F-150, PRO-R18-RD-DL-210 → CO-R09-S1-RD-F-140 FF, CO-R18-S15-RD-F-110, CO-R09-S1-RD-F-150 FF, PRO-R18-RD-DL-210 FF |
| CO-R18-S15-RD-F-130 | Installation Works of Traffic Signs Boards For Road Works- S.W 03-[Road 18] |  | 2027-09-09 → 2027-08-19 (-21d) | -219.5d → -191.5d | CO-R09-S1-RD-F-150, CO-R18-S15-RD-F-120, PRO-R18-RD-DL-200 FF+3d → CO-R09-S1-RD-F-150 FF, CO-R18-S15-RD-F-120 FF, PRO-R18-RD-DL-200 FF+3d, CO-R18-S15-RD-F-120 SS |
| CO-R18-S16-RD-F-140 | Application of Road Marking Works For Road Works- S.W 04-[Road 18] |  | 2027-09-20 → 2027-09-09 (-11d) | -218.5d → -209.5d | CO-R09-S2-RD-F-160, CO-R18-S16-RD-F-170, CO-R09-S1-RD-F-150, CO-R09-S2-RD-F-170, PRO-R18-RD-DL-210 → CO-R09-S2-RD-F-160 FF, CO-R18-S16-RD-F-170, CO-R09-S1-RD-F-150 FF, CO-R09-S2-RD-F-170 FF, PRO-R18-RD-DL-210 FF |
| CO-R18-S16-RD-F-160 | Installation Works of Traffic Signs Boards For Road Works- S.W 04-[Road 18] |  | 2027-09-21 → 2027-09-09 (-12d) | -219.5d → -209.5d | CO-R18-S16-RD-F-140 FF, CO-R09-S2-RD-F-170, CO-R18-S15-RD-F-130, PRO-R18-RD-DL-200 FF+3d → CO-R18-S16-RD-F-140 FF, CO-R09-S2-RD-F-170 FF, CO-R18-S15-RD-F-130 FF, PRO-R18-RD-DL-200 FF+3d, CO-R18-S16-RD-F-140 SS, CO-R18-S15-RD-F-130 SS |
| GEN | **Independent Works** |  | 2027-09-21 → 2027-09-09 (-12d) |  |  |
| CON | **Tie In To Existing Networks** | 2027-04-05 → 2027-03-15 (-21d) | 2027-09-21 → 2027-09-09 (-12d) |  |  |
| 1 | **Phase 2 Block "J"** | 2027-04-05 → 2027-03-15 (-21d) | 2027-09-21 → 2027-09-09 (-12d) |  |  |
| 2 | **Road 09 Local 2 ( 2278 LM )** | 2027-04-18 → 2027-03-15 (-34d) | 2027-08-14 → 2027-07-15 (-30d) |  |  |
| 15 | **Storm Drainage Network** | 2027-06-28 → 2027-05-20 (-39d) | 2027-07-05 → 2027-05-27 (-39d) |  |  |
| TIE-SD-R09 | TIE IN Existing Network For Storm Drainage Network | 2027-06-28 → 2027-05-20 (-39d) | 2027-07-05 → 2027-05-27 (-39d) | -150d → -117d |  |
| 16 | **Sewage Network** | 2027-06-08 → 2027-04-25 (-44d) | 2027-06-21 → 2027-05-08 (-44d) |  |  |
| TIE-SW-R09 | TIE IN Existing Network For Sewage Network | 2027-06-08 → 2027-04-25 (-44d) | 2027-06-21 → 2027-05-08 (-44d) | -138d → -105d |  |
| 17 | **Potable Water Network** | 2027-08-01 → 2027-07-03 (-29d) | 2027-08-14 → 2027-07-15 (-30d) |  |  |
| TIE-PW-R09 | TIE IN Existing Network For Potable Water Network | 2027-08-01 → 2027-07-03 (-29d) | 2027-08-14 → 2027-07-15 (-30d) | -184d → -159d |  |
| 1 | **Irrigation Network** | 2027-05-12 → 2027-04-08 (-34d) | 2027-05-31 → 2027-04-21 (-40d) |  |  |
| TIE-IR-R09 | TIE IN Existing Network For Irrigation Network | 2027-05-12 → 2027-04-08 (-34d) | 2027-05-31 → 2027-04-21 (-40d) | -120d → -91d |  |
| 18 | **Meduim Voltage Network** | 2027-04-18 → 2027-03-15 (-34d) | 2027-05-08 → 2027-04-04 (-34d) |  |  |
| TIE-R09-MV | TIE IN Existing Network For Medium Voltage Network | 2027-04-18 → 2027-03-15 (-34d) | 2027-05-08 → 2027-04-04 (-34d) | -105d → -85d |  |
| 2 | **Street Lighting Network** | 2027-06-27 → 2027-06-21 (-6d) | 2027-07-17 → 2027-07-12 (-5d) |  |  |
| TIE-R09-SL | TIE IN Existing Network For Street Lighting Network | 2027-06-27 → 2027-06-21 (-6d) | 2027-07-17 → 2027-07-12 (-5d) | -160d → -155.5d |  |
| 3 | **Telecom Network** | 2027-04-18 → 2027-03-21 (-28d) | 2027-04-28 → 2027-03-31 (-28d) |  |  |
| TIE-R09-TE | TIE IN Existing Network For Telecom Network | 2027-04-18 → 2027-03-21 (-28d) | 2027-04-28 → 2027-03-31 (-28d) | -97d → -82d |  |
| 4 | **Road 10 Local 2 ( 2352 LM )** | 2027-04-18 → 2027-03-15 (-34d) | 2027-09-21 → 2027-09-09 (-12d) |  |  |
| 15 | **Storm Drainage Network** | 2027-06-28 → 2027-05-20 (-39d) | 2027-07-05 → 2027-05-27 (-39d) |  |  |
| TIE-SD-R10 | TIE IN Existing Network For Storm Drainage Network | 2027-06-28 → 2027-05-20 (-39d) | 2027-07-05 → 2027-05-27 (-39d) | -150d → -117d |  |
| 16 | **Sewage Network** | 2027-06-08 → 2027-04-25 (-44d) | 2027-06-21 → 2027-05-08 (-44d) |  |  |
| TIE-SW-R10 | TIE IN Existing Network For Sewage Network | 2027-06-08 → 2027-04-25 (-44d) | 2027-06-21 → 2027-05-08 (-44d) | -138d → -105d |  |
| 17 | **Potable Water Network** | 2027-08-01 → 2027-07-03 (-29d) | 2027-08-14 → 2027-07-15 (-30d) |  |  |
| TIE-PW-R10 | TIE IN Existing Network For Potable Water Network | 2027-08-01 → 2027-07-03 (-29d) | 2027-08-14 → 2027-07-15 (-30d) | -184d → -159d |  |
| 1 | **Irrigation Network** | 2027-05-12 → 2027-04-08 (-34d) | 2027-05-31 → 2027-04-21 (-40d) |  |  |
| TIE-IR-R10 | TIE IN Existing Network For Irrigation Network | 2027-05-12 → 2027-04-08 (-34d) | 2027-05-31 → 2027-04-21 (-40d) | -120d → -91d |  |
| 18 | **Meduim Voltage Network** | 2027-04-18 → 2027-03-15 (-34d) | 2027-05-08 → 2027-04-04 (-34d) |  |  |
| TIE-R10-MV | TIE IN Existing Network For Medium Voltage Network | 2027-04-18 → 2027-03-15 (-34d) | 2027-05-08 → 2027-04-04 (-34d) | -105d → -85d |  |
| 2 | **Street Lighting Network** | 2027-06-27 → 2027-06-21 (-6d) | 2027-07-17 → 2027-07-12 (-5d) |  |  |
| TIE-R10-SL | TIE IN Existing Network For Street Lighting Network | 2027-06-27 → 2027-06-21 (-6d) | 2027-07-17 → 2027-07-12 (-5d) | -160d → -155.5d |  |
| 4 | **Telecom Network** | 2027-04-18 → 2027-03-21 (-28d) | 2027-04-28 → 2027-03-31 (-28d) |  |  |
| TIE-R10-TE | TIE IN Existing Network For Telecom Network | 2027-04-18 → 2027-03-21 (-28d) | 2027-04-28 → 2027-03-31 (-28d) | -102d → -82d |  |
| 3 | **Road Works** | 2027-09-15 → 2027-09-04 (-11d) | 2027-09-21 → 2027-09-09 (-12d) |  |  |
| TIE-R10-RD | TIE IN Existing Network For Road Works | 2027-09-15 → 2027-09-04 (-11d) | 2027-09-21 → 2027-09-09 (-12d) | -216.5d → -206.5d |  |
| 5 | **Road 11 Local 1 ( 670 LM )** | 2027-04-18 → 2027-03-15 (-34d) | 2027-09-21 → 2027-09-09 (-12d) |  |  |
| 15 | **Storm Drainage Network** | 2027-06-28 → 2027-05-20 (-39d) | 2027-07-05 → 2027-05-27 (-39d) |  |  |
| TIE-SD-R11 | TIE IN Existing Network For Storm Drainage Network | 2027-06-28 → 2027-05-20 (-39d) | 2027-07-05 → 2027-05-27 (-39d) | -150d → -117d |  |
| 16 | **Sewage Network** | 2027-06-08 → 2027-04-25 (-44d) | 2027-06-21 → 2027-05-08 (-44d) |  |  |
| TIE-SW-R11 | TIE IN Existing Network For Sewage Network | 2027-06-08 → 2027-04-25 (-44d) | 2027-06-21 → 2027-05-08 (-44d) | -138d → -105d |  |
| 17 | **Potable Water Network** | 2027-08-01 → 2027-07-03 (-29d) | 2027-08-14 → 2027-07-15 (-30d) |  |  |
| TIE-PW-R11 | TIE IN Existing Network For Potable Water Network | 2027-08-01 → 2027-07-03 (-29d) | 2027-08-14 → 2027-07-15 (-30d) | -184d → -159d |  |
| 1 | **Irrigation Network** | 2027-05-12 → 2027-04-08 (-34d) | 2027-05-31 → 2027-04-21 (-40d) |  |  |
| TIE-IR-R11 | TIE IN Existing Network For Irrigation Network | 2027-05-12 → 2027-04-08 (-34d) | 2027-05-31 → 2027-04-21 (-40d) | -120d → -91d |  |
| 18 | **Meduim Voltage Network** | 2027-04-18 → 2027-03-15 (-34d) | 2027-05-08 → 2027-04-04 (-34d) |  |  |
| TIE-R11-MV | TIE IN Existing Network For Medium Voltage Network | 2027-04-18 → 2027-03-15 (-34d) | 2027-05-08 → 2027-04-04 (-34d) | -105d → -85d |  |
| 2 | **Street Lighting Network** | 2027-06-27 → 2027-06-21 (-6d) | 2027-07-17 → 2027-07-12 (-5d) |  |  |
| TIE-R11-SL | TIE IN Existing Network For Street Lighting Network | 2027-06-27 → 2027-06-21 (-6d) | 2027-07-17 → 2027-07-12 (-5d) | -160d → -155.5d |  |
| 4 | **Telecom Network** | 2027-04-18 → 2027-03-21 (-28d) | 2027-04-28 → 2027-03-31 (-28d) |  |  |
| TIE-R11-TE | TIE IN Existing Network For Telecom Network | 2027-04-18 → 2027-03-21 (-28d) | 2027-04-28 → 2027-03-31 (-28d) | -98d → -82d |  |
| 3 | **Road Works** | 2027-09-15 → 2027-09-04 (-11d) | 2027-09-21 → 2027-09-09 (-12d) |  |  |
| TIE-R11-RD | TIE IN Existing Network For Road Works | 2027-09-15 → 2027-09-04 (-11d) | 2027-09-21 → 2027-09-09 (-12d) | -212.5d → -202.5d |  |
| 6 | **Road 14 Local 1 ( 584 LM )** | 2027-04-18 → 2027-03-15 (-34d) | 2027-09-21 → 2027-09-09 (-12d) |  |  |
| 15 | **Storm Drainage Network** | 2027-06-28 → 2027-05-20 (-39d) | 2027-07-05 → 2027-05-27 (-39d) |  |  |
| TIE-SD-R14 | TIE IN Existing Network For Storm Drainage Network | 2027-06-28 → 2027-05-20 (-39d) | 2027-07-05 → 2027-05-27 (-39d) | -150d → -117d |  |
| 16 | **Sewage Network** | 2027-06-08 → 2027-04-25 (-44d) | 2027-06-21 → 2027-05-08 (-44d) |  |  |
| TIE-SW-R14 | TIE IN Existing Network For Sewage Network | 2027-06-08 → 2027-04-25 (-44d) | 2027-06-21 → 2027-05-08 (-44d) | -138d → -105d |  |
| 17 | **Potable Water Network** | 2027-08-01 → 2027-07-03 (-29d) | 2027-08-14 → 2027-07-15 (-30d) |  |  |
| TIE-PW-R14 | TIE IN Existing Network For Potable Water Network | 2027-08-01 → 2027-07-03 (-29d) | 2027-08-14 → 2027-07-15 (-30d) | -184d → -159d |  |
| 1 | **Irrigation Network** | 2027-05-12 → 2027-04-08 (-34d) | 2027-05-31 → 2027-04-21 (-40d) |  |  |

| ID | Task | Start | Finish | Total float |
| --- | --- | --- | --- | --- |
| TIE-IR-R14 | TIE IN Existing Network For Irrigation Network | 2027-05-12 → 2027-04-08 (-34d) | 2027-05-31 → 2027-04-21 (-40d) | -120d → -91d |
| 18 | **Meduim Voltage Network** | 2027-04-18 → 2027-03-15 (-34d) | 2027-05-08 → 2027-04-04 (-34d) |  |
| TIE-R14-MV | TIE IN Existing Network For Medium Voltage Network | 2027-04-18 → 2027-03-15 (-34d) | 2027-05-08 → 2027-04-04 (-34d) | -105d → -85d |
| 2 | **Street Lighting Network** | 2027-06-27 → 2027-06-21 (-6d) | 2027-07-17 → 2027-07-12 (-5d) |  |
| TIE-R14-SL | TIE IN Existing Network For Street Lighting Network | 2027-06-27 → 2027-06-21 (-6d) | 2027-07-17 → 2027-07-12 (-5d) | -160d → -155.5d |
| 4 | **Telecom Network** | 2027-04-18 → 2027-03-21 (-28d) | 2027-04-28 → 2027-03-31 (-28d) |  |
| TIE-R14-TE | TIE IN Existing Network For Telecom Network | 2027-04-18 → 2027-03-21 (-28d) | 2027-04-28 → 2027-03-31 (-28d) | -97d → -82d |
| 3 | **Road Works** | 2027-09-15 → 2027-09-04 (-11d) | 2027-09-21 → 2027-09-09 (-12d) |  |
| TIE-R14-RD | TIE IN Existing Network For Road Works | 2027-09-15 → 2027-09-04 (-11d) | 2027-09-21 → 2027-09-09 (-12d) | -216.5d → -206.5d |
| 7 | **Road 15 Local 1 ( 556 LM )** | 2027-04-18 → 2027-03-15 (-34d) | 2027-08-14 → 2027-07-15 (-30d) |  |
| 15 | **Storm Drainage Network** | 2027-06-28 → 2027-05-20 (-39d) | 2027-07-05 → 2027-05-27 (-39d) |  |
| TIE-SD-R15 | TIE IN Existing Network For Storm Drainage Network | 2027-06-28 → 2027-05-20 (-39d) | 2027-07-05 → 2027-05-27 (-39d) | -150d → -117d |
| 16 | **Sewage Network** | 2027-06-08 → 2027-04-25 (-44d) | 2027-06-21 → 2027-05-08 (-44d) |  |
| TIE-SW-R15 | TIE IN Existing Network For Sewage Network | 2027-06-08 → 2027-04-25 (-44d) | 2027-06-21 → 2027-05-08 (-44d) | -138d → -105d |
| 17 | **Potable Water Network** | 2027-08-01 → 2027-07-03 (-29d) | 2027-08-14 → 2027-07-15 (-30d) |  |
| TIE-PW-R15 | TIE IN Existing Network For Potable Water Network | 2027-08-01 → 2027-07-03 (-29d) | 2027-08-14 → 2027-07-15 (-30d) | -184d → -159d |
| 1 | **Irrigation Network** | 2027-05-12 → 2027-04-08 (-34d) | 2027-05-31 → 2027-04-21 (-40d) |  |
| TIE-IR-R15 | TIE IN Existing Network For Irrigation Network | 2027-05-12 → 2027-04-08 (-34d) | 2027-05-31 → 2027-04-21 (-40d) | -120d → -91d |
| 18 | **Meduim Voltage Network** | 2027-04-18 → 2027-03-15 (-34d) | 2027-05-08 → 2027-04-04 (-34d) |  |
| TIE-R15-MV | TIE IN Existing Network For Medium Voltage Network | 2027-04-18 → 2027-03-15 (-34d) | 2027-05-08 → 2027-04-04 (-34d) | -105d → -85d |
| 2 | **Street Lighting Network** | 2027-06-27 → 2027-06-21 (-6d) | 2027-07-17 → 2027-07-12 (-5d) |  |
| TIE-R15-SL | TIE IN Existing Network For Street Lighting Network | 2027-06-27 → 2027-06-21 (-6d) | 2027-07-17 → 2027-07-12 (-5d) | -160d → -155.5d |
| 3 | **Telecom Network** | 2027-04-18 → 2027-03-21 (-28d) | 2027-04-28 → 2027-03-31 (-28d) |  |
| TIE-R15-TE | TIE IN Existing Network For Telecom Network | 2027-04-18 → 2027-03-21 (-28d) | 2027-04-28 → 2027-03-31 (-28d) | -97d → -82d |
| 8 | **Road 16 Local 1 ( 527 LM )** | 2027-04-18 → 2027-03-15 (-34d) | 2027-08-14 → 2027-07-15 (-30d) |  |
| 15 | **Storm Drainage Network** | 2027-06-28 → 2027-05-20 (-39d) | 2027-07-05 → 2027-05-27 (-39d) |  |
| TIE-SD-R16 | TIE IN Existing Network For Storm Drainage Network | 2027-06-28 → 2027-05-20 (-39d) | 2027-07-05 → 2027-05-27 (-39d) | -150d → -117d |
| 16 | **Sewage Network** | 2027-06-08 → 2027-04-25 (-44d) | 2027-06-21 → 2027-05-08 (-44d) |  |
| TIE-SW-R16 | TIE IN Existing Network For Sewage Network | 2027-06-08 → 2027-04-25 (-44d) | 2027-06-21 → 2027-05-08 (-44d) | -138d → -105d |
| 17 | **Potable Water Network** | 2027-08-01 → 2027-07-03 (-29d) | 2027-08-14 → 2027-07-15 (-30d) |  |
| TIE-PW-R16 | TIE IN Existing Network For Potable Water Network | 2027-08-01 → 2027-07-03 (-29d) | 2027-08-14 → 2027-07-15 (-30d) | -184d → -159d |
| 1 | **Irrigation Network** | 2027-05-12 → 2027-04-08 (-34d) | 2027-05-31 → 2027-04-21 (-40d) |  |
| TIE-IR-R16 | TIE IN Existing Network For Irrigation Network | 2027-05-12 → 2027-04-08 (-34d) | 2027-05-31 → 2027-04-21 (-40d) | -120d → -91d |
| 18 | **Meduim Voltage Network** | 2027-04-18 → 2027-03-15 (-34d) | 2027-05-08 → 2027-04-04 (-34d) |  |
| TIE-R16-MV | TIE IN Existing Network For Medium Voltage Network | 2027-04-18 → 2027-03-15 (-34d) | 2027-05-08 → 2027-04-04 (-34d) | -105d → -85d |
| 2 | **Street Lighting Network** | 2027-06-27 → 2027-06-21 (-6d) | 2027-07-17 → 2027-07-12 (-5d) |  |
| TIE-R16-SL | TIE IN Existing Network For Street Lighting Network | 2027-06-27 → 2027-06-21 (-6d) | 2027-07-17 → 2027-07-12 (-5d) | -160d → -155.5d |
| 3 | **Telecom Network** | 2027-04-18 → 2027-03-21 (-28d) | 2027-04-28 → 2027-03-31 (-28d) |  |
| TIE-R16-TE | TIE IN Existing Network For Telecom Network | 2027-04-18 → 2027-03-21 (-28d) | 2027-04-28 → 2027-03-31 (-28d) | -97d → -82d |
| 9 | **Road 17 Local 1 ( 500 LM )** | 2027-04-18 → 2027-03-15 (-34d) | 2027-08-14 → 2027-07-15 (-30d) |  |
| 15 | **Storm Drainage Network** | 2027-06-28 → 2027-05-20 (-39d) | 2027-07-05 → 2027-05-27 (-39d) |  |
| TIE-SD-R17 | TIE IN Existing Network For Storm Drainage Network | 2027-06-28 → 2027-05-20 (-39d) | 2027-07-05 → 2027-05-27 (-39d) | -150d → -117d |
| 16 | **Sewage Network** | 2027-06-08 → 2027-04-25 (-44d) | 2027-06-21 → 2027-05-08 (-44d) |  |
| TIE-SW-R17 | TIE IN Existing Network For Sewage Network | 2027-06-08 → 2027-04-25 (-44d) | 2027-06-21 → 2027-05-08 (-44d) | -138d → -105d |
| 17 | **Potable Water Network** | 2027-08-01 → 2027-07-03 (-29d) | 2027-08-14 → 2027-07-15 (-30d) |  |
| TIE-PW-R17 | TIE IN Existing Network For Potable Water Network | 2027-08-01 → 2027-07-03 (-29d) | 2027-08-14 → 2027-07-15 (-30d) | -184d → -159d |
| 1 | **Irrigation Network** | 2027-05-12 → 2027-04-08 (-34d) | 2027-05-31 → 2027-04-21 (-40d) |  |
| TIE-IR-R17 | TIE IN Existing Network For Irrigation Network | 2027-05-12 → 2027-04-08 (-34d) | 2027-05-31 → 2027-04-21 (-40d) | -120d → -91d |
| 18 | **Meduim Voltage Network** | 2027-04-18 → 2027-03-15 (-34d) | 2027-05-08 → 2027-04-04 (-34d) |  |
| TIE-R17-MV | TIE IN Existing Network For Medium Voltage Network | 2027-04-18 → 2027-03-15 (-34d) | 2027-05-08 → 2027-04-04 (-34d) | -105d → -85d |
| 2 | **Street Lighting Network** | 2027-06-27 → 2027-06-21 (-6d) | 2027-07-17 → 2027-07-12 (-5d) |  |
| TIE-R17-SL | TIE IN Existing Network For Street Lighting Network | 2027-06-27 → 2027-06-21 (-6d) | 2027-07-17 → 2027-07-12 (-5d) | -160d → -155.5d |
| 3 | **Telecom Network** | 2027-04-18 → 2027-03-21 (-28d) | 2027-04-28 → 2027-03-31 (-28d) |  |
| TIE-R17-TE | TIE IN Existing Network For Telecom Network | 2027-04-18 → 2027-03-21 (-28d) | 2027-04-28 → 2027-03-31 (-28d) | -97d → -82d |
| 1 | **Road 18 Local 1 ( 479 LM )** | 2027-04-05 → 2027-03-15 (-21d) | 2027-08-14 → 2027-07-15 (-30d) |  |
| 15 | **Storm Drainage Network** | 2027-06-28 → 2027-05-20 (-39d) | 2027-07-05 → 2027-05-27 (-39d) |  |
| TIE-SD-R18 | TIE IN Existing Network For Storm Drainage Network | 2027-06-28 → 2027-05-20 (-39d) | 2027-07-05 → 2027-05-27 (-39d) | -146d → -113d |
| 16 | **Sewage Network** | 2027-06-08 → 2027-04-25 (-44d) | 2027-06-21 → 2027-05-08 (-44d) |  |
| TIE-SW-R18 | TIE IN Existing Network For Sewage Network | 2027-06-08 → 2027-04-25 (-44d) | 2027-06-21 → 2027-05-08 (-44d) | -134d → -101d |
| 17 | **Potable Water Network** | 2027-08-01 → 2027-07-03 (-29d) | 2027-08-14 → 2027-07-15 (-30d) |  |
| TIE-PW-R18 | TIE IN Existing Network For Potable Water Network | 2027-08-01 → 2027-07-03 (-29d) | 2027-08-14 → 2027-07-15 (-30d) | -180d → -155d |
| 1 | **Irrigation Network** | 2027-05-12 → 2027-04-08 (-34d) | 2027-05-31 → 2027-04-21 (-40d) |  |
| TIE-IR-R18 | TIE IN Existing Network For Irrigation Network | 2027-05-12 → 2027-04-08 (-34d) | 2027-05-31 → 2027-04-21 (-40d) | -116d → -87d |
| 18 | **Meduim Voltage Network** | 2027-04-18 → 2027-03-15 (-34d) | 2027-05-08 → 2027-04-04 (-34d) |  |
| TIE-R18-MV10 | TIE IN Existing Network For Medium Voltage Network | 2027-04-18 → 2027-03-15 (-34d) | 2027-05-08 → 2027-04-04 (-34d) | -101d → -85d |
| 2 | **Street Lighting Network** | 2027-06-27 → 2027-06-21 (-6d) | 2027-07-17 → 2027-07-12 (-5d) |  |
| TIE-R18-SL10 | TIE IN Existing Network For Street Lighting Network | 2027-06-27 → 2027-06-21 (-6d) | 2027-07-17 → 2027-07-12 (-5d) | -156d → -151.5d |
| 3 | **Telecom Network** | 2027-04-05 → 2027-03-21 (-15d) | 2027-04-18 → 2027-04-03 (-15d) |  |
| TIE-R18-TE10 | TIE IN Existing Network For Telecom Network | 2027-04-05 → 2027-03-21 (-15d) | 2027-04-18 → 2027-04-03 (-15d) |  |
| 2 | **Sewage Pump Stations** |  | 2027-06-12 → 2027-06-19 (+7d) |  |

| ID | Task | Start | Finish | Total float | Predecessors |
| --- | --- | --- | --- | --- | --- |
| 1 | **Sewage Pump Station ( PS 06 )** |  | 2027-06-12 → 2027-06-19 (+7d) |  |  |
| 1 | **Pump Station Main Building** |  | 2027-04-06 → 2027-04-13 (+7d) |  |  |
| CO-SW-PS7-MB-110 | Concrete Works of Superstrucure |  | 2026-11-12 → 2026-11-19 (+7d) | -152d → -158d |  |
| CO-SW-PS7-MB-120 | Internal Finishes Works of Superstrucure | 2026-11-14 → 2026-11-21 (+7d) | 2026-12-17 → 2026-12-24 (+7d) | -152d → -158d |  |
| CO-SW-PS7-MB-130 | Internal Electrical Works | 2026-12-19 → 2026-12-26 (+7d) | 2027-01-21 → 2027-01-28 (+7d) | -115d → -121d |  |
| CO-SW-PS7-MB-140 | Internal Mechanical Works | 2027-01-23 → 2027-01-30 (+7d) | 2027-02-27 → 2027-03-06 (+7d) | -115d → -121d |  |
| CO-SW-PS7-MB-150 | Electromechanical Main Works | 2027-02-28 → 2027-03-07 (+7d) | 2027-04-06 → 2027-04-13 (+7d) | -115d → -121d |  |
| 2 | **Generator With Umbrella Tank** | 2026-12-19 → 2026-12-26 (+7d) | 2027-03-20 → 2027-03-27 (+7d) |  |  |
| CO-SW-PS7-GN-100 | Concrete Works of Base | 2026-12-19 → 2026-12-26 (+7d) | 2026-12-31 → 2027-01-07 (+7d) | -152d → -158d |  |
| CO-SW-PS7-GN-110 | Install Manually Operated Fuel Pump | 2027-01-02 → 2027-01-09 (+7d) | 2027-01-25 → 2027-02-01 (+7d) | -152d → -158d |  |
| CO-SW-PS7-GN-120 | Install Ground Fuel Tank | 2027-01-26 → 2027-02-02 (+7d) | 2027-02-18 → 2027-02-27 (+9d) | -152d → -158d |  |
| CO-SW-PS7-GN-130 | Fix Steel Structure for Umbrella | 2027-02-20 → 2027-02-28 (+8d) | 2027-03-20 → 2027-03-27 (+7d) | -152d → -158d |  |
| 5 | **Motor Control Centre Building** | 2026-11-14 → 2026-11-21 (+7d) | 2027-04-07 → 2027-04-14 (+7d) |  |  |
| CO-SW-PS7-MCC-100 | Excavation Main Bulding | 2026-11-14 → 2026-11-21 (+7d) | 2026-12-01 → 2026-12-08 (+7d) | -116d → -122d |  |
| CO-SW-PS7-MCC-110 | Concrete Works of Superstrucure | 2026-12-02 → 2026-12-09 (+7d) | 2026-12-26 → 2027-01-02 (+7d) | -116d → -122d |  |
| CO-SW-PS7-MCC-120 | Internal Finishes Works of Superstrucure | 2026-12-27 → 2027-01-03 (+7d) | 2027-01-19 → 2027-01-26 (+7d) | -116d → -122d |  |
| CO-SW-PS7-MCC-130 | Internal Electrical Works | 2027-01-20 → 2027-01-27 (+7d) | 2027-02-13 → 2027-02-20 (+7d) | -116d → -122d |  |
| CO-SW-PS7-MCC-140 | Internal Mechanical Works | 2027-02-14 → 2027-02-21 (+7d) | 2027-03-14 → 2027-03-21 (+7d) | -116d → -122d |  |
| CO-SW-PS7-MCC-150 | Electromechanical Main Works | 2027-03-15 → 2027-03-22 (+7d) | 2027-04-07 → 2027-04-14 (+7d) | -116d → -122d |  |
| 6 | **Simple Building Works** | 2027-03-21 → 2027-03-28 (+7d) | 2027-05-23 → 2027-05-30 (+7d) |  |  |
| CO-SW-PS7-SBL-100 | Perimeter Fencing | 2027-03-21 → 2027-03-28 (+7d) | 2027-04-15 → 2027-04-22 (+7d) | -152d → -158d |  |
| CO-SW-PS7-SBL-110 | Outside Lighting | 2027-04-17 → 2027-04-24 (+7d) | 2027-05-23 → 2027-05-30 (+7d) | -150d → -156d |  |
| CO-SW-PS7-SBL-120 | Outside Duct Works | 2027-04-17 → 2027-04-24 (+7d) | 2027-05-12 → 2027-05-25 (+13d) | -152d → -158d |  |
| CO-SW-PS7-SBL-130 | Rectangular Wet Wells | 2027-04-17 → 2027-04-24 (+7d) | 2027-05-23 → 2027-05-30 (+7d) | -150d → -156d |  |
| CO-SW-PS7-SBL-140 | Round Wet Well Structure for basket screen | 2027-04-17 → 2027-04-24 (+7d) | 2027-05-23 → 2027-05-30 (+7d) | -150d → -156d |  |
| CO-SW-PS7-SBL-150 | Motorized basket screen | 2027-04-17 → 2027-04-24 (+7d) | 2027-05-23 → 2027-05-30 (+7d) | -150d → -156d |  |
| 7 | **Site Work and Service Road** | 2027-05-13 → 2027-05-26 (+13d) | 2027-06-12 → 2027-06-19 (+7d) |  |  |
| CO-SW-PS7-SWS-100 | Outside Strom Drainage System | 2027-05-13 → 2027-05-26 (+13d) | 2027-05-25 → 2027-06-01 (+7d) | -152d → -158d |  |
| CO-SW-PS7-SWS-110 | Bituminous Works | 2027-05-26 → 2027-06-02 (+7d) | 2027-06-12 → 2027-06-19 (+7d) | -152d → -158d |  |
| 1 | **Storm Drainage Ponds** |  | 2027-05-22 → 2027-05-29 (+7d) |  |  |
| 1 | **Storm Drainage Pond ( PO-J1)** |  | 2027-04-21 → 2026-12-16 (-126d) |  |  |
| CO-SD-PO-K1-110-P1 | Finished Grouted Riprap - PART 1 | 2026-11-10 A → 2026-11-04 A (-6d) | 2026-12-03 → 2026-12-10 (+7d) | -171d → -67d |  |
| CO-SD-PO-K1-110-P2 | Finished Grouted Riprap - PART 2 | 2026-12-05 A → 2026-11-04 A (-31d) | 2026-12-28 → 2026-12-10 (-18d) | -171d → -67d | CO-SD-PO-K1-110-P1, CO-SD-PO-K1-100-P2 → CO-SD-PO-K1-110-P1 FF, CO-SD-PO-K1-100-P2 |
| CO-SD-PO-K1-110-P3 | Finished Grouted Riprap - PART 3 | 2026-12-29 A → 2026-11-04 A (-55d) | 2027-01-21 → 2026-12-10 (-42d) | -171d → -67d | CO-SD-PO-K1-110-P2, CO-SD-PO-K1-100-P3 → CO-SD-PO-K1-110-P2 FF, CO-SD-PO-K1-100-P3 |
| CO-SD-PO-K1-110-P4 | Finished Grouted Riprap - PART 4 | 2027-01-23 A → 2026-11-04 A (-80d) | 2027-02-15 → 2026-12-10 (-67d) | -171d → -67d | CO-SD-PO-K1-110-P3, CO-SD-PO-K1-100-P4 → CO-SD-PO-K1-110-P3 FF, CO-SD-PO-K1-100-P4 |
| CO-SD-PO-K1-120 | Outfall structure | 2027-02-16 A → 2026-11-04 A (-104d) | 2027-03-22 → 2026-12-16 (-96d) | -171d → -67d | CO-SD-PO-K1-110-P4 → CO-SD-PO-K1-110-P4 FF, CO-SD-PO-K1-110-P4 SS |
| CO-SD-PO-K1-130 | Acess Entrace Ramp | 2027-03-23 A → 2026-11-04 A (-139d) | 2027-04-21 → 2026-12-16 (-126d) | -171d → -67d | CO-SD-PO-K1-120, PRO-DPO-CV-DL-10 FF+3d → CO-SD-PO-K1-120 FF, PRO-DPO-CV-DL-10 FF+3d, CO-SD-PO-K1-120 SS, PRO-DPO-CV-DL-10 SS |
| 2 | **Storm Drainage Pond ( PO-J2)** | 2026-11-10 → 2026-11-04 (-6d) | 2027-05-22 → 2027-05-29 (+7d) |  |  |
| CO-SD-PO-K2-100-P1 | Excavation & Filling Works - PART 1 | 2026-11-10 A → 2026-11-04 A (-6d) | 2026-12-03 → 2026-12-10 (+7d) | -164d → -170d |  |
| CO-SD-PO-K2-100-P2 | Excavation & Filling Works - PART 2 | 2026-12-05 A → 2026-11-04 A (-31d) | 2026-12-28 → 2026-12-10 (-18d) | -164d → -149d | CO-SD-PO-K2-100-P1 → CO-SD-PO-K2-100-P1 FF, CO-SD-PO-K2-100-P1 SS |
| CO-SD-PO-K2-100-P3 | Excavation & Filling Works - PART 3 | 2026-12-29 A → 2026-11-04 A (-55d) | 2027-01-21 → 2026-12-10 (-42d) | -164d → -128d | CO-SD-PO-K2-100-P2, PRO-DPO-CV-DL-20 → CO-SD-PO-K2-100-P2 FF, PRO-DPO-CV-DL-20 |
| CO-SD-PO-K2-100-P4 | Excavation & Filling Works - PART 4 | 2027-01-23 A → 2026-11-04 A (-80d) | 2027-02-15 → 2026-12-10 (-67d) | -164d → -107d | CO-SD-PO-K2-100-P3 → CO-SD-PO-K2-100-P3 FF, CO-SD-PO-K2-100-P3 SS |
| CO-SD-PO-K2-110-P1 | Finished Grouted Riprap - PART 1 | 2026-12-05 → 2026-12-12 (+7d) | 2026-12-28 → 2027-01-04 (+7d) | -164d → -170d |  |
| CO-SD-PO-K2-110-P2 | Finished Grouted Riprap - PART 2 | 2026-12-29 → 2027-01-05 (+7d) | 2027-01-21 → 2027-01-28 (+7d) | -164d → -170d |  |
| CO-SD-PO-K2-110-P3 | Finished Grouted Riprap - PART 3 | 2027-01-23 → 2027-01-30 (+7d) | 2027-02-15 → 2027-02-23 (+8d) | -164d → -170d |  |
| CO-SD-PO-K2-110-P4 | Finished Grouted Riprap - PART 4 | 2027-02-16 → 2027-02-24 (+8d) | 2027-03-16 → 2027-03-23 (+7d) | -164d → -170d |  |
| CO-SD-PO-K2-120 | Outfall structure | 2027-03-17 → 2027-03-24 (+7d) | 2027-04-15 → 2027-04-22 (+7d) | -164d → -170d |  |
| CO-SD-PO-K2-130 | Acess Entrace Ramp | 2027-04-17 → 2027-04-24 (+7d) | 2027-05-22 → 2027-05-29 (+7d) | -164d → -170d |  |
| TC | **Testing and Comissioning** |  | 2027-09-21 → 2027-09-09 (-12d) |  |  |
| INF | **Infrastructure Networks** |  | 2027-09-21 → 2027-09-09 (-12d) |  |  |
| PW1 | **Irrigation Network** |  | 2027-05-31 → 2027-04-21 (-40d) |  |  |
| T/C-IR | Testing and Commissioning of Irrigation Network |  | 2027-05-31 → 2027-04-21 (-40d) | -116d → -87d | TIE-IR-R09 FF, TIE-IR-R10 FF, TIE-IR-R11 FF, TIE-IR-R14 FF, TIE-IR-R15 FF, TIE-IR-R16 FF, TIE-IR-R17 FF, TIE-IR-R18 FF → TIE-IR-R09 FF, TIE-IR-R10 FF, TIE-IR-R11 FF, TIE-IR-R14 FF, TIE-IR-R15 FF, TIE-IR-R16 FF, TIE-IR-R17 FF, TIE-IR-R18 FF, CO-R18-IR-TF-110 SS |
| PW | **Potable Water Network** |  | 2027-08-14 → 2027-07-15 (-30d) |  |  |
| T/C-PW | Testing and Commissioning of Potable Water Network |  | 2027-08-14 → 2027-07-15 (-30d) | -180d → -155d | TIE-PW-R09 FF, TIE-PW-R10 FF, TIE-PW-R11 FF, TIE-PW-R14 FF, TIE-PW-R15 FF, TIE-PW-R16 FF, TIE-PW-R17 FF, TIE-PW-R18 FF → TIE-PW-R09 FF, TIE-PW-R10 FF, TIE-PW-R11 FF, TIE-PW-R14 FF, TIE-PW-R15 FF, TIE-PW-R16 FF, TIE-PW-R17 FF, TIE-PW-R18 FF, CO-R18-PW-TF-100 SS |
| SW | **Sewage Network** |  | 2027-07-26 → 2027-08-02 (+7d) |  |  |
| T/C-SW | Testing and Commissioning of Sewage Network |  | 2027-07-26 → 2027-08-02 (+7d) | -164d → -170d | TIE-SW-R09 FF, TIE-SW-R10 FF, TIE-SW-R11 FF, TIE-SW-R14 FF, TIE-SW-R15 FF, TIE-SW-R16 FF, TIE-SW-R17 FF, T/C-SPS FF, TIE-SW-R18 FF → TIE-SW-R09 FF, TIE-SW-R10 FF, TIE-SW-R11 FF, TIE-SW-R14 FF, TIE-SW-R15 FF, TIE-SW-R16 FF, TIE-SW-R17 FF, T/C-SPS FF, TIE-SW-R18 FF, CO-SD-PO-K1-130 SS |
| SD | **Storm Drainage Network** |  | 2027-07-05 → 2027-07-03 (-2d) |  |  |
| T/C-SD | Testing and Commissioning of Storm Drainage Network |  | 2027-07-05 → 2027-07-03 (-2d) | -146d → -144d | TIE-SD-R09 FF, TIE-SD-R10 FF, TIE-SD-R11 FF, TIE-SD-R14 FF, TIE-SD-R15 FF, TIE-SD-R16 FF, TIE-SD-R17 FF, T/C-DPO FF, TIE-SD-R18 FF → TIE-SD-R09 FF, TIE-SD-R10 FF, TIE-SD-R11 FF, TIE-SD-R14 FF, TIE-SD-R15 FF, TIE-SD-R16 FF, TIE-SD-R17 FF, T/C-DPO FF, TIE-SD-R18 FF, CO-SD-PO-K1-130 SS |
| SL | **Street Lighting Network** |  | 2027-07-17 → 2027-07-12 (-5d) |  |  |
| T/C-SL | Testing and Commissioning of Street Lighting Network |  | 2027-07-17 → 2027-07-12 (-5d) | -156d → -151.5d | TIE-R09-SL FF, TIE-R10-SL FF, TIE-R11-SL FF, TIE-R14-SL FF, TIE-R15-SL FF, TIE-R16-SL FF, TIE-R17-SL FF, TIE-R18-SL10 FF → TIE-R09-SL FF, TIE-R10-SL FF, TIE-R11-SL FF, TIE-R14-SL FF, TIE-R15-SL FF, TIE-R16-SL FF, TIE-R17-SL FF, TIE-R18-SL10 FF, CO-R18-SL-TF-120 SS |
| TE | **Telecom Network** |  | 2027-06-26 → 2027-07-03 (+7d) |  |  |
| T/C-TE | Testing and Commissioning of Telecom Network |  | 2027-06-26 → 2027-07-03 (+7d) | -138d → -157d | TIE-R09-TE FF, TIE-R10-TE FF, TIE-R11-TE FF, TIE-R14-TE FF, TIE-R15-TE FF, TIE-R16-TE FF, TIE-R17-TE FF, T/C-DPO FF, TIE-R18-TE10 FF → TIE-R09-TE FF, TIE-R10-TE FF, TIE-R11-TE FF, TIE-R14-TE FF, TIE-R15-TE FF, TIE-R16-TE FF, TIE-R17-TE FF, T/C-DPO FF, TIE-R18-TE10 FF, CO-SD-PO-K1-130 SS |
| MV | **Medium Voltage Network** |  | 2027-06-26 → 2027-07-03 (+7d) |  |  |
| T/C-MV | Testing and Commissioning of Medium Voltage Network |  | 2027-06-26 → 2027-07-03 (+7d) | -138d → -157d | TIE-R09-MV FF, TIE-R10-MV FF, TIE-R11-MV FF, TIE-R14-MV FF, TIE-R15-MV FF, TIE-R16-MV FF, TIE-R17-MV FF, T/C-TE FF, TIE-R18-MV10 FF → TIE-R09-MV FF, TIE-R10-MV FF, TIE-R11-MV FF, TIE-R14-MV FF, TIE-R15-MV FF, TIE-R16-MV FF, TIE-R17-MV FF, T/C-TE FF, TIE-R18-MV10 FF, T/C-TE SS |
| RD | **Road Works** |  | 2027-09-21 → 2027-09-09 (-12d) |  |  |
| T/C-RD | Testing and Commissioning of Road Works |  | 2027-09-21 → 2027-09-09 (-12d) | -212.5d → -202.5d | TIE-R10-RD FF, TIE-R11-RD FF, TIE-R14-RD FF, T/C-MV FF → TIE-R10-RD FF, TIE-R11-RD FF, TIE-R14-RD FF, T/C-MV FF, T/C-MV SS |
| 1 | **Independent Works** | 2027-05-23 → 2027-05-30 (+7d) | 2027-07-26 → 2027-08-02 (+7d) |  |  |
| T/C-DPO | Testing and Commissioning of Storm Drainage Ponds | 2027-05-23 → 2027-05-30 (+7d) | 2027-06-26 → 2027-07-03 (+7d) | -164d → -170d |  |
| T/C-SPS | Testing and Commissioning of Sewage Pump Stations | 2027-06-27 → 2027-07-04 (+7d) | 2027-07-26 → 2027-08-02 (+7d) | -164d → -170d |  |
| 1 | **Handing over and close out** | 2027-05-12 → 2027-04-08 (-34d) | 2027-10-06 → 2027-09-25 (-11d) |  |  |

| ID | Task | Start | Finish | Total float |
| --- | --- | --- | --- | --- |
| 2 | **As-Built** | 2027-05-12 → 2027-04-08 (-34d) | 2027-09-30 → 2027-09-18 (-12d) |  |
| HO-180 | Submission As-Built Drawing For Irrigation Network | 2027-05-12 → 2027-04-08 (-34d) | 2027-05-31 → 2027-04-21 (-40d) | -130d → -101d |
| HO-160 | Submission As-Built Drawing For Telecom Network | 2027-06-01 → 2027-04-22 (-40d) | 2027-06-14 → 2027-05-05 (-40d) | -130d → -101d |
| HO-170 | Submission As-Built Drawing For Medium Voltage Network | 2027-06-01 → 2027-04-22 (-40d) | 2027-06-14 → 2027-05-05 (-40d) | -130d → -101d |
| HO-200 | Submission As-Built Drawing For Storm Network | 2027-06-28 → 2027-05-20 (-39d) | 2027-07-11 → 2027-06-02 (-39d) | -153d → -120d |
| HO-130 | Submission As-Built Drawing For Pond | 2027-06-01 → 2027-05-30 (-2d) | 2027-06-14 → 2027-06-12 (-2d) | -130d → -128d |
| HO-210 | Submission As-Built Drawing For Pump station | 2027-06-13 → 2027-06-20 (+7d) | 2027-06-26 → 2027-07-03 (+7d) | -140d → -146d |
| HO-150 | Submission As-Built Drawing For Street Lighting Network | 2027-06-27 → 2027-06-21 (-6d) | 2027-07-10 → 2027-07-05 (-5d) | -152d → -147.5d |
| HO-190 | As-Built Drawing For Potable Water Network | 2027-08-01 → 2027-07-03 (-29d) | 2027-08-14 → 2027-07-15 (-30d) | -182d → -157d |
| HO-100 | Submission As-Built Drawing For Sewage Network | 2027-09-21 → 2027-09-09 (-12d) | 2027-09-30 → 2027-09-18 (-12d) | -216.5d → -206.5d |
| HO-140 | Submission As-Built Drawing For Roads Network | 2027-09-21 → 2027-09-09 (-12d) | 2027-09-28 → 2027-09-15 (-13d) | -219.5d → -209.5d |
| 1 | **De-Mobilization Works** | 2027-09-25 → 2027-09-12 (-13d) | 2027-09-30 → 2027-09-18 (-12d) |  |
| HO-120 | Remove material stock & Storage area | 2027-09-25 → 2027-09-12 (-13d) | 2027-09-30 → 2027-09-18 (-12d) | -214.5d → -204.5d |
| HO-220 | Removing Portable Caravan | 2027-09-25 → 2027-09-12 (-13d) | 2027-09-30 → 2027-09-18 (-12d) | -214.5d → -204.5d |
| HO-230 | Remove Temporary Car Shades | 2027-09-25 → 2027-09-12 (-13d) | 2027-09-30 → 2027-09-18 (-12d) | -214.5d → -204.5d |
| 3 | **Handing Over** | 2027-09-25 → 2027-09-12 (-13d) | 2027-10-06 → 2027-09-25 (-11d) |  |
| HO-110 | Final Testing Work | 2027-09-25 → 2027-09-12 (-13d) | 2027-09-30 → 2027-09-18 (-12d) | -214.5d → -204.5d |
| HO-250 | Review B.O.Q Qty. to ensure compliance with the actual status | 2027-09-28 → 2027-09-15 (-13d) | 2027-10-04 → 2027-09-21 (-13d) | -219.5d → -209.5d |
| HO-260 | Review FIR Approval to ensure compliance with the actual status | 2027-09-28 → 2027-09-15 (-13d) | 2027-10-04 → 2027-09-21 (-13d) | -219.5d → -209.5d |
| HO-270 | Review the sample drawing to ensure compliance with the actual status | 2027-09-28 → 2027-09-15 (-13d) | 2027-10-04 → 2027-09-21 (-13d) | -219.5d → -209.5d |
| HO-240 | Final Walkthrough and Inspection | 2027-10-04 → 2027-09-21 (-13d) | 2027-10-06 → 2027-09-25 (-11d) | -219.5d → -209.5d |
| HO-280 | Punch List Completion | 2027-10-04 → 2027-09-21 (-13d) | 2027-10-06 → 2027-09-25 (-11d) | -219.5d → -209.5d |

## Version 10 (data date 2026-11-24, saved 2026-11-24, file 03.DAM3-02-007-UPS Level 5 -24-11-2026.xer)

Last finish 2027-09-25 → 2027-10-02 (+7d). Complete tasks 1268 → 1289.

Changed:

| ID | Task | Start | Finish | Complete | Total float |
| --- | --- | --- | --- | --- | --- |
| MS | **Key Milestones** |  | 2027-09-25 → 2027-10-02 (+7d) |  |  |
| CM | **Contractual Milestones** |  | 2027-09-25 → 2027-10-02 (+7d) |  |  |
| MS-CF-MV | Completion of Construction Works for Medium Voltage Network | 2027-03-14 → 2027-03-21 (+7d) | 2027-03-14 → 2027-03-21 (+7d) |  | -113d → -119d |
| MS-CF-TE | Completion of Construction Works for Telecom Network | 2027-03-20 → 2027-03-27 (+7d) | 2027-03-20 → 2027-03-27 (+7d) |  | -166d → -172d |
| MS-CF-IR | Completion of Construction Works for Irrigation Network | 2027-04-07 → 2027-04-14 (+7d) | 2027-04-07 → 2027-04-14 (+7d) |  | -134d → -140d |
| MS-CF-SW | Completion of Construction Works for Sewage Network | 2027-04-24 → 2027-04-25 (+1d) | 2027-04-24 → 2027-04-25 (+1d) |  | -139d → -140d |
| MS-CF-SD | Completion of Construction Works for Storm Drainage Network | 2027-05-13 → 2027-05-20 (+7d) | 2027-05-13 → 2027-05-20 (+7d) |  | -127d → -128d |
| MS-CF-SL | Completion of Construction Works for Street Lighting Network | 2027-06-21 → 2027-06-28 (+7d) | 2027-06-21 → 2027-06-28 (+7d) |  | -203.5d → -209.5d |
| MS-CF-PW | Completion of Construction Works for Potable Water Network | 2027-07-01 → 2027-07-08 (+7d) | 2027-07-01 → 2027-07-08 (+7d) |  | -184d → -190d |
| MS-CF-RD | Completion of Construction Works for Road Works | 2027-09-09 → 2027-09-16 (+7d) | 2027-09-09 → 2027-09-16 (+7d) |  | -209.5d → -215.5d |
| MS-CF-PF | Project Completion Date | 2027-09-25 → 2027-10-02 (+7d) | 2027-09-25 → 2027-10-02 (+7d) |  | -209.5d → -215.5d |
| CM1 | **Control Milestones** |  | 2027-01-02 → 2027-01-09 (+7d) |  |  |
| MS-CS-MV | The Employer Approval NOC for Medium Voltage Network | 2027-01-02 → 2027-01-09 (+7d) | 2027-01-02 → 2027-01-09 (+7d) |  | -55d → -61d |
| MM | **Intermediate Milestones** | 2027-05-29 → 2026-12-23 (-157d) | 2027-09-09 → 2027-09-16 (+7d) |  |  |
| MS-MO-20 | Completion of Storm Drainage Ponds | 2027-05-29 → 2026-12-23 (-157d) | 2027-05-29 → 2026-12-23 (-157d) |  | -128d → -3d |
| MS-MO-10 | Completion of Sewage Pump Stations | 2027-06-19 → 2027-06-26 (+7d) | 2027-06-19 → 2027-06-26 (+7d) |  | -146d → -152d |
| MS-MO-30 | Completion of Tie In To Existing Networks | 2027-09-09 → 2027-09-16 (+7d) | 2027-09-09 → 2027-09-16 (+7d) |  | -206.5d → -212.5d |
| PROC | **Procurement Cycle** |  | 2027-02-23 → 2027-03-02 (+7d) |  |  |
| NLL | **Short Lead Time Items** |  | 2027-02-23 → 2027-03-02 (+7d) |  |  |
| INF | **Infrastructure Networks** |  | 2027-02-23 → 2027-03-02 (+7d) |  |  |
| RD | **Road Works** |  | 2027-02-08 → 2027-02-15 (+7d) |  |  |
| 1DL | **1st Material Delivery & Site Inspection** |  | 2026-11-23 → 2026-11-30 (+7d) |  |  |
| 3 | **Traffic Signs Boards and Roads Marking** | 2026-11-17 → 2026-11-24 (+7d) | 2026-11-23 → 2026-11-30 (+7d) |  |  |
| PRO-RD-1DL-160 | 1ST Material Delivery for Traffic Signs Boards of Road Works | 2026-11-17 → 2026-11-24 (+7d) | 2026-11-23 → 2026-11-30 (+7d) |  | -79d → -85d |
| PRO-RD-1DL-170 | 1ST Material Delivery for Road Markings of Road Works | 2026-11-17 → 2026-11-24 (+7d) | 2026-11-23 → 2026-11-30 (+7d) |  | -74d → -80d |
| DL | **Material Delivery & Site Inspection** |  | 2027-02-08 → 2027-02-15 (+7d) |  |  |
| 1 | **Road 18 Local 1 ( 479 LM )** |  | 2026-12-29 → 2027-01-05 (+7d) |  |  |
| 3 | **Traffic Signs Boards and Roads Marking** | 2026-11-24 → 2026-12-01 (+7d) | 2026-12-29 → 2027-01-05 (+7d) |  |  |
| PRO-R18-RD-DL-200 | Material Delivery & Site Inspection of Traffic Signs Boards For Road Works | 2026-11-24 → 2026-12-01 (+7d) | 2026-12-23 → 2026-12-30 (+7d) |  | -79d → -85d |
| PRO-R18-RD-DL-210 | Material Delivery & Site Inspection of Road Markings For Road Works | 2026-11-30 → 2026-12-07 (+7d) | 2026-12-29 → 2027-01-05 (+7d) |  | -79d → -85d |
| 9 | **Road 17 Local 1 ( 500 LM )** |  | 2027-01-04 → 2027-01-11 (+7d) |  |  |
| 3 | **Traffic Signs Boards and Roads Marking** | 2026-11-30 → 2026-12-07 (+7d) | 2027-01-04 → 2027-01-11 (+7d) |  |  |
| PRO-R17-RD-DL-140 | Material Delivery & Site Inspection of Traffic Signs Boards For Road Works | 2026-11-30 → 2026-12-07 (+7d) | 2026-12-29 → 2027-01-05 (+7d) |  | -79d → -85d |
| PRO-R17-RD-DL-150 | Material Delivery & Site Inspection of Road Markings For Road Works | 2026-12-06 → 2026-12-13 (+7d) | 2027-01-04 → 2027-01-11 (+7d) |  | -79d → -85d |
| 8 | **Road 16 Local 1 ( 527 LM )** |  | 2027-01-10 → 2027-01-17 (+7d) |  |  |
| 3 | **Traffic Signs Boards and Roads Marking** | 2026-12-06 → 2026-12-13 (+7d) | 2027-01-10 → 2027-01-17 (+7d) |  |  |
| PRO-R16-RD-DL-140 | Material Delivery & Site Inspection of Traffic Signs Boards For Road Works | 2026-12-06 → 2026-12-13 (+7d) | 2027-01-04 → 2027-01-11 (+7d) |  | -74d → -80d |
| PRO-R16-RD-DL-150 | Material Delivery & Site Inspection of Road Markings For Road Works | 2026-12-12 → 2026-12-19 (+7d) | 2027-01-10 → 2027-01-17 (+7d) |  | -79d → -85d |
| 7 | **Road 15 Local 1 ( 556 LM )** |  | 2027-01-16 → 2027-01-23 (+7d) |  |  |
| 3 | **Traffic Signs Boards and Roads Marking** | 2026-12-12 → 2026-12-19 (+7d) | 2027-01-16 → 2027-01-23 (+7d) |  |  |
| PRO-R15-RD-DL-140 | Material Delivery & Site Inspection of Traffic Signs Boards For Road Works | 2026-12-12 → 2026-12-19 (+7d) | 2027-01-10 → 2027-01-17 (+7d) |  | -74d → -80d |
| PRO-R15-RD-DL-150 | Material Delivery & Site Inspection of Road Markings For Road Works | 2026-12-17 → 2026-12-24 (+7d) | 2027-01-16 → 2027-01-23 (+7d) |  | -79d → -85d |
| 4 | **Road 10 Local 2 ( 2352 LM )** |  | 2027-01-21 → 2027-01-28 (+7d) |  |  |
| 4 | **Bituminous Construction** | 2026-11-17 → 2026-11-24 (+7d) | 2026-12-16 → 2026-12-23 (+7d) |  |  |
| PRO-R10-RD-DL-160 | Material Delivery & Site Inspection for Prime Coat of Road Works | 2026-11-17 → 2026-11-24 (+7d) | 2026-12-16 → 2026-12-23 (+7d) |  | -58d → -64d |
| PRO-R10-RD-DL-170 | Material Delivery & Site Inspection for Bituminous Base & Wearing Courses of Road Works | 2026-11-17 → 2026-11-24 (+7d) | 2026-12-16 → 2026-12-23 (+7d) |  | -55d → -61d |
| 3 | **Traffic Signs Boards and Roads Marking** | 2026-12-17 → 2026-12-24 (+7d) | 2027-01-21 → 2027-01-28 (+7d) |  |  |
| PRO-R10-RD-DL-140 | Material Delivery & Site Inspection of Traffic Signs Boards For Road Works | 2026-12-17 → 2026-12-24 (+7d) | 2027-01-16 → 2027-01-23 (+7d) |  | -74d → -80d |
| PRO-R10-RD-DL-150 | Material Delivery & Site Inspection of Road Markings For Road Works | 2026-12-23 → 2026-12-30 (+7d) | 2027-01-21 → 2027-01-28 (+7d) |  | -79d → -85d |
| 6 | **Road 14 Local 1 ( 584 LM )** |  | 2027-01-27 → 2027-02-03 (+7d) |  |  |
| 3 | **Traffic Signs Boards and Roads Marking** | 2026-12-23 → 2026-12-30 (+7d) | 2027-01-27 → 2027-02-03 (+7d) |  |  |
| PRO-R14-RD-DL-140 | Material Delivery & Site Inspection of Traffic Signs Boards For Road Works | 2026-12-23 → 2026-12-30 (+7d) | 2027-01-21 → 2027-01-28 (+7d) |  | -74d → -80d |
| PRO-R14-RD-DL-150 | Material Delivery & Site Inspection of Road Markings For Road Works | 2026-12-29 → 2027-01-05 (+7d) | 2027-01-27 → 2027-02-03 (+7d) |  | -79d → -85d |
| 2 | **Road 09 Local 2 ( 2278 LM )** |  | 2027-02-02 → 2027-02-09 (+7d) |  |  |
| 4 | **Bituminous Construction** | 2026-11-17 → 2026-11-24 (+7d) | 2026-12-16 → 2026-12-23 (+7d) |  |  |
| PRO-R09-RD-DL-160 | Material Delivery & Site Inspection for Prime Coat of Road Works | 2026-11-17 → 2026-11-24 (+7d) | 2026-12-16 → 2026-12-23 (+7d) |  | -26d → -32d |
| PRO-R09-RD-DL-170 | Material Delivery & Site Inspection for Bituminous Base & Wearing Courses of Road Works | 2026-11-17 → 2026-11-24 (+7d) | 2026-12-16 → 2026-12-23 (+7d) |  | -43d → -49d |
| 3 | **Traffic Signs Boards and Roads Marking** | 2026-12-29 → 2027-01-05 (+7d) | 2027-02-02 → 2027-02-09 (+7d) |  |  |
| PRO-R09-RD-DL-140 | Material Delivery & Site Inspection of Traffic Signs Boards For Road Works | 2026-12-29 → 2027-01-05 (+7d) | 2027-01-27 → 2027-02-03 (+7d) |  | -74d → -80d |
| PRO-R09-RD-DL-150 | Material Delivery & Site Inspection of Road Markings For Road Works | 2027-01-04 → 2027-01-11 (+7d) | 2027-02-02 → 2027-02-09 (+7d) |  | -79d → -85d |
| 5 | **Road 11 Local 1 ( 670 LM )** |  | 2027-02-08 → 2027-02-15 (+7d) |  |  |
| 3 | **Traffic Signs Boards and Roads Marking** | 2027-01-04 → 2027-01-11 (+7d) | 2027-02-08 → 2027-02-15 (+7d) |  |  |
| PRO-R11-RD-DL-140 | Material Delivery & Site Inspection of Traffic Signs Boards For Road Works | 2027-01-04 → 2027-01-11 (+7d) | 2027-02-02 → 2027-02-09 (+7d) |  | -74d → -80d |
| PRO-R11-RD-DL-150 | Material Delivery & Site Inspection of Road Markings For Road Works | 2027-01-10 → 2027-01-17 (+7d) | 2027-02-08 → 2027-02-15 (+7d) |  | -79d → -85d |
| SD | **Storm Drainage Network** |  | 2027-02-14 → 2026-11-29 (-77d) |  |  |
| DL | **Material Delivery & Site Inspection** |  | 2027-02-14 → 2026-11-29 (-77d) |  |  |
| 1 | **Road 18 Local 1 ( 479 LM )** |  | 2026-12-16 → 2026-11-18 (-28d) |  |  |
| 3 | **Testing and Finishes** |  | 2026-12-16 → 2026-11-18 (-28d) |  |  |
| PRO-R18-SD-DL-190 | Material Delivery & Site Inspection of Manholes Covers for Storm Drainage Network | 2026-11-17 A | 2026-12-16 → 2026-11-18 A (-28d) | 0% → 100% | -154d → none |
| 9 | **Road 17 Local 1 ( 500 LM )** |  | 2026-11-22 → 2026-11-29 (+7d) |  |  |

| ID | Task | Start | Finish | Complete | Total float | Predecessors |
| --- | --- | --- | --- | --- | --- | --- |
| 3 | **Testing and Finishes** |  | 2026-11-22 → 2026-11-29 (+7d) |  |  |  |
| PRO-R17-SD-DL-160 | Material Delivery & Site Inspection of Epoxy Insulation for Storm Drainage Network |  | 2026-11-22 → 2026-11-29 (+7d) |  | -6d → -12d |  |
| PRO-R17-SD-DL-140 | Material Delivery & Site Inspection of Manholes Covers for Storm Drainage Network |  | 2026-10-17 A → 2026-11-18 A (+32d) |  |  |  |
| 8 | **Road 16 Local 1 ( 527 LM )** |  | 2027-01-16 → 2026-11-18 (-59d) |  |  |  |
| 3 | **Testing and Finishes** |  | 2027-01-16 → 2026-11-18 (-59d) |  |  |  |
| PRO-R16-SD-DL-140 | Material Delivery & Site Inspection of Manholes Covers for Storm Drainage Network | 2026-12-17 → 2026-11-17 A (-30d) | 2027-01-16 → 2026-11-18 A (-59d) | 0% → 100% | -154d → none |  |
| 7 | **Road 15 Local 1 ( 556 LM )** |  | 2027-01-21 → 2026-11-18 (-64d) |  |  |  |
| 3 | **Testing and Finishes** |  | 2027-01-21 → 2026-11-18 (-64d) |  |  |  |
| PRO-R15-SD-DL-140 | Material Delivery & Site Inspection of Manholes Covers for Storm Drainage Network | 2026-12-23 → 2026-11-17 A (-36d) | 2027-01-21 → 2026-11-18 A (-64d) | 0% → 100% | -154d → none |  |
| 4 | **Road 10 Local 2 ( 2352 LM )** |  | 2027-01-27 → 2026-11-18 (-70d) |  |  |  |
| 3 | **Testing and Finishes** |  | 2027-01-27 → 2026-11-18 (-70d) |  |  |  |
| PRO-R10-SD-DL-140 | Material Delivery & Site Inspection of Manholes Covers for Storm Drainage Network | 2026-12-29 → 2026-11-17 A (-42d) | 2027-01-27 → 2026-11-18 A (-70d) | 0% → 100% | -154d → none |  |
| 6 | **Road 14 Local 1 ( 584 LM )** |  | 2027-02-02 → 2026-11-18 (-76d) |  |  |  |
| 3 | **Testing and Finishes** |  | 2027-02-02 → 2026-11-18 (-76d) |  |  |  |
| PRO-R14-SD-DL-140 | Material Delivery & Site Inspection of Manholes Covers for Storm Drainage Network | 2027-01-04 → 2026-11-17 A (-48d) | 2027-02-02 → 2026-11-18 A (-76d) | 0% → 100% | -154d → none |  |
| 2 | **Road 09 Local 2 ( 2278 LM )** |  | 2027-02-08 → 2026-11-18 (-82d) |  |  |  |
| 3 | **Testing and Finishes** |  | 2027-02-08 → 2026-11-18 (-82d) |  |  |  |
| PRO-R09-SD-DL-140 | Material Delivery & Site Inspection of Manholes Covers for Storm Drainage Network | 2027-01-10 → 2026-11-17 A (-54d) | 2027-02-08 → 2026-11-18 A (-82d) | 0% → 100% | -154d → none |  |
| 5 | **Road 11 Local 1 ( 670 LM )** |  | 2027-02-14 → 2026-11-18 (-88d) |  |  |  |
| 3 | **Testing and Finishes** |  | 2027-02-14 → 2026-11-18 (-88d) |  |  |  |
| PRO-R11-SD-DL-140 | Material Delivery & Site Inspection of Manholes Covers for Storm Drainage Network | 2027-01-16 → 2026-11-17 A (-60d) | 2027-02-14 → 2026-11-18 A (-88d) | 0% → 100% | -55d → none |  |
| PW | **Potable Water Network** |  | 2027-02-02 → 2027-01-31 (-2d) |  |  |  |
| DL | **Material Delivery & Site Inspection** |  | 2027-02-02 → 2027-01-31 (-2d) |  |  |  |
| 1 | **Road 18 Local 1 ( 479 LM )** |  | 2026-12-16 → 2026-11-18 (-28d) |  |  |  |
| 4 | **Testing and Finishes** |  | 2026-12-16 → 2026-11-18 (-28d) |  |  |  |
| PRO-R18-PW-DL-170 | Material Delivery & Site Inspection for Finishes of Potable Water Network | 2026-11-17 A | 2026-12-16 → 2026-11-18 A (-28d) | 0% → 100% | -119d → none |  |
| 9 | **Road 17 Local 1 ( 500 LM )** |  | 2026-12-22 → 2026-12-23 (+1d) |  |  |  |
| 1 | **Main Line Sections** |  | 2026-12-16 → 2026-12-23 (+7d) |  |  |  |
| PRO-R17-PW-DL-110 | Material Delivery & Site Inspection of Valves for Potable Water Network | 2026-11-17 A | 2026-12-16 → 2026-12-23 (+7d) | 0% → 50% | -71d → -69d |  |
| 4 | **Testing and Finishes** | 2026-11-23 → 2026-11-17 (-6d) | 2026-12-22 → 2026-11-18 (-34d) |  |  |  |
| PRO-R17-PW-DL-130 | Material Delivery & Site Inspection for Finishes of Potable Water Network | 2026-11-23 → 2026-11-17 A (-6d) | 2026-12-22 → 2026-11-18 A (-34d) | 0% → 100% | -119d → none |  |
| 8 | **Road 16 Local 1 ( 527 LM )** |  | 2026-12-28 → 2026-12-23 (-5d) |  |  |  |
| 1 | **Main Line Sections** |  | 2026-12-22 → 2026-12-23 (+1d) |  |  |  |
| PRO-R16-PW-DL-110 | Material Delivery & Site Inspection of Valves for Potable Water Network | 2026-11-23 → 2026-11-21 A (-2d) | 2026-12-22 → 2026-12-23 (+1d) | 0% → 50% | -71d → -69d |  |
| 4 | **Testing and Finishes** | 2026-11-29 → 2026-11-17 (-12d) | 2026-12-28 → 2026-11-18 (-40d) |  |  |  |
| PRO-R16-PW-DL-130 | Material Delivery & Site Inspection for Finishes of Potable Water Network | 2026-11-29 → 2026-11-17 A (-12d) | 2026-12-28 → 2026-11-18 A (-40d) | 0% → 100% | -119d → none |  |
| 7 | **Road 15 Local 1 ( 556 LM )** |  | 2027-01-03 → 2026-12-26 (-8d) |  |  |  |
| 1 | **Main Line Sections** |  | 2026-12-28 → 2026-12-26 (-2d) |  |  |  |
| PRO-R15-PW-DL-110 | Material Delivery & Site Inspection of Valves for Potable Water Network | 2026-11-29 → 2026-11-21 A (-8d) | 2026-12-28 → 2026-12-26 (-2d) | 0% → 50% | -71d → -69d |  |
| 4 | **Testing and Finishes** | 2026-12-05 → 2026-11-17 (-18d) | 2027-01-03 → 2026-11-18 (-46d) |  |  |  |
| PRO-R15-PW-DL-130 | Material Delivery & Site Inspection for Finishes of Potable Water Network | 2026-12-05 → 2026-11-17 A (-18d) | 2027-01-03 → 2026-11-18 A (-46d) | 0% → 100% | -119d → none |  |
| 4 | **Road 10 Local 2 ( 2352 LM )** |  | 2027-01-09 → 2026-12-31 (-9d) |  |  |  |
| 1 | **Main Line Sections** |  | 2027-01-03 → 2026-12-31 (-3d) |  |  |  |
| PRO-R10-PW-DL-110 | Material Delivery & Site Inspection of Valves for Potable Water Network |  | 2027-01-03 → 2026-12-31 (-3d) |  | -71d → -69d |  |
| 4 | **Testing and Finishes** | 2026-12-10 → 2026-11-17 (-23d) | 2027-01-09 → 2026-11-18 (-52d) |  |  |  |
| PRO-R10-PW-DL-130 | Material Delivery & Site Inspection for Finishes of Potable Water Network | 2026-12-10 → 2026-11-17 A (-23d) | 2027-01-09 → 2026-11-18 A (-52d) | 0% → 100% | -119d → none |  |
| 3 | **Road 14 Local 1 ( 584 LM )** |  | 2027-01-04 → 2027-01-02 (-2d) |  |  |  |
| 1 | **Main Line Sections** |  | 2027-01-04 → 2027-01-02 (-2d) |  |  |  |
| PRO-R14-PW-DL-110 | Material Delivery & Site Inspection of Valves for Potable Water Network |  | 2027-01-04 → 2027-01-02 (-2d) |  | -71d → -69d |  |
| 4 | **Testing and Finishes** |  | 2025-12-08 → 2026-11-18 (+345d) |  |  |  |
| PRO-R14-PW-DL-130 | Material Delivery & Site Inspection for Finishes of Potable Water Network |  | 2025-12-08 A → 2026-11-18 A (+345d) |  |  |  |
| 2 | **Road 09 Local 2 ( 2278 LM )** |  | 2026-12-16 → 2026-11-18 (-28d) |  |  |  |
| 4 | **Testing and Finishes** |  | 2026-12-16 → 2026-11-18 (-28d) |  |  |  |
| PRO-R09-PW-DL-130 | Material Delivery & Site Inspection for Finishes of Potable Water Network | 2026-11-17 A | 2026-12-16 → 2026-11-18 A (-28d) | 0% → 100% | -92d → none |  |
| 5 | **Road 11 Local 1 ( 670 LM )** |  | 2027-02-02 → 2027-01-31 (-2d) |  |  |  |
| 1 | **Main Line Sections** |  | 2027-02-02 → 2027-01-31 (-2d) |  |  |  |
| PRO-R11-PW-DL-110 | Material Delivery & Site Inspection of Valves for Potable Water Network | 2027-01-04 → 2026-11-21 A (-44d) | 2027-02-02 → 2027-01-31 (-2d) | 0% → 50% | -71d → -69d | PRO-PW-1DL-110, PRO-R09-PW-DL-110 SS+5d, PRO-R14-PW-DL-110 → PRO-PW-1DL-110, PRO-R09-PW-DL-110 SS+5d, PRO-R14-PW-DL-110 SS |
| 4 | **Testing and Finishes** | 2026-11-23 → 2026-11-17 (-6d) | 2026-12-22 → 2026-11-18 (-34d) |  |  |  |
| PRO-R11-PW-DL-130 | Material Delivery & Site Inspection for Finishes of Potable Water Network | 2026-11-23 → 2026-11-17 A (-6d) | 2026-12-22 → 2026-11-18 A (-34d) | 0% → 100% | -92d → none |  |
| IR | **Irrigation Network** |  | 2026-12-24 → 2026-12-15 (-9d) |  |  |  |
| PRO-IR-1DL-110 | 1ST Material Delivery for Valves of Irrigation Network |  | 2026-11-18 A | 50% → 100% | -52d → none |  |
| DL | **Material Delivery & Site Inspection** |  | 2026-12-24 → 2026-12-15 (-9d) |  |  |  |
| 1 | **Road 18 Local 1 ( 479 LM )** |  | 2026-12-07 → 2026-12-12 (+5d) |  |  |  |
| 1 | **Main Line Pipes** |  | 2026-12-07 → 2026-12-12 (+5d) |  |  |  |
| PRO-R18-IR-DL-130 | Material Delivery & Site Inspection of Valves for Irrigation Network | 2026-11-19 A | 2026-12-07 → 2026-12-12 (+5d) | 0% → 50% | -52d → -44d |  |
| PRO-R17-IR-DL-110 | Material Delivery & Site Inspection of Valves for Irrigation Network | 2026-11-25 → 2026-11-19 A (-6d) |  | 0% → 50% | -52d → -44d |  |
| 8 | **Road 16 Local 1 ( 527 LM )** |  | 2026-12-19 → 2026-12-14 (-5d) |  |  |  |
| 1 | **Main Line Pipes** |  | 2026-12-19 → 2026-12-14 (-5d) |  |  |  |
| PRO-R16-IR-DL-110 | Material Delivery & Site Inspection of Valves for Irrigation Network | 2026-12-01 → 2026-11-19 A (-12d) | 2026-12-19 → 2026-12-14 (-5d) | 0% → 50% | -52d → -44d |  |
| 7 | **Road 15 Local 1 ( 556 LM )** |  | 2026-12-24 → 2026-12-15 (-9d) |  |  |  |

| ID | Task | Start | Finish | Complete | Total float |
| --- | --- | --- | --- | --- | --- |
| 1 | **Main Line Pipes** |  | 2026-12-24 → 2026-12-15 (-9d) |  |  |
| PRO-R15-IR-DL-110 | Material Delivery & Site Inspection of Valves for Irrigation Network | 2026-12-07 → 2026-11-19 A (-18d) | 2026-12-24 → 2026-12-15 (-9d) | 0% → 50% | -52d → -44d |
| SL | **Street Lighting Network** |  | 2027-02-23 → 2027-03-02 (+7d) |  |  |
| 1DL | **1st Material Delivery & Site Inspection** |  | 2026-11-23 → 2026-11-18 (-5d) |  |  |
| 4 | **Earthing System Works** |  | 2026-11-23 → 2026-11-18 (-5d) |  |  |
| PRO-SL-1DL-150 | 1ST Material Delivery for Lighting Earthing of Street Lighting Network | 2026-11-17 A | 2026-11-23 → 2026-11-18 A (-5d) | 0% → 100% | -159d → none |
| DL | **Material Delivery & Site Inspection** |  | 2027-02-23 → 2027-03-02 (+7d) |  |  |
| 1 | **Road 18 Local 1 ( 479 LM )** |  | 2026-12-22 → 2026-12-29 (+7d) |  |  |
| 4 | **Termination and Testing Works** | 2026-11-17 → 2026-11-24 (+7d) | 2026-12-22 → 2026-12-29 (+7d) |  |  |
| PRO-R18-SL-DL-210 | Material Delivery & Site Inspection of Fuse Boxes for Street Lighting Network | 2026-11-17 → 2026-11-24 (+7d) | 2026-12-16 → 2026-12-23 (+7d) |  | -185d → -191d |
| PRO-R18-SL-DL-250 | Material Delivery & Site Inspection of Cable Lugs for Street Lighting Network | 2026-11-23 → 2026-11-30 (+7d) | 2026-12-22 → 2026-12-29 (+7d) |  | -166d → -172d |
| 9 | **Road 17 Local 1 ( 500 LM )** |  | 2026-12-28 → 2027-01-04 (+7d) |  |  |
| 4 | **Termination and Testing Works** | 2026-11-23 → 2026-11-30 (+7d) | 2026-12-28 → 2027-01-04 (+7d) |  |  |
| PRO-R17-SL-DL-130 | Material Delivery & Site Inspection of Fuse Boxes for Street Lighting Network | 2026-11-23 → 2026-11-30 (+7d) | 2026-12-22 → 2026-12-29 (+7d) |  | -185d → -191d |
| PRO-R17-SL-DL-170 | Material Delivery & Site Inspection of Cable Lugs for Street Lighting Network | 2026-11-29 → 2026-12-06 (+7d) | 2026-12-28 → 2027-01-04 (+7d) |  | -166d → -172d |
| 8 | **Road 16 Local 1 ( 527 LM )** |  | 2027-01-03 → 2027-01-10 (+7d) |  |  |
| 4 | **Termination and Testing Works** | 2026-11-29 → 2026-12-06 (+7d) | 2027-01-03 → 2027-01-10 (+7d) |  |  |
| PRO-R16-SL-DL-130 | Material Delivery & Site Inspection of Fuse Boxes for Street Lighting Network | 2026-11-29 → 2026-12-06 (+7d) | 2026-12-28 → 2027-01-04 (+7d) |  | -185d → -191d |
| PRO-R16-SL-DL-170 | Material Delivery & Site Inspection of Cable Lugs for Street Lighting Network | 2026-12-05 → 2026-12-12 (+7d) | 2027-01-03 → 2027-01-10 (+7d) |  | -166d → -172d |
| 7 | **Road 15 Local 1 ( 556 LM )** |  | 2027-01-09 → 2027-01-16 (+7d) |  |  |
| 4 | **Termination and Testing Works** | 2026-12-05 → 2026-12-12 (+7d) | 2027-01-09 → 2027-01-16 (+7d) |  |  |
| PRO-R15-SL-DL-130 | Material Delivery & Site Inspection of Fuse Boxes for Street Lighting Network | 2026-12-05 → 2026-12-12 (+7d) | 2027-01-03 → 2027-01-10 (+7d) |  | -185d → -191d |
| PRO-R15-SL-DL-170 | Material Delivery & Site Inspection of Cable Lugs for Street Lighting Network | 2026-12-10 → 2026-12-17 (+7d) | 2027-01-09 → 2027-01-16 (+7d) |  | -166d → -172d |
| 4 | **Road 10 Local 2 ( 2352 LM )** |  | 2027-01-14 → 2027-01-21 (+7d) |  |  |
| 3 | **Distribution Panel Board** |  | 2026-11-19 → 2026-11-26 (+7d) |  |  |
| PRO-R10-SL-DL-160 | Material Delivery & Site Inspection of Distrubution Panel Boards for Street Lighting Network |  | 2026-11-19 → 2026-11-26 (+7d) |  | -115d → -121d |
| 4 | **Termination and Testing Works** |  | 2027-01-14 → 2027-01-21 (+7d) |  |  |
| PRO-R10-SL-DL-130 | Material Delivery & Site Inspection of Fuse Boxes for Street Lighting Network |  | 2027-01-09 → 2027-01-16 (+7d) |  | -185d → -191d |
| PRO-R10-SL-DL-170 | Material Delivery & Site Inspection of Cable Lugs for Street Lighting Network |  | 2027-01-14 → 2027-01-21 (+7d) |  | -166d → -172d |
| 5 | **Earthing System Works** | 2026-11-24 → 2026-11-17 (-7d) | 2026-12-23 → 2026-11-18 (-35d) |  |  |
| PRO-R10-SL-DL-150 | Material Delivery & Site Inspection of Lighting Earthing for Street Lighting Network | 2026-11-24 → 2026-11-17 A (-7d) | 2026-12-23 → 2026-11-18 A (-35d) | 0% → 100% | -159d → none |
| 6 | **Road 14 Local 1 ( 584 LM )** |  | 2027-02-10 → 2027-02-17 (+7d) |  |  |
| 2 | **Lighting Poles Works** |  | 2026-12-16 → 2026-12-23 (+7d) |  |  |
| PRO-R14-SL-DL-140 | Material Delivery & Site Inspection of Lighting Fixtures for Street Lighting Network | 2026-11-17 → 2026-11-24 (+7d) | 2026-12-16 → 2026-12-23 (+7d) |  | -152.5d → -158.5d |
| 4 | **Termination and Testing Works** | 2027-01-06 → 2027-01-13 (+7d) | 2027-02-10 → 2027-02-17 (+7d) |  |  |
| PRO-R14-SL-DL-130 | Material Delivery & Site Inspection of Fuse Boxes for Street Lighting Network | 2027-01-06 → 2027-01-13 (+7d) | 2027-02-04 → 2027-02-11 (+7d) |  | -183.5d → -189.5d |
| PRO-R14-SL-DL-170 | Material Delivery & Site Inspection of Cable Lugs for Street Lighting Network | 2027-01-12 → 2027-01-19 (+7d) | 2027-02-10 → 2027-02-17 (+7d) |  | -166d → -172d |
| 2 | **Road 09 Local 2 ( 2278 LM )** |  | 2027-02-16 → 2027-02-24 (+8d) |  |  |
| 2 | **Lighting Poles Works** |  | 2026-12-22 → 2026-12-29 (+7d) |  |  |
| PRO-R09-SL-DL-140 | Material Delivery & Site Inspection of Lighting Fixtures for Street Lighting Network | 2026-11-23 → 2026-11-30 (+7d) | 2026-12-22 → 2026-12-29 (+7d) |  | -152.5d → -158.5d |
| 4 | **Termination and Testing Works** | 2027-01-12 → 2027-01-19 (+7d) | 2027-02-16 → 2027-02-24 (+8d) |  |  |
| PRO-R09-SL-DL-130 | Material Delivery & Site Inspection of Fuse Boxes for Street Lighting Network | 2027-01-12 → 2027-01-19 (+7d) | 2027-02-10 → 2027-02-17 (+7d) |  | -183.5d → -189.5d |
| PRO-R09-SL-DL-170 | Material Delivery & Site Inspection of Cable Lugs for Street Lighting Network | 2027-01-18 → 2027-01-25 (+7d) | 2027-02-16 → 2027-02-24 (+8d) |  | -166d → -172d |
| 5 | **Earthing System Works** | 2026-11-24 → 2026-11-17 (-7d) | 2026-12-23 → 2026-11-18 (-35d) |  |  |
| PRO-R09-SL-DL-150 | Material Delivery & Site Inspection of Lighting Earthing for Street Lighting Network | 2026-11-24 → 2026-11-17 A (-7d) | 2026-12-23 → 2026-11-18 A (-35d) | 0% → 100% | -129.5d → none |
| 5 | **Road 11 Local 1 ( 670 LM )** |  | 2027-02-23 → 2027-03-02 (+7d) |  |  |
| 2 | **Lighting Poles Works** |  | 2026-12-28 → 2027-01-04 (+7d) |  |  |
| PRO-R11-SL-DL-140 | Material Delivery & Site Inspection of Lighting Fixtures for Street Lighting Network | 2026-11-29 → 2026-12-06 (+7d) | 2026-12-28 → 2027-01-04 (+7d) |  | -83.5d → -89.5d |
| 4 | **Termination and Testing Works** | 2027-01-18 → 2027-01-25 (+7d) | 2027-02-23 → 2027-03-02 (+7d) |  |  |
| PRO-R11-SL-DL-130 | Material Delivery & Site Inspection of Fuse Boxes for Street Lighting Network | 2027-01-18 → 2027-01-25 (+7d) | 2027-02-16 → 2027-02-24 (+8d) |  | -157d → -163d |
| PRO-R11-SL-DL-170 | Material Delivery & Site Inspection of Cable Lugs for Street Lighting Network | 2027-01-24 → 2027-01-31 (+7d) | 2027-02-23 → 2027-03-02 (+7d) |  | -166d → -172d |
| LL | **Long Lead Time Items** |  | 2026-12-03 → 2026-12-10 (+7d) |  |  |
| 1 | **Superstructure Works** |  | 2026-12-03 → 2026-12-10 (+7d) |  |  |
| SL | **Sewage Pump Stations ( PS 06 )** |  | 2026-12-03 → 2026-12-10 (+7d) |  |  |
| 4 | **Material Site Inspection** |  | 2026-12-03 → 2026-12-10 (+7d) |  |  |
| PRO-SPS7-LL-MSI-10 | Material Site Inspection for Electromechanical Works for Sewage Pump Stations ( PS06 ) |  | 2026-12-03 → 2026-12-10 (+7d) |  | -43d → -49d |
| CON | **Construction Works** |  | 2027-09-09 → 2027-09-16 (+7d) |  |  |
| INF | **Infrastructure Networks** |  | 2027-09-09 → 2027-09-16 (+7d) |  |  |
| 1 | **Phase 2 Block "J"** |  | 2027-07-12 → 2027-07-19 (+7d) |  |  |
| SW | **Rising Main Network** |  | 2026-12-06 → 2026-12-13 (+7d) |  |  |
| VC | **Valves Chamber** |  | 2026-12-06 → 2026-12-13 (+7d) |  |  |
| CO-RM-SW-400 | RC Wall Works for Valve Chambers and Washout chamber of Rising Main Network |  | 2026-11-17 → 2026-11-24 (+7d) |  | -24d → -30d |
| CO-RM-SW-410 | RC Slab Works for Valve Chambers and Washout chamber of Rising Main Network | 2026-11-17 → 2026-11-24 (+7d) | 2026-11-24 → 2026-12-01 (+7d) |  | -24d → -30d |
| CO-RM-SW-420 | Insulation Works for Valve Chambers and Washout chamber of Rising Main Network | 2026-11-25 → 2026-12-02 (+7d) | 2026-11-26 → 2026-12-03 (+7d) |  | -24d → -30d |
| CO-RM-SW-430 | Backfilling Works for Valve Chambers and Washout chamber of Rising Main Network | 2026-11-28 → 2026-12-05 (+7d) | 2026-12-02 → 2026-12-09 (+7d) |  | -24d → -30d |
| CO-RM-SW-440 | Testing and Covering Works for Valve Chambers and Washout chamber of Rising Main Network | 2026-12-03 → 2026-12-10 (+7d) | 2026-12-06 → 2026-12-13 (+7d) |  | -24d → -30d |
| 2 | **Road 09 Local 2 ( 2278 LM )** |  | 2027-07-12 → 2027-07-19 (+7d) |  |  |
| SW_1 | **SW_1** |  | 2027-07-05 → 2027-07-12 (+7d) |  |  |
| SD | **Storm Drainage Network** |  | 2026-11-24 → 2026-11-26 (+2d) |  |  |
| MH | **Manholes** |  | 2026-11-24 → 2026-11-21 (-3d) |  |  |

| ID | Task | Start | Finish | Complete | Total float |
| --- | --- | --- | --- | --- | --- |
| CO-R09.S01-SD-210 | Testing Works for Manholes of Storm Drainage Network-[Road 09] -[SW-1] |  | 2026-11-24 → 2026-11-21 A (-3d) | 80% → 100% | 15d → none |
| CB | **Catch Basin Sections** |  | 2026-11-19 → 2026-11-26 (+7d) |  |  |
| CO-R09.S01-SD-160 | Testing Works for Catch Basins of Storm Drainage Network-[Road 09] -[SW-1] |  | 2026-11-19 → 2026-11-26 (+7d) |  | -147d → -153d |
| CO-R09.S01-SD-140 | Trench Excavation and Bedding Works for Catch Basins of Storm Drainage Network-[Road 09] -[SW-1] |  | 2026-11-17 → 2026-11-24 (+7d) |  | -145d → -151d |
| CO-R09.S01-SD-150 | Installation and Pipes Laying Connection Works for Catch Basins of Storm Drainage Network-[Road 09] -[SW-1] |  | 2026-11-17 → 2026-11-24 (+7d) |  | -145d → -151d |
| CO-R09.S01-SD-170 | Trench Backfilling and Compaction Works for Catch Basins of Storm Drainage Network-[Road 09] -[SW-1] |  | 2026-11-19 → 2026-11-26 (+7d) |  | -147d → -153d |
| IR | **Irrigation Network** |  | 2026-11-26 → 2026-12-01 (+5d) |  |  |
| ML | **Main Line Pipes** |  | 2026-11-26 → 2026-12-01 (+5d) |  |  |
| CO-R09.S01-IR-120 | Installation Works for Main Line Valves of Irrigation Network-[Road 09] -[SW-1] | 2026-11-19 → 2026-11-24 (+5d) | 2026-11-26 → 2026-12-01 (+5d) |  | -25d → -29d |
| SL | **Street Lighting Network** | 2026-11-17 → 2026-11-24 (+7d) | 2027-05-25 → 2027-06-01 (+7d) |  |  |
| LP | **Lighting Poles Works** | 2026-11-17 → 2026-11-24 (+7d) | 2027-02-03 → 2027-02-10 (+7d) |  |  |
| CO-R09.S01-SL-100 | Foundation Excavation Works for Lighting Poles of Street Lighting Network-[Road 09] -[SW-1] | 2026-11-17 → 2026-11-24 (+7d) | 2026-11-28 → 2026-12-05 (+7d) |  | -209.5d → -215.5d |
| CO-R09.S01-SL-110 | Installation Works for Lighting Poles Foundation of Street Lighting Network-[Road 09] -[SW-1] | 2026-11-29 → 2026-12-06 (+7d) | 2026-12-12 → 2026-12-19 (+7d) |  | -209.5d → -215.5d |
| CO-R09.S01-SL-120 | Installation Works for Lighting Poles of Street Lighting Network-[Road 09] -[SW-1] | 2027-01-03 → 2027-01-10 (+7d) | 2027-01-14 → 2027-01-21 (+7d) |  | -209.5d → -215.5d |
| CO-R09.S01-SL-210 | Backfilling Works for Lighting Poles of Street Lighting Network-[Road 09] -[SW-1] | 2027-01-16 → 2027-01-23 (+7d) | 2027-01-28 → 2027-02-04 (+7d) |  | -209.5d → -215.5d |
| CO-R09.S01-SL-130 | Installation Works for Lighting Fixtures With Drop Wire of Street Lighting Network-[Road 09] -[SW-1] | 2027-01-21 → 2027-01-28 (+7d) | 2027-02-03 → 2027-02-10 (+7d) |  | -186.5d → -192.5d |
| CO-R09.S01-SL-200 | Testing Works for Lighting Poles of Street Lighting Network-[Road 09] -[SW-1] | 2027-01-30 → 2027-02-06 (+7d) | 2027-02-03 → 2027-02-10 (+7d) |  | -186.5d → -192.5d |
| CW | **Cabling Works** | 2026-11-29 → 2026-12-06 (+7d) | 2027-01-02 → 2027-01-09 (+7d) |  |  |
| CO-R09.S01-SL-140 | Trench Excavation and Bedding Works for Street Lighting Network-[Road 09] -[SW-1] | 2026-11-29 → 2026-12-06 (+7d) | 2026-12-09 → 2026-12-16 (+7d) |  | -209.5d → -215.5d |
| CO-R09.S01-SL-150 | Cable Laying Works for Street Lighting Network-[Road 09] -[SW-1] | 2026-12-10 → 2026-12-17 (+7d) | 2026-12-21 → 2026-12-28 (+7d) |  | -209.5d → -215.5d |
| CO-R09.S01-SL-160 | Trench Backfilling and Compaction Works for Street Lighting Network-[Road 09] -[SW-1] | 2026-12-22 → 2026-12-29 (+7d) | 2027-01-02 → 2027-01-09 (+7d) |  | -209.5d → -215.5d |
| DPB | **Distrubution Panel Boards** | 2027-04-05 → 2027-04-12 (+7d) | 2027-05-25 → 2027-06-01 (+7d) |  |  |
| CO-R09.S01-SL-170 | Foundation Excavation Works For Panel Boards of Street Lighting Network-[Road 09] -[SW-1] | 2027-04-05 → 2027-04-12 (+7d) | 2027-04-21 → 2027-04-28 (+7d) |  | -209.5d → -215.5d |
| CO-R09.S01-SL-180 | Installation Works for Panel Board Concrete Foundations of Street Lighting Network-[Road 09] -[SW-1] | 2027-04-22 → 2027-04-29 (+7d) | 2027-05-05 → 2027-05-12 (+7d) |  | -209.5d → -215.5d |
| CO-R09.S01-SL-190 | Installation Works for Lighting Panel Boards of Street Lighting Network-[Road 09] -[SW-1] | 2027-05-06 → 2027-05-13 (+7d) | 2027-05-25 → 2027-06-01 (+7d) |  | -209.5d → -215.5d |
| CO-R09.S01-SL-220 | A wall of concrete blocks to install the KWH meter of Street Lighting Network-[Road 09] -[SW-1] | 2027-05-06 → 2027-05-13 (+7d) | 2027-05-25 → 2027-06-01 (+7d) |  | -209.5d → -215.5d |
| MV | **Medium Voltage Network** |  | 2027-01-02 → 2027-01-09 (+7d) |  |  |
| CW | **Cabling Works** |  | 2027-01-02 → 2027-01-09 (+7d) |  |  |
| CO-R09.S01-MV-100 | Trench Excavation and Bedding Works for Medium Voltage Network-[Road 09] -[SW-1] |  | 2027-01-02 → 2027-01-09 (+7d) |  | -181d → -187d |
| CO-R09.S01-MV-110 | Cable Laying Works for Medium Voltage Network-[Road 09] -[SW-1] |  | 2027-01-02 → 2027-01-09 (+7d) |  | -181d → -187d |
| CO-R09.S01-MV-120 | Trench Backfilling and Compaction Works for Medium Voltage Network-[Road 09] -[SW-1] |  | 2027-01-02 → 2027-01-09 (+7d) |  | -181d → -187d |
| TE | **Telecom Network** | 2027-01-06 → 2027-01-13 (+7d) | 2027-02-18 → 2027-02-27 (+9d) |  |  |
| PD | **Ducts Works** | 2027-01-06 → 2027-01-13 (+7d) | 2027-01-19 → 2027-01-26 (+7d) |  |  |
| CO-R09.S01-TE-100 | Trench Excavation and Bedding Works for Ducts of Telecom Network-[Road 09] -[SW-1] | 2027-01-06 → 2027-01-13 (+7d) | 2027-01-07 → 2027-01-14 (+7d) |  | -184d → -190d |
| CO-R09.S01-TE-110 | Pipes Laying Works for Ducts of Telecom Network-[Road 09] -[SW-1] | 2027-01-09 → 2027-01-16 (+7d) | 2027-01-12 → 2027-01-19 (+7d) |  | -170d → -176d |
| CO-R09.S01-TE-120 | Pouring Plain Concrete Above Ducts of Telecom Network-[Road 09] -[SW-1] | 2027-01-13 → 2027-01-20 (+7d) | 2027-01-14 → 2027-01-21 (+7d) |  | -170d → -176d |
| CO-R09.S01-TE-130 | Trench Backfilling and Compaction Works for Ducts of Telecom Network-[Road 09] -[SW-1] | 2027-01-16 → 2027-01-23 (+7d) | 2027-01-19 → 2027-01-26 (+7d) |  | -170d → -176d |
| MH | **Manholes Works** | 2027-01-09 → 2027-01-16 (+7d) | 2027-02-18 → 2027-02-27 (+9d) |  |  |
| CO-R09.S01-TE-140 | Excavation Works for Manholes of Telecom Network-[Road 09] -[SW-1] | 2027-01-09 → 2027-01-16 (+7d) | 2027-01-21 → 2027-01-28 (+7d) |  | -184d → -190d |
| CO-R09.S01-TE-150 | Installation Works for Manholes of Telecom Network-[Road 09] -[SW-1] | 2027-01-23 → 2027-01-30 (+7d) | 2027-02-04 → 2027-02-11 (+7d) |  | -184d → -190d |
| CO-R09.S01-TE-160 | Backfilling Works for Manholes of Telecom Network-[Road 09] -[SW-1] | 2027-02-06 → 2027-02-13 (+7d) | 2027-02-18 → 2027-02-27 (+9d) |  | -184d → -190d |
| RD | **Road Works** |  | 2027-07-05 → 2027-07-12 (+7d) |  |  |
| RD | **Pre-Bituminous Construction** |  | 2027-02-28 → 2027-03-07 (+7d) |  |  |
| CO-R09.S01-RD-P-100 | Capping and Subgrade Layer for Road Works-[Road 09] -[SW-1] |  | 2027-02-18 → 2027-02-27 (+9d) |  | -163d → -169d |
| CO-R09.S01-RD-P-110 | Aggregate Base Course Layer for Road Works-[Road 09] -[SW-1] |  | 2027-02-28 → 2027-03-07 (+7d) |  | -52d → -58d |
| LS | **Pavement Works** |  | 2027-07-05 → 2027-07-12 (+7d) |  |  |
| CO-R09.S01-RD-P-130 | Fixing of Interlock Tiles for Sidewalks Pavement-[Road 09] -[SW-1] | 2027-06-21 → 2027-06-28 (+7d) | 2027-07-05 → 2027-07-12 (+7d) |  | -203.5d → -209.5d |
| SW_2 | **SW_2** |  | 2027-07-12 → 2027-07-19 (+7d) |  |  |
| SW | **Sewage Network** |  | 2026-11-17 → 2026-11-24 (+7d) |  |  |
| ML | **Main Line Sections** |  | 2026-11-17 → 2026-11-24 (+7d) |  |  |
| CO-R09.S02-SW-100 | Trench Excavation and Bedding Works for Main Lines of Sewage Network-[Road 09]-[SW-2] |  | 2026-11-17 → 2026-11-24 (+7d) |  | -190.5d → -196.5d |
| CO-R09.S02-SW-120 | Pipes Laying Works for Main Lines of Sewage Network-[Road 09]-[SW-2] |  | 2026-11-17 → 2026-11-24 (+7d) |  | -190.5d → -196.5d |
| CO-R09.S02-SW-130 | Trench Backfilling and Compaction Works for Main Lines of Sewage Network-[Road 09]-[SW-2] |  | 2026-11-17 → 2026-11-24 (+7d) |  | -190.5d → -196.5d |
| MH | **Manholes** |  | 2026-11-17 → 2026-11-24 (+7d) |  |  |
| CO-R09.S02-SW-210 | Testing Works for Main Line Manholes of Sewage Network-[Road 09]-[SW-2] |  | 2026-11-17 → 2026-11-24 (+7d) |  | -190.5d → -196.5d |
| SD | **Storm Drainage Network** |  | 2026-12-03 → 2026-12-10 (+7d) |  |  |
| MH | **Manholes** |  | 2026-12-03 → 2026-12-10 (+7d) |  |  |
| CO-R09.S02-SD-220 | Backfilling Works for Manholes of Storm Drainage Network-[Road 09]-[SW-2] |  | 2026-12-03 → 2026-12-10 (+7d) |  | 5d → -1d |
| CO-R09.S02-SD-210 | Testing Works for Manholes of Storm Drainage Network-[Road 09]-[SW-2] |  | 2026-12-02 → 2026-12-09 (+7d) |  | 5d → -1d |
| CB | **Catch Basin Sections** |  | 2026-12-03 → 2026-12-10 (+7d) |  |  |
| CO-R09.S02-SD-140 | Trench Excavation and Bedding Works for Catch Basins of Storm Drainage Network-[Road 09]-[SW-2] |  | 2026-12-03 → 2026-12-10 (+7d) |  | 5d → -1d |
| CO-R09.S02-SD-150 | Installation and Pipes Laying Connection Works for Catch Basins of Storm Drainage Network-[Road 09]-[SW-2] |  | 2026-12-02 → 2026-12-09 (+7d) |  | 5d → -1d |
| CO-R09.S02-SD-170 | Trench Backfilling and Compaction Works for Catch Basins of Storm Drainage Network-[Road 09]-[SW-2] |  | 2026-12-02 → 2026-12-09 (+7d) |  | 5d → -1d |
| CO-R09.S02-SD-160 | Testing Works for Catch Basins of Storm Drainage Network-[Road 09]-[SW-2] |  | 2026-12-02 → 2026-12-09 (+7d) |  | 5d → -1d |
| PW | **Potable Water Network** |  | 2026-12-06 → 2026-12-13 (+7d) |  |  |
| ML | **Main Line Sections** |  | 2026-12-06 → 2026-12-13 (+7d) |  |  |
| CO-R09.S02-PW-100 | Trench Excavation and Bedding Works for Main Lines of Potable Water Network-[Road 09]-[SW-2] |  | 2026-11-17 → 2026-11-24 (+7d) | 95% → 98% | -190.5d → -196.5d |
| CO-R09.S02-PW-110 | Pipes Laying and accessories for Main Lines of Potable Water Network-[Road 09]-[SW-2] |  | 2026-11-22 → 2026-11-29 (+7d) | 95% → 98% | -178.5d → -184.5d |
| CO-R09.S02-PW-130 | Trench Backfilling and Compaction Works for Main Lines of Potable Water Network-[Road 09]-[SW-2] |  | 2026-12-06 → 2026-12-13 (+7d) | 95% → 98% | -190.5d → -196.5d |
| VC | **Valve Chamber** | 2026-11-18 → 2026-11-25 (+7d) | 2026-11-24 → 2026-12-01 (+7d) |  |  |

| ID | Task | Start | Finish | Complete | Total float |
| --- | --- | --- | --- | --- | --- |
| CO-R09.S02-PW-210 | Installation Works for Main Line Valves and Valve Chambers of Potable Water Network-[Road 09]-[SW-2] | 2026-11-18 → 2026-11-25 (+7d) | 2026-11-24 → 2026-12-01 (+7d) |  | -180.5d → -186.5d |
| FH | **Fire Hydrant** | 2026-11-18 → 2026-11-25 (+7d) | 2026-12-06 → 2026-12-13 (+7d) |  |  |
| CO-R09.S02-PW-140 | Excavation Works for Fire Hydrants of Potable Water Network-[Road 09]-[SW-2] | 2026-11-18 → 2026-11-25 (+7d) | 2026-11-23 → 2026-11-30 (+7d) |  | -190.5d → -196.5d |
| CO-R09.S02-PW-150 | Installation Works for Fire Hydrant of Potable Water Network-[Road 09]-[SW-2] | 2026-11-24 → 2026-12-01 (+7d) | 2026-11-30 → 2026-12-07 (+7d) |  | -190.5d → -196.5d |
| CO-R09.S02-PW-160 | Trench Backfilling and Compaction Works for Fire Hydrants of Potable Water Network-[Road 09]-[SW-2] | 2026-12-01 → 2026-12-08 (+7d) | 2026-12-06 → 2026-12-13 (+7d) |  | -190.5d → -196.5d |
| SL | **Street Lighting Network** | 2026-12-07 → 2026-12-14 (+7d) | 2027-06-06 → 2027-06-13 (+7d) |  |  |
| LP | **Lighting Poles Works** | 2026-12-07 → 2026-12-14 (+7d) | 2027-03-03 → 2027-03-14 (+11d) |  |  |
| CO-R09.S02-SL-100 | Foundation Excavation Works for Lighting Poles of Street Lighting Network-[Road 09]-[SW-2] | 2026-12-07 → 2026-12-14 (+7d) | 2026-12-16 → 2026-12-23 (+7d) |  | -190.5d → -196.5d |
| CO-R09.S02-SL-110 | Installation Works for Lighting Poles Foundation of Street Lighting Network-[Road 09]-[SW-2] | 2026-12-17 → 2026-12-24 (+7d) | 2026-12-27 → 2027-01-03 (+7d) |  | -190.5d → -196.5d |
| CO-R09.S02-SL-120 | Installation Works for Lighting Poles of Street Lighting Network-[Road 09]-[SW-2] | 2026-12-28 → 2027-01-04 (+7d) | 2027-01-06 → 2027-01-13 (+7d) |  | -190.5d → -196.5d |
| CO-R09.S02-SL-210 | Backfilling Works for Lighting Poles of Street Lighting Network-[Road 09]-[SW-2] | 2027-01-30 → 2027-02-06 (+7d) | 2027-02-21 → 2027-03-01 (+8d) |  | -209.5d → -215.5d |
| CO-R09.S02-SL-130 | Installation Works for Lighting Fixtures With Drop Wire of Street Lighting Network-[Road 09]-[SW-2] | 2027-02-11 → 2027-02-18 (+7d) | 2027-03-03 → 2027-03-14 (+11d) |  | -209.5d → -215.5d |
| CO-R09.S02-SL-200 | Testing Works for Lighting Poles of Street Lighting Network-[Road 09]-[SW-2] | 2027-02-23 → 2027-03-02 (+7d) | 2027-03-03 → 2027-03-14 (+11d) |  | -209.5d → -215.5d |
| CW | **Cabling Works** | 2027-01-07 → 2027-01-14 (+7d) | 2027-02-10 → 2027-02-17 (+7d) |  |  |
| CO-R09.S02-SL-140 | Trench Excavation and Bedding Works for Street Lighting Network-[Road 09]-[SW-2] | 2027-01-07 → 2027-01-14 (+7d) | 2027-01-18 → 2027-01-25 (+7d) |  | -159d → -165d |
| CO-R09.S02-SL-150 | Cable Laying Works for Street Lighting Network-[Road 09]-[SW-2] | 2027-01-19 → 2027-01-26 (+7d) | 2027-01-30 → 2027-02-06 (+7d) |  | -159d → -165d |
| CO-R09.S02-SL-160 | Trench Backfilling and Compaction Works for Street Lighting Network-[Road 09]-[SW-2] | 2027-01-31 → 2027-02-07 (+7d) | 2027-02-10 → 2027-02-17 (+7d) |  | -159d → -165d |
| DPB | **Distrubution Panel Boards** | 2027-04-05 → 2027-04-12 (+7d) | 2027-06-06 → 2027-06-13 (+7d) |  |  |
| CO-R09.S02-SL-170 | Foundation Excavation Works For Panel Boards of Street Lighting Network-[Road 09]-[SW-2] | 2027-04-05 → 2027-04-12 (+7d) | 2027-04-15 → 2027-04-22 (+7d) |  | -190.25d → -196.25d |
| CO-R09.S02-SL-180 | Installation Works for Panel Board Concrete Foundations of Street Lighting Network-[Road 09]-[SW-2] | 2027-04-17 → 2027-04-24 (+7d) | 2027-04-27 → 2027-05-04 (+7d) |  | -190.25d → -196.25d |
| CO-R09.S02-SL-190 | Installation Works for Lighting Panel Boards of Street Lighting Network-[Road 09]-[SW-2] | 2027-04-28 → 2027-05-05 (+7d) | 2027-05-09 → 2027-05-22 (+13d) |  | -190.25d → -196.25d |
| CO-R09.S02-SL-220 | A wall of concrete blocks to install the KWH meter of Street Lighting Network-[Road 09]-[SW-2] | 2027-05-10 → 2027-05-23 (+13d) | 2027-06-06 → 2027-06-13 (+7d) |  | -190.25d → -196.25d |
| TE | **Telecom Network** | 2027-01-20 → 2027-01-27 (+7d) | 2027-03-20 → 2027-03-27 (+7d) |  |  |
| PD | **Ducts Works** | 2027-01-20 → 2027-01-27 (+7d) | 2027-02-16 → 2027-02-24 (+8d) |  |  |
| CO-R09.S02-TE-100 | Trench Excavation and Bedding Works for Ducts of Telecom Network-[Road 09]-[SW-2] | 2027-01-20 → 2027-01-27 (+7d) | 2027-01-23 → 2027-01-30 (+7d) |  | -161d → -167d |
| CO-R09.S02-TE-110 | Pipes Laying Works for Ducts of Telecom Network-[Road 09]-[SW-2] | 2027-01-24 → 2027-01-31 (+7d) | 2027-01-31 → 2027-02-07 (+7d) |  | -161d → -167d |
| CO-R09.S02-TE-120 | Pouring Plain Concrete Above Ducts of Telecom Network-[Road 09]-[SW-2] | 2027-02-01 → 2027-02-08 (+7d) | 2027-02-08 → 2027-02-15 (+7d) |  | -161d → -167d |
| CO-R09.S02-TE-130 | Trench Backfilling and Compaction Works for Ducts of Telecom Network-[Road 09]-[SW-2] | 2027-02-09 → 2027-02-16 (+7d) | 2027-02-16 → 2027-02-24 (+8d) |  | -161d → -167d |
| MH | **Manholes Works** | 2027-02-20 → 2027-02-28 (+8d) | 2027-03-20 → 2027-03-27 (+7d) |  |  |
| CO-R09.S02-TE-140 | Excavation Works for Manholes of Telecom Network-[Road 09]-[SW-2] | 2027-02-20 → 2027-02-28 (+8d) | 2027-02-28 → 2027-03-07 (+7d) |  | -184d → -190d |
| CO-R09.S02-TE-150 | Installation Works for Manholes of Telecom Network-[Road 09]-[SW-2] | 2027-03-01 → 2027-03-08 (+7d) | 2027-03-08 → 2027-03-18 (+10d) |  | -184d → -190d |
| CO-R09.S02-TE-160 | Backfilling Works for Manholes of Telecom Network-[Road 09]-[SW-2] | 2027-03-13 → 2027-03-20 (+7d) | 2027-03-20 → 2027-03-27 (+7d) |  | -184d → -190d |
| RD | **Road Works** |  | 2027-07-12 → 2027-07-19 (+7d) |  |  |
| RD | **Pre-Bituminous Construction** |  | 2027-03-24 → 2027-03-31 (+7d) |  |  |
| CO-R09.S02-RD-P-100 | Capping and Subgrade Layer for Road Works-[Road 09]-[SW-2] |  | 2027-03-20 → 2027-03-27 (+7d) |  | -184d → -190d |
| CO-R09.S02-RD-P-110 | Aggregate Base Course Layer for Road Works-[Road 09]-[SW-2] | 2027-03-01 → 2027-03-08 (+7d) | 2027-03-24 → 2027-03-31 (+7d) |  | -70d → -76d |
| LS | **Pavement Works** |  | 2027-07-12 → 2027-07-19 (+7d) |  |  |
| CO-R09.S02-RD-P-130 | Fixing of Interlock Tiles for Sidewalks Pavement-[Road 09]-[SW-2] | 2027-06-21 → 2027-06-28 (+7d) | 2027-07-12 → 2027-07-19 (+7d) |  | -209.5d → -215.5d |
| 4 | **Road 10 Local 2 ( 2352 LM )** |  | 2027-05-01 → 2027-05-08 (+7d) |  |  |
| 1 | **SW-3** |  | 2027-04-28 → 2027-05-05 (+7d) |  |  |
| SW_3 | **SW_3-East** |  | 2027-04-28 → 2027-05-05 (+7d) |  |  |
| PW | **Potable Water Network** |  | 2026-12-03 → 2026-12-10 (+7d) |  |  |
| FH | **Fire Hydrant** | 2026-11-17 → 2026-11-24 (+7d) | 2026-12-03 → 2026-12-10 (+7d) |  |  |
| CO-R10.S03-ES-PW-140 | Excavation Works for Fire Hydrants of Potable Water Network-[Road 10]-[SW-3] | 2026-11-17 → 2026-11-24 (+7d) | 2026-11-23 → 2026-11-30 (+7d) |  | -100d → -106d |
| CO-R10.S03-ES-PW-150 | Installation Works for Fire Hydrant of Potable Water Network-[Road 10]-[SW-3] | 2026-11-24 → 2026-12-01 (+7d) | 2026-11-30 → 2026-12-07 (+7d) |  | -100d → -106d |
| CO-R10.S03-ES-PW-160 | Trench Backfilling and Compaction Works for Fire Hydrants of Potable Water Network-[Road 10]-[SW-3] | 2026-11-28 → 2026-12-05 (+7d) | 2026-12-03 → 2026-12-10 (+7d) |  | -100d → -106d |
| IR | **Irrigation Network** |  | 2026-11-18 → 2026-11-25 (+7d) |  |  |
| ML | **Main Line Pipes** |  | 2026-11-18 → 2026-11-25 (+7d) |  |  |
| CO-R10.S03-ES-IR-120 | Installation Works for Main Line Valves of Irrigation Network-[Road 10]-[SW-3] | 2026-11-17 A | 2026-11-18 → 2026-11-25 (+7d) | 0% → 10% | -18d → -24d |
| SL | **Street Lighting Network** |  | 2027-02-20 → 2027-02-28 (+8d) |  |  |
| LP | **Lighting Poles Works** |  | 2026-12-20 → 2026-12-26 (+6d) |  |  |
| CO-R10.S03-ES-SL-100 | Foundation Excavation Works for Lighting Poles of Street Lighting Network-[Road 10]-[SW-3] |  | 2026-11-30 → 2026-12-07 (+7d) | 40% → 70% | -185.5d → -190.5d |
| CO-R10.S03-ES-SL-110 | Installation Works for Lighting Poles Foundation of Street Lighting Network-[Road 10]-[SW-3] |  | 2026-12-06 → 2026-12-13 (+7d) | 40% → 70% | -185.5d → -190.5d |
| CO-R10.S03-ES-SL-210 | Backfilling Works for Lighting Poles of Street Lighting Network-[Road 10]-[SW-3] |  | 2026-12-14 → 2026-12-20 (+6d) | 40% → 70% | -185.5d → -190.5d |
| CO-R10.S03-ES-SL-120 | Installation Works for Lighting Poles of Street Lighting Network-[Road 10]-[SW-3] | 2026-11-24 → 2026-11-30 (+6d) | 2026-12-14 → 2026-12-20 (+6d) |  | -185.5d → -190.5d |
| CO-R10.S03-ES-SL-130 | Installation Works for Lighting Fixtures With Drop Wire of Street Lighting Network-[Road 10]-[SW-3] | 2026-11-30 → 2026-12-06 (+6d) | 2026-12-20 → 2026-12-26 (+6d) |  | -177d → -182d |
| CO-R10.S03-ES-SL-200 | Testing Works for Lighting Poles of Street Lighting Network-[Road 10]-[SW-3] | 2026-12-15 → 2026-12-21 (+6d) | 2026-12-20 → 2026-12-26 (+6d) |  | -177d → -182d |
| CW | **Cabling Works** |  | 2026-12-14 → 2026-12-20 (+6d) |  |  |
| CO-R10.S03-ES-SL-140 | Trench Excavation and Bedding Works for Street Lighting Network-[Road 10]-[SW-3] |  | 2026-12-14 → 2026-12-20 (+6d) | 0% → 70% | -172d → -177d |
| CO-R10.S03-ES-SL-150 | Cable Laying Works for Street Lighting Network-[Road 10]-[SW-3] |  | 2026-12-14 → 2026-12-20 (+6d) | 0% → 70% | -172d → -177d |
| CO-R10.S03-ES-SL-160 | Trench Backfilling and Compaction Works for Street Lighting Network-[Road 10]-[SW-3] |  | 2026-12-14 → 2026-12-20 (+6d) | 0% → 70% | -172d → -177d |
| DPB | **Distrubution Panel Boards** | 2027-01-27 → 2027-02-03 (+7d) | 2027-02-20 → 2027-02-28 (+8d) |  |  |
| CO-R10.S03-ES-SL-170 | Foundation Excavation Works For Panel Boards of Street Lighting Network-[Road 10]-[SW-3] | 2027-01-27 → 2027-02-03 (+7d) | 2027-02-09 → 2027-02-16 (+7d) |  | -185d → -191d |
| CO-R10.S03-ES-SL-180 | Installation Works for Panel Board Concrete Foundations of Street Lighting Network-[Road 10]-[SW-3] | 2027-02-03 → 2027-02-10 (+7d) | 2027-02-16 → 2027-02-24 (+8d) |  | -185d → -191d |
| CO-R10.S03-ES-SL-220 | A wall of concrete blocks to install the KWH meter of Street Lighting Network-[Road 10]-[SW-3] | 2027-02-03 → 2027-02-10 (+7d) | 2027-02-16 → 2027-02-24 (+8d) |  | -182d → -188d |
| CO-R10.S03-ES-SL-190 | Installation Works for Lighting Panel Boards of Street Lighting Network-[Road 10]-[SW-3] | 2027-02-07 → 2027-02-14 (+7d) | 2027-02-20 → 2027-02-28 (+8d) |  | -185d → -191d |
| TE | **Telecom Network** | 2026-12-03 → 2026-12-09 (+6d) | 2027-01-04 → 2027-01-10 (+6d) |  |  |
| PD | **Ducts Works** | 2026-12-03 → 2026-12-09 (+6d) | 2027-01-04 → 2027-01-10 (+6d) |  |  |
| CO-R10.S03-ES-TE-100 | Trench Excavation and Bedding Works for Ducts of Telecom Network-[Road 10]-[SW-3] | 2026-12-03 → 2026-12-09 (+6d) | 2026-12-10 → 2026-12-16 (+6d) |  | -169d → -174d |
| CO-R10.S03-ES-TE-110 | Pipes Laying Works for Ducts of Telecom Network-[Road 10]-[SW-3] | 2026-12-12 → 2026-12-17 (+5d) | 2026-12-19 → 2026-12-24 (+5d) |  | -127d → -132d |

| ID | Task | Start | Finish | Complete | Total float |
| --- | --- | --- | --- | --- | --- |
| CO-R10.S03-ES-TE-120 | Pouring Plain Concrete Above Ducts of Telecom Network-[Road 10]-[SW-3] | 2026-12-20 → 2026-12-26 (+6d) | 2026-12-27 → 2027-01-02 (+6d) |  | -127d → -132d |
| CO-R10.S03-ES-TE-130 | Trench Backfilling and Compaction Works for Ducts of Telecom Network-[Road 10]-[SW-3] | 2026-12-28 → 2027-01-03 (+6d) | 2027-01-04 → 2027-01-10 (+6d) |  | -127d → -132d |
| MH | **Manholes Works** | 2026-12-12 → 2026-12-17 (+5d) | 2027-01-04 → 2027-01-10 (+6d) |  |  |
| CO-R10.S03-ES-TE-140 | Excavation Works for Manholes of Telecom Network-[Road 10]-[SW-3] | 2026-12-12 → 2026-12-17 (+5d) | 2026-12-19 → 2026-12-24 (+5d) |  | -138d → -139d |
| CO-R10.S03-ES-TE-150 | Installation Works for Manholes of Telecom Network-[Road 10]-[SW-3] | 2026-12-20 → 2026-12-26 (+6d) | 2026-12-27 → 2027-01-02 (+6d) |  | -127d → -132d |
| CO-R10.S03-ES-TE-160 | Backfilling Works for Manholes of Telecom Network-[Road 10]-[SW-3] | 2026-12-28 → 2027-01-03 (+6d) | 2027-01-04 → 2027-01-10 (+6d) |  | -127d → -132d |
| RD | **Road Works** |  | 2027-04-28 → 2027-05-05 (+7d) |  |  |
| RD | **Pre-Bituminous Construction** |  | 2027-01-09 → 2027-01-14 (+5d) |  |  |
| CO-R10.S03-ES-RD-100 | Capping and Subgrade Layer for Road Works-[Road 10]-[SW-3] |  | 2027-01-04 → 2027-01-10 (+6d) | 90% → 98% | -127d → -132d |
| CO-R10.S03-ES-RD-110 | Aggregate Base Course Layer for Road Works-[Road 10]-[SW-3] |  | 2027-01-09 → 2027-01-14 (+5d) | 45% → 60% | -10d → -15d |
| LS | **Pavement Works** |  | 2027-04-28 → 2027-05-05 (+7d) |  |  |
| CO-R10.S03-ES-RD-130 | Fixing of Interlock Tiles for Sidewalks Pavement-[Road 10]-[SW-3] | 2027-04-18 → 2027-04-25 (+7d) | 2027-04-28 → 2027-05-05 (+7d) |  | -177d → -183d |
| SW_31 | **SW_3-West** |  | 2027-04-28 → 2027-05-05 (+7d) |  |  |
| PW | **Potable Water Network** |  | 2026-12-03 → 2026-12-10 (+7d) |  |  |
| FH | **Fire Hydrant** | 2026-11-17 → 2026-11-24 (+7d) | 2026-12-03 → 2026-12-10 (+7d) |  |  |
| CO-R10.S03-WE-PW-140 | Excavation Works for Fire Hydrants of Potable Water Network-[Road 10]-[SW-3] | 2026-11-17 → 2026-11-24 (+7d) | 2026-11-23 → 2026-11-30 (+7d) |  | -100d → -106d |
| CO-R10.S03-WE-PW-150 | Installation Works for Fire Hydrant of Potable Water Network-[Road 10]-[SW-3] | 2026-11-24 → 2026-12-01 (+7d) | 2026-11-30 → 2026-12-07 (+7d) |  | -100d → -106d |
| CO-R10.S03-WE-PW-160 | Trench Backfilling and Compaction Works for Fire Hydrants of Potable Water Network-[Road 10]-[SW-3] | 2026-11-28 → 2026-12-05 (+7d) | 2026-12-03 → 2026-12-10 (+7d) |  | -100d → -106d |
| IR | **Irrigation Network** |  | 2026-11-18 → 2026-11-25 (+7d) |  |  |
| ML | **Main Line Pipes** |  | 2026-11-18 → 2026-11-25 (+7d) |  |  |
| CO-R10.S03-WE-IR-120 | Installation Works for Main Line Valves of Irrigation Network-[Road 10]-[SW-3] | 2026-11-17 → 2026-11-24 (+7d) | 2026-11-18 → 2026-11-25 (+7d) |  | -18d → -24d |
| SL | **Street Lighting Network** |  | 2027-02-20 → 2027-02-28 (+8d) |  |  |
| LP | **Lighting Poles Works** |  | 2026-12-19 → 2026-12-26 (+7d) |  |  |
| CO-R10.S03-WE-SL-100 | Foundation Excavation Works for Lighting Poles of Street Lighting Network-[Road 10]-[SW-3] |  | 2026-11-30 → 2026-12-07 (+7d) | 40% → 70% | -176d → -182d |
| CO-R10.S03-WE-SL-110 | Installation Works for Lighting Poles Foundation of Street Lighting Network-[Road 10]-[SW-3] |  | 2026-12-06 → 2026-12-13 (+7d) | 40% → 70% | -176d → -182d |
| CO-R10.S03-WE-SL-210 | Backfilling Works for Lighting Poles of Street Lighting Network-[Road 10]-[SW-3] |  | 2026-12-13 → 2026-12-20 (+7d) | 40% → 70% | -176d → -182d |
| CO-R10.S03-WE-SL-120 | Installation Works for Lighting Poles of Street Lighting Network-[Road 10]-[SW-3] | 2026-11-23 → 2026-11-30 (+7d) | 2026-12-13 → 2026-12-20 (+7d) |  | -176d → -182d |
| CO-R10.S03-WE-SL-130 | Installation Works for Lighting Fixtures With Drop Wire of Street Lighting Network-[Road 10]-[SW-3] | 2026-11-29 → 2026-12-06 (+7d) | 2026-12-19 → 2026-12-26 (+7d) |  | -176d → -182d |
| CO-R10.S03-WE-SL-200 | Testing Works for Lighting Poles of Street Lighting Network-[Road 10]-[SW-3] | 2026-12-14 → 2026-12-21 (+7d) | 2026-12-19 → 2026-12-26 (+7d) |  | -176d → -182d |
| CW | **Cabling Works** |  | 2026-12-13 → 2026-12-20 (+7d) |  |  |
| CO-R10.S03-WE-SL-140 | Trench Excavation and Bedding Works for Street Lighting Network-[Road 10]-[SW-3] |  | 2026-12-13 → 2026-12-20 (+7d) | 40% → 70% | -171d → -177d |
| CO-R10.S03-WE-SL-160 | Trench Backfilling and Compaction Works for Street Lighting Network-[Road 10]-[SW-3] |  | 2026-12-13 → 2026-12-20 (+7d) | 40% → 70% | -171d → -177d |
| CO-R10.S03-WE-SL-150 | Cable Laying Works for Street Lighting Network-[Road 10]-[SW-3] |  | 2026-12-13 → 2026-12-20 (+7d) | 40% → 70% | -171d → -177d |
| DPB | **Distrubution Panel Boards** | 2027-01-27 → 2027-02-03 (+7d) | 2027-02-20 → 2027-02-28 (+8d) |  |  |
| CO-R10.S03-WE-SL-170 | Foundation Excavation Works For Panel Boards of Street Lighting Network-[Road 10]-[SW-3] | 2027-01-27 → 2027-02-03 (+7d) | 2027-02-09 → 2027-02-16 (+7d) |  | -185d → -191d |
| CO-R10.S03-WE-SL-180 | Installation Works for Panel Board Concrete Foundations of Street Lighting Network-[Road 10]-[SW-3] | 2027-02-03 → 2027-02-10 (+7d) | 2027-02-16 → 2027-02-24 (+8d) |  | -185d → -191d |
| CO-R10.S03-WE-SL-220 | A wall of concrete blocks to install the KWH meter of Street Lighting Network-[Road 10]-[SW-3] | 2027-02-03 → 2027-02-10 (+7d) | 2027-02-16 → 2027-02-24 (+8d) |  | -182d → -188d |
| CO-R10.S03-WE-SL-190 | Installation Works for Lighting Panel Boards of Street Lighting Network-[Road 10]-[SW-3] | 2027-02-07 → 2027-02-14 (+7d) | 2027-02-20 → 2027-02-28 (+8d) |  | -185d → -191d |
| TE | **Telecom Network** | 2026-12-02 → 2026-12-09 (+7d) | 2026-12-29 → 2027-01-05 (+7d) |  |  |
| PD | **Ducts Works** | 2026-12-02 → 2026-12-09 (+7d) | 2026-12-29 → 2027-01-05 (+7d) |  |  |
| CO-R10.S03-WE-TE-100 | Trench Excavation and Bedding Works for Ducts of Telecom Network-[Road 10]-[SW-3] | 2026-12-02 → 2026-12-09 (+7d) | 2026-12-05 → 2026-12-12 (+7d) |  | -133d → -135d |
| CO-R10.S03-WE-TE-110 | Pipes Laying Works for Ducts of Telecom Network-[Road 10]-[SW-3] | 2026-12-06 → 2026-12-13 (+7d) | 2026-12-13 → 2026-12-20 (+7d) |  | -122d → -128d |
| CO-R10.S03-WE-TE-120 | Pouring Plain Concrete Above Ducts of Telecom Network-[Road 10]-[SW-3] | 2026-12-14 → 2026-12-21 (+7d) | 2026-12-21 → 2026-12-28 (+7d) |  | -122d → -128d |
| CO-R10.S03-WE-TE-130 | Trench Backfilling and Compaction Works for Ducts of Telecom Network-[Road 10]-[SW-3] | 2026-12-22 → 2026-12-29 (+7d) | 2026-12-29 → 2027-01-05 (+7d) |  | -122d → -128d |
| MH | **Manholes Works** | 2026-12-06 → 2026-12-13 (+7d) | 2026-12-29 → 2027-01-05 (+7d) |  |  |
| CO-R10.S03-WE-TE-140 | Excavation Works for Manholes of Telecom Network-[Road 10]-[SW-3] | 2026-12-06 → 2026-12-13 (+7d) | 2026-12-13 → 2026-12-20 (+7d) |  | -133d → -135d |
| CO-R10.S03-WE-TE-150 | Installation Works for Manholes of Telecom Network-[Road 10]-[SW-3] | 2026-12-14 → 2026-12-21 (+7d) | 2026-12-21 → 2026-12-28 (+7d) |  | -122d → -128d |
| CO-R10.S03-WE-TE-160 | Backfilling Works for Manholes of Telecom Network-[Road 10]-[SW-3] | 2026-12-22 → 2026-12-29 (+7d) | 2026-12-29 → 2027-01-05 (+7d) |  | -122d → -128d |
| RD | **Road Works** |  | 2027-04-28 → 2027-05-05 (+7d) |  |  |
| RD | **Pre-Bituminous Construction** |  | 2027-01-03 → 2027-01-10 (+7d) |  |  |
| CO-R10.S03-WE-RD-100 | Capping and Subgrade Layer for Road Works-[Road 10]-[SW-3] |  | 2026-12-29 → 2027-01-05 (+7d) | 85% → 90% | -122d → -128d |
| CO-R10.S03-WE-RD-110 | Aggregate Base Course Layer for Road Works-[Road 10]-[SW-3] |  | 2027-01-03 → 2027-01-10 (+7d) | 35% → 50% | -5d → -11d |
| LS | **Pavement Works** |  | 2027-04-28 → 2027-05-05 (+7d) |  |  |
| CO-R10.S03-WE-RD-130 | Fixing of Interlock Tiles for Sidewalks Pavement-[Road 10]-[SW-3] | 2027-04-18 → 2027-04-25 (+7d) | 2027-04-28 → 2027-05-05 (+7d) |  | -177d → -183d |
| 2 | **SW-4** |  | 2027-05-01 → 2027-05-08 (+7d) |  |  |
| SW_4 | **SW_4-East** |  | 2027-04-28 → 2027-05-05 (+7d) |  |  |
| PW | **Potable Water Network** |  | 2026-12-10 → 2026-12-17 (+7d) |  |  |
| FH | **Fire Hydrant** | 2026-11-17 → 2026-11-24 (+7d) | 2026-12-10 → 2026-12-17 (+7d) |  |  |
| CO-R10.S04-ES-PW-140 | Excavation Works for Fire Hydrants of Potable Water Network-[Road 10]-[SW-4] | 2026-11-17 → 2026-11-24 (+7d) | 2026-11-24 → 2026-12-01 (+7d) |  | -106d → -112d |
| CO-R10.S04-ES-PW-150 | Installation Works for Fire Hydrant of Potable Water Network-[Road 10]-[SW-4] | 2026-11-25 → 2026-12-02 (+7d) | 2026-12-02 → 2026-12-09 (+7d) |  | -106d → -112d |
| CO-R10.S04-ES-PW-160 | Trench Backfilling and Compaction Works for Fire Hydrants of Potable Water Network-[Road 10]-[SW-4] | 2026-12-03 → 2026-12-10 (+7d) | 2026-12-10 → 2026-12-17 (+7d) |  | -106d → -112d |
| IR | **Irrigation Network** |  | 2026-11-21 → 2026-11-28 (+7d) |  |  |
| ML | **Main Line Pipes** |  | 2026-11-21 → 2026-11-28 (+7d) |  |  |
| CO-R10.S04-ES-IR-120 | Installation Works for Main Line Valves of Irrigation Network-[Road 10]-[SW-4] | 2026-11-17 → 2026-11-24 (+7d) | 2026-11-21 → 2026-11-28 (+7d) |  | -20d → -26d |
| SL | **Street Lighting Network** |  | 2027-01-20 → 2027-01-27 (+7d) |  |  |
| LP | **Lighting Poles Works** |  | 2026-12-26 → 2026-12-31 (+5d) |  |  |
| CO-R10.S04-ES-SL-100 | Foundation Excavation Works for Lighting Poles of Street Lighting Network-[Road 10]-[SW-4] |  | 2026-11-24 → 2026-12-01 (+7d) | 40% → 70% | -175.5d → -181.5d |
| CO-R10.S04-ES-SL-110 | Installation Works for Lighting Poles Foundation of Street Lighting Network-[Road 10]-[SW-4] |  | 2026-11-30 → 2026-12-07 (+7d) | 40% → 70% | -175.5d → -181.5d |
| CO-R10.S04-ES-SL-210 | Backfilling Works for Lighting Poles of Street Lighting Network-[Road 10]-[SW-4] |  | 2026-12-17 → 2026-12-23 (+6d) | 40% → 70% | -185.5d → -190.5d |
| CO-R10.S04-ES-SL-120 | Installation Works for Lighting Poles of Street Lighting Network-[Road 10]-[SW-4] | 2026-11-29 → 2026-12-06 (+7d) | 2026-12-06 → 2026-12-13 (+7d) |  | -175.5d → -181.5d |

| ID | Task | Start | Finish | Complete | Total float |
| --- | --- | --- | --- | --- | --- |
| CO-R10.S04-ES-SL-130 | Installation Works for Lighting Fixtures With Drop Wire of Street Lighting Network-[Road 10]-[SW-4] | 2026-12-06 → 2026-12-12 (+6d) | 2026-12-26 → 2026-12-31 (+5d) |  | -96.5d → -101.5d |
| CO-R10.S04-ES-SL-200 | Testing Works for Lighting Poles of Street Lighting Network-[Road 10]-[SW-4] | 2026-12-19 → 2026-12-24 (+5d) | 2026-12-26 → 2026-12-31 (+5d) |  | -96.5d → -101.5d |
| CW | **Cabling Works** |  | 2026-12-06 → 2026-12-13 (+7d) |  |  |
| CO-R10.S04-ES-SL-140 | Trench Excavation and Bedding Works for Street Lighting Network-[Road 10]-[SW-4] |  | 2026-12-06 → 2026-12-13 (+7d) | 40% → 70% | -168d → -174d |
| CO-R10.S04-ES-SL-150 | Cable Laying Works for Street Lighting Network-[Road 10]-[SW-4] |  | 2026-12-06 → 2026-12-13 (+7d) | 40% → 70% | -168d → -174d |
| CO-R10.S04-ES-SL-160 | Trench Backfilling and Compaction Works for Street Lighting Network-[Road 10]-[SW-4] |  | 2026-12-06 → 2026-12-13 (+7d) | 40% → 70% | -168d → -174d |
| DPB | **Distrubution Panel Boards** | 2026-12-07 → 2026-12-14 (+7d) | 2027-01-20 → 2027-01-27 (+7d) |  |  |
| CO-R10.S04-ES-SL-170 | Foundation Excavation Works For Panel Boards of Street Lighting Network-[Road 10]-[SW-4] | 2026-12-07 → 2026-12-14 (+7d) | 2026-12-27 → 2027-01-03 (+7d) |  | -168d → -174d |
| CO-R10.S04-ES-SL-180 | Installation Works for Panel Board Concrete Foundations of Street Lighting Network-[Road 10]-[SW-4] | 2026-12-17 → 2026-12-24 (+7d) | 2026-12-30 → 2027-01-06 (+7d) |  | -159d → -165d |
| CO-R10.S04-ES-SL-190 | Installation Works for Lighting Panel Boards of Street Lighting Network-[Road 10]-[SW-4] | 2026-12-31 → 2027-01-07 (+7d) | 2027-01-13 → 2027-01-20 (+7d) |  | -159d → -165d |
| CO-R10.S04-ES-SL-220 | A wall of concrete blocks to install the KWH meter of Street Lighting Network-[Road 10]-[SW-4] | 2026-12-31 → 2027-01-07 (+7d) | 2027-01-20 → 2027-01-27 (+7d) |  | -159d → -165d |
| TE | **Telecom Network** | 2026-12-12 → 2026-12-17 (+5d) | 2027-01-12 → 2027-01-18 (+6d) |  |  |
| PD | **Ducts Works** | 2026-12-12 → 2026-12-17 (+5d) | 2027-01-12 → 2027-01-18 (+6d) |  |  |
| CO-R10.S04-ES-TE-100 | Trench Excavation and Bedding Works for Ducts of Telecom Network-[Road 10]-[SW-4] | 2026-12-12 → 2026-12-17 (+5d) | 2026-12-19 → 2026-12-24 (+5d) |  | -169d → -174d |
| CO-R10.S04-ES-TE-110 | Pipes Laying Works for Ducts of Telecom Network-[Road 10]-[SW-4] | 2026-12-20 → 2026-12-26 (+6d) | 2026-12-27 → 2027-01-02 (+6d) |  | -134d → -139d |
| CO-R10.S04-ES-TE-120 | Pouring Plain Concrete Above Ducts of Telecom Network-[Road 10]-[SW-4] | 2026-12-28 → 2027-01-03 (+6d) | 2027-01-04 → 2027-01-10 (+6d) |  | -134d → -139d |
| CO-R10.S04-ES-TE-130 | Trench Backfilling and Compaction Works for Ducts of Telecom Network-[Road 10]-[SW-4] | 2027-01-05 → 2027-01-11 (+6d) | 2027-01-12 → 2027-01-18 (+6d) |  | -134d → -139d |
| MH | **Manholes Works** | 2026-12-20 → 2026-12-26 (+6d) | 2027-01-12 → 2027-01-18 (+6d) |  |  |
| CO-R10.S04-ES-TE-140 | Excavation Works for Manholes of Telecom Network-[Road 10]-[SW-4] | 2026-12-20 → 2026-12-26 (+6d) | 2026-12-27 → 2027-01-02 (+6d) |  | -134d → -139d |
| CO-R10.S04-ES-TE-150 | Installation Works for Manholes of Telecom Network-[Road 10]-[SW-4] | 2026-12-28 → 2027-01-03 (+6d) | 2027-01-04 → 2027-01-10 (+6d) |  | -134d → -139d |
| CO-R10.S04-ES-TE-160 | Backfilling Works for Manholes of Telecom Network-[Road 10]-[SW-4] | 2027-01-05 → 2027-01-11 (+6d) | 2027-01-12 → 2027-01-18 (+6d) |  | -134d → -139d |
| RD | **Road Works** |  | 2027-04-28 → 2027-05-05 (+7d) |  |  |
| RD | **Pre-Bituminous Construction** |  | 2027-01-16 → 2027-01-21 (+5d) |  |  |
| CO-R10.S04-ES-RD-100 | Capping and Subgrade Layer for Road Works-[Road 10]-[SW-4] |  | 2027-01-12 → 2027-01-18 (+6d) | 90% → 95% | -134d → -139d |
| CO-R10.S04-ES-RD-110 | Aggregate Base Course Layer for Road Works-[Road 10]-[SW-4] |  | 2027-01-16 → 2027-01-21 (+5d) | 40% → 55% | -16d → -21d |
| LS | **Pavement Works** |  | 2027-04-28 → 2027-05-05 (+7d) |  |  |
| CO-R10.S04-ES-RD-130 | Fixing of Interlock Tiles for Sidewalks Pavement-[Road 10]-[SW-4] | 2027-04-18 → 2027-04-25 (+7d) | 2027-04-28 → 2027-05-05 (+7d) |  | -175d → -181d |
| SW_41 | **SW_4-West** |  | 2027-05-01 → 2027-05-08 (+7d) |  |  |
| PW | **Potable Water Network** |  | 2026-12-12 → 2026-12-19 (+7d) |  |  |
| VC | **Valve Chamber** |  | 2026-12-03 → 2026-12-10 (+7d) |  |  |
| CO-R10.S04-WE-PW-210 | Insulation Works for Main Line Valves and Valve Chambers of Potable Water Network-[Road 10]-[SW-4] |  | 2026-11-30 → 2026-12-07 (+7d) |  | -13d → -19d |
| CO-R10.S04-WE-PW-170 | Excavation Works for Main Line Valves and Valve Chambers of Potable Water Network-[Road 10]-[SW-4] | 2026-11-17 → 2026-11-24 (+7d) | 2026-11-17 → 2026-11-24 (+7d) |  | -111d → -113d |
| CO-R10.S04-WE-PW-180 | RC Footing Works for Main Line Valves and Valve Chambers of Potable Water Network-[Road 10]-[SW-4] | 2026-11-18 → 2026-11-25 (+7d) | 2026-11-21 → 2026-11-28 (+7d) |  | -13d → -19d |
| CO-R10.S04-WE-PW-190 | RC Wall Works for Main Line Valves and Valve Chambers of Potable Water Network-[Road 10]-[SW-4] | 2026-11-22 → 2026-11-29 (+7d) | 2026-11-28 → 2026-12-05 (+7d) |  | -13d → -19d |
| CO-R10.S04-WE-PW-200 | RC Slab Works for Main Line Valves and Valve Chambers of Potable Water Network-[Road 10]-[SW-4] | 2026-11-29 → 2026-12-06 (+7d) | 2026-11-30 → 2026-12-07 (+7d) |  | -13d → -19d |
| CO-R10.S04-WE-PW-220 | Backfilling Works for Main Line Valves and Valve Chambers of Potable Water Network-[Road 10]-[SW-4] | 2026-12-01 → 2026-12-08 (+7d) | 2026-12-03 → 2026-12-10 (+7d) |  | -13d → -19d |
| FH | **Fire Hydrant** | 2026-11-18 → 2026-11-25 (+7d) | 2026-12-12 → 2026-12-19 (+7d) |  |  |
| CO-R10.S04-WE-PW-140 | Excavation Works for Fire Hydrants of Potable Water Network-[Road 10]-[SW-4] | 2026-11-18 → 2026-11-25 (+7d) | 2026-11-25 → 2026-12-02 (+7d) |  | -111d → -113d |
| CO-R10.S04-WE-PW-150 | Installation Works for Fire Hydrant of Potable Water Network-[Road 10]-[SW-4] | 2026-11-26 → 2026-12-03 (+7d) | 2026-12-03 → 2026-12-10 (+7d) |  | -111d → -113d |
| CO-R10.S04-WE-PW-160 | Trench Backfilling and Compaction Works for Fire Hydrants of Potable Water Network-[Road 10]-[SW-4] | 2026-12-05 → 2026-12-12 (+7d) | 2026-12-12 → 2026-12-19 (+7d) |  | -111d → -113d |
| IR | **Irrigation Network** |  | 2026-11-22 → 2026-11-29 (+7d) |  |  |
| ML | **Main Line Pipes** |  | 2026-11-22 → 2026-11-29 (+7d) |  |  |
| CO-R10.S04-WE-IR-100 | Trench Excavation and Bedding Works for Main Lines of Irrigation Network-[Road 10]-[SW-4] |  | 2026-11-18 → 2026-11-25 (+7d) |  | -170d → -175d |
| CO-R10.S04-WE-IR-110 | Pipes Laying Works for Main Lines of Irrigation Network-[Road 10]-[SW-4] |  | 2026-11-18 → 2026-11-25 (+7d) |  | -170d → -175d |
| CO-R10.S04-WE-IR-130 | Trench Backfilling and Compaction Works for Main Lines of Irrigation Network-[Road 10]-[SW-4] |  | 2026-11-22 → 2026-11-29 (+7d) |  | -170d → -175d |
| CO-R10.S04-WE-IR-120 | Installation Works for Main Line Valves of Irrigation Network-[Road 10]-[SW-4] | 2026-11-19 → 2026-11-26 (+7d) | 2026-11-22 → 2026-11-29 (+7d) |  | -170d → -175d |
| SL | **Street Lighting Network** |  | 2027-01-28 → 2027-02-03 (+6d) |  |  |
| LP | **Lighting Poles Works** |  | 2026-12-24 → 2026-12-31 (+7d) |  |  |
| CO-R10.S04-WE-SL-100 | Foundation Excavation Works for Lighting Poles of Street Lighting Network-[Road 10]-[SW-4] |  | 2026-11-28 → 2026-12-05 (+7d) | 40% → 70% | -175d → -180d |
| CO-R10.S04-WE-SL-110 | Installation Works for Lighting Poles Foundation of Street Lighting Network-[Road 10]-[SW-4] |  | 2026-12-03 → 2026-12-10 (+7d) | 40% → 70% | -175d → -180d |
| CO-R10.S04-WE-SL-210 | Backfilling Works for Lighting Poles of Street Lighting Network-[Road 10]-[SW-4] |  | 2026-12-16 → 2026-12-23 (+7d) | 40% → 70% | -95.5d → -101.5d |
| CO-R10.S04-WE-SL-120 | Installation Works for Lighting Poles of Street Lighting Network-[Road 10]-[SW-4] | 2026-11-24 → 2026-11-30 (+6d) | 2026-12-14 → 2026-12-20 (+6d) |  | -175d → -180d |
| CO-R10.S04-WE-SL-130 | Installation Works for Lighting Fixtures With Drop Wire of Street Lighting Network-[Road 10]-[SW-4] | 2026-12-05 → 2026-12-12 (+7d) | 2026-12-24 → 2026-12-31 (+7d) |  | -95.5d → -101.5d |
| CO-R10.S04-WE-SL-200 | Testing Works for Lighting Poles of Street Lighting Network-[Road 10]-[SW-4] | 2026-12-17 → 2026-12-24 (+7d) | 2026-12-24 → 2026-12-31 (+7d) |  | -95.5d → -101.5d |
| CW | **Cabling Works** |  | 2026-12-14 → 2026-12-20 (+6d) |  |  |
| CO-R10.S04-WE-SL-140 | Trench Excavation and Bedding Works for Street Lighting Network-[Road 10]-[SW-4] |  | 2026-12-14 → 2026-12-20 (+6d) | 0% → 70% | -175d → -180d |
| CO-R10.S04-WE-SL-160 | Trench Backfilling and Compaction Works for Street Lighting Network-[Road 10]-[SW-4] |  | 2026-12-14 → 2026-12-20 (+6d) | 0% → 70% | -175d → -180d |
| CO-R10.S04-WE-SL-150 | Cable Laying Works for Street Lighting Network-[Road 10]-[SW-4] |  | 2026-12-14 → 2026-12-20 (+6d) | 0% → 70% | -175d → -180d |
| DPB | **Distrubution Panel Boards** | 2026-12-15 → 2026-12-21 (+6d) | 2027-01-28 → 2027-02-03 (+6d) |  |  |
| CO-R10.S04-WE-SL-170 | Foundation Excavation Works For Panel Boards of Street Lighting Network-[Road 10]-[SW-4] | 2026-12-15 → 2026-12-21 (+6d) | 2027-01-04 → 2027-01-10 (+6d) |  | -175d → -180d |
| CO-R10.S04-WE-SL-180 | Installation Works for Panel Board Concrete Foundations of Street Lighting Network-[Road 10]-[SW-4] | 2026-12-26 → 2026-12-31 (+5d) | 2027-01-07 → 2027-01-13 (+6d) |  | -166d → -171d |
| CO-R10.S04-WE-SL-190 | Installation Works for Lighting Panel Boards of Street Lighting Network-[Road 10]-[SW-4] | 2027-01-09 → 2027-01-14 (+5d) | 2027-01-21 → 2027-01-27 (+6d) |  | -166d → -171d |
| CO-R10.S04-WE-SL-220 | A wall of concrete blocks to install the KWH meter of Street Lighting Network-[Road 10]-[SW-4] | 2027-01-09 → 2027-01-14 (+5d) | 2027-01-28 → 2027-02-03 (+6d) |  | -166d → -171d |
| TE | **Telecom Network** | 2026-12-13 → 2026-12-19 (+6d) | 2027-01-13 → 2027-01-19 (+6d) |  |  |
| PD | **Ducts Works** | 2026-12-13 → 2026-12-19 (+6d) | 2027-01-13 → 2027-01-19 (+6d) |  |  |
| CO-R10.S04-WE-TE-100 | Trench Excavation and Bedding Works for Ducts of Telecom Network-[Road 10]-[SW-4] | 2026-12-13 → 2026-12-19 (+6d) | 2026-12-20 → 2026-12-26 (+6d) |  | -139d → -140d |
| CO-R10.S04-WE-TE-110 | Pipes Laying Works for Ducts of Telecom Network-[Road 10]-[SW-4] | 2026-12-21 → 2026-12-27 (+6d) | 2026-12-28 → 2027-01-03 (+6d) |  | -139d → -140d |
| CO-R10.S04-WE-TE-120 | Pouring Plain Concrete Above Ducts of Telecom Network-[Road 10]-[SW-4] | 2026-12-29 → 2027-01-04 (+6d) | 2027-01-05 → 2027-01-11 (+6d) |  | -139d → -140d |
| CO-R10.S04-WE-TE-130 | Trench Backfilling and Compaction Works for Ducts of Telecom Network-[Road 10]-[SW-4] | 2027-01-06 → 2027-01-12 (+6d) | 2027-01-13 → 2027-01-19 (+6d) |  | -139d → -140d |
| MH | **Manholes Works** | 2026-12-21 → 2026-12-27 (+6d) | 2027-01-13 → 2027-01-19 (+6d) |  |  |

| ID | Task | Start | Finish | Complete | Total float |
| --- | --- | --- | --- | --- | --- |
| CO-R10.S04-WE-TE-140 | Excavation Works for Manholes of Telecom Network-[Road 10]-[SW-4] | 2026-12-21 → 2026-12-27 (+6d) | 2026-12-28 → 2027-01-03 (+6d) |  | -139d → -140d |
| CO-R10.S04-WE-TE-150 | Installation Works for Manholes of Telecom Network-[Road 10]-[SW-4] | 2026-12-29 → 2027-01-04 (+6d) | 2027-01-05 → 2027-01-11 (+6d) |  | -139d → -140d |
| CO-R10.S04-WE-TE-160 | Backfilling Works for Manholes of Telecom Network-[Road 10]-[SW-4] | 2027-01-06 → 2027-01-12 (+6d) | 2027-01-13 → 2027-01-19 (+6d) |  | -139d → -140d |
| RD | **Road Works** |  | 2027-05-01 → 2027-05-08 (+7d) |  |  |
| RD | **Pre-Bituminous Construction** |  | 2027-01-21 → 2027-01-27 (+6d) |  |  |
| CO-R10.S04-WE-RD-100 | Capping and Subgrade Layer for Road Works-[Road 10]-[SW-4] |  | 2027-01-13 → 2027-01-19 (+6d) | 85% → 95% | -139d → -140d |
| CO-R10.S04-WE-RD-110 | Aggregate Base Course Layer for Road Works-[Road 10]-[SW-4] |  | 2027-01-21 → 2027-01-27 (+6d) | 40% → 50% | -21d → -26d |
| LS | **Pavement Works** |  | 2027-05-01 → 2027-05-08 (+7d) |  |  |
| CO-R10.S04-WE-RD-130 | Fixing of Interlock Tiles for Sidewalks Pavement-[Road 10]-[SW-4] | 2027-04-18 → 2027-04-25 (+7d) | 2027-05-01 → 2027-05-08 (+7d) |  | -177d → -183d |
| 5 | **Road 11 Local 1 ( 670 LM )** |  | 2027-02-15 → 2027-02-21 (+6d) |  |  |
| SW_5 | **SW_5** |  | 2027-01-12 → 2027-01-18 (+6d) |  |  |
| IR | **Irrigation Network** |  | 2026-11-30 → 2026-12-07 (+7d) |  |  |
| ML | **Main Line Pipes** |  | 2026-11-30 → 2026-12-07 (+7d) |  |  |
| CO-R11.S05-IR-110 | Pipes Laying Works for Main Lines of Irrigation Network-[Road 11]-[SW-5] |  | 2026-11-18 → 2026-11-25 (+7d) |  | -78d → -84d |
| CO-R11.S05-IR-120 | Installation Works for Main Line Valves of Irrigation Network-[Road 11]-[SW-5] | 2026-11-19 → 2026-11-26 (+7d) | 2026-11-22 → 2026-11-29 (+7d) |  | -78d → -84d |
| CO-R11.S05-IR-130 | Trench Backfilling and Compaction Works for Main Lines of Irrigation Network-[Road 11]-[SW-5] | 2026-11-23 → 2026-11-30 (+7d) | 2026-11-30 → 2026-12-07 (+7d) |  | -78d → -84d |
| TE | **Telecom Network** |  | 2027-01-12 → 2027-01-18 (+6d) |  |  |
| MH | **Manholes Works** | 2026-12-20 → 2026-12-26 (+6d) | 2027-01-12 → 2027-01-18 (+6d) |  |  |
| CO-R11.S05-TE-140 | Excavation Works for Manholes of Telecom Network-[Road 11]-[SW-5] | 2026-12-20 → 2026-12-26 (+6d) | 2026-12-27 → 2027-01-02 (+6d) |  | -127d → -132d |
| CO-R11.S05-TE-150 | Installation Works for Manholes of Telecom Network-[Road 11]-[SW-5] | 2026-12-28 → 2027-01-03 (+6d) | 2027-01-04 → 2027-01-10 (+6d) |  | -120d → -125d |
| CO-R11.S05-TE-160 | Backfilling Works for Manholes of Telecom Network-[Road 11]-[SW-5] | 2027-01-05 → 2027-01-11 (+6d) | 2027-01-12 → 2027-01-18 (+6d) |  | -120d → -125d |
| SW_6 | **SW_6** |  | 2027-02-15 → 2027-02-21 (+6d) |  |  |
| PW | **Potable Water Network** |  | 2026-12-10 → 2026-12-17 (+7d) |  |  |
| VC | **Valve Chamber** | 2026-11-17 → 2026-11-24 (+7d) | 2026-11-23 → 2026-11-30 (+7d) |  |  |
| CO-R11.S06-PW-210 | Installation Works for Main Line Valves and Valve Chambers of Potable Water Network-[Road 11]-[SW-6] | 2026-11-17 → 2026-11-24 (+7d) | 2026-11-23 → 2026-11-30 (+7d) |  | -4d → -10d |
| FH | **Fire Hydrant** | 2026-11-17 → 2026-11-24 (+7d) | 2026-12-10 → 2026-12-17 (+7d) |  |  |
| CO-R11.S06-PW-140 | Excavation Works for Fire Hydrants of Potable Water Network-[Road 11]-[SW-6] | 2026-11-17 → 2026-11-24 (+7d) | 2026-11-24 → 2026-12-01 (+7d) |  | -19d → -25d |
| CO-R11.S06-PW-150 | Installation Works for Fire Hydrant of Potable Water Network-[Road 11]-[SW-6] | 2026-11-25 → 2026-12-02 (+7d) | 2026-12-02 → 2026-12-09 (+7d) |  | -19d → -25d |
| CO-R11.S06-PW-160 | Trench Backfilling and Compaction Works for Fire Hydrants of Potable Water Network-[Road 11]-[SW-6] | 2026-12-03 → 2026-12-10 (+7d) | 2026-12-10 → 2026-12-17 (+7d) |  | -19d → -25d |
| SL | **Street Lighting Network** |  | 2027-02-15 → 2027-02-21 (+6d) |  |  |
| LP | **Lighting Poles Works** |  | 2027-01-16 → 2027-01-21 (+5d) |  |  |
| CO-R11.S06-SL-210 | Backfilling Works for Lighting Poles of Street Lighting Network-[Road 11]-[SW-6] | 2026-11-17 → 2026-07-14 A (-126d) | 2026-12-03 → 2026-07-20 A (-136d) | 0% → 100% | -66.5d → none |
| CO-R11.S06-SL-200 | Testing Works for Lighting Poles of Street Lighting Network-[Road 11]-[SW-6] | 2026-12-05 → 2026-11-24 (-11d) | 2026-12-12 → 2026-12-01 (-11d) |  | -66.5d → -57.5d |
| CO-R11.S06-SL-130 | Installation Works for Lighting Fixtures With Drop Wire of Street Lighting Network-[Road 11]-[SW-6] | 2026-12-27 → 2027-01-02 (+6d) | 2027-01-16 → 2027-01-21 (+5d) |  | -96.5d → -101.5d |
| CW | **Cabling Works** |  | 2026-11-28 → 2026-12-05 (+7d) |  |  |
| CO-R11.S06-SL-160 | Trench Backfilling and Compaction Works for Street Lighting Network-[Road 11]-[SW-6] | 2026-11-17 → 2026-11-24 (+7d) | 2026-11-28 → 2026-12-05 (+7d) |  | -37d → -43d |
| DPB | **Distrubution Panel Boards** | 2027-01-05 → 2027-01-11 (+6d) | 2027-02-15 → 2027-02-21 (+6d) |  |  |
| CO-R11.S06-SL-170 | Foundation Excavation Works For Panel Boards of Street Lighting Network-[Road 11]-[SW-6] | 2027-01-05 → 2027-01-11 (+6d) | 2027-01-18 → 2027-01-24 (+6d) |  | -175d → -180d |
| CO-R11.S06-SL-180 | Installation Works for Panel Board Concrete Foundations of Street Lighting Network-[Road 11]-[SW-6] | 2027-01-19 → 2027-01-25 (+6d) | 2027-02-01 → 2027-02-07 (+6d) |  | -175d → -180d |
| CO-R11.S06-SL-190 | Installation Works for Lighting Panel Boards of Street Lighting Network-[Road 11]-[SW-6] | 2027-02-02 → 2027-02-08 (+6d) | 2027-02-15 → 2027-02-21 (+6d) |  | -175d → -180d |
| CO-R11.S06-SL-220 | A wall of concrete blocks to install the KWH meter of Street Lighting Network-[Road 11]-[SW-6] | 2027-02-02 → 2027-02-08 (+6d) | 2027-02-15 → 2027-02-21 (+6d) |  | -169d → -174d |
| TE | **Telecom Network** |  | 2027-01-21 → 2027-01-27 (+6d) |  |  |
| MH | **Manholes Works** | 2026-12-29 → 2027-01-04 (+6d) | 2027-01-21 → 2027-01-27 (+6d) |  |  |
| CO-R11.S06-TE-140 | Excavation Works for Manholes of Telecom Network-[Road 11]-[SW-6] | 2026-12-29 → 2027-01-04 (+6d) | 2027-01-05 → 2027-01-11 (+6d) |  | -128d → -133d |
| CO-R11.S06-TE-150 | Installation Works for Manholes of Telecom Network-[Road 11]-[SW-6] | 2027-01-06 → 2027-01-12 (+6d) | 2027-01-13 → 2027-01-19 (+6d) |  | -128d → -133d |
| CO-R11.S06-TE-160 | Backfilling Works for Manholes of Telecom Network-[Road 11]-[SW-6] | 2027-01-14 → 2027-01-20 (+6d) | 2027-01-21 → 2027-01-27 (+6d) |  | -128d → -133d |
| 6 | **Road 14 Local 1 ( 584 LM )** |  | 2027-06-03 → 2027-06-10 (+7d) |  |  |
| SW_7 | **SW_7** |  | 2027-06-03 → 2027-06-10 (+7d) |  |  |
| IR | **Irrigation Network** |  | 2026-11-24 → 2026-12-01 (+7d) |  |  |
| ML | **Main Line Pipes** |  | 2026-11-24 → 2026-12-01 (+7d) |  |  |
| CO-R14.S07-IR-120 | Installation Works for Main Line Valves of Irrigation Network-[Road 14]-[SW-7] | 2026-11-17 → 2026-11-24 (+7d) | 2026-11-24 → 2026-12-01 (+7d) |  | -23d → -29d |
| SL | **Street Lighting Network** |  | 2026-12-14 → 2026-12-21 (+7d) |  |  |
| LP | **Lighting Poles Works** |  | 2026-12-07 → 2026-12-14 (+7d) |  |  |
| CO-R14.S07-SL-130 | Installation Works for Lighting Fixtures With Drop Wire of Street Lighting Network-[Road 14]-[SW-7] | 2026-11-17 → 2026-11-24 (+7d) | 2026-12-07 → 2026-12-14 (+7d) |  | -93d → -99d |
| CO-R14.S07-SL-200 | Testing Works for Lighting Poles of Street Lighting Network-[Road 14]-[SW-7] | 2026-11-17 → 2026-11-24 (+7d) | 2026-11-22 → 2026-11-29 (+7d) |  | -80d → -86d |
| DPB | **Distrubution Panel Boards** | 2026-11-17 → 2026-11-24 (+7d) | 2026-12-14 → 2026-12-21 (+7d) |  |  |
| CO-R14.S07-SL-170 | Foundation Excavation Works For Panel Boards of Street Lighting Network-[Road 14]-[SW-7] | 2026-11-17 → 2026-11-24 (+7d) | 2026-12-07 → 2026-12-14 (+7d) |  | -103d → -109d |
| CO-R14.S07-SL-180 | Installation Works for Panel Board Concrete Foundations of Street Lighting Network-[Road 14]-[SW-7] | 2026-11-21 → 2026-11-28 (+7d) | 2026-12-10 → 2026-12-17 (+7d) |  | -103d → -109d |
| CO-R14.S07-SL-220 | A wall of concrete blocks to install the KWH meter of Street Lighting Network-[Road 14]-[SW-7] | 2026-11-21 → 2026-11-28 (+7d) | 2026-12-10 → 2026-12-17 (+7d) |  | -100d → -106d |
| CO-R14.S07-SL-190 | Installation Works for Lighting Panel Boards of Street Lighting Network-[Road 14]-[SW-7] | 2026-11-24 → 2026-12-01 (+7d) | 2026-12-14 → 2026-12-21 (+7d) |  | -103d → -109d |
| TE | **Telecom Network** | 2027-01-24 → 2027-01-31 (+7d) | 2027-02-20 → 2027-02-28 (+8d) |  |  |
| PD | **Ducts Works** | 2027-01-24 → 2027-01-31 (+7d) | 2027-02-20 → 2027-02-28 (+8d) |  |  |
| CO-R14.S07-TE-100 | Trench Excavation and Bedding Works for Ducts of Telecom Network-[Road 14]-[SW-7] | 2027-01-24 → 2027-01-31 (+7d) | 2027-01-26 → 2027-02-02 (+7d) |  | -153d → -159d |
| CO-R14.S07-TE-110 | Pipes Laying Works for Ducts of Telecom Network-[Road 14]-[SW-7] | 2027-01-27 → 2027-02-03 (+7d) | 2027-02-03 → 2027-02-10 (+7d) |  | -146d → -152d |
| CO-R14.S07-TE-120 | Pouring Plain Concrete Above Ducts of Telecom Network-[Road 14]-[SW-7] | 2027-02-04 → 2027-02-11 (+7d) | 2027-02-11 → 2027-02-18 (+7d) |  | -146d → -152d |
| CO-R14.S07-TE-130 | Trench Backfilling and Compaction Works for Ducts of Telecom Network-[Road 14]-[SW-7] | 2027-02-13 → 2027-02-20 (+7d) | 2027-02-20 → 2027-02-28 (+8d) |  | -146d → -152d |
| MH | **Manholes Works** | 2027-01-27 → 2027-02-03 (+7d) | 2027-02-20 → 2027-02-28 (+8d) |  |  |
| CO-R14.S07-TE-140 | Excavation Works for Manholes of Telecom Network-[Road 14]-[SW-7] | 2027-01-27 → 2027-02-03 (+7d) | 2027-02-03 → 2027-02-10 (+7d) |  | -153d → -159d |
| CO-R14.S07-TE-150 | Installation Works for Manholes of Telecom Network-[Road 14]-[SW-7] | 2027-02-04 → 2027-02-11 (+7d) | 2027-02-11 → 2027-02-18 (+7d) |  | -146d → -152d |
| CO-R14.S07-TE-160 | Backfilling Works for Manholes of Telecom Network-[Road 14]-[SW-7] | 2027-02-13 → 2027-02-20 (+7d) | 2027-02-20 → 2027-02-28 (+8d) |  | -146d → -152d |

| ID | Task | Start | Finish | Total float |
| --- | --- | --- | --- | --- |
| RD | **Road Works** |  | 2027-06-03 → 2027-06-10 (+7d) |  |
| LS | **Pavement Works** |  | 2027-06-03 → 2027-06-10 (+7d) |  |
| CO-R14.S07-RD-P-130 | Fixing of Interlock Tiles for Sidewalks Pavement-[Road 14]-[SW-7] | 2027-05-22 → 2027-05-29 (+7d) | 2027-06-03 → 2027-06-10 (+7d) | -181d → -187d |
| SW_8 | **SW_8** |  | 2027-06-03 → 2027-06-10 (+7d) |  |
| PW | **Potable Water Network** |  | 2026-12-10 → 2026-12-17 (+7d) |  |
| FH | **Fire Hydrant** | 2026-11-17 → 2026-11-24 (+7d) | 2026-12-10 → 2026-12-17 (+7d) |  |
| CO-R14.S08-PW-140 | Excavation Works for Fire Hydrants of Potable Water Network-[Road 14]-[SW-8] | 2026-11-17 → 2026-11-24 (+7d) | 2026-11-24 → 2026-12-01 (+7d) | -19d → -25d |
| CO-R14.S08-PW-150 | Installation Works for Fire Hydrant of Potable Water Network-[Road 14]-[SW-8] | 2026-11-25 → 2026-12-02 (+7d) | 2026-12-02 → 2026-12-09 (+7d) | -19d → -25d |
| CO-R14.S08-PW-160 | Trench Backfilling and Compaction Works for Fire Hydrants of Potable Water Network-[Road 14]-[SW-8] | 2026-12-03 → 2026-12-10 (+7d) | 2026-12-10 → 2026-12-17 (+7d) | -19d → -25d |
| SL | **Street Lighting Network** |  | 2027-03-13 → 2027-03-18 (+5d) |  |
| LP | **Lighting Poles Works** |  | 2027-02-06 → 2027-02-11 (+5d) |  |
| CO-R14.S08-SL-200 | Testing Works for Lighting Poles of Street Lighting Network-[Road 14]-[SW-8] | 2026-11-17 → 2026-11-24 (+7d) | 2026-11-24 → 2026-12-01 (+7d) | -34d → -40d |
| CO-R14.S08-SL-850 | Installation Works for Lighting Fixtures With Drop Wire of Street Lighting Network-[Road 14]-[SW-8] | 2027-01-17 → 2027-01-23 (+6d) | 2027-02-06 → 2027-02-11 (+5d) | -96.5d → -101.5d |
| DPB | **Distrubution Panel Boards** | 2027-01-19 → 2027-01-25 (+6d) | 2027-03-13 → 2027-03-18 (+5d) |  |
| CO-R14.S08-SL-DB-640 | Foundation Excavation Works For Panel Boards of Street Lighting Network-[Road 14]-[SW-8] | 2027-01-19 → 2027-01-25 (+6d) | 2027-02-08 → 2027-02-14 (+6d) | -161d → -166d |
| CO-R14.S08-SL-220 | A wall of concrete blocks to install the KWH meter of Street Lighting Network-[Road 14]-[SW-8] | 2027-02-02 → 2027-02-08 (+6d) | 2027-03-03 → 2027-03-13 (+10d) | -170d → -175d |
| CO-R14.S08-SL-DB-650 | Installation Works for Panel Board Concrete Foundations of Street Lighting Network-[Road 14]-[SW-8] | 2027-02-02 → 2027-02-08 (+6d) | 2027-02-23 → 2027-03-01 (+6d) | -170d → -175d |
| CO-R14.S08-SL-DB-660 | Installation Works for Lighting Panel Boards of Street Lighting Network-[Road 14]-[SW-8] | 2027-02-16 → 2027-02-23 (+7d) | 2027-03-13 → 2027-03-18 (+5d) | -175d → -180d |
| TE | **Telecom Network** | 2027-01-27 → 2027-02-03 (+7d) | 2027-03-01 → 2027-03-08 (+7d) |  |
| PD | **Ducts Works** | 2027-01-27 → 2027-02-03 (+7d) | 2027-02-24 → 2027-03-03 (+7d) |  |
| CO-R14.S08-TE-100 | Trench Excavation and Bedding Works for Ducts of Telecom Network-[Road 14]-[SW-8] | 2027-01-27 → 2027-02-03 (+7d) | 2027-01-30 → 2027-02-06 (+7d) | -149d → -155d |
| CO-R14.S08-TE-110 | Pipes Laying Works for Ducts of Telecom Network-[Road 14]-[SW-8] | 2027-01-31 → 2027-02-07 (+7d) | 2027-02-07 → 2027-02-14 (+7d) | -149d → -155d |
| CO-R14.S08-TE-120 | Pouring Plain Concrete Above Ducts of Telecom Network-[Road 14]-[SW-8] | 2027-02-08 → 2027-02-15 (+7d) | 2027-02-15 → 2027-02-23 (+8d) | -149d → -155d |
| CO-R14.S08-TE-130 | Trench Backfilling and Compaction Works for Ducts of Telecom Network-[Road 14]-[SW-8] | 2027-02-16 → 2027-02-24 (+8d) | 2027-02-24 → 2027-03-03 (+7d) | -149d → -155d |
| MH | **Manholes Works** | 2027-02-04 → 2027-02-11 (+7d) | 2027-03-01 → 2027-03-08 (+7d) |  |
| CO-R14.S08-TE-140 | Excavation Works for Manholes of Telecom Network-[Road 14]-[SW-8] | 2027-02-04 → 2027-02-11 (+7d) | 2027-02-11 → 2027-02-18 (+7d) | -153d → -159d |
| CO-R14.S08-TE-150 | Installation Works for Manholes of Telecom Network-[Road 14]-[SW-8] | 2027-02-13 → 2027-02-20 (+7d) | 2027-02-20 → 2027-02-28 (+8d) | -153d → -159d |
| CO-R14.S08-TE-160 | Backfilling Works for Manholes of Telecom Network-[Road 14]-[SW-8] | 2027-02-21 → 2027-03-01 (+8d) | 2027-03-01 → 2027-03-08 (+7d) | -153d → -159d |
| RD | **Road Works** |  | 2027-06-03 → 2027-06-10 (+7d) |  |
| LS | **Pavement Works** |  | 2027-06-03 → 2027-06-10 (+7d) |  |
| CO-R14.S08-RD-P-130 | Fixing of Interlock Tiles for Sidewalks Pavement-[Road 14]-[SW-8] | 2027-05-22 → 2027-05-29 (+7d) | 2027-06-03 → 2027-06-10 (+7d) | -179d → -185d |
| 7 | **Road 15 Local 1 ( 556 LM )** |  | 2026-12-28 → 2026-12-21 (-7d) |  |
| SW_9 | **SW_9** |  | 2026-12-28 → 2026-12-19 (-9d) |  |
| IR | **Irrigation Network** |  | 2026-12-28 → 2026-12-19 (-9d) |  |
| ML | **Main Line Pipes** |  | 2026-12-28 → 2026-12-19 (-9d) |  |
| CO-R15.S09-IR-120 | Installation Works for Main Line Valves of Irrigation Network-[Road 15]-[SW-9] | 2026-12-21 → 2026-12-12 (-9d) | 2026-12-28 → 2026-12-19 (-9d) | -52d → -44d |
| SW_10 | **SW_10** |  | 2026-12-14 → 2026-12-21 (+7d) |  |
| SL | **Street Lighting Network** |  | 2026-12-14 → 2026-12-21 (+7d) |  |
| LP | **Lighting Poles Works** |  | 2026-12-07 → 2026-12-14 (+7d) |  |
| CO-R15.S10-SL-130 | Installation Works for Lighting Fixtures With Drop Wire of Street Lighting Network-[Road 15]-[SW-10] | 2026-11-17 → 2026-11-24 (+7d) | 2026-12-07 → 2026-12-14 (+7d) | -166d → -172d |
| CO-R15.S10-SL-200 | Testing Works for Lighting Poles of Street Lighting Network-[Road 15]-[SW-10] | 2026-11-17 → 2026-11-24 (+7d) | 2026-11-22 → 2026-11-29 (+7d) | -153d → -159d |
| DPB | **Distrubution Panel Boards** | 2026-11-17 → 2026-11-24 (+7d) | 2026-12-14 → 2026-12-21 (+7d) |  |
| CO-R15.S10-SL-170 | Foundation Excavation Works For Panel Boards of Street Lighting Network-[Road 15]-[SW-10] | 2026-11-17 → 2026-11-24 (+7d) | 2026-12-07 → 2026-12-14 (+7d) | -89d → -95d |
| CO-R15.S10-SL-180 | Installation Works for Panel Board Concrete Foundations of Street Lighting Network-[Road 15]-[SW-10] | 2026-11-21 → 2026-11-28 (+7d) | 2026-12-10 → 2026-12-17 (+7d) | -89d → -95d |
| CO-R15.S10-SL-220 | A wall of concrete blocks to install the KWH meter of Street Lighting Network-[Road 15]-[SW-10] | 2026-11-21 → 2026-11-28 (+7d) | 2026-12-10 → 2026-12-17 (+7d) | -86d → -92d |
| CO-R15.S10-SL-190 | Installation Works for Lighting Panel Boards of Street Lighting Network-[Road 15]-[SW-10] | 2026-11-24 → 2026-12-01 (+7d) | 2026-12-14 → 2026-12-21 (+7d) | -89d → -95d |
| PW | **Potable Water Network** |  | 2026-12-07 → 2026-12-14 (+7d) |  |
| VC | **Valve Chamber** | 2026-11-17 → 2026-11-24 (+7d) | 2026-11-23 → 2026-11-30 (+7d) |  |
| CO-R15.S10-PW-210 | Installation Works for Main Line Valves and Valve Chambers of Potable Water Network-[Road 15]-[SW-10] | 2026-11-17 → 2026-11-24 (+7d) | 2026-11-23 → 2026-11-30 (+7d) | -4d → -10d |
| FH | **Fire Hydrant** | 2026-11-17 → 2026-11-24 (+7d) | 2026-12-07 → 2026-12-14 (+7d) |  |
| CO-R15.S10-PW-140 | Excavation Works for Fire Hydrants of Potable Water Network-[Road 15]-[SW-10] | 2026-11-17 → 2026-11-24 (+7d) | 2026-11-23 → 2026-11-30 (+7d) | -28d → -34d |
| CO-R15.S10-PW-150 | Installation Works for Fire Hydrant of Potable Water Network-[Road 15]-[SW-10] | 2026-11-24 → 2026-12-01 (+7d) | 2026-11-30 → 2026-12-07 (+7d) | -28d → -34d |
| CO-R15.S10-PW-160 | Trench Backfilling and Compaction Works for Fire Hydrants of Potable Water Network-[Road 15]-[SW-10] | 2026-12-01 → 2026-12-08 (+7d) | 2026-12-07 → 2026-12-14 (+7d) | -28d → -34d |
| 8 | **Road 16 Local 1 ( 527 LM )** |  | 2027-02-09 → 2027-02-07 (-2d) |  |
| SW_13 | **SW_11** |  | 2026-12-22 → 2026-12-17 (-5d) |  |
| IR | **Irrigation Network** |  | 2026-12-22 → 2026-12-17 (-5d) |  |
| ML | **Main Line Pipes** |  | 2026-12-22 → 2026-12-17 (-5d) |  |
| CO-R16.S11-IR-120 | Installation Works for Main Line Valves of Irrigation Network-[Road 16]-[SW-11] | 2026-12-15 → 2026-12-10 (-5d) | 2026-12-22 → 2026-12-17 (-5d) | -47d → -43d |
| SW_14 | **SW_12** |  | 2027-02-09 → 2027-02-07 (-2d) |  |
| PW | **Potable Water Network** |  | 2027-02-09 → 2027-02-07 (-2d) |  |
| VC | **Valve Chamber** | 2027-02-03 → 2027-02-01 (-2d) | 2027-02-09 → 2027-02-07 (-2d) |  |
| CO-R16.S12-PW-210 | Installation Works for Main Line Valves and Valve Chambers of Potable Water Network-[Road 16]-[SW-12] | 2027-02-03 → 2027-02-01 (-2d) | 2027-02-09 → 2027-02-07 (-2d) | -71d → -69d |
| FH | **Fire Hydrant** | 2026-11-17 → 2026-11-24 (+7d) | 2026-12-14 → 2026-12-21 (+7d) |  |
| CO-R16.S12-PW-140 | Excavation Works for Fire Hydrants of Potable Water Network-[Road 16]-[SW-12] | 2026-11-17 → 2026-11-24 (+7d) | 2026-11-23 → 2026-11-30 (+7d) | -22d → -28d |
| CO-R16.S12-PW-150 | Installation Works for Fire Hydrant of Potable Water Network-[Road 16]-[SW-12] | 2026-12-01 → 2026-12-08 (+7d) | 2026-12-07 → 2026-12-14 (+7d) | -28d → -34d |
| CO-R16.S12-PW-160 | Trench Backfilling and Compaction Works for Fire Hydrants of Potable Water Network-[Road 16]-[SW-12] | 2026-12-08 → 2026-12-15 (+7d) | 2026-12-14 → 2026-12-21 (+7d) | -28d → -34d |
| 9 | **Road 17 Local 1 ( 500 LM )** |  | 2026-12-21 → 2026-12-28 (+7d) |  |
| SW_16 | **SW_14** |  | 2026-12-21 → 2026-12-28 (+7d) |  |
| SL | **Street Lighting Network** |  | 2026-12-14 → 2026-12-21 (+7d) |  |
| LP | **Lighting Poles Works** |  | 2026-12-07 → 2026-12-14 (+7d) |  |

| ID | Task | Start | Finish | Total float |
| --- | --- | --- | --- | --- |
| CO-R17.S14-SL-130 | Installation Works for Lighting Fixtures With Drop Wire of Street Lighting Network-[Road 17]-[SW-14] | 2026-11-17 → 2026-11-24 (+7d) | 2026-12-07 → 2026-12-14 (+7d) | -81d → -87d |
| CO-R17.S14-SL-200 | Testing Works for Lighting Poles of Street Lighting Network-[Road 17]-[SW-14] | 2026-11-17 → 2026-11-24 (+7d) | 2026-11-22 → 2026-11-29 (+7d) | -68d → -74d |
| DPB | **Distrubution Panel Boards** | 2026-11-17 → 2026-11-24 (+7d) | 2026-12-14 → 2026-12-21 (+7d) |  |
| CO-R17.S14-SL-170 | Foundation Excavation Works For Panel Boards of Street Lighting Network-[Road 17]-[SW-14] | 2026-11-17 → 2026-11-24 (+7d) | 2026-12-07 → 2026-12-14 (+7d) | -65d → -71d |
| CO-R17.S14-SL-180 | Installation Works for Panel Board Concrete Foundations of Street Lighting Network-[Road 17]-[SW-14] | 2026-11-21 → 2026-11-28 (+7d) | 2026-12-10 → 2026-12-17 (+7d) | -65d → -71d |
| CO-R17.S14-SL-220 | A wall of concrete blocks to install the KWH meter of Street Lighting Network-[Road 17]-[SW-14] | 2026-11-21 → 2026-11-28 (+7d) | 2026-12-10 → 2026-12-17 (+7d) | -62d → -68d |
| CO-R17.S14-SL-190 | Installation Works for Lighting Panel Boards of Street Lighting Network-[Road 17]-[SW-14] | 2026-11-24 → 2026-12-01 (+7d) | 2026-12-14 → 2026-12-21 (+7d) | -65d → -71d |
| PW | **Potable Water Network** |  | 2026-12-21 → 2026-12-28 (+7d) |  |
| VC | **Valve Chamber** | 2026-11-17 → 2026-11-24 (+7d) | 2026-11-23 → 2026-11-30 (+7d) |  |
| CO-R17.S14-PW-210 | Installation Works for Main Line Valves and Valve Chambers of Potable Water Network-[Road 17]-[SW-14] | 2026-11-17 → 2026-11-24 (+7d) | 2026-11-23 → 2026-11-30 (+7d) | -4d → -10d |
| FH | **Fire Hydrant** | 2026-11-17 → 2026-11-24 (+7d) | 2026-12-21 → 2026-12-28 (+7d) |  |
| CO-R17.S14-PW-140 | Excavation Works for Fire Hydrants of Potable Water Network-[Road 17]-[SW-14] | 2026-11-17 → 2026-11-24 (+7d) | 2026-11-23 → 2026-11-30 (+7d) | -16d → -22d |
| CO-R17.S14-PW-150 | Installation Works for Fire Hydrant of Potable Water Network-[Road 17]-[SW-14] | 2026-12-08 → 2026-12-15 (+7d) | 2026-12-14 → 2026-12-21 (+7d) | -28d → -34d |
| CO-R17.S14-PW-160 | Trench Backfilling and Compaction Works for Fire Hydrants of Potable Water Network-[Road 17]-[SW-14] | 2026-12-15 → 2026-12-22 (+7d) | 2026-12-21 → 2026-12-28 (+7d) | -28d → -34d |
| TE | **Telecom Network** |  | 2026-12-10 → 2026-12-17 (+7d) |  |
| MH | **Manholes Works** | 2026-11-17 → 2026-11-24 (+7d) | 2026-12-10 → 2026-12-17 (+7d) |  |
| CO-R17.S14-TE-140 | Excavation Works for Manholes of Telecom Network-[Road 17]-[SW-14] | 2026-11-17 → 2026-11-24 (+7d) | 2026-11-24 → 2026-12-01 (+7d) | -85d → -91d |
| CO-R17.S14-TE-150 | Installation Works for Manholes of Telecom Network-[Road 17]-[SW-14] | 2026-11-25 → 2026-12-02 (+7d) | 2026-12-02 → 2026-12-09 (+7d) | -85d → -91d |
| CO-R17.S14-TE-160 | Backfilling Works for Manholes of Telecom Network-[Road 17]-[SW-14] | 2026-12-03 → 2026-12-10 (+7d) | 2026-12-10 → 2026-12-17 (+7d) | -85d → -91d |
| 1 | **Road 18 Local 1 ( 479 LM )** |  | 2026-12-14 → 2026-12-21 (+7d) |  |
| SW_15 | **SW_15** |  | 2026-12-10 → 2026-12-15 (+5d) |  |
| IR | **Irrigation Network** |  | 2026-12-10 → 2026-12-15 (+5d) |  |
| ML | **Main Line Pipes** |  | 2026-12-10 → 2026-12-15 (+5d) |  |
| CO-R18.S15-IR-160 | Installation Works for Main Line Valves of Irrigation Network-[Road 18]-[SW-15] | 2026-12-03 → 2026-12-08 (+5d) | 2026-12-10 → 2026-12-15 (+5d) | -37d → -41d |
| SW_16 | **SW_16** |  | 2026-12-14 → 2026-12-21 (+7d) |  |
| SL | **Street Lighting Network** |  | 2026-12-14 → 2026-12-21 (+7d) |  |
| LP | **Lighting Poles Works** |  | 2026-12-07 → 2026-12-14 (+7d) |  |
| CO-R18.S16-SL-130 | Installation Works for Lighting Fixtures With Drop Wire of Street Lighting Network-[Road 18]-[SW-16] | 2026-11-17 → 2026-11-24 (+7d) | 2026-12-07 → 2026-12-14 (+7d) | -45d → -51d |
| CO-R18.S16-SL-200 | Testing Works for Lighting Poles of Street Lighting Network-[Road 18]-[SW-16] | 2026-11-17 → 2026-11-24 (+7d) | 2026-11-22 → 2026-11-29 (+7d) | -32d → -38d |
| DPB | **Distrubution Panel Boards** | 2026-11-17 → 2026-11-24 (+7d) | 2026-12-14 → 2026-12-21 (+7d) |  |
| CO-R18.S16-SL-170 | Foundation Excavation Works For Panel Boards of Street Lighting Network-[Road 18]-[SW-16] | 2026-11-17 → 2026-11-24 (+7d) | 2026-12-07 → 2026-12-14 (+7d) | -51d → -57d |
| CO-R18.S16-SL-180 | Installation Works for Panel Board Concrete Foundations of Street Lighting Network-[Road 18]-[SW-16] | 2026-11-21 → 2026-11-28 (+7d) | 2026-12-10 → 2026-12-17 (+7d) | -51d → -57d |
| CO-R18.S16-SL-220 | A wall of concrete blocks to install the KWH meter of Street Lighting Network-[Road 18]-[SW-16] | 2026-11-21 → 2026-11-28 (+7d) | 2026-12-10 → 2026-12-17 (+7d) | -48d → -54d |
| CO-R18.S16-SL-190 | Installation Works for Lighting Panel Boards of Street Lighting Network-[Road 18]-[SW-16] | 2026-11-24 → 2026-12-01 (+7d) | 2026-12-14 → 2026-12-21 (+7d) | -51d → -57d |
| PW | **Potable Water Network** |  | 2026-12-07 → 2026-12-14 (+7d) |  |
| VC | **Valve Chamber** | 2026-11-17 → 2026-11-24 (+7d) | 2026-11-23 → 2026-11-30 (+7d) |  |
| CO-R18.S16-PW-330 | Installation Works for Main Line Valves and Valve Chambers of Potable Water Network-[Road 18]-[SW-16] | 2026-11-17 → 2026-11-24 (+7d) | 2026-11-23 → 2026-11-30 (+7d) | -4d → -10d |
| FH | **Fire Hydrant** | 2026-11-17 → 2026-11-24 (+7d) | 2026-12-07 → 2026-12-14 (+7d) |  |
| CO-R18.S16-PW-250 | Excavation Works for Fire Hydrants of Potable Water Network-[Road 18]-[SW-16] | 2026-11-17 → 2026-11-24 (+7d) | 2026-11-23 → 2026-11-30 (+7d) | -16d → -22d |
| CO-R18.S16-PW-260 | Installation Works for Fire Hydrant of Potable Water Network-[Road 18]-[SW-16] | 2026-11-24 → 2026-12-01 (+7d) | 2026-11-30 → 2026-12-07 (+7d) | -16d → -22d |
| CO-R18.S16-PW-270 | Trench Backfilling and Compaction Works for Fire Hydrants of Potable Water Network-[Road 18]-[SW-16] | 2026-12-01 → 2026-12-08 (+7d) | 2026-12-07 → 2026-12-14 (+7d) | -16d → -22d |
| 3 | **Finishes for Infrastructure Networks** |  | 2027-09-09 → 2027-09-16 (+7d) |  |
| 1 | **Phase 2 Block "J"** |  | 2027-09-09 → 2027-09-16 (+7d) |  |
| 2 | **Road 09 Local 2 ( 2278 LM )** |  | 2027-09-09 → 2027-09-16 (+7d) |  |
| 10 | **Sewage Network** |  | 2027-04-10 → 2027-04-17 (+7d) |  |
| TF | **Testing and Finishes** |  | 2027-04-10 → 2027-04-17 (+7d) |  |
| CO-R09-SW-TF-100 | Final Testing For Main Line of Sewage Network-[Road 09] |  | 2027-03-23 → 2027-03-30 (+7d) | -184d → -190d |
| CO-R09-SW-TF-110 | Install Manhole Cover Works for External Finishes of Sewage Network-[Road 09] | 2027-03-24 → 2027-03-31 (+7d) | 2027-04-06 → 2027-04-13 (+7d) | -166d → -172d |
| CO-R09-SW-TF-120 | Main Manhole Internal Finishes (Benching + Insulation) of Sewage Network-[Road 09] | 2027-03-28 → 2027-04-04 (+7d) | 2027-04-10 → 2027-04-17 (+7d) | -153d → -159d |
| 11 | **Storm Drainage Network** | 2027-02-20 → 2027-02-28 (+8d) | 2027-04-25 → 2027-05-02 (+7d) |  |
| TF | **Testing and Finishes** | 2027-02-20 → 2027-02-28 (+8d) | 2027-04-25 → 2027-05-02 (+7d) |  |
| CO-R09-SD-TF-110 | Install Catch Basin Cover Works for External Finishes of Storm Drainage Network-[Road 09] | 2027-02-20 → 2027-02-28 (+8d) | 2027-03-14 → 2027-03-21 (+7d) | -146d → -152d |
| CO-R09-SD-TF-100 | Testing Work for Pipes of Storm Drainage Network-[Road 09] | 2027-03-07 → 2027-03-17 (+10d) | 2027-03-23 → 2027-03-30 (+7d) | -184d → -190d |
| CO-R09-SD-TF-120 | Main Manhole Internal Finishes (Benching + Insulation ) for Storm Drainage Network-[Road 09] | 2027-04-07 → 2027-04-14 (+7d) | 2027-04-25 → 2027-05-02 (+7d) | -166d → -172d |
| CO-R09-SD-TF-130 | Catch Basin Internal Finishes (Benching + Insulation ) for Storm Drainage Network-[Road 09] | 2027-04-07 → 2027-04-14 (+7d) | 2027-04-25 → 2027-05-02 (+7d) | -111d → -117d |
| 9 | **Potable Water Network** | 2027-03-24 → 2027-03-31 (+7d) | 2027-05-01 → 2027-05-08 (+7d) |  |
| TF | **Testing and Finishes** | 2027-03-24 → 2027-03-31 (+7d) | 2027-05-01 → 2027-05-08 (+7d) |  |
| CO-R09-PW-TF-110 | Testing Work for Main Line of Potable Water Network-[Road 09] | 2027-03-24 → 2027-03-31 (+7d) | 2027-04-03 → 2027-04-10 (+7d) | -184d → -190d |
| CO-R09-PW-TF-100 | Final Finishes works and Covers for Valves and Valve Chambers of Potable Water Network-[Road 09] | 2027-04-04 → 2027-04-11 (+7d) | 2027-04-17 → 2027-04-24 (+7d) | -171d → -177d |
| CO-R09-PW-TF-120 | Fire Hydrant Finishies (S.Box + Safety + Marker Post ) of Potable Water Network-[Road 09] | 2027-04-18 → 2027-04-25 (+7d) | 2027-05-01 → 2027-05-08 (+7d) | -171d → -177d |
| 13 | **Irrigation Network** | 2027-03-21 → 2027-03-28 (+7d) | 2027-04-07 → 2027-04-14 (+7d) |  |
| TF | **Testing and Finishes** | 2027-03-21 → 2027-03-28 (+7d) | 2027-04-07 → 2027-04-14 (+7d) |  |
| CO-R09-IR-TF-100 | Final Testing (pressure tests) of Irrigation Network-[Road 09] | 2027-03-21 → 2027-03-28 (+7d) | 2027-04-07 → 2027-04-14 (+7d) | -151d → -157d |
| 12 | **Street Lighting Network** | 2027-03-04 → 2027-03-15 (+11d) | 2027-06-21 → 2027-06-28 (+7d) |  |
| TR | **Termination and Testing Works** | 2027-03-04 → 2027-03-15 (+11d) | 2027-06-19 → 2027-06-26 (+7d) |  |
| CO-R09-SL-TF-100 | Termination Works For Lighting Poles Cables of Street Lighting Network-[Road 09] | 2027-03-04 → 2027-03-15 (+11d) | 2027-03-21 → 2027-03-28 (+7d) | -209.5d → -215.5d |
| CO-R09-SL-TF-110 | Termination Works For Panel Board Cables of Street Lighting Network-[Road 09] | 2027-05-26 → 2027-06-02 (+7d) | 2027-06-07 → 2027-06-14 (+7d) | -209.5d → -215.5d |
| CO-R09-SL-TF-380 | Testing Works For Panel Board Cables of Street Lighting Network-[Road 09] | 2027-06-07 → 2027-06-14 (+7d) | 2027-06-19 → 2027-06-26 (+7d) | -201.5d → -207.5d |
| ES | **Earthing System Works** | 2027-03-22 → 2027-03-29 (+7d) | 2027-06-21 → 2027-06-28 (+7d) |  |
| CO-R09-SL-ES-100 | Install Earthing System Works for Lighting Poles of Street Lighting Network-[Road 09] | 2027-03-22 → 2027-03-29 (+7d) | 2027-04-04 → 2027-04-11 (+7d) | -209.5d → -215.5d |

| ID | Task | Start | Finish | Complete | Total float | Predecessors |
| --- | --- | --- | --- | --- | --- | --- |
| CO-R09-SL-ES-110 | Install Earthing System Works for Lighting Panel Boards of Street Lighting Network-[Road 09] | 2027-06-07 → 2027-06-14 (+7d) | 2027-06-21 → 2027-06-28 (+7d) |  | -209.5d → -215.5d |  |
| 14 | **Medium Voltage Network** | 2027-02-20 → 2027-02-28 (+8d) | 2027-03-14 → 2027-03-21 (+7d) |  |  |  |
| TT | **Termination and Testing Works** | 2027-02-20 → 2027-02-28 (+8d) | 2027-03-14 → 2027-03-21 (+7d) |  |  |  |
| CO-R09-MV-TF-100 | Termination Works of Medium Voltage Network-[Road 09] | 2027-02-20 → 2027-02-28 (+8d) | 2027-03-14 → 2027-03-21 (+7d) |  | -130d → -136d |  |
| 1 | **Road Works** | 2027-07-05 → 2027-07-12 (+7d) | 2027-09-09 → 2027-09-16 (+7d) |  |  |  |
| 1 | **Bituminous Construction** | 2027-07-05 → 2027-07-12 (+7d) | 2027-08-05 → 2027-08-12 (+7d) |  |  |  |
| CO-R09-S1-RD-F-100 | Application of Prime Coat Layer for Road Works - S.W 01-[Road 09] | 2027-07-05 → 2027-07-12 (+7d) | 2027-07-19 → 2027-07-26 (+7d) |  | -203.5d → -209.5d |  |
| CO-R09-S1-RD-F-120 | Bituminous Base & Wearing Courses Layers for Road Works- S.W 01-[Road 09] | 2027-07-08 → 2027-07-15 (+7d) | 2027-07-22 → 2027-07-29 (+7d) |  | -203.5d → -209.5d |  |
| CO-R09-S2-RD-F-110 | Application of Prime Coat Layer for Road Works- S.W 02-[Road 09] | 2027-07-12 → 2027-07-19 (+7d) | 2027-08-02 → 2027-08-09 (+7d) |  | -209.5d → -215.5d |  |
| CO-R09-S2-RD-F-130 | Bituminous Base & Wearing Courses Layers for Road Works- S.W 02-[Road 09] | 2027-07-15 → 2027-07-22 (+7d) | 2027-08-05 → 2027-08-12 (+7d) |  | -209.5d → -215.5d |  |
| TS | **Traffic Signs Boards and Roads Marking** | 2027-07-22 → 2027-07-29 (+7d) | 2027-09-09 → 2027-09-16 (+7d) |  |  |  |
| CO-R09-S1-RD-F-140 | Application of Road Marking Works For Road Works- S.W 01-[Road 09] | 2027-07-22 → 2027-07-29 (+7d) | 2027-08-05 → 2027-08-12 (+7d) |  | -191.5d → -197.5d |  |
| CO-R09-S1-RD-F-150 | Installation Works of Traffic Signs Boards For Road Works- S.W 01-[Road 09] | 2027-08-05 → 2027-08-12 (+7d) | 2027-08-19 → 2027-08-26 (+7d) |  | -191.5d → -197.5d |  |
| CO-R09-S2-RD-F-160 | Application of Road Marking Works For Road Works- S.W 02-[Road 09] | 2027-08-05 → 2027-08-12 (+7d) | 2027-08-23 → 2027-08-30 (+7d) |  | -209.5d → -215.5d |  |
| CO-R09-S2-RD-F-170 | Installation Works of Traffic Signs Boards For Road Works- S.W 02-[Road 09] | 2027-08-23 → 2027-08-30 (+7d) | 2027-09-09 → 2027-09-16 (+7d) |  | -209.5d → -215.5d |  |
| 4 | **Road 10 Local 2 ( 2352 LM )** |  | 2027-06-05 → 2027-06-12 (+7d) |  |  |  |
| 10 | **Sewage Network** | 2027-01-09 → 2026-11-11 (-59d) | 2027-02-08 → 2027-02-09 (+1d) |  |  |  |
| TF | **Testing and Finishes** | 2027-01-09 → 2026-11-11 (-59d) | 2027-02-08 → 2027-02-09 (+1d) |  |  |  |
| CO-R10-SW-TF-100 | Final Testing For Main Line of Sewage Network-[Road 10] | 2027-01-09 → 2026-11-11 A (-59d) | 2027-01-21 → 2026-11-15 A (-67d) | 0% → 100% | -139d → none | CO-R10.S03-ES-RD-100 SS+3d, CO-R10.S03-ES-RD-100 FF+3d, CO-R10.S04-ES-RD-100 SS+3d, CO-R10.S04-ES-RD-100 FF+3d, CO-R09.S02-SW-130, CO-R10.S03-WE-RD-100 SS+3d, CO-R10.S03-WE-RD-100 FF+3d, CO-R10.S04-WE-RD-100 SS+3d, CO-R10.S04-WE-RD-100 FF+3d → CO-R10.S03-ES-RD-100 SS+3d, CO-R10.S04-ES-RD-100 SS+3d, CO-R09.S02-SW-130 SS, CO-R10.S03-WE-RD-100 SS+3d, CO-R10.S04-WE-RD-100 SS+3d |
| CO-R10-SW-TF-110 | Install Manhole Cover Works for External Finishes of Sewage Network-[Road 10] | 2027-01-23 → 2027-01-24 (+1d) | 2027-02-04 → 2027-02-06 (+2d) |  | -139d → -140d |  |
| CO-R10-SW-TF-130 | Main Manhole Internal Finishes (Benching + Insulation) of Sewage Network-[Road 10] | 2027-01-26 → 2027-01-27 (+1d) | 2027-02-08 → 2027-02-09 (+1d) |  | -139d → -140d |  |
| 11 | **Storm Drainage Network** |  | 2027-02-04 → 2027-02-06 (+2d) |  |  |  |
| TF | **Testing and Finishes** |  | 2027-02-04 → 2027-02-06 (+2d) |  |  |  |
| CO-R10-SD-TF-110 | Install Catch Basin Cover Works for External Finishes of Storm Drainage Network-[Road 10] |  | 2027-01-17 → 2027-01-23 (+6d) |  | -104d → -109d |  |
| CO-R10-SD-TF-120 | Main Manhole Internal Finishes (Benching + Insulation ) for Storm Drainage Network-[Road 10] |  | 2027-02-04 → 2027-02-06 (+2d) |  | -120d → -121d |  |
| CO-R10-SD-TF-130 | Catch Basin Internal Finishes (Benching + Insulation ) for Storm Drainage Network-[Road 10] |  | 2027-02-04 → 2027-02-06 (+2d) |  | -47d → -48d |  |
| 9 | **Potable Water Network** | 2027-01-09 → 2027-01-14 (+5d) | 2027-04-17 → 2027-04-24 (+7d) |  |  |  |
| TF | **Testing and Finishes** | 2027-01-09 → 2027-01-14 (+5d) | 2027-04-17 → 2027-04-24 (+7d) |  |  |  |
| CO-R10-PW-TF-100 | Final Finishes works and Covers for Valves and Valve Chambers of Potable Water Network-[Road 10] | 2027-01-09 → 2027-01-14 (+5d) | 2027-01-21 → 2027-01-27 (+6d) |  | -127d → -132d |  |
| CO-R10-PW-TF-120 | Fire Hydrant Finishies (S.Box + Safety + Marker Post ) of Potable Water Network-[Road 10] | 2027-01-23 → 2027-01-28 (+5d) | 2027-02-04 → 2027-02-10 (+6d) |  | -127d → -132d |  |
| CO-R10-PW-TF-110 | Testing Work for Main Line of Potable Water Network-[Road 10] | 2027-04-04 → 2027-04-11 (+7d) | 2027-04-17 → 2027-04-24 (+7d) |  | -184d → -190d |  |
| 13 | **Irrigation Network** | 2027-01-14 → 2027-01-20 (+6d) | 2027-01-25 → 2027-01-31 (+6d) |  |  |  |
| TF | **Testing and Finishes** | 2027-01-14 → 2027-01-20 (+6d) | 2027-01-25 → 2027-01-31 (+6d) |  |  |  |
| CO-R10-IR-TF-120 | Final Testing (pressure tests) of Irrigation Network-[Road 10] | 2027-01-14 → 2027-01-20 (+6d) | 2027-01-25 → 2027-01-31 (+6d) |  | -126d → -131d |  |
| 12 | **Street Lighting Network** | 2026-12-30 → 2027-01-06 (+7d) | 2027-03-13 → 2027-03-20 (+7d) |  |  |  |
| TR | **Termination and Testing Works** | 2026-12-30 → 2027-01-06 (+7d) | 2027-03-13 → 2027-03-20 (+7d) |  |  |  |
| CO-R10-SL-TF-140 | Termination Works For Lighting Poles Cables of Street Lighting Network-[Road 10] | 2026-12-30 → 2027-01-06 (+7d) | 2027-01-12 → 2027-01-19 (+7d) |  | -185d → -191d |  |
| CO-R10-SL-TF-150 | Termination Works For Panel Board Cables of Street Lighting Network-[Road 10] | 2027-02-21 → 2027-03-01 (+8d) | 2027-03-07 → 2027-03-17 (+10d) |  | -185d → -191d |  |
| CO-R10-SL-TF-380 | Testing Works For Panel Board Cables of Street Lighting Network-[Road 10] | 2027-03-08 → 2027-03-18 (+10d) | 2027-03-13 → 2027-03-20 (+7d) |  | -165d → -171d |  |
| ES | **Earthing System Works** | 2027-01-13 → 2027-01-20 (+7d) | 2027-02-13 → 2027-02-20 (+7d) |  |  |  |
| CO-R10-SL-ES-140 | Install Earthing System Works for Lighting Poles of Street Lighting Network-[Road 10] | 2027-01-13 → 2027-01-20 (+7d) | 2027-01-26 → 2027-02-02 (+7d) |  | -185d → -191d |  |
| CO-R10-SL-ES-150 | Install Earthing System Works for Lighting Panel Boards of Street Lighting Network-[Road 10] | 2027-01-31 → 2027-02-07 (+7d) | 2027-02-13 → 2027-02-20 (+7d) |  | -185d → -191d |  |
| 14 | **Medium Voltage Network** | 2026-11-17 → 2026-11-24 (+7d) | 2026-11-24 → 2026-12-01 (+7d) |  |  |  |
| TT | **Termination and Testing Works** | 2026-11-17 → 2026-11-24 (+7d) | 2026-11-24 → 2026-12-01 (+7d) |  |  |  |
| CO-R10-MV-TF-140 | Termination Works of Medium Voltage Network-[Road 10] | 2026-11-17 → 2026-11-24 (+7d) | 2026-11-24 → 2026-12-01 (+7d) |  | -58d → -64d |  |
| 1 | **Road Works** | 2027-04-29 → 2027-05-06 (+7d) | 2027-06-05 → 2027-06-12 (+7d) |  |  |  |
| 1 | **Bituminous Construction** | 2027-04-29 → 2027-05-06 (+7d) | 2027-05-22 → 2027-05-29 (+7d) |  |  |  |
| CO-R10-S03-RD-F-110 | Application of Prime Coat Layer for Road Works- S.W 05-[Road 10] | 2027-04-29 → 2027-05-06 (+7d) | 2027-05-10 → 2027-05-23 (+13d) |  | -177d → -183d |  |
| CO-R10-S04-RD-F-140 | Application of Prime Coat Layer for Road Works- S.W 06-[Road 10] | 2027-05-02 → 2027-05-09 (+7d) | 2027-05-12 → 2027-05-25 (+13d) |  | -177d → -183d |  |
| CO-R10-S03-RD-F-120 | Bituminous Base & Wearing Courses Layers for Road Works- S.W 05-[Road 10] | 2027-05-03 → 2027-05-10 (+7d) | 2027-05-13 → 2027-05-26 (+13d) |  | -177d → -183d |  |
| CO-R10-S04-RD-F-150 | Bituminous Base & Wearing Courses Layers for Road Works- S.W 06-[Road 10] | 2027-05-05 → 2027-05-12 (+7d) | 2027-05-22 → 2027-05-29 (+7d) |  | -177d → -183d |  |
| TS | **Traffic Signs Boards and Roads Marking** | 2027-05-20 → 2027-05-27 (+7d) | 2027-06-05 → 2027-06-12 (+7d) |  |  |  |
| CO-R10-S03-RD-F-100 | Installation Works of Traffic Signs Boards For Road Works- S.W 05-[Road 10] | 2027-05-20 → 2027-05-27 (+7d) | 2027-06-02 → 2027-06-09 (+7d) |  | -177d → -183d |  |
| CO-R10-S03-RD-F-160 | Application of Road Marking Works For Road Works- S.W 05-[Road 10] | 2027-05-20 → 2027-05-27 (+7d) | 2027-06-02 → 2027-06-09 (+7d) |  | -177d → -183d |  |
| CO-R10-S04-RD-F-170 | Application of Road Marking Works For Road Works- S.W 06-[Road 10] | 2027-05-23 → 2027-05-30 (+7d) | 2027-06-05 → 2027-06-12 (+7d) |  | -177d → -183d |  |
| CO-R10-S04-RD-F-130 | Installation Works of Traffic Signs Boards For Road Works- S.W 06-[Road 10] | 2027-05-25 → 2027-06-01 (+7d) | 2027-06-05 → 2027-06-12 (+7d) |  | -176d → -182d |  |
| 5 | **Road 11 Local 1 ( 670 LM )** |  | 2027-06-16 → 2027-06-23 (+7d) |  |  |  |
| 10 | **Sewage Network** |  | 2027-02-23 → 2027-02-24 (+1d) |  |  |  |
| TF | **Testing and Finishes** |  | 2027-02-23 → 2027-02-24 (+1d) |  |  |  |
| CO-R11-SW-TF-110 | Install Manhole Cover Works for External Finishes of Sewage Network-[Road 11] | 2027-02-06 → 2027-02-07 (+1d) | 2027-02-18 → 2027-02-20 (+2d) |  | -139d → -140d |  |
| CO-R11-SW-TF-130 | Main Manhole Internal Finishes (Benching + Insulation) of Sewage Network-[Road 11] | 2027-02-09 → 2027-02-10 (+1d) | 2027-02-23 → 2027-02-24 (+1d) |  | -139d → -140d |  |
| 11 | **Storm Drainage Network** |  | 2027-02-18 → 2027-02-20 (+2d) |  |  |  |
| TF | **Testing and Finishes** |  | 2027-02-18 → 2027-02-20 (+2d) |  |  |  |
| CO-R11-SD-TF-130 | Catch Basin Internal Finishes (Benching + Insulation ) for Storm Drainage Network-[Road 11] |  | 2027-02-18 → 2027-02-20 (+2d) |  | -59d → -60d |  |
| CO-R11-SD-TF-120 | Main Manhole Internal Finishes (Benching + Insulation ) for Storm Drainage Network-[Road 11] |  | 2027-02-18 → 2027-02-20 (+2d) |  | -59d → -60d |  |
| CO-R11-SD-TF-110 | Install Catch Basin Cover Works for External Finishes of Storm Drainage Network-[Road 11] |  | 2027-01-17 → 2027-01-23 (+6d) |  | -34d → -39d |  |
| 9 | **Potable Water Network** | 2027-01-23 → 2027-01-28 (+5d) | 2027-05-01 → 2027-05-08 (+7d) |  |  |  |
| TF | **Testing and Finishes** | 2027-01-23 → 2027-01-28 (+5d) | 2027-05-01 → 2027-05-08 (+7d) |  |  |  |
| CO-R11-PW-TF-100 | Final Finishes works and Covers for Valves and Valve Chambers of Potable Water Network-[Road 11] | 2027-01-23 → 2027-01-28 (+5d) | 2027-02-04 → 2027-02-10 (+6d) |  | -127d → -132d |  |
| CO-R11-PW-TF-120 | Fire Hydrant Finishies (S.Box + Safety + Marker Post ) of Potable Water Network-[Road 11] | 2027-02-06 → 2027-02-11 (+5d) | 2027-02-18 → 2027-02-25 (+7d) |  | -127d → -132d |  |

| ID | Task | Start | Finish | Total float |
| --- | --- | --- | --- | --- |
| CO-R11-PW-TF-110 | Testing Work for Main Line of Potable Water Network-[Road 11] | 2027-04-18 → 2027-04-25 (+7d) | 2027-05-01 → 2027-05-08 (+7d) | -184d → -190d |
| 13 | **Irrigation Network** | 2027-01-26 → 2027-02-01 (+6d) | 2027-02-06 → 2027-02-11 (+5d) |  |
| TF | **Testing and Finishes** | 2027-01-26 → 2027-02-01 (+6d) | 2027-02-06 → 2027-02-11 (+5d) |  |
| CO-R11-IR-TF-130 | Final Testing (pressure tests) of Irrigation Network-[Road 11] | 2027-01-26 → 2027-02-01 (+6d) | 2027-02-06 → 2027-02-11 (+5d) | -126d → -131d |
| 12 | **Street Lighting Network** | 2027-02-07 → 2027-02-14 (+7d) | 2027-03-27 → 2027-04-03 (+7d) |  |
| TR | **Termination and Testing Works** | 2027-02-07 → 2027-02-14 (+7d) | 2027-03-27 → 2027-04-03 (+7d) |  |
| CO-R11-SL-TF-160 | Termination Works For Lighting Poles Cables of Street Lighting Network-[Road 11] | 2027-02-07 → 2027-02-14 (+7d) | 2027-02-20 → 2027-02-28 (+8d) | -157d → -163d |
| CO-R11-SL-TF-170 | Termination Works For Panel Board Cables of Street Lighting Network-[Road 11] | 2027-03-08 → 2027-03-18 (+10d) | 2027-03-24 → 2027-03-31 (+7d) | -185d → -191d |
| CO-R11-SL-TF-380 | Testing Works For Panel Board Cables of Street Lighting Network-[Road 11] | 2027-03-25 → 2027-04-01 (+7d) | 2027-03-27 → 2027-04-03 (+7d) | -175d → -181d |
| 14 | **Medium Voltage Network** | 2026-11-25 → 2026-12-02 (+7d) | 2026-12-02 → 2026-12-09 (+7d) |  |
| TT | **Termination and Testing Works** | 2026-11-25 → 2026-12-02 (+7d) | 2026-12-02 → 2026-12-09 (+7d) |  |
| CO-R11-MV-TF-160 | Termination Works of Medium Voltage Network-[Road 11] | 2026-11-25 → 2026-12-02 (+7d) | 2026-12-02 → 2026-12-09 (+7d) | -58d → -64d |
| 1 | **Road Works** |  | 2027-06-16 → 2027-06-23 (+7d) |  |
| 1 | **Bituminous Construction** |  | 2027-06-05 → 2027-06-12 (+7d) |  |
| CO-R11-S05-RD-F-120 | Bituminous Base & Wearing Courses Layers for Road Works- S.W 07-[Road 11] | 2027-05-20 → 2027-05-27 (+7d) | 2027-06-02 → 2027-06-09 (+7d) | -177d → -183d |
| CO-R11-S06-RD-F-150 | Bituminous Base & Wearing Courses Layers for Road Works- S.W 08-[Road 11] | 2027-05-23 → 2027-05-30 (+7d) | 2027-06-05 → 2027-06-12 (+7d) | -177d → -183d |
| TS | **Traffic Signs Boards and Roads Marking** | 2027-06-03 → 2027-06-10 (+7d) | 2027-06-16 → 2027-06-23 (+7d) |  |
| CO-R11-S05-RD-F-100 | Installation Works of Traffic Signs Boards For Road Works- S.W 07-[Road 11] | 2027-06-03 → 2027-06-10 (+7d) | 2027-06-14 → 2027-06-21 (+7d) | -177d → -183d |
| CO-R11-S05-RD-F-160 | Application of Road Marking Works For Road Works- S.W 07-[Road 11] | 2027-06-03 → 2027-06-10 (+7d) | 2027-06-14 → 2027-06-21 (+7d) | -177d → -183d |
| CO-R11-S06-RD-F-130 | Installation Works of Traffic Signs Boards For Road Works- S.W 08-[Road 11] | 2027-06-06 → 2027-06-13 (+7d) | 2027-06-16 → 2027-06-23 (+7d) | -176d → -182d |
| CO-R11-S06-RD-F-170 | Application of Road Marking Works For Road Works- S.W 08-[Road 11] | 2027-06-06 → 2027-06-13 (+7d) | 2027-06-16 → 2027-06-23 (+7d) | -177d → -183d |
| 6 | **Road 14 Local 1 ( 584 LM )** |  | 2027-07-03 → 2027-07-10 (+7d) |  |
| 10 | **Sewage Network** |  | 2027-03-13 → 2027-03-14 (+1d) |  |
| TF | **Testing and Finishes** |  | 2027-03-13 → 2027-03-14 (+1d) |  |
| CO-R14-SW-TF-110 | Install Manhole Cover Works for External Finishes of Sewage Network-[Road 14] | 2027-02-20 → 2027-02-21 (+1d) | 2027-03-06 → 2027-03-07 (+1d) | -139d → -140d |
| CO-R14-SW-TF-130 | Main Manhole Internal Finishes (Benching + Insulation) of Sewage Network-[Road 14] | 2027-02-24 → 2027-02-25 (+1d) | 2027-03-13 → 2027-03-14 (+1d) | -139d → -140d |
| 9 | **Potable Water Network** | 2027-02-06 → 2027-02-11 (+5d) | 2027-05-20 → 2027-05-27 (+7d) |  |
| TF | **Testing and Finishes** | 2027-02-06 → 2027-02-11 (+5d) | 2027-05-20 → 2027-05-27 (+7d) |  |
| CO-R14-PW-TF-100 | Final Finishes works and Covers for Valves and Valve Chambers of Potable Water Network-[Road 14] | 2027-02-06 → 2027-02-11 (+5d) | 2027-02-18 → 2027-02-25 (+7d) | -127d → -132d |
| CO-R14-PW-TF-120 | Fire Hydrant Finishies (S.Box + Safety + Marker Post ) of Potable Water Network-[Road 14] | 2027-02-20 → 2027-02-27 (+7d) | 2027-03-06 → 2027-03-15 (+9d) | -127d → -132d |
| CO-R14-PW-TF-110 | Testing Work for Main Line of Potable Water Network-[Road 14] | 2027-05-02 → 2027-05-09 (+7d) | 2027-05-20 → 2027-05-27 (+7d) | -184d → -190d |
| 13 | **Irrigation Network** | 2027-02-07 → 2027-02-13 (+6d) | 2027-02-17 → 2027-02-24 (+7d) |  |
| TF | **Testing and Finishes** | 2027-02-07 → 2027-02-13 (+6d) | 2027-02-17 → 2027-02-24 (+7d) |  |
| CO-R11-IR-TF-140 | Final Testing (pressure tests) of Irrigation Network-[Road 14] | 2027-02-07 → 2027-02-13 (+6d) | 2027-02-17 → 2027-02-24 (+7d) | -126d → -131d |
| 12 | **Street Lighting Network** | 2027-02-21 → 2027-03-01 (+8d) | 2027-04-10 → 2027-04-17 (+7d) |  |
| TR | **Termination and Testing Works** | 2027-02-21 → 2027-03-01 (+8d) | 2027-04-10 → 2027-04-17 (+7d) |  |
| CO-R11-SL-TF-180 | Termination Works For Lighting Poles Cables of Street Lighting Network-[Road 14] | 2027-02-21 → 2027-03-01 (+8d) | 2027-03-07 → 2027-03-17 (+10d) | -157d → -163d |
| CO-R11-SL-TF-190 | Termination Works For Panel Board Cables of Street Lighting Network-[Road 14] | 2027-03-25 → 2027-04-01 (+7d) | 2027-04-07 → 2027-04-14 (+7d) | -185d → -191d |
| CO-R14-SL-TF-380 | Testing Works For Panel Board Cables of Street Lighting Network-[Road 14] | 2027-04-08 → 2027-04-15 (+7d) | 2027-04-10 → 2027-04-17 (+7d) | -185d → -191d |
| 14 | **Medium Voltage Network** | 2026-12-03 → 2026-12-10 (+7d) | 2026-12-10 → 2026-12-17 (+7d) |  |
| TT | **Termination and Testing Works** | 2026-12-03 → 2026-12-10 (+7d) | 2026-12-10 → 2026-12-17 (+7d) |  |
| CO-R11-MV-TF-180 | Termination Works of Medium Voltage Network-[Road 14] | 2026-12-03 → 2026-12-10 (+7d) | 2026-12-10 → 2026-12-17 (+7d) | -58d → -64d |
| 1 | **Road Works** | 2027-06-05 → 2027-06-12 (+7d) | 2027-07-03 → 2027-07-10 (+7d) |  |
| 1 | **Bituminous Construction** | 2027-06-05 → 2027-06-12 (+7d) | 2027-06-21 → 2027-06-28 (+7d) |  |
| CO-R11-S07-RD-F-110 | Application of Prime Coat Layer for Road Works- S.W 09-[Road 14] | 2027-06-05 → 2027-06-12 (+7d) | 2027-06-17 → 2027-06-24 (+7d) | -181d → -187d |
| CO-R11-S08-RD-F-140 | Application of Prime Coat Layer for Road Works- S.W 10-[Road 14] | 2027-06-05 → 2027-06-12 (+7d) | 2027-06-15 → 2027-06-22 (+7d) | -179d → -185d |
| CO-R11-S07-RD-F-120 | Bituminous Base & Wearing Courses Layers for Road Works- S.W 09-[Road 14] | 2027-06-10 → 2027-06-17 (+7d) | 2027-06-21 → 2027-06-28 (+7d) | -181d → -187d |
| CO-R11-S08-RD-F-150 | Bituminous Base & Wearing Courses Layers for Road Works- S.W 10-[Road 14] | 2027-06-10 → 2027-06-17 (+7d) | 2027-06-21 → 2027-06-28 (+7d) | -181d → -187d |
| TS | **Traffic Signs Boards and Roads Marking** | 2027-06-20 → 2027-06-27 (+7d) | 2027-07-03 → 2027-07-10 (+7d) |  |
| CO-R11-S07-RD-F-100 | Installation Works of Traffic Signs Boards For Road Works- S.W 09-[Road 14] | 2027-06-20 → 2027-06-27 (+7d) | 2027-07-03 → 2027-07-10 (+7d) | -181d → -187d |
| CO-R11-S07-RD-F-160 | Application of Road Marking Works For Road Works- S.W 09-[Road 14] | 2027-06-22 → 2027-06-29 (+7d) | 2027-07-03 → 2027-07-10 (+7d) | -181d → -187d |
| CO-R11-S08-RD-F-130 | Installation Works of Traffic Signs Boards For Road Works- S.W 10-[Road 14] | 2027-06-22 → 2027-06-29 (+7d) | 2027-07-03 → 2027-07-10 (+7d) | -180d → -186d |
| CO-R11-S08-RD-F-170 | Application of Road Marking Works For Road Works- S.W 10-[Road 14] | 2027-06-22 → 2027-06-29 (+7d) | 2027-07-03 → 2027-07-10 (+7d) | -181d → -187d |
| 7 | **Road 15 Local 1 ( 556 LM )** |  | 2027-07-17 → 2027-07-24 (+7d) |  |
| 10 | **Sewage Network** |  | 2027-03-27 → 2027-03-28 (+1d) |  |
| TF | **Testing and Finishes** |  | 2027-03-27 → 2027-03-28 (+1d) |  |
| CO-R15-SW-TF-110 | Install Manhole Cover Works for External Finishes of Sewage Network-[Road 15] | 2027-03-07 → 2027-03-08 (+1d) | 2027-03-23 → 2027-03-24 (+1d) | -139d → -140d |
| CO-R15-SW-TF-130 | Main Manhole Internal Finishes (Benching + Insulation) of Sewage Network-[Road 15] | 2027-03-14 → 2027-03-15 (+1d) | 2027-03-27 → 2027-03-28 (+1d) | -139d → -140d |
| 11 | **Storm Drainage Network** |  | 2027-04-11 → 2027-04-12 (+1d) |  |
| TF | **Testing and Finishes** |  | 2027-04-11 → 2027-04-12 (+1d) |  |
| CO-R15-SD-TF-110 | Install Catch Basin Cover Works for External Finishes of Storm Drainage Network-[Road 15] | 2026-11-17 → 2026-11-24 (+7d) | 2026-11-30 → 2026-12-07 (+7d) | -34d → -40d |
| CO-R15-SD-TF-130 | Catch Basin Internal Finishes (Benching + Insulation ) for Storm Drainage Network-[Road 15] | 2027-03-24 → 2027-03-25 (+1d) | 2027-04-11 → 2027-04-12 (+1d) | -127d → -128d |
| 9 | **Potable Water Network** | 2027-02-20 → 2027-02-27 (+7d) | 2027-06-03 → 2027-06-10 (+7d) |  |
| TF | **Testing and Finishes** | 2027-02-20 → 2027-02-27 (+7d) | 2027-06-03 → 2027-06-10 (+7d) |  |
| CO-R15-PW-TF-100 | Final Finishes works and Covers for Valves and Valve Chambers of Potable Water Network-[Road 15] | 2027-02-20 → 2027-02-27 (+7d) | 2027-03-06 → 2027-03-15 (+9d) | -127d → -132d |
| CO-R15-PW-TF-120 | Fire Hydrant Finishies (S.Box + Safety + Marker Post ) of Potable Water Network-[Road 15] | 2027-03-07 → 2027-03-16 (+9d) | 2027-03-23 → 2027-03-29 (+6d) | -127d → -132d |
| CO-R15-PW-TF-110 | Testing Work for Main Line of Potable Water Network-[Road 15] | 2027-05-22 → 2027-05-29 (+7d) | 2027-06-03 → 2027-06-10 (+7d) | -184d → -190d |
| 13 | **Irrigation Network** | 2027-02-18 → 2027-02-25 (+7d) | 2027-03-02 → 2027-03-08 (+6d) |  |
| TF | **Testing and Finishes** | 2027-02-18 → 2027-02-25 (+7d) | 2027-03-02 → 2027-03-08 (+6d) |  |
| CO-R15-IR-TF-150 | Final Testing (pressure tests) of Irrigation Network-[Road 15] | 2027-02-18 → 2027-02-25 (+7d) | 2027-03-02 → 2027-03-08 (+6d) | -126d → -131d |

| ID | Task | Start | Finish | Total float |
| --- | --- | --- | --- | --- |
| 12 | **Street Lighting Network** | 2027-03-08 → 2027-03-18 (+10d) | 2027-05-12 → 2027-05-25 (+13d) |  |
| TR | **Termination and Testing Works** | 2027-03-08 → 2027-03-18 (+10d) | 2027-05-12 → 2027-05-25 (+13d) |  |
| CO-R15-SL-TF-200 | Termination Works For Lighting Poles Cables of Street Lighting Network-[Road 15] | 2027-03-08 → 2027-03-18 (+10d) | 2027-03-24 → 2027-03-31 (+7d) | -157d → -163d |
| CO-R15-SL-TF-210 | Termination Works For Panel Board Cables of Street Lighting Network-[Road 15] | 2027-04-11 → 2027-04-18 (+7d) | 2027-04-24 → 2027-05-01 (+7d) | -185d → -191d |
| CO-R15-SL-TF-380 | Testing Works For Panel Board Cables of Street Lighting Network-[Road 15] | 2027-04-25 → 2027-05-02 (+7d) | 2027-05-12 → 2027-05-25 (+13d) | -179d → -185d |
| 14 | **Medium Voltage Network** | 2026-12-12 → 2026-12-19 (+7d) | 2026-12-19 → 2026-12-26 (+7d) |  |
| TT | **Termination and Testing Works** | 2026-12-12 → 2026-12-19 (+7d) | 2026-12-19 → 2026-12-26 (+7d) |  |
| CO-R15-MV-TF-200 | Termination Works of Medium Voltage Network-[Road 15] | 2026-12-12 → 2026-12-19 (+7d) | 2026-12-19 → 2026-12-26 (+7d) | -58d → -64d |
| 1 | **Road Works** |  | 2027-07-17 → 2027-07-24 (+7d) |  |
| TS | **Traffic Signs Boards and Roads Marking** | 2027-07-04 → 2027-07-11 (+7d) | 2027-07-17 → 2027-07-24 (+7d) |  |
| CO-R15-S09-RD-F-100 | Installation Works of Traffic Signs Boards For Road Works- S.W 11-[Road 15] | 2027-07-04 → 2027-07-11 (+7d) | 2027-07-14 → 2027-07-21 (+7d) | -181d → -187d |
| CO-R15-S09-RD-F-160 | Application of Road Marking Works For Road Works- S.W 11-[Road 15] | 2027-07-04 → 2027-07-11 (+7d) | 2027-07-14 → 2027-07-21 (+7d) | -181d → -187d |
| CO-R15-S10-RD-F-130 | Installation Works of Traffic Signs Boards For Road Works- S.W 12-[Road 15] | 2027-07-04 → 2027-07-11 (+7d) | 2027-07-17 → 2027-07-24 (+7d) | -180d → -186d |
| CO-R15-S10-RD-F-170 | Application of Road Marking Works For Road Works- S.W 12-[Road 15] | 2027-07-04 → 2027-07-11 (+7d) | 2027-07-14 → 2027-07-21 (+7d) | -181d → -187d |
| 8 | **Road 16 Local 1 ( 527 LM )** |  | 2027-07-28 → 2027-08-04 (+7d) |  |
| 10 | **Sewage Network** |  | 2027-04-10 → 2027-04-11 (+1d) |  |
| TF | **Testing and Finishes** |  | 2027-04-10 → 2027-04-11 (+1d) |  |
| CO-R16-SW-TF-110 | Install Manhole Cover Works for External Finishes of Sewage Network-[Road 16] | 2027-03-24 → 2027-03-25 (+1d) | 2027-04-06 → 2027-04-07 (+1d) | -139d → -140d |
| CO-R16-SW-TF-130 | Main Manhole Internal Finishes (Benching + Insulation) of Sewage Network-[Road 16] | 2027-03-28 → 2027-03-29 (+1d) | 2027-04-10 → 2027-04-11 (+1d) | -139d → -140d |
| 11 | **Storm Drainage Network** |  | 2027-04-29 → 2027-05-01 (+2d) |  |
| TF | **Testing and Finishes** |  | 2027-04-29 → 2027-05-01 (+2d) |  |
| CO-R16-SD-TF-100 | Testing Work for Pipes of Storm Drainage Network-[Road 16] | 2027-01-02 → 2026-11-24 (-39d) | 2027-01-19 → 2026-12-12 (-38d) | -61d → -28d |
| CO-R16-SD-TF-110 | Install Catch Basin Cover Works for External Finishes of Storm Drainage Network-[Road 16] | 2026-12-01 → 2026-12-08 (+7d) | 2026-12-14 → 2026-12-21 (+7d) | -30d → -36d |
| CO-R16-SD-TF-130 | Catch Basin Internal Finishes (Benching + Insulation ) for Storm Drainage Network-[Road 16] | 2027-04-12 → 2027-04-13 (+1d) | 2027-04-29 → 2027-05-01 (+2d) | -127d → -128d |
| 9 | **Potable Water Network** | 2027-03-07 → 2027-03-16 (+9d) | 2027-06-17 → 2027-06-24 (+7d) |  |
| TF | **Testing and Finishes** | 2027-03-07 → 2027-03-16 (+9d) | 2027-06-17 → 2027-06-24 (+7d) |  |
| CO-R16-PW-TF-100 | Final Finishes works and Covers for Valves and Valve Chambers of Potable Water Network-[Road 16] | 2027-03-07 → 2027-03-16 (+9d) | 2027-03-23 → 2027-03-29 (+6d) | -127d → -132d |
| CO-R16-PW-TF-120 | Fire Hydrant Finishies (S.Box + Safety + Marker Post ) of Potable Water Network-[Road 16] | 2027-03-24 → 2027-03-30 (+6d) | 2027-04-06 → 2027-04-12 (+6d) | -127d → -132d |
| CO-R16-PW-TF-110 | Testing Work for Main Line of Potable Water Network-[Road 16] | 2027-06-05 → 2027-06-12 (+7d) | 2027-06-17 → 2027-06-24 (+7d) | -184d → -190d |
| 13 | **Irrigation Network** | 2027-03-03 → 2027-03-13 (+10d) | 2027-03-17 → 2027-03-23 (+6d) |  |
| TF | **Testing and Finishes** | 2027-03-03 → 2027-03-13 (+10d) | 2027-03-17 → 2027-03-23 (+6d) |  |
| CO-R16-IR-TF-160 | Final Testing (pressure tests) of Irrigation Network-[Road 16] | 2027-03-03 → 2027-03-13 (+10d) | 2027-03-17 → 2027-03-23 (+6d) | -126d → -131d |
| 12 | **Street Lighting Network** | 2027-03-25 → 2027-04-01 (+7d) | 2027-05-20 → 2027-05-27 (+7d) |  |
| TR | **Termination and Testing Works** | 2027-03-25 → 2027-04-01 (+7d) | 2027-05-20 → 2027-05-27 (+7d) |  |
| CO-R16-SL-TF-220 | Termination Works For Lighting Poles Cables of Street Lighting Network-[Road 16] | 2027-03-25 → 2027-04-01 (+7d) | 2027-04-07 → 2027-04-14 (+7d) | -157d → -163d |
| CO-R16-SL-TF-230 | Termination Works For Panel Board Cables of Street Lighting Network-[Road 16] | 2027-04-25 → 2027-05-02 (+7d) | 2027-05-08 → 2027-05-20 (+12d) | -185d → -191d |
| CO-R16-SL-TF-380 | Testing Works For Panel Board Cables of Street Lighting Network-[Road 16] | 2027-05-13 → 2027-05-26 (+13d) | 2027-05-20 → 2027-05-27 (+7d) | -179d → -185d |
| 14 | **Medium Voltage Network** | 2026-12-20 → 2026-12-27 (+7d) | 2026-12-27 → 2027-01-03 (+7d) |  |
| TT | **Termination and Testing Works** | 2026-12-20 → 2026-12-27 (+7d) | 2026-12-27 → 2027-01-03 (+7d) |  |
| CO-R16-MV-TF-220 | Termination Works of Medium Voltage Network-[Road 16] | 2026-12-20 → 2026-12-27 (+7d) | 2026-12-27 → 2027-01-03 (+7d) | -58d → -64d |
| 1 | **Road Works** |  | 2027-07-28 → 2027-08-04 (+7d) |  |
| TS | **Traffic Signs Boards and Roads Marking** | 2027-07-15 → 2027-07-22 (+7d) | 2027-07-28 → 2027-08-04 (+7d) |  |
| CO-R16-S11-RD-F-100 | Installation Works of Traffic Signs Boards For Road Works- S.W 13-[Road 16] | 2027-07-15 → 2027-07-22 (+7d) | 2027-07-26 → 2027-08-02 (+7d) | -181d → -187d |
| CO-R16-S11-RD-F-160 | Application of Road Marking Works For Road Works- S.W 13-[Road 16] | 2027-07-15 → 2027-07-22 (+7d) | 2027-07-26 → 2027-08-02 (+7d) | -181d → -187d |
| CO-R16-S12-RD-F-170 | Application of Road Marking Works For Road Works- S.W 14-[Road 16] | 2027-07-15 → 2027-07-22 (+7d) | 2027-07-26 → 2027-08-02 (+7d) | -181d → -187d |
| CO-R16-S12-RD-F-130 | Installation Works of Traffic Signs Boards For Road Works- S.W 14-[Road 16] | 2027-07-18 → 2027-07-25 (+7d) | 2027-07-28 → 2027-08-04 (+7d) | -180d → -186d |
| 9 | **Road 17 Local 1 ( 500 LM )** |  | 2027-08-07 → 2027-08-14 (+7d) |  |
| 10 | **Sewage Network** |  | 2027-04-24 → 2027-04-25 (+1d) |  |
| TF | **Testing and Finishes** |  | 2027-04-24 → 2027-04-25 (+1d) |  |
| CO-R17-SW-TF-110 | Install Manhole Cover Works for External Finishes of Sewage Network-[Road 17] | 2027-04-07 → 2027-04-08 (+1d) | 2027-04-20 → 2027-04-21 (+1d) | -139d → -140d |
| CO-R17-SW-TF-130 | Main Manhole Internal Finishes (Benching + Insulation) of Sewage Network-[Road 17] | 2027-04-11 → 2027-04-12 (+1d) | 2027-04-24 → 2027-04-25 (+1d) | -139d → -140d |
| 11 | **Storm Drainage Network** |  | 2027-05-13 → 2027-05-20 (+7d) |  |
| TF | **Testing and Finishes** |  | 2027-05-13 → 2027-05-20 (+7d) |  |
| CO-R17-SD-TF-100 | Testing Work for Pipes of Storm Drainage Network-[Road 17] | 2027-01-20 → 2026-12-13 (-38d) | 2027-02-07 → 2026-12-30 (-39d) | -61d → -28d |
| CO-R17-SD-TF-110 | Install Catch Basin Cover Works for External Finishes of Storm Drainage Network-[Road 17] | 2026-12-15 → 2026-12-22 (+7d) | 2026-12-28 → 2027-01-04 (+7d) | -26d → -32d |
| CO-R17-SD-TF-130 | Catch Basin Internal Finishes (Benching + Insulation ) for Storm Drainage Network-[Road 17] | 2027-05-01 → 2027-05-02 (+1d) | 2027-05-13 → 2027-05-20 (+7d) | -127d → -128d |
| 9 | **Potable Water Network** | 2027-03-24 → 2027-03-30 (+6d) | 2027-07-01 → 2027-07-08 (+7d) |  |
| TF | **Testing and Finishes** | 2027-03-24 → 2027-03-30 (+6d) | 2027-07-01 → 2027-07-08 (+7d) |  |
| CO-R17-PW-TF-100 | Final Finishes works and Covers for Valves and Valve Chambers of Potable Water Network-[Road 17] | 2027-03-24 → 2027-03-30 (+6d) | 2027-04-06 → 2027-04-12 (+6d) | -127d → -132d |
| CO-R17-PW-TF-120 | Fire Hydrant Finishies (S.Box + Safety + Marker Post ) of Potable Water Network-[Road 17] | 2027-04-07 → 2027-04-13 (+6d) | 2027-04-20 → 2027-04-26 (+6d) | -127d → -132d |
| CO-R17-PW-TF-110 | Testing Work for Main Line of Potable Water Network-[Road 17] | 2027-06-19 → 2027-06-26 (+7d) | 2027-07-01 → 2027-07-08 (+7d) | -184d → -190d |
| 13 | **Irrigation Network** | 2027-03-18 → 2027-03-24 (+6d) | 2027-03-29 → 2027-04-04 (+6d) |  |
| TF | **Testing and Finishes** | 2027-03-18 → 2027-03-24 (+6d) | 2027-03-29 → 2027-04-04 (+6d) |  |
| CO-R17-IR-TF-170 | Final Testing (pressure tests) of Irrigation Network-[Road 17] | 2027-03-18 → 2027-03-24 (+6d) | 2027-03-29 → 2027-04-04 (+6d) | -126d → -131d |
| 12 | **Street Lighting Network** | 2027-04-08 → 2027-04-15 (+7d) | 2027-05-30 → 2027-06-06 (+7d) |  |
| TR | **Termination and Testing Works** | 2027-04-08 → 2027-04-15 (+7d) | 2027-05-30 → 2027-06-06 (+7d) |  |
| CO-R17-SL-TF-240 | Termination Works For Lighting Poles Cables of Street Lighting Network-[Road 17] | 2027-04-08 → 2027-04-15 (+7d) | 2027-04-21 → 2027-04-28 (+7d) | -157d → -163d |
| CO-R17-SL-TF-250 | Termination Works For Panel Board Cables of Street Lighting Network-[Road 17] | 2027-05-09 → 2027-05-22 (+13d) | 2027-05-27 → 2027-06-03 (+7d) | -185d → -191d |
| CO-R17-SL-TF-380 | Testing Works For Panel Board Cables of Street Lighting Network-[Road 17] | 2027-05-29 → 2027-06-05 (+7d) | 2027-05-30 → 2027-06-06 (+7d) | -185d → -191d |
| 14 | **Medium Voltage Network** | 2026-12-28 → 2027-01-04 (+7d) | 2027-01-04 → 2027-01-11 (+7d) |  |

| ID | Task | Start | Finish | Total float |
| --- | --- | --- | --- | --- |
| TT | **Termination and Testing Works** | 2026-12-28 → 2027-01-04 (+7d) | 2027-01-04 → 2027-01-11 (+7d) |  |
| CO-R17-MV-TF-240 | Termination Works of Medium Voltage Network-[Road 17] | 2026-12-28 → 2027-01-04 (+7d) | 2027-01-04 → 2027-01-11 (+7d) | -58d → -64d |
| 1 | **Road Works** |  | 2027-08-07 → 2027-08-14 (+7d) |  |
| TS | **Traffic Signs Boards and Roads Marking** | 2027-07-27 → 2027-08-03 (+7d) | 2027-08-07 → 2027-08-14 (+7d) |  |
| CO-R17-S13-RD-F-100 | Installation Works of Traffic Signs Boards For Road Works- S.W 15-[Road 17] | 2027-07-27 → 2027-08-03 (+7d) | 2027-08-07 → 2027-08-14 (+7d) | -181d → -187d |
| CO-R17-S13-RD-F-160 | Application of Road Marking Works For Road Works- S.W 15-[Road 17] | 2027-07-27 → 2027-08-03 (+7d) | 2027-08-07 → 2027-08-14 (+7d) | -181d → -187d |
| CO-R17-S14-RD-F-170 | Application of Road Marking Works For Road Works- S.W 16-[Road 17] | 2027-07-27 → 2027-08-03 (+7d) | 2027-08-07 → 2027-08-14 (+7d) | -181d → -187d |
| CO-R17-S14-RD-F-130 | Installation Works of Traffic Signs Boards For Road Works- S.W 16-[Road 17] | 2027-07-31 → 2027-08-07 (+7d) | 2027-08-07 → 2027-08-14 (+7d) | -181d → -187d |
| 3 | **Road 18 Local 1 ( 479 LM )** |  | 2027-09-09 → 2027-09-16 (+7d) |  |
| 10 | **Sewage Network** |  | 2027-04-10 → 2027-04-17 (+7d) |  |
| TF | **Testing and Finishes** |  | 2027-04-10 → 2027-04-17 (+7d) |  |
| CO-R18-SW-TF-110 | Install Manhole Cover Works for External Finishes of Sewage Network-[Road 18] |  | 2027-04-06 → 2027-04-13 (+7d) | -124d → -130d |
| CO-R18-SW-TF-130 | Main Manhole Internal Finishes (Benching + Insulation) of Sewage Network-[Road 18] |  | 2027-04-10 → 2027-04-17 (+7d) | -127d → -133d |
| 11 | **Storm Drainage Network** |  | 2027-04-25 → 2027-05-02 (+7d) |  |
| TF | **Testing and Finishes** |  | 2027-04-25 → 2027-05-02 (+7d) |  |
| CO-R18-SD-TF-100 | Testing Work for Pipes of Storm Drainage Network-[Road 18] |  | 2027-03-23 → 2027-03-30 (+7d) | -83d → -89d |
| CO-R18-SD-TF-110 | Install Catch Basin Cover Works for External Finishes of Storm Drainage Network-[Road 18] |  | 2027-03-14 → 2027-03-21 (+7d) | -78d → -84d |
| CO-R18-SD-TF-130 | Catch Basin Internal Finishes (Benching + Insulation ) for Storm Drainage Network-[Road 18] |  | 2027-04-25 → 2027-05-02 (+7d) | -111d → -117d |
| 9 | **Potable Water Network** |  | 2027-07-01 → 2027-07-08 (+7d) |  |
| TF | **Testing and Finishes** |  | 2027-07-01 → 2027-07-08 (+7d) |  |
| CO-R18-PW-TF-100 | Final Finishes works and Covers for Valves and Valve Chambers of Potable Water Network-[Road 18] |  | 2027-04-17 → 2027-04-24 (+7d) | -124d → -130d |
| CO-R18-PW-TF-110 | Testing Work for Main Line of Potable Water Network-[Road 18] |  | 2027-07-01 → 2027-07-08 (+7d) | -184d → -190d |
| CO-R18-PW-TF-120 | Fire Hydrant Finishies (S.Box + Safety + Marker Post ) of Potable Water Network-[Road 18] |  | 2027-05-01 → 2027-05-08 (+7d) | -136d → -142d |
| 13 | **Irrigation Network** |  | 2027-04-07 → 2027-04-14 (+7d) |  |
| TF | **Testing and Finishes** |  | 2027-04-07 → 2027-04-14 (+7d) |  |
| CO-R18-IR-TF-110 | Final Testing (pressure tests) of Irrigation Network-[Road 18] |  | 2027-04-07 → 2027-04-14 (+7d) | -134d → -140d |
| 12 | **Street Lighting Network** |  | 2027-06-19 → 2027-06-26 (+7d) |  |
| TR | **Termination and Testing Works** |  | 2027-06-19 → 2027-06-26 (+7d) |  |
| CO-R18-SL-TF-120 | Termination Works For Lighting Poles Cables of Street Lighting Network-[Road 18] |  | 2027-03-21 → 2027-03-28 (+7d) | -130d → -136d |
| CO-R18-SL-TF-130 | Termination Works For Panel Board Cables of Street Lighting Network-[Road 18] |  | 2027-06-07 → 2027-06-14 (+7d) | -191.5d → -197.5d |
| CO-R18-SL-TF-380 | Testing Works For Panel Board Cables of Street Lighting Network-[Road 18] |  | 2027-06-19 → 2027-06-26 (+7d) | -201.5d → -207.5d |
| 14 | **Medium Voltage Network** |  | 2027-03-14 → 2027-03-21 (+7d) |  |
| TT | **Termination and Testing Works** |  | 2027-03-14 → 2027-03-21 (+7d) |  |
| CO-R18-MV-TF-120 | Termination Works of Medium Voltage Network-[Road 18] |  | 2027-03-14 → 2027-03-21 (+7d) | -113d → -119d |
| 1 | **Road Works** |  | 2027-09-09 → 2027-09-16 (+7d) |  |
| TS | **Traffic Signs Boards and Roads Marking** |  | 2027-09-09 → 2027-09-16 (+7d) |  |
| CO-R18-S15-RD-F-120 | Application of Road Marking Works For Road Works- S.W 03-[Road 18] |  | 2027-08-19 → 2027-08-26 (+7d) | -191.5d → -197.5d |
| CO-R18-S15-RD-F-130 | Installation Works of Traffic Signs Boards For Road Works- S.W 03-[Road 18] |  | 2027-08-19 → 2027-08-26 (+7d) | -191.5d → -197.5d |
| CO-R18-S16-RD-F-140 | Application of Road Marking Works For Road Works- S.W 04-[Road 18] |  | 2027-09-09 → 2027-09-16 (+7d) | -209.5d → -215.5d |
| CO-R18-S16-RD-F-160 | Installation Works of Traffic Signs Boards For Road Works- S.W 04-[Road 18] |  | 2027-09-09 → 2027-09-16 (+7d) | -209.5d → -215.5d |
| GEN | **Independent Works** |  | 2027-09-09 → 2027-09-16 (+7d) |  |
| CON | **Tie In To Existing Networks** | 2027-03-15 → 2027-03-22 (+7d) | 2027-09-09 → 2027-09-16 (+7d) |  |
| 1 | **Phase 2 Block "J"** | 2027-03-15 → 2027-03-22 (+7d) | 2027-09-09 → 2027-09-16 (+7d) |  |
| 2 | **Road 09 Local 2 ( 2278 LM )** | 2027-03-15 → 2027-03-22 (+7d) | 2027-07-15 → 2027-07-22 (+7d) |  |
| 15 | **Storm Drainage Network** | 2027-05-20 → 2027-05-22 (+2d) | 2027-05-27 → 2027-05-29 (+2d) |  |
| TIE-SD-R09 | TIE IN Existing Network For Storm Drainage Network | 2027-05-20 → 2027-05-22 (+2d) | 2027-05-27 → 2027-05-29 (+2d) | -117d → -118d |
| 16 | **Sewage Network** | 2027-04-25 → 2027-04-26 (+1d) | 2027-05-08 → 2027-05-09 (+1d) |  |
| TIE-SW-R09 | TIE IN Existing Network For Sewage Network | 2027-04-25 → 2027-04-26 (+1d) | 2027-05-08 → 2027-05-09 (+1d) | -105d → -106d |
| 17 | **Potable Water Network** | 2027-07-03 → 2027-07-10 (+7d) | 2027-07-15 → 2027-07-22 (+7d) |  |
| TIE-PW-R09 | TIE IN Existing Network For Potable Water Network | 2027-07-03 → 2027-07-10 (+7d) | 2027-07-15 → 2027-07-22 (+7d) | -159d → -165d |
| 1 | **Irrigation Network** | 2027-04-08 → 2027-04-15 (+7d) | 2027-04-21 → 2027-04-28 (+7d) |  |
| TIE-IR-R09 | TIE IN Existing Network For Irrigation Network | 2027-04-08 → 2027-04-15 (+7d) | 2027-04-21 → 2027-04-28 (+7d) | -91d → -97d |
| 18 | **Meduim Voltage Network** | 2027-03-15 → 2027-03-22 (+7d) | 2027-04-04 → 2027-04-11 (+7d) |  |
| TIE-R09-MV | TIE IN Existing Network For Medium Voltage Network | 2027-03-15 → 2027-03-22 (+7d) | 2027-04-04 → 2027-04-11 (+7d) | -85d → -91d |
| 2 | **Street Lighting Network** | 2027-06-21 → 2027-06-28 (+7d) | 2027-07-12 → 2027-07-19 (+7d) |  |
| TIE-R09-SL | TIE IN Existing Network For Street Lighting Network | 2027-06-21 → 2027-06-28 (+7d) | 2027-07-12 → 2027-07-19 (+7d) | -155.5d → -161.5d |
| 3 | **Telecom Network** | 2027-03-21 → 2027-03-28 (+7d) | 2027-03-31 → 2027-04-07 (+7d) |  |
| TIE-R09-TE | TIE IN Existing Network For Telecom Network | 2027-03-21 → 2027-03-28 (+7d) | 2027-03-31 → 2027-04-07 (+7d) | -82d → -88d |
| 4 | **Road 10 Local 2 ( 2352 LM )** | 2027-03-15 → 2027-03-22 (+7d) | 2027-09-09 → 2027-09-16 (+7d) |  |
| 15 | **Storm Drainage Network** | 2027-05-20 → 2027-05-22 (+2d) | 2027-05-27 → 2027-05-29 (+2d) |  |
| TIE-SD-R10 | TIE IN Existing Network For Storm Drainage Network | 2027-05-20 → 2027-05-22 (+2d) | 2027-05-27 → 2027-05-29 (+2d) | -117d → -118d |
| 16 | **Sewage Network** | 2027-04-25 → 2027-04-26 (+1d) | 2027-05-08 → 2027-05-09 (+1d) |  |
| TIE-SW-R10 | TIE IN Existing Network For Sewage Network | 2027-04-25 → 2027-04-26 (+1d) | 2027-05-08 → 2027-05-09 (+1d) | -105d → -106d |
| 17 | **Potable Water Network** | 2027-07-03 → 2027-07-10 (+7d) | 2027-07-15 → 2027-07-22 (+7d) |  |
| TIE-PW-R10 | TIE IN Existing Network For Potable Water Network | 2027-07-03 → 2027-07-10 (+7d) | 2027-07-15 → 2027-07-22 (+7d) | -159d → -165d |
| 1 | **Irrigation Network** | 2027-04-08 → 2027-04-15 (+7d) | 2027-04-21 → 2027-04-28 (+7d) |  |
| TIE-IR-R10 | TIE IN Existing Network For Irrigation Network | 2027-04-08 → 2027-04-15 (+7d) | 2027-04-21 → 2027-04-28 (+7d) | -91d → -97d |
| 18 | **Meduim Voltage Network** | 2027-03-15 → 2027-03-22 (+7d) | 2027-04-04 → 2027-04-11 (+7d) |  |
| TIE-R10-MV | TIE IN Existing Network For Medium Voltage Network | 2027-03-15 → 2027-03-22 (+7d) | 2027-04-04 → 2027-04-11 (+7d) | -85d → -91d |
| 2 | **Street Lighting Network** | 2027-06-21 → 2027-06-28 (+7d) | 2027-07-12 → 2027-07-19 (+7d) |  |

| ID | Task | Start | Finish | Total float |
| --- | --- | --- | --- | --- |
| TIE-R10-SL | TIE IN Existing Network For Street Lighting Network | 2027-06-21 → 2027-06-28 (+7d) | 2027-07-12 → 2027-07-19 (+7d) | -155.5d → -161.5d |
| 4 | **Telecom Network** | 2027-03-21 → 2027-03-28 (+7d) | 2027-03-31 → 2027-04-07 (+7d) |  |
| TIE-R10-TE | TIE IN Existing Network For Telecom Network | 2027-03-21 → 2027-03-28 (+7d) | 2027-03-31 → 2027-04-07 (+7d) | -82d → -88d |
| 3 | **Road Works** | 2027-09-04 → 2027-09-11 (+7d) | 2027-09-09 → 2027-09-16 (+7d) |  |
| TIE-R10-RD | TIE IN Existing Network For Road Works | 2027-09-04 → 2027-09-11 (+7d) | 2027-09-09 → 2027-09-16 (+7d) | -206.5d → -212.5d |
| 5 | **Road 11 Local 1 ( 670 LM )** | 2027-03-15 → 2027-03-22 (+7d) | 2027-09-09 → 2027-09-16 (+7d) |  |
| 15 | **Storm Drainage Network** | 2027-05-20 → 2027-05-22 (+2d) | 2027-05-27 → 2027-05-29 (+2d) |  |
| TIE-SD-R11 | TIE IN Existing Network For Storm Drainage Network | 2027-05-20 → 2027-05-22 (+2d) | 2027-05-27 → 2027-05-29 (+2d) | -117d → -118d |
| 16 | **Sewage Network** | 2027-04-25 → 2027-04-26 (+1d) | 2027-05-08 → 2027-05-09 (+1d) |  |
| TIE-SW-R11 | TIE IN Existing Network For Sewage Network | 2027-04-25 → 2027-04-26 (+1d) | 2027-05-08 → 2027-05-09 (+1d) | -105d → -106d |
| 17 | **Potable Water Network** | 2027-07-03 → 2027-07-10 (+7d) | 2027-07-15 → 2027-07-22 (+7d) |  |
| TIE-PW-R11 | TIE IN Existing Network For Potable Water Network | 2027-07-03 → 2027-07-10 (+7d) | 2027-07-15 → 2027-07-22 (+7d) | -159d → -165d |
| 1 | **Irrigation Network** | 2027-04-08 → 2027-04-15 (+7d) | 2027-04-21 → 2027-04-28 (+7d) |  |
| TIE-IR-R11 | TIE IN Existing Network For Irrigation Network | 2027-04-08 → 2027-04-15 (+7d) | 2027-04-21 → 2027-04-28 (+7d) | -91d → -97d |
| 18 | **Meduim Voltage Network** | 2027-03-15 → 2027-03-22 (+7d) | 2027-04-04 → 2027-04-11 (+7d) |  |
| TIE-R11-MV | TIE IN Existing Network For Medium Voltage Network | 2027-03-15 → 2027-03-22 (+7d) | 2027-04-04 → 2027-04-11 (+7d) | -85d → -91d |
| 2 | **Street Lighting Network** | 2027-06-21 → 2027-06-28 (+7d) | 2027-07-12 → 2027-07-19 (+7d) |  |
| TIE-R11-SL | TIE IN Existing Network For Street Lighting Network | 2027-06-21 → 2027-06-28 (+7d) | 2027-07-12 → 2027-07-19 (+7d) | -155.5d → -161.5d |
| 4 | **Telecom Network** | 2027-03-21 → 2027-03-28 (+7d) | 2027-03-31 → 2027-04-07 (+7d) |  |
| TIE-R11-TE | TIE IN Existing Network For Telecom Network | 2027-03-21 → 2027-03-28 (+7d) | 2027-03-31 → 2027-04-07 (+7d) | -82d → -88d |
| 3 | **Road Works** | 2027-09-04 → 2027-09-11 (+7d) | 2027-09-09 → 2027-09-16 (+7d) |  |
| TIE-R11-RD | TIE IN Existing Network For Road Works | 2027-09-04 → 2027-09-11 (+7d) | 2027-09-09 → 2027-09-16 (+7d) | -202.5d → -208.5d |
| 6 | **Road 14 Local 1 ( 584 LM )** | 2027-03-15 → 2027-03-22 (+7d) | 2027-09-09 → 2027-09-16 (+7d) |  |
| 15 | **Storm Drainage Network** | 2027-05-20 → 2027-05-22 (+2d) | 2027-05-27 → 2027-05-29 (+2d) |  |
| TIE-SD-R14 | TIE IN Existing Network For Storm Drainage Network | 2027-05-20 → 2027-05-22 (+2d) | 2027-05-27 → 2027-05-29 (+2d) | -117d → -118d |
| 16 | **Sewage Network** | 2027-04-25 → 2027-04-26 (+1d) | 2027-05-08 → 2027-05-09 (+1d) |  |
| TIE-SW-R14 | TIE IN Existing Network For Sewage Network | 2027-04-25 → 2027-04-26 (+1d) | 2027-05-08 → 2027-05-09 (+1d) | -105d → -106d |
| 17 | **Potable Water Network** | 2027-07-03 → 2027-07-10 (+7d) | 2027-07-15 → 2027-07-22 (+7d) |  |
| TIE-PW-R14 | TIE IN Existing Network For Potable Water Network | 2027-07-03 → 2027-07-10 (+7d) | 2027-07-15 → 2027-07-22 (+7d) | -159d → -165d |
| 1 | **Irrigation Network** | 2027-04-08 → 2027-04-15 (+7d) | 2027-04-21 → 2027-04-28 (+7d) |  |
| TIE-IR-R14 | TIE IN Existing Network For Irrigation Network | 2027-04-08 → 2027-04-15 (+7d) | 2027-04-21 → 2027-04-28 (+7d) | -91d → -97d |
| 18 | **Meduim Voltage Network** | 2027-03-15 → 2027-03-22 (+7d) | 2027-04-04 → 2027-04-11 (+7d) |  |
| TIE-R14-MV | TIE IN Existing Network For Medium Voltage Network | 2027-03-15 → 2027-03-22 (+7d) | 2027-04-04 → 2027-04-11 (+7d) | -85d → -91d |
| 2 | **Street Lighting Network** | 2027-06-21 → 2027-06-28 (+7d) | 2027-07-12 → 2027-07-19 (+7d) |  |
| TIE-R14-SL | TIE IN Existing Network For Street Lighting Network | 2027-06-21 → 2027-06-28 (+7d) | 2027-07-12 → 2027-07-19 (+7d) | -155.5d → -161.5d |
| 4 | **Telecom Network** | 2027-03-21 → 2027-03-28 (+7d) | 2027-03-31 → 2027-04-07 (+7d) |  |
| TIE-R14-TE | TIE IN Existing Network For Telecom Network | 2027-03-21 → 2027-03-28 (+7d) | 2027-03-31 → 2027-04-07 (+7d) | -82d → -88d |
| 3 | **Road Works** | 2027-09-04 → 2027-09-11 (+7d) | 2027-09-09 → 2027-09-16 (+7d) |  |
| TIE-R14-RD | TIE IN Existing Network For Road Works | 2027-09-04 → 2027-09-11 (+7d) | 2027-09-09 → 2027-09-16 (+7d) | -206.5d → -212.5d |
| 7 | **Road 15 Local 1 ( 556 LM )** | 2027-03-15 → 2027-03-22 (+7d) | 2027-07-15 → 2027-07-22 (+7d) |  |
| 15 | **Storm Drainage Network** | 2027-05-20 → 2027-05-22 (+2d) | 2027-05-27 → 2027-05-29 (+2d) |  |
| TIE-SD-R15 | TIE IN Existing Network For Storm Drainage Network | 2027-05-20 → 2027-05-22 (+2d) | 2027-05-27 → 2027-05-29 (+2d) | -117d → -118d |
| 16 | **Sewage Network** | 2027-04-25 → 2027-04-26 (+1d) | 2027-05-08 → 2027-05-09 (+1d) |  |
| TIE-SW-R15 | TIE IN Existing Network For Sewage Network | 2027-04-25 → 2027-04-26 (+1d) | 2027-05-08 → 2027-05-09 (+1d) | -105d → -106d |
| 17 | **Potable Water Network** | 2027-07-03 → 2027-07-10 (+7d) | 2027-07-15 → 2027-07-22 (+7d) |  |
| TIE-PW-R15 | TIE IN Existing Network For Potable Water Network | 2027-07-03 → 2027-07-10 (+7d) | 2027-07-15 → 2027-07-22 (+7d) | -159d → -165d |
| 1 | **Irrigation Network** | 2027-04-08 → 2027-04-15 (+7d) | 2027-04-21 → 2027-04-28 (+7d) |  |
| TIE-IR-R15 | TIE IN Existing Network For Irrigation Network | 2027-04-08 → 2027-04-15 (+7d) | 2027-04-21 → 2027-04-28 (+7d) | -91d → -97d |
| 18 | **Meduim Voltage Network** | 2027-03-15 → 2027-03-22 (+7d) | 2027-04-04 → 2027-04-11 (+7d) |  |
| TIE-R15-MV | TIE IN Existing Network For Medium Voltage Network | 2027-03-15 → 2027-03-22 (+7d) | 2027-04-04 → 2027-04-11 (+7d) | -85d → -91d |
| 2 | **Street Lighting Network** | 2027-06-21 → 2027-06-28 (+7d) | 2027-07-12 → 2027-07-19 (+7d) |  |
| TIE-R15-SL | TIE IN Existing Network For Street Lighting Network | 2027-06-21 → 2027-06-28 (+7d) | 2027-07-12 → 2027-07-19 (+7d) | -155.5d → -161.5d |
| 3 | **Telecom Network** | 2027-03-21 → 2027-03-28 (+7d) | 2027-03-31 → 2027-04-07 (+7d) |  |
| TIE-R15-TE | TIE IN Existing Network For Telecom Network | 2027-03-21 → 2027-03-28 (+7d) | 2027-03-31 → 2027-04-07 (+7d) | -82d → -88d |
| 8 | **Road 16 Local 1 ( 527 LM )** | 2027-03-15 → 2027-03-22 (+7d) | 2027-07-15 → 2027-07-22 (+7d) |  |
| 15 | **Storm Drainage Network** | 2027-05-20 → 2027-05-22 (+2d) | 2027-05-27 → 2027-05-29 (+2d) |  |
| TIE-SD-R16 | TIE IN Existing Network For Storm Drainage Network | 2027-05-20 → 2027-05-22 (+2d) | 2027-05-27 → 2027-05-29 (+2d) | -117d → -118d |
| 16 | **Sewage Network** | 2027-04-25 → 2027-04-26 (+1d) | 2027-05-08 → 2027-05-09 (+1d) |  |
| TIE-SW-R16 | TIE IN Existing Network For Sewage Network | 2027-04-25 → 2027-04-26 (+1d) | 2027-05-08 → 2027-05-09 (+1d) | -105d → -106d |
| 17 | **Potable Water Network** | 2027-07-03 → 2027-07-10 (+7d) | 2027-07-15 → 2027-07-22 (+7d) |  |
| TIE-PW-R16 | TIE IN Existing Network For Potable Water Network | 2027-07-03 → 2027-07-10 (+7d) | 2027-07-15 → 2027-07-22 (+7d) | -159d → -165d |
| 1 | **Irrigation Network** | 2027-04-08 → 2027-04-15 (+7d) | 2027-04-21 → 2027-04-28 (+7d) |  |
| TIE-IR-R16 | TIE IN Existing Network For Irrigation Network | 2027-04-08 → 2027-04-15 (+7d) | 2027-04-21 → 2027-04-28 (+7d) | -91d → -97d |
| 18 | **Meduim Voltage Network** | 2027-03-15 → 2027-03-22 (+7d) | 2027-04-04 → 2027-04-11 (+7d) |  |
| TIE-R16-MV | TIE IN Existing Network For Medium Voltage Network | 2027-03-15 → 2027-03-22 (+7d) | 2027-04-04 → 2027-04-11 (+7d) | -85d → -91d |
| 2 | **Street Lighting Network** | 2027-06-21 → 2027-06-28 (+7d) | 2027-07-12 → 2027-07-19 (+7d) |  |
| TIE-R16-SL | TIE IN Existing Network For Street Lighting Network | 2027-06-21 → 2027-06-28 (+7d) | 2027-07-12 → 2027-07-19 (+7d) | -155.5d → -161.5d |
| 3 | **Telecom Network** | 2027-03-21 → 2027-03-28 (+7d) | 2027-03-31 → 2027-04-07 (+7d) |  |
| TIE-R16-TE | TIE IN Existing Network For Telecom Network | 2027-03-21 → 2027-03-28 (+7d) | 2027-03-31 → 2027-04-07 (+7d) | -82d → -88d |
| 9 | **Road 17 Local 1 ( 500 LM )** | 2027-03-15 → 2027-03-22 (+7d) | 2027-07-15 → 2027-07-22 (+7d) |  |

| ID | Task | Start | Finish | Complete | Total float |
| --- | --- | --- | --- | --- | --- |
| 15 | **Storm Drainage Network** | 2027-05-20 → 2027-05-22 (+2d) | 2027-05-27 → 2027-05-29 (+2d) |  |  |
| TIE-SD-R17 | TIE IN Existing Network For Storm Drainage Network | 2027-05-20 → 2027-05-22 (+2d) | 2027-05-27 → 2027-05-29 (+2d) |  | -117d → -118d |
| 16 | **Sewage Network** | 2027-04-25 → 2027-04-26 (+1d) | 2027-05-08 → 2027-05-09 (+1d) |  |  |
| TIE-SW-R17 | TIE IN Existing Network For Sewage Network | 2027-04-25 → 2027-04-26 (+1d) | 2027-05-08 → 2027-05-09 (+1d) |  | -105d → -106d |
| 17 | **Potable Water Network** | 2027-07-03 → 2027-07-10 (+7d) | 2027-07-15 → 2027-07-22 (+7d) |  |  |
| TIE-PW-R17 | TIE IN Existing Network For Potable Water Network | 2027-07-03 → 2027-07-10 (+7d) | 2027-07-15 → 2027-07-22 (+7d) |  | -159d → -165d |
| 1 | **Irrigation Network** | 2027-04-08 → 2027-04-15 (+7d) | 2027-04-21 → 2027-04-28 (+7d) |  |  |
| TIE-IR-R17 | TIE IN Existing Network For Irrigation Network | 2027-04-08 → 2027-04-15 (+7d) | 2027-04-21 → 2027-04-28 (+7d) |  | -91d → -97d |
| 18 | **Meduim Voltage Network** | 2027-03-15 → 2027-03-22 (+7d) | 2027-04-04 → 2027-04-11 (+7d) |  |  |
| TIE-R17-MV | TIE IN Existing Network For Medium Voltage Network | 2027-03-15 → 2027-03-22 (+7d) | 2027-04-04 → 2027-04-11 (+7d) |  | -85d → -91d |
| 2 | **Street Lighting Network** | 2027-06-21 → 2027-06-28 (+7d) | 2027-07-12 → 2027-07-19 (+7d) |  |  |
| TIE-R17-SL | TIE IN Existing Network For Street Lighting Network | 2027-06-21 → 2027-06-28 (+7d) | 2027-07-12 → 2027-07-19 (+7d) |  | -155.5d → -161.5d |
| 3 | **Telecom Network** | 2027-03-21 → 2027-03-28 (+7d) | 2027-03-31 → 2027-04-07 (+7d) |  |  |
| TIE-R17-TE | TIE IN Existing Network For Telecom Network | 2027-03-21 → 2027-03-28 (+7d) | 2027-03-31 → 2027-04-07 (+7d) |  | -82d → -88d |
| 1 | **Road 18 Local 1 ( 479 LM )** | 2027-03-15 → 2027-03-22 (+7d) | 2027-07-15 → 2027-07-22 (+7d) |  |  |
| 15 | **Storm Drainage Network** | 2027-05-20 → 2027-05-22 (+2d) | 2027-05-27 → 2027-05-29 (+2d) |  |  |
| TIE-SD-R18 | TIE IN Existing Network For Storm Drainage Network | 2027-05-20 → 2027-05-22 (+2d) | 2027-05-27 → 2027-05-29 (+2d) |  | -113d → -114d |
| 16 | **Sewage Network** | 2027-04-25 → 2027-04-26 (+1d) | 2027-05-08 → 2027-05-09 (+1d) |  |  |
| TIE-SW-R18 | TIE IN Existing Network For Sewage Network | 2027-04-25 → 2027-04-26 (+1d) | 2027-05-08 → 2027-05-09 (+1d) |  | -101d → -102d |
| 17 | **Potable Water Network** | 2027-07-03 → 2027-07-10 (+7d) | 2027-07-15 → 2027-07-22 (+7d) |  |  |
| TIE-PW-R18 | TIE IN Existing Network For Potable Water Network | 2027-07-03 → 2027-07-10 (+7d) | 2027-07-15 → 2027-07-22 (+7d) |  | -155d → -161d |
| 1 | **Irrigation Network** | 2027-04-08 → 2027-04-15 (+7d) | 2027-04-21 → 2027-04-28 (+7d) |  |  |
| TIE-IR-R18 | TIE IN Existing Network For Irrigation Network | 2027-04-08 → 2027-04-15 (+7d) | 2027-04-21 → 2027-04-28 (+7d) |  | -87d → -93d |
| 18 | **Meduim Voltage Network** | 2027-03-15 → 2027-03-22 (+7d) | 2027-04-04 → 2027-04-11 (+7d) |  |  |
| TIE-R18-MV10 | TIE IN Existing Network For Medium Voltage Network | 2027-03-15 → 2027-03-22 (+7d) | 2027-04-04 → 2027-04-11 (+7d) |  | -85d → -91d |
| 2 | **Street Lighting Network** | 2027-06-21 → 2027-06-28 (+7d) | 2027-07-12 → 2027-07-19 (+7d) |  |  |
| TIE-R18-SL10 | TIE IN Existing Network For Street Lighting Network | 2027-06-21 → 2027-06-28 (+7d) | 2027-07-12 → 2027-07-19 (+7d) |  | -151.5d → -157.5d |
| 3 | **Telecom Network** | 2027-03-21 → 2027-03-28 (+7d) | 2027-04-03 → 2027-04-10 (+7d) |  |  |
| TIE-R18-TE10 | TIE IN Existing Network For Telecom Network | 2027-03-21 → 2027-03-28 (+7d) | 2027-04-03 → 2027-04-10 (+7d) |  | -84d → -90d |
| 2 | **Sewage Pump Stations** |  | 2027-06-19 → 2027-06-26 (+7d) |  |  |
| 1 | **Sewage Pump Station ( PS 06 )** |  | 2027-06-19 → 2027-06-26 (+7d) |  |  |
| 1 | **Pump Station Main Building** |  | 2027-04-13 → 2027-04-20 (+7d) |  |  |
| CO-SW-PS7-MB-110 | Concrete Works of Superstrucure |  | 2026-11-19 → 2026-11-26 (+7d) |  | -158d → -164d |
| CO-SW-PS7-MB-120 | Internal Finishes Works of Superstrucure | 2026-11-21 → 2026-11-28 (+7d) | 2026-12-24 → 2026-12-31 (+7d) |  | -158d → -164d |
| CO-SW-PS7-MB-130 | Internal Electrical Works | 2026-12-26 → 2027-01-02 (+7d) | 2027-01-28 → 2027-02-04 (+7d) |  | -121d → -127d |
| CO-SW-PS7-MB-140 | Internal Mechanical Works | 2027-01-30 → 2027-02-06 (+7d) | 2027-03-06 → 2027-03-16 (+10d) |  | -121d → -127d |
| CO-SW-PS7-MB-150 | Electromechanical Main Works | 2027-03-07 → 2027-03-17 (+10d) | 2027-04-13 → 2027-04-20 (+7d) |  | -121d → -127d |
| 2 | **Generator With Umbrella Tank** | 2026-12-26 → 2027-01-02 (+7d) | 2027-03-27 → 2027-04-03 (+7d) |  |  |
| CO-SW-PS7-GN-100 | Concrete Works of Base | 2026-12-26 → 2027-01-02 (+7d) | 2027-01-07 → 2027-01-14 (+7d) |  | -158d → -164d |
| CO-SW-PS7-GN-110 | Install Manually Operated Fuel Pump | 2027-01-09 → 2027-01-16 (+7d) | 2027-02-01 → 2027-02-08 (+7d) |  | -158d → -164d |
| CO-SW-PS7-GN-120 | Install Ground Fuel Tank | 2027-02-02 → 2027-02-09 (+7d) | 2027-02-27 → 2027-03-06 (+7d) |  | -158d → -164d |
| CO-SW-PS7-GN-130 | Fix Steel Structure for Umbrella | 2027-02-28 → 2027-03-07 (+7d) | 2027-03-27 → 2027-04-03 (+7d) |  | -158d → -164d |
| 5 | **Motor Control Centre Building** | 2026-11-21 → 2026-11-28 (+7d) | 2027-04-14 → 2027-04-21 (+7d) |  |  |
| CO-SW-PS7-MCC-100 | Excavation Main Bulding | 2026-11-21 → 2026-11-28 (+7d) | 2026-12-08 → 2026-12-15 (+7d) |  | -122d → -128d |
| CO-SW-PS7-MCC-110 | Concrete Works of Superstrucure | 2026-12-09 → 2026-12-16 (+7d) | 2027-01-02 → 2027-01-09 (+7d) |  | -122d → -128d |
| CO-SW-PS7-MCC-120 | Internal Finishes Works of Superstrucure | 2027-01-03 → 2027-01-10 (+7d) | 2027-01-26 → 2027-02-02 (+7d) |  | -122d → -128d |
| CO-SW-PS7-MCC-130 | Internal Electrical Works | 2027-01-27 → 2027-02-03 (+7d) | 2027-02-20 → 2027-02-28 (+8d) |  | -122d → -128d |
| CO-SW-PS7-MCC-140 | Internal Mechanical Works | 2027-02-21 → 2027-03-01 (+8d) | 2027-03-21 → 2027-03-28 (+7d) |  | -122d → -128d |
| CO-SW-PS7-MCC-150 | Electromechanical Main Works | 2027-03-22 → 2027-03-29 (+7d) | 2027-04-14 → 2027-04-21 (+7d) |  | -122d → -128d |
| 6 | **Simple Building Works** | 2027-03-28 → 2027-04-04 (+7d) | 2027-05-30 → 2027-06-06 (+7d) |  |  |
| CO-SW-PS7-SBL-100 | Perimeter Fencing | 2027-03-28 → 2027-04-04 (+7d) | 2027-04-22 → 2027-04-29 (+7d) |  | -158d → -164d |
| CO-SW-PS7-SBL-110 | Outside Lighting | 2027-04-24 → 2027-05-01 (+7d) | 2027-05-30 → 2027-06-06 (+7d) |  | -156d → -162d |
| CO-SW-PS7-SBL-120 | Outside Duct Works | 2027-04-24 → 2027-05-01 (+7d) | 2027-05-25 → 2027-06-01 (+7d) |  | -158d → -164d |
| CO-SW-PS7-SBL-130 | Rectangular Wet Wells | 2027-04-24 → 2027-05-01 (+7d) | 2027-05-30 → 2027-06-06 (+7d) |  | -156d → -162d |
| CO-SW-PS7-SBL-140 | Round Wet Well Structure for basket screen | 2027-04-24 → 2027-05-01 (+7d) | 2027-05-30 → 2027-06-06 (+7d) |  | -156d → -162d |
| CO-SW-PS7-SBL-150 | Motorized basket screen | 2027-04-24 → 2027-05-01 (+7d) | 2027-05-30 → 2027-06-06 (+7d) |  | -156d → -162d |
| 7 | **Site Work and Service Road** | 2027-05-26 → 2027-06-02 (+7d) | 2027-06-19 → 2027-06-26 (+7d) |  |  |
| CO-SW-PS7-SWS-100 | Outside Strom Drainage System | 2027-05-26 → 2027-06-02 (+7d) | 2027-06-01 → 2027-06-08 (+7d) |  | -158d → -164d |
| CO-SW-PS7-SWS-110 | Bituminous Works | 2027-06-02 → 2027-06-09 (+7d) | 2027-06-19 → 2027-06-26 (+7d) |  | -158d → -164d |
| 1 | **Storm Drainage Ponds** |  | 2027-05-29 → 2026-12-23 (-157d) |  |  |
| 1 | **Storm Drainage Pond ( PO-J1)** |  | 2026-12-16 → 2026-12-23 (+7d) |  |  |
| CO-SD-PO-K1-110-P1 | Finished Grouted Riprap - PART 1 |  | 2026-12-10 → 2026-12-17 (+7d) |  | -67d → -73d |
| CO-SD-PO-K1-110-P2 | Finished Grouted Riprap - PART 2 |  | 2026-12-10 → 2026-12-17 (+7d) |  | -67d → -73d |
| CO-SD-PO-K1-110-P3 | Finished Grouted Riprap - PART 3 |  | 2026-12-10 → 2026-12-17 (+7d) |  | -67d → -73d |
| CO-SD-PO-K1-110-P4 | Finished Grouted Riprap - PART 4 |  | 2026-12-10 → 2026-12-17 (+7d) |  | -67d → -73d |
| CO-SD-PO-K1-120 | Outfall structure |  | 2026-12-16 → 2026-12-23 (+7d) |  | -67d → -73d |
| CO-SD-PO-K1-130 | Acess Entrace Ramp |  | 2026-12-16 → 2026-12-23 (+7d) |  | -67d → -73d |
| 2 | **Storm Drainage Pond ( PO-J2)** |  | 2027-05-29 → 2026-12-23 (-157d) |  |  |
| CO-SD-PO-K2-100-P1 | Excavation & Filling Works - PART 1 |  | 2026-12-10 → 2026-12-17 (+7d) | 30% → 60% | -170d → -45d |
| CO-SD-PO-K2-100-P2 | Excavation & Filling Works - PART 2 |  | 2026-12-10 → 2026-12-17 (+7d) | 30% → 60% | -149d → -45d |

| ID | Task | Start | Finish | Complete | Total float | Predecessors |
| --- | --- | --- | --- | --- | --- | --- |
| CO-SD-PO-K2-100-P3 | Excavation & Filling Works - PART 3 |  | 2026-12-10 → 2026-12-17 (+7d) | 30% → 60% | -128d → -45d |  |
| CO-SD-PO-K2-100-P4 | Excavation & Filling Works - PART 4 |  | 2026-12-10 → 2026-12-17 (+7d) | 30% → 60% | -107d → -45d |  |
| CO-SD-PO-K2-110-P1 | Finished Grouted Riprap - PART 1 | 2026-12-12 → 2026-11-17 A (-25d) | 2027-01-04 → 2026-12-17 (-18d) | 0% → 30% | -170d → -45d | CO-SD-PO-K2-100-P1 → CO-SD-PO-K2-100-P1 SS |
| CO-SD-PO-K2-110-P2 | Finished Grouted Riprap - PART 2 | 2027-01-05 → 2026-11-17 A (-49d) | 2027-01-28 → 2026-12-17 (-42d) | 0% → 30% | -170d → -45d | CO-SD-PO-K2-100-P2, CO-SD-PO-K2-110-P1 → CO-SD-PO-K2-100-P2 SS, CO-SD-PO-K2-110-P1 SS |
| CO-SD-PO-K2-110-P3 | Finished Grouted Riprap - PART 3 | 2027-01-30 → 2026-11-17 A (-74d) | 2027-02-23 → 2026-12-17 (-68d) | 0% → 30% | -170d → -45d | CO-SD-PO-K2-100-P3, CO-SD-PO-K2-110-P2 → CO-SD-PO-K2-100-P3 SS, CO-SD-PO-K2-110-P2 SS |
| CO-SD-PO-K2-110-P4 | Finished Grouted Riprap - PART 4 | 2027-02-24 → 2026-11-17 A (-99d) | 2027-03-23 → 2026-12-17 (-96d) | 0% → 30% | -170d → -45d | CO-SD-PO-K2-100-P4, CO-SD-PO-K2-110-P3 → CO-SD-PO-K2-100-P4 SS, CO-SD-PO-K2-110-P3 SS |
| CO-SD-PO-K2-120 | Outfall structure | 2027-03-24 → 2026-11-17 A (-127d) | 2027-04-22 → 2026-12-23 (-120d) | 0% → 15% | -170d → -45d | CO-SD-PO-K2-110-P4 → CO-SD-PO-K2-110-P4 SS |
| CO-SD-PO-K2-130 | Acess Entrace Ramp | 2027-04-24 → 2026-11-17 A (-158d) | 2027-05-29 → 2026-12-23 (-157d) | 0% → 15% | -170d → -45d | CO-SD-PO-K2-120, PRO-DPO-CV-DL-20 FF+3d → CO-SD-PO-K2-120 SS, PRO-DPO-CV-DL-20 FF+3d |
| TC | **Testing and Comissioning** |  | 2027-09-09 → 2027-09-16 (+7d) |  |  |  |
| INF | **Infrastructure Networks** |  | 2027-09-09 → 2027-09-16 (+7d) |  |  |  |
| PW1 | **Irrigation Network** |  | 2027-04-21 → 2027-04-28 (+7d) |  |  |  |
| T/C-IR | Testing and Commissioning of Irrigation Network |  | 2027-04-21 → 2027-04-28 (+7d) |  | -87d → -93d |  |
| PW | **Potable Water Network** |  | 2027-07-15 → 2027-07-22 (+7d) |  |  |  |
| T/C-PW | Testing and Commissioning of Potable Water Network |  | 2027-07-15 → 2027-07-22 (+7d) |  | -155d → -161d |  |
| SW | **Sewage Network** |  | 2027-08-02 → 2027-07-26 (-7d) |  |  |  |
| T/C-SW | Testing and Commissioning of Sewage Network |  | 2027-08-02 → 2027-07-26 (-7d) |  | -170d → -164d |  |
| SD | **Storm Drainage Network** |  | 2027-07-03 → 2027-05-29 (-35d) |  |  |  |
| T/C-SD | Testing and Commissioning of Storm Drainage Network |  | 2027-07-03 → 2027-05-29 (-35d) |  | -144d → -114d |  |
| SL | **Street Lighting Network** |  | 2027-07-12 → 2027-07-19 (+7d) |  |  |  |
| T/C-SL | Testing and Commissioning of Street Lighting Network |  | 2027-07-12 → 2027-07-19 (+7d) | 32% → 40% | -151.5d → -157.5d |  |
| TE | **Telecom Network** |  | 2027-07-03 → 2027-04-10 (-84d) |  |  |  |
| T/C-TE | Testing and Commissioning of Telecom Network |  | 2027-07-03 → 2027-04-10 (-84d) |  | -157d → -90d |  |
| MV | **Medium Voltage Network** |  | 2027-07-03 → 2027-04-11 (-83d) |  |  |  |
| T/C-MV | Testing and Commissioning of Medium Voltage Network |  | 2027-07-03 → 2027-04-11 (-83d) |  | -157d → -91d |  |
| RD | **Road Works** |  | 2027-09-09 → 2027-09-16 (+7d) |  |  |  |
| T/C-RD | Testing and Commissioning of Road Works |  | 2027-09-09 → 2027-09-16 (+7d) | 55% → 62% | -202.5d → -208.5d |  |
| 1 | **Independent Works** | 2027-05-30 → 2026-12-24 (-157d) | 2027-08-02 → 2027-07-26 (-7d) |  |  |  |
| T/C-DPO | Testing and Commissioning of Storm Drainage Ponds | 2027-05-30 → 2026-12-24 (-157d) | 2027-07-03 → 2027-01-27 (-157d) |  | -170d → -45d |  |
| T/C-SPS | Testing and Commissioning of Sewage Pump Stations | 2027-07-04 → 2027-06-27 (-7d) | 2027-08-02 → 2027-07-26 (-7d) |  | -170d → -164d |  |
| 1 | **Handing over and close out** | 2027-04-08 → 2027-04-15 (+7d) | 2027-09-25 → 2027-10-02 (+7d) |  |  |  |
| 2 | **As-Built** | 2027-04-08 → 2027-04-15 (+7d) | 2027-09-18 → 2027-09-26 (+8d) |  |  |  |
| HO-180 | Submission As-Built Drawing For Irrigation Network | 2027-04-08 → 2027-04-15 (+7d) | 2027-04-21 → 2027-04-28 (+7d) |  | -101d → -107d |  |
| HO-130 | Submission As-Built Drawing For Pond | 2027-05-30 → 2027-04-29 (-31d) | 2027-06-12 → 2027-05-12 (-31d) |  | -128d → -107d |  |
| HO-160 | Submission As-Built Drawing For Telecom Network | 2027-04-22 → 2027-04-29 (+7d) | 2027-05-05 → 2027-05-12 (+7d) |  | -101d → -107d |  |
| HO-170 | Submission As-Built Drawing For Medium Voltage Network | 2027-04-22 → 2027-04-29 (+7d) | 2027-05-05 → 2027-05-12 (+7d) |  | -101d → -107d |  |
| HO-200 | Submission As-Built Drawing For Storm Network | 2027-05-20 → 2027-05-22 (+2d) | 2027-06-02 → 2027-06-03 (+1d) |  | -120d → -121d |  |
| HO-210 | Submission As-Built Drawing For Pump station | 2027-06-20 → 2027-06-27 (+7d) | 2027-07-03 → 2027-07-10 (+7d) |  | -146d → -152d |  |
| HO-150 | Submission As-Built Drawing For Street Lighting Network | 2027-06-21 → 2027-06-28 (+7d) | 2027-07-05 → 2027-07-12 (+7d) |  | -147.5d → -153.5d |  |
| HO-190 | As-Built Drawing For Potable Water Network | 2027-07-03 → 2027-07-10 (+7d) | 2027-07-15 → 2027-07-22 (+7d) |  | -157d → -163d |  |
| HO-100 | Submission As-Built Drawing For Sewage Network | 2027-09-09 → 2027-09-16 (+7d) | 2027-09-18 → 2027-09-26 (+8d) |  | -206.5d → -212.5d |  |
| HO-140 | Submission As-Built Drawing For Roads Network | 2027-09-09 → 2027-09-16 (+7d) | 2027-09-15 → 2027-09-22 (+7d) |  | -209.5d → -215.5d |  |
| 1 | **De-Mobilization Works** | 2027-09-12 → 2027-09-19 (+7d) | 2027-09-18 → 2027-09-26 (+8d) |  |  |  |
| HO-120 | Remove material stock & Storage area | 2027-09-12 → 2027-09-19 (+7d) | 2027-09-18 → 2027-09-26 (+8d) |  | -204.5d → -210.5d |  |
| HO-220 | Removing Portable Caravan | 2027-09-12 → 2027-09-19 (+7d) | 2027-09-18 → 2027-09-26 (+8d) |  | -204.5d → -210.5d |  |
| HO-230 | Remove Temporary Car Shades | 2027-09-12 → 2027-09-19 (+7d) | 2027-09-18 → 2027-09-26 (+8d) |  | -204.5d → -210.5d |  |
| 3 | **Handing Over** | 2027-09-12 → 2027-09-19 (+7d) | 2027-09-25 → 2027-10-02 (+7d) |  |  |  |
| HO-110 | Final Testing Work | 2027-09-12 → 2027-09-19 (+7d) | 2027-09-18 → 2027-09-26 (+8d) |  | -204.5d → -210.5d |  |
| HO-250 | Review B.O.Q Qty. to ensure compliance with the actual status | 2027-09-15 → 2027-09-22 (+7d) | 2027-09-21 → 2027-09-29 (+8d) |  | -209.5d → -215.5d |  |
| HO-260 | Review FIR Approval to ensure compliance with the actual status | 2027-09-15 → 2027-09-22 (+7d) | 2027-09-21 → 2027-09-29 (+8d) |  | -209.5d → -215.5d |  |
| HO-270 | Review the sample drawing to ensure compliance with the actual status | 2027-09-15 → 2027-09-22 (+7d) | 2027-09-21 → 2027-09-29 (+8d) |  | -209.5d → -215.5d |  |
| HO-240 | Final Walkthrough and Inspection | 2027-09-21 → 2027-09-29 (+8d) | 2027-09-25 → 2027-10-02 (+7d) |  | -209.5d → -215.5d |  |
| HO-280 | Punch List Completion | 2027-09-21 → 2027-09-29 (+8d) | 2027-09-25 → 2027-10-02 (+7d) |  | -209.5d → -215.5d |  |
