# Infrastructure Works of Area J -3rd Industrial City-Dammam-Phase 2 - Part 2 Update 06/10/2026

How a schedule from Primavera P6 changed from version to version. A marks actual dates.

## Version 3 (data date 2026-10-06, saved 2026-10-06, file 03.DAM3-02-007-UPS Level 5 -06-10-2026.xer)

Note of the change: Weekly folders named by the Thursday the week ends on: a report dated after one Thursday up to the next goes in the next Thursday's folder (26-Oct → W05 - 29-Oct-2026); all weeks moved accordingly, W00 removed

| ID | WBS | Task | Duration | Start | Finish | Predecessors | Complete | Total float | Constraint |
| --- | --- | --- | --- | --- | --- | --- | --- | --- | --- |
|  | MS | **Key Milestones** |  | 2025-01-12 | 2027-11-08 |  |  |  |  |
|  | CM | **Contractual Milestones** |  | 2025-01-12 | 2027-11-08 |  |  |  |  |
| MS-CS-PS |  | Project Commencement Date ( Site Handover ) | 0d | 2025-01-12 A | 2025-01-12 A |  | 100% |  |  |
| MS-CF-MOB |  | Completion of Mobilization Works | 0d | 2025-03-09 A | 2025-03-09 A | MOB-30, MOB-40, MOB-50, MOB-60, MOB-70, MOB-80 FF | 100% |  | finish on or before 2025-03-09 |
| MS-CF-EBL |  | Completion of Work Plan and Baseline Schedule | 0d | 2025-03-10 A | 2025-03-10 A | PRE-CON-MDC-20 FF, PRE-CON-MDC-30 FF, PRE-CON-MDC-40 FF, PRE-CON-MDC-50 FF, PRE-CON-MDC-60 FF, PRE-CON-MDC-70 FF, PRE-CON-MDC-80 FF | 100% |  | finish on or before 2025-02-11 |
| MS-CF-ENG |  | Completion of Submitting and Approval of Shopdrwing and Material | 0d | 2025-05-24 A | 2025-05-24 A | ENG-SH-PW-ML-A-110 FF, ENG-SH-SW-ML-A-110 FF, ENG-SH-SD-ML-A-110 FF, ENG-SH-SD-CB-A-110 FF, ENG-SH-IR-ML-A-110 FF, ENG-SH-IR-LL-A-110 FF, ENG-SH-SL-A-110 FF, ENG-SH-TE-A-110 FF, ENG-SH-MV-A-110 FF, ENG-SH-RD-A-130 FF, ENG-SH-MRK-A-110 FF, ENG-SH-HS-A-110 FF, ENG-SH-RD-A-110 FF, ENG-SH-RD-A-120 FF, ENG-MS-PW-ML-A-110 FF, ENG-MS-SW-ML-A-110 FF, ENG-MS-SD-ML-A-110 FF, ENG-MS-SD-CB-A-110 FF, ENG-MS-IR-ML-A-110 FF, ENG-MS-IR-LL-A-110 FF, ENG-MS-SL-A-110 FF, ENG-MS-TE-A-110 FF, ENG-MS-MV-A-110 FF, ENG-MS-RD-A-40 FF, ENG-MS-MRK-A-10 FF, ENG-MS-HS-A-10 FF, ENG-MS-RD-A-20 FF, ENG-MS-RD-A-30 FF, ENG-SH-PW-FH-A-110 FF, ENG-MT-SW-ML-A-110 FF, ENG-MT-SW-ML-A-100 FF, ENG-MT-SW-TF-A-100 FF, ENG-MT-SW-TF-A-120 FF, ENG-MT-SD-ML-A-100 FF, ENG-MT-SD-ML-A-110 FF, ENG-MT-SD-CB-A-110 FF, ENG-MT-SD-CB-A-100 FF, ENG-MT-SD-TF-A-100 FF, ENG-MT-SD-TF-A-110 FF, ENG-MT-SD-TF-A-120 FF, ENG-MT-PW-ML-A-100 FF, ENG-MT-PW-ML-A-110 FF, ENG-MT-PW-FH-A-100 FF, ENG-MT-PW-TF-A-100 FF, ENG-MT-IR-ML-A-100 FF, ENG-MT-IR-ML-A-110 FF, ENG-MT-MV-ML-A-100 FF, ENG-MT-MV-SS-A-100 FF, ENG-MT-MV-TF-A-100 FF, ENG-MT-SL-ML-A-100 FF, ENG-MT-SL-A-100 FF, ENG-MT-SL-A-110 FF, ENG-MT-SL-A-120 FF, ENG-MT-SL-DB-A-100 FF, ENG-MT-SL-TF-A-100 FF, ENG-MT-SL-TF-A-110 FF, ENG-MT-SL-ES-A-100 FF, ENG-MT-TE-A-100 FF, ENG-MT-TE-A-110 FF, ENG-MT-SPS-CV-A-110 FF, ENG-MT-DPO-CV-A-110 FF, ENG-MT-MV-A-10 FF, ENG-MT-SPS-MC-A-110 FF, ENG-MS-CTV-A-110 FF, ENG-SH-CTV-A-110 FF | 100% |  | finish on or before 2025-02-11 |
| MS-CF-TE |  | Completion of Construction Works for Telecom Network | 0d | 2027-04-28 | 2027-04-28 | CO-R09.S01-TE-130, CO-R09.S01-TE-160, CO-R10.S03-ES-TE-130, CO-R10.S03-ES-TE-160, CO-R11.S05-TE-130, CO-R11.S05-TE-160, CO-R14.S07-TE-130, CO-R14.S07-TE-160, CO-R15.S09-TE-130, CO-R15.S09-TE-160, CO-R16.S11-TE-130, CO-R16.S11-TE-160, CO-R17.S13-TE-130, CO-R17.S13-TE-160, CO-R17.S14-TE-160 FF, CO-R17.S14-TE-130 FF, CO-R16.S12-TE-160 FF, CO-R16.S12-TE-130 FF, CO-R15.S10-TE-160 FF, CO-R15.S10-TE-130 FF, CO-R14.S08-TE-160 FF, CO-R14.S08-TE-130 FF, CO-R11.S06-TE-160 FF, CO-R11.S06-TE-130 FF, CO-R10.S04-ES-TE-130 FF, CO-R10.S04-ES-TE-160 FF, CO-R09.S02-TE-160 FF, CO-R10.S03-WE-TE-130, CO-R10.S03-WE-TE-160, CO-R10.S04-WE-TE-130 FF, CO-R10.S04-WE-TE-160 FF |  | -200d | finish on or before 2026-09-01 |
| MS-CF-IR |  | Completion of Construction Works for Irrigation Network | 0d | 2027-07-13 | 2027-07-13 | CO-R09.S01-IR-140, CO-R09-IR-TF-100, CO-R18-IR-TF-110, CO-R10.S03-ES-IR-130, CO-R10-IR-TF-120, CO-R11.S05-IR-130, CO-R11-IR-TF-130, CO-R14.S07-IR-130, CO-R11-IR-TF-140, CO-R15.S09-IR-130, CO-R15-IR-TF-150, CO-R16.S11-IR-130, CO-R16-IR-TF-160, CO-R17.S13-IR-130, CO-R17-IR-TF-170, CO-R10.S03-WE-IR-130 |  | -212d | finish on or before 2026-10-28 |
| MS-CF-SW |  | Completion of Construction Works for Sewage Network | 0d | 2027-08-03 | 2027-08-03 | CO-R09.S01-SW-130, CO-R09-SW-TF-100, CO-R09-SW-TF-110, CO-R09-SW-TF-120, CO-R18-SW-TF-100, CO-R18-SW-TF-110, CO-R18-SW-TF-130, CO-R10-SW-TF-100, CO-R10-SW-TF-110, CO-R10-SW-TF-130, CO-R11.S05-SW-130, CO-R11-SW-TF-100, CO-R11-SW-TF-110, CO-R11-SW-TF-130, CO-R14.S07-SW-130, CO-R14-SW-TF-100, CO-R14-SW-TF-110, CO-R14-SW-TF-130, CO-R15.S09-SW-130, CO-R15-SW-TF-100, CO-R15-SW-TF-110, CO-R15-SW-TF-130, CO-R16.S11-SW-130, CO-R16-SW-TF-100, CO-R16-SW-TF-110, CO-R16-SW-TF-130, CO-R17.S13-SW-130, CO-R17-SW-TF-100, CO-R17-SW-TF-110, CO-R17-SW-TF-130, CO-R11.S06-SW-130 FF, CO-R14.S08-SW-130 FF, CO-R09.S02-SW-130 FF |  | -221d | finish on or before 2026-11-08 |
| MS-CF-MV |  | Completion of Construction Works for Medium Voltage Network | 0d | 2027-08-21 | 2027-08-21 | CO-R09.S01-MV-120, CO-R09-MV-TF-100, ENG-SH-MV-A-110, CO-R09.S01-EW-100, CO-R09.S01-EW-110, CO-R18-MV-TF-120, CO-R10.S03-ES-MV-120, CO-R10-MV-TF-140, CO-R10.S03-ES-EW-100, CO-R10.S03-ES-EW-110, CO-R11.S05-MV-120, CO-R11-MV-TF-160, CO-R11.S05-EW-100, CO-R11.S05-EW-110, CO-R11-MV-TF-180, CO-R14.S07-EW-100, CO-R14.S07-EW-110, CO-R15.S09-MV-ML-270, CO-R15-MV-TF-200, CO-R15.S09-EW-200, CO-R15.S09-EW-110, CO-R16.S11-MV-ML-300, CO-R16-MV-TF-220, CO-R16.S11-EW-100, CO-R16.S11-EW-110, CO-R17.S13-MV-ML-330, CO-R17-MV-TF-240, CO-R17.S13-EW-100, CO-R17.S13-EW-110, ENG-MS-MV-A-110, CO-R10.S03-WE-MV-120, CO-R10.S03-WE-EW-100, CO-R10.S03-WE-EW-110 |  | -245d | finish on or before 2026-10-28 |
| MS-CF-SD |  | Completion of Construction Works for Storm Drainage Network | 0d | 2027-08-23 | 2027-08-23 | CO-R09.S01-SD-130, CO-R09.S01-SD-170, CO-R09-SD-TF-100, CO-R09-SD-TF-110, CO-R09-SD-TF-120, CO-R09-SD-TF-130, CO-R18-SD-TF-100, CO-R18-SD-TF-110, CO-R18-SD-TF-120, CO-R18-SD-TF-130, CO-R10.S03-ES-SD-130, CO-R10.S03-ES-SD-170, CO-R10-SD-TF-100, CO-R10-SD-TF-110, CO-R10-SD-TF-120, CO-R10-SD-TF-130, CO-R11.S05-SD-130, CO-R11.S05-SD-170, CO-R11-SD-TF-100, CO-R11-SD-TF-110, CO-R11-SD-TF-120, CO-R11-SD-TF-130, CO-R14.S07-SD-130, CO-R14.S07-SD-170, CO-R14-SD-TF-110, CO-R14-SD-TF-120, CO-R14-SD-TF-130, CO-R15.S09-SD-130, CO-R15.S09-SD-170, CO-R15-SD-TF-100, CO-R15-SD-TF-110, CO-R15-SD-TF-120, CO-R15-SD-TF-130, CO-R16.S11-SD-130, CO-R16.S11-SD-170, CO-R16-SD-TF-100, CO-R16-SD-TF-110, CO-R16-SD-TF-120, CO-R16-SD-TF-130, CO-R17.S13-SD-130, CO-R17.S13-SD-170, CO-R17-SD-TF-100, CO-R17-SD-TF-110, CO-R17-SD-TF-120, CO-R17-SD-TF-130, CO-R14-SD-TF-100, CO-R10.S03-WE-SD-130, CO-R10.S03-WE-SD-170 |  | -205d | finish on or before 2027-01-12 |
| MS-CF-PW |  | Completion of Construction Works for Potable Water Network | 0d | 2027-08-30 | 2027-08-30 | CO-R09-PW-TF-100, CO-R09-PW-TF-110, CO-R09-PW-TF-120, CO-R18-PW-TF-100, CO-R18-PW-TF-110, CO-R18-PW-TF-120, CO-R10.S03-ES-PW-130, CO-R10.S03-ES-PW-160, CO-R10-PW-TF-100, CO-R10-PW-TF-110, CO-R10-PW-TF-120, CO-R11-PW-TF-100, CO-R11-PW-TF-110, CO-R11-PW-TF-120, CO-R14-PW-TF-100, CO-R14-PW-TF-110, CO-R14-PW-TF-120, CO-R15-PW-TF-100, CO-R15-PW-TF-110, CO-R15-PW-TF-120, CO-R16-PW-TF-100, CO-R16-PW-TF-110, CO-R16-PW-TF-120, CO-R17-PW-TF-100, CO-R17-PW-TF-110, CO-R17-PW-TF-120, CO-R10.S03-WE-PW-130, CO-R10.S03-WE-PW-160 |  | -235d | finish on or before 2026-11-18 |
| MS-CF-SL |  | Completion of Construction Works for Street Lighting Network | 0d | 2027-09-11 | 2027-09-11 | CO-R09.S01-SL-120, CO-R09.S01-SL-130, CO-R09.S01-SL-160, CO-R09.S01-SL-180, CO-R09.S01-SL-190, CO-R09-SL-TF-100, CO-R09-SL-TF-110, CO-R09-SL-ES-100, CO-R09-SL-ES-110, CO-R18-SL-TF-120, CO-R18-SL-TF-130, CO-R10.S03-ES-SL-120, CO-R10.S03-ES-SL-130, CO-R10.S03-ES-SL-160, CO-R10.S03-ES-SL-180, CO-R10.S03-ES-SL-190, CO-R10-SL-TF-140, CO-R10-SL-TF-150, CO-R10-SL-ES-140, CO-R10-SL-ES-150, CO-R11-SL-TF-160, CO-R11-SL-TF-170, CO-R14.S07-SL-120, CO-R14.S07-SL-130, CO-R14.S07-SL-160, CO-R14.S07-SL-180, CO-R14.S07-SL-190, CO-R11-SL-TF-180, CO-R11-SL-TF-190, CO-R15-SL-TF-200, CO-R15-SL-TF-210, CO-R16-SL-TF-220, CO-R16-SL-TF-230, CO-R17-SL-TF-240, CO-R17-SL-TF-250, CO-R14.S08-SL-850 FF, CO-R09-SL-TF-380, CO-R10-SL-TF-380, CO-R11-SL-TF-380, CO-R14-SL-TF-380, CO-R15-SL-TF-380, CO-R16-SL-TF-380, CO-R17-SL-TF-380, CO-R18-SL-TF-380, CO-R15.S10-SL-130 FF, CO-R15.S10-SL-160 FF, CO-R15.S10-SL-190 FF, CO-R17.S14-SL-130 FF, CO-R17.S14-SL-160 FF, CO-R17.S14-SL-190 FF, CO-R18.S16-SL-130 FF, CO-R18.S16-SL-160 FF, CO-R18.S16-SL-190 FF, CO-R09.S02-SL-130 FF, CO-R10.S03-WE-SL-120, CO-R10.S03-WE-SL-130, CO-R10.S03-WE-SL-160, CO-R10.S03-WE-SL-180, CO-R10.S03-WE-SL-190 |  | -274d | finish on or before 2026-10-15 |
| MS-CF-RD |  | Completion of Construction Works for Road Works | 0d | 2027-10-25 | 2027-10-25 | CO-R09-S1-RD-F-150 FF, CO-R09-S2-RD-F-170 FF, CO-R18-S15-RD-F-130 FF, CO-R18-S16-RD-F-160 FF, CO-R10-S03-RD-F-100 FF, CO-R10-S04-RD-F-130 FF, CO-R11-S05-RD-F-100 FF, CO-R11-S06-RD-F-130 FF, CO-R11-S07-RD-F-100 FF, CO-R11-S08-RD-F-130 FF, CO-R15-S09-RD-F-100 FF, CO-R15-S10-RD-F-130 FF, CO-R16-S11-RD-F-100 FF, CO-R16-S12-RD-F-130 FF, CO-R17-S13-RD-F-100 FF, CO-R17-S14-RD-F-130 FF, CO-R09-S1-RD-F-140 FF, CO-R09-S2-RD-F-160 FF, CO-R18-S15-RD-F-120 FF, CO-R18-S16-RD-F-140 FF, CO-R10-S03-RD-F-160 FF, CO-R10-S04-RD-F-170 FF, CO-R11-S05-RD-F-160 FF, CO-R11-S06-RD-F-170 FF, CO-R11-S07-RD-F-160 FF, CO-R11-S08-RD-F-170 FF, CO-R15-S09-RD-F-160 FF, CO-R15-S10-RD-F-170 FF, CO-R16-S11-RD-F-160 FF, CO-R16-S12-RD-F-170 FF, CO-R17-S13-RD-F-160 FF, CO-R17-S14-RD-F-170 FF, CO-R18.S15-RD-P-150 FF, CO-R18.S16-RD-P-150 FF |  | -247.5d |  |
| MS-CF-PF |  | Project Completion Date | 0d | 2027-11-08 | 2027-11-08 | MS-CF-IR, MS-CF-SL, MS-CF-TE, MS-CF-RD, HO-120 FF, HO-230 FF, HO-220 FF, HO-280 FF, CO-RM-SW-310 FF |  | -247.5d |  |
|  | CM1 | **Control Milestones** |  | 2025-04-29 | 2026-10-06 |  |  |  |  |
| MS-CS-SW |  | The Employer Approval NOC for Sewage Network | 0d | 2025-04-29 A | 2025-04-29 A | CO-R18.S15-SW-220 SS | 100% |  |  |
| MS-CS-SD |  | The Employer Approval NOC for Storm Drainage Network | 0d | 2025-04-30 A | 2025-04-30 A | CO-R18.S15-SD-230 SS | 100% |  |  |
| MS-CS-IR |  | The Employer Approval NOC for Irrigation Network | 0d | 2025-06-16 A | 2025-06-16 A | CO-R18.S15-IR-140 SS | 100% |  |  |
| MS-CS-PW |  | The Employer Approval NOC for Potable Water Network | 0d | 2025-06-19 A | 2025-06-19 A | CO-R18.S16-PW-230 SS | 100% |  |  |
| MS-CS-SL |  | The Employer Approval NOC for Street Lighting Network | 0d | 2025-07-08 A | 2025-07-08 A | CO-R18.S16-SL-100 SS | 100% |  |  |
| MS-CS-TE |  | The Employer Approval NOC for Telecom Network | 0d | 2025-07-08 A | 2025-07-08 A | CO-R18.S15-TE-170 SS | 100% |  |  |
| MS-CS-RD |  | The Employer Approval NOC for Roads Works | 0d | 2025-07-10 A | 2025-07-10 A | CO-R18.S15-RD-P-160 SS | 100% |  |  |
| MS-CS-MV |  | The Employer Approval NOC for Medium Voltage Network | 0d | 2026-10-06 | 2026-10-06 | CO-R18.S15-MV-ML-340 SS |  | -141d |  |
|  | MM | **Intermediate Milestones** |  | 2027-07-25 | 2027-10-25 |  |  |  |  |
| MS-MO-10 |  | Completion of Sewage Pump Stations | 0d | 2027-07-25 | 2027-07-25 | CO-SW-PS7-SWS-110 |  | -177d |  |
| MS-MO-20 |  | Completion of Storm Drainage Ponds | 0d | 2027-08-04 | 2027-08-04 | CO-SD-PO-K2-130 |  | -186d |  |
| MS-MO-30 |  | Completion of Tie In To Existing Networks | 0d | 2027-10-25 | 2027-10-25 | TIE-SD-R09 FF, TIE-SW-R09 FF, TIE-PW-R09 FF, TIE-IR-R09 FF, TIE-R09-MV FF, TIE-R09-SL FF, TIE-R09-TE FF, TIE-SD-R10 FF, TIE-SW-R10 FF, TIE-PW-R10 FF, TIE-IR-R10 FF, TIE-R10-MV FF, TIE-R10-SL FF, TIE-R10-TE FF, TIE-R10-RD FF, TIE-SD-R11 FF, TIE-SW-R11 FF, TIE-PW-R11 FF, TIE-IR-R11 FF, TIE-R11-MV FF, TIE-R11-SL FF, TIE-R11-TE FF, TIE-SD-R14 FF, TIE-SW-R14 FF, TIE-PW-R14 FF, TIE-IR-R14 FF, TIE-R14-MV FF, TIE-R14-SL FF, TIE-R14-TE FF, TIE-R14-RD FF, TIE-SD-R15 FF, TIE-SW-R15 FF, TIE-PW-R15 FF, TIE-IR-R15 FF, TIE-R15-MV FF, TIE-R15-SL FF, TIE-R15-TE FF, TIE-SD-R16 FF, TIE-SW-R16 FF, TIE-PW-R16 FF, TIE-IR-R16 FF, TIE-R16-MV FF, TIE-R16-SL FF, TIE-R16-TE FF, TIE-SD-R17 FF, TIE-SW-R17 FF, TIE-PW-R17 FF, TIE-IR-R17 FF, TIE-R17-MV FF, TIE-R17-SL FF, TIE-R17-TE FF |  | -244.5d |  |
|  | MOB | **Preliminaries and Mobilization Works** |  | 2025-01-12 | 2025-03-12 |  |  |  |  |
|  | MOB | **Mobilization Works** |  | 2025-01-12 | 2025-03-12 |  |  |  |  |
| MOB-10 |  | Clear and Grub for Offices and Access Roads | 24d | 2025-01-12 A | 2025-03-12 A | MS-CS-PS SS | 100% |  |  |
| MOB-20 |  | Project Site Layout Plan Approval | 24d | 2025-01-12 A | 2025-03-12 A | MS-CS-PS SS | 100% |  |  |
| MOB-30 |  | Supply & Install of Project Supervision Offices | 24d | 2025-02-09 A | 2025-03-12 A | MS-CS-PS SS, MOB-20, MOB-10 | 100% |  |  |
| MOB-40 |  | Construction Project Store & Temporary Fence | 24d | 2025-02-09 A | 2025-03-12 A | MOB-10 | 100% |  |  |
| MOB-50 |  | Mobilization of Major Manpower | 24d | 2025-02-09 A | 2025-03-12 A | MOB-20 | 100% |  |  |
| MOB-60 |  | Mobilization of Major Equipments | 24d | 2025-02-09 A | 2025-03-12 A | MOB-20 | 100% |  |  |
| MOB-70 |  | Installation Project Sign Board | 24d | 2025-02-09 A | 2025-03-12 A | MOB-10 | 100% |  |  |
| MOB-80 |  | Construction Site Access Roads | 24d | 2025-02-09 A | 2025-03-12 A | MOB-10 | 100% |  |  |
|  | 2 | **Project Documents Provision From The Employer** |  | 2025-01-12 | 2025-02-12 |  |  |  |  |
| PRE-EMP-MDC-10 |  | Receive of Approved Project Master Plans of works (IFC) From The Employer | 0d | 2025-01-12 A | 2025-01-12 A | PRE-EMP-MDC-20 SS | 100% |  |  |
| PRE-EMP-MDC-20 |  | Receive of Site Benchmark Coordinates (Original Point) From The Employer | 0d | 2025-02-12 A | 2025-02-12 A | MS-CS-PS SS | 100% |  |  |
| PRE-EMP-MDC-30 |  | Receive of Site Surveying Details From The Employer | 0d | 2025-02-12 A | 2025-02-12 A | PRE-EMP-MDC-20 SS | 100% |  |  |
|  | 1 | **Project Main Documents From The Contractor** |  | 2025-01-12 | 2025-03-02 |  |  |  |  |
| PRE-CON-MDC-20 |  | Submission Project Baseline Schedule | 26d | 2025-01-12 A | 2025-03-01 A | MS-CS-PS SS | 100% |  |  |
| PRE-CON-MDC-30 |  | Submission Project Health & Safety Plan | 26d | 2025-01-12 A | 2025-03-02 A | MS-CS-PS SS | 100% |  |  |
| PRE-CON-MDC-40 |  | Submission Project Quality Control Plan | 26d | 2025-01-12 A | 2025-03-02 A | MS-CS-PS SS | 100% |  |  |
| PRE-CON-MDC-50 |  | Submission Project Surveying Report | 26d | 2025-01-12 A | 2025-03-02 A | MS-CS-PS SS | 100% |  |  |
| PRE-CON-MDC-60 |  | Submission Project Geotechnical Soil Report | 26d | 2025-01-12 A | 2025-03-02 A | MS-CS-PS SS | 100% |  |  |
| PRE-CON-MDC-70 |  | Submission Project Environmental Plan | 26d | 2025-01-12 A | 2025-03-02 A | MS-CS-PS SS | 100% |  |  |
| PRE-CON-MDC-80 |  | Submission Project Organization Chart and Communications Plan | 26d | 2025-01-12 A | 2025-03-02 A | MS-CS-PS SS | 100% |  |  |
|  | ENG | **Engineering Works** |  | 2025-01-12 | 2025-06-02 |  |  |  |  |
|  | DS | **Design Reviews** |  | 2025-01-12 | 2025-01-21 |  |  |  |  |
|  | INF | **Infrastructure Networks** |  | 2025-01-12 | 2025-01-21 |  |  |  |  |
|  | RD | **Road Works** |  | 2025-01-12 | 2025-01-21 |  |  |  |  |
| ENG-DS-RD-S-100 |  | Receive of Design Drawing Package for Road Works from Modon | 6d | 2025-01-12 A | 2025-01-18 A | PRE-EMP-MDC-10, PRE-EMP-MDC-20, PRE-EMP-MDC-30 | 100% |  |  |
| ENG-DS-RD-A-110 |  | Review and Comment of Design Drawings for Road Works by Contractor | 6d | 2025-01-15 A | 2025-01-21 A | ENG-DS-RD-S-100 FF+3d, ENG-DS-RD-S-100 SS+3d | 100% |  |  |
|  | SW | **Sewage Network** |  | 2025-01-12 | 2025-01-21 |  |  |  |  |
| ENG-DS-SW-S-100 |  | Receive of Design Drawing Package for Sewage Network from Modon | 6d | 2025-01-12 A | 2025-01-18 A | PRE-EMP-MDC-10, PRE-EMP-MDC-20, PRE-EMP-MDC-30 | 100% |  |  |
| ENG-DS-SW-A-110 |  | Review and Comment of Design Drawings for Sewage Network by Contractor | 6d | 2025-01-15 A | 2025-01-21 A | ENG-DS-SW-S-100 FF+3d, ENG-DS-SW-S-100 SS+3d | 100% |  |  |
|  | SD | **Storm Drainage Network** |  | 2025-01-12 | 2025-01-21 |  |  |  |  |
| ENG-DS-SD-S-100 |  | Receive of Design Drawing Package for Storm Drainage Network from Modon | 6d | 2025-01-12 A | 2025-01-18 A | PRE-EMP-MDC-10, PRE-EMP-MDC-20, PRE-EMP-MDC-30 | 100% |  |  |
| ENG-DS-SD-A-110 |  | Review and Comment of Design Drawings for Storm Drainage Network by Contractor | 6d | 2025-01-15 A | 2025-01-21 A | ENG-DS-SD-S-100 FF+3d, ENG-DS-SD-S-100 SS+3d | 100% |  |  |
|  | PW | **Potable Water Network** |  | 2025-01-12 | 2025-01-21 |  |  |  |  |
| ENG-DS-PW-S-100 |  | Receive of Design Drawing Package for Potable Water Network from Modon | 6d | 2025-01-12 A | 2025-01-18 A | PRE-EMP-MDC-10, PRE-EMP-MDC-20 | 100% |  |  |
| ENG-DS-PW-A-110 |  | Review and Comment of Design Drawings for Potable Water Network by Contractor | 6d | 2025-01-15 A | 2025-01-21 A | ENG-DS-PW-S-100 FF+3d, ENG-DS-PW-S-100 SS+3d | 100% |  |  |
|  | IR | **Irrigation Network** |  | 2025-01-12 | 2025-01-21 |  |  |  |  |
| ENG-DS-IR-S-100 |  | Receive of Design Drawing Package for Irrigation Network from Modon | 6d | 2025-01-12 A | 2025-01-18 A | PRE-EMP-MDC-10, PRE-EMP-MDC-20, PRE-EMP-MDC-30 | 100% |  |  |
| ENG-DS-IR-A-110 |  | Review and Comment of Design Drawings for Irrigation Network by Contractor | 6d | 2025-01-15 A | 2025-01-21 A | ENG-DS-IR-S-100 FF+3d, ENG-DS-IR-S-100 SS+3d | 100% |  |  |
|  | MV | **Medium Voltage Network** |  | 2025-01-12 | 2025-01-21 |  |  |  |  |
| ENG-DS-MV-S-100 |  | Receive of Design Drawing Package for Medium Voltage Network from Modon | 6d | 2025-01-12 A | 2025-01-18 A | PRE-EMP-MDC-10, PRE-EMP-MDC-20, PRE-EMP-MDC-30 | 100% |  |  |

| ID | WBS | Task | Duration | Start | Finish | Predecessors | Complete |
| --- | --- | --- | --- | --- | --- | --- | --- |
| ENG-DS-MV-A-110 |  | Review and Comment of Design Drawings for Medium Voltage Network by Contractor | 6d | 2025-01-15 A | 2025-01-21 A | ENG-DS-MV-S-100 FF+3d, ENG-DS-MV-S-100 SS+3d | 100% |
|  | SL | **Street Lighting Network** |  | 2025-01-12 | 2025-01-21 |  |  |
| ENG-DS-SL-S-100 |  | Receive of Design Drawing Package for Street Lighting Network from Modon | 6d | 2025-01-12 A | 2025-01-18 A | PRE-EMP-MDC-10, PRE-EMP-MDC-20, PRE-EMP-MDC-30 | 100% |
| ENG-DS-SL-A-110 |  | Review and Comment of Design Drawings for Street Lighting Network by Contractor | 6d | 2025-01-15 A | 2025-01-21 A | ENG-DS-SL-S-100 FF+3d, ENG-DS-SL-S-100 SS+3d | 100% |
|  | TE | **Telecom Network** |  | 2025-01-12 | 2025-01-21 |  |  |
| ENG-DS-TE-S-100 |  | Receive of Design Drawing Package for Telecom Network from Modon | 6d | 2025-01-12 A | 2025-01-18 A | PRE-EMP-MDC-10, PRE-EMP-MDC-20, PRE-EMP-MDC-30 | 100% |
| ENG-DS-TE-A-110 |  | Review and Comment of Design Drawings for Telecom Network by Contractor | 6d | 2025-01-15 A | 2025-01-21 A | ENG-DS-TE-S-100 FF+3d, ENG-DS-TE-S-100 SS+3d | 100% |
|  | 1 | **Superstructure Works** |  | 2025-01-12 | 2025-01-21 |  |  |
|  | SL | **Sewage Pump Stations ( PS06 )** |  | 2025-01-12 | 2025-01-21 |  |  |
| ENG-DS-SPS-S-100 |  | Receive of Design Drawing Package for Sewage Pump Stations from Modon | 6d | 2025-01-12 A | 2025-01-18 A | PRE-EMP-MDC-10, PRE-EMP-MDC-20, PRE-EMP-MDC-30 | 100% |
| ENG-DS-SPS-A-110 |  | Review and Comment of Design Drawings for Sewage Pump Stations by Contractor | 6d | 2025-01-15 A | 2025-01-21 A | ENG-DS-SPS-S-100 FF+3d, ENG-DS-SPS-S-100 SS | 100% |
|  | TE | **Storm Drainage Ponds ( PO-J1 , PO-J2 )** |  | 2025-01-12 | 2025-01-21 |  |  |
| ENG-DS-DPO-S-100 |  | Receive of Design Drawing Package for Storm Drainage Ponds from Modon | 6d | 2025-01-12 A | 2025-01-18 A | PRE-EMP-MDC-10, PRE-EMP-MDC-20, PRE-EMP-MDC-30 | 100% |
| ENG-DS-DPO-A-110 |  | Review and Comment of Design Drawings for Storm Drainage Ponds by Contractor | 6d | 2025-01-15 A | 2025-01-21 A | ENG-DS-DPO-S-100 FF+3d, ENG-DS-DPO-S-100 SS | 100% |
|  | SD | **Shop Drawings** |  | 2025-01-22 | 2025-05-19 |  |  |
|  | INF | **Infrastructure Networks** |  | 2025-01-22 | 2025-05-19 |  |  |
|  | 10 | **Road Works** |  | 2025-01-22 | 2025-05-19 |  |  |
|  | 1 | **Road Pavement Works** |  | 2025-01-22 | 2025-05-19 |  |  |
| ENG-SH-RD-S-100 |  | Submission Shop Drawings for Plan and Profile of Road Works | 7d | 2025-01-22 A | 2025-01-29 A | ENG-DS-RD-A-110 | 100% |
| ENG-SH-RD-S-110 |  | Submission Shop Drawings for Roads Typical Sections and Pavement Details | 7d | 2025-01-22 A | 2025-01-29 A | ENG-DS-RD-A-110 | 100% |
| ENG-SH-RD-S-120 |  | Submission Shop Drawings of Extraover for Pedestrian ramps | 7d | 2025-01-22 A | 2025-01-29 A | ENG-DS-RD-A-110 | 100% |
| ENG-SH-RD-S-130 |  | Submission Shop Drawings for Intersections of Road Works | 7d | 2025-01-22 A | 2025-01-29 A | ENG-DS-RD-A-110 | 100% |
| ENG-SH-RD-A-100 |  | Approval Shop Drawings for Plan and Profile of Road Works | 8d | 2025-01-29 A | 2025-02-09 A | ENG-SH-RD-S-100 | 100% |
| ENG-SH-RD-A-110 |  | Approval Shop Drawings for Roads Typical Sections and Pavement Details | 10d | 2025-01-30 A | 2025-03-19 A | ENG-SH-RD-S-110 | 100% |
| ENG-SH-RD-A-120 |  | Approval Shop Drawings of Extraover for Pedestrian ramps | 10d | 2025-01-30 A | 2025-03-19 A | ENG-SH-RD-S-120 | 100% |
| ENG-SH-RD-A-130 |  | Approval Shop Drawings for Intersections of Road Works | 10d | 2025-01-30 A | 2025-05-19 A | ENG-SH-RD-S-130, ENG-SH-RD-A-100 FF | 100% |
|  | 10 | **Pavement Works** |  | 2025-01-22 | 2025-03-19 |  |  |
| ENG-SH-HS-S-100 |  | Submission Shop Drawings for Hardscaping Works | 6d | 2025-01-22 A | 2025-01-28 A | ENG-DS-RD-A-110 | 100% |
| ENG-SH-HS-A-110 |  | Approval Shop Drawings for Hardscaping Works | 10d | 2025-01-29 A | 2025-03-19 A | ENG-SH-HS-S-100 | 100% |
|  | 11 | **Traffic Sign Boards and Road Marking** |  | 2025-01-22 | 2025-03-19 |  |  |
| ENG-SH-MRK-S-110 |  | Submission Shop Drawings for Roads Markings | 6d | 2025-01-22 A | 2025-01-28 A | ENG-DS-RD-A-110 | 100% |
| ENG-SH-TSB-S-100 |  | Submission Shop Drawings for Traffic Signs Boards | 6d | 2025-01-22 A | 2025-01-29 A | ENG-DS-RD-A-110 | 100% |
| ENG-SH-MRK-A-110 |  | Approval Shop Drawings for Roads Markings | 10d | 2025-01-29 A | 2025-03-19 A | ENG-SH-MRK-S-110, ENG-SH-TSB-A-100 FF | 100% |
| ENG-SH-TSB-A-100 |  | Approval Shop Drawings for Traffic Signs Boards | 10d | 2025-01-29 A | 2025-03-19 A | ENG-SH-TSB-S-100 | 100% |
|  | 2 | **Sewage Network** |  | 2025-01-22 | 2025-04-28 |  |  |
|  | 1 | **Main Line Sections** |  | 2025-01-22 | 2025-04-28 |  |  |
| ENG-SH-SW-ML-S-100 |  | Submission Shop Drawings for Main Line of Sewage Network | 5d | 2025-01-22 A | 2025-01-27 A | ENG-DS-SW-A-110 | 100% |
| ENG-SH-SW-ML-A-110 |  | Approval Shop Drawings for Main Line of Sewage Network | 7d | 2025-01-28 A | 2025-04-28 A | ENG-SH-SW-ML-S-100 | 100% |
|  | 9 | **Storm Drainage Network** |  | 2025-01-22 | 2025-02-09 |  |  |
|  | 1 | **Main Line Sections** |  | 2025-01-22 | 2025-02-09 |  |  |
| ENG-SH-SD-ML-S-100 |  | Submission Shop Drawings for Main Line of Storm Drainage Network | 6d | 2025-01-22 A | 2025-01-28 A | ENG-DS-SD-A-110 | 100% |
| ENG-SH-SD-ML-A-110 |  | Approval Shop Drawings for Main Line of Storm Drainage Network | 10d | 2025-01-29 A | 2025-02-09 A | ENG-SH-SD-ML-S-100 | 100% |
|  | 2 | **Catch Basin Sections** |  | 2025-01-22 | 2025-02-09 |  |  |
| ENG-SH-SD-CB-S-100 |  | Submission Shop Drawings for Catch Basin of Storm Drainage Network | 6d | 2025-01-22 A | 2025-01-28 A | ENG-DS-SD-A-110 | 100% |
| ENG-SH-SD-CB-A-110 |  | Approval Shop Drawings for Catch Basin of Storm Drainage Network | 10d | 2025-01-29 A | 2025-02-09 A | ENG-SH-SD-CB-S-100 | 100% |
|  | 3 | **Potable Water Network** |  | 2025-01-22 | 2025-05-13 |  |  |
|  | 1 | **Main Line Sections** |  | 2025-01-22 | 2025-05-13 |  |  |
| ENG-SH-PW-ML-S-100 |  | Submission Shop Drawings for Main Line of Potable Water Network | 5d | 2025-01-22 A | 2025-01-27 A | ENG-DS-PW-A-110 | 100% |
| ENG-SH-PW-ML-A-110 |  | Approval Shop Drawings for Main Line of Potable Water Network | 10d | 2025-01-28 A | 2025-05-13 A | ENG-SH-PW-ML-S-100 | 100% |
|  | 1 | **Main Line Sections** |  |  |  |  |  |
|  | 2 | **Fire Hydrant** |  | 2025-01-22 | 2025-04-02 |  |  |
| ENG-SH-PW-FH-S-100 |  | Submission Shop Drawings for Fire Hydrant Network | 5d | 2025-01-22 A | 2025-01-27 A | ENG-DS-PW-A-110 | 100% |
| ENG-SH-PW-FH-A-110 |  | Approval Shop Drawings for Fire Hydrant Network | 10d | 2025-01-28 A | 2025-04-02 A | ENG-SH-PW-FH-S-100 | 100% |
|  | 1 | **Main Line Sections** |  |  |  |  |  |
|  | 4 | **Irrigation Network** |  | 2025-01-22 | 2025-04-28 |  |  |
|  | 1 | **Main Line Sections** |  | 2025-01-22 | 2025-04-27 |  |  |
| ENG-SH-IR-ML-S-100 |  | Submission Shop Drawings for Main Line of Irrigation Network | 6d | 2025-01-22 A | 2025-01-28 A | ENG-DS-IR-A-110 | 100% |
| ENG-SH-IR-ML-A-110 |  | Approval Shop Drawings for Main Line of Irrigation Network | 10d | 2025-01-29 A | 2025-04-27 A | ENG-SH-IR-ML-S-100 | 100% |
|  | 2 | **Lateral Line Sections** |  | 2025-01-22 | 2025-04-28 |  |  |
| ENG-SH-IR-LL-S-100 |  | Submission Shop Drawings for Lateral Line of Irrigation Network | 6d | 2025-01-22 A | 2025-01-28 A | ENG-DS-IR-A-110 | 100% |
| ENG-SH-IR-LL-A-110 |  | Approval Shop Drawings for Lateral Line of Irrigation Network | 10d | 2025-01-29 A | 2025-04-28 A | ENG-SH-IR-LL-S-100 | 100% |
|  | 5 | **Medium Voltage Network** |  | 2025-01-22 | 2025-02-09 |  |  |
| ENG-SH-MV-S-100 |  | Submission Shop Drawings for Medium Voltage Network | 6d | 2025-01-22 A | 2025-01-28 A | ENG-DS-MV-A-110 | 100% |
| ENG-SH-MV-A-110 |  | Approval Shop Drawings for Medium Voltage Network | 10d | 2025-01-29 A | 2025-02-09 A | ENG-SH-MV-S-100 | 100% |
|  | 7 | **Street Lighting Network** |  | 2025-01-22 | 2025-02-09 |  |  |
| ENG-SH-SL-S-100 |  | Submission Shop Drawings for Street Lighting Network | 6d | 2025-01-22 A | 2025-01-28 A | ENG-DS-SL-A-110 | 100% |
| ENG-SH-SL-A-110 |  | Approval Shop Drawings for Street Lighting Network | 10d | 2025-01-29 A | 2025-02-09 A | ENG-SH-SL-S-100 | 100% |
|  | 8 | **Telecom Network** |  | 2025-01-22 | 2025-02-09 |  |  |
| ENG-SH-CTV-S-100 |  | Submission Shop Drawings for CCTV Complete System | 6d | 2025-01-22 A | 2025-01-28 A | ENG-DS-TE-A-110 | 100% |
| ENG-SH-TE-S-100 |  | Submission Shop Drawings for Telecom Network | 6d | 2025-01-22 A | 2025-01-28 A | ENG-DS-TE-A-110 | 100% |

| ID | WBS | Task | Duration | Start | Finish | Predecessors | Complete |
| --- | --- | --- | --- | --- | --- | --- | --- |
| ENG-SH-CTV-A-110 |  | Approval Shop Drawings for CCTV Complete System | 10d | 2025-01-29 A | 2025-02-09 A | ENG-SH-CTV-S-100 | 100% |
| ENG-SH-TE-A-110 |  | Approval Shop Drawings for Telecom Network | 10d | 2025-01-29 A | 2025-02-09 A | ENG-SH-TE-S-100 | 100% |
|  | 1 | **Superstructure Works** |  | 2025-01-22 | 2025-02-10 |  |  |
|  | SL | **Sewage Pump Stations ( PS 06 )** |  | 2025-01-22 | 2025-02-10 |  |  |
| ENG-SH-SPS-S-110 |  | Submission Shop Drawings Package for Sewage Pump Stations | 7d | 2025-01-22 A | 2025-01-29 A | ENG-DS-SPS-A-110 | 100% |
| ENG-SH-SPS-A-110 |  | Approval Shop Drawings Package for Sewage Pump Stations | 10d | 2025-01-30 A | 2025-02-10 A | ENG-SH-SPS-S-110 | 100% |
|  | TE | **Storm Drainage Ponds ( PO-J1 , PO-J2 )** |  | 2025-01-22 | 2025-02-10 |  |  |
| ENG-SH-DPO-S-100 |  | Submission Shop Drawings Package for Storm Drainage Ponds | 7d | 2025-01-22 A | 2025-01-29 A | ENG-DS-DPO-A-110 | 100% |
| ENG-SH-DPO-A-110 |  | Approval Shop Drawings Package for Storm Drainage Ponds | 10d | 2025-01-30 A | 2025-02-10 A | ENG-SH-DPO-S-100 | 100% |
|  | SD1 | **Method Statements** |  | 2025-01-22 | 2025-02-10 |  |  |
|  | INF | **Infrastructure Networks** |  | 2025-01-22 | 2025-02-10 |  |  |
|  | 10 | **Road Works** |  | 2025-01-22 | 2025-02-10 |  |  |
|  | 1 | **Road Pavement Works** |  | 2025-01-22 | 2025-02-10 |  |  |
| ENG-MS-RD-S-10 |  | Submission Method Statement for Plan and Profile of Road Works | 7d | 2025-01-22 A | 2025-01-29 A | ENG-DS-RD-A-110 | 100% |
| ENG-MS-RD-S-20 |  | Submission Method Statement for Roads Typical Sections and Pavement Details | 7d | 2025-01-22 A | 2025-01-29 A | ENG-DS-RD-A-110 | 100% |
| ENG-MS-RD-S-30 |  | Submission Method Statement of Extraover for Pedestrian ramps | 7d | 2025-01-22 A | 2025-01-29 A | ENG-DS-RD-A-110 | 100% |
| ENG-MS-RD-S-40 |  | Submission Method Statement for Intersections of Road Works | 7d | 2025-01-22 A | 2025-01-29 A | ENG-DS-RD-A-110 | 100% |
| ENG-MS-RD-A-10 |  | Approval Method Statement for Plan and Profile of Road Works | 8d | 2025-01-30 A | 2025-02-10 A | ENG-MS-RD-S-10 | 100% |
| ENG-MS-RD-A-20 |  | Approval Method Statement for Roads Typical Sections and Pavement Details | 10d | 2025-01-30 A | 2025-02-10 A | ENG-MS-RD-S-20 | 100% |
| ENG-MS-RD-A-30 |  | Approval Method Statement of Extraover for Pedestrian ramps | 10d | 2025-01-30 A | 2025-02-10 A | ENG-MS-RD-S-30 | 100% |
| ENG-MS-RD-A-40 |  | Approval Method Statement for Intersections of Road Works | 10d | 2025-01-30 A | 2025-02-10 A | ENG-MS-RD-S-40, ENG-MS-RD-A-10 FF | 100% |
|  | 10 | **Pavement Works** |  | 2025-01-22 | 2025-02-10 |  |  |
| ENG-MS-HS-S-10 |  | Submission Method Statement for Hardscaping Works | 7d | 2025-01-22 A | 2025-01-29 A | ENG-DS-RD-A-110 | 100% |
| ENG-MS-HS-A-10 |  | Approval Method Statement for Hardscaping Works | 10d | 2025-01-30 A | 2025-02-10 A | ENG-MS-HS-S-10 | 100% |
|  | 11 | **Traffic Sign Boards and Road Marking** |  | 2025-01-22 | 2025-02-10 |  |  |
| ENG-MS-MRK-S-10 |  | Submission Method Statement for Roads Markings | 7d | 2025-01-22 A | 2025-01-29 A | ENG-DS-RD-A-110 | 100% |
| ENG-MS-TSB-S-10 |  | Submission Method Statement for Traffic Signs Boards | 7d | 2025-01-22 A | 2025-01-29 A | ENG-DS-RD-A-110 | 100% |
| ENG-MS-MRK-A-10 |  | Approval Method Statement for Roads Markings | 10d | 2025-01-30 A | 2025-02-10 A | ENG-MS-MRK-S-10, ENG-MS-TSB-A-10 FF | 100% |
| ENG-MS-TSB-A-10 |  | Approval Method Statement for Traffic Signs Boards | 10d | 2025-01-30 A | 2025-02-10 A | ENG-MS-TSB-S-10 | 100% |
|  | 2 | **Sewage Network** |  | 2025-01-22 | 2025-02-08 |  |  |
|  | 1 | **Main Line Sections** |  | 2025-01-22 | 2025-02-08 |  |  |
| ENG-MS-SW-ML-S-100 |  | Submission Method Statement for Main Line of Sewage Network | 5d | 2025-01-22 A | 2025-01-27 A | ENG-DS-SW-A-110 | 100% |
| ENG-MS-SW-ML-A-110 |  | Approval Method Statement for Main Line of Sewage Network | 7d | 2025-01-28 A | 2025-02-08 A | ENG-MS-SW-ML-S-100 | 100% |
|  | 9 | **Storm Drainage Network** |  | 2025-01-22 | 2025-02-09 |  |  |
|  | 1 | **Main Line Sections** |  | 2025-01-22 | 2025-02-09 |  |  |
| ENG-MS-SD-ML-S-100 |  | Submission Method Statement for Main Line of Storm Drainage Network | 6d | 2025-01-22 A | 2025-01-28 A | ENG-DS-SD-A-110 | 100% |
| ENG-MS-SD-ML-A-110 |  | Approval Method Statement for Main Line of Storm Drainage Network | 10d | 2025-01-29 A | 2025-02-09 A | ENG-MS-SD-ML-S-100 | 100% |
|  | 2 | **Catch Basin Sections** |  | 2025-01-22 | 2025-02-09 |  |  |
| ENG-MS-SD-CB-S-100 |  | Submission Method Statement for Catch Basin of Storm Drainage Network | 6d | 2025-01-22 A | 2025-01-28 A | ENG-DS-SD-A-110 | 100% |
| ENG-MS-SD-CB-A-110 |  | Approval Method Statement for Catch Basin of Storm Drainage Network | 10d | 2025-01-29 A | 2025-02-09 A | ENG-MS-SD-CB-S-100 | 100% |
|  | 3 | **Potable Water Network** |  | 2025-01-22 | 2025-02-08 |  |  |
|  | 1 | **Main Line Sections** |  | 2025-01-22 | 2025-02-08 |  |  |
| ENG-MS-PW-ML-S-100 |  | Submission Method Statement for Main Line of Potable Water Network | 5d | 2025-01-22 A | 2025-01-27 A | ENG-DS-PW-A-110 | 100% |
| ENG-MS-PW-ML-A-110 |  | Approval Method Statement for Main Line of Potable Water Network | 10d | 2025-01-28 A | 2025-02-08 A | ENG-MS-PW-ML-S-100 | 100% |
|  | 4 | **Irrigation Network** |  | 2025-01-22 | 2025-02-09 |  |  |
|  | 1 | **Main Line Sections** |  | 2025-01-22 | 2025-02-09 |  |  |
| ENG-MS-IR-ML-S-100 |  | Submission Method Statement for Main Line of Irrigation Network | 6d | 2025-01-22 A | 2025-01-28 A | ENG-DS-IR-A-110 | 100% |
| ENG-MS-IR-ML-A-110 |  | Approval Method Statement for Main Line of Irrigation Network | 10d | 2025-01-29 A | 2025-02-09 A | ENG-MS-IR-ML-S-100 | 100% |
|  | 2 | **Lateral Line Sections** |  | 2025-01-22 | 2025-02-09 |  |  |
| ENG-MS-IR-LL-S-100 |  | Submission Method Statement for Lateral Line of Irrigation Network | 6d | 2025-01-22 A | 2025-01-28 A | ENG-DS-IR-A-110 | 100% |
| ENG-MS-IR-LL-A-110 |  | Approval Method Statement for Lateral Line of Irrigation Network | 10d | 2025-01-29 A | 2025-02-09 A | ENG-MS-IR-LL-S-100 | 100% |
|  | 5 | **Medium Voltage Network** |  | 2025-01-22 | 2025-02-09 |  |  |
| ENG-MS-MV-S-100 |  | Submission Method Statement for Medium Voltage Network | 6d | 2025-01-22 A | 2025-01-28 A | ENG-DS-MV-A-110 | 100% |
| ENG-MS-MV-A-110 |  | Approval Method Statement for Medium Voltage Network | 10d | 2025-01-29 A | 2025-02-09 A | ENG-MS-MV-S-100 | 100% |
|  | 7 | **Street Lighting Network** |  | 2025-01-22 | 2025-02-09 |  |  |
| ENG-MS-SL-S-100 |  | Submission Method Statement for Street Lighting Network | 6d | 2025-01-22 A | 2025-01-28 A | ENG-DS-SL-A-110 | 100% |
| ENG-MS-SL-A-110 |  | Approval Method Statement for Street Lighting Network | 10d | 2025-01-29 A | 2025-02-09 A | ENG-MS-SL-S-100 | 100% |
|  | 8 | **Telecom Network** |  | 2025-01-22 | 2025-02-09 |  |  |
| ENG-MS-CTV-S-100 |  | Submission Method Statement for CCTV Complete System | 6d | 2025-01-22 A | 2025-01-28 A | ENG-DS-TE-A-110 | 100% |
| ENG-MS-TE-S-100 |  | Submission Method Statement for Telecom Network | 6d | 2025-01-22 A | 2025-01-28 A | ENG-DS-TE-A-110 | 100% |
| ENG-MS-CTV-A-110 |  | Approval Method Statement for CCTV Complete System | 10d | 2025-01-29 A | 2025-02-09 A | ENG-MS-CTV-S-100 | 100% |
| ENG-MS-TE-A-110 |  | Approval Method Statement for Telecom Network | 10d | 2025-01-29 A | 2025-02-09 A | ENG-MS-TE-S-100 | 100% |
|  | 1 | **Superstructure Works** |  | 2025-01-22 | 2025-02-10 |  |  |
|  | SL | **Sewage Pump Stations ( PS 06 )** |  | 2025-01-22 | 2025-02-10 |  |  |
| ENG-MS-SPS-S-100 |  | Submission Method Statement Package for Sewage Pump Stations | 7d | 2025-01-22 A | 2025-01-29 A | ENG-DS-SPS-A-110 | 100% |
| ENG-MS-SPS-A-110 |  | Approval Method Statement Package for Sewage Pump Stations | 10d | 2025-01-30 A | 2025-02-10 A | ENG-MS-SPS-S-100 | 100% |
|  | TE | **Storm Drainage Ponds ( PO-J1 , PO-J2 )** |  | 2025-01-22 | 2025-02-10 |  |  |
| ENG-MS-DPO-S-100 |  | Submission Method Statement Package for Storm Drainage Ponds | 7d | 2025-01-22 A | 2025-01-29 A | ENG-DS-DPO-A-110 | 100% |
| ENG-MS-DPO-A-110 |  | Approval Method Statement Package for Storm Drainage Ponds | 10d | 2025-01-30 A | 2025-02-10 A | ENG-MS-DPO-S-100 | 100% |
|  | SD11 | **Material Submittals** |  | 2025-01-22 | 2025-06-02 |  |  |

| ID | WBS | Task | Duration | Start | Finish | Predecessors | Complete |
| --- | --- | --- | --- | --- | --- | --- | --- |
|  | 2 | **Short Lead Time Items** |  | 2025-01-22 | 2025-06-01 |  |  |
|  | INF | **Infrastructure Networks** |  | 2025-01-22 | 2025-06-01 |  |  |
|  | 10 | **Road Works** |  | 2025-01-22 | 2025-06-01 |  |  |
|  | MS | **Submission of Material** |  | 2025-01-22 | 2025-05-27 |  |  |
|  | 1 | **Roads Works** |  | 2025-01-22 | 2025-05-26 |  |  |
| ENG-MT-RD-S-100 |  | Material Submittal for Subgrade of Road Works | 12d | 2025-01-22 A | 2025-02-04 A | ENG-DS-RD-A-110 | 100% |
| ENG-MT-RD-S-110 |  | Material Submittal for Aggregate Base Course of Road Works | 12d | 2025-01-22 A | 2025-02-04 A | ENG-DS-RD-A-110 | 100% |
| ENG-MT-RD-S-120 |  | Material Submittal for Prime Coat of Road Works | 12d | 2025-05-13 A | 2025-05-26 A | ENG-DS-RD-A-110 | 100% |
| ENG-MT-RD-S-130 |  | Material Submittal for Bituminous Base & Wearing Courses of Road Works | 12d | 2025-05-13 A | 2025-05-26 A | ENG-DS-RD-A-110 | 100% |
|  | 10 | **Pavement Works** |  | 2025-01-27 | 2025-05-27 |  |  |
| ENG-MT-RD-S-140 |  | Material Submittal for Interlock Tiles of Landscaping | 12d | 2025-01-27 A | 2025-03-15 A | ENG-DS-RD-A-110 | 100% |
| ENG-MT-RD-S-150 |  | Material Submittal for Curbstones of Landscaping | 12d | 2025-04-26 A | 2025-05-27 A | ENG-DS-RD-A-110 | 100% |
|  | 11 | **Traffic Signs Boards and Roads Marking** |  | 2025-05-13 | 2025-05-26 |  |  |
| ENG-MT-TS-S-100 |  | Material Submittal for Traffic Signs Boards of Road Works | 12d | 2025-05-13 A | 2025-05-26 A | ENG-DS-RD-A-110 | 100% |
| ENG-MT-TS-S-110 |  | Material Submittal for Road Markings of Road Works | 12d | 2025-05-13 A | 2025-05-25 A | ENG-DS-RD-A-110 | 100% |
|  | NA | **Approval of Material** |  | 2025-01-27 | 2025-06-01 |  |  |
|  | 1 | **Road Works** |  | 2025-02-05 | 2025-06-01 |  |  |
| ENG-MT-RD-A-100 |  | Material Approval for Subgrade of Road Works | 5d | 2025-02-05 A | 2025-03-13 A | ENG-MT-RD-S-100 | 100% |
| ENG-MT-RD-A-110 |  | Material Approval for Aggregate Base Course of Road Works | 5d | 2025-02-05 A | 2025-03-13 A | ENG-MT-RD-S-110 | 100% |
| ENG-MT-RD-A-120 |  | Material Approval for Prime Coat of Road Works | 5d | 2025-05-27 A | 2025-06-01 A | ENG-MT-RD-S-120 | 100% |
| ENG-MT-RD-A-130 |  | Material Approval for Bituminous Base & Wearing Courses of Road Works | 5d | 2025-05-27 A | 2025-06-01 A | ENG-MT-RD-S-130 | 100% |
|  | 2 | **Pavement Works** |  | 2025-01-27 | 2025-04-27 |  |  |
| ENG-MT-RD-A-140 |  | Material Approval of Interlock Tiles for Landscaping | 10d | 2025-01-27 A | 2025-03-15 A | ENG-MT-RD-S-140 | 100% |
| ENG-MT-RD-A-150 |  | Material Approval of Curbstones for Landscaping | 10d | 2025-04-26 A | 2025-04-27 A | ENG-MT-RD-S-150 | 100% |
|  | 3 | **Traffic Signs Boards and Roads Marking** |  | 2025-05-26 | 2025-05-31 |  |  |
| ENG-MT-TS-A-110 |  | Material Approval for Road Markings of Road Works | 10d | 2025-05-26 A | 2025-05-31 A | ENG-MT-TS-S-110 | 100% |
| ENG-MT-TS-A-100 |  | Material Approval for Traffic Signs Boards of Road Works | 10d | 2025-05-27 A | 2025-05-31 A | ENG-MT-TS-S-100 | 100% |
|  | 2 | **Sewage Network** |  | 2025-01-22 | 2025-05-15 |  |  |
|  | MS | **Submission of Material** |  | 2025-01-22 | 2025-01-29 |  |  |
|  | 1 | **Main Line Sections** |  | 2025-01-22 | 2025-01-29 |  |  |
| ENG-MT-SW-ML-S-100 |  | Material Submittal for Manholes of Sewage Network | 5d | 2025-01-22 A | 2025-01-29 A | ENG-DS-SW-A-110 | 100% |
| ENG-MT-SW-ML-S-110 |  | Material Submittal for Main Line Pipes of Sewage Network | 7d | 2025-01-22 A | 2025-01-29 A | ENG-DS-SW-A-110 | 100% |
|  | 3 | **Testing and Finishes** |  | 2025-01-22 | 2025-01-29 |  |  |
| ENG-MT-SW-TF-S-100 |  | Material Submittal for Manhole Covers of Sewage Network | 7d | 2025-01-22 A | 2025-01-29 A | ENG-DS-SW-A-110 | 100% |
| ENG-MT-SW-TF-S-120 |  | Material Submittal for Membrane Insulation of Sewage Network | 7d | 2025-01-22 A | 2025-01-29 A | ENG-DS-SW-A-110 | 100% |
|  | MA | **Approval of Material** |  | 2025-01-30 | 2025-05-15 |  |  |
|  | 1 | **Main Line Sections** |  | 2025-01-30 | 2025-04-20 |  |  |
| ENG-MT-SW-ML-A-100 |  | Material Approval for Manholes of Sewage Network | 6d | 2025-01-30 A | 2025-04-20 A | ENG-MT-SW-ML-S-100 | 100% |
| ENG-MT-SW-ML-A-110 |  | Material Approval for Main Line Pipes of Sewage Network | 10d | 2025-01-30 A | 2025-02-10 A | ENG-MT-SW-ML-S-110 | 100% |
|  | 3 | **Testing and Finishes** |  | 2025-03-05 | 2025-05-15 |  |  |
| ENG-MT-SW-TF-A-100 |  | Material Approval for Manhole Covers of Sewage Network | 10d | 2025-03-05 A | 2025-05-15 A | ENG-MT-SW-TF-S-100 | 100% |
| ENG-MT-SW-TF-A-120 |  | Material Approval for Membrane Insulation of Sewage Network | 10d | 2025-03-06 A | 2025-03-15 A | ENG-MT-SW-TF-S-120 | 100% |
|  | 9 | **Storm Drainage Network** |  | 2025-01-22 | 2025-02-20 |  |  |
|  | MS | **Submission of Material** |  | 2025-01-22 | 2025-01-29 |  |  |
|  | 1 | **Main Line Sections** |  | 2025-01-22 | 2025-01-29 |  |  |
| ENG-MT-SD-ML-S-100 |  | Material Submittal for Manholes of Storm Drainage Network | 7d | 2025-01-22 A | 2025-01-29 A | ENG-DS-SD-A-110 | 100% |
| ENG-MT-SD-ML-S-110 |  | Material Submittal for Main Line Pipes of Storm Drainage Network | 7d | 2025-01-22 A | 2025-01-29 A | ENG-DS-SD-A-110 | 100% |
|  | 2 | **Catch Basin Sections** |  | 2025-01-22 | 2025-01-29 |  |  |
| ENG-MT-SD-CB-S-100 |  | Material Submittal for Catch Basins of Storm Drainage Network | 7d | 2025-01-22 A | 2025-01-29 A | ENG-DS-SD-A-110 | 100% |
| ENG-MT-SD-CB-S-110 |  | Material Submittal for Catch Basin Pipes of Storm Drainage Network | 7d | 2025-01-22 A | 2025-01-29 A | ENG-DS-SD-A-110 | 100% |
|  | 3 | **Testing and Finishes** |  | 2025-01-22 | 2025-01-29 |  |  |
| ENG-MT-SD-TF-S-100 |  | Material Submittal for Manhole Covers of Storm Drainage Network | 7d | 2025-01-22 A | 2025-01-29 A | ENG-DS-SD-A-110 | 100% |
| ENG-MT-SD-TF-S-110 |  | Material Submittal for Catch Basin Covers of Storm Drainage Network | 7d | 2025-01-22 A | 2025-01-29 A | ENG-DS-SD-A-110 | 100% |
| ENG-MT-SD-TF-S-120 |  | Material Submittal for Epoxy Insulation of Storm Drainage Network | 7d | 2025-01-22 A | 2025-01-29 A | ENG-DS-SD-A-110 | 100% |
|  | MA | **Approval of Material** |  | 2025-01-30 | 2025-02-20 |  |  |
|  | 1 | **Main Line Sections** |  | 2025-01-30 | 2025-02-10 |  |  |
| ENG-MT-SD-ML-A-100 |  | Material Approval for Manholes of Storm Drainage Network | 10d | 2025-01-30 A | 2025-02-10 A | ENG-MT-SD-ML-S-100 | 100% |
| ENG-MT-SD-ML-A-110 |  | Material Approval for Main Line Pipes of Storm Drainage Network | 10d | 2025-01-30 A | 2025-02-10 A | ENG-MT-SD-ML-S-110 | 100% |
|  | 2 | **Catch Basin Sections** |  | 2025-01-30 | 2025-02-13 |  |  |
| ENG-MT-SD-CB-A-100 |  | Material Approval for Catch Basins of Storm Drainage Network | 10d | 2025-01-30 A | 2025-02-12 A | ENG-MT-SD-CB-S-100 | 100% |
| ENG-MT-SD-CB-A-110 |  | Material Approval for Catch Basin Pipes of Storm Drainage Network | 10d | 2025-01-30 A | 2025-02-13 A | ENG-MT-SD-CB-S-110 | 100% |
|  | 3 | **Testing and Finishes** |  | 2025-01-30 | 2025-02-20 |  |  |
| ENG-MT-SD-TF-A-100 |  | Material Approval for Manhole Covers of Storm Drainage Network | 10d | 2025-01-30 A | 2025-02-20 A | ENG-MT-SD-TF-S-100 | 100% |
| ENG-MT-SD-TF-A-110 |  | Material Approval for Catch Basin Covers of Storm Drainage Network | 10d | 2025-01-30 A | 2025-02-20 A | ENG-MT-SD-TF-S-110 | 100% |
| ENG-MT-SD-TF-A-120 |  | Material Approval for Epoxy Insulation of Storm Drainage Network | 10d | 2025-01-30 A | 2025-02-20 A | ENG-MT-SD-TF-S-120 | 100% |
|  | 3 | **Potable Water Network** |  | 2025-01-22 | 2025-05-14 |  |  |
|  | MS | **Submission of Material** |  | 2025-01-22 | 2025-05-13 |  |  |
|  | 1 | **Main Line Sections** |  | 2025-01-22 | 2025-05-13 |  |  |
| ENG-MT-PW-ML-S-100 |  | Material Submittal for Main Line Pipes of Potable Water Network | 7d | 2025-01-22 A | 2025-01-29 A | ENG-DS-PW-A-110 | 100% |
| ENG-MT-PW-ML-S-110 |  | Material Submittal for Main Line Valves of Potable Water Network | 7d | 2025-01-22 A | 2025-05-13 A | ENG-DS-PW-A-110 | 100% |

| ID | WBS | Task | Duration | Start | Finish | Predecessors | Complete |
| --- | --- | --- | --- | --- | --- | --- | --- |
|  | 3 | **Fire Hydrant** |  | 2025-01-22 | 2025-02-15 |  |  |
| ENG-MT-PW-FH-S-100 |  | Material Submittal for Fire Hydrant of Potable Water Network | 7d | 2025-01-22 A | 2025-02-15 A | ENG-DS-PW-A-110 | 100% |
|  | 4 | **Testing and Finishes** |  | 2025-01-22 | 2025-02-10 |  |  |
| ENG-MT-PW-TF-S-100 |  | Material Submittal for Surface Box of Potable Water Network | 7d | 2025-01-22 A | 2025-02-10 A | ENG-DS-PW-A-110 | 100% |
|  | MA | **Approval of Material** |  | 2025-01-30 | 2025-05-14 |  |  |
|  | 1 | **Main Line Sections** |  | 2025-01-30 | 2025-05-14 |  |  |
| ENG-MT-PW-ML-A-100 |  | Material Approval for Main Line Pipes of Potable Water Network | 10d | 2025-01-30 A | 2025-02-10 A | ENG-MT-PW-ML-S-100 | 100% |
| ENG-MT-PW-ML-A-110 |  | Material Approval for Valves of Potable Water Network | 10d | 2025-01-30 A | 2025-05-14 A | ENG-MT-PW-ML-S-110 | 100% |
|  | 3 | **Fire Hydrant** |  | 2025-02-16 | 2025-03-14 |  |  |
| ENG-MT-PW-FH-A-100 |  | Material Approval for Fire Hydrants of Potable Water Network | 10d | 2025-02-16 A | 2025-03-14 A | ENG-MT-PW-FH-S-100 | 100% |
|  | 4 | **Testing and Finishes** |  | 2025-02-11 | 2025-03-14 |  |  |
| ENG-MT-PW-TF-A-100 |  | Material Approval for Surface Box of Potable Water Network | 0d | 2025-02-11 A | 2025-03-14 A | ENG-MT-PW-TF-S-100 | 100% |
|  | 4 | **Irrigation Network** |  | 2025-01-22 | 2025-05-14 |  |  |
|  | MS | **Submission of Material** |  | 2025-01-22 | 2025-01-29 |  |  |
|  | 1 | **Main Line Pipes** |  | 2025-01-22 | 2025-01-29 |  |  |
| ENG-MT-IR-ML-S-100 |  | Material Submittal for Main Line Pipes of Irrigation Network | 7d | 2025-01-22 A | 2025-01-29 A | ENG-DS-IR-A-110 | 100% |
| ENG-MT-IR-ML-S-110 |  | Material Submittal for Main Line Valves of Irrigation Network | 7d | 2025-01-22 A | 2025-01-29 A | ENG-DS-IR-A-110 | 100% |
|  | MA | **Approval of Material** |  | 2025-01-30 | 2025-05-14 |  |  |
|  | 1 | **Main Line Pipes** |  | 2025-01-30 | 2025-05-14 |  |  |
| ENG-MT-IR-ML-A-100 |  | Material Approval for Main Line Pipes of Irrigation Network | 10d | 2025-01-30 A | 2025-02-10 A | ENG-MT-IR-ML-S-100 | 100% |
| ENG-MT-IR-ML-A-110 |  | Material Approval for Valves of Irrigation Network | 10d | 2025-01-30 A | 2025-05-14 A | ENG-MT-IR-ML-S-110 | 100% |
|  | 5 | **Medium Voltage Network** |  | 2025-01-22 | 2025-05-13 |  |  |
|  | MS | **Submission of Material** |  | 2025-01-22 | 2025-01-29 |  |  |
|  | 1 | **Cabling Works** |  | 2025-01-22 | 2025-01-29 |  |  |
| ENG-MT-MV-ML-S-100 |  | Material Submittal for Medium Voltage Cables of Medium Voltage Network | 7d | 2025-01-22 A | 2025-01-29 A | ENG-DS-MV-A-110 | 100% |
|  | 2 | **RMU Concrete Works** |  | 2025-01-22 | 2025-01-29 |  |  |
| ENG-MT-MV-SS-S-100 |  | Material Submittal for RMU Concrete Foundations of Medium Voltage Network | 7d | 2025-01-22 A | 2025-01-29 A | ENG-DS-MV-A-110 | 100% |
|  | 3 | **Termination and Testing Works** |  | 2025-01-22 | 2025-01-29 |  |  |
| ENG-MT-MV-TF-S-100 |  | Material Submittal for Termination Kits of Medium Voltage Network | 7d | 2025-01-22 A | 2025-01-29 A | ENG-DS-MV-A-110 | 100% |
|  | MA | **Approval of Material** |  | 2025-01-30 | 2025-05-13 |  |  |
|  | 1 | **Cabling Works** |  | 2025-01-30 | 2025-05-13 |  |  |
| ENG-MT-MV-ML-A-100 |  | Material Approval for Medium Voltage Cables of Medium Voltage Network | 10d | 2025-01-30 A | 2025-05-13 A | ENG-MT-MV-ML-S-100 | 100% |
|  | 2 | **RMU Concrete Works** |  | 2025-01-30 | 2025-02-20 |  |  |
| ENG-MT-MV-SS-A-100 |  | Material Approval for RMU Concrete Foundations of Medium Voltage Network | 10d | 2025-01-30 A | 2025-02-20 A | ENG-MT-MV-SS-S-100 | 100% |
|  | 3 | **Termination and Testing Works** |  | 2025-01-30 | 2025-02-10 |  |  |
| ENG-MT-MV-TF-A-100 |  | Material Approval for Termination and Joints Kits of Medium Voltage Network | 10d | 2025-01-30 A | 2025-02-10 A | ENG-MT-MV-TF-S-100 | 100% |
|  | 7 | **Street Lighting Network** |  | 2025-01-22 | 2025-05-24 |  |  |
|  | MS | **Submission of Material** |  | 2025-01-22 | 2025-01-29 |  |  |
|  | 1 | **Cabling Works** |  | 2025-01-22 | 2025-01-29 |  |  |
| ENG-MT-SL-ML-S-100 |  | Material Submittal for Lighting Cables of Street Lighting Network | 7d | 2025-01-22 A | 2025-01-29 A | ENG-DS-SL-A-110 | 100% |
|  | 2 | **Lighting Poles Works** |  | 2025-01-22 | 2025-01-29 |  |  |
| ENG-MT-SL-S-100 |  | Material Submittal for Lighting Poles Concrete Foundations of Street Lighting Network | 7d | 2025-01-22 A | 2025-01-29 A | ENG-DS-SL-A-110 | 100% |
| ENG-MT-SL-S-110 |  | Material Submittal for Lighting Poles of Street Lighting Network | 7d | 2025-01-22 A | 2025-01-29 A | ENG-DS-SL-A-110 | 100% |
| ENG-MT-SL-S-120 |  | Material Submittal for Lighting Fixtures of Street Lighting Network | 7d | 2025-01-22 A | 2025-01-29 A | ENG-DS-SL-A-110 | 100% |
|  | 3 | **Distribution Panel Board** |  | 2025-01-22 | 2025-01-29 |  |  |
| ENG-MT-SL-DB-S-100 |  | Material Submittal for Lighting Distrubution Panel Boards of Street Lighting Network | 7d | 2025-01-22 A | 2025-01-29 A | ENG-DS-SL-A-110 | 100% |
|  | 5 | **Termination and Testing Works** |  | 2025-01-22 | 2025-01-29 |  |  |
| ENG-MT-SL-TF-S-100 |  | Material Submittal for Fuse Boxes of Street Lighting Network | 7d | 2025-01-22 A | 2025-01-29 A | ENG-DS-SL-A-110 | 100% |
| ENG-MT-SL-TF-S-110 |  | Material Submittal for Cable Lugs of Street Lighting Network | 7d | 2025-01-22 A | 2025-01-29 A | ENG-DS-SL-A-110 | 100% |
|  | 4 | **Earthing System Works** |  | 2025-01-22 | 2025-01-29 |  |  |
| ENG-MT-SL-ES-S-100 |  | Material Submittal for Lighting Earthing of Street Lighting Network | 7d | 2025-01-22 A | 2025-01-29 A | ENG-DS-SL-A-110 | 100% |
|  | MA | **Approval of Material** |  | 2025-01-30 | 2025-05-24 |  |  |
|  | 1 | **Cabling Works** |  | 2025-01-30 | 2025-05-14 |  |  |
| ENG-MT-SL-ML-A-100 |  | Material Approval for Lighting Cables of Street Lighting Network | 10d | 2025-01-30 A | 2025-05-14 A | ENG-MT-SL-ML-S-100 | 100% |
|  | 2 | **Lighting Poles Works** |  | 2025-01-30 | 2025-05-24 |  |  |
| ENG-MT-SL-A-100 |  | Material Approval for Lighting Poles Concrete Foundations of Street Lighting Network | 10d | 2025-01-30 A | 2025-05-21 A | ENG-MT-SL-S-100 | 100% |
| ENG-MT-SL-A-110 |  | Material Approval for Lighting Poles of Street Lighting Network | 10d | 2025-05-13 A | 2025-05-24 A | ENG-MT-SL-S-110 | 100% |
| ENG-MT-SL-A-120 |  | Material Approval for Lighting Fixtures of Street Lighting Network | 10d | 2025-05-13 A | 2025-05-24 A | ENG-MT-SL-S-120 | 100% |
|  | 3 | **Distribution Panel Board** |  | 2025-01-30 | 2025-02-10 |  |  |
| ENG-MT-SL-DB-A-100 |  | Material Approval for Distrubution Panel Boards of Street Lighting Network | 10d | 2025-01-30 A | 2025-02-10 A | ENG-MT-SL-DB-S-100 | 100% |
|  | 4 | **Earthing System Works** |  | 2025-01-30 | 2025-02-10 |  |  |
| ENG-MT-SL-ES-A-100 |  | Material Approval for Lighting Earthing of Street Lighting Network | 10d | 2025-01-30 A | 2025-02-10 A | ENG-MT-SL-ES-S-100 | 100% |
|  | 5 | **Termination and Testing Works** |  | 2025-01-30 | 2025-02-10 |  |  |
| ENG-MT-SL-TF-A-100 |  | Material Approval for Fuse Boxes of Street Lighting Network | 10d | 2025-01-30 A | 2025-02-10 A | ENG-MT-SL-TF-S-100 | 100% |
| ENG-MT-SL-TF-A-110 |  | Material Approval for Cable Lugs of Street Lighting Network | 10d | 2025-01-30 A | 2025-02-10 A | ENG-MT-SL-TF-S-110 | 100% |
|  | 8 | **Telecom Network** |  | 2025-01-22 | 2025-05-14 |  |  |
|  | MS | **Submission of Material** |  | 2025-01-22 | 2025-01-29 |  |  |
|  | 1 | **Ducts Works** |  | 2025-01-22 | 2025-01-29 |  |  |
| ENG-MT-TE-S-100 |  | Material Submittal for Ducts of Telecom Network | 7d | 2025-01-22 A | 2025-01-29 A | ENG-DS-TE-A-110 | 100% |
|  | 3 | **Manholes Works** |  | 2025-01-22 | 2025-01-29 |  |  |

| ID | WBS | Task | Duration | Start | Finish | Predecessors | Complete | Total float |
| --- | --- | --- | --- | --- | --- | --- | --- | --- |
| ENG-MT-TE-S-110 |  | Material Submittal for Manholes of Telecom Network | 7d | 2025-01-22 A | 2025-01-29 A | ENG-DS-TE-A-110 | 100% |  |
|  | MA | **Approval of Material** |  | 2025-01-30 | 2025-05-14 |  |  |  |
|  | 1 | **Ducts Works** |  | 2025-01-30 | 2025-02-10 |  |  |  |
| ENG-MT-TE-A-100 |  | Material Approval for Ducts of Telecom Network | 10d | 2025-01-30 A | 2025-02-10 A | ENG-MT-TE-S-100 | 100% |  |
|  | 3 | **Manholes Works** |  | 2025-01-30 | 2025-05-14 |  |  |  |
| ENG-MT-TE-A-110 |  | Material Approval for Manholes of Telecom Network | 10d | 2025-01-30 A | 2025-05-14 A | ENG-MT-TE-S-110 | 100% |  |
|  | 1 | **Superstructure Works** |  | 2025-01-22 | 2025-05-11 |  |  |  |
|  | SL | **Sewage Pump Stations ( PS 06 )** |  | 2025-01-22 | 2025-05-11 |  |  |  |
|  | 1 | **Submission of Material** |  | 2025-01-22 | 2025-05-11 |  |  |  |
| ENG-MT-SPS-CV-S-100 |  | Material Submittal for Civil Works for Sewage Pump Stations | 7d | 2025-01-22 A | 2025-05-11 A | ENG-DS-SW-A-110 | 100% |  |
|  | 2 | **Approval of Material** |  | 2025-01-30 | 2025-05-11 |  |  |  |
| ENG-MT-SPS-CV-A-110 |  | Material Approval for Civil Works for Sewage Pump Stations | 10d | 2025-01-30 A | 2025-05-11 A | ENG-MT-SPS-CV-S-100 | 100% |  |
|  | TE | **Storm Drainage Ponds ( PO-J1 , PO-J2 )** |  | 2025-01-22 | 2025-03-18 |  |  |  |
|  | 1 | **Submission of Material** |  | 2025-01-22 | 2025-01-29 |  |  |  |
| ENG-MT-DPO-CV-S-100 |  | Material Submittal for Civil Works for Storm Drainage Ponds | 7d | 2025-01-22 A | 2025-01-29 A | ENG-DS-SD-A-110 | 100% |  |
|  | 2 | **Approval of Material** |  | 2025-01-30 | 2025-03-18 |  |  |  |
| ENG-MT-DPO-CV-A-110 |  | Material Approval for Civil Works for Storm Drainage Ponds | 10d | 2025-01-30 A | 2025-03-18 A | ENG-MT-DPO-CV-S-100 | 100% |  |
|  | 1 | **Long Lead Time Items** |  | 2025-02-01 | 2025-06-02 |  |  |  |
|  | 1 | **Infrastructure Networks** |  | 2025-02-01 | 2025-05-23 |  |  |  |
|  | 1 | **RMU Works of Medium Voltage Network** |  | 2025-02-01 | 2025-05-23 |  |  |  |
|  | MS | **Submission of Material** |  | 2025-02-01 | 2025-02-12 |  |  |  |
| ENG-MT-MV-S-10 |  | Material Submittal for RMU of Medium Voltage Network | 7d | 2025-02-01 A | 2025-02-12 A | ENG-DS-MV-A-110 | 100% |  |
|  | MA | **Approval of Material** |  | 2025-05-01 | 2025-05-23 |  |  |  |
| ENG-MT-MV-A-10 |  | Material Approval for RMU of Medium Voltage Network | 0d | 2025-05-01 A | 2025-05-23 A | ENG-MT-MV-S-10 | 100% |  |
|  | 2 | **Superstructure Works** |  | 2025-05-11 | 2025-06-02 |  |  |  |
|  | SL | **Sewage Pump Stations ( PS 06 )** |  | 2025-05-11 | 2025-06-02 |  |  |  |
|  | 1 | **Submission of Material** |  | 2025-05-11 | 2025-05-19 |  |  |  |
| ENG-MT-SPS-MC-S-100 |  | Material Submittal for Electromechanical Works for Sewage Pump Stations | 7d | 2025-05-11 A | 2025-05-19 A | ENG-DS-SW-A-110 | 100% |  |
|  | 2 | **Approval of Material** |  | 2025-05-20 | 2025-06-02 |  |  |  |
| ENG-MT-SPS-MC-A-110 |  | Material Approval for Electromechanical Works for Sewage Pump Stations | 10d | 2025-05-20 A | 2025-06-02 A | ENG-MT-SPS-MC-S-100 | 100% |  |
|  | PROC | **Procurement Cycle** |  | 2025-02-11 | 2027-07-22 |  |  |  |
|  | NLL | **Short Lead Time Items** |  | 2025-02-11 | 2027-07-22 |  |  |  |
|  | INF | **Infrastructure Networks** |  | 2025-02-11 | 2027-07-22 |  |  |  |
|  | RD | **Road Works** |  | 2025-02-11 | 2027-07-22 |  |  |  |
|  | PO | **Issuance of Purchase Orders** |  | 2025-02-11 | 2025-06-12 |  |  |  |
|  | 1 | **Road Works** |  | 2025-02-11 | 2025-02-25 |  |  |  |
| PRO-RD-PO-100 |  | Issuance of Purchase Order for Subgrade of Road Works | 12d | 2025-02-11 A | 2025-02-25 A | ENG-MT-RD-A-100, ENG-SH-RD-A-100, ENG-MS-RD-A-10 | 100% |  |
| PRO-RD-PO-110 |  | Issuance of Purchase Order for Aggregate Base Course of Road Works | 12d | 2025-02-11 A | 2025-02-25 A | ENG-MT-RD-A-110, ENG-SH-RD-A-100, ENG-MS-RD-A-10 | 100% |  |
| PRO-RD-PO-120 |  | Issuance of Purchase Order for Prime Coat of Road Works | 12d | 2025-02-11 A | 2025-02-25 A | ENG-MT-RD-A-120, ENG-SH-RD-A-100, ENG-MS-RD-A-10 | 100% |  |
| PRO-RD-PO-130 |  | Issuance of Purchase Order for Bituminous Base & Wearing Courses of Road Works | 12d | 2025-02-11 A | 2025-02-25 A | ENG-MT-RD-A-130, ENG-SH-RD-A-100, ENG-MS-RD-A-10 | 100% |  |
|  | 2 | **Pavement Works** |  | 2025-02-17 | 2025-03-04 |  |  |  |
| PRO-RD-PO-140 |  | Issuance of Purchase Order for Interlock Tiles of Landscaping | 12d | 2025-02-17 A | 2025-03-04 A | ENG-MT-RD-A-140, ENG-SH-HS-A-110, ENG-MS-HS-A-10 | 100% |  |
| PRO-RD-PO-150 |  | Issuance of Purchase Order for Curbstones of Landscaping | 12d | 2025-02-17 A | 2025-03-04 A | ENG-MT-RD-A-150, ENG-SH-HS-A-110, ENG-MS-HS-A-10 | 100% |  |
|  | 3 | **Traffic Signs Boards and Roads Marking** |  | 2025-06-01 | 2025-06-12 |  |  |  |
| PRO-RD-PO-160 |  | Issuance of Purchase Order for Traffic Signs Boards of Road Works | 12d | 2025-06-01 A | 2025-06-12 A | ENG-MT-TS-A-100, ENG-SH-TSB-A-100, ENG-MS-TSB-A-10 | 100% |  |
| PRO-RD-PO-170 |  | Issuance of Purchase Order for Road Markings of Road Works | 12d | 2025-06-01 A | 2025-06-12 A | ENG-MT-TS-A-110, ENG-SH-MRK-A-110, ENG-MS-MRK-A-10 | 100% |  |
|  | MF | **Manufacturing of Material** |  | 2025-04-01 | 2025-06-01 |  |  |  |
|  | 1 | **Road Works** |  | 2025-04-01 | 2025-06-01 |  |  |  |
| PRO-RD-MF-100 |  | Manufacturing of Subgrade for Road Works | 90d | 2025-04-01 A | 2025-05-29 A | PRO-RD-PO-100 | 100% |  |
| PRO-RD-MF-110 |  | Manufacturing of Aggregate Base Course for Road Works | 90d | 2025-05-11 A | 2025-06-01 A | PRO-RD-PO-110 | 100% |  |
| PRO-RD-MF-120 |  | Manufacturing of Prime Coat for Road Works | 110d | 2025-05-12 A | 2025-05-22 A | PRO-RD-PO-120 | 100% |  |
| PRO-RD-MF-130 |  | Manufacturing of Bituminous Base & Wearing Courses for Road Works | 110d | 2025-05-28 A | 2025-06-01 A | PRO-RD-PO-130 | 100% |  |
|  | 2 | **Pavement Works** |  | 2025-05-04 | 2025-06-01 |  |  |  |
| PRO-RD-MF-140 |  | Manufacturing of Interlock Tiles for Landscaping | 110d | 2025-05-04 A | 2025-05-26 A | PRO-RD-PO-140 | 100% |  |
| PRO-RD-MF-150 |  | Manufacturing of Curbstones for Landscaping | 110d | 2025-05-20 A | 2025-06-01 A | PRO-RD-PO-150 | 100% |  |
|  | 3 | **Traffic Signs Boards and Roads Marking** |  | 2025-05-12 | 2025-05-29 |  |  |  |
| PRO-RD-MF-170 |  | Manufacturing of Road Markings for Road Works | 130d | 2025-05-12 A | 2025-05-29 A | PRO-RD-PO-170 | 100% |  |
| PRO-RD-MF-160 |  | Manufacturing of Traffic Signs Boards for Road Works | 130d | 2025-05-14 A | 2025-05-29 A | PRO-RD-PO-160 | 100% |  |
|  | 1DL | **1st Material Delivery & Site Inspection** |  | 2025-05-22 | 2026-10-12 |  |  |  |
|  | 1 | **Road Works** |  | 2025-05-22 | 2025-07-05 |  |  |  |
| PRO-RD-1DL-120 |  | 1ST Material Delivery for Prime Coat of Road Works | 6d | 2025-05-22 A | 2025-05-30 A | PRO-RD-MF-120 | 100% |  |
| PRO-RD-1DL-100 |  | 1ST Material Delivery for Subgrade of Road Works | 6d | 2025-05-30 A | 2025-06-08 A | PRO-RD-MF-100 | 100% |  |
| PRO-RD-1DL-130 |  | 1ST Material Delivery for Bituminous Base & Wearing Courses of Road Works | 6d | 2025-06-01 A | 2025-06-15 A | PRO-RD-MF-130 | 100% |  |
| PRO-RD-1DL-110 |  | 1ST Material Delivery for Aggregate Base Course of Road Works | 6d | 2025-06-02 A | 2025-07-05 A | PRO-RD-MF-110 | 100% |  |
|  | 2 | **Pavement Works** |  | 2026-10-06 | 2026-10-12 |  |  |  |
| PRO-RD-1DL-140 |  | 1ST Material Delivery for Interlock Tiles of Landscaping | 6d | 2026-10-06 | 2026-10-12 | PRO-RD-MF-140 |  | -211d |
| PRO-RD-1DL-150 |  | 1ST Material Delivery for Curbstones of Landscaping | 6d | 2026-10-06 | 2026-10-12 | PRO-RD-MF-150 |  | -211d |
|  | 3 | **Traffic Signs Boards and Roads Marking** |  | 2026-10-06 | 2026-10-12 |  |  |  |
| PRO-RD-1DL-160 |  | 1ST Material Delivery for Traffic Signs Boards of Road Works | 6d | 2026-10-06 | 2026-10-12 | PRO-RD-MF-160 |  | -211d |
| PRO-RD-1DL-170 |  | 1ST Material Delivery for Road Markings of Road Works | 6d | 2026-10-06 | 2026-10-12 | PRO-RD-MF-170 |  | -185d |

| ID | WBS | Task | Duration | Start | Finish | Predecessors | Complete | Total float |
| --- | --- | --- | --- | --- | --- | --- | --- | --- |
|  | DL | **Material Delivery & Site Inspection** |  | 2025-06-09 | 2027-07-22 |  |  |  |
|  | 1 | **Road 18 Local 1 ( 479 LM )** |  | 2025-06-10 | 2026-12-12 |  |  |  |
|  | 1 | **Pre-Bituminous Construction** |  | 2025-06-10 | 2025-08-11 |  |  |  |
| PRO-R18-RD-DL-220 |  | Material Delivery & Site Inspection for Subgrade of Road Works | 26d | 2025-06-10 A | 2025-07-07 A | PRO-RD-1DL-100 | 100% |  |
| PRO-R18-RD-DL-230 |  | Material Delivery & Site Inspection for Aggregate Base Course of Road Works | 26d | 2025-08-01 A | 2025-08-11 A | PRO-RD-1DL-110, PRO-R18-RD-DL-220 | 100% |  |
|  | 2 | **Pavement Works** |  | 2026-08-03 | 2026-08-20 |  |  |  |
| PRO-R18-RD-DL-180 |  | Material Delivery & Site Inspection of Interlock Tiles for Landscaping | 16d | 2026-08-03 A | 2026-08-20 A | PRO-RD-1DL-140, PRO-R18-RD-DL-230 | 100% |  |
| PRO-R18-RD-DL-190 |  | Material Delivery & Site Inspection of Curbstones for Landscaping | 26d | 2026-08-03 A | 2026-08-20 A | PRO-RD-1DL-150, PRO-R18-RD-DL-180 | 100% |  |
|  | 4 | **Bituminous Construction** |  | 2025-09-20 | 2025-10-11 |  |  |  |
| PRO-R18-RD-DL-240 |  | Material Delivery & Site Inspection for Prime Coat of Road Works | 26d | 2025-09-20 A | 2025-09-21 A | PRO-RD-1DL-120, PRO-R18-RD-DL-190 | 100% |  |
| PRO-R18-RD-DL-250 |  | Material Delivery & Site Inspection for Bituminous Base & Wearing Courses of Road Works | 26d | 2025-10-09 A | 2025-10-11 A | PRO-RD-1DL-130, PRO-R18-RD-DL-240 | 100% |  |
|  | 3 | **Traffic Signs Boards and Roads Marking** |  | 2026-10-13 | 2026-12-12 |  |  |  |
| PRO-R18-RD-DL-200 |  | Material Delivery & Site Inspection of Traffic Signs Boards For Road Works | 26d | 2026-10-13 | 2026-11-11 | PRO-R18-RD-DL-250 FF, PRO-RD-1DL-160, PRO-R18-RD-DL-250 |  | -211d |
| PRO-R18-RD-DL-210 |  | Material Delivery & Site Inspection of Road Markings For Road Works | 26d | 2026-11-12 | 2026-12-12 | PRO-R18-RD-DL-200 SS, PRO-RD-1DL-170, PRO-R18-RD-DL-200 |  | -211d |
|  | 9 | **Road 17 Local 1 ( 500 LM )** |  | 2025-07-08 | 2027-01-11 |  |  |  |
|  | 1 | **Pre-Bituminous Construction** |  | 2025-07-08 | 2025-09-04 |  |  |  |
| PRO-R17-RD-DL-120 |  | Material Delivery & Site Inspection for Subgrade of Road Works | 26d | 2025-07-08 A | 2025-07-13 A | PRO-RD-1DL-100, PRO-R18-RD-DL-220 | 100% |  |
| PRO-R17-RD-DL-130 |  | Material Delivery & Site Inspection for Aggregate Base Course of Road Works | 26d | 2025-09-01 A | 2025-09-04 A | PRO-RD-1DL-110, PRO-R18-RD-DL-230, PRO-R17-RD-DL-120 | 100% |  |
|  | 2 | **Pavement Works** |  | 2026-08-22 | 2026-08-29 |  |  |  |
| PRO-R17-RD-DL-100 |  | Material Delivery & Site Inspection of Interlock Tiles for Landscaping | 26d | 2026-08-22 A | 2026-08-29 A | PRO-RD-1DL-140, PRO-R18-RD-DL-180, PRO-R17-RD-DL-130 | 100% |  |
| PRO-R17-RD-DL-110 |  | Material Delivery & Site Inspection of Curbstones for Landscaping | 26d | 2026-08-22 A | 2026-08-29 A | PRO-RD-1DL-150, PRO-R18-RD-DL-190, PRO-R17-RD-DL-100 | 100% |  |
|  | 4 | **Bituminous Construction** |  | 2025-09-23 | 2025-10-11 |  |  |  |
| PRO-R17-RD-DL-160 |  | Material Delivery & Site Inspection for Prime Coat of Road Works | 26d | 2025-09-23 A | 2025-09-25 A | PRO-RD-1DL-120, PRO-R18-RD-DL-240, PRO-R17-RD-DL-110 | 100% |  |
| PRO-R17-RD-DL-170 |  | Material Delivery & Site Inspection for Bituminous Base & Wearing Courses of Road Works | 26d | 2025-10-09 A | 2025-10-11 A | PRO-RD-1DL-130, PRO-R18-RD-DL-250, PRO-R17-RD-DL-160 | 100% |  |
|  | 3 | **Traffic Signs Boards and Roads Marking** |  | 2026-11-12 | 2027-01-11 |  |  |  |
| PRO-R17-RD-DL-140 |  | Material Delivery & Site Inspection of Traffic Signs Boards For Road Works | 26d | 2026-11-12 | 2026-12-12 | PRO-RD-1DL-160, PRO-R17-RD-DL-170 FF, PRO-R18-RD-DL-200, PRO-R17-RD-DL-170 |  | -211d |
| PRO-R17-RD-DL-150 |  | Material Delivery & Site Inspection of Road Markings For Road Works | 26d | 2026-12-13 | 2027-01-11 | PRO-RD-1DL-170, PRO-R17-RD-DL-140 SS, PRO-R18-RD-DL-210, PRO-R17-RD-DL-140 |  | -211d |
|  | 8 | **Road 16 Local 1 ( 527 LM )** |  | 2025-07-28 | 2027-02-10 |  |  |  |
|  | 1 | **Pre-Bituminous Construction** |  | 2025-07-28 | 2025-10-12 |  |  |  |
| PRO-R16-RD-DL-100 |  | Material Delivery & Site Inspection for Subgrade of Road Works | 26d | 2025-07-28 A | 2025-08-02 A | PRO-RD-1DL-100, PRO-R17-RD-DL-120 | 100% |  |
| PRO-R16-RD-DL-110 |  | Material Delivery & Site Inspection for Aggregate Base Course of Road Works | 26d | 2025-10-11 A | 2025-10-12 A | PRO-RD-1DL-110, PRO-R17-RD-DL-130 | 100% |  |
|  | 2 | **Pavement Works** |  | 2026-08-24 | 2026-08-27 |  |  |  |
| PRO-R16-RD-DL-120 |  | Material Delivery & Site Inspection of Interlock Tiles for Landscaping | 26d | 2026-08-24 A | 2026-08-27 A | PRO-RD-1DL-140, PRO-R17-RD-DL-100 | 100% |  |
| PRO-R16-RD-DL-130 |  | Material Delivery & Site Inspection of Curbstones for Landscaping | 4d | 2026-08-24 A | 2026-08-27 A | PRO-RD-1DL-150, PRO-R16-RD-DL-110 FF, PRO-R17-RD-DL-110 | 100% |  |
|  | 4 | **Bituminous Construction** |  | 2025-10-12 | 2025-12-15 |  |  |  |
| PRO-R16-RD-DL-160 |  | Material Delivery & Site Inspection for Prime Coat of Road Works | 26d | 2025-10-12 A | 2025-10-12 A | PRO-RD-1DL-120, PRO-R17-RD-DL-160 | 100% |  |
| PRO-R16-RD-DL-170 |  | Material Delivery & Site Inspection for Bituminous Base & Wearing Courses of Road Works | 26d | 2025-12-13 A | 2025-12-15 A | PRO-RD-1DL-130, PRO-R16-RD-DL-120, PRO-R17-RD-DL-170 | 100% |  |
|  | 3 | **Traffic Signs Boards and Roads Marking** |  | 2026-12-13 | 2027-02-10 |  |  |  |
| PRO-R16-RD-DL-140 |  | Material Delivery & Site Inspection of Traffic Signs Boards For Road Works | 26d | 2026-12-13 | 2027-01-11 | PRO-RD-1DL-160, PRO-R16-RD-DL-170 FF, PRO-R17-RD-DL-140 |  | -185d |
| PRO-R16-RD-DL-150 |  | Material Delivery & Site Inspection of Road Markings For Road Works | 26d | 2027-01-12 | 2027-02-10 | PRO-RD-1DL-170, PRO-R16-RD-DL-140 SS, PRO-R17-RD-DL-150 |  | -211d |
|  | 7 | **Road 15 Local 1 ( 556 LM )** |  | 2025-06-09 | 2027-03-17 |  |  |  |
|  | 1 | **Pre-Bituminous Construction** |  | 2025-06-09 | 2025-10-13 |  |  |  |
| PRO-R15-RD-DL-100 |  | Material Delivery & Site Inspection for Subgrade of Road Works | 26d | 2025-06-09 A | 2025-07-13 A | PRO-RD-1DL-100 | 100% |  |
| PRO-R15-RD-DL-110 |  | Material Delivery & Site Inspection for Aggregate Base Course of Road Works | 26d | 2025-10-12 A | 2025-10-13 A | PRO-RD-1DL-110, PRO-R16-RD-DL-110 | 100% |  |
|  | 2 | **Pavement Works** |  | 2026-05-16 | 2026-06-01 |  |  |  |
| PRO-R15-RD-DL-130 |  | Material Delivery & Site Inspection of Curbstones for Landscaping | 26d | 2026-05-16 A | 2026-06-01 A | PRO-RD-1DL-150, PRO-R15-RD-DL-110 FF, PRO-R16-RD-DL-130 | 100% |  |
| PRO-R15-RD-DL-120 |  | Material Delivery & Site Inspection of Interlock Tiles for Landscaping | 26d | 2026-05-20 A | 2026-06-01 A | PRO-RD-1DL-140, PRO-R16-RD-DL-120 | 100% |  |
|  | 4 | **Bituminous Construction** |  | 2026-03-01 | 2026-03-08 |  |  |  |
| PRO-R15-RD-DL-160 |  | Material Delivery & Site Inspection for Prime Coat of Road Works | 26d | 2026-03-01 A | 2026-03-08 A | PRO-RD-1DL-120, PRO-R16-RD-DL-160 | 100% |  |
| PRO-R15-RD-DL-170 |  | Material Delivery & Site Inspection for Bituminous Base & Wearing Courses of Road Works | 26d | 2026-03-01 A | 2026-03-08 A | PRO-RD-1DL-130, PRO-R15-RD-DL-120, PRO-R16-RD-DL-170 | 100% |  |
|  | 3 | **Traffic Signs Boards and Roads Marking** |  | 2027-01-12 | 2027-03-17 |  |  |  |
| PRO-R15-RD-DL-140 |  | Material Delivery & Site Inspection of Traffic Signs Boards For Road Works | 26d | 2027-01-12 | 2027-02-10 | PRO-RD-1DL-160, PRO-R15-RD-DL-170 FF, PRO-R16-RD-DL-140 |  | -185d |
| PRO-R15-RD-DL-150 |  | Material Delivery & Site Inspection of Road Markings For Road Works | 26d | 2027-02-11 | 2027-03-17 | PRO-RD-1DL-170, PRO-R15-RD-DL-140 SS, PRO-R16-RD-DL-150 |  | -211d |
|  | 4 | **Road 10 Local 2 ( 2352 LM )** |  | 2025-09-20 | 2027-04-17 |  |  |  |
|  | 1 | **Pre-Bituminous Construction** |  | 2025-09-20 | 2025-09-27 |  |  |  |
| PRO-R10-RD-DL-110 |  | Material Delivery & Site Inspection for Aggregate Base Course of Road Works | 26d | 2025-09-20 A | 2025-09-24 A | PRO-RD-1DL-110, PRO-R15-RD-DL-110 | 100% |  |
| PRO-R10-RD-DL-100 |  | Material Delivery & Site Inspection for Subgrade of Road Works | 26d | 2025-09-24 A | 2025-09-27 A | PRO-RD-1DL-100, PRO-R15-RD-DL-100 | 100% |  |
|  | 2 | **Pavement Works** |  | 2026-02-17 | 2026-03-11 |  |  |  |
| PRO-R10-RD-DL-120 |  | Material Delivery & Site Inspection of Interlock Tiles for Landscaping | 26d | 2026-02-17 A | 2026-03-11 A | PRO-RD-1DL-140, PRO-R15-RD-DL-120 | 100% |  |
| PRO-R10-RD-DL-130 |  | Material Delivery & Site Inspection of Curbstones for Landscaping | 26d | 2026-02-17 A | 2026-03-11 A | PRO-RD-1DL-150, PRO-R10-RD-DL-110 FF, PRO-R15-RD-DL-130 | 100% |  |
|  | 4 | **Bituminous Construction** |  | 2026-10-13 | 2026-11-11 |  |  |  |
| PRO-R10-RD-DL-160 |  | Material Delivery & Site Inspection for Prime Coat of Road Works | 26d | 2026-10-13 | 2026-11-11 | PRO-RD-1DL-120, PRO-R15-RD-DL-160 |  | -48d |
| PRO-R10-RD-DL-170 |  | Material Delivery & Site Inspection for Bituminous Base & Wearing Courses of Road Works | 26d | 2026-10-13 | 2026-11-11 | PRO-RD-1DL-130, PRO-R10-RD-DL-120, PRO-R15-RD-DL-170 |  | -81d |
|  | 3 | **Traffic Signs Boards and Roads Marking** |  | 2027-02-11 | 2027-04-17 |  |  |  |
| PRO-R10-RD-DL-140 |  | Material Delivery & Site Inspection of Traffic Signs Boards For Road Works | 26d | 2027-02-11 | 2027-03-17 | PRO-RD-1DL-160, PRO-R10-RD-DL-170 FF, PRO-R15-RD-DL-140 |  | -185d |
| PRO-R10-RD-DL-150 |  | Material Delivery & Site Inspection of Road Markings For Road Works | 26d | 2027-03-18 | 2027-04-17 | PRO-RD-1DL-170, PRO-R10-RD-DL-140 SS, PRO-R15-RD-DL-150 |  | -211d |
|  | 6 | **Road 14 Local 1 ( 584 LM )** |  | 2025-09-25 | 2027-05-23 |  |  |  |
|  | 1 | **Pre-Bituminous Construction** |  | 2025-09-25 | 2025-09-29 |  |  |  |
| PRO-R14-RD-DL-100 |  | Material Delivery & Site Inspection for Subgrade of Road Works | 26d | 2025-09-25 A | 2025-09-29 A | PRO-RD-1DL-100, PRO-R10-RD-DL-100 | 100% |  |
| PRO-R14-RD-DL-110 |  | Material Delivery & Site Inspection for Aggregate Base Course of Road Works | 26d | 2025-09-25 A | 2025-09-28 A | PRO-RD-1DL-110, PRO-R10-RD-DL-110 | 100% |  |

| ID | WBS | Task | Duration | Start | Finish | Predecessors | Complete | Total float |
| --- | --- | --- | --- | --- | --- | --- | --- | --- |
|  | 2 | **Pavement Works** |  | 2026-08-23 | 2026-08-29 |  |  |  |
| PRO-R14-RD-DL-120 |  | Material Delivery & Site Inspection of Interlock Tiles for Landscaping | 26d | 2026-08-23 A | 2026-08-29 A | PRO-RD-1DL-140, PRO-R10-RD-DL-120 | 100% |  |
| PRO-R14-RD-DL-130 |  | Material Delivery & Site Inspection of Curbstones for Landscaping | 26d | 2026-08-23 A | 2026-08-29 A | PRO-RD-1DL-150, PRO-R14-RD-DL-110 FF, PRO-R10-RD-DL-130 | 100% |  |
|  | 4 | **Bituminous Construction** |  | 2026-08-23 | 2026-08-29 |  |  |  |
| PRO-R14-RD-DL-160 |  | Material Delivery & Site Inspection for Prime Coat of Road Works | 26d | 2026-08-23 A | 2026-08-29 A | PRO-RD-1DL-120, PRO-R10-RD-DL-160 | 100% |  |
| PRO-R14-RD-DL-170 |  | Material Delivery & Site Inspection for Bituminous Base & Wearing Courses of Road Works | 26d | 2026-08-23 A | 2026-08-29 A | PRO-RD-1DL-130, PRO-R14-RD-DL-120, PRO-R10-RD-DL-170 | 100% |  |
|  | 3 | **Traffic Signs Boards and Roads Marking** |  | 2027-03-18 | 2027-05-23 |  |  |  |
| PRO-R14-RD-DL-140 |  | Material Delivery & Site Inspection of Traffic Signs Boards For Road Works | 26d | 2027-03-18 | 2027-04-17 | PRO-RD-1DL-160, PRO-R14-RD-DL-170 FF, PRO-R10-RD-DL-140 |  | -185d |
| PRO-R14-RD-DL-150 |  | Material Delivery & Site Inspection of Road Markings For Road Works | 26d | 2027-04-18 | 2027-05-23 | PRO-RD-1DL-170, PRO-R14-RD-DL-140 SS, PRO-R10-RD-DL-150 |  | -211d |
|  | 2 | **Road 09 Local 2 ( 2278 LM )** |  | 2025-09-25 | 2027-06-22 |  |  |  |
|  | 1 | **Pre-Bituminous Construction** |  | 2025-09-25 | 2026-03-15 |  |  |  |
| PRO-R09-RD-DL-100 |  | Material Delivery & Site Inspection for Subgrade of Road Works | 26d | 2025-09-25 A | 2026-03-12 A | PRO-RD-1DL-100, PRO-RD-1DL-100 FF, PRO-R14-RD-DL-100 | 100% |  |
| PRO-R09-RD-DL-110 |  | Material Delivery & Site Inspection for Aggregate Base Course of Road Works | 26d | 2026-03-10 A | 2026-03-15 A | PRO-RD-1DL-110, PRO-RD-1DL-110 FF, PRO-R14-RD-DL-110 | 100% |  |
|  | 2 | **Pavement Works** |  | 2026-03-10 | 2026-03-15 |  |  |  |
| PRO-R09-RD-DL-120 |  | Material Delivery & Site Inspection of Interlock Tiles for Landscaping | 26d | 2026-03-10 A | 2026-03-15 A | PRO-RD-1DL-140, PRO-R14-RD-DL-120 | 100% |  |
| PRO-R09-RD-DL-130 |  | Material Delivery & Site Inspection of Curbstones for Landscaping | 26d | 2026-03-10 A | 2026-03-15 A | PRO-RD-1DL-150, PRO-R09-RD-DL-110 FF, PRO-R14-RD-DL-130 | 100% |  |
|  | 4 | **Bituminous Construction** |  | 2026-11-12 | 2026-12-12 |  |  |  |
| PRO-R09-RD-DL-160 |  | Material Delivery & Site Inspection for Prime Coat of Road Works | 26d | 2026-11-12 | 2026-12-12 | PRO-RD-1DL-120, PRO-RD-1DL-120 FF, PRO-R14-RD-DL-160 |  | -48d |
| PRO-R09-RD-DL-170 |  | Material Delivery & Site Inspection for Bituminous Base & Wearing Courses of Road Works | 26d | 2026-11-12 | 2026-12-12 | PRO-RD-1DL-130, PRO-RD-1DL-130 FF, PRO-R09-RD-DL-120, PRO-R14-RD-DL-170 |  | -81d |
|  | 3 | **Traffic Signs Boards and Roads Marking** |  | 2027-04-18 | 2027-06-22 |  |  |  |
| PRO-R09-RD-DL-140 |  | Material Delivery & Site Inspection of Traffic Signs Boards For Road Works | 26d | 2027-04-18 | 2027-05-23 | PRO-RD-1DL-160, PRO-R09-RD-DL-170, PRO-R14-RD-DL-140 |  | -185d |
| PRO-R09-RD-DL-150 |  | Material Delivery & Site Inspection of Road Markings For Road Works | 26d | 2027-05-24 | 2027-06-22 | PRO-RD-1DL-170, PRO-R09-RD-DL-140 SS, PRO-R14-RD-DL-150 |  | -211d |
|  | 5 | **Road 11 Local 1 ( 670 LM )** |  | 2026-02-19 | 2027-07-22 |  |  |  |
|  | 1 | **Pre-Bituminous Construction** |  | 2026-02-19 | 2026-02-23 |  |  |  |
| PRO-R11-RD-DL-100 |  | Material Delivery & Site Inspection for Subgrade of Road Works | 26d | 2026-02-19 A | 2026-02-23 A | PRO-RD-1DL-100, PRO-R09-RD-DL-100 | 100% |  |
| PRO-R11-RD-DL-110 |  | Material Delivery & Site Inspection for Aggregate Base Course of Road Works | 26d | 2026-02-19 A | 2026-02-23 A | PRO-RD-1DL-110, PRO-R09-RD-DL-110 | 100% |  |
|  | 2 | **Pavement Works** |  | 2026-08-23 | 2026-08-27 |  |  |  |
| PRO-R11-RD-DL-120 |  | Material Delivery & Site Inspection of Interlock Tiles for Landscaping | 26d | 2026-08-23 A | 2026-08-27 A | PRO-RD-1DL-140, PRO-R09-RD-DL-120 | 100% |  |
| PRO-R11-RD-DL-130 |  | Material Delivery & Site Inspection of Curbstones for Landscaping | 26d | 2026-08-23 A | 2026-08-27 A | PRO-RD-1DL-150, PRO-R11-RD-DL-110 FF, PRO-R09-RD-DL-130 | 100% |  |
|  | 4 | **Bituminous Construction** |  | 2026-08-23 | 2026-08-27 |  |  |  |
| PRO-R11-RD-DL-160 |  | Material Delivery & Site Inspection for Prime Coat of Road Works | 26d | 2026-08-23 A | 2026-08-27 A | PRO-RD-1DL-120, PRO-R09-RD-DL-160 | 100% |  |
| PRO-R11-RD-DL-170 |  | Material Delivery & Site Inspection for Bituminous Base & Wearing Courses of Road Works | 26d | 2026-08-23 A | 2026-08-27 A | PRO-RD-1DL-130, PRO-R11-RD-DL-120, PRO-R09-RD-DL-170 | 100% |  |
|  | 3 | **Traffic Signs Boards and Roads Marking** |  | 2027-05-24 | 2027-07-22 |  |  |  |
| PRO-R11-RD-DL-140 |  | Material Delivery & Site Inspection of Traffic Signs Boards For Road Works | 26d | 2027-05-24 | 2027-06-22 | PRO-RD-1DL-160, PRO-R11-RD-DL-170 FF, PRO-R09-RD-DL-140 |  | -185d |
| PRO-R11-RD-DL-150 |  | Material Delivery & Site Inspection of Road Markings For Road Works | 26d | 2027-06-23 | 2027-07-22 | PRO-RD-1DL-170, PRO-R11-RD-DL-140 SS, PRO-R09-RD-DL-150 |  | -211d |
|  | SW | **Sewage Network** |  | 2025-02-11 | 2027-04-10 |  |  |  |
|  | PO | **Issuance of Purchase Orders** |  | 2025-02-11 | 2025-02-17 |  |  |  |
|  | 1 | **Main Line Sections** |  | 2025-02-11 | 2025-02-17 |  |  |  |
| PRO-SW-PO-100 |  | Issuance of Purchase Order for Main Line Pipes of Sewage Network | 6d | 2025-02-11 A | 2025-02-17 A | ENG-MT-SW-ML-A-110, ENG-SH-SW-ML-A-110, ENG-MS-SW-ML-A-110 | 100% |  |
| PRO-SW-PO-110 |  | Issuance of Purchase Order for Manhole of Sewage Network | 6d | 2025-02-11 A | 2025-02-17 A | ENG-MT-SW-ML-A-100, ENG-SH-SW-ML-A-110, ENG-MS-SW-ML-A-110 | 100% |  |
|  | 3 | **Testing and Finishes** |  | 2025-02-11 | 2025-02-17 |  |  |  |
| PRO-SW-PO-120 |  | Issuance of Purchase Order for Manhole Covers of Sewage Network | 6d | 2025-02-11 A | 2025-02-17 A | ENG-MT-SW-TF-A-100, ENG-SH-SW-ML-A-110, ENG-MS-SW-ML-A-110 | 100% |  |
| PRO-SW-PO-140 |  | Issuance of Purchase Order for Membrane Insulation of Sewage Network | 6d | 2025-02-11 A | 2025-02-17 A | ENG-MT-SW-TF-A-120, ENG-SH-SW-ML-A-110, ENG-MS-SW-ML-A-110 | 100% |  |
|  | MF | **Manufacturing of Material** |  | 2025-02-12 | 2025-05-29 |  |  |  |
|  | 1 | **Main Line Sections** |  | 2025-02-12 | 2025-05-13 |  |  |  |
| PRO-SW-MF-110 |  | Manufacturing of Manholes for Sewage Network | 30d | 2025-02-12 A | 2025-05-13 A | PRO-SW-PO-110 | 100% |  |
| PRO-SW-MF-100 |  | Manufacturing of Main Line Pipes for Sewage Network | 30d | 2025-02-15 A | 2025-04-24 A | PRO-SW-PO-100 | 100% |  |
|  | 3 | **Testing and Finishes** |  | 2025-05-04 | 2025-05-29 |  |  |  |
| PRO-SW-MF-140 |  | Manufacturing of Membrane Insulation for Sewage Network | 120d | 2025-05-04 A | 2025-05-26 A | PRO-SW-PO-140 | 100% |  |
| PRO-SW-MF-120 |  | Manufacturing of Manhole Covers for Sewage Network | 120d | 2025-05-12 A | 2025-05-29 A | PRO-SW-PO-120 | 100% |  |
|  | 1DL | **1st Material Delivery & Site Inspection** |  | 2025-03-19 | 2025-06-10 |  |  |  |
|  | 1 | **Main Line Sections** |  | 2025-03-19 | 2025-05-25 |  |  |  |
| PRO-SW-1DL-100 |  | 1ST Material Delivery for Main Line Pipes of Sewage Network | 6d | 2025-03-19 A | 2025-04-26 A | PRO-SW-MF-100 FF | 100% |  |
| PRO-SW-1DL-110 |  | 1ST Material Delivery for Manholes of Sewage Network | 6d | 2025-04-10 A | 2025-05-25 A | PRO-SW-MF-110 | 100% |  |
|  | 3 | **Testing and Finishes** |  | 2025-05-27 | 2025-06-10 |  |  |  |
| PRO-SW-1DL-140 |  | 1ST Material Delivery for Membrane Insulation of Sewage Network | 6d | 2025-05-27 A | 2025-06-05 A | PRO-SW-MF-140 | 100% |  |
| PRO-SW-1DL-120 |  | 1ST Material Delivery for Manholes Covers of Sewage Network | 6d | 2025-05-30 A | 2025-06-10 A | PRO-SW-MF-120 | 100% |  |
|  | DL | **Material Delivery & Site Inspection** |  | 2025-04-13 | 2027-04-10 |  |  |  |
|  | 1 | **Road 18 Local 1 ( 479 LM )** |  | 2025-04-13 | 2025-06-01 |  |  |  |
|  | 1 | **Main Line Sections** |  | 2025-04-13 | 2025-05-27 |  |  |  |
| PRO-R18-SW-DL-150 |  | Material Delivery & Site Inspection of Main Line Pipes for Sewage Network | 10d | 2025-04-13 A | 2025-04-28 A | PRO-SW-1DL-100, PRO-R18-SW-DL-160 | 100% |  |
| PRO-R18-SW-DL-160 |  | Material Delivery & Site Inspection of Manholes for Sewage Network | 5d | 2025-04-22 A | 2025-05-27 A | PRO-SW-1DL-110 | 100% |  |
|  | 3 | **Testing and Finishes** |  | 2025-05-14 | 2025-06-01 |  |  |  |
| PRO-R18-SW-DL-170 |  | Material Delivery & Site Inspection of Manholes Covers for Sewage Network | 26d | 2025-05-14 A | 2025-06-01 A | PRO-SW-1DL-120, PRO-R18-SW-DL-150 | 100% |  |
| PRO-R18-SW-DL-190 |  | Material Delivery & Site Inspection of Membrane Insulation for Sewage Network | 26d | 2025-05-29 A | 2025-06-01 A | PRO-SW-1DL-140, PRO-R18-SW-DL-170 | 100% |  |
|  | 9 | **Road 17 Local 1 ( 500 LM )** |  | 2025-06-01 | 2026-11-04 |  |  |  |
|  | 1 | **Main Line Sections** |  | 2025-06-01 | 2025-07-03 |  |  |  |
| PRO-R17-SW-DL-100 |  | Material Delivery & Site Inspection of Main Line Pipes for Sewage Network | 14d | 2025-06-01 A | 2025-06-12 A | PRO-SW-1DL-100, PRO-R18-SW-DL-150 | 100% |  |
| PRO-R17-SW-DL-110 |  | Material Delivery & Site Inspection of Manholes for Sewage Network | 15d | 2025-06-10 A | 2025-07-03 A | PRO-SW-1DL-110, PRO-R18-SW-DL-160 | 100% |  |
|  | 3 | **Testing and Finishes** |  | 2026-10-06 | 2026-11-04 |  |  |  |

| ID | WBS | Task | Duration | Start | Finish | Predecessors | Complete | Total float |
| --- | --- | --- | --- | --- | --- | --- | --- | --- |
| PRO-R17-SW-DL-120 |  | Material Delivery & Site Inspection of Manholes Covers for Sewage Network | 26d | 2026-10-06 | 2026-11-04 | PRO-SW-1DL-120, PRO-R18-SW-DL-170 |  | -181d |
| PRO-R17-SW-DL-130 |  | Material Delivery & Site Inspection of Membrane Insulation for Sewage Network | 26d | 2026-10-06 | 2026-11-04 | PRO-SW-1DL-140, PRO-R18-SW-DL-190 |  | -178d |
|  | 8 | **Road 16 Local 1 ( 527 LM )** |  | 2025-05-27 | 2026-12-05 |  |  |  |
|  | 1 | **Main Line Sections** |  | 2025-05-27 | 2025-06-04 |  |  |  |
| PRO-R16-SW-DL-100 |  | Material Delivery & Site Inspection of Main Line Pipes for Sewage Network | 14d | 2025-05-27 A | 2025-06-04 A | PRO-SW-1DL-100, PRO-R17-SW-DL-100 | 100% |  |
| PRO-R16-SW-DL-110 |  | Material Delivery & Site Inspection of Manholes for Sewage Network | 15d | 2025-05-27 A | 2025-06-04 A | PRO-SW-1DL-110, PRO-R17-SW-DL-110 | 100% |  |
|  | 3 | **Testing and Finishes** |  | 2026-11-05 | 2026-12-05 |  |  |  |
| PRO-R16-SW-DL-120 |  | Material Delivery & Site Inspection of Manholes Covers for Sewage Network | 26d | 2026-11-05 | 2026-12-05 | PRO-SW-1DL-120, PRO-R17-SW-DL-120 |  | -181d |
| PRO-R16-SW-DL-130 |  | Material Delivery & Site Inspection of Membrane Insulation for Sewage Network | 26d | 2026-11-05 | 2026-12-05 | PRO-SW-1DL-140, PRO-R17-SW-DL-130 |  | -178d |
|  | 7 | **Road 15 Local 1 ( 556 LM )** |  | 2025-05-20 | 2027-01-04 |  |  |  |
|  | 1 | **Main Line Sections** |  | 2025-05-20 | 2025-06-29 |  |  |  |
| PRO-R15-SW-DL-100 |  | Material Delivery & Site Inspection of Main Line Pipes for Sewage Network | 14d | 2025-05-20 A | 2025-05-29 A | PRO-SW-1DL-100, PRO-R16-SW-DL-100 | 100% |  |
| PRO-R15-SW-DL-110 |  | Material Delivery & Site Inspection of Manholes for Sewage Network | 15d | 2025-06-05 A | 2025-06-29 A | PRO-SW-1DL-110, PRO-R16-SW-DL-110 | 100% |  |
|  | 3 | **Testing and Finishes** |  | 2026-12-06 | 2027-01-04 |  |  |  |
| PRO-R15-SW-DL-120 |  | Material Delivery & Site Inspection of Manholes Covers for Sewage Network | 26d | 2026-12-06 | 2027-01-04 | PRO-SW-1DL-120, PRO-R16-SW-DL-120 |  | -181d |
| PRO-R15-SW-DL-130 |  | Material Delivery & Site Inspection of Membrane Insulation for Sewage Network | 26d | 2026-12-06 | 2027-01-04 | PRO-SW-1DL-140, PRO-R16-SW-DL-130 |  | -178d |
|  | 4 | **Road 10 Local 2 ( 2352 LM )** |  | 2025-05-21 | 2027-02-03 |  |  |  |
|  | 1 | **Main Line Sections** |  | 2025-05-21 | 2025-06-04 |  |  |  |
| PRO-R10-SW-DL-100 |  | Material Delivery & Site Inspection of Main Line Pipes for Sewage Network | 14d | 2025-05-21 A | 2025-06-02 A | PRO-SW-1DL-100, PRO-R15-SW-DL-100 | 100% |  |
| PRO-R10-SW-DL-110 |  | Material Delivery & Site Inspection of Manholes for Sewage Network | 15d | 2025-05-22 A | 2025-06-04 A | PRO-SW-1DL-110, PRO-R15-SW-DL-110 | 100% |  |
|  | 3 | **Testing and Finishes** |  | 2027-01-05 | 2027-02-03 |  |  |  |
| PRO-R10-SW-DL-120 |  | Material Delivery & Site Inspection of Manholes Covers for Sewage Network | 26d | 2027-01-05 | 2027-02-03 | PRO-SW-1DL-120, PRO-R15-SW-DL-120 |  | -181d |
| PRO-R10-SW-DL-130 |  | Material Delivery & Site Inspection of Membrane Insulation for Sewage Network | 26d | 2027-01-05 | 2027-02-03 | PRO-SW-1DL-140, PRO-R15-SW-DL-130 |  | -178d |
|  | 6 | **Road 14 Local 1 ( 584 LM )** |  | 2025-06-03 | 2027-03-07 |  |  |  |
|  | 1 | **Main Line Sections** |  | 2025-06-03 | 2025-06-26 |  |  |  |
| PRO-R14-SW-DL-100 |  | Material Delivery & Site Inspection of Main Line Pipes for Sewage Network | 14d | 2025-06-03 A | 2025-06-20 A | PRO-SW-1DL-100, PRO-R10-SW-DL-100 | 100% |  |
| PRO-R14-SW-DL-110 |  | Material Delivery & Site Inspection of Manholes for Sewage Network | 15d | 2025-06-05 A | 2025-06-26 A | PRO-SW-1DL-110, PRO-R10-SW-DL-110 | 100% |  |
|  | 3 | **Testing and Finishes** |  | 2027-02-04 | 2027-03-07 |  |  |  |
| PRO-R14-SW-DL-120 |  | Material Delivery & Site Inspection of Manholes Covers for Sewage Network | 26d | 2027-02-04 | 2027-03-07 | PRO-SW-1DL-120, PRO-R10-SW-DL-120 |  | -181d |
| PRO-R14-SW-DL-130 |  | Material Delivery & Site Inspection of Membrane Insulation for Sewage Network | 26d | 2027-02-04 | 2027-03-07 | PRO-SW-1DL-140, PRO-R10-SW-DL-130 |  | -178d |
|  | 2 | **Road 09 Local 2 ( 2278 LM )** |  | 2025-05-10 | 2026-11-18 |  |  |  |
|  | 1 | **Main Line Sections** |  | 2025-05-10 | 2025-06-01 |  |  |  |
| PRO-R09-SW-DL-110 |  | Material Delivery & Site Inspection of Manholes for Rising Main Network | 7d | 2025-05-10 A | 2025-06-01 A | PRO-SW-1DL-110 | 100% |  |
| PRO-R09-SW-DL-100 |  | Material Delivery & Site Inspection of Main Line Pipes for Rising Main Network | 10d | 2025-05-14 A | 2025-05-29 A | PRO-SW-1DL-100 | 100% |  |
|  | 3 | **Testing and Finishes** |  | 2026-10-06 | 2026-11-18 |  |  |  |
| PRO-R09-SW-DL-120 |  | Material Delivery & Site Inspection of Manholes Covers for Rising Main Network | 38d | 2026-10-06 | 2026-11-18 | PRO-SW-1DL-120 |  | -70d |
| PRO-R09-SW-DL-130 |  | Material Delivery & Site Inspection of Membrane Insulation for Rising Main Network | 38d | 2026-10-06 | 2026-11-18 | PRO-SW-1DL-140 |  | -54d |
|  | 5 | **Road 11 Local 1 ( 670 LM )** |  | 2025-05-06 | 2027-04-10 |  |  |  |
|  | 1 | **Main Line Sections** |  | 2025-05-06 | 2025-06-01 |  |  |  |
| PRO-R11-SW-DL-100 |  | Material Delivery & Site Inspection of Main Line Pipes for Sewage Network | 14d | 2025-05-06 A | 2025-05-29 A | PRO-SW-1DL-100, PRO-R14-SW-DL-100 | 100% |  |
| PRO-R11-SW-DL-110 |  | Material Delivery & Site Inspection of Manholes for Sewage Network | 15d | 2025-05-19 A | 2025-06-01 A | PRO-SW-1DL-110, PRO-R14-SW-DL-110 | 100% |  |
|  | 3 | **Testing and Finishes** |  | 2027-03-08 | 2027-04-10 |  |  |  |
| PRO-R11-SW-DL-120 |  | Material Delivery & Site Inspection of Manholes Covers for Sewage Network | 26d | 2027-03-08 | 2027-04-10 | PRO-SW-1DL-120, PRO-R14-SW-DL-120 |  | -181d |
| PRO-R11-SW-DL-130 |  | Material Delivery & Site Inspection of Membrane Insulation for Sewage Network | 26d | 2027-03-08 | 2027-04-10 | PRO-SW-1DL-140, PRO-R14-SW-DL-130 |  | -178d |
|  | SD | **Storm Drainage Network** |  | 2025-02-11 | 2027-01-16 |  |  |  |
|  | MF | **Manufacturing of Material** |  | 2025-02-18 | 2025-07-13 |  |  |  |
|  | 1 | **Main Line Sections** |  | 2025-02-18 | 2025-05-13 |  |  |  |
| PRO-SD-MF-100 |  | Manufacturing of Materials for Manholes of Storm Drainage Network | 50d | 2025-02-18 A | 2025-05-13 A | PRO-SD-PO-100 | 100% |  |
| PRO-SD-MF-110 |  | Manufacturing of Materials for Main Line Pipes of Storm Drainage Network | 40d | 2025-02-18 A | 2025-05-11 A | PRO-SD-PO-110 | 100% |  |
|  | 2 | **Catch Basin Sections** |  | 2025-02-18 | 2025-07-13 |  |  |  |
| PRO-SD-MF-130 |  | Manufacturing of Materials for Catch Basins of Storm Drainage Network | 50d | 2025-02-18 A | 2025-05-15 A | PRO-SD-PO-130 | 100% |  |
| PRO-SD-MF-150 |  | Manufacturing of Materials for Catch Basin Pipes of Storm Drainage Network | 50d | 2025-02-18 A | 2025-07-13 A | PRO-SD-PO-150 | 100% |  |
|  | 3 | **Testing and Finishes** |  | 2025-02-18 | 2025-05-29 |  |  |  |
| PRO-SD-MF-120 |  | Manufacturing of Materials for Manhole Covers of Storm Drainage Network | 120d | 2025-02-18 A | 2025-05-27 A | PRO-SD-PO-120 | 100% |  |
| PRO-SD-MF-140 |  | Manufacturing of Materials for Catch Basin Covers of Storm Drainage Network | 120d | 2025-02-18 A | 2025-05-29 A | PRO-SD-PO-140 | 100% |  |
| PRO-SD-MF-160 |  | Manufacturing of Materials for Epoxy Insulation of Storm Drainage Network | 120d | 2025-02-18 A | 2025-05-28 A | PRO-SD-PO-160 | 100% |  |
|  | PO | **Issuance of Purchase Orders** |  | 2025-02-11 | 2025-02-17 |  |  |  |
|  | 1 | **Main Line Sections** |  | 2025-02-11 | 2025-02-17 |  |  |  |
| PRO-SD-PO-100 |  | Issuance of Purchase Order for Manholes of Storm Drainage Network | 6d | 2025-02-11 A | 2025-02-17 A | ENG-MT-SD-ML-A-100, ENG-SH-SD-ML-A-110, ENG-MS-SD-ML-A-110 | 100% |  |
| PRO-SD-PO-110 |  | Issuance of Purchase Order for Main Line Pipes of Storm Drainage Network | 6d | 2025-02-11 A | 2025-02-17 A | ENG-MT-SD-ML-A-110, ENG-SH-SD-ML-A-110, ENG-MS-SD-ML-A-110 | 100% |  |
|  | 2 | **Catch Basin Sections** |  | 2025-02-11 | 2025-02-17 |  |  |  |
| PRO-SD-PO-130 |  | Issuance of Purchase Order for Catch Basins of Storm Drainage Network | 6d | 2025-02-11 A | 2025-02-17 A | ENG-MT-SD-CB-A-100, ENG-SH-SD-CB-A-110, ENG-MS-SD-CB-A-110 | 100% |  |
| PRO-SD-PO-150 |  | Issuance of Purchase Order for Catch Basin Pipes of Storm Drainage Network | 6d | 2025-02-11 A | 2025-02-17 A | ENG-MT-SD-CB-A-110, ENG-SH-SD-CB-A-110, ENG-MS-SD-CB-A-110 | 100% |  |
|  | 3 | **Testing and Finishes** |  | 2025-02-11 | 2025-02-17 |  |  |  |
| PRO-SD-PO-120 |  | Issuance of Purchase Order for Manhole Covers of Storm Drainage Network | 6d | 2025-02-11 A | 2025-02-17 A | ENG-MT-SD-TF-A-100, ENG-SH-SD-ML-A-110, ENG-MS-SD-ML-A-110 | 100% |  |
| PRO-SD-PO-140 |  | Issuance of Purchase Order for Catch Basin Covers of Storm Drainage Network | 6d | 2025-02-11 A | 2025-02-17 A | ENG-MT-SD-TF-A-110, ENG-SH-SD-CB-A-110, ENG-MS-SD-CB-A-110 | 100% |  |
| PRO-SD-PO-160 |  | Issuance of Purchase Order for Epoxy Insulation of Storm Drainage Network | 6d | 2025-02-11 A | 2025-02-17 A | ENG-MT-SD-TF-A-120, ENG-SH-SD-ML-A-110, ENG-MS-SD-ML-A-110 | 100% |  |
|  | 1DL | **1st Material Delivery & Site Inspection** |  | 2025-04-29 | 2026-06-30 |  |  |  |
|  | 1 | **Main Line Sections** |  | 2025-04-29 | 2025-05-29 |  |  |  |
| PRO-SD-1DL-110 |  | 1ST Material Delivery for Main Line Pipes of Storm Drainage Network | 6d | 2025-04-29 A | 2025-04-30 A | PRO-SD-MF-110 | 100% |  |

| ID | WBS | Task | Duration | Start | Finish | Predecessors | Complete | Total float |
| --- | --- | --- | --- | --- | --- | --- | --- | --- |
| PRO-SD-1DL-100 |  | 1ST Material Delivery for Manholes of Storm Drainage Network | 6d | 2025-05-20 A | 2025-05-29 A | PRO-SD-MF-100 | 100% |  |
|  | 2 | **Catch Basin Sections** |  | 2025-05-12 | 2025-05-31 |  |  |  |
| PRO-SD-1DL-120 |  | 1ST Material Delivery for Catch Basin Pipes of Storm Drainage Network | 6d | 2025-05-12 A | 2025-05-20 A | PRO-SD-MF-150 | 100% |  |
| PRO-SD-1DL-130 |  | 1ST Material Delivery for Catch Basins of Storm Drainage Network | 6d | 2025-05-25 A | 2025-05-31 A | PRO-SD-MF-130 | 100% |  |
|  | 3 | **Testing and Finishes** |  | 2026-06-24 | 2026-06-30 |  |  |  |
| PRO-SD-1DL-140 |  | 1ST Material Delivery for Manholes Covers of Storm Drainage Network | 6d | 2026-06-24 A | 2026-06-30 A | PRO-SD-MF-120 | 100% |  |
| PRO-SD-1DL-150 |  | 1ST Material Delivery for Catch Basin Covers of Storm Drainage Network | 6d | 2026-06-24 A | 2026-06-30 A | PRO-SD-MF-140 | 100% |  |
| PRO-SD-1DL-160 |  | 1ST Material Delivery for Epoxy Insulation of Storm Drainage Network | 6d | 2026-06-24 A | 2026-06-30 A | PRO-SD-MF-160 | 100% |  |
|  | DL | **Material Delivery & Site Inspection** |  | 2025-05-01 | 2027-01-16 |  |  |  |
|  | 1 | **Road 18 Local 1 ( 479 LM )** |  | 2025-05-01 | 2026-10-17 |  |  |  |
|  | 1 | **Main Line Sections** |  | 2025-05-01 | 2025-05-29 |  |  |  |
| PRO-R18-SD-DL-180 |  | Material Delivery & Site Inspection of Main Line Pipes of Storm Drainage Network | 17d | 2025-05-01 A | 2025-05-29 A | PRO-SD-1DL-110 | 100% |  |
| PRO-R18-SD-DL-170 |  | Material Delivery & Site Inspection of Manholes of Storm Drainage Network | 20d | 2025-05-11 A | 2025-05-24 A | PRO-SD-1DL-100 | 100% |  |
|  | 2 | **Catch Basin Sections** |  | 2025-05-21 | 2025-05-31 |  |  |  |
| PRO-R18-SD-DL-200 |  | Material Delivery & Site Inspection of Catch Basins for Storm Drainage Network | 26d | 2025-05-21 A | 2025-05-31 A | PRO-SD-1DL-130 | 100% |  |
| PRO-R18-SD-DL-220 |  | Material Delivery & Site Inspection of Catch Basin Pipes for Storm Drainage Network | 26d | 2025-05-21 A | 2025-05-29 A | PRO-SD-1DL-120 | 100% |  |
|  | 3 | **Testing and Finishes** |  | 2026-06-27 | 2026-10-17 |  |  |  |
| PRO-R18-SD-DL-190 |  | Material Delivery & Site Inspection of Manholes Covers for Storm Drainage Network | 26d | 2026-06-27 A | 2026-10-17 | PRO-SD-1DL-140 |  | -120d |
| PRO-R18-SD-DL-210 |  | Material Delivery & Site Inspection of Catch Basin Covers for Storm Drainage Network | 26d | 2026-06-27 A | 2026-10-17 | PRO-SD-1DL-150 |  | -106d |
| PRO-R18-SD-DL-230 |  | Material Delivery & Site Inspection of Epoxy Insulation for Storm Drainage Network | 26d | 2026-06-27 A | 2026-10-17 | PRO-SD-1DL-160 |  | -94d |
|  | 9 | **Road 17 Local 1 ( 500 LM )** |  | 2025-05-15 | 2026-10-28 |  |  |  |
|  | 1 | **Main Line Sections** |  | 2025-05-15 | 2025-05-29 |  |  |  |
| PRO-R17-SD-DL-120 |  | Material Delivery & Site Inspection of Main Line Pipes of Storm Drainage Network | 17d | 2025-05-15 A | 2025-05-29 A | PRO-SD-1DL-110, PRO-R18-SD-DL-180 | 100% |  |
| PRO-R17-SD-DL-100 |  | Material Delivery & Site Inspection of Manholes of Storm Drainage Network | 20d | 2025-05-17 A | 2025-05-27 A | PRO-SD-1DL-100, PRO-R18-SD-DL-170 | 100% |  |
|  | 2 | **Catch Basin Sections** |  | 2025-05-19 | 2025-05-31 |  |  |  |
| PRO-R17-SD-DL-130 |  | Material Delivery & Site Inspection of Catch Basins for Storm Drainage Network | 26d | 2025-05-19 A | 2025-05-31 A | PRO-SD-1DL-130, PRO-R18-SD-DL-200 | 100% |  |
| PRO-R17-SD-DL-110 |  | Material Delivery & Site Inspection of Catch Basin Pipes for Storm Drainage Network | 26d | 2025-05-22 A | 2025-05-29 A | PRO-SD-1DL-120, PRO-R18-SD-DL-220 | 100% |  |
|  | 3 | **Testing and Finishes** |  | 2026-06-20 | 2026-10-28 |  |  |  |
| PRO-R17-SD-DL-140 |  | Material Delivery & Site Inspection of Manholes Covers for Storm Drainage Network | 26d | 2026-06-20 A | 2026-10-28 | PRO-SD-1DL-140, PRO-R18-SD-DL-190 |  | -120d |
| PRO-R17-SD-DL-150 |  | Material Delivery & Site Inspection of Catch Basin Covers for Storm Drainage Network | 26d | 2026-06-20 A | 2026-10-28 | PRO-SD-1DL-150, PRO-R18-SD-DL-210 |  | -106d |
| PRO-R17-SD-DL-160 |  | Material Delivery & Site Inspection of Epoxy Insulation for Storm Drainage Network | 26d | 2026-06-20 A | 2026-10-28 | PRO-SD-1DL-160, PRO-R18-SD-DL-230 |  | -94d |
|  | 8 | **Road 16 Local 1 ( 527 LM )** |  | 2025-05-20 | 2026-11-16 |  |  |  |
|  | 1 | **Main Line Sections** |  | 2025-05-20 | 2025-06-01 |  |  |  |
| PRO-R16-SD-DL-100 |  | Material Delivery & Site Inspection of Manholes of Storm Drainage Network | 20d | 2025-05-20 A | 2025-05-28 A | PRO-SD-1DL-100, PRO-R17-SD-DL-100 | 100% |  |
| PRO-R16-SD-DL-120 |  | Material Delivery & Site Inspection of Main Line Pipes of Storm Drainage Network | 17d | 2025-05-20 A | 2025-06-01 A | PRO-SD-1DL-110, PRO-R17-SD-DL-120 | 100% |  |
|  | 2 | **Catch Basin Sections** |  | 2025-05-21 | 2025-06-01 |  |  |  |
| PRO-R16-SD-DL-110 |  | Material Delivery & Site Inspection of Catch Basin Pipes for Storm Drainage Network | 26d | 2025-05-21 A | 2025-05-31 A | PRO-SD-1DL-120, PRO-R17-SD-DL-110 | 100% |  |
| PRO-R16-SD-DL-130 |  | Material Delivery & Site Inspection of Catch Basins for Storm Drainage Network | 26d | 2025-05-26 A | 2025-06-01 A | PRO-SD-1DL-130, PRO-R17-SD-DL-130 | 100% |  |
|  | 3 | **Testing and Finishes** |  | 2026-10-18 | 2026-11-16 |  |  |  |
| PRO-R16-SD-DL-140 |  | Material Delivery & Site Inspection of Manholes Covers for Storm Drainage Network | 26d | 2026-10-18 | 2026-11-16 | PRO-SD-1DL-140, PRO-R17-SD-DL-140 SS |  | -120d |
| PRO-R16-SD-DL-150 |  | Material Delivery & Site Inspection of Catch Basin Covers for Storm Drainage Network | 26d | 2026-10-18 | 2026-11-16 | PRO-SD-1DL-150, PRO-R17-SD-DL-150 SS |  | -106d |
| PRO-R16-SD-DL-160 |  | Material Delivery & Site Inspection of Epoxy Insulation for Storm Drainage Network | 26d | 2026-10-18 | 2026-11-16 | PRO-SD-1DL-160, PRO-R17-SD-DL-160 SS |  | -94d |
|  | 7 | **Road 15 Local 1 ( 556 LM )** |  | 2025-05-03 | 2026-11-16 |  |  |  |
|  | 1 | **Main Line Sections** |  | 2025-05-03 | 2025-05-31 |  |  |  |
| PRO-R15-SD-DL-120 |  | Material Delivery & Site Inspection of Main Line Pipes of Storm Drainage Network | 17d | 2025-05-03 A | 2025-05-31 A | PRO-SD-1DL-110, PRO-R16-SD-DL-120 | 100% |  |
| PRO-R15-SD-DL-100 |  | Material Delivery & Site Inspection of Manholes of Storm Drainage Network | 26d | 2025-05-15 A | 2025-05-31 A | PRO-SD-1DL-100, PRO-R16-SD-DL-100 | 100% |  |
|  | 2 | **Catch Basin Sections** |  | 2025-05-10 | 2025-06-01 |  |  |  |
| PRO-R15-SD-DL-110 |  | Material Delivery & Site Inspection of Catch Basin Pipes for Storm Drainage Network | 26d | 2025-05-10 A | 2025-05-29 A | PRO-SD-1DL-120, PRO-R16-SD-DL-110 | 100% |  |
| PRO-R15-SD-DL-130 |  | Material Delivery & Site Inspection of Catch Basins for Storm Drainage Network | 26d | 2025-05-24 A | 2025-06-01 A | PRO-SD-1DL-130, PRO-R16-SD-DL-130 | 100% |  |
|  | 3 | **Testing and Finishes** |  | 2026-10-18 | 2026-11-16 |  |  |  |
| PRO-R15-SD-DL-140 |  | Material Delivery & Site Inspection of Manholes Covers for Storm Drainage Network | 26d | 2026-10-18 | 2026-11-16 | PRO-SD-1DL-140, PRO-R16-SD-DL-140 SS |  | -120d |
| PRO-R15-SD-DL-150 |  | Material Delivery & Site Inspection of Catch Basin Covers for Storm Drainage Network | 26d | 2026-10-18 | 2026-11-16 | PRO-SD-1DL-150, PRO-R16-SD-DL-150 SS |  | -106d |
| PRO-R15-SD-DL-160 |  | Material Delivery & Site Inspection of Epoxy Insulation for Storm Drainage Network | 26d | 2026-10-18 | 2026-11-16 | PRO-SD-1DL-160, PRO-R16-SD-DL-160 SS |  | -94d |
|  | 4 | **Road 10 Local 2 ( 2352 LM )** |  | 2025-06-10 | 2026-11-16 |  |  |  |
|  | 1 | **Main Line Sections** |  | 2025-06-10 | 2025-06-25 |  |  |  |
| PRO-R10-SD-DL-100 |  | Material Delivery & Site Inspection of Manholes of Storm Drainage Network | 26d | 2025-06-10 A | 2025-06-25 A | PRO-SD-1DL-100, PRO-R15-SD-DL-100 | 100% |  |
| PRO-R10-SD-DL-120 |  | Material Delivery & Site Inspection of Main Line Pipes of Storm Drainage Network | 17d | 2025-06-10 A | 2025-06-25 A | PRO-SD-1DL-110, PRO-R15-SD-DL-120 | 100% |  |
|  | 2 | **Catch Basin Sections** |  | 2025-06-12 | 2025-07-12 |  |  |  |
| PRO-R10-SD-DL-110 |  | Material Delivery & Site Inspection of Catch Basin Pipes for Storm Drainage Network | 26d | 2025-06-12 A | 2025-07-12 A | PRO-SD-1DL-120, PRO-R15-SD-DL-110 | 100% |  |
| PRO-R10-SD-DL-130 |  | Material Delivery & Site Inspection of Catch Basins for Storm Drainage Network | 26d | 2025-06-12 A | 2025-06-30 A | PRO-SD-1DL-130, PRO-R15-SD-DL-130 | 100% |  |
|  | 3 | **Testing and Finishes** |  | 2026-10-18 | 2026-11-16 |  |  |  |
| PRO-R10-SD-DL-140 |  | Material Delivery & Site Inspection of Manholes Covers for Storm Drainage Network | 26d | 2026-10-18 | 2026-11-16 | PRO-SD-1DL-140, PRO-R15-SD-DL-140 SS |  | -120d |
| PRO-R10-SD-DL-150 |  | Material Delivery & Site Inspection of Catch Basin Covers for Storm Drainage Network | 26d | 2026-10-18 | 2026-11-16 | PRO-SD-1DL-150, PRO-R15-SD-DL-150 SS |  | -106d |
| PRO-R10-SD-DL-160 |  | Material Delivery & Site Inspection of Epoxy Insulation for Storm Drainage Network | 26d | 2026-10-18 | 2026-11-16 | PRO-SD-1DL-160, PRO-R15-SD-DL-160 SS |  | -94d |
|  | 6 | **Road 14 Local 1 ( 584 LM )** |  | 2025-07-15 | 2026-11-16 |  |  |  |
|  | 1 | **Main Line Sections** |  | 2025-07-15 | 2025-11-01 |  |  |  |
| PRO-R14-SD-DL-120 |  | Material Delivery & Site Inspection of Main Line Pipes of Storm Drainage Network | 17d | 2025-07-15 A | 2025-08-02 A | PRO-SD-1DL-110 | 100% |  |
| PRO-R14-SD-DL-100 |  | Material Delivery & Site Inspection of Manholes of Storm Drainage Network | 26d | 2025-10-04 A | 2025-11-01 A | PRO-SD-1DL-100, PRO-R10-SD-DL-100 | 100% |  |
|  | 2 | **Catch Basin Sections** |  | 2025-10-04 | 2026-06-15 |  |  |  |
| PRO-R14-SD-DL-130 |  | Material Delivery & Site Inspection of Catch Basins for Storm Drainage Network | 26d | 2025-10-04 A | 2025-11-01 A | PRO-SD-1DL-130, PRO-R10-SD-DL-130 | 100% |  |

| ID | WBS | Task | Duration | Start | Finish | Predecessors | Complete | Total float |
| --- | --- | --- | --- | --- | --- | --- | --- | --- |
| PRO-R14-SD-DL-110 |  | Material Delivery & Site Inspection of Catch Basin Pipes for Storm Drainage Network | 26d | 2026-06-04 A | 2026-06-15 A | PRO-SD-1DL-120, PRO-R10-SD-DL-110 | 100% |  |
|  | 3 | **Testing and Finishes** |  | 2026-10-18 | 2026-11-16 |  |  |  |
| PRO-R14-SD-DL-140 |  | Material Delivery & Site Inspection of Manholes Covers for Storm Drainage Network | 26d | 2026-10-18 | 2026-11-16 | PRO-SD-1DL-140, PRO-R10-SD-DL-140 SS |  | -120d |
| PRO-R14-SD-DL-150 |  | Material Delivery & Site Inspection of Catch Basin Covers for Storm Drainage Network | 26d | 2026-10-18 | 2026-11-16 | PRO-SD-1DL-150, PRO-R10-SD-DL-150 SS |  | -106d |
| PRO-R14-SD-DL-160 |  | Material Delivery & Site Inspection of Epoxy Insulation for Storm Drainage Network | 26d | 2026-10-18 | 2026-11-16 | PRO-SD-1DL-160, PRO-R10-SD-DL-160 SS |  | -94d |
|  | 2 | **Road 09 Local 2 ( 2278 LM )** |  | 2025-06-03 | 2026-12-16 |  |  |  |
|  | 1 | **Main Line Sections** |  | 2025-06-03 | 2025-06-30 |  |  |  |
| PRO-R09-SD-DL-120 |  | Material Delivery & Site Inspection of Main Line Pipes of Storm Drainage Network | 17d | 2025-06-03 A | 2025-06-30 A | PRO-SD-1DL-110 | 100% |  |
| PRO-R09-SD-DL-100 |  | Material Delivery & Site Inspection of Manholes of Storm Drainage Network | 12d | 2025-06-14 A | 2025-06-30 A | PRO-SD-1DL-100 | 100% |  |
|  | 2 | **Catch Basin Sections** |  | 2025-12-01 | 2025-12-08 |  |  |  |
| PRO-R09-SD-DL-110 |  | Material Delivery & Site Inspection of Catch Basin Pipes for Storm Drainage Network | 26d | 2025-12-01 A | 2025-12-08 A | PRO-SD-1DL-120, PRO-R14-SD-DL-110 | 100% |  |
| PRO-R09-SD-DL-130 |  | Material Delivery & Site Inspection of Catch Basins for Storm Drainage Network | 26d | 2025-12-01 A | 2025-12-07 A | PRO-SD-1DL-130, PRO-R14-SD-DL-130 | 100% |  |
|  | 3 | **Testing and Finishes** |  | 2026-11-17 | 2026-12-16 |  |  |  |
| PRO-R09-SD-DL-140 |  | Material Delivery & Site Inspection of Manholes Covers for Storm Drainage Network | 26d | 2026-11-17 | 2026-12-16 | PRO-SD-1DL-140, PRO-R14-SD-DL-140 |  | -120d |
| PRO-R09-SD-DL-150 |  | Material Delivery & Site Inspection of Catch Basin Covers for Storm Drainage Network | 26d | 2026-11-17 | 2026-12-16 | PRO-SD-1DL-150, PRO-R14-SD-DL-150 |  | -106d |
| PRO-R09-SD-DL-160 |  | Material Delivery & Site Inspection of Epoxy Insulation for Storm Drainage Network | 26d | 2026-11-17 | 2026-12-16 | PRO-SD-1DL-160, PRO-R14-SD-DL-160 |  | -94d |
|  | 5 | **Road 11 Local 1 ( 670 LM )** |  | 2025-07-29 | 2027-01-16 |  |  |  |
|  | 1 | **Main Line Sections** |  | 2025-07-29 | 2026-07-02 |  |  |  |
| PRO-R11-SD-DL-120 |  | Material Delivery & Site Inspection of Main Line Pipes of Storm Drainage Network | 17d | 2025-07-29 A | 2025-08-07 A | PRO-SD-1DL-110 | 100% |  |
| PRO-R11-SD-DL-100 |  | Material Delivery & Site Inspection of Manholes of Storm Drainage Network | 26d | 2025-11-01 A | 2026-07-02 A | PRO-SD-1DL-100 | 100% |  |
|  | 2 | **Catch Basin Sections** |  | 2025-12-01 | 2026-07-06 |  |  |  |
| PRO-R11-SD-DL-130 |  | Material Delivery & Site Inspection of Catch Basins for Storm Drainage Network | 26d | 2025-12-01 A | 2025-12-08 A | PRO-SD-1DL-130, PRO-R09-SD-DL-130 | 100% |  |
| PRO-R11-SD-DL-110 |  | Material Delivery & Site Inspection of Catch Basin Pipes for Storm Drainage Network | 26d | 2026-07-01 A | 2026-07-06 A | PRO-SD-1DL-120, PRO-R09-SD-DL-110 | 100% |  |
|  | 3 | **Testing and Finishes** |  | 2026-12-17 | 2027-01-16 |  |  |  |
| PRO-R11-SD-DL-140 |  | Material Delivery & Site Inspection of Manholes Covers for Storm Drainage Network | 26d | 2026-12-17 | 2027-01-16 | PRO-SD-1DL-140, PRO-R09-SD-DL-140 |  | -106d |
| PRO-R11-SD-DL-150 |  | Material Delivery & Site Inspection of Catch Basin Covers for Storm Drainage Network | 26d | 2026-12-17 | 2027-01-16 | PRO-SD-1DL-150, PRO-R09-SD-DL-150 |  | -106d |
| PRO-R11-SD-DL-160 |  | Material Delivery & Site Inspection of Epoxy Insulation for Storm Drainage Network | 26d | 2026-12-17 | 2027-01-16 | PRO-SD-1DL-160, PRO-R09-SD-DL-160 |  | -94d |
|  | PW | **Potable Water Network** |  | 2025-02-11 | 2027-05-23 |  |  |  |
|  | PO | **Issuance of Purchase Orders** |  | 2025-02-11 | 2025-02-23 |  |  |  |
|  | 1 | **Main Line Sections** |  | 2025-02-11 | 2025-02-17 |  |  |  |
| PRO-PW-PO-100 |  | Issuance of Purchase Order for Main Line Pipes of Potable Water Network | 6d | 2025-02-11 A | 2025-02-17 A | ENG-MT-PW-ML-A-100, ENG-SH-PW-ML-A-110, ENG-MS-PW-ML-A-110, ENG-SH-PW-FH-A-110 | 100% |  |
| PRO-PW-PO-110 |  | Issuance of Purchase Order for Valves of Potable Water Network | 6d | 2025-02-11 A | 2025-02-17 A | ENG-MT-PW-ML-A-110, ENG-SH-PW-ML-A-110, ENG-MS-PW-ML-A-110, ENG-SH-PW-FH-A-110 | 100% |  |
|  | 3 | **Fire Hydrant** |  | 2025-02-11 | 2025-02-23 |  |  |  |
| PRO-PW-PO-120 |  | Issuance of Purchase Order for Fire Hydrants of Potable Water Network | 10d | 2025-02-11 A | 2025-02-23 A | ENG-MT-PW-FH-A-100, ENG-SH-PW-ML-A-110, ENG-MS-PW-ML-A-110, ENG-SH-PW-FH-A-110 | 100% |  |
|  | 4 | **Testing and Finishes** |  | 2025-02-11 | 2025-02-23 |  |  |  |
| PRO-PW-PO-130 |  | Issuance of Purchase Order for Surface Box of Potable Water Network | 10d | 2025-02-11 A | 2025-02-23 A | ENG-MT-PW-TF-A-100, ENG-SH-PW-ML-A-110, ENG-MS-PW-ML-A-110, ENG-SH-PW-FH-A-110 | 100% |  |
|  | MF | **Manufacturing of Material** |  | 2025-02-18 | 2025-05-31 |  |  |  |
|  | 1 | **Main Line Sections** |  | 2025-02-18 | 2025-05-31 |  |  |  |
| PRO-PW-MF-100 |  | Manufacturing of Main Line Pipes for Potable Water Network | 60d | 2025-02-18 A | 2025-05-22 A | PRO-PW-PO-100 | 100% |  |
| PRO-PW-MF-110 |  | Manufacturing of Valves for Potable Water Network | 60d | 2025-02-18 A | 2025-05-31 A | PRO-PW-PO-110 | 100% |  |
|  | 3 | **Fire Hydrant** |  | 2025-02-24 | 2025-05-21 |  |  |  |
| PRO-PW-MF-120 |  | Manufacturing of Fire Hydrants for Potable Water Network | 60d | 2025-02-24 A | 2025-05-21 A | PRO-PW-PO-120 | 100% |  |
|  | 4 | **Testing and Finishes** |  | 2025-02-24 | 2025-04-26 |  |  |  |
| PRO-PW-MF-130 |  | Manufacturing for Surface Box of Potable Water Network | 80d | 2025-02-24 A | 2025-04-26 A | PRO-PW-PO-130 | 100% |  |
|  | 1DL | **1st Material Delivery & Site Inspection** |  | 2025-05-13 | 2026-10-12 |  |  |  |
|  | 1 | **Main Line Sections** |  | 2025-05-13 | 2025-10-10 |  |  |  |
| PRO-PW-1DL-100 |  | 1ST Material Delivery for Main Line Pipes of Potable Water Network | 6d | 2025-05-13 A | 2025-05-28 A | PRO-PW-MF-100 | 100% |  |
| PRO-PW-1DL-110 |  | 1ST Material Delivery for Valves of Potable Water Network | 6d | 2025-10-04 A | 2025-10-10 A | PRO-PW-MF-110 | 100% |  |
|  | 3 | **Fire Hydrant** |  | 2025-11-01 | 2025-11-04 |  |  |  |
| PRO-PW-1DL-120 |  | 1ST Material Delivery for Fire Hydrants of Potable Water Network | 6d | 2025-11-01 A | 2025-11-04 A | PRO-PW-MF-120 | 100% |  |
|  | 4 | **Testing and Finishes** |  | 2026-10-06 | 2026-10-12 |  |  |  |
| PRO-PW-1DL-130 |  | 1ST Material Delivery for Finishes of Potable Water Network | 6d | 2026-10-06 | 2026-10-12 | PRO-PW-MF-130 |  | -213d |
|  | DL | **Material Delivery & Site Inspection** |  | 2025-05-03 | 2027-05-23 |  |  |  |
|  | 1 | **Road 18 Local 1 ( 479 LM )** |  | 2025-05-03 | 2026-11-11 |  |  |  |
|  | 1 | **Main Line Sections** |  | 2025-05-03 | 2025-11-04 |  |  |  |
| PRO-R18-PW-DL-140 |  | Material Delivery & Site Inspection of Main Line Pipes for Potable Water Network | 26d | 2025-05-03 A | 2025-05-28 A | PRO-PW-1DL-100 | 100% |  |
| PRO-R18-PW-DL-150 |  | Material Delivery & Site Inspection of Valves for Potable Water Network | 26d | 2025-10-23 A | 2025-11-04 A | PRO-PW-1DL-110 | 100% |  |
|  | 3 | **Fire Hydrant** |  | 2026-07-14 | 2026-07-18 |  |  |  |
| PRO-R18-PW-DL-160 |  | Material Delivery & Site Inspection of Fire Hydrants for Potable Water Network | 26d | 2026-07-14 A | 2026-07-18 A | PRO-PW-1DL-120 | 100% |  |
|  | 4 | **Testing and Finishes** |  | 2026-10-13 | 2026-11-11 |  |  |  |
| PRO-R18-PW-DL-170 |  | Material Delivery & Site Inspection for Finishes of Potable Water Network | 26d | 2026-10-13 | 2026-11-11 | PRO-PW-1DL-130 |  | -213d |
|  | 9 | **Road 17 Local 1 ( 500 LM )** |  | 2025-05-17 | 2026-12-12 |  |  |  |
|  | 1 | **Main Line Sections** |  | 2025-05-17 | 2026-11-04 |  |  |  |
| PRO-R17-PW-DL-100 |  | Material Delivery & Site Inspection of Main Line Pipes for Potable Water Network | 26d | 2025-05-17 A | 2025-05-31 A | PRO-PW-1DL-100, PRO-R18-PW-DL-140 | 100% |  |
| PRO-R17-PW-DL-110 |  | Material Delivery & Site Inspection of Valves for Potable Water Network | 26d | 2026-10-06 | 2026-11-04 | PRO-PW-1DL-110, PRO-R18-PW-DL-150 |  | -242.5d |
|  | 3 | **Fire Hydrant** |  | 2026-07-14 | 2026-07-18 |  |  |  |
| PRO-R17-PW-DL-120 |  | Material Delivery & Site Inspection of Fire Hydrants for Potable Water Network | 26d | 2026-07-14 A | 2026-07-18 A | PRO-PW-1DL-120 SS, PRO-R18-PW-DL-160 SS | 100% |  |
|  | 4 | **Testing and Finishes** |  | 2026-11-12 | 2026-12-12 |  |  |  |
| PRO-R17-PW-DL-130 |  | Material Delivery & Site Inspection for Finishes of Potable Water Network | 26d | 2026-11-12 | 2026-12-12 | PRO-PW-1DL-130, PRO-R18-PW-DL-170 |  | -213d |
|  | 8 | **Road 16 Local 1 ( 527 LM )** |  | 2025-05-08 | 2027-01-11 |  |  |  |

| ID | WBS | Task | Duration | Start | Finish | Predecessors | Complete | Total float |
| --- | --- | --- | --- | --- | --- | --- | --- | --- |
|  | 1 | **Main Line Sections** |  | 2025-05-08 | 2026-11-04 |  |  |  |
| PRO-R16-PW-DL-100 |  | Material Delivery & Site Inspection of Main Line Pipes for Potable Water Network | 26d | 2025-05-08 A | 2025-05-29 A | PRO-PW-1DL-100, PRO-R17-PW-DL-100 | 100% |  |
| PRO-R16-PW-DL-110 |  | Material Delivery & Site Inspection of Valves for Potable Water Network | 26d | 2026-10-06 | 2026-11-04 | PRO-PW-1DL-110 SS, PRO-R17-PW-DL-110 SS |  | -242.5d |
|  | 3 | **Fire Hydrant** |  | 2026-07-14 | 2026-07-18 |  |  |  |
| PRO-R16-PW-DL-120 |  | Material Delivery & Site Inspection of Fire Hydrants for Potable Water Network | 26d | 2026-07-14 A | 2026-07-18 A | PRO-PW-1DL-120, PRO-R17-PW-DL-120 | 100% |  |
|  | 4 | **Testing and Finishes** |  | 2026-12-13 | 2027-01-11 |  |  |  |
| PRO-R16-PW-DL-130 |  | Material Delivery & Site Inspection for Finishes of Potable Water Network | 26d | 2026-12-13 | 2027-01-11 | PRO-PW-1DL-130, PRO-R17-PW-DL-130 |  | -213d |
|  | 7 | **Road 15 Local 1 ( 556 LM )** |  | 2025-05-12 | 2027-02-10 |  |  |  |
|  | 1 | **Main Line Sections** |  | 2025-05-12 | 2026-11-04 |  |  |  |
| PRO-R15-PW-DL-100 |  | Material Delivery & Site Inspection of Main Line Pipes for Potable Water Network | 26d | 2025-05-12 A | 2025-05-29 A | PRO-PW-1DL-100, PRO-R16-PW-DL-100 | 100% |  |
| PRO-R15-PW-DL-110 |  | Material Delivery & Site Inspection of Valves for Potable Water Network | 26d | 2026-10-06 | 2026-11-04 | PRO-PW-1DL-110 SS, PRO-R16-PW-DL-110 SS |  | -242.5d |
|  | 3 | **Fire Hydrant** |  | 2026-07-14 | 2026-07-18 |  |  |  |
| PRO-R15-PW-DL-120 |  | Material Delivery & Site Inspection of Fire Hydrants for Potable Water Network | 26d | 2026-07-14 A | 2026-07-18 A | PRO-PW-1DL-120, PRO-R16-PW-DL-120 SS | 100% |  |
|  | 4 | **Testing and Finishes** |  | 2027-01-12 | 2027-02-10 |  |  |  |
| PRO-R15-PW-DL-130 |  | Material Delivery & Site Inspection for Finishes of Potable Water Network | 26d | 2027-01-12 | 2027-02-10 | PRO-PW-1DL-130, PRO-R16-PW-DL-130 |  | -213d |
|  | 4 | **Road 10 Local 2 ( 2352 LM )** |  | 2025-05-30 | 2027-03-17 |  |  |  |
|  | 1 | **Main Line Sections** |  | 2025-05-30 | 2026-12-05 |  |  |  |
| PRO-R10-PW-DL-100 |  | Material Delivery & Site Inspection of Main Line Pipes for Potable Water Network | 26d | 2025-05-30 A | 2025-06-26 A | PRO-PW-1DL-100, PRO-R15-PW-DL-100 | 100% |  |
| PRO-R10-PW-DL-110 |  | Material Delivery & Site Inspection of Valves for Potable Water Network | 26d | 2025-12-13 A | 2026-12-05 | PRO-PW-1DL-110, PRO-R15-PW-DL-110 | 80% | -242.5d |
|  | 3 | **Fire Hydrant** |  | 2026-07-14 | 2026-07-18 |  |  |  |
| PRO-R10-PW-DL-120 |  | Material Delivery & Site Inspection of Fire Hydrants for Potable Water Network | 26d | 2026-07-14 A | 2026-07-18 A | PRO-PW-1DL-120, PRO-R15-PW-DL-120 | 100% |  |
|  | 4 | **Testing and Finishes** |  | 2027-02-11 | 2027-03-17 |  |  |  |
| PRO-R10-PW-DL-130 |  | Material Delivery & Site Inspection for Finishes of Potable Water Network | 26d | 2027-02-11 | 2027-03-17 | PRO-PW-1DL-130, PRO-R15-PW-DL-130 |  | -213d |
|  | 3 | **Road 14 Local 1 ( 584 LM )** |  | 2025-07-22 | 2026-12-05 |  |  |  |
|  | 1 | **Main Line Sections** |  | 2025-07-22 | 2026-12-05 |  |  |  |
| PRO-R14-PW-DL-100 |  | Material Delivery & Site Inspection of Main Line Pipes for Potable Water Network | 26d | 2025-07-22 A | 2025-08-04 A | PRO-PW-1DL-100, PRO-R10-PW-DL-100 | 100% |  |
| PRO-R14-PW-DL-110 |  | Material Delivery & Site Inspection of Valves for Potable Water Network | 26d | 2026-11-05 | 2026-12-05 | PRO-PW-1DL-110, PRO-R10-PW-DL-110 SS |  | -242.5d |
|  | 3 | **Fire Hydrant** |  | 2025-12-01 | 2026-07-18 |  |  |  |
| PRO-R14-PW-DL-120 |  | Material Delivery & Site Inspection of Fire Hydrants for Potable Water Network | 26d | 2025-12-01 A | 2026-07-18 A | PRO-PW-1DL-120, PRO-R10-PW-DL-120 SS | 100% |  |
|  | 4 | **Testing and Finishes** |  | 2025-12-01 | 2025-12-08 |  |  |  |
| PRO-R14-PW-DL-130 |  | Material Delivery & Site Inspection for Finishes of Potable Water Network | 26d | 2025-12-01 A | 2025-12-08 A | PRO-PW-1DL-130, PRO-R10-PW-DL-130 | 100% |  |
|  | 2 | **Road 09 Local 2 ( 2278 LM )** |  | 2025-11-01 | 2027-04-17 |  |  |  |
|  | 1 | **Main Line Sections** |  | 2025-11-01 | 2027-01-04 |  |  |  |
| PRO-R09-PW-DL-100 |  | Material Delivery & Site Inspection of Main Line Pipes for Potable Water Network | 26d | 2025-11-01 A | 2025-11-08 A | PRO-PW-1DL-100, PRO-R14-PW-DL-100 | 100% |  |
| PRO-R09-PW-DL-110 |  | Material Delivery & Site Inspection of Valves for Potable Water Network | 26d | 2026-12-06 | 2027-01-04 | PRO-PW-1DL-110, PRO-R14-PW-DL-110 |  | -242.5d |
|  | 3 | **Fire Hydrant** |  | 2026-07-14 | 2026-07-18 |  |  |  |
| PRO-R09-PW-DL-120 |  | Material Delivery & Site Inspection of Fire Hydrants for Potable Water Network | 26d | 2026-07-14 A | 2026-07-18 A | PRO-PW-1DL-120, PRO-R14-PW-DL-120 SS | 100% |  |
|  | 4 | **Testing and Finishes** |  | 2027-03-18 | 2027-04-17 |  |  |  |
| PRO-R09-PW-DL-130 |  | Material Delivery & Site Inspection for Finishes of Potable Water Network | 26d | 2027-03-18 | 2027-04-17 | PRO-PW-1DL-130, PRO-R14-PW-DL-130 |  | -213d |
|  | 5 | **Road 11 Local 1 ( 670 LM )** |  | 2025-08-02 | 2027-05-23 |  |  |  |
|  | 1 | **Main Line Sections** |  | 2025-08-02 | 2027-02-03 |  |  |  |
| PRO-R11-PW-DL-100 |  | Material Delivery & Site Inspection of Main Line Pipes for Potable Water Network | 26d | 2025-08-02 A | 2025-08-09 A | PRO-PW-1DL-100 | 100% |  |
| PRO-R11-PW-DL-110 |  | Material Delivery & Site Inspection of Valves for Potable Water Network | 26d | 2027-01-05 | 2027-02-03 | PRO-PW-1DL-110, PRO-R09-PW-DL-110 |  | -144d |
|  | 3 | **Fire Hydrant** |  | 2026-07-14 | 2026-07-18 |  |  |  |
| PRO-R11-PW-DL-120 |  | Material Delivery & Site Inspection of Fire Hydrants for Potable Water Network | 26d | 2026-07-14 A | 2026-07-18 A | PRO-PW-1DL-120, PRO-R09-PW-DL-120 | 100% |  |
|  | 4 | **Testing and Finishes** |  | 2027-04-18 | 2027-05-23 |  |  |  |
| PRO-R11-PW-DL-130 |  | Material Delivery & Site Inspection for Finishes of Potable Water Network | 26d | 2027-04-18 | 2027-05-23 | PRO-PW-1DL-130, PRO-R09-PW-DL-130 |  | -213d |
|  | IR | **Irrigation Network** |  | 2025-02-11 | 2026-10-28 |  |  |  |
|  | PO | **Issuance of Purchase Orders** |  | 2025-02-11 | 2025-02-17 |  |  |  |
|  | 1 | **Main Line Pipes** |  | 2025-02-11 | 2025-02-17 |  |  |  |
| PRO-IR-PO-100 |  | Issuance of Purchase Order for Main Line Pipes of Irrigation Network | 6d | 2025-02-11 A | 2025-02-17 A | ENG-MT-IR-ML-A-100, ENG-SH-IR-ML-A-110, ENG-MS-IR-ML-A-110 | 100% |  |
| PRO-IR-PO-110 |  | Issuance of Purchase Order for Valves of Irrigation Network | 6d | 2025-02-11 A | 2025-02-17 A | ENG-MT-IR-ML-A-110, ENG-SH-IR-ML-A-110, ENG-MS-IR-ML-A-110 | 100% |  |
|  | MF | **Manufacturing of Material** |  | 2025-02-18 | 2025-04-30 |  |  |  |
|  | 1 | **Main Line Pipes** |  | 2025-02-18 | 2025-04-30 |  |  |  |
| PRO-IR-MF-100 |  | Manufacturing of Main Line Pipes for Irrigation Network | 105d | 2025-02-18 A | 2025-04-30 A | PRO-IR-PO-100 | 100% |  |
| PRO-IR-MF-110 |  | Manufacturing of Valves for Irrigation Network | 119d | 2025-02-18 A | 2025-04-08 A | PRO-IR-PO-110 | 100% |  |
|  | 1DL | **1st Material Delivery & Site Inspection** |  | 2025-05-01 | 2026-10-12 |  |  |  |
|  | 1 | **Main Line Pipes** |  | 2025-05-01 | 2026-10-12 |  |  |  |
| PRO-IR-1DL-100 |  | 1ST Material Delivery for Main Line Pipes of Irrigation Network | 6d | 2025-05-01 A | 2025-05-10 A | PRO-IR-MF-100 | 100% |  |
| PRO-IR-1DL-110 |  | 1ST Material Delivery for Valves of Irrigation Network | 6d | 2026-10-06 | 2026-10-12 | PRO-IR-MF-110 |  | -219.5d |
|  | DL | **Material Delivery & Site Inspection** |  | 2025-05-03 | 2026-10-28 |  |  |  |
|  | 1 | **Road 18 Local 1 ( 479 LM )** |  | 2025-05-03 | 2026-10-13 |  |  |  |
|  | 1 | **Main Line Pipes** |  | 2025-05-03 | 2026-10-13 |  |  |  |
| PRO-R18-IR-DL-120 |  | Material Delivery & Site Inspection of Main Line Pipes for Irrigation Network | 16d | 2025-05-03 A | 2025-05-17 A | PRO-IR-1DL-100 | 100% |  |
| PRO-R18-IR-DL-130 |  | Material Delivery & Site Inspection of Valves for Irrigation Network | 7d | 2026-10-06 | 2026-10-13 | PRO-IR-1DL-110 SS |  | -219.5d |
|  | 9 | **Road 17 Local 1 ( 500 LM )** |  | 2025-05-05 | 2026-10-21 |  |  |  |
|  | 1 | **Main Line Pipes** |  | 2025-05-05 | 2026-10-21 |  |  |  |
| PRO-R17-IR-DL-100 |  | Material Delivery & Site Inspection of Main Line Pipes for Irrigation Network | 16d | 2025-05-05 A | 2025-05-20 A | PRO-IR-1DL-100, PRO-R18-IR-DL-120 | 100% |  |
| PRO-R17-IR-DL-110 |  | Material Delivery & Site Inspection of Valves for Irrigation Network | 7d | 2026-10-14 | 2026-10-21 | PRO-IR-1DL-110, PRO-R18-IR-DL-130 |  | -219.5d |
|  | 8 | **Road 16 Local 1 ( 527 LM )** |  | 2025-05-14 | 2026-10-21 |  |  |  |

| ID | WBS | Task | Duration | Start | Finish | Predecessors | Complete | Total float |
| --- | --- | --- | --- | --- | --- | --- | --- | --- |
|  | 1 | **Main Line Pipes** |  | 2025-05-14 | 2026-10-21 |  |  |  |
| PRO-R16-IR-DL-100 |  | Material Delivery & Site Inspection of Main Line Pipes for Irrigation Network | 16d | 2025-05-14 A | 2025-05-31 A | PRO-IR-1DL-100, PRO-R17-IR-DL-100 | 100% |  |
| PRO-R16-IR-DL-110 |  | Material Delivery & Site Inspection of Valves for Irrigation Network | 7d | 2026-10-14 | 2026-10-21 | PRO-IR-1DL-110, PRO-R17-IR-DL-110 SS |  | -219.5d |
|  | 7 | **Road 15 Local 1 ( 556 LM )** |  | 2025-05-13 | 2026-10-28 |  |  |  |
|  | 1 | **Main Line Pipes** |  | 2025-05-13 | 2026-10-28 |  |  |  |
| PRO-R15-IR-DL-100 |  | Material Delivery & Site Inspection of Main Line Pipes for Irrigation Network | 16d | 2025-05-13 A | 2025-05-29 A | PRO-IR-1DL-100, PRO-R16-IR-DL-100 | 100% |  |
| PRO-R15-IR-DL-110 |  | Material Delivery & Site Inspection of Valves for Irrigation Network | 6d | 2026-10-22 | 2026-10-28 | PRO-IR-1DL-110, PRO-R16-IR-DL-110 |  | -219.5d |
|  | 4 | **Road 10 Local 2 ( 2352 LM )** |  | 2025-06-19 | 2026-06-01 |  |  |  |
|  | 1 | **Main Line Pipes** |  | 2025-06-19 | 2026-06-01 |  |  |  |
| PRO-R19.2-IR-DL-100 |  | Material Delivery & Site Inspection of Main Line Pipes for Irrigation Network | 16d | 2025-06-19 A | 2025-07-08 A | PRO-IR-1DL-100, PRO-R15-IR-DL-100 | 100% |  |
| PRO-R19.2-IR-DL-110 |  | Material Delivery & Site Inspection of Valves for Irrigation Network | 16d | 2025-12-11 A | 2026-06-01 A | PRO-IR-1DL-110, PRO-R15-IR-DL-110 | 100% |  |
|  | 6 | **Road 14 Local 1 ( 584 LM )** |  | 2026-05-19 | 2026-06-01 |  |  |  |
|  | 1 | **Main Line Pipes** |  | 2026-05-19 | 2026-06-01 |  |  |  |
| PRO-R14-IR-DL-100 |  | Material Delivery & Site Inspection of Main Line Pipes for Irrigation Network | 16d | 2026-05-19 A | 2026-06-01 A | PRO-IR-1DL-100, PRO-R19.2-IR-DL-100 | 100% |  |
| PRO-R14-IR-DL-110 |  | Material Delivery & Site Inspection of Valves for Irrigation Network | 16d | 2026-05-21 A | 2026-06-01 A | PRO-IR-1DL-110, PRO-R19.2-IR-DL-110 SS | 100% |  |
|  | 2 | **Road 09 Local 2 ( 2278 LM )** |  | 2026-05-21 | 2026-06-02 |  |  |  |
|  | 1 | **Main Line Pipes** |  | 2026-05-21 | 2026-06-02 |  |  |  |
| PRO-R09-IR-DL-100 |  | Material Delivery & Site Inspection of Main Line Pipes for Irrigation Network | 16d | 2026-05-21 A | 2026-06-02 A | PRO-IR-1DL-100, PRO-R14-IR-DL-100 | 100% |  |
| PRO-R09-IR-DL-110 |  | Material Delivery & Site Inspection of Valves for Irrigation Network | 16d | 2026-05-21 A | 2026-06-02 A | PRO-IR-1DL-110, PRO-R14-IR-DL-110 | 100% |  |
|  | 5 | **Road 11 Local 1 ( 670 LM )** |  | 2026-05-19 | 2026-06-01 |  |  |  |
|  | 1 | **Main Line Pipes** |  | 2026-05-19 | 2026-06-01 |  |  |  |
| PRO-R11-IR-DL-150 |  | Material Delivery & Site Inspection of Valves for Irrigation Network | 16d | 2026-05-19 A | 2026-06-01 A | PRO-IR-1DL-110, PRO-R09-IR-DL-110 | 100% |  |
| PRO-R11-IR-DL-140 |  | Material Delivery & Site Inspection of Main Line Pipes for Irrigation Network | 16d | 2026-05-20 A | 2026-06-01 A | PRO-IR-1DL-100, PRO-R09-IR-DL-100 | 100% |  |
|  | MV | **Medium Voltage Network** |  | 2025-02-11 | 2027-07-15 |  |  |  |
|  | PO | **Issuance of Purchase Orders** |  | 2025-02-11 | 2025-03-10 |  |  |  |
|  | 1 | **Cabling Works** |  | 2025-02-11 | 2025-02-25 |  |  |  |
| PRO-MV-PO-100 |  | Issuance of Purchase Order for Medium Voltage Cables of Medium Voltage Network | 12d | 2025-02-11 A | 2025-02-25 A | ENG-MT-MV-ML-A-100, ENG-SH-MV-A-110, ENG-MS-MV-A-110 | 100% |  |
|  | 2 | **RMU Concrete Works** |  | 2025-02-21 | 2025-03-10 |  |  |  |
| PRO-MV-PO-110 |  | Issuance of Purchase Order for RMU Concrete Foundations of Medium Voltage Network | 12d | 2025-02-21 A | 2025-03-10 A | ENG-MT-MV-SS-A-100, ENG-SH-MV-A-110, ENG-MS-MV-A-110 | 100% |  |
|  | 3 | **Termination and Testing Works** |  | 2025-02-11 | 2025-02-25 |  |  |  |
| PRO-MV-PO-120 |  | Issuance of Purchase Order for Termination and Joints Kits of Medium Voltage Network | 12d | 2025-02-11 A | 2025-02-25 A | ENG-MT-MV-TF-A-100, ENG-SH-MV-A-110, ENG-MS-MV-A-110 | 100% |  |
|  | MF | **Manufacturing of Material** |  | 2025-02-26 | 2025-07-15 |  |  |  |
|  | 1 | **Cabling Works** |  | 2025-02-26 | 2025-04-30 |  |  |  |
| PRO-MV-MF-100 |  | Manufacturing of Medium Voltage Cables for Medium Voltage Network | 52d | 2025-02-26 A | 2025-04-30 A | PRO-MV-PO-100 | 100% |  |
|  | 2 | **RMU Concrete Works** |  | 2025-03-11 | 2025-07-15 |  |  |  |
| PRO-MV-MF-120 |  | Manufacturing of RMU Concrete Foundations for Medium Voltage Network | 160d | 2025-03-11 A | 2025-07-15 A | PRO-MV-PO-110 | 100% |  |
|  | 3 | **Termination and Testing Works** |  | 2025-02-26 | 2025-04-29 |  |  |  |
| PRO-MV-MF-110 |  | Manufacturing of Termination and Joints Kits for Medium Voltage Network | 52d | 2025-02-26 A | 2025-04-29 A | PRO-MV-PO-120 | 100% |  |
|  | 1DL | **1st Material Delivery & Site Inspection** |  | 2025-05-01 | 2026-12-05 |  |  |  |
|  | 1 | **Cabling Works** |  | 2025-05-01 | 2025-05-15 |  |  |  |
| PRO-MV-1DL-100 |  | 1ST Material Delivery for Medium Voltage Cables of Medium Voltage Network | 12d | 2025-05-01 A | 2025-05-15 A | PRO-MV-MF-100 | 100% |  |
|  | 2 | **RMU Concrete Works** |  | 2026-10-06 | 2026-12-05 |  |  |  |
| PRO-MV-1DL-110 |  | 1ST Material Delivery for RMU Concrete Foundations of Medium Voltage Network | 52d | 2026-10-06 | 2026-12-05 | PRO-MV-MF-120 |  | -131d |
|  | 3 | **Termination and Testing Works** |  | 2026-10-06 | 2026-11-04 |  |  |  |
| PRO-MV-1DL-120 |  | 1ST Material Delivery for Termination and Joints Kits of Medium Voltage Network | 26d | 2026-10-06 | 2026-11-04 | PRO-MV-MF-110, PRO-MV-1DL-100 FF |  | -245d |
|  | DL | **Material Delivery & Site Inspection** |  | 2025-05-16 | 2027-07-15 |  |  |  |
|  | 1 | **Road 18 Local 1 ( 479 LM )** |  | 2025-05-16 | 2026-12-05 |  |  |  |
|  | 1 | **Cabling Works** |  | 2025-05-16 | 2025-05-27 |  |  |  |
| PRO-R18-MV-DL-120 |  | Material Delivery & Site Inspection of Medium Voltage Cables for Medium Voltage Network | 26d | 2025-05-16 A | 2025-05-27 A | PRO-MV-1DL-100 | 100% |  |
|  | 3 | **Termination and Testing Works** |  | 2026-11-05 | 2026-12-05 |  |  |  |
| PRO-R18-MV-DL-130 |  | Material Delivery & Site Inspection of Termination and Joints Kits for Medium Voltage Network | 26d | 2026-11-05 | 2026-12-05 | PRO-MV-1DL-120, PRO-R18-MV-DL-120 |  | -245d |
|  | 9 | **Road 17 Local 1 ( 500 LM )** |  | 2025-05-16 | 2027-02-17 |  |  |  |
|  | 1 | **Cabling Works** |  | 2025-05-16 | 2025-05-27 |  |  |  |
| PRO-R17-MV-DL-100 |  | Material Delivery & Site Inspection of Medium Voltage Cables for Medium Voltage Network | 26d | 2025-05-16 A | 2025-05-27 A | PRO-MV-1DL-100, PRO-R18-MV-DL-120 | 100% |  |
|  | 2 | **RMU Concrete Works** |  | 2027-01-05 | 2027-02-17 |  |  |  |
| PRO-R17-MV-DL-120 |  | Material Delivery & Site Inspection of RMU Concrete Foundations for Medium Voltage Network | 38d | 2027-01-05 | 2027-02-17 | PRO-MV-1DL-110, PRO-R10-MV-DL-120 |  | -131d |
|  | 3 | **Termination and Testing Works** |  | 2026-12-06 | 2027-01-04 |  |  |  |
| PRO-R17-MV-DL-110 |  | Material Delivery & Site Inspection of Termination and Joints Kits for Medium Voltage Network | 26d | 2026-12-06 | 2027-01-04 | PRO-MV-1DL-120, PRO-R18-MV-DL-130 |  | -245d |
|  | 3 | **Road 16 Local 1 ( 527 LM )** |  | 2025-05-16 | 2027-02-03 |  |  |  |
|  | 1 | **Cabling Works** |  | 2025-05-16 | 2025-05-29 |  |  |  |
| PRO-R16-MV-DL-100 |  | Material Delivery & Site Inspection of Medium Voltage Cables for Medium Voltage Network | 26d | 2025-05-16 A | 2025-05-29 A | PRO-MV-1DL-100, PRO-R17-MV-DL-100 | 100% |  |
|  | 3 | **Termination and Testing Works** |  | 2027-01-05 | 2027-02-03 |  |  |  |
| PRO-R16-MV-DL-110 |  | Material Delivery & Site Inspection of Termination and Joints Kits for Medium Voltage Network | 26d | 2027-01-05 | 2027-02-03 | PRO-MV-1DL-120, PRO-R17-MV-DL-110 |  | -245d |
|  | 7 | **Road 15 Local 1 ( 556 LM )** |  | 2025-05-16 | 2027-03-07 |  |  |  |
|  | 1 | **Cabling Works** |  | 2025-05-16 | 2025-05-29 |  |  |  |
| PRO-R15-MV-DL-100 |  | Material Delivery & Site Inspection of Medium Voltage Cables for Medium Voltage Network | 26d | 2025-05-16 A | 2025-05-29 A | PRO-MV-1DL-100, PRO-R16-MV-DL-100 | 100% |  |
|  | 3 | **Termination and Testing Works** |  | 2027-02-04 | 2027-03-07 |  |  |  |
| PRO-R15-MV-DL-110 |  | Material Delivery & Site Inspection of Termination and Joints Kits for Medium Voltage Network | 26d | 2027-02-04 | 2027-03-07 | PRO-MV-1DL-120, PRO-R16-MV-DL-110 |  | -245d |
|  | 4 | **Road 10 Local 2 ( 2352 LM )** |  | 2025-11-01 | 2027-04-10 |  |  |  |
|  | 1 | **Cabling Works** |  | 2025-11-01 | 2025-11-09 |  |  |  |

| ID | WBS | Task | Duration | Start | Finish | Predecessors | Complete | Total float |
| --- | --- | --- | --- | --- | --- | --- | --- | --- |
| PRO-R10-MV-DL-100 |  | Material Delivery & Site Inspection of Medium Voltage Cables for Medium Voltage Network | 26d | 2025-11-01 A | 2025-11-09 A | PRO-MV-1DL-100, PRO-R15-MV-DL-100 | 100% |  |
|  | 2 | **RMU Concrete Works** |  | 2026-12-06 | 2027-01-04 |  |  |  |
| PRO-R10-MV-DL-120 |  | Material Delivery & Site Inspection of RMU Concrete Foundations for Medium Voltage Network | 26d | 2026-12-06 | 2027-01-04 | PRO-MV-1DL-110, PRO-R11-MV-DL-100 FF |  | -131d |
|  | 3 | **Termination and Testing Works** |  | 2027-03-08 | 2027-04-10 |  |  |  |
| PRO-R10-MV-DL-110 |  | Material Delivery & Site Inspection of Termination and Joints Kits for Medium Voltage Network | 26d | 2027-03-08 | 2027-04-10 | PRO-MV-1DL-120, PRO-R15-MV-DL-110 |  | -245d |
|  | 6 | **Road 14 Local 1 ( 584 LM )** |  | 2025-08-16 | 2027-05-10 |  |  |  |
|  | 1 | **Cabling Works** |  | 2025-08-16 | 2025-08-16 |  |  |  |
| PRO-R14-MV-DL-100 |  | Material Delivery & Site Inspection of Medium Voltage Cables for Medium Voltage Network | 26d | 2025-08-16 A | 2025-08-16 A | PRO-MV-1DL-100 | 100% |  |
|  | 3 | **Termination and Testing Works** |  | 2027-04-11 | 2027-05-10 |  |  |  |
| PRO-R14-MV-DL-110 |  | Material Delivery & Site Inspection of Termination and Joints Kits for Medium Voltage Network | 26d | 2027-04-11 | 2027-05-10 | PRO-MV-1DL-120, PRO-R10-MV-DL-110 |  | -245d |
|  | 2 | **Road 09 Local 2 ( 2278 LM )** |  | 2025-12-13 | 2027-06-15 |  |  |  |
|  | 1 | **Cabling Works** |  | 2025-12-13 | 2026-11-04 |  |  |  |
| PRO-R09-MV-DL-100 |  | Material Delivery & Site Inspection of Medium Voltage Cables for Medium Voltage Network | 26d | 2025-12-13 A | 2026-11-04 | PRO-MV-1DL-100, PRO-R14-MV-DL-100 | 90% | -165d |
|  | 3 | **Termination and Testing Works** |  | 2027-05-11 | 2027-06-15 |  |  |  |
| PRO-R09-MV-DL-110 |  | Material Delivery & Site Inspection of Termination and Joints Kits for Medium Voltage Network | 26d | 2027-05-11 | 2027-06-15 | PRO-MV-1DL-120, PRO-R14-MV-DL-110 |  | -245d |
|  | 5 | **Road 11 Local 1 ( 670 LM )** |  | 2026-07-22 | 2027-07-15 |  |  |  |
|  | 1 | **Cabling Works** |  | 2026-07-22 | 2026-08-13 |  |  |  |
| PRO-R11-MV-DL-100 |  | Material Delivery & Site Inspection of Medium Voltage Cables for Medium Voltage Network | 26d | 2026-07-22 A | 2026-08-13 A | PRO-MV-1DL-100, PRO-R09-MV-DL-100 | 100% |  |
|  | 3 | **Termination and Testing Works** |  | 2027-06-16 | 2027-07-15 |  |  |  |
| PRO-R11-MV-DL-110 |  | Material Delivery & Site Inspection of Termination and Joints Kits for Medium Voltage Network | 26d | 2027-06-16 | 2027-07-15 | PRO-MV-1DL-120, PRO-R09-MV-DL-110 |  | -245d |
|  | SL | **Street Lighting Network** |  | 2025-02-11 | 2027-07-08 |  |  |  |
|  | PO | **Issuance of Purchase Orders** |  | 2025-02-11 | 2025-05-31 |  |  |  |
|  | 1 | **Cabling Works** |  | 2025-02-11 | 2025-02-17 |  |  |  |
| PRO-SL-PO-100 |  | Issuance of Purchase Order for Lighting Cables of Street Lighting Network | 6d | 2025-02-11 A | 2025-02-17 A | ENG-MT-SL-ML-A-100, ENG-SH-SL-A-110, ENG-MS-SL-A-110 | 100% |  |
|  | 2 | **Lighting Poles Works** |  | 2025-02-11 | 2025-05-20 |  |  |  |
| PRO-SL-PO-110 |  | Issuance of Purchase Order for Lighting Poles Foundations of Street Lighting Network | 12d | 2025-02-11 A | 2025-02-25 A | ENG-MT-SL-A-100, ENG-SH-SL-A-110, ENG-MS-SL-A-110 | 100% |  |
| PRO-SL-PO-120 |  | Issuance of Purchase Order for Lighting Poles of Street Lighting Network | 12d | 2025-02-11 A | 2025-02-25 A | ENG-MT-SL-A-110, ENG-SH-SL-A-110, ENG-MS-SL-A-110 | 100% |  |
| PRO-SL-PO-140 |  | Issuance of Purchase Order for Lighting Fixtures of Street Lighting Network | 12d | 2025-02-26 A | 2025-05-20 A | ENG-MT-SL-A-120, ENG-SH-SL-A-110, ENG-MS-SL-A-110, PRO-SL-PO-120 | 100% |  |
|  | 3 | **Distribution Panel Board** |  | 2025-05-07 | 2025-05-31 |  |  |  |
| PRO-SL-PO-160 |  | Issuance of Purchase Order for Distrubution Panel Boards of Street Lighting Network | 10d | 2025-05-07 A | 2025-05-31 A | ENG-MT-SL-DB-A-100, ENG-SH-SL-A-110, ENG-MS-SL-A-110, PRO-SL-PO-140 | 100% |  |
|  | 4 | **Earthing System Works** |  | 2025-05-21 | 2025-05-31 |  |  |  |
| PRO-SL-PO-150 |  | Issuance of Purchase Order for Lighting Earthing of Street Lighting Network | 10d | 2025-05-21 A | 2025-05-31 A | ENG-MT-SL-ES-A-100, ENG-SH-SL-A-110, ENG-MS-SL-A-110, PRO-SL-PO-170 SS | 100% |  |
|  | 5 | **Termination and Testing Works** |  | 2025-05-12 | 2025-05-29 |  |  |  |
| PRO-SL-PO-170 |  | Issuance of Purchase Order for Cable Lugs of Street Lighting Network | 10d | 2025-05-12 A | 2025-05-18 A | ENG-MT-SL-TF-A-110, ENG-SH-SL-A-110, ENG-MS-SL-A-110, PRO-SL-PO-130 SS | 100% |  |
| PRO-SL-PO-130 |  | Issuance of Purchase Order for Fuse Boxes of Street Lighting Network | 10d | 2025-05-20 A | 2025-05-29 A | ENG-MT-SL-TF-A-100, ENG-SH-SL-A-110, ENG-MS-SL-A-110, PRO-SL-PO-160 SS | 100% |  |
|  | MF | **Manufacturing of Material** |  | 2025-02-18 | 2026-08-30 |  |  |  |
|  | 1 | **Cabling Works** |  | 2025-02-18 | 2025-05-31 |  |  |  |
| PRO-SL-MF-100 |  | Manufacturing of Lighting Cables for Street Lighting Network | 60d | 2025-02-18 A | 2025-05-31 A | PRO-SL-PO-100 | 100% |  |
|  | 2 | **Lighting Poles Works** |  | 2025-02-26 | 2025-06-01 |  |  |  |
| PRO-SL-MF-110 |  | Manufacturing of Lighting Poles Foundations for Street Lighting Network | 60d | 2025-02-26 A | 2025-04-16 A | PRO-SL-PO-110 | 100% |  |
| PRO-SL-MF-120 |  | Manufacturing of Lighting Poles for Street Lighting Network | 60d | 2025-02-26 A | 2025-04-30 A | PRO-SL-PO-120 | 100% |  |
| PRO-SL-MF-140 |  | Manufacturing of Lighting Fixtures for Street Lighting Network | 60d | 2025-04-30 A | 2025-06-01 A | PRO-SL-PO-140, PRO-SL-MF-120 | 100% |  |
|  | 3 | **Distribution Panel Board** |  | 2026-08-25 | 2026-08-30 |  |  |  |
| PRO-SL-MF-160 |  | Manufacturing of Distrubution Panel Boards for Street Lighting Network | 16d | 2026-08-25 A | 2026-08-30 A | PRO-SL-PO-160, PRO-SL-MF-140 FF | 100% |  |
|  | 4 | **Earthing System Works** |  | 2026-08-25 | 2026-08-30 |  |  |  |
| PRO-SL-MF-150 |  | Manufacturing of Lighting Earthing for Street Lighting Network | 26d | 2026-08-25 A | 2026-08-30 A | PRO-SL-PO-150, PRO-SL-MF-170 FF | 100% |  |
|  | 5 | **Termination and Testing Works** |  | 2026-08-25 | 2026-08-30 |  |  |  |
| PRO-SL-MF-130 |  | Manufacturing of Fuse Boxes for Street Lighting Network | 6d | 2026-08-25 A | 2026-08-30 A | PRO-SL-PO-130, PRO-SL-MF-160 FF | 100% |  |
| PRO-SL-MF-170 |  | Manufacturing of Cable Lugs for Street Lighting Network | 12d | 2026-08-25 A | 2026-08-30 A | PRO-SL-PO-170, PRO-SL-MF-130 FF | 100% |  |
|  | 1DL | **1st Material Delivery & Site Inspection** |  | 2025-04-17 | 2026-10-22 |  |  |  |
|  | 1 | **Cabling Works** |  | 2025-06-01 | 2025-06-10 |  |  |  |
| PRO-SL-1DL-100 |  | 1ST Material Delivery for Lighting Cables of Street Lighting Network | 6d | 2025-06-01 A | 2025-06-10 A | PRO-SL-MF-100 | 100% |  |
|  | 2 | **Lighting Poles Works** |  | 2025-04-17 | 2026-10-12 |  |  |  |
| PRO-SL-1DL-110 |  | 1ST Material Delivery for Lighting Poles Foundations of Street Lighting Network | 6d | 2025-04-17 A | 2025-04-27 A | PRO-SL-MF-110 | 100% |  |
| PRO-SL-1DL-120 |  | 1ST Material Delivery for Lighting Poles of Street Lighting Network | 6d | 2025-09-01 A | 2025-09-08 A | PRO-SL-MF-120 | 100% |  |
| PRO-SL-1DL-140 |  | 1ST Material Delivery for Lighting Fixtures of Street Lighting Network | 6d | 2026-10-06 | 2026-10-12 | PRO-SL-MF-140 |  | -274d |
|  | 3 | **Distribution Panel Board** |  | 2026-10-06 | 2026-10-12 |  |  |  |
| PRO-SL-1DL-160 |  | 1ST Material Delivery for Distrubution Panel Boards of Street Lighting Network | 6d | 2026-10-06 | 2026-10-12 | PRO-SL-MF-160 |  | -108d |
|  | 5 | **Termination and Testing Works** |  | 2026-10-06 | 2026-10-22 |  |  |  |
| PRO-SL-1DL-130 |  | 1ST Material Delivery for Fuse Boxes of Street Lighting Network | 6d | 2026-10-06 | 2026-10-12 | PRO-SL-MF-130 |  | -268d |
| PRO-SL-1DL-170 |  | 1ST Material Delivery for Cable Lugs of Street Lighting Network | 15d | 2026-10-06 | 2026-10-22 | PRO-SL-MF-170 |  | -269d |
|  | 4 | **Earthing System Works** |  | 2026-10-06 | 2026-10-12 |  |  |  |
| PRO-SL-1DL-150 |  | 1ST Material Delivery for Lighting Earthing of Street Lighting Network | 6d | 2026-10-06 | 2026-10-12 | PRO-SL-MF-150 |  | -123d |
|  | DL | **Material Delivery & Site Inspection** |  | 2025-06-11 | 2027-07-08 |  |  |  |
|  | 1 | **Road 18 Local 1 ( 479 LM )** |  | 2025-06-11 | 2026-11-28 |  |  |  |
|  | 1 | **Cabling Works** |  | 2025-06-11 | 2025-06-30 |  |  |  |
| PRO-R18-SL-DL-180 |  | Material Delivery & Site Inspection of Lighting Cables for Street Lighting Network | 26d | 2025-06-11 A | 2025-06-30 A | PRO-SL-1DL-100 | 100% |  |
|  | 2 | **Lighting Poles Works** |  | 2025-07-01 | 2026-10-24 |  |  |  |
| PRO-R18-SL-DL-190 |  | Material Delivery & Site Inspection of Lighting Poles Foundations for Street Lighting Network | 26d | 2025-07-01 A | 2025-07-10 A | PRO-SL-1DL-110, PRO-R18-SL-DL-180 | 100% |  |
| PRO-R18-SL-DL-200 |  | Material Delivery & Site Inspection of Lighting Poles for Street Lighting Network | 26d | 2025-09-09 A | 2025-09-09 A | PRO-SL-1DL-120, PRO-R18-SL-DL-190 | 100% |  |

| ID | WBS | Task | Duration | Start | Finish | Predecessors | Complete | Total float |
| --- | --- | --- | --- | --- | --- | --- | --- | --- |
| PRO-R18-SL-DL-220 |  | Material Delivery & Site Inspection of Lighting Fixtures for Street Lighting Network | 10d | 2026-10-13 | 2026-10-24 | PRO-SL-1DL-140, PRO-R18-SL-DL-200 |  | -274d |
|  | 3 | **Distribution Panel Board** |  |  |  |  |  |  |
|  | 4 | **Termination and Testing Works** |  | 2026-10-13 | 2026-11-28 |  |  |  |
| PRO-R18-SL-DL-210 |  | Material Delivery & Site Inspection of Fuse Boxes for Street Lighting Network | 14d | 2026-10-13 | 2026-10-28 | PRO-SL-1DL-130 SS, PRO-R18-SL-DL-220 SS |  | -274d |
| PRO-R18-SL-DL-250 |  | Material Delivery & Site Inspection of Cable Lugs for Street Lighting Network | 26d | 2026-10-29 | 2026-11-28 | PRO-SL-1DL-170, PRO-R18-SL-DL-210 |  | -274d |
|  | 5 | **Earthing System Works** |  |  |  |  |  |  |
|  | 9 | **Road 17 Local 1 ( 500 LM )** |  | 2025-06-11 | 2026-12-28 |  |  |  |
|  | 1 | **Cabling Works** |  | 2025-06-11 | 2025-06-30 |  |  |  |
| PRO-R17-SL-DL-100 |  | Material Delivery & Site Inspection of Lighting Cables for Street Lighting Network | 26d | 2025-06-11 A | 2025-06-30 A | PRO-SL-1DL-100, PRO-R18-SL-DL-180 | 100% |  |
|  | 2 | **Lighting Poles Works** |  | 2025-07-11 | 2026-11-23 |  |  |  |
| PRO-R17-SL-DL-110 |  | Material Delivery & Site Inspection of Lighting Poles Foundations for Street Lighting Network | 26d | 2025-07-11 A | 2025-07-20 A | PRO-SL-1DL-110, PRO-R18-SL-DL-190 | 100% |  |
| PRO-R17-SL-DL-120 |  | Material Delivery & Site Inspection of Lighting Poles for Street Lighting Network | 26d | 2025-09-10 A | 2025-09-10 A | PRO-SL-1DL-120, PRO-R18-SL-DL-200 | 100% |  |
| PRO-R17-SL-DL-140 |  | Material Delivery & Site Inspection of Lighting Fixtures for Street Lighting Network | 26d | 2026-10-25 | 2026-11-23 | PRO-SL-1DL-140, PRO-R18-SL-DL-220 |  | -247.5d |
|  | 3 | **Distribution Panel Board** |  |  |  |  |  |  |
|  | 4 | **Termination and Testing Works** |  | 2026-10-13 | 2026-12-28 |  |  |  |
| PRO-R17-SL-DL-130 |  | Material Delivery & Site Inspection of Fuse Boxes for Street Lighting Network | 26d | 2026-10-13 | 2026-11-11 | PRO-SL-1DL-130, PRO-R18-SL-DL-210 SS |  | -225.5d |
| PRO-R17-SL-DL-170 |  | Material Delivery & Site Inspection of Cable Lugs for Street Lighting Network | 26d | 2026-11-29 | 2026-12-28 | PRO-SL-1DL-170, PRO-R18-SL-DL-250 |  | -274d |
|  | 5 | **Earthing System Works** |  |  |  |  |  |  |
|  | 8 | **Road 16 Local 1 ( 527 LM )** |  | 2025-06-11 | 2027-01-27 |  |  |  |
|  | 1 | **Cabling Works** |  | 2025-06-11 | 2025-06-30 |  |  |  |
| PRO-R16-SL-DL-100 |  | Material Delivery & Site Inspection of Lighting Cables for Street Lighting Network | 26d | 2025-06-11 A | 2025-06-30 A | PRO-SL-1DL-100, PRO-R17-SL-DL-100 FF | 100% |  |
|  | 2 | **Lighting Poles Works** |  | 2025-09-01 | 2026-12-23 |  |  |  |
| PRO-R16-SL-DL-110 |  | Material Delivery & Site Inspection of Lighting Poles Foundations for Street Lighting Network | 26d | 2025-09-01 A | 2025-09-02 A | PRO-SL-1DL-110, PRO-R17-SL-DL-110 | 100% |  |
| PRO-R16-SL-DL-120 |  | Material Delivery & Site Inspection of Lighting Poles for Street Lighting Network | 26d | 2025-09-11 A | 2025-09-11 A | PRO-SL-1DL-120, PRO-R17-SL-DL-120 | 100% |  |
| PRO-R16-SL-DL-140 |  | Material Delivery & Site Inspection of Lighting Fixtures for Street Lighting Network | 26d | 2026-11-24 | 2026-12-23 | PRO-SL-1DL-140, PRO-R17-SL-DL-140 |  | -247.5d |
|  | 3 | **Distribution Panel Board** |  |  |  |  |  |  |
|  | 4 | **Termination and Testing Works** |  | 2026-10-13 | 2027-01-27 |  |  |  |
| PRO-R16-SL-DL-130 |  | Material Delivery & Site Inspection of Fuse Boxes for Street Lighting Network | 26d | 2026-10-13 | 2026-11-11 | PRO-SL-1DL-130 SS, PRO-R17-SL-DL-130 SS |  | -225.5d |
| PRO-R16-SL-DL-170 |  | Material Delivery & Site Inspection of Cable Lugs for Street Lighting Network | 26d | 2026-12-29 | 2027-01-27 | PRO-SL-1DL-170, PRO-R17-SL-DL-170 |  | -274d |
|  | 5 | **Earthing System Works** |  |  |  |  |  |  |
|  | 7 | **Road 15 Local 1 ( 556 LM )** |  | 2025-06-11 | 2027-02-28 |  |  |  |
|  | 1 | **Cabling Works** |  | 2025-06-11 | 2025-06-30 |  |  |  |
| PRO-R15-SL-DL-100 |  | Material Delivery & Site Inspection of Lighting Cables for Street Lighting Network | 26d | 2025-06-11 A | 2025-06-30 A | PRO-SL-1DL-100, PRO-R16-SL-DL-100 FF | 100% |  |
|  | 2 | **Lighting Poles Works** |  | 2025-07-28 | 2026-12-23 |  |  |  |
| PRO-R15-SL-DL-110 |  | Material Delivery & Site Inspection of Lighting Poles Foundations for Street Lighting Network | 26d | 2025-07-28 A | 2025-08-03 A | PRO-SL-1DL-110 | 100% |  |
| PRO-R15-SL-DL-120 |  | Material Delivery & Site Inspection of Lighting Poles for Street Lighting Network | 26d | 2025-09-13 A | 2025-09-13 A | PRO-SL-1DL-120, PRO-R16-SL-DL-120 | 100% |  |
| PRO-R15-SL-DL-140 |  | Material Delivery & Site Inspection of Lighting Fixtures for Street Lighting Network | 26d | 2026-11-24 | 2026-12-23 | PRO-SL-1DL-140, PRO-R16-SL-DL-140 SS |  | -247.5d |
|  | 3 | **Distribution Panel Board** |  |  |  |  |  |  |
|  | 4 | **Termination and Testing Works** |  | 2026-11-12 | 2027-02-28 |  |  |  |
| PRO-R15-SL-DL-130 |  | Material Delivery & Site Inspection of Fuse Boxes for Street Lighting Network | 26d | 2026-11-12 | 2026-12-12 | PRO-SL-1DL-130, PRO-R16-SL-DL-130 |  | -225.5d |
| PRO-R15-SL-DL-170 |  | Material Delivery & Site Inspection of Cable Lugs for Street Lighting Network | 26d | 2027-01-28 | 2027-02-28 | PRO-SL-1DL-170, PRO-R16-SL-DL-170 |  | -274d |
|  | 5 | **Earthing System Works** |  |  |  |  |  |  |
|  | 4 | **Road 10 Local 2 ( 2352 LM )** |  | 2025-06-15 | 2027-04-03 |  |  |  |
|  | 1 | **Cabling Works** |  | 2025-06-15 | 2025-06-30 |  |  |  |
| PRO-R10-SL-DL-100 |  | Material Delivery & Site Inspection of Lighting Cables for Street Lighting Network | 26d | 2025-06-15 A | 2025-06-30 A | PRO-SL-1DL-100, PRO-R15-SL-DL-100 FF | 100% |  |
|  | 2 | **Lighting Poles Works** |  | 2026-08-27 | 2027-01-23 |  |  |  |
| PRO-R10-SL-DL-110 |  | Material Delivery & Site Inspection of Lighting Poles Foundations for Street Lighting Network | 26d | 2026-08-27 A | 2026-08-29 A | PRO-SL-1DL-110, PRO-R15-SL-DL-110 | 100% |  |
| PRO-R10-SL-DL-120 |  | Material Delivery & Site Inspection of Lighting Poles for Street Lighting Network | 26d | 2026-08-27 A | 2026-08-29 A | PRO-SL-1DL-120, PRO-R15-SL-DL-120 | 100% |  |
| PRO-R10-SL-DL-140 |  | Material Delivery & Site Inspection of Lighting Fixtures for Street Lighting Network | 26d | 2026-12-24 | 2027-01-23 | PRO-SL-1DL-140, PRO-R15-SL-DL-140 |  | -247.5d |
|  | 3 | **Distribution Panel Board** |  | 2026-09-21 | 2026-11-11 |  |  |  |
| PRO-R10-SL-DL-160 |  | Material Delivery & Site Inspection of Distrubution Panel Boards for Street Lighting Network | 26d | 2026-09-21 A | 2026-11-11 | PRO-SL-1DL-160 | 80% | -108d |
|  | 4 | **Termination and Testing Works** |  | 2026-09-21 | 2027-04-03 |  |  |  |
| PRO-R10-SL-DL-130 |  | Material Delivery & Site Inspection of Fuse Boxes for Street Lighting Network | 26d | 2026-09-21 A | 2027-01-11 | PRO-SL-1DL-130, PRO-R15-SL-DL-130 | 80% | -225.5d |
| PRO-R10-SL-DL-170 |  | Material Delivery & Site Inspection of Cable Lugs for Street Lighting Network | 26d | 2026-09-21 A | 2027-04-03 | PRO-SL-1DL-170, PRO-R15-SL-DL-170 | 80% | -274d |
|  | 5 | **Earthing System Works** |  | 2026-10-13 | 2026-11-11 |  |  |  |
| PRO-R10-SL-DL-150 |  | Material Delivery & Site Inspection of Lighting Earthing for Street Lighting Network | 26d | 2026-10-13 | 2026-11-11 | PRO-SL-1DL-150 |  | -123d |
|  | 6 | **Road 14 Local 1 ( 584 LM )** |  | 2025-11-01 | 2027-05-03 |  |  |  |
|  | 1 | **Cabling Works** |  | 2025-11-01 | 2025-11-04 |  |  |  |
| PRO-R14-SL-DL-100 |  | Material Delivery & Site Inspection of Lighting Cables for Street Lighting Network | 26d | 2025-11-01 A | 2025-11-04 A | PRO-SL-1DL-100, PRO-R10-SL-DL-100 | 100% |  |
|  | 2 | **Lighting Poles Works** |  | 2026-08-26 | 2027-02-23 |  |  |  |
| PRO-R14-SL-DL-110 |  | Material Delivery & Site Inspection of Lighting Poles Foundations for Street Lighting Network | 26d | 2026-08-26 A | 2026-08-31 A | PRO-SL-1DL-110, PRO-R10-SL-DL-110, PRO-R16-SL-DL-110 | 100% |  |
| PRO-R14-SL-DL-120 |  | Material Delivery & Site Inspection of Lighting Poles for Street Lighting Network | 26d | 2026-08-26 A | 2026-08-31 A | PRO-SL-1DL-120, PRO-R10-SL-DL-120 | 100% |  |
| PRO-R14-SL-DL-140 |  | Material Delivery & Site Inspection of Lighting Fixtures for Street Lighting Network | 26d | 2027-01-24 | 2027-02-23 | PRO-SL-1DL-140, PRO-R10-SL-DL-140 |  | -247.5d |
|  | 3 | **Distribution Panel Board** |  |  |  |  |  |  |
|  | 4 | **Termination and Testing Works** |  | 2027-01-12 | 2027-05-03 |  |  |  |
| PRO-R14-SL-DL-130 |  | Material Delivery & Site Inspection of Fuse Boxes for Street Lighting Network | 26d | 2027-01-12 | 2027-02-10 | PRO-SL-1DL-130, PRO-R10-SL-DL-130 |  | -225.5d |
| PRO-R14-SL-DL-170 |  | Material Delivery & Site Inspection of Cable Lugs for Street Lighting Network | 26d | 2027-04-04 | 2027-05-03 | PRO-SL-1DL-170, PRO-R10-SL-DL-170 |  | -274d |
|  | 5 | **Earthing System Works** |  |  |  |  |  |  |
|  | 2 | **Road 09 Local 2 ( 2278 LM )** |  | 2025-10-31 | 2027-06-08 |  |  |  |
|  | 1 | **Cabling Works** |  | 2026-02-17 | 2026-02-22 |  |  |  |

| ID | WBS | Task | Duration | Start | Finish | Predecessors | Complete | Total float |
| --- | --- | --- | --- | --- | --- | --- | --- | --- |
| PRO-R09-SL-DL-100 |  | Material Delivery & Site Inspection of Lighting Cables for Street Lighting Network | 26d | 2026-02-17 A | 2026-02-22 A | PRO-SL-1DL-100, PRO-R14-SL-DL-100 | 100% |  |
|  | 2 | **Lighting Poles Works** |  | 2026-02-17 | 2027-03-29 |  |  |  |
| PRO-R09-SL-DL-110 |  | Material Delivery & Site Inspection of Lighting Poles Foundations for Street Lighting Network | 26d | 2026-02-17 A | 2026-02-22 A | PRO-SL-1DL-110, PRO-R14-SL-DL-110 | 100% |  |
| PRO-R09-SL-DL-120 |  | Material Delivery & Site Inspection of Lighting Poles for Street Lighting Network | 26d | 2026-02-17 A | 2026-02-22 A | PRO-SL-1DL-120, PRO-R14-SL-DL-120 | 100% |  |
| PRO-R09-SL-DL-140 |  | Material Delivery & Site Inspection of Lighting Fixtures for Street Lighting Network | 26d | 2027-02-24 | 2027-03-29 | PRO-SL-1DL-140, PRO-R14-SL-DL-140 |  | -247.5d |
|  | 3 | **Distribution Panel Board** |  | 2025-10-31 | 2026-02-20 |  |  |  |
| PRO-R09-SL-DL-160 |  | Material Delivery & Site Inspection of Distrubution Panel Boards for Street Lighting Network | 26d | 2025-10-31 A | 2026-02-20 A | PRO-SL-1DL-160 | 100% |  |
|  | 4 | **Termination and Testing Works** |  | 2027-02-11 | 2027-06-08 |  |  |  |
| PRO-R09-SL-DL-130 |  | Material Delivery & Site Inspection of Fuse Boxes for Street Lighting Network | 26d | 2027-02-11 | 2027-03-17 | PRO-SL-1DL-130, PRO-R14-SL-DL-130 |  | -225.5d |
| PRO-R09-SL-DL-170 |  | Material Delivery & Site Inspection of Cable Lugs for Street Lighting Network | 26d | 2027-05-04 | 2027-06-08 | PRO-SL-1DL-170, PRO-R14-SL-DL-170 |  | -274d |
|  | 5 | **Earthing System Works** |  | 2026-10-13 | 2026-11-11 |  |  |  |
| PRO-R09-SL-DL-150 |  | Material Delivery & Site Inspection of Lighting Earthing for Street Lighting Network | 26d | 2026-10-13 | 2026-11-11 | PRO-SL-1DL-150 |  | -109.5d |
|  | 5 | **Road 11 Local 1 ( 670 LM )** |  | 2026-07-23 | 2027-07-08 |  |  |  |
|  | 1 | **Cabling Works** |  | 2026-07-23 | 2026-07-25 |  |  |  |
| PRO-R11-SL-DL-100 |  | Material Delivery & Site Inspection of Lighting Cables for Street Lighting Network | 26d | 2026-07-23 A | 2026-07-25 A | PRO-SL-1DL-100, PRO-R09-SL-DL-100 | 100% |  |
|  | 2 | **Lighting Poles Works** |  | 2026-08-19 | 2027-04-28 |  |  |  |
| PRO-R11-SL-DL-110 |  | Material Delivery & Site Inspection of Lighting Poles Foundations for Street Lighting Network | 26d | 2026-08-19 A | 2026-08-22 A | PRO-SL-1DL-110, PRO-R09-SL-DL-110 | 100% |  |
| PRO-R11-SL-DL-120 |  | Material Delivery & Site Inspection of Lighting Poles for Street Lighting Network | 26d | 2026-08-19 A | 2026-08-22 A | PRO-SL-1DL-120, PRO-R09-SL-DL-120 | 100% |  |
| PRO-R11-SL-DL-140 |  | Material Delivery & Site Inspection of Lighting Fixtures for Street Lighting Network | 26d | 2027-03-30 | 2027-04-28 | PRO-SL-1DL-140, PRO-R09-SL-DL-140 |  | -183.5d |
|  | 3 | **Distribution Panel Board** |  |  |  |  |  |  |
|  | 4 | **Termination and Testing Works** |  | 2027-03-18 | 2027-07-08 |  |  |  |
| PRO-R11-SL-DL-130 |  | Material Delivery & Site Inspection of Fuse Boxes for Street Lighting Network | 26d | 2027-03-18 | 2027-04-17 | PRO-SL-1DL-130, PRO-R09-SL-DL-130 |  | -204d |
| PRO-R11-SL-DL-170 |  | Material Delivery & Site Inspection of Cable Lugs for Street Lighting Network | 26d | 2027-06-09 | 2027-07-08 | PRO-SL-1DL-170, PRO-R09-SL-DL-170 |  | -274d |
|  | 5 | **Earthing System Works** |  |  |  |  |  |  |
|  | TE | **Telecom Network** |  | 2025-02-11 | 2026-08-16 |  |  |  |
|  | PO | **Issuance of Purchase Orders** |  | 2025-02-11 | 2025-02-17 |  |  |  |
|  | 1 | **Ducts Works** |  | 2025-02-11 | 2025-02-17 |  |  |  |
| PRO-TE-PO-100 |  | Issuance of Purchase Order for Ducts forTelecom Network | 6d | 2025-02-11 A | 2025-02-17 A | ENG-MT-TE-A-100 | 100% |  |
|  | 3 | **Manholes Works** |  | 2025-02-11 | 2025-02-17 |  |  |  |
| PRO-TE-PO-110 |  | Issuance of Purchase Order for Manholes forTelecom Network | 6d | 2025-02-11 A | 2025-02-17 A | ENG-MT-TE-A-110 | 100% |  |
|  | MF | **Manufacturing of Material** |  | 2025-02-18 | 2025-05-21 |  |  |  |
|  | 1 | **Ducts Works** |  | 2025-02-18 | 2025-05-21 |  |  |  |
| PRO-TE-MF-100 |  | Manufacturing of Ducts for Telecom Network | 60d | 2025-02-18 A | 2025-05-21 A | PRO-TE-PO-100 | 100% |  |
|  | 3 | **Manholes Works** |  | 2025-02-18 | 2025-05-20 |  |  |  |
| PRO-TE-MF-110 |  | Manufacturing of Manholes for Telecom Network | 60d | 2025-02-18 A | 2025-05-20 A | PRO-TE-PO-110 | 100% |  |
|  | 1DL | **1st Material Delivery & Site Inspection** |  | 2025-05-21 | 2025-05-30 |  |  |  |
|  | 1 | **Ducts Works** |  | 2025-05-22 | 2025-05-30 |  |  |  |
| PRO-TE-1DL-100 |  | 1ST Material Delivery for Ducts of Telecom Network | 6d | 2025-05-22 A | 2025-05-30 A | PRO-TE-MF-100 | 100% |  |
|  | 3 | **Manholes Works** |  | 2025-05-21 | 2025-05-29 |  |  |  |
| PRO-TE-1DL-110 |  | 1ST Material Delivery for Manholes of Telecom Network | 6d | 2025-05-21 A | 2025-05-29 A | PRO-TE-MF-110 | 100% |  |
|  | DL | **Material Delivery & Site Inspection** |  | 2025-06-01 | 2026-08-16 |  |  |  |
|  | 1 | **Road 18 Local 1 ( 479 LM )** |  | 2025-06-01 | 2025-06-30 |  |  |  |
|  | 1 | **Ducts Works** |  | 2025-06-01 | 2025-06-30 |  |  |  |
| PRO-R18-TE-DL-120 |  | Material Delivery & Site Inspection for Ducts of Telecom Network | 26d | 2025-06-01 A | 2025-06-30 A | PRO-TE-1DL-100 | 100% |  |
|  | 3 | **Manholes Works** |  | 2025-06-01 | 2025-06-10 |  |  |  |
| PRO-R18-TE-DL-130 |  | Material Delivery & Site Inspection of Manholes for Telecom Network | 26d | 2025-06-01 A | 2025-06-10 A | PRO-TE-1DL-110 | 100% |  |
|  | 9 | **Road 17 Local 1 ( 500 LM )** |  | 2025-06-01 | 2025-06-30 |  |  |  |
|  | 1 | **Ducts Works** |  | 2025-06-01 | 2025-06-30 |  |  |  |
| PRO-R17-TE-DL-100 |  | Material Delivery & Site Inspection for Ducts of Telecom Network | 26d | 2025-06-01 A | 2025-06-30 A | PRO-TE-1DL-100, PRO-R18-TE-DL-120 FF | 100% |  |
|  | 3 | **Manholes Works** |  | 2025-06-11 | 2025-06-14 |  |  |  |
| PRO-R17-TE-DL-110 |  | Material Delivery & Site Inspection of Manholes for Telecom Network | 26d | 2025-06-11 A | 2025-06-14 A | PRO-TE-1DL-110, PRO-R18-TE-DL-130 | 100% |  |
|  | 8 | **Road 16 Local 1 ( 527 LM )** |  | 2025-06-01 | 2025-06-30 |  |  |  |
|  | 1 | **Ducts Works** |  | 2025-06-01 | 2025-06-30 |  |  |  |
| PRO-R16-TE-DL-100 |  | Material Delivery & Site Inspection for Ducts of Telecom Network | 26d | 2025-06-01 A | 2025-06-30 A | PRO-TE-1DL-100, PRO-R17-TE-DL-100 FF | 100% |  |
|  | 3 | **Manholes Works** |  | 2025-06-15 | 2025-06-19 |  |  |  |
| PRO-R16-TE-DL-110 |  | Material Delivery & Site Inspection of Manholes for Telecom Network | 26d | 2025-06-15 A | 2025-06-19 A | PRO-TE-1DL-110, PRO-R17-TE-DL-110 | 100% |  |
|  | 7 | **Road 15 Local 1 ( 556 LM )** |  | 2025-06-01 | 2025-06-30 |  |  |  |
|  | 1 | **Ducts Works** |  | 2025-06-01 | 2025-06-30 |  |  |  |
| PRO-R15-TE-DL-100 |  | Material Delivery & Site Inspection for Ducts of Telecom Network | 26d | 2025-06-01 A | 2025-06-30 A | PRO-TE-1DL-100, PRO-R16-TE-DL-100 FF | 100% |  |
|  | 3 | **Manholes Works** |  | 2025-06-21 | 2025-06-26 |  |  |  |
| PRO-R15-TE-DL-110 |  | Material Delivery & Site Inspection of Manholes for Telecom Network | 26d | 2025-06-21 A | 2025-06-26 A | PRO-TE-1DL-110, PRO-R16-TE-DL-110 | 100% |  |
|  | 4 | **Road 10 Local 2 ( 2352 LM )** |  | 2025-11-01 | 2026-08-16 |  |  |  |
|  | 1 | **Ducts Works** |  | 2025-11-01 | 2025-11-10 |  |  |  |
| PRO-R10-TE-DL-100 |  | Material Delivery & Site Inspection for Ducts of Telecom Network | 26d | 2025-11-01 A | 2025-11-10 A | PRO-TE-1DL-100, PRO-R15-TE-DL-100 | 100% |  |
|  | 3 | **Manholes Works** |  | 2026-08-01 | 2026-08-16 |  |  |  |
| PRO-R10-TE-DL-110 |  | Material Delivery & Site Inspection of Manholes for Telecom Network | 26d | 2026-08-01 A | 2026-08-16 A | PRO-TE-1DL-110, PRO-R15-TE-DL-110 | 100% |  |
|  | 6 | **Road 14 Local 1 ( 584 LM )** |  | 2025-11-01 | 2026-08-16 |  |  |  |
|  | 1 | **Ducts Works** |  | 2025-11-01 | 2025-11-10 |  |  |  |
| PRO-R14-TE-DL-100 |  | Material Delivery & Site Inspection for Ducts of Telecom Network | 26d | 2025-11-01 A | 2025-11-10 A | PRO-TE-1DL-100, PRO-R10-TE-DL-100 | 100% |  |
|  | 3 | **Manholes Works** |  | 2026-08-01 | 2026-08-16 |  |  |  |

| ID | WBS | Task | Duration | Start | Finish | Predecessors | Complete | Total float |
| --- | --- | --- | --- | --- | --- | --- | --- | --- |
| PRO-R14-TE-DL-110 |  | Material Delivery & Site Inspection of Manholes for Telecom Network | 26d | 2026-08-01 A | 2026-08-16 A | PRO-TE-1DL-110, PRO-R10-TE-DL-110 | 100% |  |
|  | 2 | **Road 09 Local 2 ( 2278 LM )** |  | 2026-08-01 | 2026-08-16 |  |  |  |
|  | 1 | **Ducts Works** |  | 2026-08-01 | 2026-08-16 |  |  |  |
| PRO-R09-TE-DL-110 |  | Material Delivery & Site Inspection of Manholes for Telecom Network | 26d | 2026-08-01 A | 2026-08-16 A | PRO-TE-1DL-110, PRO-R14-TE-DL-110 | 100% |  |
|  | 3 | **Manholes Works** |  | 2026-08-01 | 2026-08-16 |  |  |  |
| PRO-R09-TE-DL-100 |  | Material Delivery & Site Inspection for Ducts of Telecom Network | 26d | 2026-08-01 A | 2026-08-16 A | PRO-TE-1DL-100, PRO-R14-TE-DL-100 | 100% |  |
|  | 5 | **Road 11 Local 1 ( 670 LM )** |  | 2026-08-01 | 2026-08-16 |  |  |  |
|  | 1 | **Ducts Works** |  | 2026-08-01 | 2026-08-16 |  |  |  |
| PRO-R11-TE-DL-100 |  | Material Delivery & Site Inspection for Ducts of Telecom Network | 26d | 2026-08-01 A | 2026-08-16 A | PRO-TE-1DL-100, PRO-R09-TE-DL-100 | 100% |  |
|  | 3 | **Manholes Works** |  | 2026-08-01 | 2026-08-16 |  |  |  |
| PRO-R11-TE-DL-110 |  | Material Delivery & Site Inspection of Manholes for Telecom Network | 26d | 2026-08-01 A | 2026-08-16 A | PRO-TE-1DL-110, PRO-R09-TE-DL-110 | 100% |  |
|  | 1 | **Superstructure Works** |  | 2025-02-18 | 2027-03-17 |  |  |  |
|  | 1 | **Issuance of Purchase Orders** |  | 2025-02-18 | 2025-03-30 |  |  |  |
|  | SL | **Sewage Pump Stations ( PS 06 )** |  | 2025-02-18 | 2025-03-06 |  |  |  |
| PRO-SPS-CV-PO-10 |  | Issuance of Purchase Order for Civil Works for Sewage Pump Stations | 12d | 2025-02-18 A | 2025-03-06 A | ENG-MT-SPS-CV-A-110, ENG-MS-SPS-A-110, ENG-SH-SPS-A-110, PRO-SW-PO-100, PRO-SW-PO-110 | 100% |  |
|  | TE | **Storm Drainage Ponds ( PO-J1 , PO-J2 )** |  | 2025-03-19 | 2025-03-30 |  |  |  |
| PRO-DPO-CV-PO-10 |  | Issuance of Purchase Order for Civil Works for Storm Drainage Ponds | 12d | 2025-03-19 A | 2025-03-30 A | ENG-SH-SPS-A-110, ENG-MT-DPO-CV-A-110, ENG-MS-DPO-A-110, ENG-SH-DPO-A-110, PRO-SD-PO-100, PRO-SD-PO-110, PRO-SD-PO-130, PRO-SD-PO-150, PRO-SD-PO-120, PRO-SD-PO-140, PRO-SD-PO-160, PRO-SPS-CV-PO-10 | 100% |  |
|  | 2 | **Manufacturing of Material** |  | 2025-03-07 | 2026-11-21 |  |  |  |
|  | SL | **Sewage Pump Stations ( PS 06 )** |  | 2025-03-07 | 2025-07-17 |  |  |  |
| PRO-SPS-CV-MF-10 |  | Manufacturing of Civil Works for Sewage Pump Stations ( PS06 ) | 130d | 2025-03-07 A | 2025-07-17 A | PRO-SPS-CV-PO-10 | 100% |  |
|  | TE | **Storm Drainage Ponds ( PO-J1 , PO-J2 )** |  | 2025-04-01 | 2026-11-21 |  |  |  |
| PRO-DPO-CV-MF-10 |  | Manufacturing of Civil Works for Storm Drainage Ponds ( PO-J1 ) | 120d | 2025-04-01 A | 2025-07-17 A | PRO-DPO-CV-PO-10 | 100% |  |
| PRO-DPO-CV-MF-20 |  | Manufacturing of Civil Works for Storm Drainage Ponds ( PO-J2 ) | 40d | 2026-10-06 | 2026-11-21 | PRO-DPO-CV-MF-10 |  | -243d |
|  | 3 | **1st Material Delivery & Site Inspection** |  | 2025-10-04 | 2026-12-21 |  |  |  |
|  | SL | **Sewage Pump Stations ( PS 06 )** |  | 2026-10-06 | 2026-11-21 |  |  |  |
| PRO-SPS-CV-1DL-10 |  | 1ST Material Delivery for Civil Works for Sewage Pump Stations ( PS 06 ) | 40d | 2026-10-06 | 2026-11-21 | PRO-SPS-CV-MF-10 |  | -189d |
|  | TE | **Storm Drainage Ponds ( PO-J1 , PO-J2 )** |  | 2025-10-04 | 2026-12-21 |  |  |  |
| PRO-DPO-CV-1DL-10 |  | 1ST Material Delivery for Civil Works for Storm Drainage Ponds ( PO-J1 ) | 26d | 2025-10-04 A | 2025-10-23 A | PRO-DPO-CV-MF-10 | 100% |  |
| PRO-DPO-CV-1DL-20 |  | 1ST Material Delivery for Civil Works for Storm Drainage Ponds ( PO-J2 ) | 26d | 2026-11-22 | 2026-12-21 | PRO-DPO-CV-MF-20 |  | -243d |
|  | 4 | **Material Delivery & Site Inspection** |  | 2025-10-29 | 2027-03-17 |  |  |  |
|  | SL | **Sewage Pump Stations ( PS 06 )** |  | 2025-11-29 | 2025-12-01 |  |  |  |
| PRO-SPS-CV-DL-10 |  | Material Delivery & Site Inspection for Civil Works for Sewage Pump Stations ( PS 06 ) | 70d | 2025-11-29 A | 2025-12-01 A | PRO-SPS-CV-1DL-10 | 100% |  |
|  | TE | **Storm Drainage Ponds ( PO-J1 , PO-J2 )** |  | 2025-10-29 | 2027-03-17 |  |  |  |
| PRO-DPO-CV-DL-10 |  | Material Delivery & Site Inspection for Civil Works for Storm Drainage Ponds ( PO-J1 ) | 70d | 2025-10-29 A | 2026-12-26 | PRO-DPO-CV-1DL-10 | 97% | -78d |
| PRO-DPO-CV-DL-20 |  | Material Delivery & Site Inspection for Civil Works for Storm Drainage Ponds ( PO-J2 ) | 70d | 2026-09-09 A | 2027-03-17 | PRO-DPO-CV-1DL-20 | 85% | -243d |
|  | LL | **Long Lead Time Items** |  | 2025-02-11 | 2027-05-08 |  |  |  |
|  | 2 | **Infrastructure Networks** |  | 2025-02-11 | 2026-09-20 |  |  |  |
|  | 1 | **RMU Works of Medium Voltage Network** |  | 2025-02-11 | 2026-09-20 |  |  |  |
|  | PO | **Issuance of Purchase Orders** |  | 2025-02-11 | 2025-05-05 |  |  |  |
| PRO-MV-LL-PO-10 |  | Issuance of Purchase Order for RMU of Medium Voltage Network | 30d | 2025-02-11 A | 2025-05-05 A | ENG-MT-MV-A-10, ENG-SH-MV-A-110, ENG-MS-MV-A-110 | 100% |  |
|  | MF | **Manufacturing of Material** |  | 2025-06-01 | 2026-06-20 |  |  |  |
| PRO-MV-LL-MF-10 |  | Manufacturing of RMU for Medium Voltage Network | 150d | 2025-06-01 A | 2026-06-20 A | PRO-MV-LL-PO-10 | 100% |  |
|  | 1DL | **Material Shipping/Custom Clearance/Delivery** |  | 2026-05-15 | 2026-05-28 |  |  |  |
| PRO-MV-LL-SH/DL-10 |  | Material Delivery for RMU of Medium Voltage Network | 90d | 2026-05-15 A | 2026-05-28 A | PRO-MV-LL-MF-10 | 100% |  |
|  | DL | **Material Site Inspection** |  | 2026-08-01 | 2026-09-20 |  |  |  |
|  | DL4 | **Road 10 Local 2 ( 2352 LM )** |  | 2026-08-01 | 2026-08-06 |  |  |  |
| PRO-R10-MV-LL-MSI-10 |  | Material Site Inspection of RMU for Medium Voltage Network | 30d | 2026-08-01 A | 2026-08-06 A | PRO-MV-LL-SH/DL-10 | 100% |  |
|  | DL9111 | **Road 17 Local 1 ( 500 LM )** |  | 2026-09-15 | 2026-09-20 |  |  |  |
| PRO-R17-MV-LL-MSI-40 |  | Material Site Inspection of RMU for Medium Voltage Network | 30d | 2026-09-15 A | 2026-09-20 A | PRO-MV-LL-SH/DL-10 | 100% |  |
|  | 1 | **Superstructure Works** |  | 2025-06-01 | 2027-05-08 |  |  |  |
|  | SL | **Sewage Pump Stations ( PS 06 )** |  | 2025-06-01 | 2027-05-08 |  |  |  |
|  | 1 | **Issuance of Purchase Orders** |  | 2025-06-01 | 2025-06-05 |  |  |  |
| PRO-SPS-LL-PO-10 |  | Issuance of Purchase Order for Electromechanical Works for Sewage Pump Stations | 60d | 2025-06-01 A | 2025-06-05 A | ENG-MS-SPS-A-110, ENG-SH-SPS-A-110, ENG-MT-SPS-MC-A-110, PRO-MV-LL-PO-10, PRO-MV-LL-MF-10 SS | 100% |  |
|  | 2 | **Manufacturing of Material** |  | 2025-06-01 | 2026-12-02 |  |  |  |
| PRO-SPS7-LL-MF-10 |  | Manufacturing of Electromechanical Works for Sewage Pump Stations ( PS 06 ) | 100d | 2025-06-01 A | 2026-12-02 | PRO-SPS-LL-PO-10, PRO-MV-LL-MF-10 SS | 50% | -172d |
|  | 3 | **Material Shipping/Custom Clearance/Delivery** |  | 2026-12-03 | 2027-03-07 |  |  |  |
| PRO-SPS7-LL-SH/DL-10 |  | Material Delivery for Electromechanical Works for Sewage Pump Stations ( PS 06 ) | 80d | 2026-12-03 | 2027-03-07 | PRO-SPS7-LL-MF-10 |  | -172d |
|  | 4 | **Material Site Inspection** |  | 2026-09-15 | 2027-05-08 |  |  |  |
| PRO-SPS7-LL-MSI-10 |  | Material Site Inspection for Electromechanical Works for Sewage Pump Stations ( PS06 ) | 50d | 2026-09-15 A | 2027-05-08 | PRO-SPS7-LL-SH/DL-10 | 30% | -172d |
|  | CON | **Construction Works** |  | 2025-02-11 | 2027-10-25 |  |  |  |
|  | INF | **Infrastructure Networks** |  | 2025-02-11 | 2027-10-25 |  |  |  |
|  | 1 | **Phase 2 Block "J"** |  | 2025-02-11 | 2027-09-06 |  |  |  |
|  | SW | **Rising Main Network** |  | 2025-12-27 | 2026-12-14 |  |  |  |
|  | ML | **Main Line Sections** |  | 2025-12-27 | 2026-12-14 |  |  |  |
| CO-RM-SW-290 |  | Trench Excavation and Bedding Works for Main Lines of Rising Main Network | 21d | 2025-12-27 A | 2026-01-05 A | CO-R09.S01-SW-130, CO-R09.S02-SW-130 | 100% |  |
| CO-RM-SW-300 |  | Pipes Laying Works for Main Lines of Rising Main Network | 21d | 2026-02-25 A | 2026-11-19 | CO-RM-SW-290 | 96% | 24d |
| CO-RM-SW-310 |  | Trench Backfilling and Compaction Works for Main Lines of Rising Main Network | 21d | 2026-09-01 A | 2026-12-14 | CO-RM-SW-300, CO-RM-SW-370, CO-RM-SW-440 FF | 30% | 24d |
|  | MH | **Manholes** |  | 2026-01-08 | 2026-11-16 |  |  |  |
| CO-RM-SW-320 |  | Excavation Works for Main Line Manholes of Rising Main Network | 1d | 2026-01-08 A | 2026-01-15 A | CO-RM-SW-290 SS, CO-RM-SW-300 SS | 100% |  |
| CO-RM-SW-330 |  | Installation RC Footing Works for Main Line Manholes of Rising Main Network | 3d | 2026-01-17 A | 2026-10-29 | CO-RM-SW-320 | 97% | 27d |

| ID | WBS | Task | Duration | Start | Finish | Predecessors | Complete | Total float |
| --- | --- | --- | --- | --- | --- | --- | --- | --- |
| CO-RM-SW-340 |  | Install Grp Liner Wall Works for Main Line Manholes of Rising Main Network | 6d | 2026-01-17 A | 2026-11-05 | CO-RM-SW-330 | 98% | 27d |
| CO-RM-SW-350 |  | Pouring Grp Liner Wall Works for Main Line Manholes of Rising Main Network | 3d | 2026-09-18 A | 2026-11-09 | CO-RM-SW-340 | 30% | 27d |
| CO-RM-SW-360 |  | Backfilling Works for Main Line Manholes of Rising Main Network | 5d | 2026-09-21 A | 2026-11-15 | CO-RM-SW-350 | 15% | 27d |
| CO-RM-SW-370 |  | Testing Works for Main Line Manholes of Rising Main Network | 1d | 2026-11-16 | 2026-11-16 | CO-RM-SW-360 |  | 27d |
|  | VC | **Valves Chamber** |  | 2026-05-02 | 2026-11-15 |  |  |  |
| CO-RM-SW-380 |  | Excavation Works for Valve Chambers and Washout chamber of Rising Main Network | 1d | 2026-05-02 A | 2026-05-09 A | CO-RM-SW-300 SS | 100% |  |
| CO-RM-SW-390 |  | RC Footing Works for Valve Chambers and Washout chamber of Rising Main Network | 6d | 2026-05-09 A | 2026-05-12 A | CO-RM-SW-380 | 100% |  |
| CO-RM-SW-400 |  | RC Wall Works for Valve Chambers and Washout chamber of Rising Main Network | 7d | 2026-05-14 A | 2026-10-27 | CO-RM-SW-390 | 35% | 49d |
| CO-RM-SW-410 |  | RC Slab Works for Valve Chambers and Washout chamber of Rising Main Network | 7d | 2026-10-27 | 2026-11-03 | CO-RM-SW-400 |  | 49d |
| CO-RM-SW-420 |  | Insulation Works for Valve Chambers and Washout chamber of Rising Main Network | 2d | 2026-11-04 | 2026-11-05 | CO-RM-SW-410 |  | 49d |
| CO-RM-SW-430 |  | Backfilling Works for Valve Chambers and Washout chamber of Rising Main Network | 5d | 2026-11-07 | 2026-11-11 | CO-RM-SW-420 |  | 49d |
| CO-RM-SW-440 |  | Testing and Covering Works for Valve Chambers and Washout chamber of Rising Main Network | 3d | 2026-11-12 | 2026-11-15 | CO-RM-SW-430 |  | 49d |
|  | 2 | **Road 09 Local 2 ( 2278 LM )** |  | 2025-03-26 | 2027-08-07 |  |  |  |
|  | SW_1 | **SW_1** |  | 2025-03-26 | 2027-07-31 |  |  |  |
|  | EW | **Earthworks** |  | 2025-03-26 | 2025-05-31 |  |  |  |
|  | EW | **Earthworks** |  | 2025-03-26 | 2025-05-31 |  |  |  |
| CO-R09.S01-EW-110 |  | Embankments Works Upto Design Level for Earthworks-[Road 09] -[SW-1] | 10d | 2025-03-26 A | 2025-05-03 A | CO-R09.S01-EW-100, ENG-MS-RD-A-10, ENG-SH-RD-A-100 | 100% |  |
| CO-R09.S01-EW-100 |  | Roadway Excavation Works Upto Design Level for Earthworks-[Road 09] -[SW-1] | 10d | 2025-05-25 A | 2025-05-31 A | MS-CF-MOB, MS-CF-EBL, MS-CF-ENG, ENG-MS-RD-A-10, ENG-SH-RD-A-100, CO-R10.S04-ES-EW-100 | 100% |  |
|  | SW | **Sewage Network** |  | 2025-09-01 | 2026-10-06 |  |  |  |
|  | ML | **Main Line Sections** |  | 2025-09-01 | 2026-05-05 |  |  |  |
| CO-R09.S01-SW-100 |  | Trench Excavation and Bedding Works for Main Lines of Sewage Network-[Road 09] -[SW-1] | 10d | 2025-09-01 A | 2025-09-04 A | CO-R09.S01-EW-110, ENG-MS-SW-ML-A-110, ENG-SH-SW-ML-A-110, CO-R10.S04-ES-SW-100 | 100% |  |
| CO-R09.S01-SW-120 |  | Pipes Laying Works for Main Lines of Sewage Network-[Road 09] -[SW-1] | 12d | 2025-09-06 A | 2025-09-15 A | PRO-SW-1DL-100, MS-CS-SW, CO-R09.S01-SW-100, PRO-R09-SW-DL-100 | 100% |  |
| CO-R09.S01-SW-130 |  | Trench Backfilling and Compaction Works for Main Lines of Sewage Network-[Road 09] -[SW-1] | 12d | 2025-10-24 A | 2026-05-05 A | ENG-SH-SW-ML-A-110 FF, ENG-MS-SW-ML-A-110 FF, CO-R09.S01-SW-120, CO-R09.S01-SW-210 FF | 100% |  |
|  | MH | **Manholes** |  | 2025-10-12 | 2026-10-06 |  |  |  |
| CO-R09.S01-SW-160 |  | Excavation Works for Main Line Manholes of Sewage Network-[Road 09] -[SW-1] | 1d | 2025-10-12 A | 2025-10-15 A | CO-R09.S01-SW-100 SS, CO-R09.S01-SW-120 SS, PRO-R09-SW-DL-110 | 100% |  |
| CO-R09.S01-SW-170 |  | Installation RC Footing Works for Main Line Manholes of Sewage Network-[Road 09] -[SW-1] | 3d | 2025-10-13 A | 2025-10-16 A | CO-R09.S01-SW-160 | 100% |  |
| CO-R09.S01-SW-180 |  | Install Grp Liner Wall Works for Main Line Manholes of Sewage Network-[Road 09] -[SW-1] | 6d | 2025-10-13 A | 2025-10-16 A | CO-R09.S01-SW-170 | 100% |  |
| CO-R09.S01-SW-190 |  | Pouring Grp Liner Wall Works for Main Line Manholes of Sewage Network-[Road 09] -[SW-1] | 3d | 2025-10-14 A | 2025-10-18 A | CO-R09.S01-SW-180 | 100% |  |
| CO-R09.S01-SW-200 |  | Backfilling Works for Main Line Manholes of Sewage Network-[Road 09] -[SW-1] | 5d | 2025-10-15 A | 2025-10-20 A | CO-R09.S01-SW-190 | 100% |  |
| CO-R09.S01-SW-210 |  | Testing Works for Main Line Manholes of Sewage Network-[Road 09] -[SW-1] | 1d | 2026-10-06 | 2026-10-06 | CO-R09.S01-SW-200 |  | -239.5d |
|  | SD | **Storm Drainage Network** |  | 2025-10-16 | 2026-11-12 |  |  |  |
|  | ML | **Main Line Sections** |  | 2025-10-16 | 2026-03-11 |  |  |  |
| CO-R09.S01-SD-100 |  | Trench Excavation and Bedding Works for Main Lines of Storm Drainage Network-[Road 09] -[SW-1] | 10d | 2025-10-16 A | 2026-03-10 A | ENG-SH-SD-ML-A-110, CO-R09.S01-EW-110, CO-R09.S01-EW-100, MS-CS-PS SS, ENG-MS-SD-ML-A-110, CO-R09.S01-SW-130 SS, CO-R09.S01-SW-130 FF, CO-R10.S04-ES-SD-100 | 100% |  |
| CO-R09.S01-SD-120 |  | Pipes Laying Works for Main Lines of Storm Drainage Network-[Road 09] -[SW-1] | 10d | 2025-10-18 A | 2026-03-11 A | PRO-SD-1DL-110, CO-R09.S01-SD-100, CO-R09.S01-SW-120 | 100% |  |
| CO-R09.S01-SD-130 |  | Trench Backfilling and Compaction Works for Main Lines of Storm Drainage Network-[Road 09] -[SW-1] | 20d | 2025-12-18 A | 2026-03-11 A | ENG-SH-SD-ML-A-110 FF, ENG-MS-SD-ML-A-110 FF, CO-R09.S01-SD-120, CO-R09.S01-SD-220 FF, CO-R09.S01-SD-170 FF, CO-R09.S01-SW-130, CO-R09.S02-SW-130 | 100% |  |
|  | MH | **Manholes** |  | 2025-12-11 | 2026-10-08 |  |  |  |
| CO-R09.S01-SD-180 |  | Trench Excavation and Bedding Works for Manholes of Storm Drainage Network-[Road 09] -[SW-1] | 2d | 2025-12-11 A | 2025-12-15 A | CO-R09.S01-SD-120 SS, PRO-SD-1DL-100, MS-CS-SD, CO-R09.S01-SD-100 | 100% |  |
| CO-R09.S01-SD-190 |  | Install RC Footing Works for Manholes of Storm Drainage Network-[Road 09] -[SW-1] | 3d | 2025-12-11 A | 2025-12-15 A | CO-R09.S01-SD-180 SS | 100% |  |
| CO-R09.S01-SD-200 |  | Install RC Wall Rings & Slab Works for Manholes of Storm Drainage Network-[Road 09] -[SW-1] | 5d | 2025-12-11 A | 2025-12-15 A | CO-R09.S01-SD-190 SS | 100% |  |
| CO-R09.S01-SD-220 |  | Backfilling Works for Manholes of Storm Drainage Network-[Road 09] -[SW-1] | 7d | 2026-05-02 A | 2026-05-09 A | CO-R09.S01-SD-210 | 100% |  |
| CO-R09.S01-SD-210 |  | Testing Works for Manholes of Storm Drainage Network-[Road 09] -[SW-1] | 2d | 2026-10-07 | 2026-10-08 | CO-R09.S01-SD-200 |  | -239.5d |
|  | CB | **Catch Basin Sections** |  | 2026-06-27 | 2026-11-12 |  |  |  |
| CO-R09.S01-SD-140 |  | Trench Excavation and Bedding Works for Catch Basins of Storm Drainage Network-[Road 09] -[SW-1] | 6d | 2026-06-27 A | 2026-10-15 | CO-R09.S01-EW-110, ENG-SH-SD-CB-A-110, ENG-MS-SD-CB-A-110, CO-R09.S01-SD-220 | 90% | -239.5d |
| CO-R09.S01-SD-150 |  | Installation and Pipes Laying Connection Works for Catch Basins of Storm Drainage Network-[Road 09] -[SW-1] | 7d | 2026-06-29 A | 2026-10-24 | CO-R09.S01-SD-140, PRO-SD-1DL-130 | 90% | -239.5d |
| CO-R09.S01-SD-170 |  | Trench Backfilling and Compaction Works for Catch Basins of Storm Drainage Network-[Road 09] -[SW-1] | 10d | 2026-08-03 A | 2026-11-12 | CO-R09.S01-SD-160 | 90% | -239.5d |
| CO-R09.S01-SD-160 |  | Testing Works for Catch Basins of Storm Drainage Network-[Road 09] -[SW-1] | 7d | 2026-10-25 | 2026-11-01 | CO-R09.S01-SD-150, CO-R09.S01-SD-120 SS+3d, CO-R09.S01-SD-120 FF+3d, PRO-SD-1DL-120 |  | -239.5d |
|  | IR | **Irrigation Network** |  | 2025-11-29 | 2026-12-02 |  |  |  |
|  | ML | **Main Line Pipes** |  | 2025-11-29 | 2026-12-02 |  |  |  |
| CO-R09.S01-IR-100 |  | Trench Excavation and Bedding Works for Main Lines of Irrigation Network-[Road 09] -[SW-1] | 7d | 2025-11-29 A | 2025-12-01 A | ENG-SH-IR-ML-A-110, CO-R09.S01-EW-110, ENG-MS-IR-ML-A-110, CO-R09.S01-SD-170 | 100% |  |
| CO-R09.S01-IR-110 |  | Pipes Laying Works for Main Lines of Irrigation Network-[Road 09] -[SW-1] | 10d | 2025-11-30 A | 2026-04-04 A | CO-R09.S01-IR-100, PRO-IR-1DL-100, MS-CS-IR, CO-R09.S01-SD-120, PRO-R09-IR-DL-100 FF+3d | 100% |  |
| CO-R09.S01-IR-120 |  | Installation Works for Main Line Valves of Irrigation Network-[Road 09] -[SW-1] | 7d | 2026-05-02 A | 2026-11-21 | CO-R09.S01-IR-110, PRO-IR-1DL-110, PRO-R09-IR-DL-110 FF+3d | 20% | -239.5d |
| CO-R09.S01-IR-140 |  | Trench Backfilling and Compaction Works for Main Lines of Irrigation Network-[Road 09] -[SW-1] | 10d | 2026-11-22 | 2026-12-02 | CO-R09.S01-IR-120, CO-R09.S01-IR-110 |  | -239.5d |
|  | SL | **Street Lighting Network** |  | 2026-12-03 | 2027-06-20 |  |  |  |
|  | LP | **Lighting Poles Works** |  | 2026-12-03 | 2027-02-20 |  |  |  |
| CO-R09.S01-SL-100 |  | Foundation Excavation Works for Lighting Poles of Street Lighting Network-[Road 09] -[SW-1] | 10d | 2026-12-03 | 2026-12-14 | CO-R09.S01-EW-110, ENG-SH-SL-A-110, CO-R09.S01-EW-100, PRO-SL-1DL-110, ENG-MS-SL-A-110, CO-R09.S01-IR-100 SS+3d, CO-R09.S01-IR-140 |  | -239.5d |
| CO-R09.S01-SL-110 |  | Installation Works for Lighting Poles Foundation of Street Lighting Network-[Road 09] -[SW-1] | 12d | 2026-12-15 | 2026-12-28 | PRO-SL-1DL-110, CO-R09.S01-SL-100, MS-CS-SL |  | -239.5d |
| CO-R09.S01-SL-120 |  | Installation Works for Lighting Poles of Street Lighting Network-[Road 09] -[SW-1] | 11d | 2027-01-19 | 2027-01-31 | PRO-SL-1DL-120, CO-R09.S01-SL-160 |  | -239.5d |
| CO-R09.S01-SL-210 |  | Backfilling Works for Lighting Poles of Street Lighting Network-[Road 09] -[SW-1] | 12d | 2027-02-01 | 2027-02-14 | CO-R09.S01-SL-120, CO-R09.S01-SL-120 FF, CO-R10.S04-ES-SL-210 |  | -239.5d |
| CO-R09.S01-SL-130 |  | Installation Works for Lighting Fixtures With Drop Wire of Street Lighting Network-[Road 09] -[SW-1] | 12d | 2027-02-07 | 2027-02-20 | PRO-SL-1DL-140, CO-R09.S01-SL-120, CO-R09.S01-SL-200 FF |  | -216.5d |
| CO-R09.S01-SL-200 |  | Testing Works for Lighting Poles of Street Lighting Network-[Road 09] -[SW-1] | 5d | 2027-02-15 | 2027-02-20 | CO-R09.S01-SL-210, CO-R09.S01-SL-120 |  | -216.5d |
|  | CW | **Cabling Works** |  | 2026-12-15 | 2027-01-18 |  |  |  |
| CO-R09.S01-SL-140 |  | Trench Excavation and Bedding Works for Street Lighting Network-[Road 09] -[SW-1] | 10d | 2026-12-15 | 2026-12-26 | ENG-SH-SL-A-110, CO-R09.S01-SL-110 SS, ENG-MS-SL-A-110 |  | -239.5d |
| CO-R09.S01-SL-150 |  | Cable Laying Works for Street Lighting Network-[Road 09] -[SW-1] | 10d | 2026-12-27 | 2027-01-06 | PRO-SL-1DL-100, CO-R09.S01-SL-140 |  | -239.5d |
| CO-R09.S01-SL-160 |  | Trench Backfilling and Compaction Works for Street Lighting Network-[Road 09] -[SW-1] | 10d | 2027-01-07 | 2027-01-18 | CO-R09.S01-SL-150, CO-R09.S01-IR-140 |  | -239.5d |
|  | DPB | **Distrubution Panel Boards** |  | 2027-05-01 | 2027-06-20 |  |  |  |
| CO-R09.S01-SL-170 |  | Foundation Excavation Works For Panel Boards of Street Lighting Network-[Road 09] -[SW-1] | 15d | 2027-05-01 | 2027-05-23 | CO-R09-SL-ES-100, CO-R09.S01-EW-110, ENG-SH-SL-A-110, ENG-MS-SL-A-110 |  | -247.5d |
| CO-R09.S01-SL-180 |  | Installation Works for Panel Board Concrete Foundations of Street Lighting Network-[Road 09] -[SW-1] | 12d | 2027-05-24 | 2027-06-06 | CO-R09.S01-SL-170 |  | -247.5d |
| CO-R09.S01-SL-190 |  | Installation Works for Lighting Panel Boards of Street Lighting Network-[Road 09] -[SW-1] | 12d | 2027-06-07 | 2027-06-20 | CO-R09.S01-SL-180, PRO-SL-1DL-160 |  | -247.5d |
| CO-R09.S01-SL-220 |  | A wall of concrete blocks to install the KWH meter of Street Lighting Network-[Road 09] -[SW-1] | 12d | 2027-06-07 | 2027-06-20 | CO-R09.S01-SL-180 |  | -247.5d |
|  | MV | **Medium Voltage Network** |  | 2026-09-30 | 2027-02-06 |  |  |  |

| ID | WBS | Task | Duration | Start | Finish | Predecessors | Complete | Total float |
| --- | --- | --- | --- | --- | --- | --- | --- | --- |
|  | CW | **Cabling Works** |  | 2026-09-30 | 2027-02-06 |  |  |  |
| CO-R09.S01-MV-100 |  | Trench Excavation and Bedding Works for Medium Voltage Network-[Road 09] -[SW-1] | 4d | 2026-09-30 A | 2027-01-23 | ENG-SH-MV-A-110, CO-R09.S01-SD-170 SS+3d, CO-R09.S01-SD-170 FF+3d, CO-R09.S01-EW-110, ENG-MS-MV-A-110, CO-R09.S01-SL-160 | 20% | -235d |
| CO-R09.S01-MV-110 |  | Cable Laying Works for Medium Voltage Network-[Road 09] -[SW-1] | 5d | 2027-01-24 | 2027-01-28 | PRO-MV-1DL-100, CO-R09.S01-MV-100, MS-CS-MV, PRO-R09-MV-DL-100 FF+3d |  | -235d |
| CO-R09.S01-MV-120 |  | Trench Backfilling and Compaction Works for Medium Voltage Network-[Road 09] -[SW-1] | 7d | 2027-01-30 | 2027-02-06 | CO-R09.S01-MV-110 |  | -235d |
|  | TE | **Telecom Network** |  | 2027-02-07 | 2027-03-27 |  |  |  |
|  | PD | **Ducts Works** |  | 2027-02-07 | 2027-02-20 |  |  |  |
| CO-R09.S01-TE-100 |  | Trench Excavation and Bedding Works for Ducts of Telecom Network-[Road 09] -[SW-1] | 2d | 2027-02-07 | 2027-02-08 | ENG-SH-TE-A-110, CO-R09.S01-IR-140 SS+3d, CO-R09.S01-IR-140 FF+3d, CO-R09.S01-SL-160 SS+5d, CO-R09.S01-SL-160 FF+5d, CO-R09.S01-EW-110, ENG-MS-TE-A-110, CO-R09.S01-MV-120, CO-R10.S04-ES-TE-100 |  | -235d |
| CO-R09.S01-TE-110 |  | Pipes Laying Works for Ducts of Telecom Network-[Road 09] -[SW-1] | 4d | 2027-02-09 | 2027-02-13 | PRO-TE-1DL-100, CO-R09.S01-TE-100, MS-CS-TE |  | -221d |
| CO-R09.S01-TE-120 |  | Pouring Plain Concrete Above Ducts of Telecom Network-[Road 09] -[SW-1] | 2d | 2027-02-14 | 2027-02-15 | CO-R09.S01-TE-110 |  | -221d |
| CO-R09.S01-TE-130 |  | Trench Backfilling and Compaction Works for Ducts of Telecom Network-[Road 09] -[SW-1] | 4d | 2027-02-16 | 2027-02-20 | CO-R09.S01-TE-120 |  | -221d |
|  | MH | **Manholes Works** |  | 2027-02-09 | 2027-03-27 |  |  |  |
| CO-R09.S01-TE-140 |  | Excavation Works for Manholes of Telecom Network-[Road 09] -[SW-1] | 12d | 2027-02-09 | 2027-02-23 | ENG-SH-TE-A-110, ENG-MS-TE-A-110, CO-R09.S01-TE-100 |  | -235d |
| CO-R09.S01-TE-150 |  | Installation Works for Manholes of Telecom Network-[Road 09] -[SW-1] | 12d | 2027-02-24 | 2027-03-13 | PRO-TE-1DL-110, CO-R09.S01-TE-140 |  | -235d |
| CO-R09.S01-TE-160 |  | Backfilling Works for Manholes of Telecom Network-[Road 09] -[SW-1] | 12d | 2027-03-14 | 2027-03-27 | CO-R09.S01-TE-150, CO-R09.S01-TE-130 |  | -235d |
|  | RD | **Road Works** |  | 2026-06-10 | 2027-07-31 |  |  |  |
|  | RD | **Pre-Bituminous Construction** |  | 2026-06-10 | 2027-04-24 |  |  |  |
| CO-R09.S01-RD-P-100 |  | Capping and Subgrade Layer for Road Works-[Road 09] -[SW-1] | 21d | 2026-06-10 A | 2027-04-20 | ENG-SH-RD-A-100, PRO-RD-1DL-100, CO-R09.S01-SD-130, CO-R09.S01-SW-130, CO-R09.S01-SL-160 SS+3d, CO-R09.S01-SL-160 FF+3d, ENG-MS-RD-A-10, CO-R09.S01-MV-120 SS+3d, CO-R09.S01-MV-120 FF+3d, CO-R09.S01-TE-130, CO-R09.S01-TE-160, CO-R09.S02-SW-130 | 60% | -223d |
| CO-R09.S01-RD-P-110 |  | Aggregate Base Course Layer for Road Works-[Road 09] -[SW-1] | 21d | 2027-03-31 | 2027-04-24 | PRO-RD-1DL-110, CO-R09.S01-RD-P-100 SS+3d, CO-R09.S01-RD-P-100 FF+3d, CO-R09.S01-SD-170 SS+3d, CO-R09.S01-SD-170 FF+3d, MS-CS-RD |  | -181d |
|  | LS | **Pavement Works** |  | 2026-08-25 | 2027-07-31 |  |  |  |
| CO-R09.S01-RD-P-120 |  | Fixing of Curbstone for Sidewalks Pavement-[Road 09] -[SW-1] | 18d | 2026-08-25 A | 2026-08-31 A | PRO-RD-1DL-150, ENG-SH-HS-A-110, ENG-MS-HS-A-10, CO-R09.S01-RD-P-110, ENG-MT-RD-A-150 | 100% |  |
| CO-R09.S01-RD-P-130 |  | Fixing of Interlock Tiles for Sidewalks Pavement-[Road 09] -[SW-1] | 12d | 2026-08-25 A | 2027-07-31 | PRO-RD-1DL-140, CO-R09.S01-RD-P-120, CO-R09-PW-TF-100, CO-R09-PW-TF-110, CO-R09-PW-TF-120, CO-R09-SW-TF-100, CO-R09-SW-TF-110, CO-R09-SW-TF-120, CO-R09-SD-TF-120, CO-R09-SD-TF-100, CO-R09-SL-TF-100, CO-R09-SL-TF-110, CO-R09-SL-ES-100, CO-R09-SL-ES-110, CO-R09-IR-TF-100, CO-R09-MV-TF-100 | 50% | -247.5d |
|  | SW_2 | **SW_2** |  | 2025-04-17 | 2027-08-07 |  |  |  |
|  | EW | **Earthworks** |  | 2025-04-17 | 2025-05-03 |  |  |  |
|  | EW | **Earthworks** |  | 2025-04-17 | 2025-05-03 |  |  |  |
| CO-R09.S02-EW-110 |  | Roadway Excavation Works Upto Design Level for Earthworks-[Road 09]-[SW-2] | 10d | 2025-04-17 A | 2025-04-26 A | CO-R09.S01-EW-100, ENG-MS-RD-A-10, ENG-SH-RD-A-100, CO-R09.S01-EW-100 FF | 100% |  |
| CO-R09.S02-EW-120 |  | Embankments Works Upto Design Level for Earthworks-[Road 09]-[SW-2] | 10d | 2025-04-17 A | 2025-05-03 A | CO-R09.S02-EW-110, ENG-MS-RD-A-10, ENG-SH-RD-A-100 | 100% |  |
|  | SW | **Sewage Network** |  | 2025-11-10 | 2026-10-26 |  |  |  |
|  | ML | **Main Line Sections** |  | 2025-11-10 | 2026-10-26 |  |  |  |
| CO-R09.S02-SW-100 |  | Trench Excavation and Bedding Works for Main Lines of Sewage Network-[Road 09]-[SW-2] | 12d | 2025-11-10 A | 2026-10-10 | CO-R09.S02-EW-120, ENG-MS-SW-ML-A-110, ENG-SH-SW-ML-A-110, CO-R09.S01-SW-100 | 95% | -212.5d |
| CO-R09.S02-SW-120 |  | Pipes Laying Works for Main Lines of Sewage Network-[Road 09]-[SW-2] | 12d | 2026-02-15 A | 2026-10-18 | CO-R09.S02-SW-100 | 95% | -212.5d |
| CO-R09.S02-SW-130 |  | Trench Backfilling and Compaction Works for Main Lines of Sewage Network-[Road 09]-[SW-2] | 12d | 2026-05-02 A | 2026-10-26 | CO-R09.S02-SW-120, CO-R09.S02-SW-210 FF | 90% | -212.5d |
|  | MH | **Manholes** |  | 2026-05-02 | 2026-10-11 |  |  |  |
| CO-R09.S02-SW-160 |  | Excavation Works for Main Line Manholes of Sewage Network-[Road 09]-[SW-2] | 1d | 2026-05-02 A | 2026-05-10 A | CO-R09.S02-SW-100 SS, CO-R09.S02-SW-120 SS | 100% |  |
| CO-R09.S02-SW-170 |  | Installation RC Footing Works for Main Line Manholes of Sewage Network-[Road 09]-[SW-2] | 3d | 2026-05-02 A | 2026-05-10 A | CO-R09.S02-SW-160 | 100% |  |
| CO-R09.S02-SW-180 |  | Install Grp Liner Wall Works for Main Line Manholes of Sewage Network-[Road 09]-[SW-2] | 6d | 2026-05-02 A | 2026-05-10 A | CO-R09.S02-SW-170 | 100% |  |
| CO-R09.S02-SW-190 |  | Pouring Grp Liner Wall Works for Main Line Manholes of Sewage Network-[Road 09]-[SW-2] | 3d | 2026-07-01 A | 2026-07-05 A | CO-R09.S02-SW-180 | 100% |  |
| CO-R09.S02-SW-200 |  | Backfilling Works for Main Line Manholes of Sewage Network-[Road 09]-[SW-2] | 5d | 2026-07-05 A | 2026-07-06 A | CO-R09.S02-SW-190 | 100% |  |
| CO-R09.S02-SW-210 |  | Testing Works for Main Line Manholes of Sewage Network-[Road 09]-[SW-2] | 1d | 2026-10-11 | 2026-10-11 | CO-R09.S02-SW-200 |  | -199.5d |
|  | SD | **Storm Drainage Network** |  | 2025-12-25 | 2026-11-29 |  |  |  |
|  | ML | **Main Line Sections** |  | 2025-12-25 | 2026-11-16 |  |  |  |
| CO-R09.S02-SD-100 |  | Trench Excavation and Bedding Works for Main Lines of Storm Drainage Network-[Road 09]-[SW-2] | 10d | 2025-12-25 A | 2025-12-29 A | CO-R09.S02-EW-120, CO-R09.S02-EW-110, CO-R09.S02-SW-130 SS+3d, CO-R09.S02-SW-130 FF+3d, CO-R09.S01-SD-100 | 100% |  |
| CO-R09.S02-SD-120 |  | Pipes Laying Works for Main Lines of Storm Drainage Network-[Road 09]-[SW-2] | 10d | 2025-12-27 A | 2025-12-29 A | PRO-R09-SD-DL-120 FF+3d, CO-R09.S02-SD-100, CO-R09.S01-SD-120 | 100% |  |
| CO-R09.S02-SD-130 |  | Trench Backfilling and Compaction Works for Main Lines of Storm Drainage Network-[Road 09]-[SW-2] | 15d | 2026-01-22 A | 2026-11-16 | CO-R09.S02-SD-120, CO-R09.S02-SD-220 FF | 90% | -212.5d |
|  | MH | **Manholes** |  | 2026-03-01 | 2026-11-01 |  |  |  |
| CO-R09.S02-SD-180 |  | Trench Excavation and Bedding Works for Manholes of Storm Drainage Network-[Road 09]-[SW-2] | 1d | 2026-03-01 A | 2026-03-09 A | CO-R09.S02-SD-120 SS, PRO-SD-1DL-100, CO-R09.S01-SD-220 | 100% |  |
| CO-R09.S02-SD-190 |  | Install RC Footing Works for Manholes of Storm Drainage Network-[Road 09]-[SW-2] | 2d | 2026-03-01 A | 2026-03-09 A | CO-R09.S02-SD-180 | 100% |  |
| CO-R09.S02-SD-200 |  | Install RC Wall Rings & Slab Works for Manholes of Storm Drainage Network-[Road 09]-[SW-2] | 4d | 2026-03-01 A | 2026-03-09 A | CO-R09.S02-SD-190 | 100% |  |
| CO-R09.S02-SD-220 |  | Backfilling Works for Manholes of Storm Drainage Network-[Road 09]-[SW-2] | 7d | 2026-03-05 A | 2026-03-30 A | CO-R09.S02-SD-210 | 100% |  |
| CO-R09.S02-SD-210 |  | Testing Works for Manholes of Storm Drainage Network-[Road 09]-[SW-2] | 2d | 2026-10-31 | 2026-11-01 | CO-R09.S02-SD-200 |  | -199.5d |
|  | CB | **Catch Basin Sections** |  | 2026-06-24 | 2026-11-29 |  |  |  |
| CO-R09.S02-SD-140 |  | Trench Excavation and Bedding Works for Catch Basins of Storm Drainage Network-[Road 09]-[SW-2] | 6d | 2026-06-24 A | 2026-11-08 | CO-R09.S02-EW-120, CO-R09.S02-SD-220, CO-R09.S01-SD-140 | 80% | -171d |
| CO-R09.S02-SD-150 |  | Installation and Pipes Laying Connection Works for Catch Basins of Storm Drainage Network-[Road 09]-[SW-2] | 7d | 2026-06-25 A | 2026-11-16 | CO-R09.S02-SD-140, PRO-R09-SD-DL-130 FF+3d | 80% | -73d |
| CO-R09.S02-SD-170 |  | Trench Backfilling and Compaction Works for Catch Basins of Storm Drainage Network-[Road 09]-[SW-2] | 7d | 2026-06-28 A | 2026-11-29 | CO-R09.S02-SD-160 | 80% | -73d |
| CO-R09.S02-SD-160 |  | Testing Works for Catch Basins of Storm Drainage Network-[Road 09]-[SW-2] | 4d | 2026-11-17 | 2026-11-21 | CO-R09.S02-SD-150, CO-R09.S02-SD-120, PRO-R09-SD-DL-110 FF+3d |  | -73d |
|  | PW | **Potable Water Network** |  | 2026-06-27 | 2027-01-17 |  |  |  |
|  | ML | **Main Line Sections** |  | 2026-06-27 | 2027-01-17 |  |  |  |
| CO-R09.S02-PW-100 |  | Trench Excavation and Bedding Works for Main Lines of Potable Water Network-[Road 09]-[SW-2] | 7d | 2026-06-27 A | 2026-11-24 | CO-R09.S02-EW-120, CO-R09.S02-EW-110, CO-R09.S02-SD-130 | 95% | -212.5d |
| CO-R09.S02-PW-110 |  | Pipes Laying and accessories for Main Lines of Potable Water Network-[Road 09]-[SW-2] | 8d | 2026-06-30 A | 2027-01-07 | CO-R09.S02-PW-100, PRO-R09-PW-DL-100 FF+3d, PRO-R09-PW-DL-110 FF+3d, MS-CS-PW SS | 85% | -242.5d |
| CO-R09.S02-PW-130 |  | Trench Backfilling and Compaction Works for Main Lines of Potable Water Network-[Road 09]-[SW-2] | 8d | 2026-07-01 A | 2027-01-17 | CO-R09.S02-PW-110, CO-R09.S02-PW-160 FF, CO-R09.S02-PW-210 FF | 85% | -242.5d |
|  | VC | **Valve Chamber** |  | 2026-11-25 | 2026-12-01 |  |  |  |
| CO-R09.S02-PW-210 |  | Installation Works for Main Line Valves and Valve Chambers of Potable Water Network-[Road 09]-[SW-2] | 6d | 2026-11-25 | 2026-12-01 | CO-R09.S02-PW-100 |  | -202.5d |
|  | FH | **Fire Hydrant** |  | 2026-11-25 | 2026-12-13 |  |  |  |
| CO-R09.S02-PW-140 |  | Excavation Works for Fire Hydrants of Potable Water Network-[Road 09]-[SW-2] | 5d | 2026-11-25 | 2026-11-30 | CO-R09.S02-EW-120, CO-R09.S02-PW-100 |  | -212.5d |
| CO-R09.S02-PW-150 |  | Installation Works for Fire Hydrant of Potable Water Network-[Road 09]-[SW-2] | 6d | 2026-12-01 | 2026-12-07 | CO-R09.S02-PW-140, PRO-R09-PW-DL-120 FF+3d |  | -212.5d |
| CO-R09.S02-PW-160 |  | Trench Backfilling and Compaction Works for Fire Hydrants of Potable Water Network-[Road 09]-[SW-2] | 5d | 2026-12-08 | 2026-12-13 | CO-R09.S02-PW-150 |  | -212.5d |
|  | SL | **Street Lighting Network** |  | 2027-01-18 | 2027-07-01 |  |  |  |
|  | LP | **Lighting Poles Works** |  | 2027-01-18 | 2027-04-01 |  |  |  |
| CO-R09.S02-SL-100 |  | Foundation Excavation Works for Lighting Poles of Street Lighting Network-[Road 09]-[SW-2] | 9d | 2027-01-18 | 2027-01-27 | CO-R09.S02-EW-120, CO-R09.S02-EW-110, CO-R09.S02-PW-130 |  | -242.5d |
| CO-R09.S02-SL-110 |  | Installation Works for Lighting Poles Foundation of Street Lighting Network-[Road 09]-[SW-2] | 9d | 2027-01-28 | 2027-02-07 | CO-R09.S02-SL-100, PRO-R09-SL-DL-110 FF+3d |  | -242.5d |
| CO-R09.S02-SL-120 |  | Installation Works for Lighting Poles of Street Lighting Network-[Road 09]-[SW-2] | 9d | 2027-02-08 | 2027-02-17 | CO-R09.S02-SL-110, PRO-R09-SL-DL-120 FF+3d |  | -242.5d |

| ID | WBS | Task | Duration | Start | Finish | Predecessors | Complete | Total float |
| --- | --- | --- | --- | --- | --- | --- | --- | --- |
| CO-R09.S02-SL-210 |  | Backfilling Works for Lighting Poles of Street Lighting Network-[Road 09]-[SW-2] | 20d | 2027-02-18 | 2027-03-17 | CO-R09.S02-SL-120, CO-R09.S01-SL-210 |  | -242.5d |
| CO-R09.S02-SL-130 |  | Installation Works for Lighting Fixtures With Drop Wire of Street Lighting Network-[Road 09]-[SW-2] | 17d | 2027-03-14 | 2027-04-01 | CO-R09.S02-SL-120, PRO-R09-SL-DL-140 FF+3d, CO-R09.S02-SL-200 FF |  | -247.5d |
| CO-R09.S02-SL-200 |  | Testing Works for Lighting Poles of Street Lighting Network-[Road 09]-[SW-2] | 8d | 2027-03-18 | 2027-03-27 | CO-R09.S02-SL-210, CO-R09.S02-SL-120 |  | -242.5d |
|  | CW | **Cabling Works** |  | 2027-02-18 | 2027-03-29 |  |  |  |
| CO-R09.S02-SL-140 |  | Trench Excavation and Bedding Works for Street Lighting Network-[Road 09]-[SW-2] | 10d | 2027-02-18 | 2027-03-02 | CO-R09.S02-EW-120, CO-R09.S02-SL-120, CO-R09.S02-SL-110 |  | -209d |
| CO-R09.S02-SL-150 |  | Cable Laying Works for Street Lighting Network-[Road 09]-[SW-2] | 10d | 2027-03-03 | 2027-03-17 | CO-R09.S02-SL-140, PRO-R09-SL-DL-100 FF+3d |  | -209d |
| CO-R09.S02-SL-160 |  | Trench Backfilling and Compaction Works for Street Lighting Network-[Road 09]-[SW-2] | 10d | 2027-03-18 | 2027-03-29 | CO-R09.S02-SL-150 |  | -209d |
|  | DPB | **Distrubution Panel Boards** |  | 2027-05-01 | 2027-07-01 |  |  |  |
| CO-R09.S02-SL-170 |  | Foundation Excavation Works For Panel Boards of Street Lighting Network-[Road 09]-[SW-2] | 10d | 2027-05-01 | 2027-05-11 | CO-R09.S02-EW-120, CO-R09.S02-SL-160 SS, CO-R09-SL-ES-100 |  | -226.25d |
| CO-R09.S02-SL-180 |  | Installation Works for Panel Board Concrete Foundations of Street Lighting Network-[Road 09]-[SW-2] | 10d | 2027-05-12 | 2027-05-29 | CO-R09.S02-SL-170 |  | -226.25d |
| CO-R09.S02-SL-190 |  | Installation Works for Lighting Panel Boards of Street Lighting Network-[Road 09]-[SW-2] | 10d | 2027-05-30 | 2027-06-09 | CO-R09.S02-SL-180, PRO-R09-SL-DL-160 FF+3d |  | -226.25d |
| CO-R09.S02-SL-220 |  | A wall of concrete blocks to install the KWH meter of Street Lighting Network-[Road 09]-[SW-2] | 18.25d | 2027-06-10 | 2027-07-01 | CO-R09.S02-SL-180, CO-R09.S02-SL-190 |  | -226.25d |
|  | TE | **Telecom Network** |  | 2027-02-21 | 2027-04-20 |  |  |  |
|  | PD | **Ducts Works** |  | 2027-02-21 | 2027-03-24 |  |  |  |
| CO-R09.S02-TE-100 |  | Trench Excavation and Bedding Works for Ducts of Telecom Network-[Road 09]-[SW-2] | 3d | 2027-02-21 | 2027-02-24 | CO-R09.S01-TE-130, CO-R09.S01-TE-100 |  | -221d |
| CO-R09.S02-TE-110 |  | Pipes Laying Works for Ducts of Telecom Network-[Road 09]-[SW-2] | 7d | 2027-02-25 | 2027-03-04 | CO-R09.S02-TE-100, PRO-R09-TE-DL-100 FF+3d |  | -212d |
| CO-R09.S02-TE-120 |  | Pouring Plain Concrete Above Ducts of Telecom Network-[Road 09]-[SW-2] | 7d | 2027-03-06 | 2027-03-16 | CO-R09.S02-TE-110 |  | -212d |
| CO-R09.S02-TE-130 |  | Trench Backfilling and Compaction Works for Ducts of Telecom Network-[Road 09]-[SW-2] | 7d | 2027-03-17 | 2027-03-24 | CO-R09.S02-TE-120 |  | -212d |
|  | MH | **Manholes Works** |  | 2027-03-28 | 2027-04-20 |  |  |  |
| CO-R09.S02-TE-140 |  | Excavation Works for Manholes of Telecom Network-[Road 09]-[SW-2] | 7d | 2027-03-28 | 2027-04-04 | CO-R09.S02-TE-100, CO-R09.S01-TE-140, CO-R09.S01-TE-160 |  | -235d |
| CO-R09.S02-TE-150 |  | Installation Works for Manholes of Telecom Network-[Road 09]-[SW-2] | 7d | 2027-04-05 | 2027-04-12 | CO-R09.S02-TE-140, PRO-R09-TE-DL-110 FF+3d |  | -235d |
| CO-R09.S02-TE-160 |  | Backfilling Works for Manholes of Telecom Network-[Road 09]-[SW-2] | 7d | 2027-04-13 | 2027-04-20 | CO-R09.S02-TE-150 |  | -235d |
|  | RD | **Road Works** |  | 2026-08-25 | 2027-08-07 |  |  |  |
|  | RD | **Pre-Bituminous Construction** |  | 2027-04-21 | 2027-05-20 |  |  |  |
| CO-R09.S02-RD-P-100 |  | Capping and Subgrade Layer for Road Works-[Road 09]-[SW-2] | 12d | 2027-04-21 | 2027-05-04 | CO-R09.S02-SD-130, CO-R09.S02-PW-130, CO-R09.S02-PW-160, CO-R09.S02-SL-160 SS+3d, CO-R09.S02-SL-160 FF+3d, PRO-R09-RD-DL-100 FF+3d, CO-R09.S02-TE-130, CO-R09.S02-TE-160 |  | -235d |
| CO-R09.S02-RD-P-110 |  | Aggregate Base Course Layer for Road Works-[Road 09]-[SW-2] | 18d | 2027-04-25 | 2027-05-20 | CO-R09.S02-RD-P-100 SS+3d, CO-R09.S02-RD-P-100 FF+3d, CO-R09.S02-SD-170 SS+3d, CO-R09.S02-SD-170 FF+3d, PRO-R09-RD-DL-110 FF+3d |  | -201d |
|  | LS | **Pavement Works** |  | 2026-08-25 | 2027-08-07 |  |  |  |
| CO-R09.S02-RD-P-120 |  | Fixing of Curbstone for Sidewalks Pavement-[Road 09]-[SW-2] | 18d | 2026-08-25 A | 2026-08-31 A | PRO-R09-RD-DL-130 FF+3d, CO-R09.S02-RD-P-110 SS+3d, CO-R09.S02-RD-P-110 FF+3d | 100% |  |
| CO-R09.S02-RD-P-130 |  | Fixing of Interlock Tiles for Sidewalks Pavement-[Road 09]-[SW-2] | 18d | 2026-08-25 A | 2027-08-07 | PRO-R09-RD-DL-120 FF+3d, CO-R09.S02-RD-P-120 SS+3d, CO-R09.S02-RD-P-120 FF+3d, CO-R09-PW-TF-110, CO-R09-PW-TF-120, CO-R09-SW-TF-100, CO-R09-SW-TF-110, CO-R09-SW-TF-120, CO-R09-SD-TF-100, CO-R09-SD-TF-120, CO-R09-SL-TF-100, CO-R09-SL-TF-110, CO-R09-SL-ES-100, CO-R09-SL-ES-110, CO-R09-IR-TF-100, CO-R09-MV-TF-100 | 50% | -246.5d |
|  | 4 | **Road 10 Local 2 ( 2352 LM )** |  | 2025-03-15 | 2027-06-21 |  |  |  |
|  | 1 | **SW-3** |  | 2025-03-15 | 2027-06-19 |  |  |  |
|  | SW_3 | **SW_3-East** |  | 2025-03-15 | 2027-06-19 |  |  |  |
|  | EW | **Earthworks** |  | 2025-03-15 | 2025-03-24 |  |  |  |
|  | EW | **Earthworks** |  | 2025-03-15 | 2025-03-24 |  |  |  |
| CO-R10.S03-ES-EW-100 |  | Roadway Excavation Works Upto Design Level for Earthworks-[Road 10]-[SW-3] | 10d | 2025-03-15 A | 2025-03-22 A | ENG-MS-RD-A-10, ENG-SH-RD-A-100, CO-R15.S10-EW-100 | 100% |  |
| CO-R10.S03-ES-EW-110 |  | Embankments Works Upto Design Level for Earthworks-[Road 10]-[SW-3] | 12d | 2025-03-18 A | 2025-03-24 A | CO-R10.S03-ES-EW-100, ENG-MS-RD-A-10, ENG-SH-RD-A-100 | 100% |  |
|  | SD | **Storm Drainage Network** |  | 2025-08-02 | 2026-10-17 |  |  |  |
|  | ML | **Main Line Sections** |  | 2025-08-02 | 2025-08-21 |  |  |  |
| CO-R10.S03-ES-SD-100 |  | Trench Excavation and Bedding Works for Main Lines of Storm Drainage Network-[Road 10]-[SW-3] | 10d | 2025-08-02 A | 2025-08-07 A | ENG-SH-SD-ML-A-110, CO-R10.S03-ES-EW-110, CO-R10.S03-ES-EW-100, ENG-MS-SD-ML-A-110, CO-R15.S10-SD-100 | 100% |  |
| CO-R10.S03-ES-SD-120 |  | Pipes Laying Works for Main Lines of Storm Drainage Network-[Road 10]-[SW-3] | 15d | 2025-08-09 A | 2025-08-14 A | CO-R10.S03-ES-SD-100, CO-R15.S10-SD-120 | 100% |  |
| CO-R10.S03-ES-SD-130 |  | Trench Backfilling and Compaction Works for Main Lines of Storm Drainage Network-[Road 10]-[SW-3] | 15d | 2025-08-16 A | 2025-08-21 A | ENG-SH-SD-ML-A-110 FF, ENG-MS-SD-ML-A-110 FF, CO-R10.S03-ES-SD-120 | 100% |  |
|  | MH | **Manholes** |  | 2025-11-01 | 2026-10-06 |  |  |  |
| CO-R10.S03-ES-SD-180 |  | Trench Excavation and Bedding Works for Manholes of Storm Drainage Network-[Road 10]-[SW-3] | 1d | 2025-11-01 A | 2025-11-06 A | CO-R10.S03-ES-SD-120 SS, PRO-SD-1DL-100 | 100% |  |
| CO-R10.S03-ES-SD-190 |  | Install RC Footing Works for Manholes of Storm Drainage Network-[Road 10]-[SW-3] | 1d | 2025-11-05 A | 2025-11-13 A | CO-R10.S03-ES-SD-180 | 100% |  |
| CO-R10.S03-ES-SD-200 |  | Install RC Wall Rings & Slab Works for Manholes of Storm Drainage Network-[Road 10]-[SW-3] | 4d | 2025-11-11 A | 2025-11-22 A | CO-R10.S03-ES-SD-190 | 100% |  |
| CO-R10.S03-ES-SD-220 |  | Backfilling Works for Manholes of Storm Drainage Network-[Road 10]-[SW-3] | 7d | 2025-11-16 A | 2025-11-24 A | CO-R10.S03-ES-SD-200 | 100% |  |
| CO-R10.S03-ES-SD-210 |  | Testing Works for Manholes of Storm Drainage Network-[Road 10]-[SW-3] | 1d | 2026-09-15 A | 2026-10-06 | CO-R10.S03-ES-SD-200, CO-R10.S03-ES-SD-220 | 90% | -56d |
|  | CB | **Catch Basin Sections** |  | 2025-08-20 | 2026-10-17 |  |  |  |
| CO-R10.S03-ES-SD-140 |  | Trench Excavation and Bedding Works for Catch Basins of Storm Drainage Network-[Road 10]-[SW-3] | 6d | 2025-08-20 A | 2025-08-25 A | CO-R10.S03-ES-EW-110, ENG-SH-SD-CB-A-110, ENG-MS-SD-CB-A-110, CO-R15.S10-SD-140 | 100% |  |
| CO-R10.S03-ES-SD-150 |  | Installation and Pipes Laying Connection Works for Catch Basins of Storm Drainage Network-[Road 10]-[SW-3] | 7d | 2025-08-26 A | 2025-08-28 A | CO-R10.S03-ES-SD-140, CO-R15.S10-SD-150 | 100% |  |
| CO-R10.S03-ES-SD-170 |  | Trench Backfilling and Compaction Works for Catch Basins of Storm Drainage Network-[Road 10]-[SW-3] | 7d | 2025-08-30 A | 2025-09-02 A | CO-R10.S03-ES-SD-150 | 100% |  |
| CO-R10.S03-ES-SD-160 |  | Testing Works for Catch Basins of Storm Drainage Network-[Road 10]-[SW-3] | 10d | 2026-09-15 A | 2026-10-17 | CO-R10.S03-ES-SD-150, CO-R10.S03-ES-SD-120 | 90% | -37d |
|  | PW | **Potable Water Network** |  | 2025-08-05 | 2026-11-23 |  |  |  |
|  | ML | **Main Line Sections** |  | 2025-08-05 | 2025-08-16 |  |  |  |
| CO-R10.S03-ES-PW-100 |  | Trench Excavation and Bedding Works for Main Lines of Potable Water Network-[Road 10]-[SW-3] | 6d | 2025-08-05 A | 2025-08-07 A | ENG-SH-PW-ML-A-110, CO-R10.S03-ES-EW-110, CO-R10.S03-ES-EW-100, ENG-MS-PW-ML-A-110, ENG-SH-PW-FH-A-110 | 100% |  |
| CO-R10.S03-ES-PW-110 |  | Pipes Laying and accessories for Main Lines of Potable Water Network-[Road 10]-[SW-3] | 6d | 2025-08-09 A | 2025-08-12 A | CO-R10.S03-ES-PW-100, PRO-R10-PW-DL-100 | 100% |  |
| CO-R10.S03-ES-PW-130 |  | Trench Backfilling and Compaction Works for Main Lines of Potable Water Network-[Road 10]-[SW-3] | 6d | 2025-08-13 A | 2025-08-16 A | CO-R10.S03-ES-PW-110 SS+3d, CO-R10.S03-ES-PW-110 FF+3d | 100% |  |
|  | VC | **Valve Chamber** |  | 2026-11-05 | 2026-11-23 |  |  |  |
| CO-R10.S03-ES-PW-170 |  | Excavation Works for Main Line Valves and Valve Chambers of Potable Water Network-[Road 10]-[SW-3] | 1d | 2026-11-05 | 2026-11-05 | CO-R10.S03-ES-PW-100, PRO-R17-PW-DL-110 |  | -88d |
| CO-R10.S03-ES-PW-180 |  | RC Footing Works for Main Line Valves and Valve Chambers of Potable Water Network-[Road 10]-[SW-3] | 3d | 2026-11-07 | 2026-11-09 | CO-R10.S03-ES-PW-170 |  | -88d |
| CO-R10.S03-ES-PW-190 |  | RC Wall Works for Main Line Valves and Valve Chambers of Potable Water Network-[Road 10]-[SW-3] | 6d | 2026-11-10 | 2026-11-16 | CO-R10.S03-ES-PW-180 |  | -88d |
| CO-R10.S03-ES-PW-200 |  | RC Slab Works for Main Line Valves and Valve Chambers of Potable Water Network-[Road 10]-[SW-3] | 2d | 2026-11-17 | 2026-11-18 | CO-R10.S03-ES-PW-190 |  | -88d |
| CO-R10.S03-ES-PW-210 |  | Insulation Works for Main Line Valves and Valve Chambers of Potable Water Network-[Road 10]-[SW-3] | 1d | 2026-11-19 | 2026-11-19 | CO-R10.S03-ES-PW-200 |  | -88d |
| CO-R10.S03-ES-PW-220 |  | Backfilling Works for Main Line Valves and Valve Chambers of Potable Water Network-[Road 10]-[SW-3] | 3d | 2026-11-21 | 2026-11-23 | CO-R10.S03-ES-PW-210 |  | -88d |
|  | FH | **Fire Hydrant** |  | 2026-10-06 | 2026-10-22 |  |  |  |
| CO-R10.S03-ES-PW-140 |  | Excavation Works for Fire Hydrants of Potable Water Network-[Road 10]-[SW-3] | 6d | 2026-10-06 | 2026-10-12 | CO-R10.S03-ES-PW-110 SS+3d, CO-R10.S03-ES-PW-110 FF+3d, CO-R10.S03-ES-EW-110 |  | -82d |
| CO-R10.S03-ES-PW-150 |  | Installation Works for Fire Hydrant of Potable Water Network-[Road 10]-[SW-3] | 6d | 2026-10-13 | 2026-10-19 | CO-R10.S03-ES-PW-140 |  | -82d |
| CO-R10.S03-ES-PW-160 |  | Trench Backfilling and Compaction Works for Fire Hydrants of Potable Water Network-[Road 10]-[SW-3] | 6d | 2026-10-17 | 2026-10-22 | CO-R10.S03-ES-PW-150 SS+3d, CO-R10.S03-ES-PW-150 FF+3d |  | -82d |
|  | IR | **Irrigation Network** |  | 2025-07-20 | 2025-10-06 |  |  |  |
|  | ML | **Main Line Pipes** |  | 2025-07-20 | 2025-10-06 |  |  |  |

| ID | WBS | Task | Duration | Start | Finish | Predecessors | Complete | Total float |
| --- | --- | --- | --- | --- | --- | --- | --- | --- |
| CO-R10.S03-ES-IR-100 |  | Trench Excavation and Bedding Works for Main Lines of Irrigation Network-[Road 10]-[SW-3] | 7d | 2025-07-20 A | 2025-07-24 A | ENG-SH-IR-ML-A-110, CO-R10.S03-ES-EW-110, ENG-MS-IR-ML-A-110 | 100% |  |
| CO-R10.S03-ES-IR-110 |  | Pipes Laying Works for Main Lines of Irrigation Network-[Road 10]-[SW-3] | 7d | 2025-07-26 A | 2025-07-31 A | CO-R10.S03-ES-IR-100, PRO-R19.2-IR-DL-100 FF+3d | 100% |  |
| CO-R10.S03-ES-IR-130 |  | Trench Backfilling and Compaction Works for Main Lines of Irrigation Network-[Road 10]-[SW-3] | 7d | 2025-08-20 A | 2025-08-21 A | CO-R10.S03-ES-IR-110 | 100% |  |
| CO-R10.S03-ES-IR-120 |  | Installation Works for Main Line Valves of Irrigation Network-[Road 10]-[SW-3] | 2d | 2025-10-01 A | 2025-10-06 A | CO-R10.S03-ES-IR-110 | 100% |  |
|  | SL | **Street Lighting Network** |  | 2026-10-06 | 2027-02-23 |  |  |  |
|  | LP | **Lighting Poles Works** |  | 2026-10-06 | 2026-11-12 |  |  |  |
| CO-R10.S03-ES-SL-100 |  | Foundation Excavation Works for Lighting Poles of Street Lighting Network-[Road 10]-[SW-3] | 12d | 2026-10-06 | 2026-10-19 | CO-R10.S03-ES-EW-110, ENG-SH-SL-A-110, CO-R10.S03-ES-EW-100, ENG-MS-SL-A-110, CO-R10.S03-ES-IR-130 |  | -191d |
| CO-R10.S03-ES-SL-110 |  | Installation Works for Lighting Poles Foundation of Street Lighting Network-[Road 10]-[SW-3] | 12d | 2026-10-12 | 2026-10-25 | CO-R10.S03-ES-SL-100 SS+5d, CO-R10.S03-ES-SL-100 FF+5d |  | -191d |
| CO-R10.S03-ES-SL-120 |  | Installation Works for Lighting Poles of Street Lighting Network-[Road 10]-[SW-3] | 18d | 2026-10-18 | 2026-11-07 | CO-R10.S03-ES-SL-110 SS+5d, CO-R10.S03-ES-SL-110 FF+5d |  | -191d |
| CO-R10.S03-ES-SL-130 |  | Installation Works for Lighting Fixtures With Drop Wire of Street Lighting Network-[Road 10]-[SW-3] | 18d | 2026-10-24 | 2026-11-12 | CO-R10.S03-ES-SL-120 SS+5d, CO-R10.S03-ES-SL-120 FF+5d, CO-R10.S03-ES-SL-200 FF |  | -145d |
| CO-R10.S03-ES-SL-210 |  | Backfilling Works for Lighting Poles of Street Lighting Network-[Road 10]-[SW-3] | 12d | 2026-10-25 | 2026-11-07 | CO-R10.S03-ES-SL-120 SS, CO-R10.S03-ES-SL-120 FF, CO-R15.S10-SL-210 |  | -181.5d |
| CO-R10.S03-ES-SL-200 |  | Testing Works for Lighting Poles of Street Lighting Network-[Road 10]-[SW-3] | 5d | 2026-11-08 | 2026-11-12 | CO-R10.S03-ES-SL-210, CO-R10.S03-ES-SL-120 |  | -145d |
|  | CW | **Cabling Works** |  | 2026-11-08 | 2026-12-12 |  |  |  |
| CO-R10.S03-ES-SL-140 |  | Trench Excavation and Bedding Works for Street Lighting Network-[Road 10]-[SW-3] | 10d | 2026-11-08 | 2026-11-18 | ENG-SH-SL-A-110, CO-R10.S03-ES-IR-130, CO-R10.S03-ES-EW-110, CO-R10.S03-ES-SL-120, CO-R10.S03-ES-SL-110, ENG-MS-SL-A-110 |  | -191d |
| CO-R10.S03-ES-SL-150 |  | Cable Laying Works for Street Lighting Network-[Road 10]-[SW-3] | 10d | 2026-11-19 | 2026-11-30 | CO-R10.S03-ES-SL-140 |  | -191d |
| CO-R10.S03-ES-SL-160 |  | Trench Backfilling and Compaction Works for Street Lighting Network-[Road 10]-[SW-3] | 10d | 2026-12-01 | 2026-12-12 | CO-R10.S03-ES-SL-150, CO-R10.S03-ES-IR-130 |  | -191d |
|  | DPB | **Distrubution Panel Boards** |  | 2027-01-30 | 2027-02-23 |  |  |  |
| CO-R10.S03-ES-SL-170 |  | Foundation Excavation Works For Panel Boards of Street Lighting Network-[Road 10]-[SW-3] | 12d | 2027-01-30 | 2027-02-11 | CO-R10-SL-ES-140, CO-R10.S03-ES-EW-110, ENG-SH-SL-A-110, ENG-MS-SL-A-110 |  | -187d |
| CO-R10.S03-ES-SL-180 |  | Installation Works for Panel Board Concrete Foundations of Street Lighting Network-[Road 10]-[SW-3] | 12d | 2027-02-06 | 2027-02-18 | CO-R10-SL-ES-150 SS+3d, CO-R10-SL-ES-150 FF+3d, CO-R10.S03-ES-SL-170 SS+3d, CO-R10.S03-ES-SL-170 FF+3d |  | -187d |
| CO-R10.S03-ES-SL-220 |  | A wall of concrete blocks to install the KWH meter of Street Lighting Network-[Road 10]-[SW-3] | 12d | 2027-02-06 | 2027-02-18 | CO-R10.S03-ES-SL-180 SS, CO-R10.S03-ES-SL-180 FF |  | -184d |
| CO-R10.S03-ES-SL-190 |  | Installation Works for Lighting Panel Boards of Street Lighting Network-[Road 10]-[SW-3] | 12d | 2027-02-09 | 2027-02-23 | CO-R10.S03-ES-SL-180 SS+3d, CO-R10.S03-ES-SL-180 FF+3d |  | -187d |
|  | TE | **Telecom Network** |  | 2026-12-01 | 2027-01-02 |  |  |  |
|  | PD | **Ducts Works** |  | 2026-12-01 | 2027-01-02 |  |  |  |
| CO-R10.S03-ES-TE-100 |  | Trench Excavation and Bedding Works for Ducts of Telecom Network-[Road 10]-[SW-3] | 7d | 2026-12-01 | 2026-12-08 | CO-R10.S03-ES-IR-130, CO-R10.S03-ES-SL-160 SS, CO-R15.S10-TE-100 |  | -191d |
| CO-R10.S03-ES-TE-110 |  | Pipes Laying Works for Ducts of Telecom Network-[Road 10]-[SW-3] | 7d | 2026-12-09 | 2026-12-16 | CO-R10.S03-ES-TE-100 |  | -148d |
| CO-R10.S03-ES-TE-120 |  | Pouring Plain Concrete Above Ducts of Telecom Network-[Road 10]-[SW-3] | 7d | 2026-12-17 | 2026-12-24 | CO-R10.S03-ES-TE-110 |  | -148d |
| CO-R10.S03-ES-TE-130 |  | Trench Backfilling and Compaction Works for Ducts of Telecom Network-[Road 10]-[SW-3] | 7d | 2026-12-26 | 2027-01-02 | CO-R10.S03-ES-TE-120 |  | -148d |
|  | MH | **Manholes Works** |  | 2026-12-09 | 2027-01-02 |  |  |  |
| CO-R10.S03-ES-TE-140 |  | Excavation Works for Manholes of Telecom Network-[Road 10]-[SW-3] | 7d | 2026-12-09 | 2026-12-16 | CO-R10.S03-ES-TE-100 |  | -146d |
| CO-R10.S03-ES-TE-150 |  | Installation Works for Manholes of Telecom Network-[Road 10]-[SW-3] | 7d | 2026-12-17 | 2026-12-24 | CO-R10.S03-ES-TE-140 |  | -143d |
| CO-R10.S03-ES-TE-160 |  | Backfilling Works for Manholes of Telecom Network-[Road 10]-[SW-3] | 7d | 2026-12-26 | 2027-01-02 | CO-R10.S03-ES-TE-150 |  | -143d |
|  | MV | **Medium Voltage Network** |  | 2026-07-09 | 2027-01-25 |  |  |  |
|  | CW | **Cabling Works** |  | 2026-09-09 | 2027-01-25 |  |  |  |
| CO-R10.S03-ES-MV-100 |  | Trench Excavation and Bedding Works for Medium Voltage Network-[Road 10]-[SW-3] | 18d | 2026-09-09 A | 2027-01-18 | ENG-SH-MV-A-110, CO-R10.S03-ES-SD-170 SS+3d, CO-R10.S03-ES-SD-170 FF+3d, CO-R10.S03-ES-EW-110, CO-R10.S03-ES-TE-130 SS+3d, CO-R10.S03-ES-TE-130 FF+3d, ENG-MS-MV-A-110 | 80% | -148d |
| CO-R10.S03-ES-MV-110 |  | Cable Laying Works for Medium Voltage Network-[Road 10]-[SW-3] | 18d | 2026-09-13 A | 2027-01-21 | CO-R10.S03-ES-MV-100 SS+3d, CO-R10.S03-ES-MV-100 FF+3d, PRO-R10-MV-DL-100 FF+3d | 80% | -148d |
| CO-R10.S03-ES-MV-120 |  | Trench Backfilling and Compaction Works for Medium Voltage Network-[Road 10]-[SW-3] | 18d | 2026-09-16 A | 2027-01-25 | CO-R10.S03-ES-MV-110 SS+3d, CO-R10.S03-ES-MV-110 FF+3d, CO-R10.S03-ES-PW-130 FF+3d | 80% | -148d |
|  | SS | **RMU Works** |  | 2026-07-09 | 2026-07-13 |  |  |  |
| CO-R10.S03-ES-MV-130 |  | Foundation Excavation Works for RMU of Medium Voltage Network-[Road 10]-[SW-3] | 12d | 2026-07-09 A | 2026-07-13 A | ENG-SH-MV-A-110, ENG-MS-MV-A-110, CO-R10.S03-ES-EW-100, CO-R10.S03-ES-EW-110, CO-R10.S03-ES-MV-120 | 100% |  |
| CO-R10.S03-ES-MV-150 |  | Installation Works for RMU Concrete Foundations of Medium Voltage Network-[Road 10]-[SW-3] | 18d | 2026-07-09 A | 2026-07-13 A | CO-R10.S03-ES-MV-130, PRO-R10-MV-DL-120 | 100% |  |
| CO-R10.S03-ES-MV-170 |  | Installation Works for RMU of Medium Voltage Network-[Road 10]-[SW-3] | 6d | 2026-07-09 A | 2026-07-13 A | CO-R10.S03-ES-MV-150, ENG-SH-MV-A-110, ENG-MS-MV-A-110, PRO-MV-LL-SH/DL-10, PRO-R10-MV-LL-MSI-10 | 100% |  |
| CO-R10.S03-ES-MV-180 |  | Termination Works for RMU of Medium Voltage Network-[Road 10]-[SW-3] | 5d | 2026-07-09 A | 2026-07-13 A | CO-R10.S03-ES-MV-170 | 100% |  |
| CO-R10.S03-ES-MV-190 |  | Testing Works for RMU of Medium Voltage Network-[Road 10]-[SW-3] | 5d | 2026-07-09 A | 2026-07-13 A | CO-R10.S03-ES-MV-180 | 100% |  |
|  | RD | **Road Works** |  | 2026-08-25 | 2027-06-19 |  |  |  |
|  | RD | **Pre-Bituminous Construction** |  | 2027-01-09 | 2027-02-01 |  |  |  |
| CO-R10.S03-ES-RD-100 |  | Capping and Subgrade Layer for Road Works-[Road 10]-[SW-3] | 18d | 2027-01-09 | 2027-01-28 | ENG-SH-RD-A-100, CO-R10.S03-ES-SD-130, CO-R10.S03-ES-PW-130, CO-R10.S03-ES-PW-160, CO-R10.S03-ES-SL-160 SS+3d, CO-R10.S03-ES-SL-160 FF+3d, ENG-MS-RD-A-10, CO-R10.S03-ES-TE-130, CO-R10.S03-ES-TE-160, CO-R10.S03-ES-MV-120 SS+3d, CO-R10.S03-ES-MV-120 FF+3d |  | -148d |
| CO-R10.S03-ES-RD-110 |  | Aggregate Base Course Layer for Road Works-[Road 10]-[SW-3] | 18d | 2027-01-12 | 2027-02-01 | CO-R10.S03-ES-RD-100 SS+3d, CO-R10.S03-ES-RD-100 FF+3d, CO-R10.S03-ES-SD-170 SS+3d, CO-R10.S03-ES-SD-170 FF+3d |  | -120d |
|  | LS | **Pavement Works** |  | 2026-08-25 | 2027-06-19 |  |  |  |
| CO-R10.S03-ES-RD-120 |  | Fixing of Curbstone for Sidewalks Pavement-[Road 10]-[SW-3] | 18d | 2026-08-25 A | 2026-08-31 A | CO-R10.S03-ES-RD-110 FF+3d, CO-R10.S03-ES-RD-110 SS+3d | 100% |  |
| CO-R10.S03-ES-RD-130 |  | Fixing of Interlock Tiles for Sidewalks Pavement-[Road 10]-[SW-3] | 10d | 2026-08-25 A | 2027-06-19 | CO-R10.S03-ES-RD-120 SS+3d, CO-R10.S03-ES-RD-120 FF+3d, CO-R10-PW-TF-100, CO-R10-PW-TF-110, CO-R10-PW-TF-120, CO-R10-SW-TF-100, CO-R10-SW-TF-110, CO-R10-SW-TF-130, CO-R10-SD-TF-100, CO-R10-SL-TF-140, CO-R10-SL-TF-150, CO-R10-SL-ES-140, CO-R10-SL-ES-150, CO-R10-IR-TF-120, CO-R10-MV-TF-140 | 50% | -216d |
|  | SW_31 | **SW_3-West** |  | 2025-04-08 | 2027-06-19 |  |  |  |
|  | EW | **Earthworks** |  | 2025-04-08 | 2025-04-14 |  |  |  |
|  | EW | **Earthworks** |  | 2025-04-08 | 2025-04-14 |  |  |  |
| CO-R10.S03-WE-EW-100 |  | Roadway Excavation Works Upto Design Level for Earthworks-[Road 10]-[SW-3] | 12d | 2025-04-08 A | 2025-04-14 A | CO-R09.S02-EW-110, ENG-MS-RD-A-10, ENG-SH-RD-A-100, CO-R11.S06-EW-100 | 100% |  |
| CO-R10.S03-WE-EW-110 |  | Embankments Works Upto Design Level for Earthworks-[Road 10]-[SW-3] | 12d | 2025-04-08 A | 2025-04-14 A | CO-R10.S03-WE-EW-100, ENG-MS-RD-A-10, ENG-SH-RD-A-100 | 100% |  |
|  | SD | **Storm Drainage Network** |  | 2025-08-07 | 2026-10-17 |  |  |  |
|  | ML | **Main Line Sections** |  | 2025-08-07 | 2025-08-28 |  |  |  |
| CO-R10.S03-WE-SD-100 |  | Trench Excavation and Bedding Works for Main Lines of Storm Drainage Network-[Road 10]-[SW-3] | 10d | 2025-08-07 A | 2025-08-10 A | ENG-SH-SD-ML-A-110, CO-R10.S03-WE-EW-110, CO-R10.S03-WE-EW-100, ENG-MS-SD-ML-A-110, CO-R11.S06-SD-100 | 100% |  |
| CO-R10.S03-WE-SD-120 |  | Pipes Laying Works for Main Lines of Storm Drainage Network-[Road 10]-[SW-3] | 10d | 2025-08-11 A | 2025-08-14 A | CO-R10.S03-WE-SD-100, CO-R11.S06-SD-120 | 100% |  |
| CO-R10.S03-WE-SD-130 |  | Trench Backfilling and Compaction Works for Main Lines of Storm Drainage Network-[Road 10]-[SW-3] | 15d | 2025-08-19 A | 2025-08-28 A | ENG-SH-SD-ML-A-110 FF, ENG-MS-SD-ML-A-110 FF, CO-R10.S03-WE-SD-120 | 100% |  |
|  | MH | **Manholes** |  | 2025-11-06 | 2026-10-06 |  |  |  |
| CO-R10.S03-WE-SD-180 |  | Trench Excavation and Bedding Works for Manholes of Storm Drainage Network-[Road 10]-[SW-3] | 1d | 2025-11-06 A | 2025-11-15 A | CO-R10.S03-WE-SD-120 SS, PRO-SD-1DL-100 | 100% |  |
| CO-R10.S03-WE-SD-190 |  | Install RC Footing Works for Manholes of Storm Drainage Network-[Road 10]-[SW-3] | 1d | 2025-11-08 A | 2025-11-16 A | CO-R10.S03-WE-SD-180 | 100% |  |
| CO-R10.S03-WE-SD-200 |  | Install RC Wall Rings & Slab Works for Manholes of Storm Drainage Network-[Road 10]-[SW-3] | 4d | 2025-11-09 A | 2025-11-16 A | CO-R10.S03-WE-SD-190 | 100% |  |
| CO-R10.S03-WE-SD-220 |  | Backfilling Works for Manholes of Storm Drainage Network-[Road 10]-[SW-3] | 7d | 2025-11-11 A | 2025-11-20 A | CO-R10.S03-WE-SD-200 | 100% |  |
| CO-R10.S03-WE-SD-210 |  | Testing Works for Manholes of Storm Drainage Network-[Road 10]-[SW-3] | 1d | 2026-10-06 | 2026-10-06 | CO-R10.S03-WE-SD-200, CO-R10.S03-WE-SD-220 |  | -28d |
|  | CB | **Catch Basin Sections** |  | 2025-09-01 | 2026-10-17 |  |  |  |
| CO-R10.S03-WE-SD-140 |  | Trench Excavation and Bedding Works for Catch Basins of Storm Drainage Network-[Road 10]-[SW-3] | 6d | 2025-09-01 A | 2025-09-04 A | CO-R10.S03-WE-EW-110, ENG-SH-SD-CB-A-110, ENG-MS-SD-CB-A-110 | 100% |  |
| CO-R10.S03-WE-SD-150 |  | Installation and Pipes Laying Connection Works for Catch Basins of Storm Drainage Network-[Road 10]-[SW-3] | 7d | 2025-09-06 A | 2025-09-07 A | CO-R10.S03-WE-SD-140 | 100% |  |
| CO-R10.S03-WE-SD-170 |  | Trench Backfilling and Compaction Works for Catch Basins of Storm Drainage Network-[Road 10]-[SW-3] | 7d | 2025-09-08 A | 2025-09-09 A | CO-R10.S03-WE-SD-150 | 100% |  |
| CO-R10.S03-WE-SD-160 |  | Testing Works for Catch Basins of Storm Drainage Network-[Road 10]-[SW-3] | 10d | 2026-10-06 | 2026-10-17 | CO-R10.S03-WE-SD-150, CO-R10.S03-WE-SD-120 |  | 59d |

| ID | WBS | Task | Duration | Start | Finish | Predecessors | Complete | Total float |
| --- | --- | --- | --- | --- | --- | --- | --- | --- |
|  | PW | **Potable Water Network** |  | 2025-08-05 | 2026-10-24 |  |  |  |
|  | ML | **Main Line Sections** |  | 2025-08-05 | 2025-08-16 |  |  |  |
| CO-R10.S03-WE-PW-100 |  | Trench Excavation and Bedding Works for Main Lines of Potable Water Network-[Road 10]-[SW-3] | 6d | 2025-08-05 A | 2025-08-07 A | ENG-SH-PW-ML-A-110, CO-R10.S03-WE-EW-110, CO-R10.S03-WE-EW-100, ENG-MS-PW-ML-A-110, ENG-SH-PW-FH-A-110 | 100% |  |
| CO-R10.S03-WE-PW-110 |  | Pipes Laying and accessories for Main Lines of Potable Water Network-[Road 10]-[SW-3] | 6d | 2025-08-09 A | 2025-08-12 A | CO-R10.S03-WE-PW-100, PRO-R10-PW-DL-100 | 100% |  |
| CO-R10.S03-WE-PW-130 |  | Trench Backfilling and Compaction Works for Main Lines of Potable Water Network-[Road 10]-[SW-3] | 6d | 2025-08-13 A | 2025-08-16 A | CO-R10.S03-WE-PW-110 SS+3d, CO-R10.S03-WE-PW-110 FF+3d | 100% |  |
|  | VC | **Valve Chamber** |  | 2026-10-06 | 2026-10-24 |  |  |  |
| CO-R10.S03-WE-PW-170 |  | Excavation Works for Main Line Valves and Valve Chambers of Potable Water Network-[Road 10]-[SW-3] | 1d | 2026-10-06 | 2026-10-06 | CO-R10.S03-WE-PW-100 |  | -62d |
| CO-R10.S03-WE-PW-180 |  | RC Footing Works for Main Line Valves and Valve Chambers of Potable Water Network-[Road 10]-[SW-3] | 3d | 2026-10-07 | 2026-10-10 | CO-R10.S03-WE-PW-170 |  | -62d |
| CO-R10.S03-WE-PW-190 |  | RC Wall Works for Main Line Valves and Valve Chambers of Potable Water Network-[Road 10]-[SW-3] | 6d | 2026-10-11 | 2026-10-17 | CO-R10.S03-WE-PW-180 |  | -62d |
| CO-R10.S03-WE-PW-200 |  | RC Slab Works for Main Line Valves and Valve Chambers of Potable Water Network-[Road 10]-[SW-3] | 2d | 2026-10-18 | 2026-10-19 | CO-R10.S03-WE-PW-190 |  | -62d |
| CO-R10.S03-WE-PW-210 |  | Insulation Works for Main Line Valves and Valve Chambers of Potable Water Network-[Road 10]-[SW-3] | 1d | 2026-10-20 | 2026-10-20 | CO-R10.S03-WE-PW-200 |  | -62d |
| CO-R10.S03-WE-PW-220 |  | Backfilling Works for Main Line Valves and Valve Chambers of Potable Water Network-[Road 10]-[SW-3] | 3d | 2026-10-21 | 2026-10-24 | CO-R10.S03-WE-PW-210 |  | -62d |
|  | FH | **Fire Hydrant** |  | 2026-10-06 | 2026-10-22 |  |  |  |
| CO-R10.S03-WE-PW-140 |  | Excavation Works for Fire Hydrants of Potable Water Network-[Road 10]-[SW-3] | 6d | 2026-10-06 | 2026-10-12 | CO-R10.S03-WE-PW-110 SS+3d, CO-R10.S03-WE-PW-110 FF+3d, CO-R10.S03-WE-EW-110 |  | -76d |
| CO-R10.S03-WE-PW-150 |  | Installation Works for Fire Hydrant of Potable Water Network-[Road 10]-[SW-3] | 6d | 2026-10-13 | 2026-10-19 | CO-R10.S03-WE-PW-140 |  | -76d |
| CO-R10.S03-WE-PW-160 |  | Trench Backfilling and Compaction Works for Fire Hydrants of Potable Water Network-[Road 10]-[SW-3] | 6d | 2026-10-17 | 2026-10-22 | CO-R10.S03-WE-PW-150 SS+3d, CO-R10.S03-WE-PW-150 FF+3d |  | -76d |
|  | IR | **Irrigation Network** |  | 2025-08-10 | 2026-07-05 |  |  |  |
|  | ML | **Main Line Pipes** |  | 2025-08-10 | 2026-07-05 |  |  |  |
| CO-R10.S03-WE-IR-100 |  | Trench Excavation and Bedding Works for Main Lines of Irrigation Network-[Road 10]-[SW-3] | 7d | 2025-08-10 A | 2025-08-14 A | ENG-SH-IR-ML-A-110, CO-R10.S03-WE-EW-110, ENG-MS-IR-ML-A-110 | 100% |  |
| CO-R10.S03-WE-IR-110 |  | Pipes Laying Works for Main Lines of Irrigation Network-[Road 10]-[SW-3] | 7d | 2025-08-16 A | 2025-08-19 A | CO-R10.S03-WE-IR-100, PRO-R19.2-IR-DL-100 FF+3d | 100% |  |
| CO-R10.S03-WE-IR-130 |  | Trench Backfilling and Compaction Works for Main Lines of Irrigation Network-[Road 10]-[SW-3] | 7d | 2025-08-20 A | 2025-08-24 A | CO-R10.S03-WE-IR-110 | 100% |  |
| CO-R10.S03-WE-IR-120 |  | Installation Works for Main Line Valves of Irrigation Network-[Road 10]-[SW-3] | 2d | 2026-07-01 A | 2026-07-05 A | CO-R10.S03-WE-IR-110 | 100% |  |
|  | SL | **Street Lighting Network** |  | 2026-10-06 | 2027-02-23 |  |  |  |
|  | LP | **Lighting Poles Works** |  | 2026-10-06 | 2026-11-12 |  |  |  |
| CO-R10.S03-WE-SL-100 |  | Foundation Excavation Works for Lighting Poles of Street Lighting Network-[Road 10]-[SW-3] | 12d | 2026-10-06 | 2026-10-19 | CO-R10.S03-WE-EW-110, ENG-SH-SL-A-110, CO-R10.S03-WE-EW-100, ENG-MS-SL-A-110, CO-R10.S03-WE-IR-130 |  | -170d |
| CO-R10.S03-WE-SL-110 |  | Installation Works for Lighting Poles Foundation of Street Lighting Network-[Road 10]-[SW-3] | 12d | 2026-10-12 | 2026-10-25 | CO-R10.S03-WE-SL-100 SS+5d, CO-R10.S03-WE-SL-100 FF+5d |  | -170d |
| CO-R10.S03-WE-SL-120 |  | Installation Works for Lighting Poles of Street Lighting Network-[Road 10]-[SW-3] | 18d | 2026-10-18 | 2026-11-07 | CO-R10.S03-WE-SL-110 SS+5d, CO-R10.S03-WE-SL-110 FF+5d |  | -170d |
| CO-R10.S03-WE-SL-130 |  | Installation Works for Lighting Fixtures With Drop Wire of Street Lighting Network-[Road 10]-[SW-3] | 18d | 2026-10-24 | 2026-11-12 | CO-R10.S03-WE-SL-120 SS+5d, CO-R10.S03-WE-SL-120 FF+5d, CO-R10.S03-WE-SL-200 FF |  | -145d |
| CO-R10.S03-WE-SL-210 |  | Backfilling Works for Lighting Poles of Street Lighting Network-[Road 10]-[SW-3] | 12d | 2026-10-25 | 2026-11-07 | CO-R10.S03-WE-SL-120 SS, CO-R10.S03-WE-SL-120 FF |  | -145d |
| CO-R10.S03-WE-SL-200 |  | Testing Works for Lighting Poles of Street Lighting Network-[Road 10]-[SW-3] | 5d | 2026-11-08 | 2026-11-12 | CO-R10.S03-WE-SL-210, CO-R10.S03-WE-SL-120 |  | -145d |
|  | CW | **Cabling Works** |  | 2026-11-08 | 2026-12-12 |  |  |  |
| CO-R10.S03-WE-SL-140 |  | Trench Excavation and Bedding Works for Street Lighting Network-[Road 10]-[SW-3] | 10d | 2026-11-08 | 2026-11-18 | ENG-SH-SL-A-110, CO-R10.S03-WE-IR-130, CO-R10.S03-WE-EW-110, CO-R10.S03-WE-SL-120, CO-R10.S03-WE-SL-110, ENG-MS-SL-A-110 |  | -170d |
| CO-R10.S03-WE-SL-150 |  | Cable Laying Works for Street Lighting Network-[Road 10]-[SW-3] | 10d | 2026-11-19 | 2026-11-30 | CO-R10.S03-WE-SL-140 |  | -170d |
| CO-R10.S03-WE-SL-160 |  | Trench Backfilling and Compaction Works for Street Lighting Network-[Road 10]-[SW-3] | 10d | 2026-12-01 | 2026-12-12 | CO-R10.S03-WE-SL-150, CO-R10.S03-WE-IR-130 |  | -170d |
|  | DPB | **Distrubution Panel Boards** |  | 2027-01-30 | 2027-02-23 |  |  |  |
| CO-R10.S03-WE-SL-170 |  | Foundation Excavation Works For Panel Boards of Street Lighting Network-[Road 10]-[SW-3] | 12d | 2027-01-30 | 2027-02-11 | CO-R10-SL-ES-140, CO-R10.S03-WE-EW-110, ENG-SH-SL-A-110, ENG-MS-SL-A-110 |  | -187d |
| CO-R10.S03-WE-SL-180 |  | Installation Works for Panel Board Concrete Foundations of Street Lighting Network-[Road 10]-[SW-3] | 12d | 2027-02-06 | 2027-02-18 | CO-R10-SL-ES-150 SS+3d, CO-R10-SL-ES-150 FF+3d, CO-R10.S03-WE-SL-170 SS+3d, CO-R10.S03-WE-SL-170 FF+3d |  | -187d |
| CO-R10.S03-WE-SL-220 |  | A wall of concrete blocks to install the KWH meter of Street Lighting Network-[Road 10]-[SW-3] | 12d | 2027-02-06 | 2027-02-18 | CO-R10.S03-WE-SL-180 SS, CO-R10.S03-WE-SL-180 FF |  | -184d |
| CO-R10.S03-WE-SL-190 |  | Installation Works for Lighting Panel Boards of Street Lighting Network-[Road 10]-[SW-3] | 12d | 2027-02-09 | 2027-02-23 | CO-R10.S03-WE-SL-180 SS+3d, CO-R10.S03-WE-SL-180 FF+3d |  | -187d |
|  | TE | **Telecom Network** |  | 2027-03-04 | 2027-04-04 |  |  |  |
|  | PD | **Ducts Works** |  | 2027-03-04 | 2027-04-04 |  |  |  |
| CO-R10.S03-WE-TE-100 |  | Trench Excavation and Bedding Works for Ducts of Telecom Network-[Road 10]-[SW-3] | 3d | 2027-03-04 | 2027-03-07 | CO-R10.S03-WE-IR-130, CO-R10.S03-WE-SL-160 SS, CO-R11.S06-TE-100 |  | -221d |
| CO-R10.S03-WE-TE-110 |  | Pipes Laying Works for Ducts of Telecom Network-[Road 10]-[SW-3] | 7d | 2027-03-08 | 2027-03-18 | CO-R10.S03-WE-TE-100 |  | -215d |
| CO-R10.S03-WE-TE-120 |  | Pouring Plain Concrete Above Ducts of Telecom Network-[Road 10]-[SW-3] | 7d | 2027-03-20 | 2027-03-27 | CO-R10.S03-WE-TE-110 |  | -215d |
| CO-R10.S03-WE-TE-130 |  | Trench Backfilling and Compaction Works for Ducts of Telecom Network-[Road 10]-[SW-3] | 7d | 2027-03-28 | 2027-04-04 | CO-R10.S03-WE-TE-120 |  | -215d |
|  | MH | **Manholes Works** |  | 2027-03-08 | 2027-04-04 |  |  |  |
| CO-R10.S03-WE-TE-140 |  | Excavation Works for Manholes of Telecom Network-[Road 10]-[SW-3] | 7d | 2027-03-08 | 2027-03-18 | CO-R10.S03-WE-TE-100 |  | -221d |
| CO-R10.S03-WE-TE-150 |  | Installation Works for Manholes of Telecom Network-[Road 10]-[SW-3] | 7d | 2027-03-20 | 2027-03-27 | CO-R10.S03-WE-TE-140 |  | -212d |
| CO-R10.S03-WE-TE-160 |  | Backfilling Works for Manholes of Telecom Network-[Road 10]-[SW-3] | 7d | 2027-03-28 | 2027-04-04 | CO-R10.S03-WE-TE-150 |  | -212d |
|  | MV | **Medium Voltage Network** |  | 2026-07-09 | 2027-04-18 |  |  |  |
|  | CW | **Cabling Works** |  | 2026-09-22 | 2027-04-18 |  |  |  |
| CO-R10.S03-WE-MV-100 |  | Trench Excavation and Bedding Works for Medium Voltage Network-[Road 10]-[SW-3] | 10d | 2026-09-22 A | 2027-04-11 | ENG-SH-MV-A-110, CO-R10.S03-WE-SD-170 SS+3d, CO-R10.S03-WE-SD-170 FF+3d, CO-R10.S03-WE-EW-110, CO-R10.S03-WE-TE-130 SS+3d, CO-R10.S03-WE-TE-130 FF+3d, ENG-MS-MV-A-110 | 80% | -215d |
| CO-R10.S03-WE-MV-110 |  | Cable Laying Works for Medium Voltage Network-[Road 10]-[SW-3] | 10d | 2026-09-22 A | 2027-04-14 | CO-R10.S03-WE-MV-100 SS+3d, CO-R10.S03-WE-MV-100 FF+3d, PRO-R10-MV-DL-100 FF+3d | 80% | -215d |
| CO-R10.S03-WE-MV-120 |  | Trench Backfilling and Compaction Works for Medium Voltage Network-[Road 10]-[SW-3] | 10d | 2026-09-22 A | 2027-04-18 | CO-R10.S03-WE-MV-110 SS+3d, CO-R10.S03-WE-MV-110 FF+3d, CO-R10.S03-WE-PW-130 FF+3d | 80% | -215d |
|  | SS | **RMU Works** |  | 2026-07-09 | 2026-07-13 |  |  |  |
| CO-R10.S03-WE-MV-130 |  | Foundation Excavation Works for RMU of Medium Voltage Network-[Road 10]-[SW-3] | 10d | 2026-07-09 A | 2026-07-13 A | ENG-SH-MV-A-110, ENG-MS-MV-A-110, CO-R10.S03-WE-EW-100, CO-R10.S03-WE-EW-110, CO-R10.S03-WE-MV-120 | 100% |  |
| CO-R10.S03-WE-MV-150 |  | Installation Works for RMU Concrete Foundations of Medium Voltage Network-[Road 10]-[SW-3] | 10d | 2026-07-09 A | 2026-07-13 A | CO-R10.S03-WE-MV-130, PRO-R10-MV-DL-120 | 100% |  |
| CO-R10.S03-WE-MV-170 |  | Installation Works for RMU of Medium Voltage Network-[Road 10]-[SW-3] | 6d | 2026-07-09 A | 2026-07-13 A | CO-R10.S03-WE-MV-150, ENG-SH-MV-A-110, ENG-MS-MV-A-110, PRO-MV-LL-SH/DL-10, PRO-R10-MV-LL-MSI-10 | 100% |  |
| CO-R10.S03-WE-MV-180 |  | Termination Works for RMU of Medium Voltage Network-[Road 10]-[SW-3] | 5d | 2026-07-09 A | 2026-07-13 A | CO-R10.S03-WE-MV-170 | 100% |  |
| CO-R10.S03-WE-MV-190 |  | Testing Works for RMU of Medium Voltage Network-[Road 10]-[SW-3] | 5d | 2026-07-09 A | 2026-07-13 A | CO-R10.S03-WE-MV-180 | 100% |  |
|  | RD | **Road Works** |  | 2026-08-25 | 2027-06-19 |  |  |  |
|  | RD | **Pre-Bituminous Construction** |  | 2027-04-08 | 2027-05-02 |  |  |  |
| CO-R10.S03-WE-RD-100 |  | Capping and Subgrade Layer for Road Works-[Road 10]-[SW-3] | 12d | 2027-04-08 | 2027-04-21 | ENG-SH-RD-A-100, CO-R10.S03-WE-SD-130, CO-R10.S03-WE-PW-130, CO-R10.S03-WE-PW-160, CO-R10.S03-WE-SL-160 SS+3d, CO-R10.S03-WE-SL-160 FF+3d, ENG-MS-RD-A-10, CO-R10.S03-WE-TE-130, CO-R10.S03-WE-TE-160, CO-R10.S03-WE-MV-120 SS+3d, CO-R10.S03-WE-MV-120 FF+3d |  | -215d |
| CO-R10.S03-WE-RD-110 |  | Aggregate Base Course Layer for Road Works-[Road 10]-[SW-3] | 18d | 2027-04-12 | 2027-05-02 | CO-R10.S03-WE-RD-100 SS+3d, CO-R10.S03-WE-RD-100 FF+3d, CO-R10.S03-WE-SD-170 SS+3d, CO-R10.S03-WE-SD-170 FF+3d |  | -193d |
|  | LS | **Pavement Works** |  | 2026-08-25 | 2027-06-19 |  |  |  |
| CO-R10.S03-WE-RD-120 |  | Fixing of Curbstone for Sidewalks Pavement-[Road 10]-[SW-3] | 18d | 2026-08-25 A | 2026-08-31 A | CO-R10.S03-WE-RD-110 FF+3d, CO-R10.S03-WE-RD-110 SS+3d | 100% |  |
| CO-R10.S03-WE-RD-130 |  | Fixing of Interlock Tiles for Sidewalks Pavement-[Road 10]-[SW-3] | 10d | 2026-08-25 A | 2027-06-19 | CO-R10.S03-WE-RD-120 SS+3d, CO-R10.S03-WE-RD-120 FF+3d, CO-R10-PW-TF-100, CO-R10-PW-TF-110, CO-R10-PW-TF-120, CO-R10-SW-TF-100, CO-R10-SW-TF-110, CO-R10-SW-TF-130, CO-R10-SD-TF-100, CO-R10-SL-TF-140, CO-R10-SL-TF-150, CO-R10-SL-ES-140, CO-R10-SL-ES-150, CO-R10-IR-TF-120, CO-R10-MV-TF-140 | 50% | -216d |
|  | 2 | **SW-4** |  | 2025-04-01 | 2027-06-21 |  |  |  |
|  | SW_4 | **SW_4-East** |  | 2025-04-01 | 2027-06-19 |  |  |  |
|  | EW | **Earthworks** |  | 2025-04-01 | 2025-04-13 |  |  |  |

| ID | WBS | Task | Duration | Start | Finish | Predecessors | Complete | Total float |
| --- | --- | --- | --- | --- | --- | --- | --- | --- |
|  | EW | **Earthworks** |  | 2025-04-01 | 2025-04-13 |  |  |  |
| CO-R10.S04-ES-EW-100 |  | Roadway Excavation Works Upto Design Level for Earthworks-[Road 10]-[SW-4] | 10d | 2025-04-01 A | 2025-04-12 A | ENG-MS-RD-A-10, ENG-SH-RD-A-100, CO-R10.S03-ES-EW-100 | 100% |  |
| CO-R10.S04-ES-EW-110 |  | Embankments Works Upto Design Level for Earthworks-[Road 10]-[SW-4] | 10d | 2025-04-01 A | 2025-04-13 A | CO-R10.S04-ES-EW-100, ENG-MS-RD-A-10, ENG-SH-RD-A-100 | 100% |  |
|  | SW | **Sewage Network** |  | 2025-08-17 | 2026-10-06 |  |  |  |
|  | ML | **Main Line Sections** |  | 2025-08-17 | 2025-08-28 |  |  |  |
| CO-R10.S04-ES-SW-100 |  | Trench Excavation and Bedding Works for Main Lines of Sewage Network-[Road 10]-[SW-4] | 10d | 2025-08-17 A | 2025-08-20 A | CO-R10.S04-ES-EW-110, ENG-MS-SW-ML-A-110, ENG-SH-SW-ML-A-110 | 100% |  |
| CO-R10.S04-ES-SW-120 |  | Pipes Laying Works for Main Lines of Sewage Network-[Road 10]-[SW-4] | 12d | 2025-08-21 A | 2025-08-24 A | PRO-R10-SW-DL-100 FF+3d, CO-R10.S04-ES-SW-100 | 100% |  |
| CO-R10.S04-ES-SW-130 |  | Trench Backfilling and Compaction Works for Main Lines of Sewage Network-[Road 10]-[SW-4] | 12d | 2025-08-25 A | 2025-08-28 A | CO-R10.S04-ES-SW-120 | 100% |  |
|  | 1 | **Manholes** |  | 2025-11-06 | 2026-10-06 |  |  |  |
| CO-R10.S04-ES-SW-160 |  | Excavation Works for Main Line Manholes of Sewage Network-[Road 10]-[SW-4] | 1d | 2025-11-06 A | 2025-11-13 A | CO-R10.S04-ES-SW-120 SS | 100% |  |
| CO-R10.S04-ES-SW-170 |  | Installation RC Footing Works for Main Line Manholes of Sewage Network-[Road 10]-[SW-4] | 2d | 2025-11-06 A | 2025-11-16 A | CO-R10.S04-ES-SW-160, PRO-R10-SW-DL-110 FF+3d | 100% |  |
| CO-R10.S04-ES-SW-180 |  | Install Grp Liner Wall Works for Main Line Manholes of Sewage Network-[Road 10]-[SW-4] | 4d | 2025-11-06 A | 2025-11-17 A | CO-R10.S04-ES-SW-170 | 100% |  |
| CO-R10.S04-ES-SW-190 |  | Pouring Grp Liner Wall Works for Main Line Manholes of Sewage Network-[Road 10]-[SW-4] | 1d | 2025-11-06 A | 2025-11-20 A | CO-R10.S04-ES-SW-180 | 100% |  |
| CO-R10.S04-ES-SW-200 |  | Backfilling Works for Main Line Manholes of Sewage Network-[Road 10]-[SW-4] | 4d | 2025-11-06 A | 2025-11-21 A | CO-R10.S04-ES-SW-190 | 100% |  |
| CO-R10.S04-ES-SW-210 |  | Testing Works for Main Line Manholes of Sewage Network-[Road 10]-[SW-4] | 1d | 2026-10-06 | 2026-10-06 | CO-R10.S04-ES-SW-200 |  | -59d |
|  | SD | **Storm Drainage Network** |  | 2025-08-25 | 2026-10-17 |  |  |  |
|  | ML | **Main Line Sections** |  | 2025-08-25 | 2025-09-07 |  |  |  |
| CO-R10.S04-ES-SD-100 |  | Trench Excavation and Bedding Works for Main Lines of Storm Drainage Network-[Road 10]-[SW-4] | 10d | 2025-08-25 A | 2025-08-28 A | CO-R10.S04-ES-EW-110, CO-R10.S04-ES-EW-100, CO-R10.S04-ES-SW-130 SS+3d, CO-R10.S04-ES-SW-130 FF+3d, CO-R10.S03-ES-SD-100 | 100% |  |
| CO-R10.S04-ES-SD-120 |  | Pipes Laying Works for Main Lines of Storm Drainage Network-[Road 10]-[SW-4] | 10d | 2025-08-30 A | 2025-09-03 A | PRO-R10-SD-DL-120 FF+3d, CO-R10.S04-ES-SD-100, CO-R10.S03-ES-SD-120, CO-R10.S03-WE-SD-120 | 100% |  |
| CO-R10.S04-ES-SD-130 |  | Trench Backfilling and Compaction Works for Main Lines of Storm Drainage Network-[Road 10]-[SW-4] | 10d | 2025-09-04 A | 2025-09-07 A | CO-R10.S04-ES-SD-120 | 100% |  |
|  | MH | **Manholes** |  | 2026-03-17 | 2026-10-06 |  |  |  |
| CO-R10.S04-ES-SD-180 |  | Trench Excavation and Bedding Works for Manholes of Storm Drainage Network-[Road 10]-[SW-4] | 1d | 2026-03-17 A | 2026-03-17 A | CO-R10.S04-ES-SD-120 SS, PRO-SD-1DL-100 | 100% |  |
| CO-R10.S04-ES-SD-190 |  | Install RC Footing Works for Manholes of Storm Drainage Network-[Road 10]-[SW-4] | 1d | 2026-03-18 A | 2026-03-18 A | CO-R10.S04-ES-SD-180 | 100% |  |
| CO-R10.S04-ES-SD-200 |  | Install RC Wall Rings & Slab Works for Manholes of Storm Drainage Network-[Road 10]-[SW-4] | 4d | 2026-03-19 A | 2026-03-26 A | CO-R10.S04-ES-SD-190 | 100% |  |
| CO-R10.S04-ES-SD-220 |  | Backfilling Works for Manholes of Storm Drainage Network-[Road 10]-[SW-4] | 7d | 2026-03-28 A | 2026-04-04 A | CO-R10.S04-ES-SD-200 | 100% |  |
| CO-R10.S04-ES-SD-210 |  | Testing Works for Manholes of Storm Drainage Network-[Road 10]-[SW-4] | 1d | 2026-10-06 | 2026-10-06 | CO-R10.S04-ES-SD-200, CO-R10.S04-ES-SD-220 |  | -28d |
|  | CB | **Catch Basin Sections** |  | 2025-09-06 | 2026-10-17 |  |  |  |
| CO-R10.S04-ES-SD-140 |  | Trench Excavation and Bedding Works for Catch Basins of Storm Drainage Network-[Road 10]-[SW-4] | 6d | 2025-09-06 A | 2025-09-08 A | CO-R10.S04-ES-EW-110 | 100% |  |
| CO-R10.S04-ES-SD-150 |  | Installation and Pipes Laying Connection Works for Catch Basins of Storm Drainage Network-[Road 10]-[SW-4] | 7d | 2025-09-09 A | 2025-09-11 A | CO-R10.S04-ES-SD-140, PRO-R10-SD-DL-130 FF+3d | 100% |  |
| CO-R10.S04-ES-SD-170 |  | Trench Backfilling and Compaction Works for Catch Basins of Storm Drainage Network-[Road 10]-[SW-4] | 7d | 2025-09-13 A | 2025-09-15 A | CO-R10.S04-ES-SD-150 | 100% |  |
| CO-R10.S04-ES-SD-160 |  | Testing Works for Catch Basins of Storm Drainage Network-[Road 10]-[SW-4] | 10d | 2026-10-06 | 2026-10-17 | CO-R10.S04-ES-SD-150, CO-R10.S04-ES-SD-120, PRO-R10-SD-DL-110 FF+3d |  | -37d |
|  | PW | **Potable Water Network** |  | 2025-10-01 | 2027-01-02 |  |  |  |
|  | ML | **Main Line Sections** |  | 2025-10-01 | 2025-10-07 |  |  |  |
| CO-R10.S04-ES-PW-100 |  | Trench Excavation and Bedding Works for Main Lines of Potable Water Network-[Road 10]-[SW-4] | 10d | 2025-10-01 A | 2025-10-07 A | CO-R10.S04-ES-EW-110, CO-R10.S04-ES-EW-100, CO-R10.S04-ES-SD-130 | 100% |  |
| CO-R10.S04-ES-PW-110 |  | Pipes Laying and accessories for Main Lines of Potable Water Network-[Road 10]-[SW-4] | 10d | 2025-10-02 A | 2025-10-07 A | CO-R10.S04-ES-PW-100, PRO-R10-PW-DL-100 FF+3d, PRO-R10-PW-DL-110 FF+3d | 100% |  |
| CO-R10.S04-ES-PW-130 |  | Trench Backfilling and Compaction Works for Main Lines of Potable Water Network-[Road 10]-[SW-4] | 7d | 2025-10-04 A | 2025-10-07 A | CO-R10.S04-ES-PW-110, CO-R10.S04-ES-PW-220 FF, CO-R10.S04-ES-PW-160 FF | 100% |  |
|  | VC | **Valve Chamber** |  | 2026-06-21 | 2026-10-24 |  |  |  |
| CO-R10.S04-ES-PW-210 |  | Insulation Works for Main Line Valves and Valve Chambers of Potable Water Network-[Road 10]-[SW-4] | 1d | 2026-06-21 A | 2026-10-20 | CO-R10.S04-ES-PW-200 | 60% | -79d |
| CO-R10.S04-ES-PW-170 |  | Excavation Works for Main Line Valves and Valve Chambers of Potable Water Network-[Road 10]-[SW-4] | 1d | 2026-10-06 | 2026-10-06 | CO-R10.S04-ES-PW-100 |  | -85d |
| CO-R10.S04-ES-PW-180 |  | RC Footing Works for Main Line Valves and Valve Chambers of Potable Water Network-[Road 10]-[SW-4] | 3d | 2026-10-07 | 2026-10-10 | CO-R10.S04-ES-PW-170 |  | -79d |
| CO-R10.S04-ES-PW-190 |  | RC Wall Works for Main Line Valves and Valve Chambers of Potable Water Network-[Road 10]-[SW-4] | 6d | 2026-10-11 | 2026-10-17 | CO-R10.S04-ES-PW-180 |  | -79d |
| CO-R10.S04-ES-PW-200 |  | RC Slab Works for Main Line Valves and Valve Chambers of Potable Water Network-[Road 10]-[SW-4] | 2d | 2026-10-18 | 2026-10-19 | CO-R10.S04-ES-PW-190 |  | -79d |
| CO-R10.S04-ES-PW-220 |  | Backfilling Works for Main Line Valves and Valve Chambers of Potable Water Network-[Road 10]-[SW-4] | 3d | 2026-10-21 | 2026-10-24 | CO-R10.S04-ES-PW-210 |  | -79d |
|  | FH | **Fire Hydrant** |  | 2026-12-09 | 2027-01-02 |  |  |  |
| CO-R10.S04-ES-PW-140 |  | Excavation Works for Fire Hydrants of Potable Water Network-[Road 10]-[SW-4] | 7d | 2026-12-09 | 2026-12-16 | CO-R10.S04-ES-PW-110 SS+3d, CO-R10.S04-ES-EW-110, CO-R10.S04-ES-SW-130 SS+3d, CO-R10.S04-ES-SW-130 FF+3d, CO-R10.S04-ES-PW-170 |  | -139d |
| CO-R10.S04-ES-PW-150 |  | Installation Works for Fire Hydrant of Potable Water Network-[Road 10]-[SW-4] | 7d | 2026-12-17 | 2026-12-24 | CO-R10.S04-ES-PW-140, PRO-R10-PW-DL-120 FF+3d |  | -139d |
| CO-R10.S04-ES-PW-160 |  | Trench Backfilling and Compaction Works for Fire Hydrants of Potable Water Network-[Road 10]-[SW-4] | 7d | 2026-12-26 | 2027-01-02 | CO-R10.S04-ES-PW-150 |  | -139d |
|  | IR | **Irrigation Network** |  | 2026-06-10 | 2026-06-20 |  |  |  |
|  | ML | **Main Line Pipes** |  | 2026-06-10 | 2026-06-20 |  |  |  |
| CO-R10.S04-ES-IR-100 |  | Trench Excavation and Bedding Works for Main Lines of Irrigation Network-[Road 10]-[SW-4] | 6d | 2026-06-10 A | 2026-06-20 A | CO-R10.S04-ES-EW-110 | 100% |  |
| CO-R10.S04-ES-IR-110 |  | Pipes Laying Works for Main Lines of Irrigation Network-[Road 10]-[SW-4] | 7d | 2026-06-10 A | 2026-06-20 A | CO-R10.S04-ES-IR-100, PRO-R19.2-IR-DL-100 FF+3d | 100% |  |
| CO-R10.S04-ES-IR-120 |  | Installation Works for Main Line Valves of Irrigation Network-[Road 10]-[SW-4] | 4d | 2026-06-10 A | 2026-06-20 A | CO-R10.S04-ES-IR-110, PRO-R19.2-IR-DL-110 FF+3d | 100% |  |
| CO-R10.S04-ES-IR-130 |  | Trench Backfilling and Compaction Works for Main Lines of Irrigation Network-[Road 10]-[SW-4] | 5d | 2026-06-10 A | 2026-06-20 A | CO-R10.S04-ES-IR-120, CO-R10.S04-ES-IR-110 | 100% |  |
|  | SL | **Street Lighting Network** |  | 2026-10-29 | 2027-01-26 |  |  |  |
|  | LP | **Lighting Poles Works** |  | 2026-10-29 | 2027-01-26 |  |  |  |
| CO-R10.S04-ES-SL-100 |  | Foundation Excavation Works for Lighting Poles of Street Lighting Network-[Road 10]-[SW-4] | 7d | 2026-10-29 | 2026-11-05 | CO-R10.S04-ES-EW-110, CO-R10.S04-ES-EW-100, CO-R10.S04-ES-IR-130 |  | -192d |
| CO-R10.S04-ES-SL-110 |  | Installation Works for Lighting Poles Foundation of Street Lighting Network-[Road 10]-[SW-4] | 7d | 2026-11-04 | 2026-11-11 | CO-R10.S04-ES-SL-100 SS+5d, CO-R10.S04-ES-SL-100 FF+5d, PRO-R10-SL-DL-110 FF+3d |  | -192d |
| CO-R10.S04-ES-SL-120 |  | Installation Works for Lighting Poles of Street Lighting Network-[Road 10]-[SW-4] | 7d | 2026-11-10 | 2026-11-17 | CO-R10.S04-ES-SL-110 SS+5d, CO-R10.S04-ES-SL-110 FF+5d, PRO-R10-SL-DL-120 FF+3d |  | -192d |
| CO-R10.S04-ES-SL-210 |  | Backfilling Works for Lighting Poles of Street Lighting Network-[Road 10]-[SW-4] | 15d | 2026-11-10 | 2026-11-26 | CO-R10.S04-ES-SL-120 SS, CO-R10.S04-ES-SL-120 FF, CO-R10.S03-ES-SL-210 |  | -183.5d |
| CO-R10.S04-ES-SL-200 |  | Testing Works for Lighting Poles of Street Lighting Network-[Road 10]-[SW-4] | 7d | 2026-11-28 | 2026-12-05 | CO-R10.S04-ES-SL-210, CO-R10.S04-ES-SL-120 |  | -78.5d |
| CO-R10.S04-ES-SL-130 |  | Installation Works for Lighting Fixtures With Drop Wire of Street Lighting Network-[Road 10]-[SW-4] | 18d | 2027-01-06 | 2027-01-26 | CO-R10.S04-ES-SL-120 SS+5d, CO-R10.S04-ES-SL-120 FF+5d, PRO-R10-SL-DL-140 FF+3d, CO-R10.S04-ES-SL-200 FF |  | -123.5d |
|  | CW | **Cabling Works** |  | 2026-11-18 | 2026-12-12 |  |  |  |
| CO-R10.S04-ES-SL-140 |  | Trench Excavation and Bedding Works for Street Lighting Network-[Road 10]-[SW-4] | 7d | 2026-11-18 | 2026-11-25 | CO-R10.S04-ES-IR-130, CO-R10.S04-ES-EW-110, CO-R10.S04-ES-SL-120, CO-R10.S04-ES-SL-110 |  | -192d |
| CO-R10.S04-ES-SL-150 |  | Cable Laying Works for Street Lighting Network-[Road 10]-[SW-4] | 7d | 2026-11-26 | 2026-12-03 | CO-R10.S04-ES-SL-140, PRO-R10-SL-DL-100 FF+3d |  | -192d |
| CO-R10.S04-ES-SL-160 |  | Trench Backfilling and Compaction Works for Street Lighting Network-[Road 10]-[SW-4] | 7d | 2026-12-05 | 2026-12-12 | CO-R10.S04-ES-SL-150, CO-R10.S04-ES-IR-130 |  | -192d |
|  | DPB | **Distrubution Panel Boards** |  | 2026-12-13 | 2027-01-26 |  |  |  |
| CO-R10.S04-ES-SL-170 |  | Foundation Excavation Works For Panel Boards of Street Lighting Network-[Road 10]-[SW-4] | 18d | 2026-12-13 | 2027-01-02 | CO-R10.S04-ES-EW-110, CO-R10.S04-ES-SL-160 |  | -173d |
| CO-R10.S04-ES-SL-180 |  | Installation Works for Panel Board Concrete Foundations of Street Lighting Network-[Road 10]-[SW-4] | 12d | 2026-12-23 | 2027-01-05 | CO-R10.S04-ES-SL-170 SS+3d, CO-R10.S04-ES-SL-170 FF+3d |  | -164d |
| CO-R10.S04-ES-SL-190 |  | Installation Works for Lighting Panel Boards of Street Lighting Network-[Road 10]-[SW-4] | 12d | 2027-01-06 | 2027-01-19 | CO-R10.S04-ES-SL-180, PRO-R10-SL-DL-160 FF+3d |  | -164d |
| CO-R10.S04-ES-SL-220 |  | A wall of concrete blocks to install the KWH meter of Street Lighting Network-[Road 10]-[SW-4] | 18d | 2027-01-06 | 2027-01-26 | CO-R10.S04-ES-SL-180 |  | -164d |

| ID | WBS | Task | Duration | Start | Finish | Predecessors | Complete | Total float |
| --- | --- | --- | --- | --- | --- | --- | --- | --- |
|  | TE | **Telecom Network** |  | 2026-12-10 | 2027-04-12 |  |  |  |
|  | PD | **Ducts Works** |  | 2026-12-10 | 2027-01-11 |  |  |  |
| CO-R10.S04-ES-TE-100 |  | Trench Excavation and Bedding Works for Ducts of Telecom Network-[Road 10]-[SW-4] | 7d | 2026-12-10 | 2026-12-17 | CO-R10.S04-ES-IR-130 SS+3d, CO-R10.S04-ES-IR-130 FF+3d, CO-R10.S04-ES-SL-160 SS+5d, CO-R10.S04-ES-SL-160 FF+5d, CO-R10.S04-ES-EW-110, CO-R10.S03-ES-TE-100 |  | -192d |
| CO-R10.S04-ES-TE-110 |  | Pipes Laying Works for Ducts of Telecom Network-[Road 10]-[SW-4] | 7d | 2026-12-19 | 2026-12-26 | CO-R10.S04-ES-TE-100, PRO-R10-TE-DL-100 FF+3d |  | -147d |
| CO-R10.S04-ES-TE-120 |  | Pouring Plain Concrete Above Ducts of Telecom Network-[Road 10]-[SW-4] | 7d | 2026-12-27 | 2027-01-03 | CO-R10.S04-ES-TE-110 |  | -147d |
| CO-R10.S04-ES-TE-130 |  | Trench Backfilling and Compaction Works for Ducts of Telecom Network-[Road 10]-[SW-4] | 7d | 2027-01-04 | 2027-01-11 | CO-R10.S04-ES-TE-120 |  | -147d |
|  | MH | **Manholes Works** |  | 2027-03-20 | 2027-04-12 |  |  |  |
| CO-R10.S04-ES-TE-140 |  | Excavation Works for Manholes of Telecom Network-[Road 10]-[SW-4] | 7d | 2027-03-20 | 2027-03-27 | CO-R10.S03-ES-TE-140, CO-R10.S04-ES-TE-100, CO-R10.S03-WE-TE-140 |  | -221d |
| CO-R10.S04-ES-TE-150 |  | Installation Works for Manholes of Telecom Network-[Road 10]-[SW-4] | 7d | 2027-03-28 | 2027-04-04 | CO-R10.S04-ES-TE-140, PRO-R10-TE-DL-110 FF+3d |  | -221d |
| CO-R10.S04-ES-TE-160 |  | Backfilling Works for Manholes of Telecom Network-[Road 10]-[SW-4] | 7d | 2027-04-05 | 2027-04-12 | CO-R10.S04-ES-TE-150 |  | -221d |
|  | RD | **Road Works** |  | 2026-08-25 | 2027-06-19 |  |  |  |
|  | RD | **Pre-Bituminous Construction** |  | 2027-04-13 | 2027-05-02 |  |  |  |
| CO-R10.S04-ES-RD-100 |  | Capping and Subgrade Layer for Road Works-[Road 10]-[SW-4] | 14d | 2027-04-13 | 2027-04-28 | CO-R10.S04-ES-SD-130, CO-R10.S04-ES-SW-130, CO-R10.S04-ES-PW-130, CO-R10.S04-ES-PW-160, CO-R10.S04-ES-SL-160 SS+3d, CO-R10.S04-ES-SL-160 FF+3d, PRO-R10-RD-DL-100 FF+3d, CO-R10.S04-ES-TE-130, CO-R10.S04-ES-TE-160 |  | -221d |
| CO-R10.S04-ES-RD-110 |  | Aggregate Base Course Layer for Road Works-[Road 10]-[SW-4] | 12d | 2027-04-19 | 2027-05-02 | CO-R10.S04-ES-RD-100 SS+3d, CO-R10.S04-ES-RD-100 FF+3d, CO-R10.S04-ES-SD-170 SS+3d, CO-R10.S04-ES-SD-170 FF+3d, PRO-R10-RD-DL-110 FF+3d |  | -191d |
|  | LS | **Pavement Works** |  | 2026-08-25 | 2027-06-19 |  |  |  |
| CO-R10.S04-ES-RD-120 |  | Fixing of Curbstone for Sidewalks Pavement-[Road 10]-[SW-4] | 12d | 2026-08-25 A | 2026-08-31 A | PRO-R10-RD-DL-130 FF+3d, CO-R10.S04-ES-RD-110 SS+3d, CO-R10.S04-ES-RD-110 FF+3d | 100% |  |
| CO-R10.S04-ES-RD-130 |  | Fixing of Interlock Tiles for Sidewalks Pavement-[Road 10]-[SW-4] | 10d | 2026-08-25 A | 2027-06-19 | PRO-R10-RD-DL-120 FF+3d, CO-R10.S04-ES-RD-120 SS+3d, CO-R10.S04-ES-RD-120 FF+3d, CO-R10-PW-TF-100, CO-R10-PW-TF-110, CO-R10-PW-TF-120, CO-R10-SW-TF-100, CO-R10-SW-TF-110, CO-R10-SW-TF-130, CO-R10-SD-TF-100, CO-R10-SD-TF-120, CO-R10-SL-TF-140, CO-R10-SL-TF-150, CO-R10-SL-ES-140, CO-R10-SL-ES-150, CO-R10-IR-TF-120, CO-R10-MV-TF-140, CO-R10-SL-TF-380 | 50% | -214d |
|  | SW_41 | **SW_4-West** |  | 2025-04-08 | 2027-06-21 |  |  |  |
|  | EW | **Earthworks** |  | 2025-04-08 | 2025-04-12 |  |  |  |
|  | EW | **Earthworks** |  | 2025-04-08 | 2025-04-12 |  |  |  |
| CO-R10.S04-WE-EW-100 |  | Roadway Excavation Works Upto Design Level for Earthworks-[Road 10]-[SW-4] | 12d | 2025-04-08 A | 2025-04-12 A | ENG-MS-RD-A-10, ENG-SH-RD-A-100, CO-R10.S03-WE-EW-100 | 100% |  |
| CO-R10.S04-WE-EW-110 |  | Embankments Works Upto Design Level for Earthworks-[Road 10]-[SW-4] | 12d | 2025-04-08 A | 2025-04-12 A | CO-R10.S04-WE-EW-100, ENG-MS-RD-A-10, ENG-SH-RD-A-100 | 100% |  |
|  | SW | **Sewage Network** |  | 2025-08-16 | 2026-10-06 |  |  |  |
|  | ML | **Main Line Sections** |  | 2025-08-16 | 2025-08-25 |  |  |  |
| CO-R10.S04-WE-SW-100 |  | Trench Excavation and Bedding Works for Main Lines of Sewage Network-[Road 10]-[SW-4] | 12d | 2025-08-16 A | 2025-08-18 A | CO-R10.S04-WE-EW-110, ENG-MS-SW-ML-A-110, ENG-SH-SW-ML-A-110 | 100% |  |
| CO-R10.S04-WE-SW-120 |  | Pipes Laying Works for Main Lines of Sewage Network-[Road 10]-[SW-4] | 12d | 2025-08-19 A | 2025-08-21 A | PRO-R10-SW-DL-100 FF+3d, CO-R10.S04-WE-SW-100 | 100% |  |
| CO-R10.S04-WE-SW-130 |  | Trench Backfilling and Compaction Works for Main Lines of Sewage Network-[Road 10]-[SW-4] | 12d | 2025-08-23 A | 2025-08-25 A | CO-R10.S04-WE-SW-120 | 100% |  |
|  | 1 | **Manholes** |  | 2026-06-27 | 2026-10-06 |  |  |  |
| CO-R10.S04-WE-SW-160 |  | Excavation Works for Main Line Manholes of Sewage Network-[Road 10]-[SW-4] | 1d | 2026-06-27 A | 2026-07-04 A | CO-R10.S04-WE-SW-120 SS | 100% |  |
| CO-R10.S04-WE-SW-170 |  | Installation RC Footing Works for Main Line Manholes of Sewage Network-[Road 10]-[SW-4] | 2d | 2026-06-27 A | 2026-07-04 A | CO-R10.S04-WE-SW-160, PRO-R10-SW-DL-110 FF+3d | 100% |  |
| CO-R10.S04-WE-SW-180 |  | Install Grp Liner Wall Works for Main Line Manholes of Sewage Network-[Road 10]-[SW-4] | 4d | 2026-06-27 A | 2026-07-04 A | CO-R10.S04-WE-SW-170 | 100% |  |
| CO-R10.S04-WE-SW-190 |  | Pouring Grp Liner Wall Works for Main Line Manholes of Sewage Network-[Road 10]-[SW-4] | 1d | 2026-06-27 A | 2026-07-04 A | CO-R10.S04-WE-SW-180 | 100% |  |
| CO-R10.S04-WE-SW-200 |  | Backfilling Works for Main Line Manholes of Sewage Network-[Road 10]-[SW-4] | 4d | 2026-06-27 A | 2026-07-04 A | CO-R10.S04-WE-SW-190 | 100% |  |
| CO-R10.S04-WE-SW-210 |  | Testing Works for Main Line Manholes of Sewage Network-[Road 10]-[SW-4] | 1d | 2026-10-06 | 2026-10-06 | CO-R10.S04-WE-SW-200 |  | -59d |
|  | SD | **Storm Drainage Network** |  | 2025-08-23 | 2026-10-19 |  |  |  |
|  | ML | **Main Line Sections** |  | 2025-08-23 | 2025-09-02 |  |  |  |
| CO-R10.S04-WE-SD-100 |  | Trench Excavation and Bedding Works for Main Lines of Storm Drainage Network-[Road 10]-[SW-4] | 10d | 2025-08-23 A | 2025-08-25 A | CO-R10.S04-WE-EW-110, CO-R10.S04-WE-EW-100, CO-R10.S04-WE-SW-130 SS+3d, CO-R10.S04-WE-SW-130 FF+3d, CO-R10.S03-WE-SD-100 | 100% |  |
| CO-R10.S04-WE-SD-120 |  | Pipes Laying Works for Main Lines of Storm Drainage Network-[Road 10]-[SW-4] | 10d | 2025-08-26 A | 2025-08-28 A | PRO-R10-SD-DL-120 FF+3d, CO-R10.S04-WE-SD-100 | 100% |  |
| CO-R10.S04-WE-SD-130 |  | Trench Backfilling and Compaction Works for Main Lines of Storm Drainage Network-[Road 10]-[SW-4] | 10d | 2025-08-30 A | 2025-09-02 A | CO-R10.S04-WE-SD-120 SS+3d, CO-R10.S04-WE-SD-120 FF+3d, CO-R10.S04-WE-SD-120 | 100% |  |
|  | MH | **Manholes** |  | 2025-11-09 | 2026-10-06 |  |  |  |
| CO-R10.S04-WE-SD-180 |  | Trench Excavation and Bedding Works for Manholes of Storm Drainage Network-[Road 10]-[SW-4] | 1d | 2025-11-09 A | 2025-11-15 A | CO-R10.S04-WE-SD-120 SS, PRO-SD-1DL-100 | 100% |  |
| CO-R10.S04-WE-SD-190 |  | Install RC Footing Works for Manholes of Storm Drainage Network-[Road 10]-[SW-4] | 1d | 2025-11-10 A | 2025-11-17 A | CO-R10.S04-WE-SD-180 | 100% |  |
| CO-R10.S04-WE-SD-200 |  | Install RC Wall Rings & Slab Works for Manholes of Storm Drainage Network-[Road 10]-[SW-4] | 4d | 2025-11-11 A | 2025-11-18 A | CO-R10.S04-WE-SD-190 | 100% |  |
| CO-R10.S04-WE-SD-220 |  | Backfilling Works for Manholes of Storm Drainage Network-[Road 10]-[SW-4] | 7d | 2025-11-12 A | 2025-12-20 A | CO-R10.S04-WE-SD-210 | 100% |  |
| CO-R10.S04-WE-SD-210 |  | Testing Works for Manholes of Storm Drainage Network-[Road 10]-[SW-4] | 1d | 2026-10-06 | 2026-10-06 | CO-R10.S04-WE-SD-200 |  | -38d |
|  | CB | **Catch Basin Sections** |  | 2026-06-17 | 2026-10-19 |  |  |  |
| CO-R10.S04-WE-SD-140 |  | Trench Excavation and Bedding Works for Catch Basins of Storm Drainage Network-[Road 10]-[SW-4] | 6d | 2026-06-17 A | 2026-10-08 | CO-R10.S04-WE-EW-110, CO-R10.S04-WE-SD-220, CO-R10.S03-ES-SD-140 | 80% | -38d |
| CO-R10.S04-WE-SD-150 |  | Installation and Pipes Laying Connection Works for Catch Basins of Storm Drainage Network-[Road 10]-[SW-4] | 7d | 2026-06-20 A | 2026-10-11 | CO-R10.S04-WE-SD-140, PRO-R10-SD-DL-130 FF+3d | 70% | -38d |
| CO-R10.S04-WE-SD-160 |  | Testing Works for Catch Basins of Storm Drainage Network-[Road 10]-[SW-4] | 10d | 2026-06-23 A | 2026-10-14 | CO-R10.S04-WE-SD-150, CO-R10.S04-WE-SD-120, PRO-R10-SD-DL-110 FF+3d | 70% | -38d |
| CO-R10.S04-WE-SD-170 |  | Trench Backfilling and Compaction Works for Catch Basins of Storm Drainage Network-[Road 10]-[SW-4] | 7d | 2026-10-12 | 2026-10-19 | CO-R10.S04-WE-SD-160 SS+3d, CO-R10.S04-WE-SD-160 FF+3d |  | -38d |
|  | PW | **Potable Water Network** |  | 2025-10-01 | 2027-01-02 |  |  |  |
|  | ML | **Main Line Sections** |  | 2025-10-01 | 2026-06-24 |  |  |  |
| CO-R10.S04-WE-PW-100 |  | Trench Excavation and Bedding Works for Main Lines of Potable Water Network-[Road 10]-[SW-4] | 10d | 2025-10-01 A | 2025-10-07 A | CO-R10.S04-WE-EW-110, CO-R10.S04-WE-EW-100, CO-R10.S04-WE-SD-130 | 100% |  |
| CO-R10.S04-WE-PW-110 |  | Pipes Laying and accessories for Main Lines of Potable Water Network-[Road 10]-[SW-4] | 10d | 2025-10-02 A | 2026-06-18 A | CO-R10.S04-WE-PW-100, PRO-R10-PW-DL-100 FF+3d, PRO-R10-PW-DL-110 FF+3d | 100% |  |
| CO-R10.S04-WE-PW-130 |  | Trench Backfilling and Compaction Works for Main Lines of Potable Water Network-[Road 10]-[SW-4] | 4d | 2026-06-11 A | 2026-06-24 A | CO-R10.S04-WE-PW-110, CO-R10.S04-WE-PW-220 FF, CO-R10.S04-WE-PW-160 FF | 100% |  |
|  | VC | **Valve Chamber** |  | 2026-06-21 | 2026-10-24 |  |  |  |
| CO-R10.S04-WE-PW-210 |  | Insulation Works for Main Line Valves and Valve Chambers of Potable Water Network-[Road 10]-[SW-4] | 1d | 2026-06-21 A | 2026-10-20 | CO-R10.S04-WE-PW-200 | 60% | -77d |
| CO-R10.S04-WE-PW-170 |  | Excavation Works for Main Line Valves and Valve Chambers of Potable Water Network-[Road 10]-[SW-4] | 1d | 2026-10-06 | 2026-10-06 | CO-R10.S04-WE-PW-100 |  | -83d |
| CO-R10.S04-WE-PW-180 |  | RC Footing Works for Main Line Valves and Valve Chambers of Potable Water Network-[Road 10]-[SW-4] | 3d | 2026-10-07 | 2026-10-10 | CO-R10.S04-WE-PW-170 |  | -77d |
| CO-R10.S04-WE-PW-190 |  | RC Wall Works for Main Line Valves and Valve Chambers of Potable Water Network-[Road 10]-[SW-4] | 6d | 2026-10-11 | 2026-10-17 | CO-R10.S04-WE-PW-180 |  | -77d |
| CO-R10.S04-WE-PW-200 |  | RC Slab Works for Main Line Valves and Valve Chambers of Potable Water Network-[Road 10]-[SW-4] | 2d | 2026-10-18 | 2026-10-19 | CO-R10.S04-WE-PW-190 |  | -77d |
| CO-R10.S04-WE-PW-220 |  | Backfilling Works for Main Line Valves and Valve Chambers of Potable Water Network-[Road 10]-[SW-4] | 3d | 2026-10-21 | 2026-10-24 | CO-R10.S04-WE-PW-210 |  | -77d |
|  | FH | **Fire Hydrant** |  | 2026-12-09 | 2027-01-02 |  |  |  |
| CO-R10.S04-WE-PW-140 |  | Excavation Works for Fire Hydrants of Potable Water Network-[Road 10]-[SW-4] | 7d | 2026-12-09 | 2026-12-16 | CO-R10.S04-WE-PW-110 SS+3d, CO-R10.S04-WE-EW-110, CO-R10.S04-WE-SW-130 SS+3d, CO-R10.S04-WE-SW-130 FF+3d, CO-R10.S04-WE-PW-170 |  | -137d |
| CO-R10.S04-WE-PW-150 |  | Installation Works for Fire Hydrant of Potable Water Network-[Road 10]-[SW-4] | 7d | 2026-12-17 | 2026-12-24 | CO-R10.S04-WE-PW-140, PRO-R10-PW-DL-120 FF+3d |  | -137d |
| CO-R10.S04-WE-PW-160 |  | Trench Backfilling and Compaction Works for Fire Hydrants of Potable Water Network-[Road 10]-[SW-4] | 7d | 2026-12-26 | 2027-01-02 | CO-R10.S04-WE-PW-150 |  | -137d |
|  | IR | **Irrigation Network** |  | 2026-10-06 | 2026-11-03 |  |  |  |
|  | ML | **Main Line Pipes** |  | 2026-10-06 | 2026-11-03 |  |  |  |
| CO-R10.S04-WE-IR-100 |  | Trench Excavation and Bedding Works for Main Lines of Irrigation Network-[Road 10]-[SW-4] | 6d | 2026-10-06 | 2026-10-12 | CO-R10.S04-WE-EW-110 |  | -194d |
| CO-R10.S04-WE-IR-110 |  | Pipes Laying Works for Main Lines of Irrigation Network-[Road 10]-[SW-4] | 7d | 2026-10-13 | 2026-10-20 | CO-R10.S04-WE-IR-100, PRO-R19.2-IR-DL-100 FF+3d |  | -194d |

| ID | WBS | Task | Duration | Start | Finish | Predecessors | Complete | Total float |
| --- | --- | --- | --- | --- | --- | --- | --- | --- |
| CO-R10.S04-WE-IR-120 |  | Installation Works for Main Line Valves of Irrigation Network-[Road 10]-[SW-4] | 3d | 2026-10-26 | 2026-10-28 | CO-R10.S04-WE-IR-110, PRO-R19.2-IR-DL-110 FF+3d |  | -198d |
| CO-R10.S04-WE-IR-130 |  | Trench Backfilling and Compaction Works for Main Lines of Irrigation Network-[Road 10]-[SW-4] | 5d | 2026-10-29 | 2026-11-03 | CO-R10.S04-WE-IR-120, CO-R10.S04-WE-IR-110 |  | -198d |
|  | SL | **Street Lighting Network** |  | 2026-11-04 | 2027-02-25 |  |  |  |
|  | LP | **Lighting Poles Works** |  | 2026-11-04 | 2027-01-26 |  |  |  |
| CO-R10.S04-WE-SL-100 |  | Foundation Excavation Works for Lighting Poles of Street Lighting Network-[Road 10]-[SW-4] | 10d | 2026-11-04 | 2026-11-15 | CO-R10.S04-WE-EW-110, CO-R10.S04-WE-EW-100, CO-R10.S04-WE-IR-130 |  | -198d |
| CO-R10.S04-WE-SL-110 |  | Installation Works for Lighting Poles Foundation of Street Lighting Network-[Road 10]-[SW-4] | 10d | 2026-11-10 | 2026-11-21 | CO-R10.S04-WE-SL-100 SS+5d, CO-R10.S04-WE-SL-100 FF+5d, PRO-R10-SL-DL-110 FF+3d |  | -198d |
| CO-R10.S04-WE-SL-120 |  | Installation Works for Lighting Poles of Street Lighting Network-[Road 10]-[SW-4] | 18d | 2026-11-16 | 2026-12-06 | CO-R10.S04-WE-SL-110 SS+5d, CO-R10.S04-WE-SL-110 FF+5d, PRO-R10-SL-DL-120 FF+3d |  | -198d |
| CO-R10.S04-WE-SL-210 |  | Backfilling Works for Lighting Poles of Street Lighting Network-[Road 10]-[SW-4] | 15d | 2026-11-19 | 2026-12-06 | CO-R10.S04-WE-SL-120 SS, CO-R10.S04-WE-SL-120 FF, CO-R10.S03-WE-SL-210 |  | -86.5d |
| CO-R10.S04-WE-SL-200 |  | Testing Works for Lighting Poles of Street Lighting Network-[Road 10]-[SW-4] | 7d | 2026-12-07 | 2026-12-14 | CO-R10.S04-WE-SL-210, CO-R10.S04-WE-SL-120 |  | -86.5d |
| CO-R10.S04-WE-SL-130 |  | Installation Works for Lighting Fixtures With Drop Wire of Street Lighting Network-[Road 10]-[SW-4] | 18d | 2027-01-06 | 2027-01-26 | CO-R10.S04-WE-SL-120 SS+5d, CO-R10.S04-WE-SL-120 FF+5d, PRO-R10-SL-DL-140 FF+3d, CO-R10.S04-WE-SL-200 FF |  | -123.5d |
|  | CW | **Cabling Works** |  | 2026-12-07 | 2027-01-10 |  |  |  |
| CO-R10.S04-WE-SL-140 |  | Trench Excavation and Bedding Works for Street Lighting Network-[Road 10]-[SW-4] | 10d | 2026-12-07 | 2026-12-17 | CO-R10.S04-WE-IR-130, CO-R10.S04-WE-EW-110, CO-R10.S04-WE-SL-120, CO-R10.S04-WE-SL-110 |  | -198d |
| CO-R10.S04-WE-SL-150 |  | Cable Laying Works for Street Lighting Network-[Road 10]-[SW-4] | 10d | 2026-12-19 | 2026-12-29 | CO-R10.S04-WE-SL-140, PRO-R10-SL-DL-100 FF+3d |  | -198d |
| CO-R10.S04-WE-SL-160 |  | Trench Backfilling and Compaction Works for Street Lighting Network-[Road 10]-[SW-4] | 10d | 2026-12-30 | 2027-01-10 | CO-R10.S04-WE-SL-150, CO-R10.S04-WE-IR-130 |  | -198d |
|  | DPB | **Distrubution Panel Boards** |  | 2027-01-11 | 2027-02-25 |  |  |  |
| CO-R10.S04-WE-SL-170 |  | Foundation Excavation Works For Panel Boards of Street Lighting Network-[Road 10]-[SW-4] | 18d | 2027-01-11 | 2027-01-31 | CO-R10.S04-WE-EW-110, CO-R10.S04-WE-SL-160 |  | -198d |
| CO-R10.S04-WE-SL-180 |  | Installation Works for Panel Board Concrete Foundations of Street Lighting Network-[Road 10]-[SW-4] | 12d | 2027-01-21 | 2027-02-03 | CO-R10.S04-WE-SL-170 SS+3d, CO-R10.S04-WE-SL-170 FF+3d |  | -189d |
| CO-R10.S04-WE-SL-190 |  | Installation Works for Lighting Panel Boards of Street Lighting Network-[Road 10]-[SW-4] | 12d | 2027-02-04 | 2027-02-17 | CO-R10.S04-WE-SL-180, PRO-R10-SL-DL-160 FF+3d |  | -189d |
| CO-R10.S04-WE-SL-220 |  | A wall of concrete blocks to install the KWH meter of Street Lighting Network-[Road 10]-[SW-4] | 18d | 2027-02-04 | 2027-02-25 | CO-R10.S04-WE-SL-180 |  | -189d |
|  | TE | **Telecom Network** |  | 2027-03-08 | 2027-04-12 |  |  |  |
|  | PD | **Ducts Works** |  | 2027-03-08 | 2027-04-12 |  |  |  |
| CO-R10.S04-WE-TE-100 |  | Trench Excavation and Bedding Works for Ducts of Telecom Network-[Road 10]-[SW-4] | 7d | 2027-03-08 | 2027-03-18 | CO-R10.S04-WE-IR-130 SS+3d, CO-R10.S04-WE-IR-130 FF+3d, CO-R10.S04-WE-SL-160 SS+5d, CO-R10.S04-WE-SL-160 FF+5d, CO-R10.S04-WE-EW-110, CO-R10.S03-WE-TE-100 |  | -219d |
| CO-R10.S04-WE-TE-110 |  | Pipes Laying Works for Ducts of Telecom Network-[Road 10]-[SW-4] | 7d | 2027-03-20 | 2027-03-27 | CO-R10.S04-WE-TE-100, PRO-R10-TE-DL-100 FF+3d |  | -219d |
| CO-R10.S04-WE-TE-120 |  | Pouring Plain Concrete Above Ducts of Telecom Network-[Road 10]-[SW-4] | 7d | 2027-03-28 | 2027-04-04 | CO-R10.S04-WE-TE-110 |  | -219d |
| CO-R10.S04-WE-TE-130 |  | Trench Backfilling and Compaction Works for Ducts of Telecom Network-[Road 10]-[SW-4] | 7d | 2027-04-05 | 2027-04-12 | CO-R10.S04-WE-TE-120 |  | -219d |
|  | MH | **Manholes Works** |  | 2027-03-20 | 2027-04-12 |  |  |  |
| CO-R10.S04-WE-TE-140 |  | Excavation Works for Manholes of Telecom Network-[Road 10]-[SW-4] | 7d | 2027-03-20 | 2027-03-27 | CO-R10.S03-ES-TE-140, CO-R10.S04-WE-TE-100, CO-R10.S03-WE-TE-140 |  | -219d |
| CO-R10.S04-WE-TE-150 |  | Installation Works for Manholes of Telecom Network-[Road 10]-[SW-4] | 7d | 2027-03-28 | 2027-04-04 | CO-R10.S04-WE-TE-140, PRO-R10-TE-DL-110 FF+3d |  | -219d |
| CO-R10.S04-WE-TE-160 |  | Backfilling Works for Manholes of Telecom Network-[Road 10]-[SW-4] | 7d | 2027-04-05 | 2027-04-12 | CO-R10.S04-WE-TE-150 |  | -219d |
|  | RD | **Road Works** |  | 2026-08-25 | 2027-06-21 |  |  |  |
|  | RD | **Pre-Bituminous Construction** |  | 2027-04-13 | 2027-04-29 |  |  |  |
| CO-R10.S04-WE-RD-100 |  | Capping and Subgrade Layer for Road Works-[Road 10]-[SW-4] | 12d | 2027-04-13 | 2027-04-26 | CO-R10.S04-WE-SD-130, CO-R10.S04-WE-SW-130, CO-R10.S04-WE-PW-130, CO-R10.S04-WE-PW-160, CO-R10.S04-WE-SL-160 SS+3d, CO-R10.S04-WE-SL-160 FF+3d, PRO-R10-RD-DL-100 FF+3d, CO-R10.S04-WE-TE-130, CO-R10.S04-WE-TE-160 |  | -219d |
| CO-R10.S04-WE-RD-110 |  | Aggregate Base Course Layer for Road Works-[Road 10]-[SW-4] | 12d | 2027-04-17 | 2027-04-29 | CO-R10.S04-WE-RD-100 SS+3d, CO-R10.S04-WE-RD-100 FF+3d, CO-R10.S04-WE-SD-170 SS+3d, CO-R10.S04-WE-SD-170 FF+3d, PRO-R10-RD-DL-110 FF+3d |  | -191d |
|  | LS | **Pavement Works** |  | 2026-08-25 | 2027-06-21 |  |  |  |
| CO-R10.S04-WE-RD-120 |  | Fixing of Curbstone for Sidewalks Pavement-[Road 10]-[SW-4] | 12d | 2026-08-25 A | 2026-08-31 A | PRO-R10-RD-DL-130 FF+3d, CO-R10.S04-WE-RD-110 SS+3d, CO-R10.S04-WE-RD-110 FF+3d | 100% |  |
| CO-R10.S04-WE-RD-130 |  | Fixing of Interlock Tiles for Sidewalks Pavement-[Road 10]-[SW-4] | 12d | 2026-08-25 A | 2027-06-21 | PRO-R10-RD-DL-120 FF+3d, CO-R10.S04-WE-RD-120 SS+3d, CO-R10.S04-WE-RD-120 FF+3d, CO-R10-PW-TF-100, CO-R10-PW-TF-110, CO-R10-PW-TF-120, CO-R10-SW-TF-100, CO-R10-SW-TF-110, CO-R10-SW-TF-130, CO-R10-SD-TF-100, CO-R10-SD-TF-120, CO-R10-SL-TF-140, CO-R10-SL-TF-150, CO-R10-SL-ES-140, CO-R10-SL-ES-150, CO-R10-IR-TF-120, CO-R10-MV-TF-140, CO-R10-SL-TF-380 | 50% | -216d |
|  | 5 | **Road 11 Local 1 ( 670 LM )** |  | 2025-04-23 | 2027-07-31 |  |  |  |
|  | SW_5 | **SW_5** |  | 2025-04-26 | 2027-07-31 |  |  |  |
|  | EW | **Earthworks** |  | 2025-04-26 | 2025-05-03 |  |  |  |
|  | EW | **Earthworks** |  | 2025-04-26 | 2025-05-03 |  |  |  |
| CO-R11.S05-EW-100 |  | Roadway Excavation Works Upto Design Level for Earthworks-[Road 11]-[SW-5] | 12d | 2025-04-26 A | 2025-04-27 A | ENG-MS-RD-A-10, ENG-SH-RD-A-100, CO-R14.S08-EW-100 | 100% |  |
| CO-R11.S05-EW-110 |  | Embankments Works Upto Design Level for Earthworks-[Road 11]-[SW-5] | 12d | 2025-04-26 A | 2025-05-03 A | CO-R11.S05-EW-100, ENG-MS-RD-A-10, ENG-SH-RD-A-100 | 100% |  |
|  | SW | **Sewage Network** |  | 2025-08-12 | 2026-08-31 |  |  |  |
|  | ML | **Main Line Sections** |  | 2025-08-12 | 2026-04-06 |  |  |  |
| CO-R11.S05-SW-100 |  | Trench Excavation and Bedding Works for Main Lines of Sewage Network-[Road 11]-[SW-5] | 12d | 2025-08-12 A | 2025-08-14 A | CO-R11.S05-EW-110, ENG-MS-SW-ML-A-110, ENG-SH-SW-ML-A-110 | 100% |  |
| CO-R11.S05-SW-120 |  | Pipes Laying Works for Main Lines of Sewage Network-[Road 11]-[SW-5] | 12d | 2025-09-16 A | 2026-04-05 A | CO-R11.S05-SW-100, PRO-R11-SW-DL-100 FF+3d | 100% |  |
| CO-R11.S05-SW-130 |  | Trench Backfilling and Compaction Works for Main Lines of Sewage Network-[Road 11]-[SW-5] | 12d | 2025-09-18 A | 2026-04-06 A | ENG-SH-SW-ML-A-110 FF, ENG-MS-SW-ML-A-110 FF, CO-R11.S05-SW-120 | 100% |  |
|  | 1 | **Manholes** |  | 2026-08-20 | 2026-08-31 |  |  |  |
| CO-R11.S05-SW-160 |  | Excavation Works for Main Line Manholes of Sewage Network-[Road 11]-[SW-5] | 1d | 2026-08-20 A | 2026-08-20 A | CO-R11.S05-SW-120 SS | 100% |  |
| CO-R11.S05-SW-170 |  | Installation RC Footing Works for Main Line Manholes of Sewage Network-[Road 11]-[SW-5] | 2d | 2026-08-22 A | 2026-08-23 A | CO-R11.S05-SW-160, PRO-R11-SW-DL-110 FF+3d | 100% |  |
| CO-R11.S05-SW-180 |  | Install Grp Liner Wall Works for Main Line Manholes of Sewage Network-[Road 11]-[SW-5] | 4d | 2026-08-24 A | 2026-08-27 A | CO-R11.S05-SW-170 | 100% |  |
| CO-R11.S05-SW-190 |  | Pouring Grp Liner Wall Works for Main Line Manholes of Sewage Network-[Road 11]-[SW-5] | 1d | 2026-08-28 A | 2026-08-28 A | CO-R11.S05-SW-180 | 100% |  |
| CO-R11.S05-SW-200 |  | Backfilling Works for Main Line Manholes of Sewage Network-[Road 11]-[SW-5] | 4d | 2026-08-29 A | 2026-08-30 A | CO-R11.S05-SW-190 | 100% |  |
| CO-R11.S05-SW-210 |  | Testing Works for Main Line Manholes of Sewage Network-[Road 11]-[SW-5] | 1d | 2026-08-30 A | 2026-08-31 A | CO-R11.S05-SW-200 | 100% |  |
|  | SD | **Storm Drainage Network** |  | 2025-07-29 | 2026-04-30 |  |  |  |
|  | ML | **Main Line Sections** |  | 2025-07-29 | 2025-08-20 |  |  |  |
| CO-R11.S05-SD-100 |  | Trench Excavation and Bedding Works for Main Lines of Storm Drainage Network-[Road 11]-[SW-5] | 10d | 2025-07-29 A | 2025-08-03 A | ENG-SH-SD-ML-A-110, CO-R11.S05-EW-110, CO-R11.S05-EW-100, ENG-MS-SD-ML-A-110 | 100% |  |
| CO-R11.S05-SD-120 |  | Pipes Laying Works for Main Lines of Storm Drainage Network-[Road 11]-[SW-5] | 10d | 2025-08-12 A | 2025-08-14 A | CO-R11.S05-SD-100 | 100% |  |
| CO-R11.S05-SD-130 |  | Trench Backfilling and Compaction Works for Main Lines of Storm Drainage Network-[Road 11]-[SW-5] | 15d | 2025-08-13 A | 2025-08-20 A | CO-R11.S05-SD-120 SS+3d, CO-R11.S05-SD-120 FF+3d, ENG-SH-SD-ML-A-110 FF, ENG-MS-SD-ML-A-110 FF, CO-R11.S05-SD-120 | 100% |  |
|  | MH | **Manholes** |  | 2026-03-22 | 2026-04-07 |  |  |  |
| CO-R11.S05-SD-180 |  | Trench Excavation and Bedding Works for Manholes of Storm Drainage Network-[Road 11]-[SW-5] | 1d | 2026-03-22 A | 2026-03-31 A | CO-R11.S05-SD-120 SS, PRO-SD-1DL-100 | 100% |  |
| CO-R11.S05-SD-190 |  | Install RC Footing Works for Manholes of Storm Drainage Network-[Road 11]-[SW-5] | 1d | 2026-04-01 A | 2026-04-01 A | CO-R11.S05-SD-180 | 100% |  |
| CO-R11.S05-SD-200 |  | Install RC Wall Rings & Slab Works for Manholes of Storm Drainage Network-[Road 11]-[SW-5] | 4d | 2026-04-02 A | 2026-04-04 A | CO-R11.S05-SD-190 | 100% |  |
| CO-R11.S05-SD-210 |  | Testing Works for Manholes of Storm Drainage Network-[Road 11]-[SW-5] | 1d | 2026-04-05 A | 2026-04-06 A | CO-R11.S05-SD-200 | 100% |  |
| CO-R11.S05-SD-220 |  | Backfilling Works for Manholes of Storm Drainage Network-[Road 11]-[SW-5] | 7d | 2026-04-06 A | 2026-04-07 A | CO-R11.S05-SD-210 | 100% |  |
|  | CB | **Catch Basin Sections** |  | 2026-04-25 | 2026-04-30 |  |  |  |
| CO-R11.S05-SD-140 |  | Trench Excavation and Bedding Works for Catch Basins of Storm Drainage Network-[Road 11]-[SW-5] | 6d | 2026-04-25 A | 2026-04-30 A | CO-R11.S05-EW-110, ENG-SH-SD-CB-A-110, ENG-MS-SD-CB-A-110, CO-R11.S05-SD-220, CO-R14.S08-SD-140 | 100% |  |
| CO-R11.S05-SD-150 |  | Installation and Pipes Laying Connection Works for Catch Basins of Storm Drainage Network-[Road 11]-[SW-5] | 7d | 2026-04-25 A | 2026-04-30 A | CO-R11.S05-SD-140 | 100% |  |
| CO-R11.S05-SD-160 |  | Testing Works for Catch Basins of Storm Drainage Network-[Road 11]-[SW-5] | 10d | 2026-04-25 A | 2026-04-30 A | CO-R11.S05-SD-150, CO-R11.S05-SD-120 | 100% |  |
| CO-R11.S05-SD-170 |  | Trench Backfilling and Compaction Works for Catch Basins of Storm Drainage Network-[Road 11]-[SW-5] | 7d | 2026-04-25 A | 2026-04-30 A | CO-R11.S05-SD-160 | 100% |  |

| ID | WBS | Task | Duration | Start | Finish | Predecessors | Complete | Total float | Constraint |
| --- | --- | --- | --- | --- | --- | --- | --- | --- | --- |
|  | IR | **Irrigation Network** |  | 2026-04-25 | 2026-11-19 |  |  |  |  |
|  | ML | **Main Line Pipes** |  | 2026-04-25 | 2026-11-19 |  |  |  |  |
| CO-R11.S05-IR-100 |  | Trench Excavation and Bedding Works for Main Lines of Irrigation Network-[Road 11]-[SW-5] | 4d | 2026-04-25 A | 2026-04-30 A | ENG-SH-IR-ML-A-110, CO-R11.S05-EW-110, CO-R11.S05-SD-170, ENG-MS-IR-ML-A-110 | 100% |  |  |
| CO-R11.S05-IR-110 |  | Pipes Laying Works for Main Lines of Irrigation Network-[Road 11]-[SW-5] | 7d | 2026-04-25 A | 2026-11-09 | CO-R11.S05-IR-100, PRO-R11-IR-DL-140 FF+3d | 70% | -133d |  |
| CO-R11.S05-IR-120 |  | Installation Works for Main Line Valves of Irrigation Network-[Road 11]-[SW-5] | 3d | 2026-11-09 | 2026-11-11 | CO-R11.S05-IR-110, PRO-R11-IR-DL-150 FF+3d |  | -133d |  |
| CO-R11.S05-IR-130 |  | Trench Backfilling and Compaction Works for Main Lines of Irrigation Network-[Road 11]-[SW-5] | 7d | 2026-11-12 | 2026-11-19 | CO-R11.S05-IR-120, CO-R11.S05-IR-110 |  | -133d |  |
|  | TE | **Telecom Network** |  | 2026-07-08 | 2027-04-12 |  |  |  |  |
|  | PD | **Ducts Works** |  | 2026-07-08 | 2026-07-13 |  |  |  |  |
| CO-R11.S05-TE-100 |  | Trench Excavation and Bedding Works for Ducts of Telecom Network-[Road 11]-[SW-5] | 3d | 2026-07-08 A | 2026-07-13 A | CO-R11.S05-IR-130, CO-R11.S05-EW-110, CO-R14.S08-TE-100 | 100% |  |  |
| CO-R11.S05-TE-110 |  | Pipes Laying Works for Ducts of Telecom Network-[Road 11]-[SW-5] | 7d | 2026-07-08 A | 2026-07-13 A | CO-R11.S05-TE-100, CO-R10.S03-ES-TE-110, CO-R10.S03-WE-TE-110 | 100% |  |  |
| CO-R11.S05-TE-120 |  | Pouring Plain Concrete Above Ducts of Telecom Network-[Road 11]-[SW-5] | 7d | 2026-07-08 A | 2026-07-13 A | CO-R11.S05-TE-110, CO-R10.S03-ES-TE-120, CO-R10.S03-WE-TE-120 | 100% |  |  |
| CO-R11.S05-TE-130 |  | Trench Backfilling and Compaction Works for Ducts of Telecom Network-[Road 11]-[SW-5] | 7d | 2026-07-08 A | 2026-07-13 A | CO-R11.S05-TE-120, CO-R11.S05-TE-120 FF+3d, CO-R10.S03-ES-TE-130, CO-R10.S03-WE-TE-130 | 100% |  |  |
|  | MH | **Manholes Works** |  | 2027-03-20 | 2027-04-12 |  |  |  |  |
| CO-R11.S05-TE-140 |  | Excavation Works for Manholes of Telecom Network-[Road 11]-[SW-5] | 7d | 2027-03-20 | 2027-03-27 | CO-R10.S03-ES-TE-140, CO-R11.S05-TE-100, CO-R10.S03-WE-TE-140 |  | -206d |  |
| CO-R11.S05-TE-150 |  | Installation Works for Manholes of Telecom Network-[Road 11]-[SW-5] | 7d | 2027-03-28 | 2027-04-04 | CO-R11.S05-TE-140, CO-R10.S03-ES-TE-150, CO-R10.S03-WE-TE-150 |  | -204d |  |
| CO-R11.S05-TE-160 |  | Backfilling Works for Manholes of Telecom Network-[Road 11]-[SW-5] | 7d | 2027-04-05 | 2027-04-12 | CO-R11.S05-TE-150, CO-R10.S03-ES-TE-160, CO-R10.S03-WE-TE-160 |  | -204d |  |
|  | MV | **Medium Voltage Network** |  | 2026-07-08 | 2026-07-13 |  |  |  |  |
|  | CW | **Cabling Works** |  | 2026-07-08 | 2026-07-13 |  |  |  |  |
| CO-R11.S05-MV-100 |  | Trench Excavation and Bedding Works for Medium Voltage Network-[Road 11]-[SW-5] | 18d | 2026-07-08 A | 2026-07-13 A | ENG-SH-MV-A-110, CO-R11.S05-SD-170 SS+3d, CO-R11.S05-SD-170 FF+3d, CO-R10.S03-ES-MV-100, ENG-MS-MV-A-110, CO-R10.S03-WE-MV-100 | 100% |  |  |
| CO-R11.S05-MV-110 |  | Cable Laying Works for Medium Voltage Network-[Road 11]-[SW-5] | 18d | 2026-07-08 A | 2026-07-13 A | CO-R11.S05-MV-100 SS+3d, CO-R11.S05-MV-100 FF+3d, CO-R10.S03-ES-MV-110, CO-R10.S03-WE-MV-110 | 100% |  |  |
| CO-R11.S05-MV-120 |  | Trench Backfilling and Compaction Works for Medium Voltage Network-[Road 11]-[SW-5] | 18d | 2026-07-08 A | 2026-07-13 A | CO-R11.S05-MV-110 SS+3d, CO-R11.S05-MV-110 FF+3d, CO-R10.S03-ES-MV-120, CO-R10.S03-WE-MV-120 | 100% |  |  |
|  | RD | **Road Works** |  | 2026-03-29 | 2027-07-31 |  |  |  |  |
|  | RD | **Pre-Bituminous Construction** |  | 2026-03-29 | 2026-04-21 |  |  |  |  |
| CO-R11.S05-RD-P-100 |  | Capping and Subgrade Layer for Road Works-[Road 11]-[SW-5] | 18d | 2026-03-29 A | 2026-04-04 A | ENG-SH-RD-A-100, CO-R11.S05-SD-130, CO-R11.S05-SW-130, ENG-MS-RD-A-10, CO-R11.S05-TE-130, CO-R11.S05-TE-160, CO-R11.S05-MV-120 SS+3d, CO-R11.S05-MV-120 FF+3d | 100% |  |  |
| CO-R11.S05-RD-P-110 |  | Aggregate Base Course Layer for Road Works-[Road 11]-[SW-5] | 18d | 2026-04-09 A | 2026-04-21 A | CO-R11.S05-RD-P-100 SS+3d, CO-R11.S05-RD-P-100 FF+3d, CO-R11.S05-SD-170 SS+3d, CO-R11.S05-SD-170 FF+3d, CO-R10.S03-ES-RD-110, CO-R10.S03-WE-RD-110 | 100% |  |  |
|  | LS | **Pavement Works** |  | 2026-08-25 | 2027-07-31 |  |  |  |  |
| CO-R11.S05-RD-P-120 |  | Fixing of Curbstone for Sidewalks Pavement-[Road 11]-[SW-5] | 18d | 2026-08-25 A | 2026-08-31 A | CO-R10.S03-ES-RD-120, CO-R11.S05-RD-P-110 SS+3d, CO-R11.S05-RD-P-110 FF+3d, CO-R10.S03-WE-RD-120 | 100% |  |  |
| CO-R11.S05-RD-P-130 |  | Fixing of Interlock Tiles for Sidewalks Pavement-[Road 11]-[SW-5] | 10d | 2026-08-25 A | 2027-07-31 | CO-R11.S05-RD-P-120 SS+3d, CO-R11.S05-RD-P-120 FF+3d, CO-R10.S03-ES-RD-130, CO-R11-PW-TF-100, CO-R11-PW-TF-110, CO-R11-PW-TF-120, CO-R11-SW-TF-100, CO-R11-SW-TF-110, CO-R11-SW-TF-130, CO-R11-SD-TF-100, CO-R11-SL-TF-160, CO-R11-SL-TF-170, CO-R11-IR-TF-130, CO-R11-MV-TF-160, CO-R10.S03-WE-RD-130 | 50% | -242d |  |
|  | SW_6 | **SW_6** |  | 2025-04-23 | 2027-07-31 |  |  |  |  |
|  | EW | **Earthworks** |  | 2025-04-23 | 2025-05-03 |  |  |  |  |
|  | EW | **Earthworks** |  | 2025-04-23 | 2025-05-03 |  |  |  |  |
| CO-R11.S06-EW-100 |  | Roadway Excavation Works Upto Design Level for Earthworks-[Road 11]-[SW-6] | 12d | 2025-04-23 A | 2025-04-27 A | ENG-MS-RD-A-10, ENG-SH-RD-A-100, CO-R11.S05-EW-100 | 100% |  |  |
| CO-R11.S06-EW-110 |  | Embankments Works Upto Design Level for Earthworks-[Road 11]-[SW-6] | 12d | 2025-04-26 A | 2025-05-03 A | CO-R11.S06-EW-100, ENG-MS-RD-A-10, ENG-SH-RD-A-100 | 100% |  |  |
|  | SW | **Sewage Network** |  | 2025-09-16 | 2026-10-11 |  |  |  |  |
|  | ML | **Main Line Sections** |  | 2025-09-16 | 2026-07-05 |  |  |  |  |
| CO-R11.S06-SW-100 |  | Trench Excavation and Bedding Works for Main Lines of Sewage Network-[Road 11]-[SW-6] | 12d | 2025-09-16 A | 2026-07-01 A | CO-R11.S06-EW-110, ENG-MS-SW-ML-A-110, ENG-SH-SW-ML-A-110, CO-R11.S05-SW-100 | 100% |  |  |
| CO-R11.S06-SW-120 |  | Pipes Laying Works for Main Lines of Sewage Network-[Road 11]-[SW-6] | 12d | 2025-09-20 A | 2026-06-30 A | CO-R11.S06-SW-100, PRO-R11-SW-DL-100 FF+3d | 100% |  |  |
| CO-R11.S06-SW-130 |  | Trench Backfilling and Compaction Works for Main Lines of Sewage Network-[Road 11]-[SW-6] | 10d | 2025-09-29 A | 2026-07-05 A | CO-R11.S06-SW-120, CO-R11.S06-SW-210 FF | 100% |  |  |
|  | 1 | **Manholes** |  | 2026-04-01 | 2026-10-11 |  |  |  |  |
| CO-R11.S06-SW-160 |  | Excavation Works for Main Line Manholes of Sewage Network-[Road 11]-[SW-6] | 1d | 2026-04-01 A | 2026-04-05 A | CO-R11.S06-SW-120 SS | 100% |  |  |
| CO-R11.S06-SW-170 |  | Installation RC Footing Works for Main Line Manholes of Sewage Network-[Road 11]-[SW-6] | 2d | 2026-04-01 A | 2026-04-06 A | CO-R11.S06-SW-160, PRO-R11-SW-DL-110 FF+3d | 100% |  |  |
| CO-R11.S06-SW-180 |  | Install Grp Liner Wall Works for Main Line Manholes of Sewage Network-[Road 11]-[SW-6] | 4d | 2026-04-02 A | 2026-10-10 | CO-R11.S06-SW-170 | 50% | -51d |  |
| CO-R11.S06-SW-190 |  | Pouring Grp Liner Wall Works for Main Line Manholes of Sewage Network-[Road 11]-[SW-6] | 1d | 2026-07-01 A | 2026-07-06 A | CO-R11.S06-SW-180 | 100% |  |  |
| CO-R11.S06-SW-200 |  | Backfilling Works for Main Line Manholes of Sewage Network-[Road 11]-[SW-6] | 4d | 2026-07-01 A | 2026-07-09 A | CO-R11.S06-SW-190 | 100% |  |  |
| CO-R11.S06-SW-210 |  | Testing Works for Main Line Manholes of Sewage Network-[Road 11]-[SW-6] | 1d | 2026-10-11 | 2026-10-11 | CO-R11.S06-SW-200 |  | -51d |  |
|  | SD | **Storm Drainage Network** |  | 2025-08-05 | 2026-07-07 |  |  |  |  |
|  | ML | **Main Line Sections** |  | 2025-08-05 | 2025-08-14 |  |  |  |  |
| CO-R11.S06-SD-100 |  | Trench Excavation and Bedding Works for Main Lines of Storm Drainage Network-[Road 11]-[SW-6] | 10d | 2025-08-05 A | 2025-08-06 A | CO-R11.S06-EW-110, CO-R11.S06-EW-100, CO-R11.S05-SD-100 | 100% |  |  |
| CO-R11.S06-SD-120 |  | Pipes Laying Works for Main Lines of Storm Drainage Network-[Road 11]-[SW-6] | 10d | 2025-08-07 A | 2025-08-09 A | PRO-R11-SD-DL-120 FF+3d, CO-R11.S06-SD-100 | 100% |  |  |
| CO-R11.S06-SD-130 |  | Trench Backfilling and Compaction Works for Main Lines of Storm Drainage Network-[Road 11]-[SW-6] | 15d | 2025-08-10 A | 2025-08-14 A | CO-R11.S06-SD-120 | 100% |  |  |
|  | MH | **Manholes** |  | 2026-03-31 | 2026-04-06 |  |  |  |  |
| CO-R11.S06-SD-180 |  | Trench Excavation and Bedding Works for Manholes of Storm Drainage Network-[Road 11]-[SW-6] | 1d | 2026-03-31 A | 2026-03-31 A | CO-R11.S06-SD-120 SS, PRO-SD-1DL-100 | 100% |  |  |
| CO-R11.S06-SD-190 |  | Install RC Footing Works for Manholes of Storm Drainage Network-[Road 11]-[SW-6] | 1d | 2026-04-01 A | 2026-04-01 A | CO-R11.S06-SD-180 | 100% |  |  |
| CO-R11.S06-SD-200 |  | Install RC Wall Rings & Slab Works for Manholes of Storm Drainage Network-[Road 11]-[SW-6] | 4d | 2026-04-02 A | 2026-04-05 A | CO-R11.S06-SD-190 | 100% |  |  |
| CO-R11.S06-SD-210 |  | Testing Works for Manholes of Storm Drainage Network-[Road 11]-[SW-6] | 1d | 2026-04-05 A | 2026-04-06 A | CO-R11.S06-SD-200 | 100% |  |  |
| CO-R11.S06-SD-220 |  | Backfilling Works for Manholes of Storm Drainage Network-[Road 11]-[SW-6] | 7d | 2026-04-05 A | 2026-04-06 A | CO-R11.S06-SD-210 | 100% |  | start on or after 2026-04-05 |
|  | CB | **Catch Basin Sections** |  | 2026-06-14 | 2026-07-07 |  |  |  |  |
| CO-R11.S06-SD-160 |  | Testing Works for Catch Basins of Storm Drainage Network-[Road 11]-[SW-6] | 6d | 2026-06-14 A | 2026-06-20 A | CO-R11.S06-SD-150, CO-R11.S06-SD-120, PRO-R11-SD-DL-110 FF+3d | 100% |  |  |
| CO-R11.S06-SD-140 |  | Trench Excavation and Bedding Works for Catch Basins of Storm Drainage Network-[Road 11]-[SW-6] | 7d | 2026-06-24 A | 2026-07-01 A | CO-R11.S06-EW-110, CO-R11.S06-SD-220, CO-R11.S05-SD-140 | 100% |  |  |
| CO-R11.S06-SD-150 |  | Installation and Pipes Laying Connection Works for Catch Basins of Storm Drainage Network-[Road 11]-[SW-6] | 7d | 2026-06-27 A | 2026-07-01 A | CO-R11.S06-SD-140, PRO-R11-SD-DL-130 FF+3d | 100% |  |  |
| CO-R11.S06-SD-170 |  | Trench Backfilling and Compaction Works for Catch Basins of Storm Drainage Network-[Road 11]-[SW-6] | 7d | 2026-06-30 A | 2026-07-07 A | CO-R11.S06-SD-160 | 100% |  |  |
|  | PW | **Potable Water Network** |  | 2025-08-14 | 2027-02-10 |  |  |  |  |
|  | ML | **Main Line Sections** |  | 2025-08-14 | 2025-08-21 |  |  |  |  |
| CO-R11.S06-PW-100 |  | Trench Excavation and Bedding Works for Main Lines of Potable Water Network-[Road 11]-[SW-6] | 6d | 2025-08-14 A | 2025-08-16 A | CO-R11.S06-EW-110, CO-R11.S06-EW-100 | 100% |  |  |
| CO-R11.S06-PW-110 |  | Pipes Laying and accessories for Main Lines of Potable Water Network-[Road 11]-[SW-6] | 10d | 2025-08-17 A | 2025-08-18 A | CO-R11.S06-PW-100, PRO-R11-PW-DL-100 FF+3d | 100% |  |  |
| CO-R11.S06-PW-130 |  | Trench Backfilling and Compaction Works for Main Lines of Potable Water Network-[Road 11]-[SW-6] | 10d | 2025-08-19 A | 2025-08-21 A | CO-R11.S06-PW-110 | 100% |  |  |
|  | VC | **Valve Chamber** |  | 2027-02-04 | 2027-02-10 |  |  |  |  |
| CO-R11.S06-PW-210 |  | Installation Works for Main Line Valves and Valve Chambers of Potable Water Network-[Road 11]-[SW-6] | 6d | 2027-02-04 | 2027-02-10 | CO-R11.S06-PW-100, PRO-R11-PW-DL-110 |  | -144d |  |
|  | FH | **Fire Hydrant** |  | 2026-10-06 | 2026-10-29 |  |  |  |  |
| CO-R11.S06-PW-140 |  | Excavation Works for Fire Hydrants of Potable Water Network-[Road 11]-[SW-6] | 7d | 2026-10-06 | 2026-10-13 | CO-R11.S06-PW-110 SS+3d, CO-R11.S06-PW-110 FF+3d, CO-R11.S06-EW-110 |  | -67d |  |

| ID | WBS | Task | Duration | Start | Finish | Predecessors | Complete | Total float |
| --- | --- | --- | --- | --- | --- | --- | --- | --- |
| CO-R11.S06-PW-150 |  | Installation Works for Fire Hydrant of Potable Water Network-[Road 11]-[SW-6] | 7d | 2026-10-14 | 2026-10-21 | CO-R11.S06-PW-140, PRO-R11-PW-DL-120 FF+3d |  | -67d |
| CO-R11.S06-PW-160 |  | Trench Backfilling and Compaction Works for Fire Hydrants of Potable Water Network-[Road 11]-[SW-6] | 7d | 2026-10-22 | 2026-10-29 | CO-R11.S06-PW-150 |  | -67d |
|  | SL | **Street Lighting Network** |  | 2026-07-07 | 2027-05-02 |  |  |  |
|  | LP | **Lighting Poles Works** |  | 2026-07-07 | 2027-05-02 |  |  |  |
| CO-R11.S06-SL-100 |  | Foundation Excavation Works for Lighting Poles of Street Lighting Network-[Road 11]-[SW-6] | 12d | 2026-07-07 A | 2026-07-13 A | CO-R11.S06-EW-110, CO-R11.S06-EW-100, CO-R11.S06-PW-130 | 100% |  |
| CO-R11.S06-SL-110 |  | Installation Works for Lighting Poles Foundation of Street Lighting Network-[Road 11]-[SW-6] | 10d | 2026-07-07 A | 2026-07-13 A | CO-R11.S06-SL-100, CO-R10.S04-ES-SL-110, PRO-R11-SL-DL-110 FF+3d, CO-R10.S04-WE-SL-110 | 100% |  |
| CO-R11.S06-SL-120 |  | Installation Works for Lighting Poles of Street Lighting Network-[Road 11]-[SW-6] | 18d | 2026-07-07 A | 2026-07-13 A | CO-R11.S06-SL-110 SS+5d, CO-R11.S06-SL-110 FF+5d, PRO-R11-SL-DL-120 FF+3d | 100% |  |
| CO-R11.S06-SL-210 |  | Backfilling Works for Lighting Poles of Street Lighting Network-[Road 11]-[SW-6] | 15d | 2027-04-01 | 2027-04-18 | CO-R11.S06-SL-120 SS, CO-R11.S06-SL-120 FF, CO-R14.S08-SL-210 |  | -178.5d |
| CO-R11.S06-SL-130 |  | Installation Works for Lighting Fixtures With Drop Wire of Street Lighting Network-[Road 11]-[SW-6] | 18d | 2027-04-12 | 2027-05-02 | CO-R11.S06-SL-120, CO-R10.S04-ES-SL-130, PRO-R11-SL-DL-140 FF+3d, CO-R11.S06-SL-200 FF, CO-R10.S04-WE-SL-130 |  | -183.5d |
| CO-R11.S06-SL-200 |  | Testing Works for Lighting Poles of Street Lighting Network-[Road 11]-[SW-6] | 7d | 2027-04-19 | 2027-04-26 | CO-R11.S06-SL-210, CO-R11.S06-SL-120 |  | -178.5d |
|  | CW | **Cabling Works** |  | 2026-07-09 | 2026-12-02 |  |  |  |
| CO-R11.S06-SL-140 |  | Trench Excavation and Bedding Works for Street Lighting Network-[Road 11]-[SW-6] | 10d | 2026-07-09 A | 2026-07-13 A | CO-R11.S06-EW-110, CO-R11.S06-SL-120, CO-R11.S06-SL-110 | 100% |  |
| CO-R11.S06-SL-150 |  | Cable Laying Works for Street Lighting Network-[Road 11]-[SW-6] | 10d | 2026-07-09 A | 2026-07-13 A | CO-R11.S06-SL-140, PRO-R11-SL-DL-100 FF+3d | 100% |  |
| CO-R11.S06-SL-160 |  | Trench Backfilling and Compaction Works for Street Lighting Network-[Road 11]-[SW-6] | 10d | 2026-11-22 | 2026-12-02 | CO-R11.S06-SL-150 |  | -144d |
|  | DPB | **Distrubution Panel Boards** |  | 2027-02-01 | 2027-03-18 |  |  |  |
| CO-R11.S06-SL-170 |  | Foundation Excavation Works For Panel Boards of Street Lighting Network-[Road 11]-[SW-6] | 12d | 2027-02-01 | 2027-02-14 | CO-R11.S06-EW-110, CO-R10.S04-ES-SL-170, CO-R10.S04-WE-SL-170 |  | -198d |
| CO-R11.S06-SL-180 |  | Installation Works for Panel Board Concrete Foundations of Street Lighting Network-[Road 11]-[SW-6] | 12d | 2027-02-15 | 2027-03-01 | CO-R11.S06-SL-170, CO-R10.S04-ES-SL-180, CO-R10.S04-WE-SL-180 |  | -198d |
| CO-R11.S06-SL-190 |  | Installation Works for Lighting Panel Boards of Street Lighting Network-[Road 11]-[SW-6] | 12d | 2027-03-02 | 2027-03-18 | CO-R11.S06-SL-180, CO-R10.S04-ES-SL-190, CO-R10.S04-WE-SL-190 |  | -198d |
| CO-R11.S06-SL-220 |  | A wall of concrete blocks to install the KWH meter of Street Lighting Network-[Road 11]-[SW-6] | 12d | 2027-03-02 | 2027-03-18 | CO-R11.S06-SL-180 |  | -192d |
|  | TE | **Telecom Network** |  | 2026-07-09 | 2027-04-20 |  |  |  |
|  | PD | **Ducts Works** |  | 2026-07-09 | 2026-07-12 |  |  |  |
| CO-R11.S06-TE-100 |  | Trench Excavation and Bedding Works for Ducts of Telecom Network-[Road 11]-[SW-6] | 3d | 2026-07-09 A | 2026-07-12 A | CO-R11.S06-SL-160, CO-R11.S06-EW-110, CO-R11.S05-TE-100 | 100% |  |
| CO-R11.S06-TE-110 |  | Pipes Laying Works for Ducts of Telecom Network-[Road 11]-[SW-6] | 7d | 2026-07-09 A | 2026-07-12 A | CO-R11.S06-TE-100, CO-R10.S04-ES-TE-110, PRO-R11-TE-DL-100 FF+3d, CO-R10.S04-WE-TE-110 | 100% |  |
| CO-R11.S06-TE-120 |  | Pouring Plain Concrete Above Ducts of Telecom Network-[Road 11]-[SW-6] | 7d | 2026-07-09 A | 2026-07-12 A | CO-R11.S06-TE-110, CO-R10.S04-ES-TE-120, CO-R10.S04-WE-TE-120 | 100% |  |
| CO-R11.S06-TE-130 |  | Trench Backfilling and Compaction Works for Ducts of Telecom Network-[Road 11]-[SW-6] | 7d | 2026-07-09 A | 2026-07-12 A | CO-R11.S06-TE-120, CO-R10.S04-ES-TE-130, CO-R10.S04-WE-TE-130 | 100% |  |
|  | MH | **Manholes Works** |  | 2027-03-28 | 2027-04-20 |  |  |  |
| CO-R11.S06-TE-140 |  | Excavation Works for Manholes of Telecom Network-[Road 11]-[SW-6] | 7d | 2027-03-28 | 2027-04-04 | CO-R10.S04-ES-TE-140, CO-R11.S05-TE-140 SS, CO-R11.S06-TE-100 SS+6d, CO-R11.S06-TE-100 FF+6d, CO-R10.S04-WE-TE-140 |  | -211d |
| CO-R11.S06-TE-150 |  | Installation Works for Manholes of Telecom Network-[Road 11]-[SW-6] | 7d | 2027-04-05 | 2027-04-12 | CO-R11.S06-TE-140, CO-R10.S04-ES-TE-150, PRO-R11-TE-DL-110 FF+3d, CO-R10.S04-WE-TE-150 |  | -211d |
| CO-R11.S06-TE-160 |  | Backfilling Works for Manholes of Telecom Network-[Road 11]-[SW-6] | 7d | 2027-04-13 | 2027-04-20 | CO-R11.S06-TE-150, CO-R10.S04-ES-TE-160, CO-R10.S04-WE-TE-160 |  | -211d |
|  | MV | **Medium Voltage Network** |  | 2026-07-08 | 2026-07-13 |  |  |  |
|  | CW | **Cabling Works** |  | 2026-07-08 | 2026-07-13 |  |  |  |
| CO-R11.S06-MV-100 |  | Trench Excavation and Bedding Works for Medium Voltage Network-[Road 11]-[SW-6] | 12d | 2026-07-08 A | 2026-07-13 A | CO-R11.S06-SD-170 SS+3d, CO-R11.S06-SD-170 FF+3d, CO-R11.S06-EW-110, CO-R11.S06-TE-130 SS+3d, CO-R11.S06-TE-130 FF+3d, CO-R11.S05-MV-100 SS | 100% |  |
| CO-R11.S06-MV-110 |  | Cable Laying Works for Medium Voltage Network-[Road 11]-[SW-6] | 12d | 2026-07-08 A | 2026-07-13 A | CO-R11.S06-MV-100 SS+3d, CO-R11.S06-MV-100 FF+3d, PRO-R11-MV-DL-100 FF+3d | 100% |  |
| CO-R11.S06-MV-120 |  | Trench Backfilling and Compaction Works for Medium Voltage Network-[Road 11]-[SW-6] | 12d | 2026-07-08 A | 2026-07-13 A | CO-R11.S06-MV-110 SS+3d, CO-R11.S06-MV-110 FF+3d, CO-R11.S06-PW-130 FF+3d | 100% |  |
|  | RD | **Road Works** |  | 2026-04-01 | 2027-07-31 |  |  |  |
|  | RD | **Pre-Bituminous Construction** |  | 2026-04-01 | 2026-04-16 |  |  |  |
| CO-R11.S06-RD-P-100 |  | Capping and Subgrade Layer for Road Works-[Road 11]-[SW-6] | 12d | 2026-04-01 A | 2026-04-07 A | CO-R11.S06-SD-130, CO-R11.S06-PW-130, CO-R11.S06-PW-160, CO-R11.S06-SL-160 SS+3d, CO-R11.S06-SL-160 FF+3d, PRO-R11-RD-DL-100 FF+3d, CO-R11.S06-TE-130, CO-R11.S06-TE-160, CO-R11.S06-MV-120 SS+3d, CO-R11.S06-MV-120 FF+3d, CO-R11.S06-SW-130 | 100% |  |
| CO-R11.S06-RD-P-110 |  | Aggregate Base Course Layer for Road Works-[Road 11]-[SW-6] | 18d | 2026-04-08 A | 2026-04-16 A | CO-R11.S06-RD-P-100 SS+3d, CO-R11.S06-RD-P-100 FF+3d, CO-R11.S06-SD-170 SS+3d, CO-R11.S06-SD-170 FF+3d, CO-R10.S04-ES-RD-110, PRO-R11-RD-DL-110 FF+3d, CO-R10.S04-WE-RD-110 | 100% |  |
|  | LS | **Pavement Works** |  | 2026-06-01 | 2027-07-31 |  |  |  |
| CO-R11.S06-RD-P-120 |  | Fixing of Curbstone for Sidewalks Pavement-[Road 11]-[SW-6] | 18d | 2026-06-01 A | 2026-08-31 A | PRO-R11-RD-DL-130 FF+3d, CO-R10.S04-ES-RD-120, CO-R11.S06-RD-P-110 SS+3d, CO-R11.S06-RD-P-110 FF+3d, CO-R10.S04-WE-RD-120 | 100% |  |
| CO-R11.S06-RD-P-130 |  | Fixing of Interlock Tiles for Sidewalks Pavement-[Road 11]-[SW-6] | 10d | 2026-08-25 A | 2027-07-31 | PRO-R11-RD-DL-120 FF+3d, CO-R11.S06-RD-P-120 SS+3d, CO-R11.S06-RD-P-120 FF+3d, CO-R10.S04-ES-RD-130, CO-R11-PW-TF-100, CO-R11-PW-TF-110, CO-R11-PW-TF-120, CO-R11-SW-TF-100, CO-R11-SW-TF-110, CO-R11-SW-TF-130, CO-R11-SD-TF-100, CO-R11-SD-TF-120, CO-R11-SL-TF-160, CO-R11-SL-TF-170, CO-R11-IR-TF-130, CO-R11-MV-TF-160, CO-R10.S04-WE-RD-130 | 50% | -240d |
|  | 6 | **Road 14 Local 1 ( 584 LM )** |  | 2025-04-17 | 2027-08-14 |  |  |  |
|  | SW_7 | **SW_7** |  | 2025-04-17 | 2027-08-14 |  |  |  |
|  | EW | **Earthworks** |  | 2025-04-17 | 2025-05-03 |  |  |  |
|  | EW | **Earthworks** |  | 2025-04-17 | 2025-05-03 |  |  |  |
| CO-R14.S07-EW-100 |  | Roadway Excavation Works Upto Design Level for Earthworks-[Road 14]-[SW-7] | 10d | 2025-04-17 A | 2025-04-27 A | ENG-MS-RD-A-10, ENG-SH-RD-A-100, CO-R09.S02-EW-110 | 100% |  |
| CO-R14.S07-EW-110 |  | Embankments Works Upto Design Level for Earthworks-[Road 14]-[SW-7] | 10d | 2025-04-19 A | 2025-05-03 A | CO-R14.S07-EW-100 SS+2d, CO-R14.S07-EW-100 FF+2d, CO-R14.S07-EW-100, ENG-MS-RD-A-10, ENG-SH-RD-A-100 | 100% |  |
|  | SW | **Sewage Network** |  | 2025-08-10 | 2026-10-06 |  |  |  |
|  | ML | **Main Line Sections** |  | 2025-08-10 | 2025-08-21 |  |  |  |
| CO-R14.S07-SW-100 |  | Trench Excavation and Bedding Works for Main Lines of Sewage Network-[Road 14]-[SW-7] | 12d | 2025-08-10 A | 2025-08-14 A | CO-R14.S07-EW-110, ENG-MS-SW-ML-A-110, ENG-SH-SW-ML-A-110 | 100% |  |
| CO-R14.S07-SW-120 |  | Pipes Laying Works for Main Lines of Sewage Network-[Road 14]-[SW-7] | 12d | 2025-08-16 A | 2025-08-18 A | CO-R14.S07-SW-100, PRO-R14-SW-DL-100 FF+3d | 100% |  |
| CO-R14.S07-SW-130 |  | Trench Backfilling and Compaction Works for Main Lines of Sewage Network-[Road 14]-[SW-7] | 12d | 2025-08-19 A | 2025-08-21 A | ENG-SH-SW-ML-A-110 FF, ENG-MS-SW-ML-A-110 FF, CO-R14.S07-SW-120 | 100% |  |
|  | 1 | **Manholes** |  | 2025-08-19 | 2026-10-06 |  |  |  |
| CO-R14.S07-SW-160 |  | Excavation Works for Main Line Manholes of Sewage Network-[Road 14]-[SW-7] | 1d | 2025-08-19 A | 2025-08-21 A | CO-R14.S07-SW-120 SS | 100% |  |
| CO-R14.S07-SW-170 |  | Installation RC Footing Works for Main Line Manholes of Sewage Network-[Road 14]-[SW-7] | 2d | 2025-08-23 A | 2025-08-25 A | CO-R14.S07-SW-160, PRO-R14-SW-DL-110 FF+3d | 100% |  |
| CO-R14.S07-SW-180 |  | Install Grp Liner Wall Works for Main Line Manholes of Sewage Network-[Road 14]-[SW-7] | 4d | 2025-08-26 A | 2025-08-28 A | CO-R14.S07-SW-170 | 100% |  |
| CO-R14.S07-SW-200 |  | Backfilling Works for Main Line Manholes of Sewage Network-[Road 14]-[SW-7] | 4d | 2025-08-30 A | 2025-08-31 A | CO-R14.S07-SW-180 | 100% |  |
| CO-R14.S07-SW-190 |  | Pouring Grp Liner Wall Works for Main Line Manholes of Sewage Network-[Road 14]-[SW-7] | 1d | 2026-07-01 A | 2026-07-07 A | CO-R14.S07-SW-180 | 100% |  |
| CO-R14.S07-SW-210 |  | Testing Works for Main Line Manholes of Sewage Network-[Road 14]-[SW-7] | 1d | 2026-10-06 | 2026-10-06 | CO-R14.S07-SW-200, CO-R14.S07-SW-190 |  | -35d |
|  | SD | **Storm Drainage Network** |  | 2025-08-10 | 2026-06-04 |  |  |  |
|  | ML | **Main Line Sections** |  | 2025-08-10 | 2025-08-28 |  |  |  |
| CO-R14.S07-SD-100 |  | Trench Excavation and Bedding Works for Main Lines of Storm Drainage Network-[Road 14]-[SW-7] | 10d | 2025-08-10 A | 2025-08-14 A | ENG-SH-SD-ML-A-110, CO-R14.S07-EW-110, CO-R14.S07-EW-100, ENG-MS-SD-ML-A-110 | 100% |  |
| CO-R14.S07-SD-120 |  | Pipes Laying Works for Main Lines of Storm Drainage Network-[Road 14]-[SW-7] | 10d | 2025-08-16 A | 2025-08-18 A | CO-R14.S07-SD-100 | 100% |  |
| CO-R14.S07-SD-130 |  | Trench Backfilling and Compaction Works for Main Lines of Storm Drainage Network-[Road 14]-[SW-7] | 15d | 2025-08-27 A | 2025-08-28 A | CO-R14.S07-SD-120 SS+3d, CO-R14.S07-SD-120 FF+3d, ENG-SH-SD-ML-A-110 FF, CO-R11.S05-SD-130, ENG-MS-SD-ML-A-110 FF, CO-R14.S07-SD-120, CO-R14.S07-SD-220 FF | 100% |  |
|  | MH | **Manholes** |  | 2025-08-16 | 2026-06-04 |  |  |  |
| CO-R14.S07-SD-180 |  | Trench Excavation and Bedding Works for Manholes of Storm Drainage Network-[Road 14]-[SW-7] | 1d | 2025-08-16 A | 2025-08-17 A | PRO-SD-1DL-100, CO-R14.S07-SD-100 | 100% |  |
| CO-R14.S07-SD-190 |  | Install RC Footing Works for Manholes of Storm Drainage Network-[Road 14]-[SW-7] | 1d | 2025-08-18 A | 2025-08-20 A | CO-R14.S07-SD-180 | 100% |  |
| CO-R14.S07-SD-200 |  | Install RC Wall Rings & Slab Works for Manholes of Storm Drainage Network-[Road 14]-[SW-7] | 4d | 2025-08-21 A | 2025-08-23 A | CO-R14.S07-SD-190 | 100% |  |
| CO-R14.S07-SD-220 |  | Backfilling Works for Manholes of Storm Drainage Network-[Road 14]-[SW-7] | 7d | 2025-08-24 A | 2025-08-26 A | CO-R14.S07-SD-200 | 100% |  |
| CO-R14.S07-SD-210 |  | Testing Works for Manholes of Storm Drainage Network-[Road 14]-[SW-7] | 1d | 2026-06-04 A | 2026-06-04 A | CO-R14.S07-SD-200 | 100% |  |

| ID | WBS | Task | Duration | Start | Finish | Predecessors | Complete | Total float |
| --- | --- | --- | --- | --- | --- | --- | --- | --- |
|  | CB | **Catch Basin Sections** |  | 2025-12-01 | 2025-12-08 |  |  |  |
| CO-R14.S07-SD-140 |  | Trench Excavation and Bedding Works for Catch Basins of Storm Drainage Network-[Road 14]-[SW-7] | 6d | 2025-12-01 A | 2025-12-08 A | CO-R14.S07-EW-110, ENG-SH-SD-CB-A-110, ENG-MS-SD-CB-A-110, CO-R14.S07-SD-220, CO-R09.S02-SD-140 | 100% |  |
| CO-R14.S07-SD-150 |  | Installation and Pipes Laying Connection Works for Catch Basins of Storm Drainage Network-[Road 14]-[SW-7] | 7d | 2025-12-01 A | 2025-12-08 A | CO-R14.S07-SD-140 | 100% |  |
| CO-R14.S07-SD-160 |  | Testing Works for Catch Basins of Storm Drainage Network-[Road 14]-[SW-7] | 4d | 2025-12-01 A | 2025-12-08 A | CO-R14.S07-SD-150 FS+3d, CO-R14.S07-SD-120 | 100% |  |
| CO-R14.S07-SD-170 |  | Trench Backfilling and Compaction Works for Catch Basins of Storm Drainage Network-[Road 14]-[SW-7] | 7d | 2025-12-01 A | 2025-12-08 A | CO-R14.S07-SD-160 | 100% |  |
|  | IR | **Irrigation Network** |  | 2025-10-11 | 2025-12-07 |  |  |  |
|  | ML | **Main Line Pipes** |  | 2025-10-11 | 2025-12-07 |  |  |  |
| CO-R14.S07-IR-130 |  | Trench Backfilling and Compaction Works for Main Lines of Irrigation Network-[Road 14]-[SW-7] | 10d | 2025-10-11 A | 2025-10-12 A | CO-R14.S07-IR-120, CO-R14.S07-IR-110 | 100% |  |
| CO-R14.S07-IR-100 |  | Trench Excavation and Bedding Works for Main Lines of Irrigation Network-[Road 14]-[SW-7] | 7d | 2025-10-13 A | 2025-10-13 A | ENG-SH-IR-ML-A-110, CO-R14.S07-EW-110, CO-R14.S07-SD-170, ENG-MS-IR-ML-A-110 | 100% |  |
| CO-R14.S07-IR-110 |  | Pipes Laying Works for Main Lines of Irrigation Network-[Road 14]-[SW-7] | 10d | 2025-10-13 A | 2025-10-13 A | CO-R14.S07-IR-100, CO-R14.S07-IR-100 FF+3d, PRO-R11-IR-DL-140 FF+3d, PRO-R14-IR-DL-100 FS+3d | 100% |  |
| CO-R14.S07-IR-120 |  | Installation Works for Main Line Valves of Irrigation Network-[Road 14]-[SW-7] | 7d | 2025-12-01 A | 2025-12-07 A | CO-R14.S07-IR-110, PRO-R11-IR-DL-150 FF+3d, PRO-R14-IR-DL-110 | 100% |  |
|  | SL | **Street Lighting Network** |  | 2026-09-29 | 2027-04-06 |  |  |  |
|  | LP | **Lighting Poles Works** |  | 2026-11-09 | 2027-04-06 |  |  |  |
| CO-R14.S07-SL-100 |  | Foundation Excavation Works for Lighting Poles of Street Lighting Network-[Road 14]-[SW-7] | 12d | 2026-11-09 | 2026-11-22 | CO-R14.S07-EW-110, ENG-SH-SL-A-110, CO-R14.S07-EW-100, ENG-MS-SL-A-110, CO-R14.S07-IR-130 |  | -171d |
| CO-R14.S07-SL-110 |  | Installation Works for Lighting Poles Foundation of Street Lighting Network-[Road 14]-[SW-7] | 12d | 2026-11-23 | 2026-12-06 | CO-R14.S07-SL-100 |  | -171d |
| CO-R14.S07-SL-120 |  | Installation Works for Lighting Poles of Street Lighting Network-[Road 14]-[SW-7] | 17.5d | 2026-12-07 | 2026-12-27 | CO-R14.S07-SL-110 |  | -171d |
| CO-R14.S07-SL-130 |  | Installation Works for Lighting Fixtures With Drop Wire of Street Lighting Network-[Road 14]-[SW-7] | 18d | 2027-03-17 | 2027-04-06 | CO-R14.S07-SL-120 SS+5d, CO-R14.S07-SL-120 FF+5d, CO-R14.S07-SL-200 FF |  | -192d |
| CO-R14.S07-SL-210 |  | Backfilling Works for Lighting Poles of Street Lighting Network-[Road 14]-[SW-7] | 12d | 2027-03-18 | 2027-03-31 | CO-R14.S07-SL-120 SS, CO-R14.S07-SL-120 FF, CO-R09.S02-SL-210 |  | -192d |
| CO-R14.S07-SL-200 |  | Testing Works for Lighting Poles of Street Lighting Network-[Road 14]-[SW-7] | 5d | 2027-04-01 | 2027-04-06 | CO-R14.S07-SL-210, CO-R14.S07-SL-120 |  | -192d |
|  | CW | **Cabling Works** |  | 2026-09-29 | 2026-10-04 |  |  |  |
| CO-R14.S07-SL-140 |  | Trench Excavation and Bedding Works for Street Lighting Network-[Road 14]-[SW-7] | 10d | 2026-09-29 A | 2026-10-04 A | ENG-SH-SL-A-110, CO-R14.S07-IR-130, CO-R14.S07-EW-110, CO-R14.S07-SL-120, CO-R14.S07-SL-110, ENG-MS-SL-A-110 | 100% |  |
| CO-R14.S07-SL-150 |  | Cable Laying Works for Street Lighting Network-[Road 14]-[SW-7] | 10d | 2026-09-29 A | 2026-10-04 A | CO-R14.S07-SL-140 | 100% |  |
| CO-R14.S07-SL-160 |  | Trench Backfilling and Compaction Works for Street Lighting Network-[Road 14]-[SW-7] | 10d | 2026-09-29 A | 2026-10-04 A | CO-R14.S07-SL-150, CO-R14.S07-IR-130 | 100% |  |
|  | DPB | **Distrubution Panel Boards** |  | 2026-10-06 | 2026-11-02 |  |  |  |
| salman |  | Foundation Excavation Works For Panel Boards of Street Lighting Network-[Road 14]-[SW-7] | 18d | 2026-10-06 | 2026-10-26 | CO-R14.S07-EW-110, ENG-SH-SL-A-110, ENG-MS-SL-A-110 |  | -67d |
| CO-R14.S07-SL-180 |  | Installation Works for Panel Board Concrete Foundations of Street Lighting Network-[Road 14]-[SW-7] | 18d | 2026-10-10 | 2026-10-29 | salman SS+3d, salman FF+3d |  | -67d |
| CO-R14.S07-SL-220 |  | A wall of concrete blocks to install the KWH meter of Street Lighting Network-[Road 14]-[SW-7] | 18d | 2026-10-10 | 2026-10-29 | CO-R14.S07-SL-180 SS, CO-R14.S07-SL-180 FF |  | -64d |
| CO-R14.S07-SL-190 |  | Installation Works for Lighting Panel Boards of Street Lighting Network-[Road 14]-[SW-7] | 18d | 2026-10-13 | 2026-11-02 | CO-R14.S07-SL-180 SS+3d, CO-R14.S07-SL-180 FF+3d |  | -67d |
|  | TE | **Telecom Network** |  | 2027-02-25 | 2027-04-20 |  |  |  |
|  | PD | **Ducts Works** |  | 2027-02-25 | 2027-04-12 |  |  |  |
| CO-R14.S07-TE-100 |  | Trench Excavation and Bedding Works for Ducts of Telecom Network-[Road 14]-[SW-7] | 3d | 2027-02-25 | 2027-02-28 | CO-R14.S07-IR-130 SS+3d, CO-R14.S07-IR-130 FF+3d, CO-R14.S07-SL-160 SS+5d, CO-R14.S07-SL-160 FF+5d, CO-R14.S07-EW-110, CO-R09.S02-TE-100 |  | -221d |
| CO-R14.S07-TE-110 |  | Pipes Laying Works for Ducts of Telecom Network-[Road 14]-[SW-7] | 7d | 2027-03-20 | 2027-03-27 | CO-R14.S07-TE-100, CO-R11.S05-TE-110 |  | -192d |
| CO-R14.S07-TE-120 |  | Pouring Plain Concrete Above Ducts of Telecom Network-[Road 14]-[SW-7] | 7d | 2027-03-28 | 2027-04-04 | CO-R14.S07-TE-110, CO-R11.S05-TE-120 |  | -192d |
| CO-R14.S07-TE-130 |  | Trench Backfilling and Compaction Works for Ducts of Telecom Network-[Road 14]-[SW-7] | 7d | 2027-04-05 | 2027-04-12 | CO-R14.S07-TE-120, CO-R11.S05-TE-130 |  | -192d |
|  | MH | **Manholes Works** |  | 2027-03-28 | 2027-04-20 |  |  |  |
| CO-R14.S07-TE-140 |  | Excavation Works for Manholes of Telecom Network-[Road 14]-[SW-7] | 7d | 2027-03-28 | 2027-04-04 | CO-R11.S05-TE-140, CO-R14.S07-TE-100 |  | -206d |
| CO-R14.S07-TE-150 |  | Installation Works for Manholes of Telecom Network-[Road 14]-[SW-7] | 7d | 2027-04-05 | 2027-04-12 | CO-R14.S07-TE-140, CO-R11.S05-TE-150 |  | -199d |
| CO-R14.S07-TE-160 |  | Backfilling Works for Manholes of Telecom Network-[Road 14]-[SW-7] | 7d | 2027-04-13 | 2027-04-20 | CO-R14.S07-TE-150, CO-R11.S05-TE-160 |  | -199d |
|  | RD | **Road Works** |  | 2026-08-18 | 2027-08-14 |  |  |  |
|  | RD | **Pre-Bituminous Construction** |  | 2026-08-18 | 2027-05-29 |  |  |  |
| CO-R14.S07-RD-P-100 |  | Capping and Subgrade Layer for Road Works-[Road 14]-[SW-7] | 18d | 2026-08-18 A | 2026-08-23 A | ENG-SH-RD-A-100, CO-R14.S07-SD-130, CO-R14.S07-SW-130, CO-R14.S07-SL-160 SS+3d, CO-R14.S07-SL-160 FF+3d, ENG-MS-RD-A-10, CO-R14.S07-TE-130, CO-R14.S07-TE-160 | 100% |  |
| CO-R14.S07-RD-P-110 |  | Aggregate Base Course Layer for Road Works-[Road 14]-[SW-7] | 18d | 2027-05-03 | 2027-05-29 | CO-R14.S07-RD-P-100 SS+3d, CO-R14.S07-RD-P-100 FF+3d, CO-R14.S07-SD-170 SS+3d, CO-R14.S07-SD-170 FF+3d, CO-R11.S05-RD-P-110 |  | -191d |
|  | LS | **Pavement Works** |  | 2026-08-25 | 2027-08-14 |  |  |  |
| CO-R14.S07-RD-P-120 |  | Fixing of Curbstone for Sidewalks Pavement-[Road 14]-[SW-7] | 18d | 2026-08-25 A | 2026-08-31 A | CO-R11.S05-RD-P-120, CO-R14.S07-RD-P-110 SS+3d, CO-R14.S07-RD-P-110 FF+3d | 100% |  |
| CO-R14.S07-RD-P-130 |  | Fixing of Interlock Tiles for Sidewalks Pavement-[Road 14]-[SW-7] | 12d | 2026-08-25 A | 2027-08-14 | CO-R14.S07-RD-P-120 SS+3d, CO-R14.S07-RD-P-120 FF+3d, CO-R11.S05-RD-P-130, CO-R14-PW-TF-100, CO-R14-PW-TF-110, CO-R14-PW-TF-120, CO-R14-SW-TF-100, CO-R14-SW-TF-110, CO-R14-SW-TF-130, CO-R11-SL-TF-180, CO-R11-SL-TF-190, CO-R11-IR-TF-140, CO-R11-MV-TF-180 | 50% | -242d |
|  | SW_8 | **SW_8** |  | 2025-04-23 | 2027-08-14 |  |  |  |
|  | EW | **Earthworks** |  | 2025-04-23 | 2025-05-03 |  |  |  |
|  | EW | **Earthworks** |  | 2025-04-23 | 2025-05-03 |  |  |  |
| CO-R14.S08-EW-100 |  | Roadway Excavation Works Upto Design Level for Earthworks-[Road 14]-[SW-8] | 12d | 2025-04-23 A | 2025-04-27 A | ENG-MS-RD-A-10, ENG-SH-RD-A-100, CO-R14.S07-EW-100 | 100% |  |
| CO-R14.S08-EW-110 |  | Embankments Works Upto Design Level for Earthworks-[Road 14]-[SW-8] | 12d | 2025-04-26 A | 2025-05-03 A | CO-R14.S08-EW-100, ENG-MS-RD-A-10, ENG-SH-RD-A-100 | 100% |  |
|  | SW | **Sewage Network** |  | 2025-08-02 | 2026-10-06 |  |  |  |
|  | ML | **Main Line Sections** |  | 2025-08-02 | 2025-08-06 |  |  |  |
| CO-R14.S08-SW-100 |  | Trench Excavation and Bedding Works for Main Lines of Sewage Network-[Road 14]-[SW-8] | 12d | 2025-08-02 A | 2025-08-03 A | CO-R14.S08-EW-110, ENG-MS-SW-ML-A-110, ENG-SH-SW-ML-A-110 | 100% |  |
| CO-R14.S08-SW-120 |  | Pipes Laying Works for Main Lines of Sewage Network-[Road 14]-[SW-8] | 12d | 2025-08-04 A | 2025-08-05 A | CO-R14.S08-SW-100, PRO-R14-SW-DL-100 FF+3d | 100% |  |
| CO-R14.S08-SW-130 |  | Trench Backfilling and Compaction Works for Main Lines of Sewage Network-[Road 14]-[SW-8] | 12d | 2025-08-06 A | 2025-08-06 A | CO-R14.S08-SW-120 | 100% |  |
|  | 1 | **Manholes** |  | 2025-08-10 | 2026-10-06 |  |  |  |
| CO-R14.S08-SW-160 |  | Excavation Works for Main Line Manholes of Sewage Network-[Road 14]-[SW-8] | 1d | 2025-08-10 A | 2025-08-13 A | CO-R14.S08-SW-120 SS | 100% |  |
| CO-R14.S08-SW-170 |  | Installation RC Footing Works for Main Line Manholes of Sewage Network-[Road 14]-[SW-8] | 2d | 2025-08-14 A | 2025-08-17 A | CO-R14.S08-SW-160, PRO-R14-SW-DL-110 FF+3d | 100% |  |
| CO-R14.S08-SW-180 |  | Install Grp Liner Wall Works for Main Line Manholes of Sewage Network-[Road 14]-[SW-8] | 4d | 2025-08-18 A | 2025-08-19 A | CO-R14.S08-SW-170 | 100% |  |
| CO-R14.S08-SW-200 |  | Backfilling Works for Main Line Manholes of Sewage Network-[Road 14]-[SW-8] | 4d | 2025-08-20 A | 2025-08-21 A | CO-R14.S08-SW-180 | 100% |  |
| CO-R14.S08-SW-190 |  | Pouring Grp Liner Wall Works for Main Line Manholes of Sewage Network-[Road 14]-[SW-8] | 1d | 2026-07-01 A | 2026-07-04 A | CO-R14.S08-SW-180 | 100% |  |
| CO-R14.S08-SW-210 |  | Testing Works for Main Line Manholes of Sewage Network-[Road 14]-[SW-8] | 1d | 2026-10-06 | 2026-10-06 | CO-R14.S08-SW-200, CO-R14.S08-SW-190 |  | -35d |
|  | SD | **Storm Drainage Network** |  | 2025-08-06 | 2026-07-13 |  |  |  |
|  | ML | **Main Line Sections** |  | 2025-08-06 | 2025-08-08 |  |  |  |
| CO-R14.S08-SD-100 |  | Trench Excavation and Bedding Works for Main Lines of Storm Drainage Network-[Road 14]-[SW-8] | 10d | 2025-08-06 A | 2025-08-06 A | CO-R14.S08-EW-110, CO-R14.S08-EW-100, CO-R14.S08-SW-130 SS+3d, CO-R14.S08-SW-130 FF+3d | 100% |  |
| CO-R14.S08-SD-120 |  | Pipes Laying Works for Main Lines of Storm Drainage Network-[Road 14]-[SW-8] | 10d | 2025-08-07 A | 2025-08-07 A | PRO-R14-SD-DL-120 FF+3d, CO-R14.S08-SD-100 | 100% |  |
| CO-R14.S08-SD-130 |  | Trench Backfilling and Compaction Works for Main Lines of Storm Drainage Network-[Road 14]-[SW-8] | 15d | 2025-08-08 A | 2025-08-08 A | CO-R14.S08-SD-120 SS+3d, CO-R14.S08-SD-120 FF+3d, CO-R14.S08-SD-120 | 100% |  |
|  | MH | **Manholes** |  | 2025-10-09 | 2026-06-04 |  |  |  |
| CO-R14.S08-SD-180 |  | Trench Excavation and Bedding Works for Manholes of Storm Drainage Network-[Road 14]-[SW-8] | 1d | 2025-10-09 A | 2025-10-11 A | CO-R14.S08-SD-120 SS, PRO-SD-1DL-100 | 100% |  |
| CO-R14.S08-SD-190 |  | Install RC Footing Works for Manholes of Storm Drainage Network-[Road 14]-[SW-8] | 1d | 2025-10-11 A | 2025-10-12 A | CO-R14.S08-SD-180, PRO-R14-SD-DL-100 | 100% |  |

| ID | WBS | Task | Duration | Start | Finish | Predecessors | Complete | Total float |
| --- | --- | --- | --- | --- | --- | --- | --- | --- |
| CO-R14.S08-SD-200 |  | Install RC Wall Rings & Slab Works for Manholes of Storm Drainage Network-[Road 14]-[SW-8] | 4d | 2025-10-12 A | 2025-10-13 A | CO-R14.S08-SD-190 | 100% |  |
| CO-R14.S08-SD-220 |  | Backfilling Works for Manholes of Storm Drainage Network-[Road 14]-[SW-8] | 7d | 2025-10-14 A | 2025-10-14 A | CO-R14.S08-SD-210 | 100% |  |
| CO-R14.S08-SD-210 |  | Testing Works for Manholes of Storm Drainage Network-[Road 14]-[SW-8] | 1d | 2026-06-04 A | 2026-06-04 A | CO-R14.S08-SD-200 | 100% |  |
|  | CB | **Catch Basin Sections** |  | 2026-06-04 | 2026-07-13 |  |  |  |
| CO-R14.S08-SD-140 |  | Trench Excavation and Bedding Works for Catch Basins of Storm Drainage Network-[Road 14]-[SW-8] | 6d | 2026-06-04 A | 2026-07-13 A | CO-R14.S08-EW-110, CO-R14.S08-SD-220, CO-R14.S07-SD-140 | 100% |  |
| CO-R14.S08-SD-150 |  | Installation and Pipes Laying Connection Works for Catch Basins of Storm Drainage Network-[Road 14]-[SW-8] | 7d | 2026-06-04 A | 2026-07-13 A | CO-R14.S08-SD-140, PRO-R14-SD-DL-130 FF+3d | 100% |  |
| CO-R14.S08-SD-160 |  | Testing Works for Catch Basins of Storm Drainage Network-[Road 14]-[SW-8] | 4d | 2026-06-04 A | 2026-07-13 A | CO-R14.S08-SD-150, CO-R14.S08-SD-120, PRO-R14-SD-DL-110 FF+3d | 100% |  |
| CO-R14.S08-SD-170 |  | Trench Backfilling and Compaction Works for Catch Basins of Storm Drainage Network-[Road 14]-[SW-8] | 7d | 2026-06-04 A | 2026-07-13 A | CO-R14.S08-SD-160 | 100% |  |
|  | PW | **Potable Water Network** |  | 2025-08-09 | 2026-10-29 |  |  |  |
|  | ML | **Main Line Sections** |  | 2025-08-09 | 2025-08-11 |  |  |  |
| CO-R14.S08-PW-100 |  | Trench Excavation and Bedding Works for Main Lines of Potable Water Network-[Road 14]-[SW-8] | 10d | 2025-08-09 A | 2025-08-09 A | CO-R14.S08-EW-110, CO-R14.S08-EW-100, CO-R14.S08-SD-130 | 100% |  |
| CO-R14.S08-PW-110 |  | Pipes Laying and accessories for Main Lines of Potable Water Network-[Road 14]-[SW-8] | 10d | 2025-08-10 A | 2025-08-10 A | CO-R14.S08-PW-100, PRO-R14-PW-DL-100 FF+3d | 100% |  |
| CO-R14.S08-PW-130 |  | Trench Backfilling and Compaction Works for Main Lines of Potable Water Network-[Road 14]-[SW-8] | 10d | 2025-08-11 A | 2025-08-11 A | CO-R14.S08-PW-110 | 100% |  |
|  | VC | **Valve Chamber** |  | 2026-06-07 | 2026-06-17 |  |  |  |
| CO-R14.S08-PW-170 |  | Excavation Works for Main Line Valves and Valve Chambers of Potable Water Network-[Road 14]-[SW-8] | 1d | 2026-06-07 A | 2026-06-17 A | CO-R14.S08-PW-110 | 100% |  |
| CO-R14.S08-PW-180 |  | RC Footing Works for Main Line Valves and Valve Chambers of Potable Water Network-[Road 14]-[SW-8] | 3d | 2026-06-07 A | 2026-06-17 A | CO-R14.S08-PW-170 | 100% |  |
| CO-R14.S08-PW-190 |  | RC Wall Works for Main Line Valves and Valve Chambers of Potable Water Network-[Road 14]-[SW-8] | 6d | 2026-06-07 A | 2026-06-17 A | CO-R14.S08-PW-180 | 100% |  |
| CO-R14.S08-PW-200 |  | RC Slab Works for Main Line Valves and Valve Chambers of Potable Water Network-[Road 14]-[SW-8] | 2d | 2026-06-07 A | 2026-06-17 A | CO-R14.S08-PW-190 | 100% |  |
| CO-R14.S08-PW-210 |  | Insulation Works for Main Line Valves and Valve Chambers of Potable Water Network-[Road 14]-[SW-8] | 1d | 2026-06-07 A | 2026-06-17 A | CO-R14.S08-PW-200, PRO-R14-PW-DL-110 | 100% |  |
| CO-R14.S08-PW-220 |  | Backfilling Works for Main Line Valves and Valve Chambers of Potable Water Network-[Road 14]-[SW-8] | 3d | 2026-06-07 A | 2026-06-17 A | CO-R14.S08-PW-210 | 100% |  |
|  | FH | **Fire Hydrant** |  | 2026-10-06 | 2026-10-29 |  |  |  |
| CO-R14.S08-PW-140 |  | Excavation Works for Fire Hydrants of Potable Water Network-[Road 14]-[SW-8] | 7d | 2026-10-06 | 2026-10-13 | CO-R14.S08-PW-110 SS+3d, CO-R14.S08-PW-110 FF+3d, CO-R14.S08-EW-110 |  | -55d |
| CO-R14.S08-PW-150 |  | Installation Works for Fire Hydrant of Potable Water Network-[Road 14]-[SW-8] | 7d | 2026-10-14 | 2026-10-21 | CO-R14.S08-PW-140, PRO-R14-PW-DL-120 FF+3d |  | -55d |
| CO-R14.S08-PW-160 |  | Trench Backfilling and Compaction Works for Fire Hydrants of Potable Water Network-[Road 14]-[SW-8] | 7d | 2026-10-22 | 2026-10-29 | CO-R14.S08-PW-150 |  | -55d |
|  | SL | **Street Lighting Network** |  | 2026-08-09 | 2027-05-29 |  |  |  |
|  | LP | **Lighting Poles Works** |  | 2026-09-01 | 2027-05-29 |  |  |  |
| CO-R14.S08-SL-210 |  | Backfilling Works for Lighting Poles of Street Lighting Network-[Road 14]-[SW-8] | 15d | 2026-09-01 A | 2026-09-08 A | CO-R14.S08-SL-840 SS, CO-R14.S08-SL-840 FF, CO-R14.S07-SL-210 | 100% |  |
| CO-R14.S08-SL-820 |  | Foundation Excavation Works for Lighting Poles of Street Lighting Network-[Road 14]-[SW-8] | 12d | 2026-09-01 A | 2026-09-08 A | CO-R14.S08-EW-110, CO-R14.S08-EW-100, CO-R14.S08-PW-130 | 100% |  |
| CO-R14.S08-SL-830 |  | Installation Works for Lighting Poles Foundation of Street Lighting Network-[Road 14]-[SW-8] | 10d | 2026-09-01 A | 2026-09-08 A | CO-R14.S08-SL-820 SS+5d, CO-R14.S08-SL-820 FF+5d, CO-R11.S06-SL-110, PRO-R14-SL-DL-110 FF+3d | 100% |  |
| CO-R14.S08-SL-840 |  | Installation Works for Lighting Poles of Street Lighting Network-[Road 14]-[SW-8] | 10d | 2026-09-01 A | 2026-09-08 A | CO-R14.S08-SL-830 SS+5d, CO-R14.S08-SL-830 FF+5d, PRO-R14-SL-DL-120 FF+3d | 100% |  |
| CO-R14.S08-SL-200 |  | Testing Works for Lighting Poles of Street Lighting Network-[Road 14]-[SW-8] | 7d | 2027-04-01 | 2027-04-08 | CO-R14.S08-SL-210, CO-R14.S08-SL-840 |  | -146d |
| CO-R14.S08-SL-850 |  | Installation Works for Lighting Fixtures With Drop Wire of Street Lighting Network-[Road 14]-[SW-8] | 17.5d | 2027-05-03 | 2027-05-29 | CO-R14.S08-SL-840 SS+5d, CO-R14.S08-SL-840 FF+5d, CO-R11.S06-SL-130, PRO-R14-SL-DL-140 FF+3d, CO-R14.S08-SL-200 FF |  | -183.5d |
|  | CW | **Cabling Works** |  | 2026-08-09 | 2026-09-17 |  |  |  |
| CO-R14.S08-SL-640 |  | Trench Excavation and Bedding Works for Street Lighting Network-[Road 14]-[SW-8] | 10d | 2026-08-09 A | 2026-09-17 A | CO-R14.S08-EW-110, CO-R14.S08-SL-840, CO-R14.S08-SL-830 | 100% |  |
| CO-R14.S08-SL-650 |  | Cable Laying Works for Street Lighting Network-[Road 14]-[SW-8] | 10d | 2026-08-09 A | 2026-09-17 A | CO-R14.S08-SL-640, PRO-R14-SL-DL-100 FF+3d | 100% |  |
| CO-R14.S08-SL-660 |  | Trench Backfilling and Compaction Works for Street Lighting Network-[Road 14]-[SW-8] | 10d | 2026-08-09 A | 2026-09-17 A | CO-R14.S08-SL-650 | 100% |  |
|  | DPB | **Distrubution Panel Boards** |  | 2027-02-15 | 2027-04-08 |  |  |  |
| CO-R14.S08-SL-DB-640 |  | Foundation Excavation Works For Panel Boards of Street Lighting Network-[Road 14]-[SW-8] | 18d | 2027-02-15 | 2027-03-08 | CO-R14.S08-EW-110, CO-R11.S06-SL-170 |  | -184d |
| CO-R14.S08-SL-220 |  | A wall of concrete blocks to install the KWH meter of Street Lighting Network-[Road 14]-[SW-8] | 25d | 2027-03-02 | 2027-04-03 | CO-R14.S08-SL-DB-650 SS, CO-R14.S08-SL-DB-650 FF |  | -193d |
| CO-R14.S08-SL-DB-650 |  | Installation Works for Panel Board Concrete Foundations of Street Lighting Network-[Road 14]-[SW-8] | 18d | 2027-03-02 | 2027-03-25 | CO-R14.S08-SL-DB-640 SS+3d, CO-R14.S08-SL-DB-640 FF+3d, CO-R11.S06-SL-180 |  | -193d |
| CO-R14.S08-SL-DB-660 |  | Installation Works for Lighting Panel Boards of Street Lighting Network-[Road 14]-[SW-8] | 18d | 2027-03-20 | 2027-04-08 | CO-R14.S08-SL-DB-650 SS+3d, CO-R14.S08-SL-DB-650 FF+3d, CO-R11.S06-SL-190 |  | -198d |
|  | TE | **Telecom Network** |  | 2027-03-01 | 2027-04-28 |  |  |  |
|  | PD | **Ducts Works** |  | 2027-03-01 | 2027-04-20 |  |  |  |
| CO-R14.S08-TE-100 |  | Trench Excavation and Bedding Works for Ducts of Telecom Network-[Road 14]-[SW-8] | 3d | 2027-03-01 | 2027-03-03 | CO-R14.S08-SL-660, CO-R14.S07-TE-100 |  | -221d |
| CO-R14.S08-TE-110 |  | Pipes Laying Works for Ducts of Telecom Network-[Road 14]-[SW-8] | 7d | 2027-03-28 | 2027-04-04 | CO-R14.S08-TE-100, CO-R11.S06-TE-110, PRO-R14-TE-DL-100 FF+3d |  | -199d |
| CO-R14.S08-TE-120 |  | Pouring Plain Concrete Above Ducts of Telecom Network-[Road 14]-[SW-8] | 7d | 2027-04-05 | 2027-04-12 | CO-R14.S08-TE-110, CO-R11.S06-TE-120 |  | -199d |
| CO-R14.S08-TE-130 |  | Trench Backfilling and Compaction Works for Ducts of Telecom Network-[Road 14]-[SW-8] | 7d | 2027-04-13 | 2027-04-20 | CO-R14.S08-TE-120, CO-R11.S06-TE-130 |  | -199d |
|  | MH | **Manholes Works** |  | 2027-04-05 | 2027-04-28 |  |  |  |
| CO-R14.S08-TE-140 |  | Excavation Works for Manholes of Telecom Network-[Road 14]-[SW-8] | 7d | 2027-04-05 | 2027-04-12 | CO-R11.S06-TE-140, CO-R14.S08-TE-100, CO-R14.S07-TE-140 |  | -206d |
| CO-R14.S08-TE-150 |  | Installation Works for Manholes of Telecom Network-[Road 14]-[SW-8] | 7d | 2027-04-13 | 2027-04-20 | CO-R14.S08-TE-140, CO-R11.S06-TE-150, PRO-R14-TE-DL-110 FF+3d |  | -206d |
| CO-R14.S08-TE-160 |  | Backfilling Works for Manholes of Telecom Network-[Road 14]-[SW-8] | 7d | 2027-04-21 | 2027-04-28 | CO-R14.S08-TE-150, CO-R11.S06-TE-160 |  | -206d |
|  | MV | **Medium Voltage Network** |  | 2025-09-01 | 2025-09-07 |  |  |  |
|  | CW | **Cabling Works** |  | 2025-09-01 | 2025-09-07 |  |  |  |
| CO-R14.S08-MV-ML-640 |  | Trench Excavation and Bedding Works for Medium Voltage Network-[Road 14]-[SW-8] | 10d | 2025-09-01 A | 2025-09-03 A | CO-R14.S08-EW-110 | 100% |  |
| CO-R14.S08-MV-ML-650 |  | Cable Laying Works for Medium Voltage Network-[Road 14]-[SW-8] | 10d | 2025-09-02 A | 2025-09-04 A | CO-R14.S08-MV-ML-640 SS+3d, CO-R14.S08-MV-ML-640 FF+3d, PRO-R14-MV-DL-100 FF+3d | 100% |  |
| CO-R14.S08-MV-ML-660 |  | Trench Backfilling and Compaction Works for Medium Voltage Network-[Road 14]-[SW-8] | 10d | 2025-09-06 A | 2025-09-07 A | CO-R14.S08-MV-ML-650 SS+3d, CO-R14.S08-MV-ML-650 FF+3d, CO-R14.S08-PW-130 FF+3d | 100% |  |
|  | RD | **Road Works** |  | 2026-08-17 | 2027-08-14 |  |  |  |
|  | RD | **Pre-Bituminous Construction** |  | 2026-08-17 | 2027-05-29 |  |  |  |
| CO-R14.S08-RD-P-100 |  | Capping and Subgrade Layer for Road Works-[Road 14]-[SW-8] | 10d | 2026-08-17 A | 2026-08-22 A | CO-R14.S08-SD-130, CO-R14.S08-PW-130, CO-R14.S08-PW-160, CO-R14.S08-SL-660 SS+3d, CO-R14.S08-SL-660 FF+3d, PRO-R14-RD-DL-100 FF+3d, CO-R14.S08-TE-130, CO-R14.S08-TE-160, CO-R14.S08-MV-ML-660 SS+3d, CO-R14.S08-MV-ML-660 FF+3d, CO-R14.S08-SW-130 | 100% |  |
| CO-R14.S08-RD-P-110 |  | Aggregate Base Course Layer for Road Works-[Road 14]-[SW-8] | 18d | 2027-05-03 | 2027-05-29 | CO-R14.S08-RD-P-100 SS+3d, CO-R14.S08-RD-P-100 FF+3d, CO-R14.S08-SD-170 SS+3d, CO-R14.S08-SD-170 FF+3d, CO-R11.S06-RD-P-110, PRO-R14-RD-DL-110 FF+3d |  | -189d |
|  | LS | **Pavement Works** |  | 2026-08-25 | 2027-08-14 |  |  |  |
| CO-R14.S08-RD-P-120 |  | Fixing of Curbstone for Sidewalks Pavement-[Road 14]-[SW-8] | 18d | 2026-08-25 A | 2026-08-31 A | PRO-R14-RD-DL-130 FF+3d, CO-R11.S06-RD-P-120, CO-R14.S08-RD-P-110 SS+3d, CO-R14.S08-RD-P-110 FF+3d | 100% |  |
| CO-R14.S08-RD-P-130 |  | Fixing of Interlock Tiles for Sidewalks Pavement-[Road 14]-[SW-8] | 12d | 2026-08-25 A | 2027-08-14 | PRO-R14-RD-DL-120 FF+3d, CO-R14.S08-RD-P-120 SS+3d, CO-R14.S08-RD-P-120 FF+3d, CO-R11.S06-RD-P-130, CO-R14-PW-TF-100, CO-R14-PW-TF-110, CO-R14-PW-TF-120, CO-R14-SW-TF-100, CO-R14-SW-TF-110, CO-R14-SW-TF-130, CO-R14-SD-TF-120, CO-R11-SL-TF-180, CO-R11-SL-TF-190, CO-R11-IR-TF-140, CO-R11-MV-TF-180 | 50% | -240d |
|  | 7 | **Road 15 Local 1 ( 556 LM )** |  | 2025-04-13 | 2027-08-28 |  |  |  |
|  | SW_9 | **SW_9** |  | 2025-04-13 | 2027-08-28 |  |  |  |
|  | EW | **Earthworks** |  | 2025-04-13 | 2025-04-23 |  |  |  |
|  | EW | **Earthworks** |  | 2025-04-13 | 2025-04-23 |  |  |  |
| CO-R15.S09-EW-110 |  | Embankments Works Upto Design Level for Earthworks-[Road 15]-[SW-9] | 12d | 2025-04-13 A | 2025-04-16 A | CO-R15.S09-EW-200, ENG-MS-RD-A-10, ENG-SH-RD-A-100 | 100% |  |
| CO-R15.S09-EW-200 |  | Roadway Excavation Works Upto Design Level for Earthworks-[Road 15]-[SW-9] | 10d | 2025-04-16 A | 2025-04-23 A | ENG-MS-RD-A-10, ENG-SH-RD-A-100, CO-R16.S12-EW-100 | 100% |  |
|  | SW | **Sewage Network** |  | 2025-04-29 | 2025-09-21 |  |  |  |

| ID | WBS | Task | Duration | Start | Finish | Predecessors | Complete | Total float |
| --- | --- | --- | --- | --- | --- | --- | --- | --- |
|  | ML | **Main Line Sections** |  | 2025-04-29 | 2025-07-14 |  |  |  |
| CO-R15.S09-SW-100 |  | Trench Excavation and Bedding Works for Main Lines of Sewage Network-[Road 15]-[SW-9] | 12d | 2025-04-29 A | 2025-05-08 A | CO-R15.S09-EW-110, ENG-MS-SW-ML-A-110, ENG-SH-SW-ML-A-110 | 100% |  |
| CO-R15.S09-SW-120 |  | Pipes Laying Works for Main Lines of Sewage Network-[Road 15]-[SW-9] | 12d | 2025-05-09 A | 2025-05-31 A | CO-R15.S09-SW-100 FF, PRO-R15-SW-DL-100 FF+3d | 100% |  |
| CO-R15.S09-SW-130 |  | Trench Backfilling and Compaction Works for Main Lines of Sewage Network-[Road 15]-[SW-9] | 10d | 2025-07-11 A | 2025-07-14 A | ENG-SH-SW-ML-A-110 FF, ENG-MS-SW-ML-A-110 FF, CO-R15.S09-SW-120, CO-R16.S12-SW-130 | 100% |  |
|  | 1 | **Manholes** |  | 2025-05-10 | 2025-09-21 |  |  |  |
| CO-R15.S09-SW-160 |  | Excavation Works for Main Line Manholes of Sewage Network-[Road 15]-[SW-9] | 1d | 2025-05-10 A | 2025-05-15 A | CO-R15.S09-SW-120 SS | 100% |  |
| CO-R15.S09-SW-170 |  | Installation RC Footing Works for Main Line Manholes of Sewage Network-[Road 15]-[SW-9] | 2d | 2025-06-15 A | 2025-06-30 A | CO-R15.S09-SW-160, PRO-R15-SW-DL-110 FF+3d | 100% |  |
| CO-R15.S09-SW-180 |  | Install Grp Liner Wall Works for Main Line Manholes of Sewage Network-[Road 15]-[SW-9] | 4d | 2025-07-01 A | 2025-07-05 A | CO-R15.S09-SW-170 | 100% |  |
| CO-R15.S09-SW-190 |  | Pouring Grp Liner Wall Works for Main Line Manholes of Sewage Network-[Road 15]-[SW-9] | 1d | 2025-09-16 A | 2025-09-16 A | CO-R15.S09-SW-180 | 100% |  |
| CO-R15.S09-SW-200 |  | Backfilling Works for Main Line Manholes of Sewage Network-[Road 15]-[SW-9] | 4d | 2025-09-16 A | 2025-09-20 A | CO-R15.S09-SW-180 | 100% |  |
| CO-R15.S09-SW-210 |  | Testing Works for Main Line Manholes of Sewage Network-[Road 15]-[SW-9] | 1d | 2025-09-21 A | 2025-09-21 A | CO-R15.S09-SW-200, CO-R15.S09-SW-190 | 100% |  |
|  | SD | **Storm Drainage Network** |  | 2025-06-17 | 2026-07-13 |  |  |  |
|  | ML | **Main Line Sections** |  | 2025-07-11 | 2025-07-17 |  |  |  |
| CO-R15.S09-SD-100 |  | Trench Excavation and Bedding Works for Main Lines of Storm Drainage Network-[Road 15]-[SW-9] | 10d | 2025-07-11 A | 2025-07-14 A | ENG-SH-SD-ML-A-110, CO-R15.S09-EW-110, CO-R15.S09-EW-200, CO-R15.S09-SW-130 SS+3d, CO-R15.S09-SW-130 FF+3d, ENG-MS-SD-ML-A-110 | 100% |  |
| CO-R15.S09-SD-120 |  | Pipes Laying Works for Main Lines of Storm Drainage Network-[Road 15]-[SW-9] | 15d | 2025-07-15 A | 2025-07-16 A | CO-R15.S09-SD-100 | 100% |  |
| CO-R15.S09-SD-130 |  | Trench Backfilling and Compaction Works for Main Lines of Storm Drainage Network-[Road 15]-[SW-9] | 16d | 2025-07-17 A | 2025-07-17 A | ENG-SH-SD-ML-A-110 FF, ENG-MS-SD-ML-A-110 FF, CO-R15.S09-SD-120 | 100% |  |
|  | MH | **Manholes** |  | 2025-06-17 | 2026-07-13 |  |  |  |
| CO-R15.S09-SD-190 |  | Install RC Footing Works for Manholes of Storm Drainage Network-[Road 15]-[SW-9] | 1d | 2025-06-17 A | 2025-07-17 A | CO-R15.S09-SD-180 | 100% |  |
| CO-R15.S09-SD-180 |  | Trench Excavation and Bedding Works for Manholes of Storm Drainage Network-[Road 15]-[SW-9] | 1d | 2025-07-15 A | 2025-07-16 A | CO-R15.S09-SD-120 SS, PRO-SD-1DL-100 | 100% |  |
| CO-R15.S09-SD-200 |  | Install RC Wall Rings & Slab Works for Manholes of Storm Drainage Network-[Road 15]-[SW-9] | 4d | 2025-07-18 A | 2025-07-18 A | CO-R15.S09-SD-190 | 100% |  |
| CO-R15.S09-SD-220 |  | Backfilling Works for Manholes of Storm Drainage Network-[Road 15]-[SW-9] | 7d | 2025-07-19 A | 2025-07-19 A | CO-R15.S09-SD-200 | 100% |  |
| CO-R15.S09-SD-210 |  | Testing Works for Manholes of Storm Drainage Network-[Road 15]-[SW-9] | 1d | 2026-06-04 A | 2026-07-13 A | CO-R15.S09-SD-200 | 100% |  |
|  | CB | **Catch Basin Sections** |  | 2025-06-19 | 2026-07-13 |  |  |  |
| CO-R15.S09-SD-140 |  | Trench Excavation and Bedding Works for Catch Basins of Storm Drainage Network-[Road 15]-[SW-9] | 7d | 2025-06-19 A | 2025-06-23 A | CO-R15.S09-EW-110, ENG-SH-SD-CB-A-110, ENG-MS-SD-CB-A-110, CO-R15.S09-SD-220 | 100% |  |
| CO-R15.S09-SD-150 |  | Installation and Pipes Laying Connection Works for Catch Basins of Storm Drainage Network-[Road 15]-[SW-9] | 7d | 2025-08-03 A | 2025-08-05 A | CO-R15.S09-SD-140 | 100% |  |
| CO-R15.S09-SD-170 |  | Trench Backfilling and Compaction Works for Catch Basins of Storm Drainage Network-[Road 15]-[SW-9] | 10d | 2025-08-06 A | 2025-08-07 A | CO-R15.S09-SD-150 | 100% |  |
| CO-R15.S09-SD-160 |  | Testing Works for Catch Basins of Storm Drainage Network-[Road 15]-[SW-9] | 7d | 2026-06-04 A | 2026-07-13 A | CO-R15.S09-SD-150, CO-R15.S09-SD-120 | 100% |  |
|  | IR | **Irrigation Network** |  | 2025-04-28 | 2026-07-13 |  |  |  |
|  | ML | **Main Line Pipes** |  | 2025-04-28 | 2026-07-13 |  |  |  |
| CO-R15.S09-IR-100 |  | Trench Excavation and Bedding Works for Main Lines of Irrigation Network-[Road 15]-[SW-9] | 7d | 2025-04-28 A | 2025-05-05 A | ENG-SH-IR-ML-A-110, CO-R15.S09-EW-110, ENG-MS-IR-ML-A-110 | 100% |  |
| CO-R15.S09-IR-110 |  | Pipes Laying Works for Main Lines of Irrigation Network-[Road 15]-[SW-9] | 10d | 2025-05-06 A | 2025-05-31 A | CO-R15.S09-IR-100, PRO-R15-IR-DL-100 FF+3d | 100% |  |
| CO-R15.S09-IR-130 |  | Trench Backfilling and Compaction Works for Main Lines of Irrigation Network-[Road 15]-[SW-9] | 10d | 2025-06-01 A | 2025-06-12 A | CO-R15.S09-IR-110 | 100% |  |
| CO-R15.S09-IR-120 |  | Installation Works for Main Line Valves of Irrigation Network-[Road 15]-[SW-9] | 7d | 2026-07-11 A | 2026-07-13 A | CO-R15.S09-IR-110, PRO-R15-IR-DL-110 FF+3d | 100% |  |
|  | TE | **Telecom Network** |  | 2025-08-02 | 2025-08-28 |  |  |  |
|  | PD | **Ducts Works** |  | 2025-08-02 | 2025-08-19 |  |  |  |
| CO-R15.S09-TE-100 |  | Trench Excavation and Bedding Works for Ducts of Telecom Network-[Road 15]-[SW-9] | 7d | 2025-08-02 A | 2025-08-05 A | CO-R15.S09-IR-130 | 100% |  |
| CO-R15.S09-TE-110 |  | Pipes Laying Works for Ducts of Telecom Network-[Road 15]-[SW-9] | 7d | 2025-08-06 A | 2025-08-09 A | CO-R15.S09-TE-100 | 100% |  |
| CO-R15.S09-TE-120 |  | Pouring Plain Concrete Above Ducts of Telecom Network-[Road 15]-[SW-9] | 7d | 2025-08-10 A | 2025-08-13 A | CO-R15.S09-TE-110 | 100% |  |
| CO-R15.S09-TE-130 |  | Trench Backfilling and Compaction Works for Ducts of Telecom Network-[Road 15]-[SW-9] | 7d | 2025-08-16 A | 2025-08-19 A | CO-R15.S09-TE-120 | 100% |  |
|  | MH | **Manholes Works** |  | 2025-08-26 | 2025-08-28 |  |  |  |
| CO-R15.S09-TE-140 |  | Excavation Works for Manholes of Telecom Network-[Road 15]-[SW-9] | 7d | 2025-08-26 A | 2025-08-26 A | CO-R15.S09-TE-100 | 100% |  |
| CO-R15.S09-TE-150 |  | Installation Works for Manholes of Telecom Network-[Road 15]-[SW-9] | 7d | 2025-08-27 A | 2025-08-27 A | CO-R15.S09-TE-140 | 100% |  |
| CO-R15.S09-TE-160 |  | Backfilling Works for Manholes of Telecom Network-[Road 15]-[SW-9] | 7d | 2025-08-28 A | 2025-08-28 A | CO-R15.S09-TE-150 | 100% |  |
|  | MV | **Medium Voltage Network** |  | 2025-08-08 | 2025-08-10 |  |  |  |
|  | CW | **Cabling Works** |  | 2025-08-08 | 2025-08-10 |  |  |  |
| CO-R15.S09-MV-ML-250 |  | Trench Excavation and Bedding Works for Medium Voltage Network-[Road 15]-[SW-9] | 18d | 2025-08-08 A | 2025-08-08 A | ENG-SH-MV-A-110, CO-R15.S09-SD-170 SS+3d, CO-R15.S09-SD-170 FF+3d, CO-R15.S09-EW-110, ENG-MS-MV-A-110 | 100% |  |
| CO-R15.S09-MV-ML-260 |  | Cable Laying Works for Medium Voltage Network-[Road 15]-[SW-9] | 18d | 2025-08-09 A | 2025-08-09 A | CO-R15.S09-MV-ML-250 SS+3d, CO-R15.S09-MV-ML-250 FF+3d, PRO-R15-MV-DL-100 FF+3d | 100% |  |
| CO-R15.S09-MV-ML-270 |  | Trench Backfilling and Compaction Works for Medium Voltage Network-[Road 15]-[SW-9] | 18d | 2025-08-09 A | 2025-08-10 A | CO-R15.S09-MV-ML-260 SS+3d, CO-R15.S09-MV-ML-260 FF+3d | 100% |  |
|  | RD | **Road Works** |  | 2025-07-22 | 2027-08-28 |  |  |  |
|  | RD | **Pre-Bituminous Construction** |  | 2025-07-22 | 2025-10-07 |  |  |  |
| CO-R15.S09-RD-P-100 |  | Capping and Subgrade Layer for Road Works-[Road 15]-[SW-9] | 18d | 2025-07-22 A | 2025-07-27 A | ENG-SH-RD-A-100, CO-R15.S09-SD-130, CO-R15.S09-SW-130, ENG-MS-RD-A-10 | 100% |  |
| CO-R15.S09-RD-P-110 |  | Aggregate Base Course Layer for Road Works-[Road 15]-[SW-9] | 18d | 2025-10-01 A | 2025-10-07 A | CO-R15.S09-RD-P-100 SS+3d, CO-R15.S09-RD-P-100 FF+3d, CO-R15.S09-SD-170 SS+3d, CO-R15.S09-SD-170 FF+3d, CO-R14.S07-RD-P-110 | 100% |  |
|  | LS | **Pavement Works** |  | 2026-08-25 | 2027-08-28 |  |  |  |
| CO-R15.S09-RD-P-120 |  | Fixing of Curbstone for Sidewalks Pavement-[Road 15]-[SW-9] | 18d | 2026-08-25 A | 2026-08-31 A | CO-R14.S07-RD-P-120, CO-R15.S09-RD-P-110 SS+3d, CO-R15.S09-RD-P-110 FF+3d | 100% |  |
| CO-R15.S09-RD-P-130 |  | Fixing of Interlock Tiles for Sidewalks Pavement-[Road 15]-[SW-9] | 12d | 2026-08-25 A | 2027-08-28 | CO-R15.S09-RD-P-120 SS+3d, CO-R15.S09-RD-P-120 FF+3d, CO-R14.S07-RD-P-130, CO-R15-PW-TF-100, CO-R15-PW-TF-110, CO-R15-PW-TF-120, CO-R15-SW-TF-100, CO-R15-SW-TF-110, CO-R15-SW-TF-130, CO-R15-SD-TF-100, CO-R15-SL-TF-200, CO-R15-SL-TF-210, CO-R15-IR-TF-150, CO-R15-MV-TF-200 | 90% | -229d |
|  | SW_10 | **SW_10** |  | 2025-04-24 | 2027-08-25 |  |  |  |
|  | EW | **Earthworks** |  | 2025-04-24 | 2025-04-30 |  |  |  |
|  | EW | **Earthworks** |  | 2025-04-24 | 2025-04-30 |  |  |  |
| CO-R15.S10-EW-100 |  | Roadway Excavation Works Upto Design Level for Earthworks-[Road 15]-[SW-10] | 10d | 2025-04-24 A | 2025-04-26 A | ENG-MS-RD-A-10, ENG-SH-RD-A-100, CO-R15.S09-EW-200 | 100% |  |
| CO-R15.S10-EW-110 |  | Embankments Works Upto Design Level for Earthworks-[Road 15]-[SW-10] | 12d | 2025-04-27 A | 2025-04-30 A | CO-R15.S10-EW-100, ENG-MS-RD-A-10, ENG-SH-RD-A-100 | 100% |  |
|  | SW | **Sewage Network** |  | 2025-05-01 | 2026-10-06 |  |  |  |
|  | ML | **Main Line Sections** |  | 2025-05-01 | 2025-07-16 |  |  |  |
| CO-R15.S10-SW-100 |  | Trench Excavation and Bedding Works for Main Lines of Sewage Network-[Road 15]-[SW-10] | 12d | 2025-05-01 A | 2025-06-12 A | CO-R15.S10-EW-110, ENG-MS-SW-ML-A-110, ENG-SH-SW-ML-A-110 | 100% |  |
| CO-R15.S10-SW-120 |  | Pipes Laying Works for Main Lines of Sewage Network-[Road 15]-[SW-10] | 12d | 2025-05-13 A | 2025-05-30 A | PRO-R15-SW-DL-100 FF+3d, CO-R15.S10-SW-100 | 100% |  |
| CO-R15.S10-SW-130 |  | Trench Backfilling and Compaction Works for Main Lines of Sewage Network-[Road 15]-[SW-10] | 10d | 2025-07-15 A | 2025-07-16 A | CO-R15.S10-SW-120, CO-R15.S09-SW-130 | 100% |  |
|  | 1 | **Manholes** |  | 2025-06-01 | 2026-10-06 |  |  |  |
| CO-R15.S10-SW-160 |  | Excavation Works for Main Line Manholes of Sewage Network-[Road 15]-[SW-10] | 1d | 2025-06-01 A | 2025-06-01 A | CO-R15.S10-SW-120 SS | 100% |  |
| CO-R15.S10-SW-170 |  | Installation RC Footing Works for Main Line Manholes of Sewage Network-[Road 15]-[SW-10] | 2.25d | 2025-06-25 A | 2025-06-30 A | CO-R15.S10-SW-160, PRO-R15-SW-DL-110 FF+3d | 100% |  |
| CO-R15.S10-SW-180 |  | Install Grp Liner Wall Works for Main Line Manholes of Sewage Network-[Road 15]-[SW-10] | 4d | 2025-07-01 A | 2025-07-08 A | CO-R15.S10-SW-170 | 100% |  |
| CO-R15.S10-SW-200 |  | Backfilling Works for Main Line Manholes of Sewage Network-[Road 15]-[SW-10] | 4d | 2025-07-09 A | 2025-07-12 A | CO-R15.S10-SW-180 | 100% |  |

| ID | WBS | Task | Duration | Start | Finish | Predecessors | Complete | Total float |
| --- | --- | --- | --- | --- | --- | --- | --- | --- |
| CO-R15.S10-SW-190 |  | Pouring Grp Liner Wall Works for Main Line Manholes of Sewage Network-[Road 15]-[SW-10] | 1d | 2026-07-01 A | 2026-07-07 A | CO-R15.S10-SW-180 | 100% |  |
| CO-R15.S10-SW-210 |  | Testing Works for Main Line Manholes of Sewage Network-[Road 15]-[SW-10] | 1d | 2026-10-06 | 2026-10-06 | CO-R15.S10-SW-200, CO-R15.S10-SW-190 |  | -23d |
|  | SD | **Storm Drainage Network** |  | 2025-07-15 | 2026-07-13 |  |  |  |
|  | ML | **Main Line Sections** |  | 2025-07-15 | 2025-07-19 |  |  |  |
| CO-R15.S10-SD-100 |  | Trench Excavation and Bedding Works for Main Lines of Storm Drainage Network-[Road 15]-[SW-10] | 10d | 2025-07-15 A | 2025-07-16 A | CO-R15.S10-EW-110, CO-R15.S10-EW-100, CO-R15.S10-SW-130 SS+3d, CO-R15.S10-SW-130 FF+3d | 100% |  |
| CO-R15.S10-SD-120 |  | Pipes Laying Works for Main Lines of Storm Drainage Network-[Road 15]-[SW-10] | 15d | 2025-07-17 A | 2025-07-17 A | PRO-R15-SD-DL-120 FF+3d, CO-R15.S10-SD-100 | 100% |  |
| CO-R15.S10-SD-130 |  | Trench Backfilling and Compaction Works for Main Lines of Storm Drainage Network-[Road 15]-[SW-10] | 15d | 2025-07-18 A | 2025-07-19 A | CO-R15.S10-SD-120 | 100% |  |
|  | MH | **Manholes** |  | 2025-07-18 | 2026-07-13 |  |  |  |
| CO-R15.S10-SD-180 |  | Trench Excavation and Bedding Works for Manholes of Storm Drainage Network-[Road 15]-[SW-10] | 1d | 2025-07-18 A | 2025-07-18 A | CO-R15.S10-SD-120 SS, PRO-SD-1DL-100 | 100% |  |
| CO-R15.S10-SD-190 |  | Install RC Footing Works for Manholes of Storm Drainage Network-[Road 15]-[SW-10] | 1d | 2025-07-18 A | 2025-07-18 A | CO-R15.S10-SD-180 | 100% |  |
| CO-R15.S10-SD-200 |  | Install RC Wall Rings & Slab Works for Manholes of Storm Drainage Network-[Road 15]-[SW-10] | 4d | 2025-07-19 A | 2025-07-20 A | CO-R15.S10-SD-190 | 100% |  |
| CO-R15.S10-SD-220 |  | Backfilling Works for Manholes of Storm Drainage Network-[Road 15]-[SW-10] | 7d | 2025-07-21 A | 2025-07-21 A | CO-R15.S10-SD-200 | 100% |  |
| CO-R15.S10-SD-210 |  | Testing Works for Manholes of Storm Drainage Network-[Road 15]-[SW-10] | 1d | 2026-06-04 A | 2026-07-13 A | CO-R15.S10-SD-200 | 100% |  |
|  | CB | **Catch Basin Sections** |  | 2025-08-02 | 2026-07-13 |  |  |  |
| CO-R15.S10-SD-140 |  | Trench Excavation and Bedding Works for Catch Basins of Storm Drainage Network-[Road 15]-[SW-10] | 7d | 2025-08-02 A | 2025-08-04 A | CO-R15.S10-EW-110, CO-R15.S10-SD-220 | 100% |  |
| CO-R15.S10-SD-150 |  | Installation and Pipes Laying Connection Works for Catch Basins of Storm Drainage Network-[Road 15]-[SW-10] | 7d | 2025-08-05 A | 2025-08-09 A | CO-R15.S10-SD-140, PRO-R15-SD-DL-130 FF+3d | 100% |  |
| CO-R15.S10-SD-170 |  | Trench Backfilling and Compaction Works for Catch Basins of Storm Drainage Network-[Road 15]-[SW-10] | 10d | 2025-08-10 A | 2025-08-13 A | CO-R15.S10-SD-150 | 100% |  |
| CO-R15.S10-SD-160 |  | Testing Works for Catch Basins of Storm Drainage Network-[Road 15]-[SW-10] | 4d | 2026-06-04 A | 2026-07-13 A | CO-R15.S10-SD-150, CO-R15.S10-SD-120, PRO-R15-SD-DL-110 FF+3d | 100% |  |
|  | SL | **Street Lighting Network** |  | 2025-08-05 | 2026-12-27 |  |  |  |
|  | LP | **Lighting Poles Works** |  | 2025-08-05 | 2026-12-27 |  |  |  |
| CO-R15.S10-SL-100 |  | Foundation Excavation Works for Lighting Poles of Street Lighting Network-[Road 15]-[SW-10] | 12d | 2025-08-05 A | 2025-08-06 A | CO-R15.S10-EW-100, CO-R15.S10-EW-110, CO-R15.S09-IR-100 SS+3d, CO-R15.S09-IR-130, ENG-MS-SL-A-110, ENG-SH-SL-A-110, PRO-SL-1DL-110 | 100% |  |
| CO-R15.S10-SL-110 |  | Installation Works for Lighting Poles Foundation of Street Lighting Network-[Road 15]-[SW-10] | 12d | 2025-08-07 A | 2025-08-07 A | CO-R15.S10-SL-100, PRO-R15-SL-DL-110 FF+3d | 100% |  |
| CO-R15.S10-SL-120 |  | Installation Works for Lighting Poles of Street Lighting Network-[Road 15]-[SW-10] | 17.5d | 2025-09-14 A | 2025-09-14 A | CO-R15.S10-SL-110, CO-R15.S10-SL-160, PRO-R15-SL-DL-120 FF+3d | 100% |  |
| CO-R15.S10-SL-210 |  | Backfilling Works for Lighting Poles of Street Lighting Network-[Road 15]-[SW-10] | 12d | 2026-07-07 A | 2026-07-13 A | CO-R15.S10-SL-120 SS, CO-R15.S10-SL-120 FF, CO-R17.S14-SL-210 | 100% |  |
| CO-R15.S10-SL-200 |  | Testing Works for Lighting Poles of Street Lighting Network-[Road 15]-[SW-10] | 5d | 2026-10-06 | 2026-10-11 | CO-R15.S10-SL-210, CO-R15.S10-SL-120 |  | -117d |
| CO-R15.S10-SL-130 |  | Installation Works for Lighting Fixtures With Drop Wire of Street Lighting Network-[Road 15]-[SW-10] | 18d | 2026-12-07 | 2026-12-27 | CO-R15.S10-SL-120 SS+5d, CO-R15.S10-SL-120 FF+5d, CO-R15.S10-SL-200 FF, PRO-R15-SL-DL-140 FF+3d |  | -183d |
|  | CW | **Cabling Works** |  | 2025-08-08 | 2025-08-11 |  |  |  |
| CO-R15.S10-SL-140 |  | Trench Excavation and Bedding Works for Street Lighting Network-[Road 15]-[SW-10] | 10d | 2025-08-08 A | 2025-08-08 A | CO-R15.S10-SL-110 | 100% |  |
| CO-R15.S10-SL-150 |  | Cable Laying Works for Street Lighting Network-[Road 15]-[SW-10] | 10d | 2025-08-10 A | 2025-08-10 A | CO-R15.S10-SL-140, PRO-R15-SL-DL-100 FF+3d | 100% |  |
| CO-R15.S10-SL-160 |  | Trench Backfilling and Compaction Works for Street Lighting Network-[Road 15]-[SW-10] | 10d | 2025-08-11 A | 2025-08-11 A | CO-R15.S10-SL-150 | 100% |  |
|  | DPB | **Distrubution Panel Boards** |  | 2026-10-06 | 2026-11-02 |  |  |  |
| CO-R15.S10-SL-170 |  | Foundation Excavation Works For Panel Boards of Street Lighting Network-[Road 15]-[SW-10] | 18d | 2026-10-06 | 2026-10-26 | CO-R15.S10-EW-110, ENG-MS-SL-A-110, ENG-SH-SL-A-110 |  | -53d |
| CO-R15.S10-SL-180 |  | Installation Works for Panel Board Concrete Foundations of Street Lighting Network-[Road 15]-[SW-10] | 18d | 2026-10-10 | 2026-10-29 | CO-R15.S10-SL-170 SS+3d, CO-R15.S10-SL-170 FF+3d |  | -53d |
| CO-R15.S10-SL-220 |  | A wall of concrete blocks to install the KWH meter of Street Lighting Network-[Road 15]-[SW-10] | 18d | 2026-10-10 | 2026-10-29 | CO-R15.S10-SL-180 SS, CO-R15.S10-SL-180 FF |  | -50d |
| CO-R15.S10-SL-190 |  | Installation Works for Lighting Panel Boards of Street Lighting Network-[Road 15]-[SW-10] | 18d | 2026-10-13 | 2026-11-02 | CO-R15.S10-SL-180 SS+3d, CO-R15.S10-SL-180 FF+3d |  | -53d |
|  | PW | **Potable Water Network** |  | 2025-07-01 | 2026-10-26 |  |  |  |
|  | ML | **Main Line Sections** |  | 2025-07-01 | 2025-07-17 |  |  |  |
| CO-R15.S10-PW-100 |  | Trench Excavation and Bedding Works for Main Lines of Potable Water Network-[Road 15]-[SW-10] | 6d | 2025-07-01 A | 2025-07-06 A | CO-R15.S10-EW-110, CO-R15.S10-EW-100 | 100% |  |
| CO-R15.S10-PW-110 |  | Pipes Laying and accessories for Main Lines of Potable Water Network-[Road 15]-[SW-10] | 6d | 2025-07-07 A | 2025-07-12 A | CO-R15.S10-PW-100, PRO-R15-PW-DL-100 FF+3d | 100% |  |
| CO-R15.S10-PW-130 |  | Trench Backfilling and Compaction Works for Main Lines of Potable Water Network-[Road 15]-[SW-10] | 6d | 2025-07-13 A | 2025-07-17 A | CO-R15.S10-PW-110 | 100% |  |
|  | VC | **Valve Chamber** |  | 2026-07-09 | 2026-07-12 |  |  |  |
| CO-R15.S10-PW-210 |  | Installation Works for Main Line Valves and Valve Chambers of Potable Water Network-[Road 15]-[SW-10] | 6d | 2026-07-09 A | 2026-07-12 A | CO-R15.S10-PW-110, PRO-R15-PW-DL-110 FF | 100% |  |
|  | FH | **Fire Hydrant** |  | 2026-10-06 | 2026-10-26 |  |  |  |
| CO-R15.S10-PW-140 |  | Excavation Works for Fire Hydrants of Potable Water Network-[Road 15]-[SW-10] | 6d | 2026-10-06 | 2026-10-12 | CO-R15.S10-PW-110 SS+3d, CO-R15.S10-PW-110 FF+3d, CO-R15.S10-EW-110, CO-R15.S10-SW-130 SS+3d, CO-R15.S10-SW-130 FF+3d |  | -4d |
| CO-R15.S10-PW-150 |  | Installation Works for Fire Hydrant of Potable Water Network-[Road 15]-[SW-10] | 6d | 2026-10-13 | 2026-10-19 | CO-R15.S10-PW-140, PRO-R15-PW-DL-120 FF+3d |  | -4d |
| CO-R15.S10-PW-160 |  | Trench Backfilling and Compaction Works for Fire Hydrants of Potable Water Network-[Road 15]-[SW-10] | 6d | 2026-10-20 | 2026-10-26 | CO-R15.S10-PW-150 |  | -4d |
|  | TE | **Telecom Network** |  | 2025-08-08 | 2025-08-28 |  |  |  |
|  | PD | **Ducts Works** |  | 2025-08-08 | 2025-08-11 |  |  |  |
| CO-R15.S10-TE-100 |  | Trench Excavation and Bedding Works for Ducts of Telecom Network-[Road 15]-[SW-10] | 7d | 2025-08-08 A | 2025-08-08 A | CO-R15.S10-SL-140 SS, CO-R15.S10-SL-140 FF | 100% |  |
| CO-R15.S10-TE-110 |  | Pipes Laying Works for Ducts of Telecom Network-[Road 15]-[SW-10] | 7d | 2025-08-09 A | 2025-08-09 A | CO-R15.S10-TE-100, PRO-R15-TE-DL-100 FF+3d | 100% |  |
| CO-R15.S10-TE-120 |  | Pouring Plain Concrete Above Ducts of Telecom Network-[Road 15]-[SW-10] | 7d | 2025-08-10 A | 2025-08-10 A | CO-R15.S10-TE-110 | 100% |  |
| CO-R15.S10-TE-130 |  | Trench Backfilling and Compaction Works for Ducts of Telecom Network-[Road 15]-[SW-10] | 7d | 2025-08-11 A | 2025-08-11 A | CO-R15.S10-TE-120 | 100% |  |
|  | MH | **Manholes Works** |  | 2025-08-26 | 2025-08-28 |  |  |  |
| CO-R15.S10-TE-140 |  | Excavation Works for Manholes of Telecom Network-[Road 15]-[SW-10] | 7d | 2025-08-26 A | 2025-08-26 A | CO-R15.S09-TE-140 SS, CO-R15.S10-TE-100 SS+6d, CO-R15.S10-TE-100 FF+6d | 100% |  |
| CO-R15.S10-TE-150 |  | Installation Works for Manholes of Telecom Network-[Road 15]-[SW-10] | 7d | 2025-08-27 A | 2025-08-27 A | CO-R15.S10-TE-140, PRO-R15-TE-DL-110 FF+3d | 100% |  |
| CO-R15.S10-TE-160 |  | Backfilling Works for Manholes of Telecom Network-[Road 15]-[SW-10] | 7d | 2025-08-28 A | 2025-08-28 A | CO-R15.S10-TE-150 | 100% |  |
|  | RD | **Road Works** |  | 2025-07-22 | 2027-08-25 |  |  |  |
|  | RD | **Pre-Bituminous Construction** |  | 2025-07-22 | 2026-08-09 |  |  |  |
| CO-R15.S10-RD-P-100 |  | Capping and Subgrade Layer for Road Works-[Road 15]-[SW-10] | 18d | 2025-07-22 A | 2025-07-27 A | CO-R15.S10-SD-130, CO-R15.S10-SW-130, PRO-R15-RD-DL-100 FF+3d, CO-R15.S10-PW-130 | 100% |  |
| CO-R15.S10-RD-P-110 |  | Aggregate Base Course Layer for Road Works-[Road 15]-[SW-10] | 18d | 2026-08-01 A | 2026-08-09 A | CO-R15.S10-RD-P-100 SS+3d, CO-R15.S10-RD-P-100 FF+3d, CO-R15.S10-SD-170 SS+3d, CO-R15.S10-SD-170 FF+3d, CO-R14.S08-RD-P-110, PRO-R15-RD-DL-110 FF+3d | 100% |  |
|  | LS | **Pavement Works** |  | 2026-08-25 | 2027-08-25 |  |  |  |
| CO-R15.S10-RD-P-120 |  | Fixing of Curbstone for Sidewalks Pavement-[Road 15]-[SW-10] | 18d | 2026-08-25 A | 2026-08-31 A | CO-R14.S08-RD-P-120, PRO-R15-RD-DL-130 FF+3d, CO-R15.S10-RD-P-110 SS+3d, CO-R15.S10-RD-P-110 FF+3d | 100% |  |
| CO-R15.S10-RD-P-130 |  | Fixing of Interlock Tiles for Sidewalks Pavement-[Road 15]-[SW-10] | 10d | 2026-08-25 A | 2027-08-25 | CO-R15.S10-RD-P-120 SS+3d, CO-R15.S10-RD-P-120 FF+3d, CO-R14.S08-RD-P-130, PRO-R15-RD-DL-120 FF+3d, CO-R15-PW-TF-100, CO-R15-PW-TF-110, CO-R15-PW-TF-120, CO-R15-SW-TF-100, CO-R15-SW-TF-110, CO-R15-SW-TF-130, CO-R15-SD-TF-100, CO-R15-SD-TF-120, CO-R15-SL-TF-200, CO-R15-SL-TF-210, CO-R15-IR-TF-150, CO-R15-MV-TF-200 | 50% | -227d |
|  | 8 | **Road 16 Local 1 ( 527 LM )** |  | 2025-03-13 | 2027-09-06 |  |  |  |
|  | SW_13 | **SW_11** |  | 2025-03-27 | 2027-08-25 |  |  |  |
|  | EW | **Earthworks** |  | 2025-03-27 | 2025-04-19 |  |  |  |
|  | EW | **Earthworks** |  | 2025-03-27 | 2025-04-19 |  |  |  |
| CO-R16.S11-EW-100 |  | Roadway Excavation Works Upto Design Level for Earthworks-[Road 16]-[SW-11] | 10d | 2025-03-27 A | 2025-04-12 A | ENG-MS-RD-A-10, ENG-SH-RD-A-100, CO-R17.S14-EW-100 | 100% |  |
| CO-R16.S11-EW-110 |  | Embankments Works Upto Design Level for Earthworks-[Road 16]-[SW-11] | 12d | 2025-04-13 A | 2025-04-19 A | CO-R16.S11-EW-100, ENG-MS-RD-A-10, ENG-SH-RD-A-100, CO-R17.S14-EW-110 | 100% |  |
|  | SW | **Sewage Network** |  | 2025-06-05 | 2025-09-17 |  |  |  |

| ID | WBS | Task | Duration | Start | Finish | Predecessors | Complete | Total float |
| --- | --- | --- | --- | --- | --- | --- | --- | --- |
|  | ML | **Main Line Sections** |  | 2025-06-05 | 2025-07-08 |  |  |  |
| CO-R16.S11-SW-100 |  | Trench Excavation and Bedding Works for Main Lines of Sewage Network-[Road 16]-[SW-11] | 12d | 2025-06-05 A | 2025-06-15 A | CO-R16.S11-EW-110, ENG-MS-SW-ML-A-110, ENG-SH-SW-ML-A-110, CO-R17.S14-SW-100 | 100% |  |
| CO-R16.S11-SW-120 |  | Pipes Laying Works for Main Lines of Sewage Network-[Road 16]-[SW-11] | 12d | 2025-06-16 A | 2025-06-21 A | CO-R16.S11-SW-100, PRO-R16-SW-DL-100 FF+3d | 100% |  |
| CO-R16.S11-SW-130 |  | Trench Backfilling and Compaction Works for Main Lines of Sewage Network-[Road 16]-[SW-11] | 10d | 2025-07-06 A | 2025-07-08 A | CO-R16.S11-SW-120 SS+3d, CO-R16.S11-SW-120 FF+3d, ENG-SH-SW-ML-A-110 FF, ENG-MS-SW-ML-A-110 FF, CO-R16.S11-SW-120, CO-R17.S14-SW-130 | 100% |  |
|  | 1 | **Manholes** |  | 2025-06-17 | 2025-09-17 |  |  |  |
| CO-R16.S11-SW-160 |  | Excavation Works for Main Line Manholes of Sewage Network-[Road 16]-[SW-11] | 1d | 2025-06-17 A | 2025-06-17 A | CO-R16.S11-SW-120 SS, CO-R17.S14-SW-160 | 100% |  |
| CO-R16.S11-SW-170 |  | Installation RC Footing Works for Main Line Manholes of Sewage Network-[Road 16]-[SW-11] | 2d | 2025-06-18 A | 2025-06-25 A | CO-R16.S11-SW-160, PRO-R16-SW-DL-110 FF+3d | 100% |  |
| CO-R16.S11-SW-180 |  | Install Grp Liner Wall Works for Main Line Manholes of Sewage Network-[Road 16]-[SW-11] | 4d | 2025-06-26 A | 2025-07-02 A | CO-R16.S11-SW-170 | 100% |  |
| CO-R16.S11-SW-200 |  | Backfilling Works for Main Line Manholes of Sewage Network-[Road 16]-[SW-11] | 4d | 2025-07-22 A | 2025-07-24 A | CO-R16.S11-SW-180 | 100% |  |
| CO-R16.S11-SW-190 |  | Pouring Grp Liner Wall Works for Main Line Manholes of Sewage Network-[Road 16]-[SW-11] | 1d | 2025-09-16 A | 2025-09-16 A | CO-R16.S11-SW-180 | 100% |  |
| CO-R16.S11-SW-210 |  | Testing Works for Main Line Manholes of Sewage Network-[Road 16]-[SW-11] | 1d | 2025-09-17 A | 2025-09-17 A | CO-R16.S11-SW-190, CO-R16.S11-SW-200 | 100% |  |
|  | SD | **Storm Drainage Network** |  | 2025-07-07 | 2026-07-13 |  |  |  |
|  | ML | **Main Line Sections** |  | 2025-07-07 | 2025-07-13 |  |  |  |
| CO-R16.S11-SD-100 |  | Trench Excavation and Bedding Works for Main Lines of Storm Drainage Network-[Road 16]-[SW-11] | 10d | 2025-07-07 A | 2025-07-09 A | ENG-SH-SD-ML-A-110, CO-R16.S11-EW-110, CO-R16.S11-EW-100, CO-R16.S11-SW-130 SS+3d, CO-R16.S11-SW-130 FF+3d, ENG-MS-SD-ML-A-110 | 100% |  |
| CO-R16.S11-SD-120 |  | Pipes Laying Works for Main Lines of Storm Drainage Network-[Road 16]-[SW-11] | 15d | 2025-07-10 A | 2025-07-12 A | CO-R16.S11-SD-100 | 100% |  |
| CO-R16.S11-SD-130 |  | Trench Backfilling and Compaction Works for Main Lines of Storm Drainage Network-[Road 16]-[SW-11] | 15d | 2025-07-13 A | 2025-07-13 A | CO-R16.S11-SD-120 SS+3d, CO-R16.S11-SD-120 FF+3d, ENG-SH-SD-ML-A-110 FF, ENG-MS-SD-ML-A-110 FF, CO-R16.S11-SD-120 | 100% |  |
|  | MH | **Manholes** |  | 2025-07-11 | 2026-07-13 |  |  |  |
| CO-R16.S11-SD-180 |  | Trench Excavation and Bedding Works for Manholes of Storm Drainage Network-[Road 16]-[SW-11] | 1d | 2025-07-11 A | 2025-07-12 A | CO-R16.S11-SD-120 SS, PRO-SD-1DL-100 | 100% |  |
| CO-R16.S11-SD-190 |  | Install RC Footing Works for Manholes of Storm Drainage Network-[Road 16]-[SW-11] | 1d | 2025-07-13 A | 2025-07-13 A | CO-R16.S11-SD-180 | 100% |  |
| CO-R16.S11-SD-200 |  | Install RC Wall Rings & Slab Works for Manholes of Storm Drainage Network-[Road 16]-[SW-11] | 4d | 2025-07-14 A | 2025-07-15 A | CO-R16.S11-SD-190 | 100% |  |
| CO-R16.S11-SD-220 |  | Backfilling Works for Manholes of Storm Drainage Network-[Road 16]-[SW-11] | 7d | 2025-07-16 A | 2025-07-16 A | CO-R16.S11-SD-200 | 100% |  |
| CO-R16.S11-SD-210 |  | Testing Works for Manholes of Storm Drainage Network-[Road 16]-[SW-11] | 1d | 2026-06-04 A | 2026-07-13 A | CO-R16.S11-SD-200 | 100% |  |
|  | CB | **Catch Basin Sections** |  | 2025-07-17 | 2026-07-13 |  |  |  |
| CO-R16.S11-SD-140 |  | Trench Excavation and Bedding Works for Catch Basins of Storm Drainage Network-[Road 16]-[SW-11] | 7d | 2025-07-17 A | 2025-07-17 A | CO-R16.S11-EW-110, ENG-SH-SD-CB-A-110, ENG-MS-SD-CB-A-110, CO-R16.S11-SD-220 | 100% |  |
| CO-R16.S11-SD-150 |  | Installation and Pipes Laying Connection Works for Catch Basins of Storm Drainage Network-[Road 16]-[SW-11] | 7d | 2025-07-18 A | 2025-07-18 A | CO-R16.S11-SD-140, CO-R17.S14-SD-150 | 100% |  |
| CO-R16.S11-SD-170 |  | Trench Backfilling and Compaction Works for Catch Basins of Storm Drainage Network-[Road 16]-[SW-11] | 10d | 2025-07-19 A | 2025-07-19 A | CO-R16.S11-SD-150, CO-R16.S11-IR-110 | 100% |  |
| CO-R16.S11-SD-160 |  | Testing Works for Catch Basins of Storm Drainage Network-[Road 16]-[SW-11] | 4d | 2026-06-04 A | 2026-07-13 A | CO-R16.S11-SD-150, CO-R16.S11-SD-120 | 100% |  |
|  | IR | **Irrigation Network** |  | 2025-07-19 | 2026-07-13 |  |  |  |
|  | ML | **Main Line Pipes** |  | 2025-07-19 | 2026-07-13 |  |  |  |
| CO-R16.S11-IR-100 |  | Trench Excavation and Bedding Works for Main Lines of Irrigation Network-[Road 16]-[SW-11] | 7d | 2025-07-19 A | 2025-07-21 A | ENG-SH-IR-ML-A-110, CO-R16.S11-EW-110, ENG-MS-IR-ML-A-110 | 100% |  |
| CO-R16.S11-IR-110 |  | Pipes Laying Works for Main Lines of Irrigation Network-[Road 16]-[SW-11] | 10d | 2025-07-22 A | 2025-07-25 A | CO-R16.S11-IR-100, PRO-R16-IR-DL-100 FF+3d | 100% |  |
| CO-R16.S11-IR-130 |  | Trench Backfilling and Compaction Works for Main Lines of Irrigation Network-[Road 16]-[SW-11] | 10d | 2025-07-26 A | 2025-07-27 A | CO-R16.S11-IR-110 | 100% |  |
| CO-R16.S11-IR-120 |  | Installation Works for Main Line Valves of Irrigation Network-[Road 16]-[SW-11] | 7d | 2026-07-09 A | 2026-07-13 A | CO-R16.S11-IR-110, PRO-R16-IR-DL-110 FF+3d | 100% |  |
|  | TE | **Telecom Network** |  | 2025-08-04 | 2025-08-30 |  |  |  |
|  | PD | **Ducts Works** |  | 2025-08-04 | 2025-08-21 |  |  |  |
| CO-R16.S11-TE-100 |  | Trench Excavation and Bedding Works for Ducts of Telecom Network-[Road 16]-[SW-11] | 12d | 2025-08-04 A | 2025-08-07 A | CO-R16.S11-IR-130 SS+3d, CO-R16.S11-IR-130 FF+3d, CO-R17.S14-TE-100 | 100% |  |
| CO-R16.S11-TE-110 |  | Pipes Laying Works for Ducts of Telecom Network-[Road 16]-[SW-11] | 7d | 2025-08-10 A | 2025-08-14 A | CO-R16.S11-TE-100, CO-R15.S09-TE-110 | 100% |  |
| CO-R16.S11-TE-120 |  | Pouring Plain Concrete Above Ducts of Telecom Network-[Road 16]-[SW-11] | 7d | 2025-08-16 A | 2025-08-19 A | CO-R16.S11-TE-110, CO-R15.S09-TE-120 | 100% |  |
| CO-R16.S11-TE-130 |  | Trench Backfilling and Compaction Works for Ducts of Telecom Network-[Road 16]-[SW-11] | 7d | 2025-08-20 A | 2025-08-21 A | CO-R16.S11-TE-120, CO-R15.S09-TE-130 | 100% |  |
|  | MH | **Manholes Works** |  | 2025-08-27 | 2025-08-30 |  |  |  |
| CO-R16.S11-TE-140 |  | Excavation Works for Manholes of Telecom Network-[Road 16]-[SW-11] | 7d | 2025-08-27 A | 2025-08-27 A | CO-R16.S11-TE-100 | 100% |  |
| CO-R16.S11-TE-150 |  | Installation Works for Manholes of Telecom Network-[Road 16]-[SW-11] | 7d | 2025-08-28 A | 2025-08-28 A | CO-R16.S11-TE-140 | 100% |  |
| CO-R16.S11-TE-160 |  | Backfilling Works for Manholes of Telecom Network-[Road 16]-[SW-11] | 7d | 2025-08-30 A | 2025-08-30 A | CO-R16.S11-TE-150 | 100% |  |
|  | MV | **Medium Voltage Network** |  | 2025-08-11 | 2025-08-19 |  |  |  |
|  | CW | **Cabling Works** |  | 2025-08-11 | 2025-08-19 |  |  |  |
| CO-R16.S11-MV-ML-280 |  | Trench Excavation and Bedding Works for Medium Voltage Network-[Road 16]-[SW-11] | 18d | 2025-08-11 A | 2025-08-14 A | ENG-SH-MV-A-110, CO-R16.S11-SD-170 SS+3d, CO-R16.S11-SD-170 FF+3d, CO-R16.S11-EW-110, CO-R15.S09-MV-ML-250, ENG-MS-MV-A-110 | 100% |  |
| CO-R16.S11-MV-ML-290 |  | Cable Laying Works for Medium Voltage Network-[Road 16]-[SW-11] | 18d | 2025-08-12 A | 2025-08-17 A | CO-R16.S11-MV-ML-280 SS+3d, CO-R16.S11-MV-ML-280 FF+3d, CO-R15.S09-MV-ML-260, PRO-R16-MV-DL-100 FF+3d | 100% |  |
| CO-R16.S11-MV-ML-300 |  | Trench Backfilling and Compaction Works for Medium Voltage Network-[Road 16]-[SW-11] | 18d | 2025-08-16 A | 2025-08-19 A | CO-R16.S11-MV-ML-290 SS+3d, CO-R16.S11-MV-ML-290 FF+3d, CO-R15.S09-MV-ML-270 | 100% |  |
|  | RD | **Road Works** |  | 2025-08-04 | 2027-08-25 |  |  |  |
|  | RD | **Pre-Bituminous Construction** |  | 2025-08-04 | 2025-10-20 |  |  |  |
| CO-R16.S11-RD-P-100 |  | Capping and Subgrade Layer for Road Works-[Road 16]-[SW-11] | 18d | 2025-08-04 A | 2025-08-11 A | ENG-SH-RD-A-100, CO-R16.S11-SD-130, CO-R16.S11-SW-130, ENG-MS-RD-A-10 | 100% |  |
| CO-R16.S11-RD-P-110 |  | Aggregate Base Course Layer for Road Works-[Road 16]-[SW-11] | 18d | 2025-09-17 A | 2025-10-20 A | CO-R16.S11-RD-P-100 SS+3d, CO-R16.S11-RD-P-100 FF+3d, CO-R16.S11-SD-170 SS+3d, CO-R16.S11-SD-170 FF+3d, CO-R15.S09-RD-P-110 | 100% |  |
|  | LS | **Pavement Works** |  | 2026-08-25 | 2027-08-25 |  |  |  |
| CO-R16.S11-RD-P-120 |  | Fixing of Curbstone for Sidewalks Pavement-[Road 16]-[SW-11] | 18d | 2026-08-25 A | 2026-08-31 A | CO-R15.S09-RD-P-120, CO-R16.S11-RD-P-110 SS+3d, CO-R16.S11-RD-P-110 FF+3d | 100% |  |
| CO-R16.S11-RD-P-130 |  | Fixing of Interlock Tiles for Sidewalks Pavement-[Road 16]-[SW-11] | 10d | 2026-08-25 A | 2027-08-25 | CO-R16.S11-RD-P-120 SS+3d, CO-R16.S11-RD-P-120 FF+3d, CO-R15.S09-RD-P-130 SS, CO-R16-PW-TF-100, CO-R16-PW-TF-110, CO-R16-PW-TF-120, CO-R16-SW-TF-100, CO-R16-SW-TF-110, CO-R16-SW-TF-130, CO-R16-SD-TF-100, CO-R16-SL-TF-220, CO-R16-SL-TF-230 SS, CO-R16-IR-TF-160, CO-R16-MV-TF-220 | 90% | -217d |
|  | SW_14 | **SW_12** |  | 2025-03-13 | 2027-09-06 |  |  |  |
|  | EW | **Earthworks** |  | 2025-03-13 | 2025-04-20 |  |  |  |
|  | EW | **Earthworks** |  | 2025-03-13 | 2025-04-20 |  |  |  |
| CO-R16.S12-EW-100 |  | Roadway Excavation Works Upto Design Level for Earthworks-[Road 16]-[SW-12] | 10d | 2025-03-13 A | 2025-04-15 A | ENG-MS-RD-A-10, ENG-SH-RD-A-100, CO-R16.S11-EW-100 | 100% |  |
| CO-R16.S12-EW-110 |  | Embankments Works Upto Design Level for Earthworks-[Road 16]-[SW-12] | 12d | 2025-04-16 A | 2025-04-20 A | CO-R16.S12-EW-100, ENG-MS-RD-A-10, ENG-SH-RD-A-100 | 100% |  |
|  | SW | **Sewage Network** |  | 2025-06-16 | 2025-09-17 |  |  |  |
|  | ML | **Main Line Sections** |  | 2025-06-16 | 2025-07-10 |  |  |  |
| CO-R16.S12-SW-100 |  | Trench Excavation and Bedding Works for Main Lines of Sewage Network-[Road 16]-[SW-12] | 12d | 2025-06-16 A | 2025-06-23 A | CO-R16.S12-EW-110, ENG-MS-SW-ML-A-110, ENG-SH-SW-ML-A-110, CO-R16.S11-SW-100 | 100% |  |
| CO-R16.S12-SW-120 |  | Pipes Laying Works for Main Lines of Sewage Network-[Road 16]-[SW-12] | 12d | 2025-06-24 A | 2025-06-27 A | PRO-R16-SW-DL-100 FF+3d, CO-R16.S12-SW-100 | 100% |  |
| CO-R16.S12-SW-130 |  | Trench Backfilling and Compaction Works for Main Lines of Sewage Network-[Road 16]-[SW-12] | 10d | 2025-07-09 A | 2025-07-10 A | CO-R16.S12-SW-120, CO-R16.S11-SW-130 | 100% |  |
|  | 1 | **Manholes** |  | 2025-06-28 | 2025-09-17 |  |  |  |
| CO-R16.S12-SW-160 |  | Excavation Works for Main Line Manholes of Sewage Network-[Road 16]-[SW-12] | 1d | 2025-06-28 A | 2025-06-30 A | CO-R16.S12-SW-120 SS | 100% |  |
| CO-R16.S12-SW-170 |  | Installation RC Footing Works for Main Line Manholes of Sewage Network-[Road 16]-[SW-12] | 2d | 2025-07-20 A | 2025-07-22 A | CO-R16.S12-SW-160, PRO-R16-SW-DL-110 FF+3d | 100% |  |
| CO-R16.S12-SW-180 |  | Install Grp Liner Wall Works for Main Line Manholes of Sewage Network-[Road 16]-[SW-12] | 4d | 2025-07-23 A | 2025-07-24 A | CO-R16.S12-SW-170 | 100% |  |
| CO-R16.S12-SW-200 |  | Backfilling Works for Main Line Manholes of Sewage Network-[Road 16]-[SW-12] | 4d | 2025-07-26 A | 2025-07-27 A | CO-R16.S12-SW-180 | 100% |  |

| ID | WBS | Task | Duration | Start | Finish | Predecessors | Complete | Total float |
| --- | --- | --- | --- | --- | --- | --- | --- | --- |
| CO-R16.S12-SW-190 |  | Pouring Grp Liner Wall Works for Main Line Manholes of Sewage Network-[Road 16]-[SW-12] | 1d | 2025-09-16 A | 2025-09-16 A | CO-R16.S12-SW-180 | 100% |  |
| CO-R16.S12-SW-210 |  | Testing Works for Main Line Manholes of Sewage Network-[Road 16]-[SW-12] | 1d | 2025-09-17 A | 2025-09-17 A | CO-R16.S12-SW-200, CO-R16.S12-SW-190 | 100% |  |
|  | SD | **Storm Drainage Network** |  | 2025-07-10 | 2026-07-13 |  |  |  |
|  | ML | **Main Line Sections** |  | 2025-07-10 | 2025-07-19 |  |  |  |
| CO-R16.S12-SD-100 |  | Trench Excavation and Bedding Works for Main Lines of Storm Drainage Network-[Road 16]-[SW-12] | 10d | 2025-07-10 A | 2025-07-11 A | CO-R16.S12-EW-110, CO-R16.S12-EW-100, CO-R16.S12-SW-130 SS+3d, CO-R16.S12-SW-130 FF+3d | 100% |  |
| CO-R16.S12-SD-120 |  | Pipes Laying Works for Main Lines of Storm Drainage Network-[Road 16]-[SW-12] | 15d | 2025-07-12 A | 2025-07-13 A | PRO-R16-SD-DL-120 FF+3d, CO-R16.S12-SD-100 | 100% |  |
| CO-R16.S12-SD-130 |  | Trench Backfilling and Compaction Works for Main Lines of Storm Drainage Network-[Road 16]-[SW-12] | 15d | 2025-07-19 A | 2025-07-19 A | CO-R16.S12-SD-120 SS+3d, CO-R16.S12-SD-120 FF+3d, CO-R15.S10-SD-130, CO-R16.S12-SD-120, CO-R16.S12-SD-220 FF | 100% |  |
|  | MH | **Manholes** |  | 2025-07-14 | 2026-07-13 |  |  |  |
| CO-R16.S12-SD-180 |  | Trench Excavation and Bedding Works for Manholes of Storm Drainage Network-[Road 16]-[SW-12] | 1d | 2025-07-14 A | 2025-07-15 A | CO-R16.S12-SD-120 SS, PRO-SD-1DL-100 | 100% |  |
| CO-R16.S12-SD-190 |  | Install RC Footing Works for Manholes of Storm Drainage Network-[Road 16]-[SW-12] | 1d | 2025-07-16 A | 2025-07-16 A | CO-R16.S12-SD-180 | 100% |  |
| CO-R16.S12-SD-200 |  | Install RC Wall Rings & Slab Works for Manholes of Storm Drainage Network-[Road 16]-[SW-12] | 4d | 2025-07-17 A | 2025-07-17 A | CO-R16.S12-SD-190 | 100% |  |
| CO-R16.S12-SD-220 |  | Backfilling Works for Manholes of Storm Drainage Network-[Road 16]-[SW-12] | 7d | 2025-07-18 A | 2025-07-18 A | CO-R16.S12-SD-200 | 100% |  |
| CO-R16.S12-SD-210 |  | Testing Works for Manholes of Storm Drainage Network-[Road 16]-[SW-12] | 1d | 2026-06-04 A | 2026-07-13 A | CO-R16.S12-SD-200 | 100% |  |
|  | CB | **Catch Basin Sections** |  | 2025-07-19 | 2026-07-13 |  |  |  |
| CO-R16.S12-SD-140 |  | Trench Excavation and Bedding Works for Catch Basins of Storm Drainage Network-[Road 16]-[SW-12] | 7d | 2025-07-19 A | 2025-07-19 A | CO-R16.S12-EW-110, CO-R16.S12-SD-220 | 100% |  |
| CO-R16.S12-SD-150 |  | Installation and Pipes Laying Connection Works for Catch Basins of Storm Drainage Network-[Road 16]-[SW-12] | 7d | 2025-07-20 A | 2025-07-20 A | CO-R16.S12-SD-140, PRO-R16-SD-DL-130 FF+3d | 100% |  |
| CO-R16.S12-SD-170 |  | Trench Backfilling and Compaction Works for Catch Basins of Storm Drainage Network-[Road 16]-[SW-12] | 10d | 2025-07-21 A | 2025-07-21 A | CO-R16.S12-SD-150 | 100% |  |
| CO-R16.S12-SD-160 |  | Testing Works for Catch Basins of Storm Drainage Network-[Road 16]-[SW-12] | 4d | 2026-06-04 A | 2026-07-13 A | CO-R16.S12-SD-150, CO-R16.S12-SD-120, PRO-R16-SD-DL-110 FF+3d | 100% |  |
|  | PW | **Potable Water Network** |  | 2025-04-21 | 2026-11-02 |  |  |  |
|  | ML | **Main Line Sections** |  | 2025-04-21 | 2025-06-10 |  |  |  |
| CO-R16.S12-PW-100 |  | Trench Excavation and Bedding Works for Main Lines of Potable Water Network-[Road 16]-[SW-12] | 6d | 2025-04-21 A | 2025-04-26 A | CO-R16.S12-EW-110, CO-R16.S12-EW-100 | 100% |  |
| CO-R16.S12-PW-110 |  | Pipes Laying and accessories for Main Lines of Potable Water Network-[Road 16]-[SW-12] | 6d | 2025-04-29 A | 2025-05-30 A | CO-R16.S12-PW-100, PRO-R16-PW-DL-100 FF+3d | 100% |  |
| CO-R16.S12-PW-130 |  | Trench Backfilling and Compaction Works for Main Lines of Potable Water Network-[Road 16]-[SW-12] | 5.75d | 2025-06-01 A | 2025-06-10 A | CO-R16.S12-PW-110 | 100% |  |
|  | VC | **Valve Chamber** |  | 2026-07-09 | 2026-07-12 |  |  |  |
| CO-R16.S12-PW-210 |  | Installation Works for Main Line Valves and Valve Chambers of Potable Water Network-[Road 16]-[SW-12] | 6d | 2026-07-09 A | 2026-07-12 A | CO-R16.S12-PW-110, PRO-R16-PW-DL-110 | 100% |  |
|  | FH | **Fire Hydrant** |  | 2026-10-06 | 2026-11-02 |  |  |  |
| CO-R16.S12-PW-140 |  | Excavation Works for Fire Hydrants of Potable Water Network-[Road 16]-[SW-12] | 6d | 2026-10-06 | 2026-10-12 | CO-R16.S12-PW-110 SS+3d, CO-R16.S12-PW-110 FF+3d, CO-R16.S12-EW-110, CO-R16.S12-SW-130 SS+3d, CO-R16.S12-SW-130 FF+3d |  | 2d |
| CO-R16.S12-PW-150 |  | Installation Works for Fire Hydrant of Potable Water Network-[Road 16]-[SW-12] | 6d | 2026-10-20 | 2026-10-26 | CO-R16.S12-PW-140, CO-R15.S10-PW-150, PRO-R16-PW-DL-120 FF+3d |  | -4d |
| CO-R16.S12-PW-160 |  | Trench Backfilling and Compaction Works for Fire Hydrants of Potable Water Network-[Road 16]-[SW-12] | 6d | 2026-10-27 | 2026-11-02 | CO-R16.S12-PW-150, CO-R15.S10-PW-160 |  | -4d |
|  | TE | **Telecom Network** |  | 2025-08-20 | 2025-09-01 |  |  |  |
|  | PD | **Ducts Works** |  | 2025-08-20 | 2025-09-01 |  |  |  |
| CO-R16.S12-TE-100 |  | Trench Excavation and Bedding Works for Ducts of Telecom Network-[Road 16]-[SW-12] | 7d | 2025-08-20 A | 2025-08-23 A | CO-R16.S11-TE-100 | 100% |  |
| CO-R16.S12-TE-110 |  | Pipes Laying Works for Ducts of Telecom Network-[Road 16]-[SW-12] | 7d | 2025-08-24 A | 2025-08-26 A | CO-R16.S12-TE-100, CO-R15.S10-TE-110, PRO-R16-TE-DL-100 FF+3d | 100% |  |
| CO-R16.S12-TE-120 |  | Pouring Plain Concrete Above Ducts of Telecom Network-[Road 16]-[SW-12] | 7d | 2025-08-27 A | 2025-08-30 A | CO-R16.S12-TE-110, CO-R15.S10-TE-120 | 100% |  |
| CO-R16.S12-TE-130 |  | Trench Backfilling and Compaction Works for Ducts of Telecom Network-[Road 16]-[SW-12] | 7d | 2025-08-31 A | 2025-09-01 A | CO-R16.S12-TE-120, CO-R15.S10-TE-130 | 100% |  |
|  | MH | **Manholes Works** |  | 2025-08-27 | 2025-08-30 |  |  |  |
| CO-R16.S12-TE-140 |  | Excavation Works for Manholes of Telecom Network-[Road 16]-[SW-12] | 7d | 2025-08-27 A | 2025-08-27 A | CO-R15.S10-TE-140, CO-R16.S11-TE-140 SS, CO-R16.S12-TE-100 | 100% |  |
| CO-R16.S12-TE-150 |  | Installation Works for Manholes of Telecom Network-[Road 16]-[SW-12] | 7d | 2025-08-28 A | 2025-08-28 A | CO-R16.S12-TE-140, CO-R15.S10-TE-150, PRO-R16-TE-DL-110 FF+3d | 100% |  |
| CO-R16.S12-TE-160 |  | Backfilling Works for Manholes of Telecom Network-[Road 16]-[SW-12] | 7d | 2025-08-30 A | 2025-08-30 A | CO-R16.S12-TE-150, CO-R15.S10-TE-160 | 100% |  |
|  | RD | **Road Works** |  | 2025-08-04 | 2027-09-06 |  |  |  |
|  | RD | **Pre-Bituminous Construction** |  | 2025-08-04 | 2025-10-20 |  |  |  |
| CO-R16.S12-RD-P-100 |  | Capping and Subgrade Layer for Road Works-[Road 16]-[SW-12] | 18d | 2025-08-04 A | 2025-08-11 A | CO-R16.S12-SD-130, CO-R16.S12-SW-130, CO-R16.S12-PW-130, PRO-R16-RD-DL-100 FF+3d | 100% |  |
| CO-R16.S12-RD-P-110 |  | Aggregate Base Course Layer for Road Works-[Road 16]-[SW-12] | 18d | 2025-09-17 A | 2025-10-20 A | CO-R16.S12-RD-P-100 SS+3d, CO-R16.S12-RD-P-100 FF+3d, CO-R16.S12-SD-170 SS+3d, CO-R16.S12-SD-170 FF+3d, CO-R15.S10-RD-P-110, PRO-R16-RD-DL-110 FF+3d | 100% |  |
|  | LS | **Pavement Works** |  | 2026-08-25 | 2027-09-06 |  |  |  |
| CO-R16.S12-RD-P-120 |  | Fixing of Curbstone for Sidewalks Pavement-[Road 16]-[SW-12] | 18d | 2026-08-25 A | 2026-08-31 A | CO-R15.S10-RD-P-120, PRO-R16-RD-DL-130 FF+3d, CO-R16.S12-RD-P-110 SS+3d, CO-R16.S12-RD-P-110 FF+3d | 100% |  |
| CO-R16.S12-RD-P-130 |  | Fixing of Interlock Tiles for Sidewalks Pavement-[Road 16]-[SW-12] | 10d | 2026-08-25 A | 2027-09-06 | CO-R16.S12-RD-P-120 SS+3d, CO-R16.S12-RD-P-120 FF+3d, CO-R15.S10-RD-P-130, PRO-R16-RD-DL-120 FF+3d, CO-R16-PW-TF-100, CO-R16-PW-TF-110, CO-R16-PW-TF-120, CO-R16-SW-TF-100, CO-R16-SW-TF-110, CO-R16-SW-TF-130, CO-R16-SD-TF-100, CO-R16-SD-TF-120, CO-R16-SL-TF-220, CO-R16-SL-TF-230, CO-R16-IR-TF-160, CO-R16-MV-TF-220 | 90% | -227d |
|  | 9 | **Road 17 Local 1 ( 500 LM )** |  | 2025-02-27 | 2026-11-26 |  |  |  |
|  | SW_15 | **SW_13** |  | 2025-02-27 | 2026-09-19 |  |  |  |
|  | EW | **Earthworks** |  | 2025-02-27 | 2025-03-07 |  |  |  |
|  | EW | **Earthworks** |  | 2025-02-27 | 2025-03-07 |  |  |  |
| CO-R17.S13-EW-100 |  | Roadway Excavation Works Upto Design Level for Earthworks-[Road 17]-[SW-13] | 10d | 2025-02-27 A | 2025-03-03 A | ENG-MS-RD-A-10, ENG-SH-RD-A-100, CO-R18.S16-EW-120 | 100% |  |
| CO-R17.S13-EW-110 |  | Embankments Works Upto Design Level for Earthworks-[Road 17]-[SW-13] | 12d | 2025-03-04 A | 2025-03-07 A | CO-R17.S13-EW-100, ENG-MS-RD-A-10, ENG-SH-RD-A-100 | 100% |  |
|  | SW | **Sewage Network** |  | 2025-05-20 | 2025-09-17 |  |  |  |
|  | ML | **Main Line Sections** |  | 2025-05-20 | 2025-06-21 |  |  |  |
| CO-R17.S13-SW-100 |  | Trench Excavation and Bedding Works for Main Lines of Sewage Network-[Road 17]-[SW-13] | 12d | 2025-05-20 A | 2025-05-22 A | CO-R17.S13-EW-110, ENG-MS-SW-ML-A-110, ENG-SH-SW-ML-A-110, CO-R18.S16-SW-220 SS | 100% |  |
| CO-R17.S13-SW-120 |  | Pipes Laying Works for Main Lines of Sewage Network-[Road 17]-[SW-13] | 12d | 2025-06-08 A | 2025-06-14 A | CO-R17.S13-SW-100, PRO-R17-SW-DL-100 FF+3d | 100% |  |
| CO-R17.S13-SW-130 |  | Trench Backfilling and Compaction Works for Main Lines of Sewage Network-[Road 17]-[SW-13] | 10d | 2025-06-15 A | 2025-06-21 A | ENG-SH-SW-ML-A-110 FF, ENG-MS-SW-ML-A-110 FF, CO-R17.S13-SW-120, CO-R18.S16-SW-240 | 100% |  |
|  | 1 | **Manholes** |  | 2025-06-11 | 2025-09-17 |  |  |  |
| CO-R17.S13-SW-160 |  | Excavation Works for Main Line Manholes of Sewage Network-[Road 17]-[SW-13] | 1d | 2025-06-11 A | 2025-06-14 A | CO-R17.S13-SW-120 SS | 100% |  |
| CO-R17.S13-SW-170 |  | Installation RC Footing Works for Main Line Manholes of Sewage Network-[Road 17]-[SW-13] | 2.25d | 2025-06-15 A | 2025-06-16 A | CO-R17.S13-SW-160, PRO-R17-SW-DL-110 FF+3d | 100% |  |
| CO-R17.S13-SW-180 |  | Install Grp Liner Wall Works for Main Line Manholes of Sewage Network-[Road 17]-[SW-13] | 4d | 2025-06-17 A | 2025-06-18 A | CO-R17.S13-SW-170 | 100% |  |
| CO-R17.S13-SW-200 |  | Backfilling Works for Main Line Manholes of Sewage Network-[Road 17]-[SW-13] | 4d | 2025-06-19 A | 2025-06-21 A | CO-R17.S13-SW-180 | 100% |  |
| CO-R17.S13-SW-190 |  | Pouring Grp Liner Wall Works for Main Line Manholes of Sewage Network-[Road 17]-[SW-13] | 1d | 2025-09-16 A | 2025-09-16 A | CO-R17.S13-SW-180 | 100% |  |
| CO-R17.S13-SW-210 |  | Testing Works for Main Line Manholes of Sewage Network-[Road 17]-[SW-13] | 1d | 2025-09-17 A | 2025-09-17 A | CO-R17.S13-SW-200, CO-R17.S13-SW-190 | 100% |  |
|  | SD | **Storm Drainage Network** |  | 2025-06-03 | 2026-07-13 |  |  |  |
|  | ML | **Main Line Sections** |  | 2025-06-22 | 2025-06-30 |  |  |  |
| CO-R17.S13-SD-100 |  | Trench Excavation and Bedding Works for Main Lines of Storm Drainage Network-[Road 17]-[SW-13] | 10d | 2025-06-22 A | 2025-06-23 A | ENG-SH-SD-ML-A-110, CO-R17.S13-EW-110, CO-R17.S13-EW-100, CO-R17.S13-SW-130 SS+3d, CO-R17.S13-SW-130 FF+3d, ENG-MS-SD-ML-A-110 | 100% |  |
| CO-R17.S13-SD-120 |  | Pipes Laying Works for Main Lines of Storm Drainage Network-[Road 17]-[SW-13] | 20d | 2025-06-24 A | 2025-06-28 A | CO-R17.S13-SD-100 | 100% |  |
| CO-R17.S13-SD-130 |  | Trench Backfilling and Compaction Works for Main Lines of Storm Drainage Network-[Road 17]-[SW-13] | 20d | 2025-06-29 A | 2025-06-30 A | CO-R17.S13-SD-120 SS+3d, CO-R17.S13-SD-120 FF+3d, ENG-SH-SD-ML-A-110 FF, CO-R16.S11-SD-130, ENG-MS-SD-ML-A-110 FF, CO-R17.S13-SD-120, CO-R17.S13-SD-220 FF | 100% |  |
|  | MH | **Manholes** |  | 2025-06-03 | 2026-07-13 |  |  |  |

| ID | WBS | Task | Duration | Start | Finish | Predecessors | Complete | Total float |
| --- | --- | --- | --- | --- | --- | --- | --- | --- |
| CO-R17.S13-SD-220 |  | Backfilling Works for Manholes of Storm Drainage Network-[Road 17]-[SW-13] | 7d | 2025-06-03 A | 2025-06-08 A | CO-R17.S13-SD-200 | 100% |  |
| CO-R17.S13-SD-180 |  | Trench Excavation and Bedding Works for Manholes of Storm Drainage Network-[Road 17]-[SW-13] | 1d | 2025-06-29 A | 2025-06-29 A | CO-R17.S13-SD-120 SS, PRO-SD-1DL-100 | 100% |  |
| CO-R17.S13-SD-190 |  | Install RC Footing Works for Manholes of Storm Drainage Network-[Road 17]-[SW-13] | 1d | 2025-06-30 A | 2025-06-30 A | CO-R17.S13-SD-180 | 100% |  |
| CO-R17.S13-SD-200 |  | Install RC Wall Rings & Slab Works for Manholes of Storm Drainage Network-[Road 17]-[SW-13] | 4d | 2025-07-01 A | 2025-07-02 A | CO-R17.S13-SD-190 | 100% |  |
| CO-R17.S13-SD-210 |  | Testing Works for Manholes of Storm Drainage Network-[Road 17]-[SW-13] | 1d | 2026-06-04 A | 2026-07-13 A | CO-R17.S13-SD-200 | 100% |  |
|  | CB | **Catch Basin Sections** |  | 2025-06-07 | 2026-07-13 |  |  |  |
| CO-R17.S13-SD-170 |  | Trench Backfilling and Compaction Works for Catch Basins of Storm Drainage Network-[Road 17]-[SW-13] | 7d | 2025-06-07 A | 2025-06-10 A | CO-R17.S13-SD-150 | 100% |  |
| CO-R17.S13-SD-140 |  | Trench Excavation and Bedding Works for Catch Basins of Storm Drainage Network-[Road 17]-[SW-13] | 7d | 2025-06-24 A | 2025-06-30 A | CO-R17.S13-EW-110, ENG-SH-SD-CB-A-110, ENG-MS-SD-CB-A-110, CO-R17.S13-SD-220 | 100% |  |
| CO-R17.S13-SD-150 |  | Installation and Pipes Laying Connection Works for Catch Basins of Storm Drainage Network-[Road 17]-[SW-13] | 7d | 2025-07-01 A | 2025-07-06 A | CO-R17.S13-SD-140, CO-R18.S16-SD-270 | 100% |  |
| CO-R17.S13-SD-160 |  | Testing Works for Catch Basins of Storm Drainage Network-[Road 17]-[SW-13] | 7d | 2026-06-04 A | 2026-07-13 A | CO-R17.S13-SD-150, CO-R17.S13-SD-120 | 100% |  |
|  | IR | **Irrigation Network** |  | 2025-05-01 | 2026-07-12 |  |  |  |
|  | ML | **Main Line Pipes** |  | 2025-05-01 | 2026-07-12 |  |  |  |
| CO-R17.S13-IR-100 |  | Trench Excavation and Bedding Works for Main Lines of Irrigation Network-[Road 17]-[SW-13] | 7d | 2025-05-01 A | 2025-05-10 A | ENG-SH-IR-ML-A-110, CO-R17.S13-EW-110, ENG-MS-IR-ML-A-110 | 100% |  |
| CO-R17.S13-IR-110 |  | Pipes Laying Works for Main Lines of Irrigation Network-[Road 17]-[SW-13] | 10d | 2025-05-21 A | 2025-05-27 A | CO-R17.S13-IR-100, PRO-R17-IR-DL-100 FF+3d | 100% |  |
| CO-R17.S13-IR-130 |  | Trench Backfilling and Compaction Works for Main Lines of Irrigation Network-[Road 17]-[SW-13] | 9d | 2025-06-29 A | 2025-07-07 A | CO-R17.S13-IR-110 | 100% |  |
| CO-R17.S13-IR-120 |  | Installation Works for Main Line Valves of Irrigation Network-[Road 17]-[SW-13] | 7d | 2026-07-09 A | 2026-07-12 A | CO-R17.S13-IR-110, PRO-R17-IR-DL-110 FF+3d | 100% |  |
|  | TE | **Telecom Network** |  | 2025-07-14 | 2025-07-27 |  |  |  |
|  | PD | **Ducts Works** |  | 2025-07-14 | 2025-07-25 |  |  |  |
| CO-R17.S13-TE-100 |  | Trench Excavation and Bedding Works for Ducts of Telecom Network-[Road 17]-[SW-13] | 7d | 2025-07-14 A | 2025-07-17 A | CO-R17.S13-IR-130, CO-R17.S13-EW-110, CO-R18.S16-TE-170 | 100% |  |
| CO-R17.S13-TE-110 |  | Pipes Laying Works for Ducts of Telecom Network-[Road 17]-[SW-13] | 7d | 2025-07-18 A | 2025-07-21 A | CO-R17.S13-TE-100 | 100% |  |
| CO-R17.S13-TE-120 |  | Pouring Plain Concrete Above Ducts of Telecom Network-[Road 17]-[SW-13] | 7d | 2025-07-22 A | 2025-07-22 A | CO-R17.S13-TE-110 | 100% |  |
| CO-R17.S13-TE-130 |  | Trench Backfilling and Compaction Works for Ducts of Telecom Network-[Road 17]-[SW-13] | 7d | 2025-07-23 A | 2025-07-25 A | CO-R17.S13-TE-120 | 100% |  |
|  | MH | **Manholes Works** |  | 2025-07-19 | 2025-07-27 |  |  |  |
| CO-R17.S13-TE-140 |  | Excavation Works for Manholes of Telecom Network-[Road 17]-[SW-13] | 7d | 2025-07-19 A | 2025-07-22 A | CO-R17.S13-TE-100 | 100% |  |
| CO-R17.S13-TE-150 |  | Installation Works for Manholes of Telecom Network-[Road 17]-[SW-13] | 7d | 2025-07-23 A | 2025-07-24 A | CO-R17.S13-TE-140 | 100% |  |
| CO-R17.S13-TE-160 |  | Backfilling Works for Manholes of Telecom Network-[Road 17]-[SW-13] | 7d | 2025-07-26 A | 2025-07-27 A | CO-R17.S13-TE-150 | 100% |  |
|  | MV | **Medium Voltage Network** |  | 2025-07-23 | 2026-07-13 |  |  |  |
|  | CW | **Cabling Works** |  | 2025-07-23 | 2025-07-26 |  |  |  |
| CO-R17.S13-MV-ML-310 |  | Trench Excavation and Bedding Works for Medium Voltage Network-[Road 17]-[SW-13] | 18d | 2025-07-23 A | 2025-07-25 A | ENG-SH-MV-A-110, CO-R17.S13-SD-170 SS+3d, CO-R17.S13-SD-170 FF+3d, CO-R17.S13-EW-110, CO-R17.S13-TE-130 SS+3d, CO-R17.S13-TE-130 FF+3d, ENG-MS-MV-A-110, CO-R17.S14-SL-160 | 100% |  |
| CO-R17.S13-MV-ML-320 |  | Cable Laying Works for Medium Voltage Network-[Road 17]-[SW-13] | 18d | 2025-07-23 A | 2025-07-25 A | CO-R17.S13-MV-ML-310 SS+3d, CO-R17.S13-MV-ML-310 FF+3d, PRO-R17-MV-DL-100 FF+3d | 100% |  |
| CO-R17.S13-MV-ML-330 |  | Trench Backfilling and Compaction Works for Medium Voltage Network-[Road 17]-[SW-13] | 18d | 2025-07-24 A | 2025-07-26 A | CO-R17.S13-MV-ML-320 SS+3d, CO-R17.S13-MV-ML-320 FF+3d | 100% |  |
|  | SS | **RMU Works** |  | 2026-07-07 | 2026-07-13 |  |  |  |
| CO-R17.S13-MV-130 |  | Foundation Excavation Works for RMU of Medium Voltage Network-[Road 17]-[SW-13] | 6d | 2026-07-07 A | 2026-07-13 A | ENG-SH-MV-A-110, ENG-MS-MV-A-110, CO-R17.S13-EW-100, CO-R17.S13-EW-110 | 100% |  |
| CO-R17.S13-MV-150 |  | Installation Works for RMU Concrete Foundations of Medium Voltage Network-[Road 17]-[SW-13] | 8d | 2026-07-07 A | 2026-07-13 A | CO-R17.S13-MV-130, CO-R10.S03-ES-MV-150, PRO-R17-MV-DL-120, CO-R10.S03-WE-MV-150 | 100% |  |
| CO-R17.S13-MV-170 |  | Installation Works for RMU of Medium Voltage Network-[Road 17]-[SW-13] | 5d | 2026-07-07 A | 2026-07-13 A | CO-R17.S13-MV-150, ENG-SH-MV-A-110, ENG-MS-MV-A-110, PRO-MV-LL-SH/DL-10, CO-R10.S03-ES-MV-170, PRO-R17-MV-LL-MSI-40, CO-R10.S03-WE-MV-170 | 100% |  |
| CO-R17.S13-MV-SS-150 |  | Termination Works for RMU of Medium Voltage Network-[Road 17]-[SW-13] | 5d | 2026-07-07 A | 2026-07-13 A | CO-R17.S13-MV-170 | 100% |  |
| CO-R17.S13-MV-SS-160 |  | Testing Works for RMU of Medium Voltage Network-[Road 17]-[SW-13] | 5d | 2026-07-07 A | 2026-07-13 A | CO-R17.S13-MV-SS-150 | 100% |  |
|  | RD | **Road Works** |  | 2025-06-22 | 2026-09-19 |  |  |  |
|  | RD | **Pre-Bituminous Construction** |  | 2025-06-22 | 2025-09-14 |  |  |  |
| CO-R17.S13-RD-P-100 |  | Capping and Subgrade Layer for Road Works-[Road 17]-[SW-13] | 15d | 2025-06-22 A | 2025-07-05 A | ENG-SH-RD-A-100, CO-R17.S13-SD-130, CO-R17.S13-SW-130, ENG-MS-RD-A-10 | 100% |  |
| CO-R17.S13-RD-P-110 |  | Aggregate Base Course Layer for Road Works-[Road 17]-[SW-13] | 12d | 2025-09-13 A | 2025-09-14 A | CO-R17.S13-RD-P-100 SS+3d, CO-R17.S13-RD-P-100 FF+3d, CO-R17.S13-SD-170 SS+3d, CO-R17.S13-SD-170 FF+3d | 100% |  |
|  | LS | **Pavement Works** |  | 2026-08-25 | 2026-09-19 |  |  |  |
| CO-R17.S13-RD-P-120 |  | Fixing of Curbstone for Sidewalks Pavement-[Road 17]-[SW-13] | 12d | 2026-08-25 A | 2026-08-31 A | CO-R16.S11-RD-P-120, CO-R17.S13-RD-P-110 SS+3d, CO-R17.S13-RD-P-110 FF+3d | 100% |  |
| CO-R17.S13-RD-P-130 |  | Fixing of Interlock Tiles for Sidewalks Pavement-[Road 17]-[SW-13] | 10d | 2026-08-25 A | 2026-09-19 A | CO-R17.S13-RD-P-120 SS+3d, CO-R17.S13-RD-P-120 FF+3d, CO-R16.S11-RD-P-130, CO-R17-PW-TF-100, CO-R17-PW-TF-110, CO-R17-PW-TF-120, CO-R17-SW-TF-100, CO-R17-SW-TF-110, CO-R17-SW-TF-130, CO-R17-SD-TF-100, CO-R17-SL-TF-240, CO-R17-SL-TF-250, CO-R17-IR-TF-170, CO-R17-MV-TF-240 | 100% |  |
|  | SW_16 | **SW_14** |  | 2025-03-04 | 2026-11-26 |  |  |  |
|  | EW | **Earthworks** |  | 2025-03-04 | 2025-03-27 |  |  |  |
|  | EW | **Earthworks** |  | 2025-03-04 | 2025-03-27 |  |  |  |
| CO-R17.S14-EW-100 |  | Roadway Excavation Works Upto Design Level for Earthworks-[Road 17]-[SW-14] | 10d | 2025-03-04 A | 2025-03-15 A | ENG-MS-RD-A-10, ENG-SH-RD-A-100, CO-R17.S13-EW-100 | 100% |  |
| CO-R17.S14-EW-110 |  | Embankments Works Upto Design Level for Earthworks-[Road 17]-[SW-14] | 12d | 2025-03-16 A | 2025-03-27 A | ENG-MS-RD-A-10, ENG-SH-RD-A-100, CO-R17.S14-EW-100 | 100% |  |
|  | SW | **Sewage Network** |  | 2025-05-23 | 2026-10-06 |  |  |  |
|  | ML | **Main Line Sections** |  | 2025-05-23 | 2025-07-05 |  |  |  |
| CO-R17.S14-SW-100 |  | Trench Excavation and Bedding Works for Main Lines of Sewage Network-[Road 17]-[SW-14] | 12d | 2025-05-23 A | 2025-05-25 A | CO-R17.S14-EW-110, ENG-MS-SW-ML-A-110, ENG-SH-SW-ML-A-110, CO-R17.S13-SW-100 | 100% |  |
| CO-R17.S14-SW-120 |  | Pipes Laying Works for Main Lines of Sewage Network-[Road 17]-[SW-14] | 12d | 2025-05-26 A | 2025-06-12 A | PRO-R17-SW-DL-100 FF+3d, CO-R17.S14-SW-100 | 100% |  |
| CO-R17.S14-SW-130 |  | Trench Backfilling and Compaction Works for Main Lines of Sewage Network-[Road 17]-[SW-14] | 10d | 2025-06-22 A | 2025-07-05 A | CO-R17.S14-SW-120, CO-R17.S13-SW-130 | 100% |  |
|  | 1 | **Manholes** |  | 2025-06-13 | 2026-10-06 |  |  |  |
| CO-R17.S14-SW-160 |  | Excavation Works for Main Line Manholes of Sewage Network-[Road 17]-[SW-14] | 1d | 2025-06-13 A | 2025-06-13 A | CO-R17.S14-SW-120 SS | 100% |  |
| CO-R17.S14-SW-170 |  | Installation RC Footing Works for Main Line Manholes of Sewage Network-[Road 17]-[SW-14] | 2d | 2025-06-14 A | 2025-06-15 A | CO-R17.S14-SW-160, PRO-R17-SW-DL-110 FF+3d | 100% |  |
| CO-R17.S14-SW-180 |  | Install Grp Liner Wall Works for Main Line Manholes of Sewage Network-[Road 17]-[SW-14] | 4d | 2025-06-16 A | 2025-06-20 A | CO-R17.S14-SW-170 | 100% |  |
| CO-R17.S14-SW-190 |  | Pouring Grp Liner Wall Works for Main Line Manholes of Sewage Network-[Road 17]-[SW-14] | 1d | 2025-06-21 A | 2025-06-21 A | CO-R17.S14-SW-180 | 100% |  |
| CO-R17.S14-SW-200 |  | Backfilling Works for Main Line Manholes of Sewage Network-[Road 17]-[SW-14] | 4d | 2025-06-22 A | 2025-06-28 A | CO-R17.S14-SW-190 | 100% |  |
| CO-R17.S14-SW-210 |  | Testing Works for Main Line Manholes of Sewage Network-[Road 17]-[SW-14] | 1d | 2026-10-06 | 2026-10-06 | CO-R17.S14-SW-200 |  | 1d |
|  | SD | **Storm Drainage Network** |  | 2025-06-23 | 2026-07-13 |  |  |  |
|  | ML | **Main Line Sections** |  | 2025-06-23 | 2025-07-10 |  |  |  |
| CO-R17.S14-SD-100 |  | Trench Excavation and Bedding Works for Main Lines of Storm Drainage Network-[Road 17]-[SW-14] | 10d | 2025-06-23 A | 2025-07-06 A | CO-R17.S14-EW-110, CO-R17.S14-EW-100, CO-R17.S14-SW-130 SS+3d, CO-R17.S14-SW-130 FF+3d | 100% |  |
| CO-R17.S14-SD-120 |  | Pipes Laying Works for Main Lines of Storm Drainage Network-[Road 17]-[SW-14] | 20d | 2025-07-07 A | 2025-07-10 A | PRO-R17-SD-DL-120 FF+3d, CO-R17.S14-SD-100 | 100% |  |
| CO-R17.S14-SD-130 |  | Trench Backfilling and Compaction Works for Main Lines of Storm Drainage Network-[Road 17]-[SW-14] | 20d | 2025-07-08 A | 2025-07-10 A | CO-R17.S14-SD-120 SS+3d, CO-R17.S14-SD-120 FF+3d | 100% |  |
|  | MH | **Manholes** |  | 2025-07-08 | 2026-07-13 |  |  |  |
| CO-R17.S14-SD-180 |  | Trench Excavation and Bedding Works for Manholes of Storm Drainage Network-[Road 17]-[SW-14] | 1d | 2025-07-08 A | 2025-07-11 A | CO-R17.S14-SD-120 SS, PRO-SD-1DL-100 | 100% |  |
| CO-R17.S14-SD-190 |  | Install RC Footing Works for Manholes of Storm Drainage Network-[Road 17]-[SW-14] | 1d | 2025-07-12 A | 2025-07-12 A | CO-R17.S14-SD-180 | 100% |  |
| CO-R17.S14-SD-200 |  | Install RC Wall Rings & Slab Works for Manholes of Storm Drainage Network-[Road 17]-[SW-14] | 4d | 2025-07-13 A | 2025-07-14 A | CO-R17.S14-SD-190 | 100% |  |

| ID | WBS | Task | Duration | Start | Finish | Predecessors | Complete | Total float |
| --- | --- | --- | --- | --- | --- | --- | --- | --- |
| CO-R17.S14-SD-220 |  | Backfilling Works for Manholes of Storm Drainage Network-[Road 17]-[SW-14] | 7d | 2025-07-15 A | 2025-07-15 A | CO-R17.S14-SD-200 | 100% |  |
| CO-R17.S14-SD-210 |  | Testing Works for Manholes of Storm Drainage Network-[Road 17]-[SW-14] | 1d | 2026-06-04 A | 2026-07-13 A | CO-R17.S14-SD-200 | 100% |  |
|  | CB | **Catch Basin Sections** |  | 2025-07-16 | 2026-07-13 |  |  |  |
| CO-R17.S14-SD-140 |  | Trench Excavation and Bedding Works for Catch Basins of Storm Drainage Network-[Road 17]-[SW-14] | 6d | 2025-07-16 A | 2025-07-16 A | CO-R17.S14-EW-110, CO-R17.S14-SD-220 | 100% |  |
| CO-R17.S14-SD-150 |  | Installation and Pipes Laying Connection Works for Catch Basins of Storm Drainage Network-[Road 17]-[SW-14] | 7d | 2025-07-17 A | 2025-07-17 A | CO-R17.S14-SD-140, PRO-R17-SD-DL-130 FF+3d, CO-R17.S13-SD-150 | 100% |  |
| CO-R17.S14-SD-170 |  | Trench Backfilling and Compaction Works for Catch Basins of Storm Drainage Network-[Road 17]-[SW-14] | 7d | 2025-07-18 A | 2025-07-18 A | CO-R17.S14-SD-150 | 100% |  |
| CO-R17.S14-SD-160 |  | Testing Works for Catch Basins of Storm Drainage Network-[Road 17]-[SW-14] | 4d | 2026-06-04 A | 2026-07-13 A | CO-R17.S14-SD-150, CO-R17.S14-SD-120, PRO-R17-SD-DL-110 FF+3d | 100% |  |
|  | SL | **Street Lighting Network** |  | 2025-07-08 | 2026-11-26 |  |  |  |
|  | LP | **Lighting Poles Works** |  | 2025-07-08 | 2026-11-26 |  |  |  |
| CO-R17.S14-SL-100 |  | Foundation Excavation Works for Lighting Poles of Street Lighting Network-[Road 17]-[SW-14] | 12d | 2025-07-08 A | 2025-07-11 A | CO-R17.S13-IR-100 SS+3d, CO-R17.S13-IR-130, CO-R17.S14-EW-100, CO-R17.S14-EW-110, ENG-MS-SL-A-110, ENG-SH-SL-A-110, PRO-SL-1DL-110 | 100% |  |
| CO-R17.S14-SL-110 |  | Installation Works for Lighting Poles Foundation of Street Lighting Network-[Road 17]-[SW-14] | 12d | 2025-07-12 A | 2025-07-14 A | CO-R17.S14-SL-100, PRO-R17-SL-DL-110 FF+3d | 100% |  |
| CO-R17.S14-SL-120 |  | Installation Works for Lighting Poles of Street Lighting Network-[Road 17]-[SW-14] | 17.5d | 2025-09-11 A | 2025-09-11 A | CO-R17.S14-SL-110, CO-R17.S14-SL-160, PRO-R17-SL-DL-120 FF+3d | 100% |  |
| CO-R17.S14-SL-210 |  | Backfilling Works for Lighting Poles of Street Lighting Network-[Road 17]-[SW-14] | 12d | 2025-09-11 A | 2025-09-11 A | CO-R17.S14-SL-120 SS, CO-R17.S14-SL-120 FF, CO-R18.S16-SL-210 | 100% |  |
| CO-R17.S14-SL-200 |  | Testing Works for Lighting Poles of Street Lighting Network-[Road 17]-[SW-14] | 5d | 2026-10-06 | 2026-10-11 | CO-R17.S14-SL-210, CO-R17.S14-SL-120 |  | -32d |
| CO-R17.S14-SL-130 |  | Installation Works for Lighting Fixtures With Drop Wire of Street Lighting Network-[Road 17]-[SW-14] | 18d | 2026-11-07 | 2026-11-26 | CO-R17.S14-SL-120 SS+5d, CO-R17.S14-SL-120 FF+5d, CO-R17.S14-SL-200 FF, PRO-R17-SL-DL-140 FF+3d |  | -72d |
|  | CW | **Cabling Works** |  | 2025-07-15 | 2025-07-20 |  |  |  |
| CO-R17.S14-SL-140 |  | Trench Excavation and Bedding Works for Street Lighting Network-[Road 17]-[SW-14] | 10d | 2025-07-15 A | 2025-07-16 A | CO-R17.S14-SL-110 | 100% |  |
| CO-R17.S14-SL-150 |  | Cable Laying Works for Street Lighting Network-[Road 17]-[SW-14] | 10d | 2025-07-17 A | 2025-07-18 A | CO-R17.S14-SL-140, PRO-R17-SL-DL-100 FF+3d | 100% |  |
| CO-R17.S14-SL-160 |  | Trench Backfilling and Compaction Works for Street Lighting Network-[Road 17]-[SW-14] | 10d | 2025-07-19 A | 2025-07-20 A | CO-R17.S14-SL-150 | 100% |  |
|  | DPB | **Distrubution Panel Boards** |  | 2026-10-06 | 2026-11-02 |  |  |  |
| CO-R17.S14-SL-170 |  | Foundation Excavation Works For Panel Boards of Street Lighting Network-[Road 17]-[SW-14] | 18d | 2026-10-06 | 2026-10-26 | CO-R17.S14-EW-110, ENG-MS-SL-A-110, ENG-SH-SL-A-110 |  | -29d |
| CO-R17.S14-SL-180 |  | Installation Works for Panel Board Concrete Foundations of Street Lighting Network-[Road 17]-[SW-14] | 18d | 2026-10-10 | 2026-10-29 | CO-R17.S14-SL-170 SS+3d, CO-R17.S14-SL-170 FF+3d |  | -29d |
| CO-R17.S14-SL-220 |  | A wall of concrete blocks to install the KWH meter of Street Lighting Network-[Road 17]-[SW-14] | 18d | 2026-10-10 | 2026-10-29 | CO-R17.S14-SL-180 SS, CO-R17.S14-SL-180 FF |  | -26d |
| CO-R17.S14-SL-190 |  | Installation Works for Lighting Panel Boards of Street Lighting Network-[Road 17]-[SW-14] | 18d | 2026-10-13 | 2026-11-02 | CO-R17.S14-SL-180 SS+3d, CO-R17.S14-SL-180 FF+3d |  | -29d |
|  | PW | **Potable Water Network** |  | 2025-07-11 | 2026-11-09 |  |  |  |
|  | ML | **Main Line Sections** |  | 2025-07-11 | 2025-07-17 |  |  |  |
| CO-R17.S14-PW-100 |  | Trench Excavation and Bedding Works for Main Lines of Potable Water Network-[Road 17]-[SW-14] | 6d | 2025-07-11 A | 2025-07-12 A | CO-R17.S14-EW-110, CO-R17.S14-EW-100, CO-R17.S14-SW-130 FF, CO-R17.S14-SD-130 | 100% |  |
| CO-R17.S14-PW-110 |  | Pipes Laying and accessories for Main Lines of Potable Water Network-[Road 17]-[SW-14] | 5.75d | 2025-07-13 A | 2025-07-16 A | CO-R17.S14-PW-100, CO-R16.S12-PW-110, PRO-R17-PW-DL-100 FF+3d | 100% |  |
| CO-R17.S14-PW-130 |  | Trench Backfilling and Compaction Works for Main Lines of Potable Water Network-[Road 17]-[SW-14] | 6d | 2025-07-14 A | 2025-07-17 A | CO-R17.S14-PW-110 SS+3d, CO-R17.S14-PW-110 FF+3d | 100% |  |
|  | VC | **Valve Chamber** |  | 2026-07-07 | 2026-07-13 |  |  |  |
| CO-R17.S14-PW-210 |  | Installation Works for Main Line Valves and Valve Chambers of Potable Water Network-[Road 17]-[SW-14] | 6d | 2026-07-07 A | 2026-07-13 A | CO-R17.S14-PW-130 | 100% |  |
|  | FH | **Fire Hydrant** |  | 2026-10-06 | 2026-11-09 |  |  |  |
| CO-R17.S14-PW-140 |  | Excavation Works for Fire Hydrants of Potable Water Network-[Road 17]-[SW-14] | 6d | 2026-10-06 | 2026-10-12 | CO-R17.S14-PW-110 SS+3d, CO-R17.S14-PW-110 FF+3d, CO-R17.S14-EW-110, CO-R17.S14-SW-130 SS+3d, CO-R17.S14-SW-130 FF+3d |  | 8d |
| CO-R17.S14-PW-150 |  | Installation Works for Fire Hydrant of Potable Water Network-[Road 17]-[SW-14] | 6d | 2026-10-27 | 2026-11-02 | CO-R17.S14-PW-140, CO-R16.S12-PW-150, PRO-R17-PW-DL-120 FF+3d |  | -4d |
| CO-R17.S14-PW-160 |  | Trench Backfilling and Compaction Works for Fire Hydrants of Potable Water Network-[Road 17]-[SW-14] | 6d | 2026-11-03 | 2026-11-09 | CO-R17.S14-PW-150, CO-R16.S12-PW-160 |  | -4d |
|  | TE | **Telecom Network** |  | 2025-07-20 | 2026-10-29 |  |  |  |
|  | PD | **Ducts Works** |  | 2025-07-20 | 2025-07-27 |  |  |  |
| CO-R17.S14-TE-100 |  | Trench Excavation and Bedding Works for Ducts of Telecom Network-[Road 17]-[SW-14] | 7d | 2025-07-20 A | 2025-07-22 A | CO-R17.S14-EW-110, CO-R17.S13-TE-100 SS | 100% |  |
| CO-R17.S14-TE-110 |  | Pipes Laying Works for Ducts of Telecom Network-[Road 17]-[SW-14] | 7d | 2025-07-23 A | 2025-07-24 A | CO-R17.S14-TE-100, PRO-R17-TE-DL-100 FF+3d | 100% |  |
| CO-R17.S14-TE-120 |  | Pouring Plain Concrete Above Ducts of Telecom Network-[Road 17]-[SW-14] | 7d | 2025-07-26 A | 2025-07-26 A | CO-R17.S14-TE-110 | 100% |  |
| CO-R17.S14-TE-130 |  | Trench Backfilling and Compaction Works for Ducts of Telecom Network-[Road 17]-[SW-14] | 7d | 2025-07-27 A | 2025-07-27 A | CO-R17.S14-TE-120 | 100% |  |
|  | MH | **Manholes Works** |  | 2026-10-06 | 2026-10-29 |  |  |  |
| CO-R17.S14-TE-140 |  | Excavation Works for Manholes of Telecom Network-[Road 17]-[SW-14] | 7d | 2026-10-06 | 2026-10-13 | CO-R16.S12-TE-140, CO-R17.S13-TE-140, CO-R17.S14-TE-100 |  | -49d |
| CO-R17.S14-TE-150 |  | Installation Works for Manholes of Telecom Network-[Road 17]-[SW-14] | 7d | 2026-10-14 | 2026-10-21 | CO-R17.S14-TE-140, CO-R16.S12-TE-150, PRO-R17-TE-DL-110 FF+3d |  | -49d |
| CO-R17.S14-TE-160 |  | Backfilling Works for Manholes of Telecom Network-[Road 17]-[SW-14] | 7d | 2026-10-22 | 2026-10-29 | CO-R17.S14-TE-150, CO-R16.S12-TE-160 |  | -49d |
|  | RD | **Road Works** |  | 2025-07-06 | 2026-09-17 |  |  |  |
|  | RD | **Pre-Bituminous Construction** |  | 2025-07-06 | 2025-09-14 |  |  |  |
| CO-R17.S14-RD-P-100 |  | Capping and Subgrade Layer for Road Works-[Road 17]-[SW-14] | 18d | 2025-07-06 A | 2025-07-16 A | CO-R17.S14-SD-130, CO-R17.S14-SW-130, CO-R17.S14-PW-130, PRO-R17-RD-DL-120 FF+3d | 100% |  |
| CO-R17.S14-RD-P-110 |  | Aggregate Base Course Layer for Road Works-[Road 17]-[SW-14] | 12d | 2025-09-13 A | 2025-09-14 A | CO-R17.S14-RD-P-100 SS+3d, CO-R17.S14-RD-P-100 FF+3d, CO-R17.S14-SD-170 SS+3d, CO-R17.S14-SD-170 FF+3d, PRO-R17-RD-DL-130 FF+3d | 100% |  |
|  | LS | **Pavement Works** |  | 2026-08-25 | 2026-09-17 |  |  |  |
| CO-R17.S14-RD-P-120 |  | Fixing of Curbstone for Sidewalks Pavement-[Road 17]-[SW-14] | 12d | 2026-08-25 A | 2026-08-31 A | CO-R16.S12-RD-P-120, PRO-R17-RD-DL-110 FF+3d, CO-R17.S14-RD-P-110 SS+3d, CO-R17.S14-RD-P-110 FF+3d | 100% |  |
| CO-R17.S14-RD-P-130 |  | Fixing of Interlock Tiles for Sidewalks Pavement-[Road 17]-[SW-14] | 10d | 2026-08-25 A | 2026-09-17 A | CO-R17.S14-RD-P-120 SS+3d, CO-R17.S14-RD-P-120 FF+3d, CO-R16.S12-RD-P-130, PRO-R17-RD-DL-100 FF+3d, CO-R17-PW-TF-100, CO-R17-PW-TF-110, CO-R17-PW-TF-120, CO-R17-SW-TF-100, CO-R17-SW-TF-110, CO-R17-SW-TF-130, CO-R17-SD-TF-100, CO-R17-SD-TF-120, CO-R17-SL-TF-240, CO-R17-SL-TF-250, CO-R17-IR-TF-170, CO-R17-MV-TF-240 | 100% |  |
|  | 1 | **Road 18 Local 1 ( 479 LM )** |  | 2025-02-11 | 2026-11-02 |  |  |  |
|  | SW_15 | **SW_15** |  | 2025-02-11 | 2026-09-20 |  |  |  |
|  | EW | **Earthworks** |  | 2025-02-11 | 2025-02-25 |  |  |  |
|  | EW | **Earthworks** |  | 2025-02-11 | 2025-02-25 |  |  |  |
| CO-R18.S15-EW-120 |  | Roadway Excavation Works Upto Design Level for Earthworks-[Road 18]-[SW-15] | 10d | 2025-02-11 A | 2025-02-20 A | ENG-MS-RD-A-10, ENG-SH-RD-A-100 | 100% |  |
| CO-R18.S15-EW-130 |  | Embankments Works Upto Design Level for Earthworks-[Road 18]-[SW-15] | 12d | 2025-02-21 A | 2025-02-25 A | CO-R18.S15-EW-120, ENG-MS-RD-A-10, ENG-SH-RD-A-100 | 100% |  |
|  | SW | **Sewage Network** |  | 2025-04-29 | 2025-09-17 |  |  |  |
|  | ML | **Main Line Sections** |  | 2025-04-29 | 2025-05-20 |  |  |  |
| CO-R18.S15-SW-220 |  | Trench Excavation and Bedding Works for Main Lines of Sewage Network-[Road 18]-[SW-15] | 6d | 2025-04-29 A | 2025-05-09 A | CO-R18.S15-EW-130, ENG-MS-SW-ML-A-110, ENG-SH-SW-ML-A-110 | 100% |  |
| CO-R18.S15-SW-230 |  | Pipes Laying Works for Main Lines of Sewage Network-[Road 18]-[SW-15] | 10d | 2025-05-10 A | 2025-05-16 A | CO-R18.S15-SW-220, PRO-R18-SW-DL-150 | 100% |  |
| CO-R18.S15-SW-240 |  | Trench Backfilling and Compaction Works for Main Lines of Sewage Network-[Road 18]-[SW-15] | 10d | 2025-05-17 A | 2025-05-20 A | CO-R18.S15-SW-230 | 100% |  |
|  | 1 | **Manholes** |  | 2025-05-25 | 2025-09-17 |  |  |  |
| CO-R18.S15-SW-250 |  | Excavation Works for Main Line Manholes of Sewage Network-[Road 18]-[SW-15] | 1d | 2025-05-25 A | 2025-05-26 A | CO-R18.S15-SW-230 SS | 100% |  |
| CO-R18.S15-SW-260 |  | Installation RC Footing Works for Main Line Manholes of Sewage Network-[Road 18]-[SW-15] | 2.25d | 2025-05-31 A | 2025-06-02 A | CO-R18.S15-SW-250, PRO-R18-SW-DL-160 | 100% |  |
| CO-R18.S15-SW-270 |  | Install Grp Liner Wall Works for Main Line Manholes of Sewage Network-[Road 18]-[SW-15] | 4d | 2025-06-01 A | 2025-06-03 A | CO-R18.S15-SW-260 | 100% |  |
| CO-R18.S15-SW-290 |  | Backfilling Works for Main Line Manholes of Sewage Network-[Road 18]-[SW-15] | 4d | 2025-06-17 A | 2025-06-21 A | CO-R18.S15-SW-270 | 100% |  |
| CO-R18.S15-SW-280 |  | Pouring Grp Liner Wall Works for Main Line Manholes of Sewage Network-[Road 18]-[SW-15] | 1d | 2025-09-16 A | 2025-09-16 A | CO-R18.S15-SW-270 | 100% |  |
| CO-R18.S15-SW-300 |  | Testing Works for Main Line Manholes of Sewage Network-[Road 18]-[SW-15] | 1d | 2025-09-17 A | 2025-09-17 A | CO-R18.S15-SW-290, CO-R18.S15-SW-280 | 100% |  |

| ID | WBS | Task | Duration | Start | Finish | Predecessors | Complete |
| --- | --- | --- | --- | --- | --- | --- | --- |
|  | SD | **Storm Drainage Network** |  | 2025-04-30 | 2026-07-13 |  |  |
|  | ML | **Main Line Sections** |  | 2025-04-30 | 2025-05-24 |  |  |
| CO-R18.S15-SD-230 |  | Trench Excavation and Bedding Works for Main Lines of Storm Drainage Network-[Road 18]-[SW-15] | 10d | 2025-04-30 A | 2025-05-22 A | CO-R18.S15-EW-130, CO-R18.S15-EW-120 | 100% |
| CO-R18.S15-SD-240 |  | Pipes Laying Works for Main Lines of Storm Drainage Network-[Road 18]-[SW-15] | 20d | 2025-05-01 A | 2025-05-24 A | CO-R18.S15-SD-230, PRO-R18-SD-DL-180 | 100% |
| CO-R18.S15-SD-250 |  | Trench Backfilling and Compaction Works for Main Lines of Storm Drainage Network-[Road 18]-[SW-15] | 20d | 2025-05-15 A | 2025-05-24 A | CO-R18.S15-SD-240 SS+3d, CO-R18.S15-SD-240 FF+3d, CO-R18.S15-SD-240, CO-R18.S15-SD-340 FF | 100% |
|  | MH | **Manholes** |  | 2025-05-13 | 2026-07-13 |  |  |
| CO-R18.S15-SD-300 |  | Trench Excavation and Bedding Works for Manholes of Storm Drainage Network-[Road 18]-[SW-15] | 1d | 2025-05-13 A | 2025-05-22 A | CO-R18.S15-SD-240 SS | 100% |
| CO-R18.S15-SD-310 |  | Install RC Footing Works for Manholes of Storm Drainage Network-[Road 18]-[SW-15] | 1d | 2025-05-21 A | 2025-05-22 A | CO-R18.S15-SD-300, PRO-R18-SD-DL-170 | 100% |
| CO-R18.S15-SD-320 |  | Install RC Wall Rings & Slab Works for Manholes of Storm Drainage Network-[Road 18]-[SW-15] | 4d | 2025-06-01 A | 2025-06-04 A | CO-R18.S15-SD-310 | 100% |
| CO-R18.S15-SD-340 |  | Backfilling Works for Manholes of Storm Drainage Network-[Road 18]-[SW-15] | 7d | 2025-06-08 A | 2025-06-14 A | CO-R18.S15-SD-320 | 100% |
| CO-R18.S15-SD-330 |  | Testing Works for Manholes of Storm Drainage Network-[Road 18]-[SW-15] | 1d | 2026-06-04 A | 2026-07-13 A | CO-R18.S15-SD-320 | 100% |
|  | CB | **Catch Basin Sections** |  | 2025-05-18 | 2026-07-13 |  |  |
| CO-R18.S15-SD-260 |  | Trench Excavation and Bedding Works for Catch Basins of Storm Drainage Network-[Road 18]-[SW-15] | 7d | 2025-05-18 A | 2025-05-22 A | CO-R18.S15-EW-130, CO-R18.S15-SD-340 | 100% |
| CO-R18.S15-SD-270 |  | Installation and Pipes Laying Connection Works for Catch Basins of Storm Drainage Network-[Road 18]-[SW-15] | 7d | 2025-05-24 A | 2025-06-03 A | CO-R18.S15-SD-260, PRO-R18-SD-DL-200, PRO-R18-SD-DL-220 | 100% |
| CO-R18.S15-SD-290 |  | Trench Backfilling and Compaction Works for Catch Basins of Storm Drainage Network-[Road 18]-[SW-15] | 7d | 2025-06-04 A | 2025-06-09 A | CO-R18.S15-SD-270 | 100% |
| CO-R18.S15-SD-280 |  | Testing Works for Catch Basins of Storm Drainage Network-[Road 18]-[SW-15] | 7d | 2026-06-04 A | 2026-07-13 A | CO-R18.S15-SD-270, CO-R18.S15-SD-240 | 100% |
|  | IR | **Irrigation Network** |  | 2025-06-16 | 2026-07-13 |  |  |
|  | ML | **Main Line Pipes** |  | 2025-06-16 | 2026-07-13 |  |  |
| CO-R18.S15-IR-140 |  | Trench Excavation and Bedding Works for Main Lines of Irrigation Network-[Road 18]-[SW-15] | 7d | 2025-06-16 A | 2025-07-07 A | CO-R18.S15-EW-130, CO-R18.S15-SD-290 | 100% |
| CO-R18.S15-IR-150 |  | Pipes Laying Works for Main Lines of Irrigation Network-[Road 18]-[SW-15] | 10d | 2025-06-19 A | 2025-07-07 A | CO-R18.S15-IR-140, PRO-R18-IR-DL-120 FF+3d | 100% |
| CO-R18.S15-IR-170 |  | Trench Backfilling and Compaction Works for Main Lines of Irrigation Network-[Road 18]-[SW-15] | 9d | 2025-07-02 A | 2025-07-07 A | CO-R18.S15-IR-150 | 100% |
| CO-R18.S15-IR-160 |  | Installation Works for Main Line Valves of Irrigation Network-[Road 18]-[SW-15] | 7d | 2026-07-11 A | 2026-07-13 A | CO-R18.S15-IR-150, PRO-R18-IR-DL-130 FF+3d | 100% |
|  | TE | **Telecom Network** |  | 2025-07-08 | 2025-07-30 |  |  |
|  | PD | **Ducts Works** |  | 2025-07-08 | 2025-07-21 |  |  |
| CO-R18.S15-TE-170 |  | Trench Excavation and Bedding Works for Ducts of Telecom Network-[Road 18]-[SW-15] | 7d | 2025-07-08 A | 2025-07-10 A | CO-R18.S15-IR-170, CO-R18.S15-EW-130 | 100% |
| CO-R18.S15-TE-180 |  | Pipes Laying Works for Ducts of Telecom Network-[Road 18]-[SW-15] | 7d | 2025-07-11 A | 2025-07-15 A | CO-R18.S15-TE-170, PRO-R18-TE-DL-120 | 100% |
| CO-R18.S15-TE-190 |  | Trench Backfilling and Compaction Works for Ducts of Telecom Network-[Road 18]-[SW-15] | 7d | 2025-07-16 A | 2025-07-17 A | CO-R18.S15-TE-230 | 100% |
| CO-R18.S15-TE-230 |  | Pouring Plain Concrete Above Ducts of Telecom Network-[Road 18]-[SW-15] | 7d | 2025-07-18 A | 2025-07-21 A | CO-R18.S15-TE-180 | 100% |
|  | MH | **Manholes Works** |  | 2025-07-20 | 2025-07-30 |  |  |
| CO-R18.S15-TE-200 |  | Excavation Works for Manholes of Telecom Network-[Road 18]-[SW-15] | 7d | 2025-07-20 A | 2025-07-22 A | CO-R18.S15-TE-170 | 100% |
| CO-R18.S15-TE-210 |  | Installation Works for Manholes of Telecom Network-[Road 18]-[SW-15] | 7d | 2025-07-23 A | 2025-07-26 A | CO-R18.S15-TE-200, PRO-R18-TE-DL-130 | 100% |
| CO-R18.S15-TE-220 |  | Backfilling Works for Manholes of Telecom Network-[Road 18]-[SW-15] | 7d | 2025-07-27 A | 2025-07-30 A | CO-R18.S15-TE-210 | 100% |
|  | MV | **Medium Voltage Network** |  | 2025-07-22 | 2025-07-24 |  |  |
|  | CW | **Cabling Works** |  | 2025-07-22 | 2025-07-24 |  |  |
| CO-R18.S15-MV-ML-340 |  | Trench Excavation and Bedding Works for Medium Voltage Network-[Road 18]-[SW-15] | 18d | 2025-07-22 A | 2025-07-23 A | CO-R18.S15-SD-290 SS+3d, CO-R18.S15-SD-290 FF+3d, CO-R18.S15-EW-130, CO-R18.S15-TE-190 SS+3d, CO-R18.S16-SL-160 | 100% |
| CO-R18.S15-MV-ML-350 |  | Cable Laying Works for Medium Voltage Network-[Road 18]-[SW-15] | 18d | 2025-07-22 A | 2025-07-23 A | CO-R18.S15-MV-ML-340 SS+3d, CO-R18.S15-MV-ML-340 FF+3d, PRO-R18-MV-DL-120 FF+3d | 100% |
| CO-R18.S15-MV-ML-360 |  | Trench Backfilling and Compaction Works for Medium Voltage Network-[Road 18]-[SW-15] | 18d | 2025-07-23 A | 2025-07-24 A | CO-R18.S15-MV-ML-350 SS+3d, CO-R18.S15-MV-ML-350 FF+3d | 100% |
|  | RD | **Road Works** |  | 2025-07-10 | 2026-09-20 |  |  |
|  | RD | **Pre-Bituminous Construction** |  | 2025-07-10 | 2025-08-31 |  |  |
| CO-R18.S15-RD-P-160 |  | Capping and Subgrade Layer for Road Works-[Road 18]-[SW-15] | 15d | 2025-07-10 A | 2025-07-21 A | CO-R18.S15-SD-250, CO-R18.S15-SW-240, PRO-R18-RD-DL-220 | 100% |
| CO-R18.S15-RD-P-170 |  | Aggregate Base Course Layer for Road Works-[Road 18]-[SW-15] | 18d | 2025-08-27 A | 2025-08-31 A | CO-R18.S15-RD-P-160 SS+3d, CO-R18.S15-RD-P-160 FF+3d, CO-R18.S15-SD-290 SS+3d, CO-R18.S15-SD-290 FF+3d, PRO-R18-RD-DL-230 | 100% |
|  | LS | **Pavement Works** |  | 2026-08-25 | 2026-09-20 |  |  |
| CO-R18.S15-RD-P-140 |  | Fixing of Curbstone for Sidewalks Pavement-[Road 18]-[SW-15] | 18d | 2026-08-25 A | 2026-08-31 A | CO-R18.S15-RD-P-170 SS+3d, CO-R18.S15-RD-P-170 FF+3d, PRO-R18-RD-DL-190 | 100% |
| CO-R18.S15-RD-P-150 |  | Fixing of Interlock Tiles for Sidewalks Pavement-[Road 18]-[SW-15] | 18d | 2026-08-25 A | 2026-09-20 A | CO-R18.S15-RD-P-140 SS+3d, CO-R18.S15-RD-P-140 FF+3d, PRO-R18-RD-DL-180 | 100% |
|  | SW_16 | **SW_16** |  | 2025-02-21 | 2026-11-02 |  |  |
|  | EW | **Earthworks** |  | 2025-02-21 | 2025-03-02 |  |  |
|  | EW | **Earthworks** |  | 2025-02-21 | 2025-03-02 |  |  |
| CO-R18.S16-EW-120 |  | Roadway Excavation Works Upto Design Level for Earthworks-[Road 18]-[SW-16] | 10d | 2025-02-21 A | 2025-02-26 A | ENG-MS-RD-A-10, ENG-SH-RD-A-100, CO-R18.S15-EW-120 | 100% |
| CO-R18.S16-EW-130 |  | Embankments Works Upto Design Level for Earthworks-[Road 18]-[SW-16] | 12d | 2025-02-27 A | 2025-03-02 A | CO-R18.S16-EW-120, ENG-MS-RD-A-10, ENG-SH-RD-A-100 | 100% |
|  | SW | **Sewage Network** |  | 2025-04-29 | 2025-09-17 |  |  |
|  | ML | **Main Line Sections** |  | 2025-04-29 | 2025-05-19 |  |  |
| CO-R18.S16-SW-220 |  | Trench Excavation and Bedding Works for Main Lines of Sewage Network-[Road 18]-[SW-16] | 6d | 2025-04-29 A | 2025-05-19 A | CO-R18.S16-EW-130, ENG-MS-SW-ML-A-110, ENG-SH-SW-ML-A-110, CO-R18.S15-SW-220 SS | 100% |
| CO-R18.S16-SW-230 |  | Pipes Laying Works for Main Lines of Sewage Network-[Road 18]-[SW-16] | 12d | 2025-04-30 A | 2025-05-19 A | CO-R18.S16-SW-220, PRO-R18-SW-DL-150 | 100% |
| CO-R18.S16-SW-240 |  | Trench Backfilling and Compaction Works for Main Lines of Sewage Network-[Road 18]-[SW-16] | 10d | 2025-05-03 A | 2025-05-17 A | CO-R18.S16-SW-230 | 100% |
|  | 1 | **Manholes** |  | 2025-06-10 | 2025-09-17 |  |  |
| CO-R18.S16-SW-250 |  | Excavation Works for Main Line Manholes of Sewage Network-[Road 18]-[SW-16] | 1d | 2025-06-10 A | 2025-06-10 A | CO-R18.S16-SW-230 SS | 100% |
| CO-R18.S16-SW-260 |  | Installation RC Footing Works for Main Line Manholes of Sewage Network-[Road 18]-[SW-16] | 2d | 2025-06-11 A | 2025-06-12 A | CO-R18.S16-SW-250, PRO-R18-SW-DL-160 | 100% |
| CO-R18.S16-SW-270 |  | Install Grp Liner Wall Works for Main Line Manholes of Sewage Network-[Road 18]-[SW-16] | 4d | 2025-06-17 A | 2025-06-22 A | CO-R18.S16-SW-260 | 100% |
| CO-R18.S16-SW-290 |  | Backfilling Works for Main Line Manholes of Sewage Network-[Road 18]-[SW-16] | 4d | 2025-06-24 A | 2025-06-28 A | CO-R18.S16-SW-270 | 100% |
| CO-R18.S16-SW-280 |  | Pouring Grp Liner Wall Works for Main Line Manholes of Sewage Network-[Road 18]-[SW-16] | 1d | 2025-09-16 A | 2025-09-16 A | CO-R18.S16-SW-270 | 100% |
| CO-R18.S16-SW-300 |  | Testing Works for Main Line Manholes of Sewage Network-[Road 18]-[SW-16] | 1d | 2025-09-17 A | 2025-09-17 A | CO-R18.S16-SW-290, CO-R18.S16-SW-280 | 100% |
|  | SD | **Storm Drainage Network** |  | 2025-05-01 | 2026-07-13 |  |  |
|  | ML | **Main Line Sections** |  | 2025-05-01 | 2025-06-04 |  |  |
| CO-R18.S16-SD-240 |  | Pipes Laying Works for Main Lines of Storm Drainage Network-[Road 18]-[SW-16] | 20d | 2025-05-01 A | 2025-06-02 A | CO-R18.S16-SD-230 | 100% |
| CO-R18.S16-SD-230 |  | Trench Excavation and Bedding Works for Main Lines of Storm Drainage Network-[Road 18]-[SW-16] | 10d | 2025-05-03 A | 2025-05-15 A | CO-R18.S16-EW-130, CO-R18.S16-EW-120, CO-R18.S16-SW-240 SS+3d, CO-R18.S16-SW-240 FF+3d | 100% |
| CO-R18.S16-SD-250 |  | Trench Backfilling and Compaction Works for Main Lines of Storm Drainage Network-[Road 18]-[SW-16] | 20d | 2025-05-19 A | 2025-06-04 A | CO-R18.S16-SD-240 SS+3d, CO-R18.S16-SD-240 FF+3d, CO-R18.S16-SD-240, CO-R18.S16-SD-340 FF, CO-R18.S15-SD-250 | 100% |
|  | MH | **Manholes** |  | 2025-06-01 | 2026-07-13 |  |  |
| CO-R18.S16-SD-300 |  | Trench Excavation and Bedding Works for Manholes of Storm Drainage Network-[Road 18]-[SW-16] | 1d | 2025-06-01 A | 2025-06-02 A | CO-R18.S16-SD-240 SS | 100% |
| CO-R18.S16-SD-310 |  | Install RC Footing Works for Manholes of Storm Drainage Network-[Road 18]-[SW-16] | 1d | 2025-06-02 A | 2025-06-03 A | CO-R18.S16-SD-300 | 100% |
| CO-R18.S16-SD-320 |  | Install RC Wall Rings & Slab Works for Manholes of Storm Drainage Network-[Road 18]-[SW-16] | 4d | 2025-06-03 A | 2025-06-04 A | CO-R18.S16-SD-310 | 100% |

| ID | WBS | Task | Duration | Start | Finish | Predecessors | Complete | Total float |
| --- | --- | --- | --- | --- | --- | --- | --- | --- |
| CO-R18.S16-SD-340 |  | Backfilling Works for Manholes of Storm Drainage Network-[Road 18]-[SW-16] | 7d | 2025-06-11 A | 2025-06-14 A | CO-R18.S16-SD-320 | 100% |  |
| CO-R18.S16-SD-330 |  | Testing Works for Manholes of Storm Drainage Network-[Road 18]-[SW-16] | 1d | 2026-06-04 A | 2026-07-13 A | CO-R18.S16-SD-320 | 100% |  |
|  | CB | **Catch Basin Sections** |  | 2025-06-10 | 2026-07-13 |  |  |  |
| CO-R18.S16-SD-260 |  | Trench Excavation and Bedding Works for Catch Basins of Storm Drainage Network-[Road 18]-[SW-16] | 6d | 2025-06-10 A | 2025-06-12 A | CO-R18.S16-EW-130, CO-R18.S16-SD-340 | 100% |  |
| CO-R18.S16-SD-290 |  | Trench Backfilling and Compaction Works for Catch Basins of Storm Drainage Network-[Road 18]-[SW-16] | 7d | 2025-06-15 A | 2025-06-23 A | CO-R18.S16-SD-270 | 100% |  |
| CO-R18.S16-SD-270 |  | Installation and Pipes Laying Connection Works for Catch Basins of Storm Drainage Network-[Road 18]-[SW-16] | 7d | 2025-06-17 A | 2025-06-22 A | CO-R18.S16-SD-260, CO-R18.S15-SD-270 | 100% |  |
| CO-R18.S16-SD-280 |  | Testing Works for Catch Basins of Storm Drainage Network-[Road 18]-[SW-16] | 4d | 2026-06-04 A | 2026-07-13 A | CO-R18.S16-SD-270, CO-R18.S16-SD-240 | 100% |  |
|  | SL | **Street Lighting Network** |  | 2025-07-08 | 2026-11-02 |  |  |  |
|  | LP | **Lighting Poles Works** |  | 2025-07-08 | 2026-10-27 |  |  |  |
| CO-R18.S16-SL-100 |  | Foundation Excavation Works for Lighting Poles of Street Lighting Network-[Road 18]-[SW-16] | 12d | 2025-07-08 A | 2025-07-10 A | CO-R18.S15-IR-140 SS+3d, CO-R18.S15-IR-170, CO-R18.S16-EW-120, CO-R18.S16-EW-130, ENG-MS-SL-A-110, ENG-SH-SL-A-110, PRO-SL-1DL-110 | 100% |  |
| CO-R18.S16-SL-110 |  | Installation Works for Lighting Poles Foundation of Street Lighting Network-[Road 18]-[SW-16] | 12d | 2025-07-11 A | 2025-07-13 A | CO-R18.S16-SL-100, PRO-R18-SL-DL-190 FF+3d | 100% |  |
| CO-R18.S16-SL-120 |  | Installation Works for Lighting Poles of Street Lighting Network-[Road 18]-[SW-16] | 17.5d | 2025-09-10 A | 2025-09-10 A | CO-R18.S16-SL-110, CO-R18.S16-SL-160, PRO-R18-SL-DL-200 FF+3d | 100% |  |
| CO-R18.S16-SL-210 |  | Backfilling Works for Lighting Poles of Street Lighting Network-[Road 18]-[SW-16] | 12d | 2025-09-10 A | 2025-09-10 A | CO-R18.S16-SL-120 SS, CO-R18.S16-SL-120 FF | 100% |  |
| CO-R18.S16-SL-200 |  | Testing Works for Lighting Poles of Street Lighting Network-[Road 18]-[SW-16] | 5d | 2026-10-06 | 2026-10-11 | CO-R18.S16-SL-210, CO-R18.S16-SL-120 |  | -8.25d |
| CO-R18.S16-SL-130 |  | Installation Works for Lighting Fixtures With Drop Wire of Street Lighting Network-[Road 18]-[SW-16] | 18d | 2026-10-07 | 2026-10-27 | CO-R18.S16-SL-120 SS+5d, CO-R18.S16-SL-120 FF+5d, CO-R18.S16-SL-200 FF, PRO-R18-SL-DL-220 FF+3d |  | -22.25d |
|  | CW | **Cabling Works** |  | 2025-07-14 | 2025-07-21 |  |  |  |
| CO-R18.S16-SL-140 |  | Trench Excavation and Bedding Works for Street Lighting Network-[Road 18]-[SW-16] | 10d | 2025-07-14 A | 2025-07-16 A | CO-R18.S16-SL-110 | 100% |  |
| CO-R18.S16-SL-150 |  | Cable Laying Works for Street Lighting Network-[Road 18]-[SW-16] | 10d | 2025-07-17 A | 2025-07-18 A | CO-R18.S16-SL-140, PRO-R18-SL-DL-180 FF+3d | 100% |  |
| CO-R18.S16-SL-160 |  | Trench Backfilling and Compaction Works for Street Lighting Network-[Road 18]-[SW-16] | 10d | 2025-07-19 A | 2025-07-21 A | CO-R18.S16-SL-150 | 100% |  |
|  | DPB | **Distrubution Panel Boards** |  | 2026-10-06 | 2026-11-02 |  |  |  |
| CO-R18.S16-SL-170 |  | Foundation Excavation Works For Panel Boards of Street Lighting Network-[Road 18]-[SW-16] | 18d | 2026-10-06 | 2026-10-26 | CO-R18.S16-EW-130, ENG-MS-SL-A-110, ENG-SH-SL-A-110 |  | -29d |
| CO-R18.S16-SL-180 |  | Installation Works for Panel Board Concrete Foundations of Street Lighting Network-[Road 18]-[SW-16] | 18d | 2026-10-10 | 2026-10-29 | CO-R18.S16-SL-170 SS+3d, CO-R18.S16-SL-170 FF+3d |  | -29d |
| CO-R18.S16-SL-220 |  | A wall of concrete blocks to install the KWH meter of Street Lighting Network-[Road 18]-[SW-16] | 18d | 2026-10-10 | 2026-10-29 | CO-R18.S16-SL-180 SS, CO-R18.S16-SL-180 FF |  | -26d |
| CO-R18.S16-SL-190 |  | Installation Works for Lighting Panel Boards of Street Lighting Network-[Road 18]-[SW-16] | 18d | 2026-10-13 | 2026-11-02 | CO-R18.S16-SL-180 SS+3d, CO-R18.S16-SL-180 FF+3d |  | -29d |
|  | PW | **Potable Water Network** |  | 2025-06-19 | 2026-10-26 |  |  |  |
|  | ML | **Main Line Sections** |  | 2025-06-19 | 2025-07-07 |  |  |  |
| CO-R18.S16-PW-230 |  | Trench Excavation and Bedding Works for Main Lines of Potable Water Network-[Road 18]-[SW-16] | 6d | 2025-06-19 A | 2025-07-07 A | CO-R18.S16-EW-130, CO-R18.S16-EW-120, CO-R18.S16-SW-240, CO-R18.S16-SD-250 | 100% |  |
| CO-R18.S16-PW-240 |  | Pipes Laying and accessories for Main Lines of Potable Water Network-[Road 18]-[SW-16] | 5.75d | 2025-06-21 A | 2025-07-07 A | CO-R18.S16-PW-230, PRO-R18-PW-DL-140 FF+3d | 100% |  |
| CO-R18.S16-PW-280 |  | Trench Backfilling and Compaction Works for Main Lines of Potable Water Network-[Road 18]-[SW-16] | 6d | 2025-06-22 A | 2025-07-07 A | CO-R18.S16-PW-240 SS+3d, CO-R18.S16-PW-240 FF+3d | 100% |  |
|  | VC | **Valve Chamber** |  | 2026-07-07 | 2026-07-13 |  |  |  |
| CO-R18.S16-PW-330 |  | Installation Works for Main Line Valves and Valve Chambers of Potable Water Network-[Road 18]-[SW-16] | 6d | 2026-07-07 A | 2026-07-13 A | CO-R18.S16-PW-280, PRO-R18-PW-DL-150 | 100% |  |
|  | FH | **Fire Hydrant** |  | 2026-10-06 | 2026-10-26 |  |  |  |
| CO-R18.S16-PW-250 |  | Excavation Works for Fire Hydrants of Potable Water Network-[Road 18]-[SW-16] | 6d | 2026-10-06 | 2026-10-12 | CO-R18.S16-PW-240 SS+3d, CO-R18.S16-PW-240 FF+3d, CO-R18.S16-EW-130, CO-R18.S16-SW-240 SS+3d, CO-R18.S16-SW-240 FF+3d |  | 8d |
| CO-R18.S16-PW-260 |  | Installation Works for Fire Hydrant of Potable Water Network-[Road 18]-[SW-16] | 6d | 2026-10-13 | 2026-10-19 | CO-R18.S16-PW-250, PRO-R18-PW-DL-160 FF+3d |  | 8d |
| CO-R18.S16-PW-270 |  | Trench Backfilling and Compaction Works for Fire Hydrants of Potable Water Network-[Road 18]-[SW-16] | 6d | 2026-10-20 | 2026-10-26 | CO-R18.S16-PW-260 |  | 8d |
|  | TE | **Telecom Network** |  | 2025-07-11 | 2025-07-31 |  |  |  |
|  | PD | **Ducts Works** |  | 2025-07-11 | 2025-07-21 |  |  |  |
| CO-R18.S16-TE-170 |  | Trench Excavation and Bedding Works for Ducts of Telecom Network-[Road 18]-[SW-16] | 7d | 2025-07-11 A | 2025-07-13 A | CO-R18.S16-EW-130, CO-R18.S15-TE-170 | 100% |  |
| CO-R18.S16-TE-180 |  | Pipes Laying Works for Ducts of Telecom Network-[Road 18]-[SW-16] | 7d | 2025-07-14 A | 2025-07-17 A | CO-R18.S16-TE-170 | 100% |  |
| CO-R18.S16-TE-230 |  | Pouring Plain Concrete Above Ducts of Telecom Network-[Road 18]-[SW-16] | 7d | 2025-07-18 A | 2025-07-18 A | CO-R18.S16-TE-180 | 100% |  |
| CO-R18.S16-TE-190 |  | Trench Backfilling and Compaction Works for Ducts of Telecom Network-[Road 18]-[SW-16] | 7d | 2025-07-19 A | 2025-07-21 A | CO-R18.S16-TE-230 | 100% |  |
|  | MH | **Manholes Works** |  | 2025-07-23 | 2025-07-31 |  |  |  |
| CO-R18.S16-TE-200 |  | Excavation Works for Manholes of Telecom Network-[Road 18]-[SW-16] | 7d | 2025-07-23 A | 2025-07-24 A | CO-R18.S15-TE-200, CO-R18.S16-TE-170 | 100% |  |
| CO-R18.S16-TE-210 |  | Installation Works for Manholes of Telecom Network-[Road 18]-[SW-16] | 7d | 2025-07-26 A | 2025-07-28 A | CO-R18.S16-TE-200 | 100% |  |
| CO-R18.S16-TE-220 |  | Backfilling Works for Manholes of Telecom Network-[Road 18]-[SW-16] | 7d | 2025-07-29 A | 2025-07-31 A | CO-R18.S16-TE-210 | 100% |  |
|  | RD | **Road Works** |  | 2025-07-10 | 2026-09-06 |  |  |  |
|  | RD | **Pre-Bituminous Construction** |  | 2025-07-10 | 2025-08-31 |  |  |  |
| CO-R18.S16-RD-P-160 |  | Capping and Subgrade Layer for Road Works-[Road 18]-[SW-16] | 18d | 2025-07-10 A | 2025-07-21 A | CO-R18.S16-SD-250, CO-R18.S16-SW-240, CO-R18.S16-PW-280 | 100% |  |
| CO-R18.S16-RD-P-170 |  | Aggregate Base Course Layer for Road Works-[Road 18]-[SW-16] | 18d | 2025-08-27 A | 2025-08-31 A | CO-R18.S16-RD-P-160 SS+3d, CO-R18.S16-RD-P-160 FF+3d, CO-R18.S16-SD-290 SS+3d, CO-R18.S16-SD-290 FF+3d | 100% |  |
|  | LS | **Pavement Works** |  | 2026-08-25 | 2026-09-06 |  |  |  |
| CO-R18.S16-RD-P-140 |  | Fixing of Curbstone for Sidewalks Pavement-[Road 18]-[SW-16] | 18d | 2026-08-25 A | 2026-08-31 A | CO-R18.S16-RD-P-170 SS+3d, CO-R18.S16-RD-P-170 FF+3d | 100% |  |
| CO-R18.S16-RD-P-150 |  | Fixing of Interlock Tiles for Sidewalks Pavement-[Road 18]-[SW-16] | 18d | 2026-08-25 A | 2026-09-06 A | CO-R18.S16-RD-P-140 SS+3d, CO-R18.S16-RD-P-140 FF+3d | 100% |  |
|  | 3 | **Finishes for Infrastructure Networks** |  | 2025-09-20 | 2027-10-25 |  |  |  |
|  | 1 | **Phase 2 Block "J"** |  | 2025-09-20 | 2027-10-25 |  |  |  |
|  | 2 | **Road 09 Local 2 ( 2278 LM )** |  | 2026-06-01 | 2027-10-06 |  |  |  |
|  | 10 | **Sewage Network** |  | 2026-06-01 | 2027-05-31 |  |  |  |
|  | TF | **Testing and Finishes** |  | 2026-06-01 | 2027-05-31 |  |  |  |
| CO-R09-SW-TF-100 |  | Final Testing For Main Line of Sewage Network-[Road 09] | 12d | 2026-06-01 A | 2027-05-08 | CO-R09.S01-SW-130, CO-R09.S01-RD-P-100 SS+3d, CO-R09.S01-RD-P-100 FF+3d, CO-R09.S02-RD-P-100 SS+3d, CO-R09.S02-RD-P-100 FF+3d | 95% | -235d |
| CO-R09-SW-TF-110 |  | Install Manhole Cover Works for External Finishes of Sewage Network-[Road 09] | 12d | 2027-05-09 | 2027-05-27 | PRO-SW-1DL-120, PRO-R09-SW-DL-120 FF+3d, CO-R09-SW-TF-100, CO-R09.S01-RD-P-100, CO-R09.S01-SW-120, ENG-SH-SW-ML-A-110, ENG-SH-SW-ML-A-110 FF, ENG-MS-SW-ML-A-110, ENG-MS-SW-ML-A-110 FF |  | -221d |
| CO-R09-SW-TF-120 |  | Main Manhole Internal Finishes (Benching + Insulation) of Sewage Network-[Road 09] | 12d | 2027-05-12 | 2027-05-31 | CO-R09-SW-TF-110 SS+3d, CO-R09-SW-TF-110 FF+3d, PRO-SW-1DL-140, PRO-R09-SW-DL-130 FF+3d |  | -208d |
|  | 11 | **Storm Drainage Network** |  | 2026-06-17 | 2027-06-15 |  |  |  |
|  | TF | **Testing and Finishes** |  | 2026-06-17 | 2027-06-15 |  |  |  |
| CO-R09-SD-TF-100 |  | Testing Work for Pipes of Storm Drainage Network-[Road 09] | 12d | 2026-06-17 A | 2027-05-09 | CO-R09.S01-SD-130 SS+3d, PRO-SD-1DL-140, PRO-R09-SD-DL-140 FF+3d, CO-R09.S01-RD-P-100 SS+3d, CO-R09.S01-RD-P-100 FF+3d, CO-R09.S01-SD-130 FF+3d, CO-R09.S01-SD-120 SS, CO-R09.S01-SD-120, ENG-SH-SD-ML-A-110, ENG-MS-SD-ML-A-110, CO-R09.S02-RD-P-100 SS+3d, CO-R09.S02-RD-P-100 FF+3d, CO-R10.S03-ES-SD-210 | 75% | -235d |
| CO-R09-SD-TF-110 |  | Install Catch Basin Cover Works for External Finishes of Storm Drainage Network-[Road 09] | 16d | 2026-06-20 A | 2027-05-09 | CO-R09.S01-SD-170 SS+3d, PRO-SD-1DL-150, PRO-R09-SD-DL-150 FF+3d, CO-R09.S01-RD-P-100 FF+3d, CO-R09.S01-RD-P-100, CO-R09.S01-SD-170 FF+3d | 20% | -210d |
| CO-R09-SD-TF-120 |  | Main Manhole Internal Finishes (Benching + Insulation ) for Storm Drainage Network-[Road 09] | 16d | 2026-06-21 A | 2027-06-15 | CO-R09-SD-TF-100 SS+3d, CO-R09-SD-TF-100 FF+3d, PRO-R09-SD-DL-160 FF+3d, PRO-SD-1DL-160, CO-R09-SD-TF-100, CO-R09-SD-TF-110 SS, CO-R09-SD-TF-110, CO-R09-SD-TF-110 FF, CO-R09-SW-TF-110 SS, CO-R09-SW-TF-110, CO-R09-SW-TF-110 FF, ENG-SH-RD-A-100, ENG-SH-RD-A-100 FF, ENG-MS-RD-A-10, ENG-MS-RD-A-10 FF, PRO-R09-SD-DL-100 | 85% | -221d |
| CO-R09-SD-TF-130 |  | Catch Basin Internal Finishes (Benching + Insulation ) for Storm Drainage Network-[Road 09] | 16d | 2026-06-22 A | 2027-06-15 | CO-R09-SD-TF-110 SS+3d, CO-R09-SD-TF-110 FF+3d, PRO-R09-SD-DL-160 FF+3d, PRO-SD-1DL-160, CO-R09-SD-TF-100 SS, CO-R09-SD-TF-100, CO-R09-SD-TF-100 FF, CO-R09-SD-TF-110, CO-R09-SW-TF-110 SS, CO-R09-SW-TF-110, CO-R09-SW-TF-110 FF, ENG-SH-RD-A-100, ENG-SH-RD-A-100 FF, ENG-MS-RD-A-10, ENG-MS-RD-A-10 FF | 20% | -162d |
|  | 9 | **Potable Water Network** |  | 2027-05-09 | 2027-06-21 |  |  |  |
|  | TF | **Testing and Finishes** |  | 2027-05-09 | 2027-06-21 |  |  |  |
| CO-R09-PW-TF-110 |  | Testing Work for Main Line of Potable Water Network-[Road 09] | 9d | 2027-05-09 | 2027-05-24 | CO-R09.S02-PW-130, CO-R09-SL-TF-100, CO-R09-SW-TF-100, CO-R09-SD-TF-100 |  | -235d |
| CO-R09-PW-TF-100 |  | Final Finishes works and Covers for Valves and Valve Chambers of Potable Water Network-[Road 09] | 12d | 2027-05-25 | 2027-06-07 | CO-R09.S01-RD-P-100 FS+3d, PRO-PW-1DL-130, PRO-R09-PW-DL-130 FF+3d, CO-R09.S02-PW-130, CO-R09-PW-TF-110 |  | -226d |

| ID | WBS | Task | Duration | Start | Finish | Predecessors | Complete | Total float |
| --- | --- | --- | --- | --- | --- | --- | --- | --- |
| CO-R09-PW-TF-120 |  | Fire Hydrant Finishies (S.Box + Safety + Marker Post ) of Potable Water Network-[Road 09] | 12d | 2027-06-08 | 2027-06-21 | CO-R09-PW-TF-100, PRO-PW-1DL-130, PRO-R09-PW-DL-130 FF+3d, CO-R09.S02-PW-160 |  | -226d |
|  | 13 | **Irrigation Network** |  | 2027-05-05 | 2027-05-29 |  |  |  |
|  | TF | **Testing and Finishes** |  | 2027-05-05 | 2027-05-29 |  |  |  |
| CO-R09-IR-TF-100 |  | Final Testing (pressure tests) of Irrigation Network-[Road 09] | 16d | 2027-05-05 | 2027-05-29 | CO-R09.S01-IR-140, CO-R09.S01-RD-P-100, CO-R09.S02-RD-P-100, CO-R18.S15-IR-160 |  | -206d |
|  | 12 | **Street Lighting Network** |  | 2027-04-03 | 2027-07-17 |  |  |  |
|  | TR | **Termination and Testing Works** |  | 2027-04-03 | 2027-07-14 |  |  |  |
| CO-R09-SL-TF-100 |  | Termination Works For Lighting Poles Cables of Street Lighting Network-[Road 09] | 12d | 2027-04-03 | 2027-04-15 | CO-R09.S01-SL-130, PRO-SL-1DL-130, PRO-R09-SL-DL-130 FF+3d, CO-R09.S02-SL-130 |  | -247.5d |
| CO-R09-SL-TF-110 |  | Termination Works For Panel Board Cables of Street Lighting Network-[Road 09] | 10.5d | 2027-06-21 | 2027-07-03 | CO-R09.S01-SL-190, PRO-SL-1DL-170, PRO-R09-SL-DL-170 FF+3d, CO-R09.S01-SL-160, CO-R09.S01-SL-220 |  | -247.5d |
| CO-R09-SL-TF-380 |  | Testing Works For Panel Board Cables of Street Lighting Network-[Road 09] | 10d | 2027-07-03 | 2027-07-14 | CO-R09-SL-TF-110 |  | -225.5d |
|  | ES | **Earthing System Works** |  | 2027-04-17 | 2027-07-17 |  |  |  |
| CO-R09-SL-ES-100 |  | Install Earthing System Works for Lighting Poles of Street Lighting Network-[Road 09] | 12d | 2027-04-17 | 2027-04-29 | PRO-SL-1DL-150, PRO-R09-SL-DL-150 FF+3d, CO-R09-SL-TF-100 |  | -247.5d |
| CO-R09-SL-ES-110 |  | Install Earthing System Works for Lighting Panel Boards of Street Lighting Network-[Road 09] | 12d | 2027-07-03 | 2027-07-17 | PRO-SL-1DL-150, PRO-R09-SL-DL-150 FF+3d, CO-R09-SL-TF-110 |  | -247.5d |
|  | 14 | **Medium Voltage Network** |  | 2027-06-01 | 2027-06-19 |  |  |  |
|  | TT | **Termination and Testing Works** |  | 2027-06-01 | 2027-06-19 |  |  |  |
| CO-R09-MV-TF-100 |  | Termination Works of Medium Voltage Network-[Road 09] | 16d | 2027-06-01 | 2027-06-19 | PRO-MV-1DL-120, CO-R09.S01-MV-120, PRO-R09-MV-DL-110 FF+3d, CO-R09.S01-TE-160 |  | -224d |
|  | 1 | **Road Works** |  | 2027-07-31 | 2027-10-06 |  |  |  |
|  | 1 | **Bituminous Construction** |  | 2027-07-31 | 2027-08-31 |  |  |  |
| CO-R09-S1-RD-F-100 |  | Application of Prime Coat Layer for Road Works - S.W 01-[Road 09] | 12d | 2027-07-31 | 2027-08-14 | PRO-RD-1DL-120, CO-R09.S01-RD-P-130 |  | -247.5d |
| CO-R09-S1-RD-F-120 |  | Bituminous Base & Wearing Courses Layers for Road Works- S.W 01-[Road 09] | 12d | 2027-08-03 | 2027-08-17 | PRO-RD-1DL-130, CO-R09-S1-RD-F-100 SS+3d, CO-R09-S1-RD-F-100 FF+3d |  | -247.5d |
| CO-R09-S2-RD-F-110 |  | Application of Prime Coat Layer for Road Works- S.W 02-[Road 09] | 18d | 2027-08-07 | 2027-08-28 | PRO-R09-RD-DL-160 FF+3d, CO-R09.S02-RD-P-130, CO-R09-S1-RD-F-100 SS |  | -246.5d |
| CO-R09-S2-RD-F-130 |  | Bituminous Base & Wearing Courses Layers for Road Works- S.W 02-[Road 09] | 18d | 2027-08-10 | 2027-08-31 | CO-R09-S2-RD-F-110 SS+3d, CO-R09-S2-RD-F-110 FF+3d, PRO-R09-RD-DL-170 FF+3d, CO-R09-S1-RD-F-120 SS |  | -246.5d |
|  | TS | **Traffic Signs Boards and Roads Marking** |  | 2027-08-17 | 2027-10-06 |  |  |  |
| CO-R09-S1-RD-F-140 |  | Application of Road Marking Works For Road Works- S.W 01-[Road 09] | 12d | 2027-08-17 | 2027-08-31 | PRO-RD-1DL-170, ENG-SH-MRK-A-110, CO-R09-S1-RD-F-120, ENG-SH-RD-A-100, ENG-MS-MRK-A-10, ENG-MS-RD-A-10 |  | -247.5d |
| CO-R09-S1-RD-F-150 |  | Installation Works of Traffic Signs Boards For Road Works- S.W 01-[Road 09] | 12d | 2027-08-31 | 2027-09-14 | PRO-RD-1DL-160, ENG-SH-TSB-A-100, CO-R09.S01-RD-P-130, ENG-SH-RD-A-100, ENG-MS-TSB-A-10, ENG-MS-RD-A-10, PRO-R09-RD-DL-140 SS+6d, CO-R09-S1-RD-F-140 |  | -247.5d |
| CO-R09-S2-RD-F-160 |  | Application of Road Marking Works For Road Works- S.W 02-[Road 09] | 15d | 2027-08-31 | 2027-09-18 | PRO-R09-RD-DL-150 FF+3d, CO-R09-S2-RD-F-130 |  | -246.5d |
| CO-R09-S2-RD-F-170 |  | Installation Works of Traffic Signs Boards For Road Works- S.W 02-[Road 09] | 15d | 2027-09-18 | 2027-10-06 | PRO-R09-RD-DL-140 FF+6d, CO-R09.S02-RD-P-130, CO-R09-S2-RD-F-160 |  | -246.5d |
|  | 4 | **Road 10 Local 2 ( 2352 LM )** |  | 2026-06-15 | 2027-07-20 |  |  |  |
|  | 10 | **Sewage Network** |  | 2027-04-19 | 2027-05-25 |  |  |  |
|  | TF | **Testing and Finishes** |  | 2027-04-19 | 2027-05-25 |  |  |  |
| CO-R10-SW-TF-100 |  | Final Testing For Main Line of Sewage Network-[Road 10] | 12d | 2027-04-19 | 2027-05-02 | CO-R10.S03-ES-RD-100 SS+3d, CO-R10.S03-ES-RD-100 FF+3d, CO-R10.S04-ES-RD-100 SS+3d, CO-R10.S04-ES-RD-100 FF+3d, CO-R09.S02-SW-130, CO-R10.S03-WE-RD-100 SS+3d, CO-R10.S03-WE-RD-100 FF+3d, CO-R10.S04-WE-RD-100 SS+3d, CO-R10.S04-WE-RD-100 FF+3d, CO-R10.S04-ES-SW-210, CO-R10.S04-WE-SW-210 |  | -221d |
| CO-R10-SW-TF-110 |  | Install Manhole Cover Works for External Finishes of Sewage Network-[Road 10] | 12d | 2027-05-03 | 2027-05-22 | PRO-R10-SW-DL-120 FF+3d, CO-R10-SW-TF-100, CO-R10.S03-ES-RD-100 SS+3d, CO-R10.S03-ES-RD-100 FF+3d, ENG-SH-SW-ML-A-110, ENG-SH-SW-ML-A-110 FF, ENG-MS-SW-ML-A-110, ENG-MS-SW-ML-A-110 FF, CO-R10.S04-ES-RD-100 SS+3d, CO-R10.S04-ES-RD-100 FS+3d, CO-R10.S03-WE-RD-100 SS+3d, CO-R10.S03-WE-RD-100 FF+3d, CO-R10.S04-WE-RD-100 SS+3d, CO-R10.S04-WE-RD-100 FS+3d |  | -221d |
| CO-R10-SW-TF-130 |  | Main Manhole Internal Finishes (Benching + Insulation) of Sewage Network-[Road 10] | 12d | 2027-05-06 | 2027-05-25 | CO-R10-SW-TF-110 SS+3d, CO-R10-SW-TF-110 FF+3d, PRO-R10-SW-DL-130 FF+3d |  | -221d |
|  | 11 | **Storm Drainage Network** |  | 2026-06-15 | 2027-06-09 |  |  |  |
|  | TF | **Testing and Finishes** |  | 2026-06-15 | 2027-06-09 |  |  |  |
| CO-R10-SD-TF-100 |  | Testing Work for Pipes of Storm Drainage Network-[Road 10] | 16d | 2026-06-15 A | 2026-08-08 A | CO-R10.S03-ES-SD-130 SS+3d, CO-R10.S03-ES-RD-100 SS+3d, CO-R10.S03-ES-RD-100 FF+3d, CO-R10.S03-ES-SD-130 FF+3d, CO-R10.S03-ES-SD-120 SS, CO-R10.S03-ES-SD-120, ENG-SH-SD-ML-A-110, ENG-MS-SD-ML-A-110, PRO-R10-SD-DL-140 FF+3d, CO-R10.S04-ES-RD-100 SS+3d, CO-R10.S04-ES-RD-100 FF+3d, CO-R10.S03-WE-SD-130 SS+3d, CO-R10.S03-WE-RD-100 SS+3d, CO-R10.S03-WE-RD-100 FF+3d, CO-R10.S03-WE-SD-130 FF+3d, CO-R10.S03-WE-SD-120 SS, CO-R10.S03-WE-SD-120, CO-R10.S04-WE-RD-100 SS+3d, CO-R10.S04-WE-RD-100 FF+3d, CO-R10.S03-ES-SD-160, CO-R10.S04-ES-SD-210, CO-R10.S04-ES-SD-160, CO-R10.S03-WE-SD-210 | 100% |  |
| CO-R10-SD-TF-110 |  | Install Catch Basin Cover Works for External Finishes of Storm Drainage Network-[Road 10] | 16d | 2026-06-17 A | 2027-05-10 | CO-R10.S03-ES-SD-170 SS+3d, PRO-R10-SD-DL-150 FF+3d, CO-R10.S03-ES-RD-100 SS+3d, CO-R10.S03-ES-RD-100 FF+3d, CO-R10.S03-ES-RD-100, CO-R10.S03-ES-SD-170 FF+3d, CO-R10.S04-ES-RD-100 SS+3d, CO-R10.S04-ES-RD-100 FF+3d, CO-R10.S03-WE-SD-170 SS+3d, CO-R10.S03-WE-RD-100 SS+3d, CO-R10.S03-WE-RD-100 FF+3d, CO-R10.S03-WE-RD-100, CO-R10.S03-WE-SD-170 FF+3d, CO-R10.S04-WE-RD-100 SS+3d, CO-R10.S04-WE-RD-100 FF+3d | 20% | -209d |
| CO-R10-SD-TF-120 |  | Main Manhole Internal Finishes (Benching + Insulation ) for Storm Drainage Network-[Road 10] | 12d | 2026-06-18 A | 2027-06-05 | CO-R10-SD-TF-100 SS+3d, CO-R10-SD-TF-100 FF+3d, PRO-R10-SD-DL-160 FF+3d, CO-R10-SD-TF-100, CO-R10-SD-TF-110 SS, CO-R10-SD-TF-110, CO-R10-SD-TF-110 FF, CO-R10-SW-TF-110 SS, CO-R10-SW-TF-110, CO-R10-SW-TF-110 FF, ENG-SH-RD-A-100, ENG-SH-RD-A-100 FF, ENG-MS-RD-A-10, ENG-MS-RD-A-10 FF, PRO-R10-SD-DL-100 FF+3d | 85% | -214d |
| CO-R10-SD-TF-130 |  | Catch Basin Internal Finishes (Benching + Insulation ) for Storm Drainage Network-[Road 10] | 16d | 2026-06-22 A | 2027-06-09 | CO-R10-SD-TF-110 SS+3d, CO-R10-SD-TF-110 FF+3d, PRO-R10-SD-DL-160 FF+3d, CO-R10-SD-TF-100 SS, CO-R10-SD-TF-100, CO-R10-SD-TF-100 FF, CO-R10-SD-TF-110, CO-R10-SW-TF-110 SS, CO-R10-SW-TF-110, CO-R10-SW-TF-110 FF, ENG-SH-RD-A-100, ENG-SH-RD-A-100 FF, ENG-MS-RD-A-10, ENG-MS-RD-A-10 FF | 35% | -201d |
|  | 9 | **Potable Water Network** |  | 2027-04-26 | 2027-06-07 |  |  |  |
|  | TF | **Testing and Finishes** |  | 2027-04-26 | 2027-06-07 |  |  |  |
| CO-R10-PW-TF-100 |  | Final Finishes works and Covers for Valves and Valve Chambers of Potable Water Network-[Road 10] | 12d | 2027-04-26 | 2027-05-09 | CO-R10.S03-ES-RD-100 FS+3d, PRO-R10-PW-DL-130 FF+3d, CO-R10.S03-WE-RD-100 FS+3d |  | -215d |
| CO-R10-PW-TF-120 |  | Fire Hydrant Finishies (S.Box + Safety + Marker Post ) of Potable Water Network-[Road 10] | 12d | 2027-05-10 | 2027-05-29 | CO-R10.S03-ES-PW-160, CO-R10-PW-TF-100, PRO-R10-PW-DL-130 FF+3d, CO-R10.S03-WE-PW-160 |  | -215d |
| CO-R10-PW-TF-110 |  | Testing Work for Main Line of Potable Water Network-[Road 10] | 12d | 2027-05-25 | 2027-06-07 | CO-R10.S03-ES-PW-130, CO-R09-PW-TF-110, CO-R10.S03-WE-PW-130, CO-R10.S03-ES-PW-220, CO-R10.S03-WE-PW-220 |  | -235d |
|  | 13 | **Irrigation Network** |  | 2027-04-29 | 2027-05-10 |  |  |  |
|  | TF | **Testing and Finishes** |  | 2027-04-29 | 2027-05-10 |  |  |  |
| CO-R10-IR-TF-120 |  | Final Testing (pressure tests) of Irrigation Network-[Road 10] | 10d | 2027-04-29 | 2027-05-10 | CO-R10.S03-ES-IR-130, CO-R10.S03-ES-RD-100, CO-R10.S04-ES-RD-100, CO-R10.S03-WE-IR-130, CO-R10.S03-WE-RD-100, CO-R10.S04-WE-RD-100, CO-R10.S03-ES-IR-120, CO-R10.S03-WE-IR-120 |  | -212d |
|  | 12 | **Street Lighting Network** |  | 2027-01-02 | 2027-04-08 |  |  |  |
|  | TR | **Termination and Testing Works** |  | 2027-01-02 | 2027-04-08 |  |  |  |
| CO-R10-SL-TF-140 |  | Termination Works For Lighting Poles Cables of Street Lighting Network-[Road 10] | 12d | 2027-01-02 | 2027-01-14 | CO-R10.S03-ES-SL-160, CO-R10.S03-ES-SL-130, PRO-R10-SL-DL-130 FF+3d, CO-R15.S10-SL-130, CO-R10.S03-WE-SL-160, CO-R10.S03-WE-SL-130 |  | -187d |
| CO-R10-SL-TF-150 |  | Termination Works For Panel Board Cables of Street Lighting Network-[Road 10] | 12d | 2027-03-24 | 2027-04-06 | CO-R10.S03-ES-SL-190, PRO-R10-SL-DL-170 FF+3d, CO-R10.S03-ES-SL-160, CO-R10.S03-ES-SL-220, CO-R10.S04-ES-SL-220, CO-R10.S03-WE-SL-190, CO-R10.S03-WE-SL-160, CO-R10.S03-WE-SL-220, CO-R10.S04-WE-SL-220 |  | -208d |
| CO-R10-SL-TF-380 |  | Testing Works For Panel Board Cables of Street Lighting Network-[Road 10] | 2d | 2027-04-07 | 2027-04-08 | CO-R10-SL-TF-150 |  | -188d |
|  | ES | **Earthing System Works** |  | 2027-01-16 | 2027-02-15 |  |  |  |
| CO-R10-SL-ES-140 |  | Install Earthing System Works for Lighting Poles of Street Lighting Network-[Road 10] | 12d | 2027-01-16 | 2027-01-28 | PRO-R10-SL-DL-150 FF+3d, CO-R10.S03-ES-SL-100 SS+5d, CO-R10.S03-ES-SL-100 FF+5d, CO-R10-SL-TF-140, CO-R10-SL-TF-140 SS+3d, CO-R10.S03-WE-SL-100 SS+5d, CO-R10.S03-WE-SL-100 FF+5d |  | -187d |
| CO-R10-SL-ES-150 |  | Install Earthing System Works for Lighting Panel Boards of Street Lighting Network-[Road 10] | 12d | 2027-02-02 | 2027-02-15 | CO-R10.S03-ES-SL-170 SS+3d, CO-R10.S03-ES-SL-170 FF+3d, PRO-R10-SL-DL-150 FF+3d, CO-R10.S03-WE-SL-170 SS+3d, CO-R10.S03-WE-SL-170 FF+3d |  | -187d |
|  | 14 | **Medium Voltage Network** |  | 2027-04-19 | 2027-04-26 |  |  |  |
|  | TT | **Termination and Testing Works** |  | 2027-04-19 | 2027-04-26 |  |  |  |
| CO-R10-MV-TF-140 |  | Termination Works of Medium Voltage Network-[Road 10] | 7d | 2027-04-19 | 2027-04-26 | CO-R10.S03-ES-MV-120, PRO-R10-MV-DL-110 FF+3d, CO-R10.S03-ES-MV-190, CO-R10.S03-WE-MV-120, CO-R10.S03-WE-MV-190 |  | -185d |
|  | 1 | **Road Works** |  | 2027-06-20 | 2027-07-20 |  |  |  |
|  | 1 | **Bituminous Construction** |  | 2027-06-20 | 2027-07-06 |  |  |  |
| CO-R10-S03-RD-F-110 |  | Application of Prime Coat Layer for Road Works- S.W 05-[Road 10] | 10d | 2027-06-20 | 2027-06-30 | CO-R10.S03-ES-RD-130, CO-SD-PO-K1-130, CO-R10.S03-WE-RD-130 |  | -216d |
| CO-R10-S04-RD-F-140 |  | Application of Prime Coat Layer for Road Works- S.W 06-[Road 10] | 10d | 2027-06-22 | 2027-07-03 | PRO-R10-RD-DL-160 FF+3d, CO-R10.S04-ES-RD-130, CO-R10-S03-RD-F-110 SS, CO-SD-PO-K1-130, CO-R10.S04-WE-RD-130 |  | -216d |
| CO-R10-S03-RD-F-120 |  | Bituminous Base & Wearing Courses Layers for Road Works- S.W 05-[Road 10] | 10d | 2027-06-23 | 2027-07-04 | CO-R10-S03-RD-F-110 SS+3d, CO-R10-S03-RD-F-110 FF+3d |  | -216d |
| CO-R10-S04-RD-F-150 |  | Bituminous Base & Wearing Courses Layers for Road Works- S.W 06-[Road 10] | 10d | 2027-06-26 | 2027-07-06 | CO-R10-S04-RD-F-140 SS+3d, CO-R10-S04-RD-F-140 FF+3d, PRO-R10-RD-DL-170 FF+3d, CO-R10-S03-RD-F-120 SS |  | -216d |
|  | TS | **Traffic Signs Boards and Roads Marking** |  | 2027-07-05 | 2027-07-20 |  |  |  |
| CO-R10-S03-RD-F-100 |  | Installation Works of Traffic Signs Boards For Road Works- S.W 05-[Road 10] | 12d | 2027-07-05 | 2027-07-18 | CO-R10.S03-ES-RD-130, CO-R10-S03-RD-F-160 FF, CO-R10.S03-WE-RD-130 |  | -216d |
| CO-R10-S03-RD-F-160 |  | Application of Road Marking Works For Road Works- S.W 05-[Road 10] | 12d | 2027-07-05 | 2027-07-18 | CO-R10-S03-RD-F-120 |  | -216d |
| CO-R10-S04-RD-F-170 |  | Application of Road Marking Works For Road Works- S.W 06-[Road 10] | 12d | 2027-07-07 | 2027-07-20 | PRO-R10-RD-DL-150 FF+3d, CO-R10-S04-RD-F-150 |  | -216d |
| CO-R10-S04-RD-F-130 |  | Installation Works of Traffic Signs Boards For Road Works- S.W 06-[Road 10] | 10d | 2027-07-10 | 2027-07-20 | PRO-R10-RD-DL-140 FF+3d, CO-R10.S04-ES-RD-130, CO-R10-S04-RD-F-170 FF, CO-R10.S04-WE-RD-130 |  | -215d |
|  | 5 | **Road 11 Local 1 ( 670 LM )** |  | 2026-06-22 | 2027-08-30 |  |  |  |
|  | 10 | **Sewage Network** |  | 2027-05-03 | 2027-06-08 |  |  |  |

| ID | WBS | Task | Duration | Start | Finish | Predecessors | Complete | Total float |
| --- | --- | --- | --- | --- | --- | --- | --- | --- |
|  | TF | **Testing and Finishes** |  | 2027-05-03 | 2027-06-08 |  |  |  |
| CO-R11-SW-TF-100 |  | Final Testing For Main Line of Sewage Network-[Road 11] | 12d | 2027-05-03 | 2027-05-22 | CO-R11.S05-SW-130, CO-R11.S05-RD-P-100 SS+3d, CO-R11.S05-RD-P-100 FF+3d, CO-R10-SW-TF-100, CO-R11.S06-RD-P-100 SS+3d, CO-R11.S06-RD-P-100 FF+3d, CO-R11.S06-SW-130, CO-R11.S05-SW-210 |  | -221d |
| CO-R11-SW-TF-110 |  | Install Manhole Cover Works for External Finishes of Sewage Network-[Road 11] | 12d | 2027-05-23 | 2027-06-05 | CO-R11.S05-SW-130 SS+3d, PRO-R11-SW-DL-120 FF+3d, CO-R11-SW-TF-100, CO-R11.S05-SW-130 FF+3d, CO-R11.S05-RD-P-100 SS+3d, CO-R11.S05-RD-P-100 FF+3d, CO-R11.S05-SW-120 SS, CO-R11.S05-SW-120, CO-R11.S05-SW-120 FF, ENG-SH-SW-ML-A-110, ENG-SH-SW-ML-A-110 FF, CO-R10-SW-TF-110, ENG-MS-SW-ML-A-110, ENG-MS-SW-ML-A-110 FF, CO-R11.S06-RD-P-100 SS+3d, CO-R11.S06-RD-P-100 FF+3d, CO-R11.S06-SW-130 SS+3d, CO-R11.S06-SW-130 FF+3d |  | -221d |
| CO-R11-SW-TF-130 |  | Main Manhole Internal Finishes (Benching + Insulation) of Sewage Network-[Road 11] | 12d | 2027-05-26 | 2027-06-08 | CO-R11-SW-TF-110 SS+3d, CO-R11-SW-TF-110 FF+3d, PRO-R11-SW-DL-130 FF+3d, CO-R10-SW-TF-130 |  | -221d |
|  | 11 | **Storm Drainage Network** |  | 2026-06-22 | 2027-06-28 |  |  |  |
|  | TF | **Testing and Finishes** |  | 2026-06-22 | 2027-06-28 |  |  |  |
| CO-R11-SD-TF-130 |  | Catch Basin Internal Finishes (Benching + Insulation ) for Storm Drainage Network-[Road 11] | 16d | 2026-06-22 A | 2027-06-28 | CO-R11-SD-TF-110 SS+3d, CO-R11-SD-TF-110 FF+3d, PRO-R11-SD-DL-160 FF+3d, CO-R11-SD-TF-100 SS, CO-R11-SD-TF-100, CO-R11-SD-TF-100 FF, CO-R11-SD-TF-110, CO-R11-SW-TF-110 SS, CO-R11-SW-TF-110, CO-R11-SW-TF-110 FF, ENG-SH-RD-A-100, ENG-SH-RD-A-100 FF, CO-R10-SD-TF-130, ENG-MS-RD-A-10, ENG-MS-RD-A-10 FF | 20% | -201d |
| CO-R11-SD-TF-120 |  | Main Manhole Internal Finishes (Benching + Insulation ) for Storm Drainage Network-[Road 11] | 12d | 2026-06-23 A | 2027-06-19 | CO-R11-SD-TF-100 SS+3d, CO-R11-SD-TF-100 FF+3d, PRO-R11-SD-DL-160 FF+3d, CO-R11-SD-TF-100, CO-R11-SD-TF-110 SS, CO-R11-SD-TF-110, CO-R11-SD-TF-110 FF, CO-R11-SW-TF-110 SS, CO-R11-SW-TF-110, CO-R11-SW-TF-110 FF, ENG-SH-RD-A-100, ENG-SH-RD-A-100 FF, CO-R10-SD-TF-120, ENG-MS-RD-A-10, ENG-MS-RD-A-10 FF, PRO-R11-SD-DL-100 FF+3d | 85% | -214d |
| CO-R11-SD-TF-100 |  | Testing Work for Pipes of Storm Drainage Network-[Road 11] | 16d | 2026-06-24 A | 2026-07-05 A | CO-R11.S05-SD-130 SS+3d, PRO-R11-SD-DL-140 FF+3d, CO-R11.S05-RD-P-100 SS+3d, CO-R11.S05-RD-P-100 FF+3d, CO-R11.S05-SD-130 FF+3d, CO-R11.S05-SD-120 SS, CO-R11.S05-SD-120, ENG-SH-SD-ML-A-110, CO-R10-SD-TF-100, ENG-MS-SD-ML-A-110, CO-R11.S06-RD-P-100 SS+3d, CO-R11.S06-RD-P-100 FF | 100% |  |
| CO-R11-SD-TF-110 |  | Install Catch Basin Cover Works for External Finishes of Storm Drainage Network-[Road 11] | 12d | 2026-06-27 A | 2027-05-30 | CO-R11.S05-SD-170 SS+3d, PRO-R11-SD-DL-150 FF+3d, CO-R11.S05-RD-P-100 SS+3d, CO-R11.S05-RD-P-100 FF+3d, CO-R11.S05-RD-P-100, CO-R11.S05-SD-170 FF+3d, CO-R10-SD-TF-110, CO-R11.S06-RD-P-100 SS+3d, CO-R11.S06-RD-P-100 FF+3d | 20% | -209d |
|  | 9 | **Potable Water Network** |  | 2027-05-10 | 2027-06-21 |  |  |  |
|  | TF | **Testing and Finishes** |  | 2027-05-10 | 2027-06-21 |  |  |  |
| CO-R11-PW-TF-100 |  | Final Finishes works and Covers for Valves and Valve Chambers of Potable Water Network-[Road 11] | 12d | 2027-05-10 | 2027-05-29 | CO-R11.S05-RD-P-100 FS+3d, CO-R10-PW-TF-100, PRO-R11-PW-DL-130 FF+3d |  | -215d |
| CO-R11-PW-TF-120 |  | Fire Hydrant Finishies (S.Box + Safety + Marker Post ) of Potable Water Network-[Road 11] | 12d | 2027-05-30 | 2027-06-12 | CO-R11-PW-TF-100, CO-R10-PW-TF-120, PRO-R11-PW-DL-130 FF+3d |  | -215d |
| CO-R11-PW-TF-110 |  | Testing Work for Main Line of Potable Water Network-[Road 11] | 12d | 2027-06-08 | 2027-06-21 | CO-R10-PW-TF-110, CO-R11.S06-PW-210 |  | -235d |
|  | 13 | **Irrigation Network** |  | 2027-05-11 | 2027-05-27 |  |  |  |
|  | TF | **Testing and Finishes** |  | 2027-05-11 | 2027-05-27 |  |  |  |
| CO-R11-IR-TF-130 |  | Final Testing (pressure tests) of Irrigation Network-[Road 11] | 10d | 2027-05-11 | 2027-05-27 | CO-R11.S05-IR-130, CO-R11.S05-RD-P-100, CO-R10-IR-TF-120, CO-R11.S06-RD-P-100 |  | -212d |
|  | 12 | **Street Lighting Network** |  | 2027-04-07 | 2027-07-14 |  |  |  |
|  | TR | **Termination and Testing Works** |  | 2027-04-07 | 2027-07-14 |  |  |  |
| CO-R11-SL-TF-160 |  | Termination Works For Lighting Poles Cables of Street Lighting Network-[Road 11] | 12d | 2027-04-07 | 2027-04-20 | PRO-R11-SL-DL-130 FF+3d, CO-R10-SL-TF-140 |  | -204d |
| CO-R11-SL-TF-170 |  | Termination Works For Panel Board Cables of Street Lighting Network-[Road 11] | 12d | 2027-06-29 | 2027-07-12 | PRO-R11-SL-DL-170 FF+3d, CO-R10-SL-TF-150, CO-R11.S06-SL-220 |  | -274d |
| CO-R11-SL-TF-380 |  | Testing Works For Panel Board Cables of Street Lighting Network-[Road 11] | 2d | 2027-07-13 | 2027-07-14 | CO-R11-SL-TF-170, CO-R10-SL-TF-380 |  | -264d |
|  | ES | **Earthing System Works** |  |  |  |  |  |  |
|  | 14 | **Medium Voltage Network** |  | 2027-07-12 | 2027-07-19 |  |  |  |
|  | TT | **Termination and Testing Works** |  | 2027-07-12 | 2027-07-19 |  |  |  |
| CO-R11-MV-TF-160 |  | Termination Works of Medium Voltage Network-[Road 11] | 7d | 2027-07-12 | 2027-07-19 | CO-R10.S03-ES-MV-170, CO-R11.S05-MV-120, CO-R10-MV-TF-140, PRO-R11-MV-DL-110 FF+3d, CO-R17.S13-MV-170, CO-R10.S03-WE-MV-170 |  | -245d |
|  | 1 | **Road Works** |  | 2026-08-12 | 2027-08-30 |  |  |  |
|  | 1 | **Bituminous Construction** |  | 2026-08-12 | 2027-08-18 |  |  |  |
| CO-R11-S05-RD-F-110 |  | Application of Prime Coat Layer for Road Works- S.W 07-[Road 11] | 10d | 2026-08-12 A | 2026-08-15 A | CO-R10-S03-RD-F-110, CO-R11.S05-RD-P-130, CO-SD-PO-K2-130 | 100% |  |
| CO-R11-S06-RD-F-140 |  | Application of Prime Coat Layer for Road Works- S.W 08-[Road 11] | 12d | 2026-08-13 A | 2026-08-15 A | CO-R10-S04-RD-F-140, PRO-R11-RD-DL-160 FF+3d, CO-R11.S06-RD-P-130, CO-R11-S05-RD-F-110 SS, CO-SD-PO-K2-130 | 100% |  |
| CO-R11-S05-RD-F-120 |  | Bituminous Base & Wearing Courses Layers for Road Works- S.W 07-[Road 11] | 12d | 2027-08-05 | 2027-08-18 | CO-R11-S05-RD-F-110 SS+3d, CO-R11-S05-RD-F-110 FF+3d, CO-R10-S03-RD-F-120 |  | -243d |
| CO-R11-S06-RD-F-150 |  | Bituminous Base & Wearing Courses Layers for Road Works- S.W 08-[Road 11] | 12d | 2027-08-05 | 2027-08-18 | CO-R11-S06-RD-F-140 SS+3d, CO-R11-S06-RD-F-140 FF+3d, CO-R10-S04-RD-F-150, PRO-R11-RD-DL-170 FF+3d, CO-R11-S05-RD-F-120 SS |  | -241d |
|  | TS | **Traffic Signs Boards and Roads Marking** |  | 2027-08-19 | 2027-08-30 |  |  |  |
| CO-R11-S05-RD-F-100 |  | Installation Works of Traffic Signs Boards For Road Works- S.W 07-[Road 11] | 10d | 2027-08-19 | 2027-08-30 | CO-R11.S05-RD-P-130, CO-R10-S03-RD-F-100, CO-R11-S05-RD-F-160 FF |  | -243d |
| CO-R11-S05-RD-F-160 |  | Application of Road Marking Works For Road Works- S.W 07-[Road 11] | 10d | 2027-08-19 | 2027-08-30 | CO-R11-S05-RD-F-120, CO-R10-S03-RD-F-160 |  | -243d |
| CO-R11-S06-RD-F-130 |  | Installation Works of Traffic Signs Boards For Road Works- S.W 08-[Road 11] | 10d | 2027-08-19 | 2027-08-30 | PRO-R11-RD-DL-140 FF+3d, CO-R11.S06-RD-P-130, CO-R10-S04-RD-F-130, CO-R11-S06-RD-F-170 FF |  | -240d |
| CO-R11-S06-RD-F-170 |  | Application of Road Marking Works For Road Works- S.W 08-[Road 11] | 10d | 2027-08-19 | 2027-08-30 | PRO-R11-RD-DL-150 FF+3d, CO-R11-S06-RD-F-150, CO-R10-S04-RD-F-170 |  | -241d |
|  | 6 | **Road 14 Local 1 ( 584 LM )** |  | 2026-04-08 | 2027-09-13 |  |  |  |
|  | 10 | **Sewage Network** |  | 2027-05-23 | 2027-06-22 |  |  |  |
|  | TF | **Testing and Finishes** |  | 2027-05-23 | 2027-06-22 |  |  |  |
| CO-R14-SW-TF-100 |  | Final Testing For Main Line of Sewage Network-[Road 14] | 12d | 2027-05-23 | 2027-06-05 | CO-R14.S07-SW-130, CO-R14.S07-RD-P-100 SS+3d, CO-R14.S07-RD-P-100 FF+3d, CO-R11-SW-TF-100, CO-R14.S08-RD-P-100 SS+3d, CO-R14.S08-RD-P-100 FF+3d, CO-R14.S08-SW-130, CO-R14.S08-SW-210, CO-R14.S07-SW-210 |  | -221d |
| CO-R14-SW-TF-110 |  | Install Manhole Cover Works for External Finishes of Sewage Network-[Road 14] | 12d | 2027-06-06 | 2027-06-19 | CO-R14.S07-SW-130 SS+3d, PRO-R14-SW-DL-120 FF+3d, CO-R14-SW-TF-100, CO-R14.S07-SW-130 FF+3d, CO-R14.S07-RD-P-100 SS+3d, CO-R14.S07-RD-P-100 FF+3d, CO-R14.S07-SW-120 SS, CO-R14.S07-SW-120, CO-R14.S07-SW-120 FF, ENG-SH-SW-ML-A-110, ENG-SH-SW-ML-A-110 FF, CO-R11-SW-TF-110, ENG-MS-SW-ML-A-110, ENG-MS-SW-ML-A-110 FF, CO-R14.S08-RD-P-100 SS+3d, CO-R14.S08-RD-P-100 FF+3d, CO-R14.S08-SW-130 SS+3d, CO-R14.S08-SW-130 FF+3d |  | -221d |
| CO-R14-SW-TF-130 |  | Main Manhole Internal Finishes (Benching + Insulation) of Sewage Network-[Road 14] | 12d | 2027-06-09 | 2027-06-22 | CO-R14-SW-TF-110 SS+3d, CO-R14-SW-TF-110 FF+3d, PRO-R14-SW-DL-130 FF+3d, CO-R11-SW-TF-130 |  | -221d |
|  | 11 | **Storm Drainage Network** |  | 2026-04-08 | 2026-04-18 |  |  |  |
|  | TF | **Testing and Finishes** |  | 2026-04-08 | 2026-04-18 |  |  |  |
| CO-R14-SD-TF-100 |  | Testing Work for Pipes of Storm Drainage Network-[Road 14] | 10d | 2026-04-08 A | 2026-04-18 A | CO-R14.S07-SD-120 SS+2d, CO-R14.S08-SD-120 SS+2d, CO-R14.S07-SD-130, CO-R14.S07-RD-P-100 SS, CO-R14.S07-RD-P-100 FF, CO-R14.S07-SD-210 | 100% |  |
| CO-R14-SD-TF-110 |  | Install Catch Basin Cover Works for External Finishes of Storm Drainage Network-[Road 14] | 12d | 2026-04-08 A | 2026-04-18 A | CO-R14.S07-SD-170 SS+3d, PRO-R14-SD-DL-150 FF+3d, CO-R14.S07-RD-P-100 SS+3d, CO-R14.S07-RD-P-100 FF+3d, CO-R14.S07-RD-P-100, CO-R14.S07-SD-170 FF+3d, CO-R11-SD-TF-110, CO-R14.S08-RD-P-100 SS+3d, CO-R14.S08-RD-P-100 FF+3d, CO-R14-SD-TF-100, CO-R14.S07-SD-170 | 100% |  |
| CO-R14-SD-TF-120 |  | Main Manhole Internal Finishes (Benching + Insulation ) for Storm Drainage Network-[Road 14] | 12d | 2026-04-08 A | 2026-04-18 A | PRO-R14-SD-DL-160 FF+3d, CO-R14-SD-TF-110 SS, CO-R14-SD-TF-110, CO-R14-SD-TF-110 FF, CO-R14-SW-TF-110 SS, CO-R14-SW-TF-110, CO-R14-SW-TF-110 FF, ENG-SH-RD-A-100, ENG-SH-RD-A-100 FF, CO-R11-SD-TF-120, ENG-MS-RD-A-10, ENG-MS-RD-A-10 FF, CO-R14.S07-SD-220 | 100% |  |
| CO-R14-SD-TF-130 |  | Catch Basin Internal Finishes (Benching + Insulation ) for Storm Drainage Network-[Road 14] | 16d | 2026-04-08 A | 2026-04-18 A | CO-R14-SD-TF-110 SS+3d, CO-R14-SD-TF-110 FF+3d, PRO-R14-SD-DL-160 FF+3d, CO-R14-SD-TF-110, CO-R14-SW-TF-110 SS, CO-R14-SW-TF-110, CO-R14-SW-TF-110 FF, ENG-SH-RD-A-100, ENG-SH-RD-A-100 FF, CO-R11-SD-TF-130, ENG-MS-RD-A-10, ENG-MS-RD-A-10 FF, CO-R14.S07-SD-150 | 100% |  |
|  | 9 | **Potable Water Network** |  | 2027-05-30 | 2027-07-05 |  |  |  |
|  | TF | **Testing and Finishes** |  | 2027-05-30 | 2027-07-05 |  |  |  |
| CO-R14-PW-TF-100 |  | Final Finishes works and Covers for Valves and Valve Chambers of Potable Water Network-[Road 14] | 12d | 2027-05-30 | 2027-06-12 | CO-R14.S07-RD-P-100 FS+3d, CO-R11-PW-TF-100, PRO-R14-PW-DL-130 FF+3d, CO-R14.S08-PW-220 |  | -215d |
| CO-R14-PW-TF-120 |  | Fire Hydrant Finishies (S.Box + Safety + Marker Post ) of Potable Water Network-[Road 14] | 12d | 2027-06-13 | 2027-06-26 | CO-R14-PW-TF-100, CO-R11-PW-TF-120, PRO-R14-PW-DL-130 FF+3d |  | -215d |
| CO-R14-PW-TF-110 |  | Testing Work for Main Line of Potable Water Network-[Road 14] | 12d | 2027-06-22 | 2027-07-05 | CO-R11-PW-TF-110 |  | -235d |
|  | 13 | **Irrigation Network** |  | 2027-05-29 | 2027-06-08 |  |  |  |
|  | TF | **Testing and Finishes** |  | 2027-05-29 | 2027-06-08 |  |  |  |
| CO-R11-IR-TF-140 |  | Final Testing (pressure tests) of Irrigation Network-[Road 14] | 10d | 2027-05-29 | 2027-06-08 | CO-R14.S07-IR-130, CO-R14.S07-RD-P-100, CO-R11-IR-TF-130, CO-R14.S08-RD-P-100 |  | -212d |
|  | 12 | **Street Lighting Network** |  | 2027-04-21 | 2027-07-28 |  |  |  |
|  | TR | **Termination and Testing Works** |  | 2027-04-21 | 2027-07-28 |  |  |  |
| CO-R11-SL-TF-180 |  | Termination Works For Lighting Poles Cables of Street Lighting Network-[Road 14] | 12d | 2027-04-21 | 2027-05-04 | CO-R14.S07-SL-160, CO-R14.S07-SL-130, PRO-R14-SL-DL-130 FF+3d, CO-R11-SL-TF-160, CO-R14.S08-SL-660 |  | -204d |
| CO-R11-SL-TF-190 |  | Termination Works For Panel Board Cables of Street Lighting Network-[Road 14] | 12d | 2027-07-13 | 2027-07-26 | CO-R14.S07-SL-190, PRO-R14-SL-DL-170 FF+3d, CO-R14.S07-SL-160, CO-R11-SL-TF-170, CO-R14.S08-SL-DB-660, CO-R14.S07-SL-220, CO-R14.S08-SL-220 |  | -274d |
| CO-R14-SL-TF-380 |  | Testing Works For Panel Board Cables of Street Lighting Network-[Road 14] | 2d | 2027-07-27 | 2027-07-28 | CO-R11-SL-TF-190, CO-R11-SL-TF-380 |  | -274d |
|  | ES | **Earthing System Works** |  |  |  |  |  |  |
|  | 14 | **Medium Voltage Network** |  | 2027-07-20 | 2027-07-27 |  |  |  |
|  | TT | **Termination and Testing Works** |  | 2027-07-20 | 2027-07-27 |  |  |  |
| CO-R11-MV-TF-180 |  | Termination Works of Medium Voltage Network-[Road 14] | 7d | 2027-07-20 | 2027-07-27 | CO-R11-MV-TF-160, PRO-R14-MV-DL-110 FF+3d |  | -245d |
|  | 1 | **Road Works** |  | 2027-08-15 | 2027-09-13 |  |  |  |
|  | 1 | **Bituminous Construction** |  | 2027-08-15 | 2027-08-31 |  |  |  |
| CO-R11-S07-RD-F-110 |  | Application of Prime Coat Layer for Road Works- S.W 09-[Road 14] | 12d | 2027-08-15 | 2027-08-28 | CO-R11-S05-RD-F-110, CO-R14.S07-RD-P-130 |  | -242d |

| ID | WBS | Task | Duration | Start | Finish | Predecessors | Complete | Total float |
| --- | --- | --- | --- | --- | --- | --- | --- | --- |
| CO-R11-S08-RD-F-140 |  | Application of Prime Coat Layer for Road Works- S.W 10-[Road 14] | 10d | 2027-08-15 | 2027-08-25 | PRO-R14-RD-DL-160 FF+3d, CO-R14.S08-RD-P-130, CO-R11-S07-RD-F-110 SS |  | -240d |
| CO-R11-S07-RD-F-120 |  | Bituminous Base & Wearing Courses Layers for Road Works- S.W 09-[Road 14] | 10d | 2027-08-21 | 2027-08-31 | CO-R11-S07-RD-F-110 SS+3d, CO-R11-S07-RD-F-110 FF+3d, CO-R11-S05-RD-F-120 |  | -242d |
| CO-R11-S08-RD-F-150 |  | Bituminous Base & Wearing Courses Layers for Road Works- S.W 10-[Road 14] | 10d | 2027-08-21 | 2027-08-31 | CO-R11-S08-RD-F-140 SS+3d, CO-R11-S08-RD-F-140 FF+3d, PRO-R14-RD-DL-170 FF+3d, CO-R11-S07-RD-F-120 SS |  | -242d |
|  | TS | **Traffic Signs Boards and Roads Marking** |  | 2027-08-31 | 2027-09-13 |  |  |  |
| CO-R11-S07-RD-F-100 |  | Installation Works of Traffic Signs Boards For Road Works- S.W 09-[Road 14] | 12d | 2027-08-31 | 2027-09-13 | CO-R14.S07-RD-P-130, CO-R11-S05-RD-F-100, CO-R11-S07-RD-F-160 FF |  | -243d |
| CO-R11-S07-RD-F-160 |  | Application of Road Marking Works For Road Works- S.W 09-[Road 14] | 10d | 2027-09-01 | 2027-09-12 | CO-R11-S07-RD-F-120, CO-R11-S05-RD-F-160 |  | -242d |
| CO-R11-S08-RD-F-130 |  | Installation Works of Traffic Signs Boards For Road Works- S.W 10-[Road 14] | 10d | 2027-09-01 | 2027-09-12 | PRO-R14-RD-DL-140 FF+3d, CO-R14.S08-RD-P-130, CO-R11-S06-RD-F-130, CO-R11-S08-RD-F-170 FF |  | -241d |
| CO-R11-S08-RD-F-170 |  | Application of Road Marking Works For Road Works- S.W 10-[Road 14] | 10d | 2027-09-01 | 2027-09-12 | PRO-R14-RD-DL-150 FF+3d, CO-R11-S08-RD-F-150, CO-R11-S06-RD-F-170 |  | -242d |
|  | 7 | **Road 15 Local 1 ( 556 LM )** |  | 2026-04-01 | 2027-09-27 |  |  |  |
|  | 10 | **Sewage Network** |  | 2027-06-06 | 2027-07-06 |  |  |  |
|  | TF | **Testing and Finishes** |  | 2027-06-06 | 2027-07-06 |  |  |  |
| CO-R15-SW-TF-100 |  | Final Testing For Main Line of Sewage Network-[Road 15] | 12d | 2027-06-06 | 2027-06-19 | CO-R15.S09-SW-130, CO-R15.S09-RD-P-100 SS+3d, CO-R15.S09-RD-P-100 FF+3d, CO-R14-SW-TF-100, CO-R15.S10-RD-P-100 SS+3d, CO-R15.S10-RD-P-100 FF+3d, CO-R15.S09-SW-210, CO-R15.S10-SW-210 |  | -221d |
| CO-R15-SW-TF-110 |  | Install Manhole Cover Works for External Finishes of Sewage Network-[Road 15] | 12d | 2027-06-20 | 2027-07-03 | CO-R15.S09-SW-130 SS+3d, PRO-R15-SW-DL-120 FF+3d, CO-R15-SW-TF-100, CO-R15.S09-SW-130 FF+3d, CO-R15.S09-RD-P-100 SS+3d, CO-R15.S09-RD-P-100 FF+3d, CO-R15.S09-SW-120 SS, CO-R15.S09-SW-120, CO-R15.S09-SW-120 FF, ENG-SH-SW-ML-A-110, ENG-SH-SW-ML-A-110 FF, CO-R14-SW-TF-110, ENG-MS-SW-ML-A-110, ENG-MS-SW-ML-A-110 FF, CO-R15.S10-RD-P-100 SS+3d, CO-R15.S10-RD-P-100 FF+3d |  | -221d |
| CO-R15-SW-TF-130 |  | Main Manhole Internal Finishes (Benching + Insulation) of Sewage Network-[Road 15] | 12d | 2027-06-23 | 2027-07-06 | CO-R15-SW-TF-110 SS+3d, CO-R15-SW-TF-110 FF+3d, PRO-R15-SW-DL-130 FF+3d, CO-R14-SW-TF-130 |  | -221d |
|  | 11 | **Storm Drainage Network** |  | 2026-04-15 | 2027-07-21 |  |  |  |
|  | TF | **Testing and Finishes** |  | 2026-04-15 | 2027-07-21 |  |  |  |
| CO-R15-SD-TF-100 |  | Testing Work for Pipes of Storm Drainage Network-[Road 15] | 16d | 2026-04-15 A | 2026-04-18 A | CO-R15.S09-SD-130 SS+3d, PRO-R15-SD-DL-140 FF+3d, CO-R15.S09-RD-P-100 SS+3d, CO-R15.S09-RD-P-100 FF+3d, CO-R15.S09-SD-130 FF+3d, CO-R15.S09-SD-120 SS, CO-R15.S09-SD-120, ENG-SH-SD-ML-A-110, ENG-MS-SD-ML-A-110, CO-R15.S10-RD-P-100 SS+3d, CO-R15.S10-RD-P-100 FF+3d, CO-R15.S09-SD-210, CO-R15.S10-SD-210, CO-R15.S09-SD-160, CO-R15.S10-SD-160 | 100% |  |
| CO-R15-SD-TF-120 |  | Main Manhole Internal Finishes (Benching + Insulation ) for Storm Drainage Network-[Road 15] | 12d | 2026-04-19 A | 2026-06-17 A | CO-R15-SD-TF-100 SS+3d, CO-R15-SD-TF-100 FF+3d, PRO-R15-SD-DL-160 FF+3d, CO-R15-SD-TF-100, CO-R15-SD-TF-110 SS, CO-R15-SD-TF-110, CO-R15-SD-TF-110 FF, CO-R15-SW-TF-110 SS, CO-R15-SW-TF-110, CO-R15-SW-TF-110 FF, ENG-SH-RD-A-100, ENG-SH-RD-A-100 FF, CO-R14-SD-TF-120, ENG-MS-RD-A-10, ENG-MS-RD-A-10 FF, PRO-R15-SD-DL-100 FF+3d | 100% |  |
| CO-R15-SD-TF-110 |  | Install Catch Basin Cover Works for External Finishes of Storm Drainage Network-[Road 15] | 12d | 2027-05-31 | 2027-06-13 | CO-R15.S09-SD-170 SS+3d, PRO-R15-SD-DL-150 FF+3d, CO-R15.S09-RD-P-100 SS+3d, CO-R15.S09-RD-P-100 FF+3d, CO-R15.S09-RD-P-100, CO-R15.S09-SD-170 FF+3d, CO-R14-SD-TF-110, CO-R15.S10-RD-P-100 SS+3d, CO-R15.S10-RD-P-100 FF+3d |  | -188d |
| CO-R15-SD-TF-130 |  | Catch Basin Internal Finishes (Benching + Insulation ) for Storm Drainage Network-[Road 15] | 16d | 2027-07-04 | 2027-07-21 | CO-R15-SD-TF-110 SS+3d, CO-R15-SD-TF-110 FF+3d, PRO-R15-SD-DL-160 FF+3d, CO-R15-SD-TF-100 SS, CO-R15-SD-TF-100, CO-R15-SD-TF-100 FF, CO-R15-SD-TF-110, CO-R15-SW-TF-110 SS, CO-R15-SW-TF-110, CO-R15-SW-TF-110 FF, ENG-SH-RD-A-100, ENG-SH-RD-A-100 FF, CO-R14-SD-TF-130, ENG-MS-RD-A-10, ENG-MS-RD-A-10 FF |  | -205d |
|  | 9 | **Potable Water Network** |  | 2027-06-13 | 2027-07-19 |  |  |  |
|  | TF | **Testing and Finishes** |  | 2027-06-13 | 2027-07-19 |  |  |  |
| CO-R15-PW-TF-100 |  | Final Finishes works and Covers for Valves and Valve Chambers of Potable Water Network-[Road 15] | 12d | 2027-06-13 | 2027-06-26 | CO-R15.S09-RD-P-100 FS+3d, CO-R14-PW-TF-100, PRO-R15-PW-DL-130 FF+3d |  | -215d |
| CO-R15-PW-TF-120 |  | Fire Hydrant Finishies (S.Box + Safety + Marker Post ) of Potable Water Network-[Road 15] | 12d | 2027-06-27 | 2027-07-10 | CO-R15-PW-TF-100, CO-R14-PW-TF-120, PRO-R15-PW-DL-130 FF+3d |  | -215d |
| CO-R15-PW-TF-110 |  | Testing Work for Main Line of Potable Water Network-[Road 15] | 12d | 2027-07-06 | 2027-07-19 | CO-R14-PW-TF-110, CO-R15.S10-PW-210 |  | -235d |
|  | 13 | **Irrigation Network** |  | 2027-06-09 | 2027-06-20 |  |  |  |
|  | TF | **Testing and Finishes** |  | 2027-06-09 | 2027-06-20 |  |  |  |
| CO-R15-IR-TF-150 |  | Final Testing (pressure tests) of Irrigation Network-[Road 15] | 10d | 2027-06-09 | 2027-06-20 | CO-R15.S09-IR-130, CO-R15.S09-RD-P-100, CO-R11-IR-TF-140, CO-R15.S10-RD-P-100, CO-R15.S09-IR-120 |  | -212d |
|  | 12 | **Street Lighting Network** |  | 2027-05-05 | 2027-08-30 |  |  |  |
|  | TR | **Termination and Testing Works** |  | 2027-05-05 | 2027-08-30 |  |  |  |
| CO-R15-SL-TF-200 |  | Termination Works For Lighting Poles Cables of Street Lighting Network-[Road 15] | 12d | 2027-05-05 | 2027-05-24 | PRO-R15-SL-DL-130 FF+3d, CO-R11-SL-TF-180, CO-R17.S14-SL-130 |  | -204d |
| CO-R15-SL-TF-210 |  | Termination Works For Panel Board Cables of Street Lighting Network-[Road 15] | 12d | 2027-07-29 | 2027-08-11 | PRO-R15-SL-DL-170 FF+3d, CO-R11-SL-TF-190, CO-R14-SL-TF-380, CO-R15.S10-SL-160, CO-R15.S10-SL-190, CO-R15.S10-SL-220 |  | -274d |
| CO-R15-SL-TF-380 |  | Testing Works For Panel Board Cables of Street Lighting Network-[Road 15] | 16d | 2027-08-12 | 2027-08-30 | CO-R15-SL-TF-210, CO-R14-SL-TF-380 |  | -268d |
|  | ES | **Earthing System Works** |  |  |  |  |  |  |
|  | 14 | **Medium Voltage Network** |  | 2027-07-28 | 2027-08-04 |  |  |  |
|  | TT | **Termination and Testing Works** |  | 2027-07-28 | 2027-08-04 |  |  |  |
| CO-R15-MV-TF-200 |  | Termination Works of Medium Voltage Network-[Road 15] | 7d | 2027-07-28 | 2027-08-04 | CO-R15.S09-MV-ML-270, CO-R11-MV-TF-180, PRO-R15-MV-DL-110 FF+3d |  | -245d |
|  | 1 | **Road Works** |  | 2026-04-01 | 2027-09-27 |  |  |  |
|  | 1 | **Bituminous Construction** |  | 2026-04-01 | 2026-04-11 |  |  |  |
| CO-R15-S09-RD-F-110 |  | Application of Prime Coat Layer for Road Works- S.W 11-[Road 15] | 10d | 2026-04-01 A | 2026-04-11 A | CO-R11-S07-RD-F-110, CO-R15.S09-RD-P-130 | 100% |  |
| CO-R15-S09-RD-F-120 |  | Bituminous Base & Wearing Courses Layers for Road Works- S.W 11-[Road 15] | 10d | 2026-04-01 A | 2026-04-11 A | CO-R15-S09-RD-F-110 SS+3d, CO-R15-S09-RD-F-110 FF+3d, CO-R11-S07-RD-F-120 | 100% |  |
| CO-R15-S10-RD-F-140 |  | Application of Prime Coat Layer for Road Works- S.W 12-[Road 15] | 10d | 2026-04-01 A | 2026-04-11 A | CO-R11-S08-RD-F-140, PRO-R15-RD-DL-160 FF+3d, CO-R15.S10-RD-P-130, CO-R15-S09-RD-F-110 SS | 100% |  |
| CO-R15-S10-RD-F-150 |  | Bituminous Base & Wearing Courses Layers for Road Works- S.W 12-[Road 15] | 10d | 2026-04-01 A | 2026-04-11 A | CO-R15-S10-RD-F-140 SS+3d, CO-R15-S10-RD-F-140 FF+3d, CO-R11-S08-RD-F-150, PRO-R15-RD-DL-170 FF+3d, CO-R15-S09-RD-F-120 SS | 100% |  |
|  | TS | **Traffic Signs Boards and Roads Marking** |  | 2027-09-13 | 2027-09-27 |  |  |  |
| CO-R15-S09-RD-F-160 |  | Application of Road Marking Works For Road Works- S.W 11-[Road 15] | 10d | 2027-09-13 | 2027-09-25 | CO-R15-S09-RD-F-120, CO-R11-S07-RD-F-160 |  | -242d |
| CO-R15-S10-RD-F-130 |  | Installation Works of Traffic Signs Boards For Road Works- S.W 12-[Road 15] | 12d | 2027-09-13 | 2027-09-27 | CO-R15.S10-RD-P-130, CO-R11-S08-RD-F-130, PRO-R15-RD-DL-140 FF+3d, CO-R15-S10-RD-F-170 FF |  | -241d |
| CO-R15-S10-RD-F-170 |  | Application of Road Marking Works For Road Works- S.W 12-[Road 15] | 10d | 2027-09-13 | 2027-09-25 | CO-R15-S10-RD-F-150, CO-R11-S08-RD-F-170, PRO-R15-RD-DL-150 FF+3d |  | -242d |
| CO-R15-S09-RD-F-100 |  | Installation Works of Traffic Signs Boards For Road Works- S.W 11-[Road 15] | 10d | 2027-09-14 | 2027-09-26 | CO-R15.S09-RD-P-130, CO-R11-S07-RD-F-100, CO-R15-S09-RD-F-160 FF |  | -243d |
|  | 8 | **Road 16 Local 1 ( 527 LM )** |  | 2025-10-13 | 2027-10-09 |  |  |  |
|  | 10 | **Sewage Network** |  | 2027-06-20 | 2027-07-20 |  |  |  |
|  | TF | **Testing and Finishes** |  | 2027-06-20 | 2027-07-20 |  |  |  |
| CO-R16-SW-TF-100 |  | Final Testing For Main Line of Sewage Network-[Road 16] | 12d | 2027-06-20 | 2027-07-03 | CO-R16.S11-SW-130, CO-R16.S11-RD-P-100 SS+3d, CO-R16.S11-RD-P-100 FF+3d, CO-R15-SW-TF-100, CO-R16.S12-RD-P-100 SS+3d, CO-R16.S12-RD-P-100 FF+3d, CO-R16.S11-SW-210, CO-R16.S12-SW-210 |  | -221d |
| CO-R16-SW-TF-110 |  | Install Manhole Cover Works for External Finishes of Sewage Network-[Road 16] | 12d | 2027-07-04 | 2027-07-17 | CO-R16.S11-SW-130 SS+3d, PRO-R16-SW-DL-120 FF+3d, CO-R16-SW-TF-100, CO-R16.S11-SW-130 FF+3d, CO-R16.S11-RD-P-100 SS+3d, CO-R16.S11-RD-P-100 FF+3d, CO-R16.S11-SW-120 SS, CO-R16.S11-SW-120, CO-R16.S11-SW-120 FF, ENG-SH-SW-ML-A-110, ENG-SH-SW-ML-A-110 FF, CO-R15-SW-TF-110, ENG-MS-SW-ML-A-110, ENG-MS-SW-ML-A-110 FF, CO-R16.S12-RD-P-100 SS+3d, CO-R16.S12-RD-P-100 FF+3d |  | -221d |
| CO-R16-SW-TF-130 |  | Main Manhole Internal Finishes (Benching + Insulation) of Sewage Network-[Road 16] | 12d | 2027-07-07 | 2027-07-20 | CO-R16-SW-TF-110 SS+3d, CO-R16-SW-TF-110 FF+3d, PRO-R16-SW-DL-130 FF+3d, CO-R15-SW-TF-130 |  | -221d |
|  | 11 | **Storm Drainage Network** |  | 2026-05-31 | 2027-08-09 |  |  |  |
|  | TF | **Testing and Finishes** |  | 2026-05-31 | 2027-08-09 |  |  |  |
| CO-R16-SD-TF-120 |  | Main Manhole Internal Finishes (Benching + Insulation ) for Storm Drainage Network-[Road 16] | 12d | 2026-05-31 A | 2026-06-26 A | CO-R16-SD-TF-100 SS+3d, CO-R16-SD-TF-100 FF+3d, PRO-R16-SD-DL-160 FF+3d, CO-R16-SD-TF-100, CO-R16-SD-TF-110 SS, CO-R16-SD-TF-110, CO-R16-SD-TF-110 FF, CO-R16-SW-TF-110 SS, CO-R16-SW-TF-110, CO-R16-SW-TF-110 FF, ENG-SH-RD-A-100, ENG-SH-RD-A-100 FF, CO-R15-SD-TF-120, ENG-MS-RD-A-10, ENG-MS-RD-A-10 FF, PRO-R16-SD-DL-100 FF+3d | 100% |  |
| CO-R16-SD-TF-100 |  | Testing Work for Pipes of Storm Drainage Network-[Road 16] | 16d | 2026-11-21 | 2026-12-08 | CO-R16.S11-SD-130 SS+3d, PRO-R16-SD-DL-140 FF+3d, CO-R16.S11-RD-P-100 SS+3d, CO-R16.S11-RD-P-100 FF+3d, CO-R16.S11-SD-130 FF+3d, CO-R16.S11-SD-120 SS, CO-R16.S11-SD-120, ENG-SH-SD-ML-A-110, CO-R15-SD-TF-100, ENG-MS-SD-ML-A-110, CO-R16.S12-RD-P-100 SS+3d, CO-R16.S12-RD-P-100 FF+3d, CO-R16.S11-SD-210, CO-R16.S11-SD-160, CO-R16.S12-SD-210, CO-R16.S12-SD-160 |  | -21d |
| CO-R16-SD-TF-110 |  | Install Catch Basin Cover Works for External Finishes of Storm Drainage Network-[Road 16] | 12d | 2027-06-14 | 2027-06-27 | CO-R16.S11-SD-170 SS+3d, PRO-R16-SD-DL-150 FF+3d, CO-R16.S11-RD-P-100 SS+3d, CO-R16.S11-RD-P-100 FF+3d, CO-R16.S11-RD-P-100, CO-R16.S11-SD-170 FF+3d, CO-R15-SD-TF-110, CO-R16.S12-RD-P-100 SS+3d, CO-R16.S12-RD-P-100 FF+3d |  | -184d |
| CO-R16-SD-TF-130 |  | Catch Basin Internal Finishes (Benching + Insulation ) for Storm Drainage Network-[Road 16] | 16d | 2027-07-22 | 2027-08-09 | CO-R16-SD-TF-110 SS+3d, CO-R16-SD-TF-110 FF+3d, PRO-R16-SD-DL-160 FF+3d, CO-R16-SD-TF-100 SS, CO-R16-SD-TF-100, CO-R16-SD-TF-100 FF, CO-R16-SD-TF-110, CO-R16-SW-TF-110 SS, CO-R16-SW-TF-110, CO-R16-SW-TF-110 FF, ENG-SH-RD-A-100, ENG-SH-RD-A-100 FF, CO-R15-SD-TF-130, ENG-MS-RD-A-10, ENG-MS-RD-A-10 FF |  | -205d |
|  | 9 | **Potable Water Network** |  | 2027-06-27 | 2027-08-02 |  |  |  |
|  | TF | **Testing and Finishes** |  | 2027-06-27 | 2027-08-02 |  |  |  |
| CO-R16-PW-TF-100 |  | Final Finishes works and Covers for Valves and Valve Chambers of Potable Water Network-[Road 16] | 12d | 2027-06-27 | 2027-07-10 | CO-R16.S11-RD-P-100 FS+3d, CO-R15-PW-TF-100, PRO-R16-PW-DL-130 FF+3d, CO-R16.S12-RD-P-100 FS+3d |  | -215d |
| CO-R16-PW-TF-120 |  | Fire Hydrant Finishies (S.Box + Safety + Marker Post ) of Potable Water Network-[Road 16] | 12d | 2027-07-11 | 2027-07-24 | CO-R16-PW-TF-100, CO-R15-PW-TF-120, PRO-R16-PW-DL-130 FF+3d |  | -215d |
| CO-R16-PW-TF-110 |  | Testing Work for Main Line of Potable Water Network-[Road 16] | 12d | 2027-07-20 | 2027-08-02 | CO-R15-PW-TF-110, CO-R16.S12-PW-210 |  | -235d |
|  | 13 | **Irrigation Network** |  | 2027-06-21 | 2027-07-01 |  |  |  |
|  | TF | **Testing and Finishes** |  | 2027-06-21 | 2027-07-01 |  |  |  |
| CO-R16-IR-TF-160 |  | Final Testing (pressure tests) of Irrigation Network-[Road 16] | 10d | 2027-06-21 | 2027-07-01 | CO-R16.S11-IR-130, CO-R16.S11-RD-P-100, CO-R15-IR-TF-150, CO-R16.S12-RD-P-100, CO-R16.S11-IR-120 |  | -212d |
|  | 12 | **Street Lighting Network** |  | 2027-05-25 | 2027-09-01 |  |  |  |
|  | TR | **Termination and Testing Works** |  | 2027-05-25 | 2027-09-01 |  |  |  |

| ID | WBS | Task | Duration | Start | Finish | Predecessors | Complete | Total float |
| --- | --- | --- | --- | --- | --- | --- | --- | --- |
| CO-R16-SL-TF-220 |  | Termination Works For Lighting Poles Cables of Street Lighting Network-[Road 16] | 12d | 2027-05-25 | 2027-06-07 | PRO-R16-SL-DL-130 FF+3d, CO-R15-SL-TF-200 |  | -204d |
| CO-R16-SL-TF-230 |  | Termination Works For Panel Board Cables of Street Lighting Network-[Road 16] | 12d | 2027-08-12 | 2027-08-25 | PRO-R16-SL-DL-170 FF+3d, CO-R15-SL-TF-210 |  | -274d |
| CO-R16-SL-TF-380 |  | Testing Works For Panel Board Cables of Street Lighting Network-[Road 16] | 2d | 2027-08-31 | 2027-09-01 | CO-R16-SL-TF-230, CO-R15-SL-TF-380 |  | -268d |
|  | ES | **Earthing System Works** |  |  |  |  |  |  |
|  | 14 | **Medium Voltage Network** |  | 2027-08-05 | 2027-08-12 |  |  |  |
|  | TT | **Termination and Testing Works** |  | 2027-08-05 | 2027-08-12 |  |  |  |
| CO-R16-MV-TF-220 |  | Termination Works of Medium Voltage Network-[Road 16] | 7d | 2027-08-05 | 2027-08-12 | CO-R16.S11-MV-ML-300, CO-R15-MV-TF-200, PRO-R16-MV-DL-110 FF+3d |  | -245d |
|  | 1 | **Road Works** |  | 2025-10-13 | 2027-10-09 |  |  |  |
|  | 1 | **Bituminous Construction** |  | 2025-10-13 | 2026-08-16 |  |  |  |
| CO-R16-S11-RD-F-110 |  | Application of Prime Coat Layer for Road Works - S.W 13-[Road 16] | 10d | 2025-10-13 A | 2025-10-14 A | CO-R15-S09-RD-F-110, CO-R16.S11-RD-P-130 | 100% |  |
| CO-R16-S12-RD-F-140 |  | Application of Prime Coat Layer for Road Works- S.W 14-[Road 16] | 10d | 2025-10-13 A | 2025-10-14 A | CO-R15-S10-RD-F-140, PRO-R16-RD-DL-160 FF+3d, CO-R16.S12-RD-P-130, CO-R16-S11-RD-F-110 SS | 100% |  |
| CO-R16-S11-RD-F-120 |  | Bituminous Base & Wearing Courses Layers for Road Works- S.W 13-[Road 16] | 10d | 2026-05-12 A | 2026-05-16 A | CO-R16-S11-RD-F-110 SS+3d, CO-R16-S11-RD-F-110 FF+3d, CO-R15-S09-RD-F-120 | 100% |  |
| CO-R16-S12-RD-F-150 |  | Bituminous Base & Wearing Courses Layers for Road Works- S.W 14-[Road 16] | 10d | 2026-08-12 A | 2026-08-16 A | CO-R16-S12-RD-F-140 SS+3d, CO-R16-S12-RD-F-140 FF+3d, CO-R15-S10-RD-F-150, PRO-R16-RD-DL-170 FF+3d, CO-R16-S11-RD-F-120 FF | 100% |  |
|  | TS | **Traffic Signs Boards and Roads Marking** |  | 2027-09-26 | 2027-10-09 |  |  |  |
| CO-R16-S11-RD-F-160 |  | Application of Road Marking Works For Road Works- S.W 13-[Road 16] | 10d | 2027-09-26 | 2027-10-06 | CO-R16-S11-RD-F-120, CO-R15-S09-RD-F-160 |  | -242d |
| CO-R16-S12-RD-F-170 |  | Application of Road Marking Works For Road Works- S.W 14-[Road 16] | 10d | 2027-09-26 | 2027-10-06 | CO-R16-S12-RD-F-150, CO-R15-S10-RD-F-170, PRO-R16-RD-DL-150 FF+3d |  | -242d |
| CO-R16-S11-RD-F-100 |  | Installation Works of Traffic Signs Boards For Road Works- S.W 13-[Road 16] | 10d | 2027-09-27 | 2027-10-07 | CO-R16.S11-RD-P-130, CO-R15-S09-RD-F-100, CO-R16-S11-RD-F-160 FF |  | -243d |
| CO-R16-S12-RD-F-130 |  | Installation Works of Traffic Signs Boards For Road Works- S.W 14-[Road 16] | 10d | 2027-09-28 | 2027-10-09 | CO-R16.S12-RD-P-130, CO-R15-S10-RD-F-130, PRO-R16-RD-DL-140 FF+3d, CO-R16-S12-RD-F-170 FF |  | -241d |
|  | 9 | **Road 17 Local 1 ( 500 LM )** |  | 2025-09-20 | 2027-10-19 |  |  |  |
|  | 10 | **Sewage Network** |  | 2027-07-04 | 2027-08-03 |  |  |  |
|  | TF | **Testing and Finishes** |  | 2027-07-04 | 2027-08-03 |  |  |  |
| CO-R17-SW-TF-100 |  | Final Testing For Main Line of Sewage Network-[Road 17] | 12d | 2027-07-04 | 2027-07-17 | CO-R17.S13-SW-130, CO-R17.S13-RD-P-100 SS+3d, CO-R17.S13-RD-P-100 FF+3d, CO-R16-SW-TF-100, CO-R17.S14-RD-P-100 SS+3d, CO-R17.S14-RD-P-100 FF+3d, CO-R17.S13-SW-210, CO-R17.S14-SW-210 |  | -221d |
| CO-R17-SW-TF-110 |  | Install Manhole Cover Works for External Finishes of Sewage Network-[Road 17] | 12d | 2027-07-18 | 2027-07-31 | CO-R17.S13-SW-130 SS+3d, PRO-R17-SW-DL-120 FF+3d, CO-R17-SW-TF-100, CO-R17.S13-SW-130 FF+3d, CO-R17.S13-RD-P-100 SS+3d, CO-R17.S13-RD-P-100 FF+3d, CO-R17.S13-SW-120 SS, CO-R17.S13-SW-120, CO-R17.S13-SW-120 FF, ENG-SH-SW-ML-A-110, ENG-SH-SW-ML-A-110 FF, CO-R16-SW-TF-110, ENG-MS-SW-ML-A-110, ENG-MS-SW-ML-A-110 FF, CO-R17.S14-RD-P-100 SS+3d, CO-R17.S14-RD-P-100 FF+3d |  | -221d |
| CO-R17-SW-TF-130 |  | Main Manhole Internal Finishes (Benching + Insulation) of Sewage Network-[Road 17] | 12d | 2027-07-21 | 2027-08-03 | CO-R17-SW-TF-110 SS+3d, CO-R17-SW-TF-110 FF+3d, PRO-R17-SW-DL-130 FF+3d, CO-R16-SW-TF-130 |  | -221d |
|  | 11 | **Storm Drainage Network** |  | 2026-05-31 | 2027-08-23 |  |  |  |
|  | TF | **Testing and Finishes** |  | 2026-05-31 | 2027-08-23 |  |  |  |
| CO-R17-SD-TF-120 |  | Main Manhole Internal Finishes (Benching + Insulation ) for Storm Drainage Network-[Road 17] | 12d | 2026-05-31 A | 2026-06-18 A | CO-R17-SD-TF-100 SS+3d, CO-R17-SD-TF-100 FF+3d, PRO-R17-SD-DL-160 FF+3d, CO-R17-SD-TF-100, CO-R17-SD-TF-110 SS, CO-R17-SD-TF-110, CO-R17-SD-TF-110 FF, CO-R17-SW-TF-110 SS, CO-R17-SW-TF-110, CO-R17-SW-TF-110 FF, ENG-SH-RD-A-100, ENG-SH-RD-A-100 FF, CO-R16-SD-TF-120, ENG-MS-RD-A-10, ENG-MS-RD-A-10 FF, PRO-R17-SD-DL-100 FF+3d | 100% |  |
| CO-R17-SD-TF-100 |  | Testing Work for Pipes of Storm Drainage Network-[Road 17] | 16d | 2026-12-09 | 2026-12-27 | CO-R17.S13-SD-130 SS+3d, PRO-R17-SD-DL-140 FF+3d, CO-R17.S13-RD-P-100 SS+3d, CO-R17.S13-RD-P-100 FF+3d, CO-R17.S13-SD-130 FF+3d, CO-R17.S13-SD-120 SS, CO-R17.S13-SD-120, ENG-SH-SD-ML-A-110, CO-R16-SD-TF-100, ENG-MS-SD-ML-A-110, CO-R17.S14-RD-P-100 SS+3d, CO-R17.S14-RD-P-100 FF+3d, CO-R17.S13-SD-210, CO-R17.S13-SD-160, CO-R17.S14-SD-210 |  | -21d |
| CO-R17-SD-TF-110 |  | Install Catch Basin Cover Works for External Finishes of Storm Drainage Network-[Road 17] | 12d | 2027-06-28 | 2027-07-11 | CO-R17.S13-SD-170 SS+3d, PRO-R17-SD-DL-150 FF+3d, CO-R17.S13-RD-P-100 SS+3d, CO-R17.S13-RD-P-100 FF+3d, CO-R17.S13-RD-P-100, CO-R17.S13-SD-170 FF+3d, CO-R16-SD-TF-110, CO-R17.S14-RD-P-100 SS+3d, CO-R17.S14-RD-P-100 FF+3d |  | -180d |
| CO-R17-SD-TF-130 |  | Catch Basin Internal Finishes (Benching + Insulation ) for Storm Drainage Network-[Road 17] | 12d | 2027-08-10 | 2027-08-23 | CO-R17-SD-TF-110 SS+3d, CO-R17-SD-TF-110 FF+3d, PRO-R17-SD-DL-160 FF+3d, CO-R17-SD-TF-100 SS, CO-R17-SD-TF-100, CO-R17-SD-TF-100 FF, CO-R17-SD-TF-110, CO-R17-SW-TF-110 SS, CO-R17-SW-TF-110, CO-R17-SW-TF-110 FF, ENG-SH-RD-A-100, ENG-SH-RD-A-100 FF, CO-R16-SD-TF-130, ENG-MS-RD-A-10, ENG-MS-RD-A-10 FF, CO-R17.S14-SD-160 |  | -205d |
|  | 9 | **Potable Water Network** |  | 2027-07-11 | 2027-08-16 |  |  |  |
|  | TF | **Testing and Finishes** |  | 2027-07-11 | 2027-08-16 |  |  |  |
| CO-R17-PW-TF-100 |  | Final Finishes works and Covers for Valves and Valve Chambers of Potable Water Network-[Road 17] | 12d | 2027-07-11 | 2027-07-24 | CO-R17.S13-RD-P-100 FS+3d, CO-R16-PW-TF-100, PRO-R17-PW-DL-130 FF+3d, CO-R17.S14-RD-P-100 FS+3d |  | -215d |
| CO-R17-PW-TF-120 |  | Fire Hydrant Finishies (S.Box + Safety + Marker Post ) of Potable Water Network-[Road 17] | 12d | 2027-07-25 | 2027-08-07 | CO-R17-PW-TF-100, CO-R16-PW-TF-120, PRO-R17-PW-DL-130 FF+3d, CO-R17.S14-PW-160 |  | -215d |
| CO-R17-PW-TF-110 |  | Testing Work for Main Line of Potable Water Network-[Road 17] | 12d | 2027-08-03 | 2027-08-16 | CO-R16-PW-TF-110, CO-R17.S14-PW-210 |  | -235d |
|  | 13 | **Irrigation Network** |  | 2027-07-03 | 2027-07-13 |  |  |  |
|  | TF | **Testing and Finishes** |  | 2027-07-03 | 2027-07-13 |  |  |  |
| CO-R17-IR-TF-170 |  | Final Testing (pressure tests) of Irrigation Network-[Road 17] | 10d | 2027-07-03 | 2027-07-13 | CO-R17.S13-IR-130, CO-R17.S13-RD-P-100, CO-R16-IR-TF-160, CO-R17.S14-RD-P-100, CO-R17.S13-IR-120 |  | -212d |
|  | 12 | **Street Lighting Network** |  | 2027-06-08 | 2027-09-11 |  |  |  |
|  | TR | **Termination and Testing Works** |  | 2027-06-08 | 2027-09-11 |  |  |  |
| CO-R17-SL-TF-240 |  | Termination Works For Lighting Poles Cables of Street Lighting Network-[Road 17] | 12d | 2027-06-08 | 2027-06-21 | PRO-R17-SL-DL-130 FF+3d, CO-R16-SL-TF-220 |  | -204d |
| CO-R17-SL-TF-250 |  | Termination Works For Panel Board Cables of Street Lighting Network-[Road 17] | 12d | 2027-08-26 | 2027-09-08 | PRO-R17-SL-DL-170 FF+3d, CO-R16-SL-TF-230, CO-R17.S14-SL-160, CO-R17.S14-SL-190, CO-R17.S14-SL-220 |  | -274d |
| CO-R17-SL-TF-380 |  | Testing Works For Panel Board Cables of Street Lighting Network-[Road 17] | 2d | 2027-09-09 | 2027-09-11 | CO-R17-SL-TF-250, CO-R16-SL-TF-380 |  | -274d |
|  | ES | **Earthing System Works** |  |  |  |  |  |  |
|  | 14 | **Medium Voltage Network** |  | 2027-08-14 | 2027-08-21 |  |  |  |
|  | TT | **Termination and Testing Works** |  | 2027-08-14 | 2027-08-21 |  |  |  |
| CO-R17-MV-TF-240 |  | Termination Works of Medium Voltage Network-[Road 17] | 7d | 2027-08-14 | 2027-08-21 | CO-R17.S13-MV-ML-330, CO-R16-MV-TF-220, PRO-R17-MV-DL-110 FF+3d, CO-R17.S13-MV-SS-160 |  | -245d |
|  | 1 | **Road Works** |  | 2025-09-20 | 2027-10-19 |  |  |  |
|  | 1 | **Bituminous Construction** |  | 2025-09-20 | 2025-10-13 |  |  |  |
| CO-R17-S13-RD-F-110 |  | Application of Prime Coat Layer for Road Works- S.W 15-[Road 17] | 10d | 2025-09-20 A | 2025-09-25 A | CO-R16-S11-RD-F-110, CO-R17.S13-RD-P-130 | 100% |  |
| CO-R17-S14-RD-F-140 |  | Application of Prime Coat Layer for Road Works- S.W 16-[Road 17] | 10d | 2025-09-20 A | 2025-09-25 A | CO-R16-S12-RD-F-140, PRO-R17-RD-DL-160 FF+3d, CO-R17.S14-RD-P-130, CO-R17-S13-RD-F-110 SS | 100% |  |
| CO-R17-S13-RD-F-120 |  | Bituminous Base & Wearing Courses Layers for Road Works- S.W 15-[Road 17] | 10d | 2025-10-09 A | 2025-10-13 A | CO-R17-S13-RD-F-110 SS+3d, CO-R17-S13-RD-F-110 FF+3d, CO-R16-S11-RD-F-120 | 100% |  |
| CO-R17-S14-RD-F-150 |  | Bituminous Base & Wearing Courses Layers for Road Works- S.W 16-[Road 17] | 10d | 2025-10-09 A | 2025-10-13 A | CO-R17-S14-RD-F-140 SS+3d, CO-R17-S14-RD-F-140 FF+3d, CO-R16-S12-RD-F-150, PRO-R17-RD-DL-170 FF+3d, CO-R17-S13-RD-F-120 SS | 100% |  |
|  | TS | **Traffic Signs Boards and Roads Marking** |  | 2027-10-07 | 2027-10-19 |  |  |  |
| CO-R17-S13-RD-F-160 |  | Application of Road Marking Works For Road Works- S.W 15-[Road 17] | 10d | 2027-10-07 | 2027-10-18 | CO-R17-S13-RD-F-120, CO-R16-S11-RD-F-160 |  | -242d |
| CO-R17-S14-RD-F-170 |  | Application of Road Marking Works For Road Works- S.W 16-[Road 17] | 10d | 2027-10-07 | 2027-10-18 | CO-R17-S14-RD-F-150, CO-R16-S12-RD-F-170, PRO-R17-RD-DL-150 FF+3d |  | -242d |
| CO-R17-S13-RD-F-100 |  | Installation Works of Traffic Signs Boards For Road Works- S.W 15-[Road 17] | 10d | 2027-10-09 | 2027-10-19 | CO-R17.S13-RD-P-130, CO-R16-S11-RD-F-100, CO-R17-S13-RD-F-160 FF |  | -243d |
| CO-R17-S14-RD-F-130 |  | Installation Works of Traffic Signs Boards For Road Works- S.W 16-[Road 17] | 7d | 2027-10-11 | 2027-10-18 | CO-R17.S14-RD-P-130, CO-R16-S12-RD-F-130, PRO-R17-RD-DL-140 FF+3d, CO-R17-S14-RD-F-170 FF |  | -242d |
|  | 3 | **Road 18 Local 1 ( 479 LM )** |  | 2025-09-23 | 2027-10-25 |  |  |  |
|  | 10 | **Sewage Network** |  | 2027-05-09 | 2027-06-14 |  |  |  |
|  | TF | **Testing and Finishes** |  | 2027-05-09 | 2027-06-14 |  |  |  |
| CO-R18-SW-TF-100 |  | Final Testing For Main Line of Sewage Network-[Road 18] | 12d | 2027-05-09 | 2027-05-27 | CO-R09-SW-TF-100, CO-R11.S06-RD-P-100, CO-R18.S15-RD-P-160 SS, CO-R18.S15-RD-P-160 FF, CO-R18.S15-SW-300, CO-R18.S16-SW-300 |  | -175d |
| CO-R18-SW-TF-110 |  | Install Manhole Cover Works for External Finishes of Sewage Network-[Road 18] | 12d | 2027-05-29 | 2027-06-10 | CO-R18-SW-TF-100, ENG-SH-SW-ML-A-110, ENG-SH-SW-ML-A-110 FF, CO-R09-SW-TF-110, ENG-MS-SW-ML-A-110, ENG-MS-SW-ML-A-110 FF, PRO-R18-SW-DL-170 |  | -175d |
| CO-R18-SW-TF-130 |  | Main Manhole Internal Finishes (Benching + Insulation) of Sewage Network-[Road 18] | 12d | 2027-06-01 | 2027-06-14 | CO-R09-SW-TF-120, CO-R18-SW-TF-110 SS, CO-R18-SW-TF-110 FF, PRO-R18-SW-DL-190 |  | -178d |
|  | 11 | **Storm Drainage Network** |  | 2026-06-20 | 2027-07-04 |  |  |  |
|  | TF | **Testing and Finishes** |  | 2026-06-20 | 2027-07-04 |  |  |  |
| CO-R18-SD-TF-120 |  | Main Manhole Internal Finishes (Benching + Insulation ) for Storm Drainage Network-[Road 18] | 16d | 2026-06-20 A | 2026-06-27 A | CO-R18-SD-TF-100 SS+3d, CO-R18-SD-TF-100 FF+3d, CO-R18-SD-TF-100, CO-R18-SD-TF-110 SS, CO-R18-SD-TF-110, CO-R18-SD-TF-110 FF, CO-R18-SW-TF-110 SS, CO-R18-SW-TF-110 FF, ENG-SH-RD-A-100, ENG-SH-RD-A-100 FF, CO-R09-SD-TF-120, ENG-MS-RD-A-10, ENG-MS-RD-A-10 FF, PRO-R18-SD-DL-190, PRO-R18-SD-DL-170 FF+3d | 100% |  |
| CO-R18-SD-TF-100 |  | Testing Work for Pipes of Storm Drainage Network-[Road 18] | 16d | 2027-05-09 | 2027-06-01 | ENG-SH-SD-ML-A-110, CO-R09-SD-TF-100, ENG-MS-SD-ML-A-110, CO-R17.S13-RD-P-100 SS+3d, CO-R17.S13-RD-P-100 FF+3d, CO-R18.S15-SD-280, CO-R18.S15-SD-330, CO-R18.S16-SD-280, CO-R18.S16-SD-330 |  | -150d |
| CO-R18-SD-TF-110 |  | Install Catch Basin Cover Works for External Finishes of Storm Drainage Network-[Road 18] | 16d | 2027-05-10 | 2027-06-02 | CO-R09-SD-TF-110, CO-R18.S15-RD-P-160 SS, CO-R18.S15-RD-P-160 FF, PRO-R18-SD-DL-210 |  | -151d |
| CO-R18-SD-TF-130 |  | Catch Basin Internal Finishes (Benching + Insulation ) for Storm Drainage Network-[Road 18] | 16d | 2027-06-16 | 2027-07-04 | CO-R18-SD-TF-110 SS+3d, CO-R18-SD-TF-110 FF+3d, CO-R18-SD-TF-100 SS, CO-R18-SD-TF-100, CO-R18-SD-TF-100 FF, CO-R18-SD-TF-110, CO-R18-SW-TF-110 SS, CO-R18-SW-TF-110 FF, ENG-SH-RD-A-100, ENG-SH-RD-A-100 FF, CO-R09-SD-TF-130, ENG-MS-RD-A-10, ENG-MS-RD-A-10 FF, PRO-R18-SD-DL-230 |  | -162d |

| ID | WBS | Task | Duration | Start | Finish | Predecessors | Complete | Total float |
| --- | --- | --- | --- | --- | --- | --- | --- | --- |
|  | 9 | **Potable Water Network** |  | 2027-06-08 | 2027-08-30 |  |  |  |
|  | TF | **Testing and Finishes** |  | 2027-06-08 | 2027-08-30 |  |  |  |
| CO-R18-PW-TF-100 |  | Final Finishes works and Covers for Valves and Valve Chambers of Potable Water Network-[Road 18] | 12d | 2027-06-08 | 2027-06-21 | CO-R09-PW-TF-100, CO-R18.S15-RD-P-160 SS, CO-R18.S15-RD-P-160 FF |  | -187d |
| CO-R18-PW-TF-120 |  | Fire Hydrant Finishies (S.Box + Safety + Marker Post ) of Potable Water Network-[Road 18] | 12d | 2027-06-22 | 2027-07-05 | CO-R18-PW-TF-100, CO-R09-PW-TF-120, CO-R18.S16-PW-270 |  | -187d |
| CO-R18-PW-TF-110 |  | Testing Work for Main Line of Potable Water Network-[Road 18] | 12d | 2027-08-17 | 2027-08-30 | CO-R09-PW-TF-110, CO-R17-PW-TF-110, PRO-R18-PW-DL-170, CO-R18.S16-PW-330 |  | -235d |
|  | 13 | **Irrigation Network** |  | 2027-05-30 | 2027-06-16 |  |  |  |
|  | TF | **Testing and Finishes** |  | 2027-05-30 | 2027-06-16 |  |  |  |
| CO-R18-IR-TF-110 |  | Final Testing (pressure tests) of Irrigation Network-[Road 18] | 16d | 2027-05-30 | 2027-06-16 | CO-R09-IR-TF-100, CO-R18.S15-RD-P-160 SS, CO-R18.S15-RD-P-160 FF |  | -189d |
|  | 12 | **Street Lighting Network** |  | 2027-04-17 | 2027-07-19 |  |  |  |
|  | TR | **Termination and Testing Works** |  | 2027-04-17 | 2027-07-19 |  |  |  |
| CO-R18-SL-TF-120 |  | Termination Works For Lighting Poles Cables of Street Lighting Network-[Road 18] | 12.25d | 2027-04-17 | 2027-05-01 | CO-R09-SL-TF-100, PRO-R18-SL-DL-210, PRO-R18-SL-DL-250, CO-R18.S16-SL-130 |  | -164.25d |
| CO-R18-SL-TF-130 |  | Termination Works For Panel Board Cables of Street Lighting Network-[Road 18] | 12d | 2027-07-03 | 2027-07-17 | CO-R09-SL-TF-110, CO-R09.S02-SL-220, CO-R18.S16-SL-160, CO-R18.S16-SL-190, CO-R18.S16-SL-220 |  | -227.5d |
| CO-R18-SL-TF-380 |  | Testing Works For Panel Board Cables of Street Lighting Network-[Road 18] | 2d | 2027-07-17 | 2027-07-19 | CO-R18-SL-TF-130, CO-R09-SL-TF-380 |  | -227.5d |
|  | ES | **Earthing System Works** |  |  |  |  |  |  |
|  | 14 | **Medium Voltage Network** |  | 2027-06-20 | 2027-07-07 |  |  |  |
|  | TT | **Termination and Testing Works** |  | 2027-06-20 | 2027-07-07 |  |  |  |
| CO-R18-MV-TF-120 |  | Termination Works of Medium Voltage Network-[Road 18] | 16d | 2027-06-20 | 2027-07-07 | CO-R09-MV-TF-100, CO-R18.S15-MV-ML-360, PRO-R18-MV-DL-130 |  | -207d |
|  | 1 | **Road Works** |  | 2025-09-23 | 2027-10-25 |  |  |  |
|  | 1 | **Bituminous Construction** |  | 2025-09-23 | 2025-10-13 |  |  |  |
| CO-R18-S15-RD-F-100 |  | Application of Prime Coat Layer for Road Works- S.W 03-[Road 18] | 18d | 2025-09-23 A | 2025-09-28 A | CO-R09-S1-RD-F-100, CO-R18.S15-RD-P-140, PRO-R18-RD-DL-240 | 100% |  |
| CO-R18-S15-RD-F-110 |  | Bituminous Base & Wearing Courses Layers for Road Works- S.W 03-[Road 18] | 18d | 2025-09-23 A | 2025-09-28 A | CO-R18-S15-RD-F-100 SS+3d, CO-R18-S15-RD-F-100 FF+3d, CO-R09-S1-RD-F-120, PRO-R18-RD-DL-250 FF+3d | 100% |  |
| CO-R18-S16-RD-F-150 |  | Application of Prime Coat Layer for Road Works- S.W 04-[Road 18] | 18d | 2025-10-09 A | 2025-10-13 A | CO-R09-S2-RD-F-110, CO-R18-S15-RD-F-100 SS, PRO-R18-RD-DL-240 | 100% |  |
| CO-R18-S16-RD-F-170 |  | Bituminous Base & Wearing Courses Layers for Road Works- S.W 04-[Road 18] | 18d | 2025-10-09 A | 2025-10-11 A | CO-R18-S16-RD-F-150 SS+3d, CO-R18-S16-RD-F-150 FF+3d, CO-R09-S2-RD-F-130, CO-R18-S15-RD-F-110 SS, PRO-R18-RD-DL-250 FF+3d | 100% |  |
|  | TS | **Traffic Signs Boards and Roads Marking** |  | 2027-09-14 | 2027-10-25 |  |  |  |
| CO-R18-S15-RD-F-120 |  | Application of Road Marking Works For Road Works- S.W 03-[Road 18] | 12d | 2027-09-14 | 2027-09-29 | CO-R09-S1-RD-F-140, CO-R18-S15-RD-F-110, CO-R09-S1-RD-F-150, PRO-R18-RD-DL-210 |  | -247.5d |
| CO-R18-S15-RD-F-130 |  | Installation Works of Traffic Signs Boards For Road Works- S.W 03-[Road 18] | 12d | 2027-09-29 | 2027-10-13 | CO-R09-S1-RD-F-150, CO-R18-S15-RD-F-120, PRO-R18-RD-DL-200 FF+3d |  | -247.5d |
| CO-R18-S16-RD-F-140 |  | Application of Road Marking Works For Road Works- S.W 04-[Road 18] | 15d | 2027-10-06 | 2027-10-24 | CO-R09-S2-RD-F-160, CO-R18-S16-RD-F-170, CO-R09-S1-RD-F-150, CO-R09-S2-RD-F-170, PRO-R18-RD-DL-210 |  | -246.5d |
| CO-R18-S16-RD-F-160 |  | Installation Works of Traffic Signs Boards For Road Works- S.W 04-[Road 18] | 10d | 2027-10-13 | 2027-10-25 | CO-R18-S16-RD-F-140 FF, CO-R09-S2-RD-F-170, CO-R18-S15-RD-F-130, PRO-R18-RD-DL-200 FF+3d |  | -247.5d |
|  | GEN | **Independent Works** |  | 2025-05-19 | 2027-10-25 |  |  |  |
|  | CON | **Tie In To Existing Networks** |  | 2027-04-29 | 2027-10-25 |  |  |  |
|  | 1 | **Phase 2 Block "J"** |  | 2027-04-29 | 2027-10-25 |  |  |  |
|  | 2 | **Road 09 Local 2 ( 2278 LM )** |  | 2027-07-14 | 2027-10-03 |  |  |  |
|  | 15 | **Storm Drainage Network** |  | 2027-08-24 | 2027-08-31 |  |  |  |
| TIE-SD-R09 |  | TIE IN Existing Network For Storm Drainage Network | 7d | 2027-08-24 | 2027-08-31 | MS-CF-SD |  | -205d |
|  | 16 | **Sewage Network** |  | 2027-08-04 | 2027-08-17 |  |  |  |
| TIE-SW-R09 |  | TIE IN Existing Network For Sewage Network | 12d | 2027-08-04 | 2027-08-17 | MS-CF-SW |  | -195d |
|  | 17 | **Potable Water Network** |  | 2027-08-31 | 2027-09-13 |  |  |  |
| TIE-PW-R09 |  | TIE IN Existing Network For Potable Water Network | 12d | 2027-08-31 | 2027-09-13 | MS-CF-PW |  | -218d |
|  | 1 | **Irrigation Network** |  | 2027-07-14 | 2027-07-27 |  |  |  |
| TIE-IR-R09 |  | TIE IN Existing Network For Irrigation Network | 12d | 2027-07-14 | 2027-07-27 | MS-CF-IR |  | -177d |
|  | 18 | **Meduim Voltage Network** |  | 2027-08-22 | 2027-09-11 |  |  |  |
| TIE-R09-MV |  | TIE IN Existing Network For Medium Voltage Network | 18d | 2027-08-22 | 2027-09-11 | MS-CF-MV |  | -219d |
|  | 2 | **Street Lighting Network** |  | 2027-09-12 | 2027-10-03 |  |  |  |
| TIE-R09-SL |  | TIE IN Existing Network For Street Lighting Network | 18d | 2027-09-12 | 2027-10-03 | MS-CF-SL |  | -240d |
|  | 3 | **Telecom Network** |  | 2027-08-22 | 2027-09-01 |  |  |  |
| TIE-R09-TE |  | TIE IN Existing Network For Telecom Network | 10d | 2027-08-22 | 2027-09-01 | MS-CF-TE, MS-CF-MV |  | -221d |
|  | 4 | **Road 10 Local 2 ( 2352 LM )** |  | 2027-07-14 | 2027-10-25 |  |  |  |
|  | 15 | **Storm Drainage Network** |  | 2027-08-24 | 2027-08-31 |  |  |  |
| TIE-SD-R10 |  | TIE IN Existing Network For Storm Drainage Network | 7d | 2027-08-24 | 2027-08-31 | MS-CF-SD |  | -205d |
|  | 16 | **Sewage Network** |  | 2027-08-04 | 2027-08-17 |  |  |  |
| TIE-SW-R10 |  | TIE IN Existing Network For Sewage Network | 12d | 2027-08-04 | 2027-08-17 | MS-CF-SW |  | -195d |
|  | 17 | **Potable Water Network** |  | 2027-08-31 | 2027-09-13 |  |  |  |
| TIE-PW-R10 |  | TIE IN Existing Network For Potable Water Network | 12d | 2027-08-31 | 2027-09-13 | MS-CF-PW |  | -218d |
|  | 1 | **Irrigation Network** |  | 2027-07-14 | 2027-07-27 |  |  |  |
| TIE-IR-R10 |  | TIE IN Existing Network For Irrigation Network | 12d | 2027-07-14 | 2027-07-27 | MS-CF-IR |  | -177d |
|  | 18 | **Meduim Voltage Network** |  | 2027-08-22 | 2027-09-11 |  |  |  |
| TIE-R10-MV |  | TIE IN Existing Network For Medium Voltage Network | 18d | 2027-08-22 | 2027-09-11 | MS-CF-MV |  | -219d |
|  | 2 | **Street Lighting Network** |  | 2027-09-12 | 2027-10-03 |  |  |  |
| TIE-R10-SL |  | TIE IN Existing Network For Street Lighting Network | 18d | 2027-09-12 | 2027-10-03 | MS-CF-SL |  | -240d |
|  | 4 | **Telecom Network** |  | 2027-08-22 | 2027-09-01 |  |  |  |
| TIE-R10-TE |  | TIE IN Existing Network For Telecom Network | 10d | 2027-08-22 | 2027-09-01 | MS-CF-TE, MS-CF-MV |  | -221d |
|  | 3 | **Road Works** |  | 2027-10-19 | 2027-10-25 |  |  |  |
| TIE-R10-RD |  | TIE IN Existing Network For Road Works | 5d | 2027-10-19 | 2027-10-25 | MS-CF-RD FF, TIE-R10-TE |  | -245.5d |
|  | 5 | **Road 11 Local 1 ( 670 LM )** |  | 2027-07-14 | 2027-10-25 |  |  |  |
|  | 15 | **Storm Drainage Network** |  | 2027-08-24 | 2027-08-31 |  |  |  |
| TIE-SD-R11 |  | TIE IN Existing Network For Storm Drainage Network | 7d | 2027-08-24 | 2027-08-31 | MS-CF-SD |  | -205d |
|  | 16 | **Sewage Network** |  | 2027-08-04 | 2027-08-17 |  |  |  |
| TIE-SW-R11 |  | TIE IN Existing Network For Sewage Network | 12d | 2027-08-04 | 2027-08-17 | MS-CF-SW |  | -195d |
|  | 17 | **Potable Water Network** |  | 2027-08-31 | 2027-09-13 |  |  |  |
| TIE-PW-R11 |  | TIE IN Existing Network For Potable Water Network | 12d | 2027-08-31 | 2027-09-13 | MS-CF-PW |  | -218d |

| ID | WBS | Task | Duration | Start | Finish | Predecessors | Total float |
| --- | --- | --- | --- | --- | --- | --- | --- |
|  | 1 | **Irrigation Network** |  | 2027-07-14 | 2027-07-27 |  |  |
| TIE-IR-R11 |  | TIE IN Existing Network For Irrigation Network | 12d | 2027-07-14 | 2027-07-27 | MS-CF-IR | -177d |
|  | 18 | **Meduim Voltage Network** |  | 2027-08-22 | 2027-09-11 |  |  |
| TIE-R11-MV |  | TIE IN Existing Network For Medium Voltage Network | 18d | 2027-08-22 | 2027-09-11 | MS-CF-MV | -219d |
|  | 2 | **Street Lighting Network** |  | 2027-09-12 | 2027-10-03 |  |  |
| TIE-R11-SL |  | TIE IN Existing Network For Street Lighting Network | 18d | 2027-09-12 | 2027-10-03 | MS-CF-SL | -240d |
|  | 4 | **Telecom Network** |  | 2027-08-22 | 2027-09-01 |  |  |
| TIE-R11-TE |  | TIE IN Existing Network For Telecom Network | 10d | 2027-08-22 | 2027-09-01 | MS-CF-TE, MS-CF-MV | -221d |
|  | 3 | **Road Works** |  | 2027-10-19 | 2027-10-25 |  |  |
| TIE-R11-RD |  | TIE IN Existing Network For Road Works | 5d | 2027-10-19 | 2027-10-25 | MS-CF-RD FF, TIE-R11-TE | -245.5d |
|  | 6 | **Road 14 Local 1 ( 584 LM )** |  | 2027-07-14 | 2027-10-25 |  |  |
|  | 15 | **Storm Drainage Network** |  | 2027-08-24 | 2027-08-31 |  |  |
| TIE-SD-R14 |  | TIE IN Existing Network For Storm Drainage Network | 7d | 2027-08-24 | 2027-08-31 | MS-CF-SD | -205d |
|  | 16 | **Sewage Network** |  | 2027-08-04 | 2027-08-17 |  |  |
| TIE-SW-R14 |  | TIE IN Existing Network For Sewage Network | 12d | 2027-08-04 | 2027-08-17 | MS-CF-SW | -195d |
|  | 17 | **Potable Water Network** |  | 2027-08-31 | 2027-09-13 |  |  |
| TIE-PW-R14 |  | TIE IN Existing Network For Potable Water Network | 12d | 2027-08-31 | 2027-09-13 | MS-CF-PW | -218d |
|  | 1 | **Irrigation Network** |  | 2027-07-14 | 2027-07-27 |  |  |
| TIE-IR-R14 |  | TIE IN Existing Network For Irrigation Network | 12d | 2027-07-14 | 2027-07-27 | MS-CF-IR | -177d |
|  | 18 | **Meduim Voltage Network** |  | 2027-08-22 | 2027-09-11 |  |  |
| TIE-R14-MV |  | TIE IN Existing Network For Medium Voltage Network | 18d | 2027-08-22 | 2027-09-11 | MS-CF-MV | -219d |
|  | 2 | **Street Lighting Network** |  | 2027-09-12 | 2027-10-03 |  |  |
| TIE-R14-SL |  | TIE IN Existing Network For Street Lighting Network | 18d | 2027-09-12 | 2027-10-03 | MS-CF-SL | -240d |
|  | 4 | **Telecom Network** |  | 2027-08-22 | 2027-09-01 |  |  |
| TIE-R14-TE |  | TIE IN Existing Network For Telecom Network | 10d | 2027-08-22 | 2027-09-01 | MS-CF-TE, MS-CF-MV | -221d |
|  | 3 | **Road Works** |  | 2027-10-19 | 2027-10-25 |  |  |
| TIE-R14-RD |  | TIE IN Existing Network For Road Works | 5d | 2027-10-19 | 2027-10-25 | MS-CF-RD FF, TIE-R10-TE | -245.5d |
|  | 7 | **Road 15 Local 1 ( 556 LM )** |  | 2027-07-14 | 2027-10-03 |  |  |
|  | 15 | **Storm Drainage Network** |  | 2027-08-24 | 2027-08-31 |  |  |
| TIE-SD-R15 |  | TIE IN Existing Network For Storm Drainage Network | 7d | 2027-08-24 | 2027-08-31 | MS-CF-SD | -205d |
|  | 16 | **Sewage Network** |  | 2027-08-04 | 2027-08-17 |  |  |
| TIE-SW-R15 |  | TIE IN Existing Network For Sewage Network | 12d | 2027-08-04 | 2027-08-17 | MS-CF-SW | -195d |
|  | 17 | **Potable Water Network** |  | 2027-08-31 | 2027-09-13 |  |  |
| TIE-PW-R15 |  | TIE IN Existing Network For Potable Water Network | 12d | 2027-08-31 | 2027-09-13 | MS-CF-PW | -218d |
|  | 1 | **Irrigation Network** |  | 2027-07-14 | 2027-07-27 |  |  |
| TIE-IR-R15 |  | TIE IN Existing Network For Irrigation Network | 12d | 2027-07-14 | 2027-07-27 | MS-CF-IR | -177d |
|  | 18 | **Meduim Voltage Network** |  | 2027-08-22 | 2027-09-11 |  |  |
| TIE-R15-MV |  | TIE IN Existing Network For Medium Voltage Network | 18d | 2027-08-22 | 2027-09-11 | MS-CF-MV | -219d |
|  | 2 | **Street Lighting Network** |  | 2027-09-12 | 2027-10-03 |  |  |
| TIE-R15-SL |  | TIE IN Existing Network For Street Lighting Network | 18d | 2027-09-12 | 2027-10-03 | MS-CF-SL | -240d |
|  | 3 | **Telecom Network** |  | 2027-08-22 | 2027-09-01 |  |  |
| TIE-R15-TE |  | TIE IN Existing Network For Telecom Network | 10d | 2027-08-22 | 2027-09-01 | MS-CF-TE, MS-CF-MV | -221d |
|  | 8 | **Road 16 Local 1 ( 527 LM )** |  | 2027-07-14 | 2027-10-03 |  |  |
|  | 15 | **Storm Drainage Network** |  | 2027-08-24 | 2027-08-31 |  |  |
| TIE-SD-R16 |  | TIE IN Existing Network For Storm Drainage Network | 7d | 2027-08-24 | 2027-08-31 | MS-CF-SD | -205d |
|  | 16 | **Sewage Network** |  | 2027-08-04 | 2027-08-17 |  |  |
| TIE-SW-R16 |  | TIE IN Existing Network For Sewage Network | 12d | 2027-08-04 | 2027-08-17 | MS-CF-SW | -195d |
|  | 17 | **Potable Water Network** |  | 2027-08-31 | 2027-09-13 |  |  |
| TIE-PW-R16 |  | TIE IN Existing Network For Potable Water Network | 12d | 2027-08-31 | 2027-09-13 | MS-CF-PW | -218d |
|  | 1 | **Irrigation Network** |  | 2027-07-14 | 2027-07-27 |  |  |
| TIE-IR-R16 |  | TIE IN Existing Network For Irrigation Network | 12d | 2027-07-14 | 2027-07-27 | MS-CF-IR | -177d |
|  | 18 | **Meduim Voltage Network** |  | 2027-08-22 | 2027-09-11 |  |  |
| TIE-R16-MV |  | TIE IN Existing Network For Medium Voltage Network | 18d | 2027-08-22 | 2027-09-11 | MS-CF-MV | -219d |
|  | 2 | **Street Lighting Network** |  | 2027-09-12 | 2027-10-03 |  |  |
| TIE-R16-SL |  | TIE IN Existing Network For Street Lighting Network | 18d | 2027-09-12 | 2027-10-03 | MS-CF-SL | -240d |
|  | 3 | **Telecom Network** |  | 2027-08-22 | 2027-09-01 |  |  |
| TIE-R16-TE |  | TIE IN Existing Network For Telecom Network | 10d | 2027-08-22 | 2027-09-01 | MS-CF-TE, MS-CF-MV | -221d |
|  | 9 | **Road 17 Local 1 ( 500 LM )** |  | 2027-07-14 | 2027-10-03 |  |  |
|  | 15 | **Storm Drainage Network** |  | 2027-08-24 | 2027-08-31 |  |  |
| TIE-SD-R17 |  | TIE IN Existing Network For Storm Drainage Network | 7d | 2027-08-24 | 2027-08-31 | MS-CF-SD | -205d |
|  | 16 | **Sewage Network** |  | 2027-08-04 | 2027-08-17 |  |  |
| TIE-SW-R17 |  | TIE IN Existing Network For Sewage Network | 12d | 2027-08-04 | 2027-08-17 | MS-CF-SW | -195d |
|  | 17 | **Potable Water Network** |  | 2027-08-31 | 2027-09-13 |  |  |
| TIE-PW-R17 |  | TIE IN Existing Network For Potable Water Network | 12d | 2027-08-31 | 2027-09-13 | MS-CF-PW | -218d |
|  | 1 | **Irrigation Network** |  | 2027-07-14 | 2027-07-27 |  |  |
| TIE-IR-R17 |  | TIE IN Existing Network For Irrigation Network | 12d | 2027-07-14 | 2027-07-27 | MS-CF-IR | -177d |
|  | 18 | **Meduim Voltage Network** |  | 2027-08-22 | 2027-09-11 |  |  |
| TIE-R17-MV |  | TIE IN Existing Network For Medium Voltage Network | 18d | 2027-08-22 | 2027-09-11 | MS-CF-MV | -219d |
|  | 2 | **Street Lighting Network** |  | 2027-09-12 | 2027-10-03 |  |  |
| TIE-R17-SL |  | TIE IN Existing Network For Street Lighting Network | 18d | 2027-09-12 | 2027-10-03 | MS-CF-SL | -240d |

| ID | WBS | Task | Duration | Start | Finish | Predecessors | Complete | Total float |
| --- | --- | --- | --- | --- | --- | --- | --- | --- |
|  | 3 | **Telecom Network** |  | 2027-08-22 | 2027-09-01 |  |  |  |
| TIE-R17-TE |  | TIE IN Existing Network For Telecom Network | 10d | 2027-08-22 | 2027-09-01 | MS-CF-TE, MS-CF-MV |  | -221d |
|  | 1 | **Road 18 Local 1 ( 479 LM )** |  | 2027-04-29 | 2027-10-03 |  |  |  |
|  | 15 | **Storm Drainage Network** |  | 2027-08-24 | 2027-08-31 |  |  |  |
| TIE-SD-R18 |  | TIE IN Existing Network For Storm Drainage Network | 7d | 2027-08-24 | 2027-08-31 | MS-CF-SD |  | -205d |
|  | 16 | **Sewage Network** |  | 2027-08-04 | 2027-08-17 |  |  |  |
| TIE-SW-R18 |  | TIE IN Existing Network For Sewage Network | 12d | 2027-08-04 | 2027-08-17 | MS-CF-SW |  | -195d |
|  | 17 | **Potable Water Network** |  | 2027-08-31 | 2027-09-13 |  |  |  |
| TIE-PW-R18 |  | TIE IN Existing Network For Potable Water Network | 12d | 2027-08-31 | 2027-09-13 | MS-CF-PW |  | -218d |
|  | 1 | **Irrigation Network** |  | 2027-07-14 | 2027-07-27 |  |  |  |
| TIE-IR-R18 |  | TIE IN Existing Network For Irrigation Network | 12d | 2027-07-14 | 2027-07-27 | MS-CF-IR |  | -177d |
|  | 18 | **Meduim Voltage Network** |  | 2027-08-22 | 2027-09-11 |  |  |  |
| TIE-R18-MV10 |  | TIE IN Existing Network For Medium Voltage Network | 18d | 2027-08-22 | 2027-09-11 | MS-CF-MV |  | -219d |
|  | 2 | **Street Lighting Network** |  | 2027-09-12 | 2027-10-03 |  |  |  |
| TIE-R18-SL10 |  | TIE IN Existing Network For Street Lighting Network | 18d | 2027-09-12 | 2027-10-03 | MS-CF-SL |  | -240d |
|  | 3 | **Telecom Network** |  | 2027-04-29 | 2027-05-12 |  |  |  |
| TIE-R18-TE10 |  | TIE IN Existing Network For Telecom Network | 12d | 2027-04-29 | 2027-05-12 | MS-CF-TE, CO-R18.S15-TE-220, CO-R18.S16-TE-190, CO-R18.S16-TE-220 |  | -130d |
|  | 2 | **Sewage Pump Stations** |  | 2026-09-01 | 2027-07-25 |  |  |  |
|  | 1 | **Sewage Pump Station ( PS 06 )** |  | 2026-09-01 | 2027-07-25 |  |  |  |
|  | 1 | **Pump Station Main Building** |  | 2026-09-01 | 2027-06-17 |  |  |  |
| CO-SW-PS7-MB-100 |  | Excavation Main Bulding | 15d | 2026-09-01 A | 2026-09-06 A | ENG-SH-SPS-A-110, ENG-MS-SPS-A-110, ENG-MT-SPS-CV-A-110, ENG-MT-SPS-MC-A-110, PRO-SPS-CV-1DL-10, CO-R14.S07-SD-130, CO-R15.S09-SD-130, CO-R16.S12-SD-130 | 100% |  |
| CO-SW-PS7-MB-110 |  | Concrete Works of Superstrucure | 30d | 2026-09-16 A | 2026-12-26 | CO-SW-PS7-MB-100, PRO-SPS-CV-DL-10 |  | -189d |
| CO-SW-PS7-MB-120 |  | Internal Finishes Works of Superstrucure | 30d | 2026-12-27 | 2027-01-30 | CO-SW-PS7-MB-110 |  | -189d |
| CO-SW-PS7-MB-130 |  | Internal Electrical Works | 30d | 2027-01-31 | 2027-03-07 | CO-SW-PS7-MB-120 |  | -152d |
| CO-SW-PS7-MB-140 |  | Internal Mechanical Works | 30d | 2027-03-08 | 2027-04-14 | CO-SW-PS7-MB-130 |  | -152d |
| CO-SW-PS7-MB-150 |  | Electromechanical Main Works | 30d | 2027-05-09 | 2027-06-17 | CO-SW-PS7-MB-140, PRO-SPS7-LL-SH/DL-10, PRO-SPS7-LL-MSI-10 |  | -172d |
|  | 2 | **Generator With Umbrella Tank** |  | 2027-01-31 | 2027-05-02 |  |  |  |
| CO-SW-PS7-GN-100 |  | Concrete Works of Base | 12d | 2027-01-31 | 2027-02-13 | CO-SW-PS7-MB-110, CO-SW-PS7-MB-120 |  | -189d |
| CO-SW-PS7-GN-110 |  | Install Manually Operated Fuel Pump | 21d | 2027-02-14 | 2027-03-14 | CO-SW-PS7-GN-100 |  | -189d |
| CO-SW-PS7-GN-120 |  | Install Ground Fuel Tank | 21d | 2027-03-15 | 2027-04-07 | CO-SW-PS7-GN-110 |  | -189d |
| CO-SW-PS7-GN-130 |  | Fix Steel Structure for Umbrella | 21d | 2027-04-08 | 2027-05-02 | CO-SW-PS7-GN-110, CO-SW-PS7-GN-120 |  | -189d |
|  | 5 | **Motor Control Centre Building** |  | 2026-12-27 | 2027-06-07 |  |  |  |
| CO-SW-PS7-MCC-100 |  | Excavation Main Bulding | 16d | 2026-12-27 | 2027-01-13 | CO-SW-PS7-MB-100, CO-SW-PS7-MB-110 |  | -153d |
| CO-SW-PS7-MCC-110 |  | Concrete Works of Superstrucure | 21d | 2027-01-14 | 2027-02-07 | CO-SW-PS7-MCC-100 |  | -153d |
| CO-SW-PS7-MCC-120 |  | Internal Finishes Works of Superstrucure | 21d | 2027-02-08 | 2027-03-04 | CO-SW-PS7-MCC-110 |  | -153d |
| CO-SW-PS7-MCC-130 |  | Internal Electrical Works | 21d | 2027-03-06 | 2027-04-01 | CO-SW-PS7-MCC-120 |  | -153d |
| CO-SW-PS7-MCC-140 |  | Internal Mechanical Works | 21d | 2027-04-03 | 2027-04-26 | CO-SW-PS7-MCC-130 |  | -153d |
| CO-SW-PS7-MCC-150 |  | Electromechanical Main Works | 21d | 2027-05-09 | 2027-06-07 | CO-SW-PS7-MCC-140, PRO-SPS7-LL-MSI-10 |  | -163d |
|  | 6 | **Simple Building Works** |  | 2027-05-03 | 2027-07-05 |  |  |  |
| CO-SW-PS7-SBL-100 |  | Perimeter Fencing | 23d | 2027-05-03 | 2027-06-03 | CO-SW-PS7-MCC-120, CO-SW-PS7-MB-120, CO-SW-PS7-GN-130, CO-SW-PS7-GN-120 |  | -189d |
| CO-SW-PS7-SBL-110 |  | Outside Lighting | 27d | 2027-06-05 | 2027-07-05 | CO-SW-PS7-SBL-100 |  | -187d |
| CO-SW-PS7-SBL-120 |  | Outside Duct Works | 23d | 2027-06-05 | 2027-06-30 | CO-SW-PS7-SBL-100 |  | -189d |
| CO-SW-PS7-SBL-130 |  | Rectangular Wet Wells | 27d | 2027-06-05 | 2027-07-05 | CO-SW-PS7-SBL-100 |  | -187d |
| CO-SW-PS7-SBL-140 |  | Round Wet Well Structure for basket screen | 27d | 2027-06-05 | 2027-07-05 | CO-SW-PS7-SBL-100 |  | -187d |
| CO-SW-PS7-SBL-150 |  | Motorized basket screen | 27d | 2027-06-05 | 2027-07-05 | CO-SW-PS7-SBL-100 |  | -187d |
|  | 7 | **Site Work and Service Road** |  | 2027-07-01 | 2027-07-25 |  |  |  |
| CO-SW-PS7-SWS-100 |  | Outside Strom Drainage System | 6d | 2027-07-01 | 2027-07-07 | CO-SW-PS7-SBL-120 |  | -189d |
| CO-SW-PS7-SWS-110 |  | Bituminous Works | 15d | 2027-07-08 | 2027-07-25 | CO-SW-PS7-MCC-150, CO-SW-PS7-SWS-100, CO-SW-PS7-SBL-120, CO-SW-PS7-SBL-110, CO-SW-PS7-SBL-100, CO-SW-PS7-GN-130, CO-SW-PS7-GN-120, CO-SW-PS7-MB-150, CO-SW-PS7-SBL-130, CO-SW-PS7-SBL-140, CO-SW-PS7-SBL-150, PRO-SPS-CV-DL-10 FF+3d |  | -189d |
|  | 1 | **Storm Drainage Ponds** |  | 2025-05-19 | 2027-08-04 |  |  |  |
|  | 1 | **Storm Drainage Pond ( PO-J1)** |  | 2025-05-19 | 2027-03-17 |  |  |  |
| CO-SD-PO-K1-100-P1 |  | Excavation & Filling Works - PART 1 | 21d | 2025-05-19 A | 2025-06-03 A | ENG-SH-DPO-A-110, ENG-MS-DPO-A-110, ENG-MT-DPO-CV-A-110 | 100% |  |
| CO-SD-PO-K1-100-P2 |  | Excavation & Filling Works - PART 2 | 21d | 2025-06-04 A | 2025-06-28 A | CO-SD-PO-K1-100-P1 | 100% |  |
| CO-SD-PO-K1-100-P3 |  | Excavation & Filling Works - PART 3 | 21d | 2025-07-01 A | 2025-07-15 A | CO-SD-PO-K1-100-P2 | 100% |  |
| CO-SD-PO-K1-100-P4 |  | Excavation & Filling Works - PART 4 | 21d | 2025-07-16 A | 2025-07-21 A | CO-SD-PO-K1-100-P3 | 100% |  |
| CO-SD-PO-K1-110-P1 |  | Finished Grouted Riprap - PART 1 | 21d | 2026-10-06 | 2026-10-29 | CO-SD-PO-K1-100-P1 |  | -141d |
| CO-SD-PO-K1-110-P2 |  | Finished Grouted Riprap - PART 2 | 21d | 2026-10-31 | 2026-11-23 | CO-SD-PO-K1-110-P1, CO-SD-PO-K1-100-P2 |  | -141d |
| CO-SD-PO-K1-110-P3 |  | Finished Grouted Riprap - PART 3 | 21d | 2026-11-24 | 2026-12-17 | CO-SD-PO-K1-110-P2, CO-SD-PO-K1-100-P3 |  | -141d |
| CO-SD-PO-K1-110-P4 |  | Finished Grouted Riprap - PART 4 | 21d | 2026-12-19 | 2027-01-11 | CO-SD-PO-K1-110-P3, CO-SD-PO-K1-100-P4 |  | -141d |
| CO-SD-PO-K1-120 |  | Outfall structure | 26d | 2027-01-12 | 2027-02-10 | CO-SD-PO-K1-110-P4 |  | -141d |
| CO-SD-PO-K1-130 |  | Acess Entrace Ramp | 26d | 2027-02-11 | 2027-03-17 | CO-SD-PO-K1-120, PRO-DPO-CV-DL-10 FF+3d |  | -141d |
|  | 2 | **Storm Drainage Pond ( PO-J2)** |  | 2026-12-22 | 2027-08-04 |  |  |  |
| CO-SD-PO-K2-100-P1 |  | Excavation & Filling Works - PART 1 | 21d | 2026-12-22 | 2027-01-14 | CO-SD-PO-K1-100-P1, PRO-DPO-CV-1DL-20, ENG-SH-DPO-A-110, ENG-MS-DPO-A-110, ENG-MT-DPO-CV-A-110 |  | -215d |
| CO-SD-PO-K2-100-P2 |  | Excavation & Filling Works - PART 2 | 21d | 2027-01-16 | 2027-02-08 | CO-SD-PO-K2-100-P1 |  | -215d |
| CO-SD-PO-K2-110-P1 |  | Finished Grouted Riprap - PART 1 | 21d | 2027-01-16 | 2027-02-08 | CO-SD-PO-K2-100-P1 |  | -215d |
| CO-SD-PO-K2-110-P2 |  | Finished Grouted Riprap - PART 2 | 21d | 2027-02-09 | 2027-03-06 | CO-SD-PO-K2-100-P2, CO-SD-PO-K2-110-P1 |  | -215d |
| CO-SD-PO-K2-100-P3 |  | Excavation & Filling Works - PART 3 | 21d | 2027-03-18 | 2027-04-11 | CO-SD-PO-K2-100-P2, PRO-DPO-CV-DL-20 |  | -243d |
| CO-SD-PO-K2-100-P4 |  | Excavation & Filling Works - PART 4 | 21d | 2027-04-12 | 2027-05-05 | CO-SD-PO-K2-100-P3 |  | -243d |
| CO-SD-PO-K2-110-P3 |  | Finished Grouted Riprap - PART 3 | 21d | 2027-04-12 | 2027-05-05 | CO-SD-PO-K2-100-P3, CO-SD-PO-K2-110-P2 |  | -243d |
| CO-SD-PO-K2-110-P4 |  | Finished Grouted Riprap - PART 4 | 21d | 2027-05-06 | 2027-06-05 | CO-SD-PO-K2-100-P4, CO-SD-PO-K2-110-P3 |  | -243d |
| CO-SD-PO-K2-120 |  | Outfall structure | 26d | 2027-06-06 | 2027-07-05 | CO-SD-PO-K2-110-P4 |  | -243d |

| ID | WBS | Task | Duration | Start | Finish | Predecessors | Complete | Total float |
| --- | --- | --- | --- | --- | --- | --- | --- | --- |
| CO-SD-PO-K2-130 |  | Acess Entrace Ramp | 26d | 2027-07-06 | 2027-08-04 | CO-SD-PO-K2-120, PRO-DPO-CV-DL-20 FF+3d |  | -243d |
|  | TC | **Testing and Comissioning** |  | 2026-06-01 | 2027-10-31 |  |  |  |
|  | INF | **Infrastructure Networks** |  | 2026-06-01 | 2027-10-31 |  |  |  |
|  | PW1 | **Irrigation Network** |  | 2026-06-05 | 2027-08-10 |  |  |  |
| T/C-IR |  | Testing and Commissioning of Irrigation Network | 12d | 2026-06-05 A | 2027-08-10 | TIE-IR-R09, TIE-IR-R10, TIE-IR-R11, TIE-IR-R14, TIE-IR-R15, TIE-IR-R16, TIE-IR-R17, TIE-IR-R18 | 25% | -177d |
|  | PW | **Potable Water Network** |  | 2026-07-01 | 2027-09-28 |  |  |  |
| T/C-PW |  | Testing and Commissioning of Potable Water Network | 12d | 2026-07-01 A | 2027-09-28 | TIE-PW-R09, TIE-PW-R10, TIE-PW-R11, TIE-PW-R14, TIE-PW-R15, TIE-PW-R16, TIE-PW-R17, TIE-PW-R18 | 55% | -218d |
|  | SW | **Sewage Network** |  | 2026-06-01 | 2027-10-10 |  |  |  |
| T/C-SW |  | Testing and Commissioning of Sewage Network | 12d | 2026-06-01 A | 2027-10-10 | TIE-SW-R09, TIE-SW-R10, TIE-SW-R11, TIE-SW-R14, TIE-SW-R15, TIE-SW-R16, TIE-SW-R17, T/C-SPS FF, TIE-SW-R18 | 80% | -228d |
|  | SD | **Storm Drainage Network** |  | 2026-06-10 | 2027-09-12 |  |  |  |
| T/C-SD |  | Testing and Commissioning of Storm Drainage Network | 10d | 2026-06-10 A | 2027-09-12 | TIE-SD-R09, TIE-SD-R10, TIE-SD-R11, TIE-SD-R14, TIE-SD-R15, TIE-SD-R16, TIE-SD-R17, T/C-DPO FF, TIE-SD-R18, CO-R10.S03-WE-SD-160 | 80% | -205d |
|  | SL | **Street Lighting Network** |  | 2026-09-05 | 2027-10-24 |  |  |  |
| T/C-SL |  | Testing and Commissioning of Street Lighting Network | 18d | 2026-09-05 A | 2027-10-24 | TIE-R09-SL, TIE-R10-SL, TIE-R11-SL, TIE-R14-SL, TIE-R15-SL, TIE-R16-SL, TIE-R17-SL, TIE-R18-SL10 | 32% | -240d |
|  | TE | **Telecom Network** |  | 2026-09-05 | 2027-09-20 |  |  |  |
| T/C-TE |  | Testing and Commissioning of Telecom Network | 10d | 2026-09-05 A | 2027-09-20 | TIE-R09-TE, TIE-R10-TE, TIE-R11-TE, TIE-R14-TE, TIE-R15-TE, TIE-R16-TE, TIE-R17-TE, T/C-DPO, TIE-R18-TE10 | 32% | -227d |
|  | MV | **Medium Voltage Network** |  | 2026-09-05 | 2027-10-03 |  |  |  |
| T/C-MV |  | Testing and Commissioning of Medium Voltage Network | 10d | 2026-09-05 A | 2027-10-03 | TIE-R09-MV, TIE-R10-MV, TIE-R11-MV, TIE-R14-MV, TIE-R15-MV, TIE-R16-MV, TIE-R17-MV, T/C-TE, TIE-R18-MV10 | 50% | -227d |
|  | RD | **Road Works** |  | 2026-08-16 | 2027-10-31 |  |  |  |
| T/C-RD |  | Testing and Commissioning of Road Works | 5d | 2026-08-16 A | 2027-10-31 | TIE-R10-RD, TIE-R11-RD, TIE-R14-RD, T/C-MV | 55% | -245.5d |
|  | 1 | **Independent Works** |  | 2027-08-05 | 2027-10-10 |  |  |  |
| T/C-DPO |  | Testing and Commissioning of Storm Drainage Ponds | 30d | 2027-08-05 | 2027-09-08 | CO-SD-PO-K1-130, CO-SD-PO-K2-130 |  | -228d |
| T/C-SPS |  | Testing and Commissioning of Sewage Pump Stations | 26d | 2027-09-09 | 2027-10-10 | CO-SW-PS7-SWS-110, T/C-DPO |  | -228d |
|  | 1 | **Handing over and close out** |  | 2027-07-14 | 2027-11-08 |  |  |  |
|  | 2 | **As-Built** |  | 2027-07-14 | 2027-11-02 |  |  |  |
| HO-180 |  | Submission As-Built Drawing For Irrigation Network | 12d | 2027-07-14 | 2027-07-27 | MS-CF-IR |  | -179d |
| HO-210 |  | Submission As-Built Drawing For Pump station | 12d | 2027-07-26 | 2027-08-08 | MS-MO-10 |  | -177d |
| HO-160 |  | Submission As-Built Drawing For Telecom Network | 12d | 2027-07-28 | 2027-08-10 | MS-CF-TE, HO-180 |  | -179d |
| HO-130 |  | Submission As-Built Drawing For Pond | 12d | 2027-08-05 | 2027-08-18 | MS-MO-20, HO-180 |  | -186d |
| HO-170 |  | Submission As-Built Drawing For Medium Voltage Network | 12d | 2027-08-22 | 2027-09-04 | MS-CF-MV, HO-180 |  | -200d |
| HO-200 |  | Submission As-Built Drawing For Storm Network | 12d | 2027-08-24 | 2027-09-06 | MS-CF-SD |  | -202d |
| HO-190 |  | As-Built Drawing For Potable Water Network | 12d | 2027-08-31 | 2027-09-13 | MS-CF-PW |  | -208d |
| HO-150 |  | Submission As-Built Drawing For Street Lighting Network | 12d | 2027-09-12 | 2027-09-26 | MS-CF-SL |  | -218d |
| HO-100 |  | Submission As-Built Drawing For Sewage Network | 7d | 2027-10-25 | 2027-11-02 | MS-CF-IR, MS-CF-SL, MS-CF-TE, MS-CF-RD, MS-CF-MV, MS-CF-SD, MS-CF-SW, MS-CF-PW, MS-MO-10, MS-MO-20, MS-MO-30 |  | -244.5d |
| HO-140 |  | Submission As-Built Drawing For Roads Network | 5d | 2027-10-25 | 2027-10-31 | MS-CF-RD |  | -247.5d |
|  | 1 | **De-Mobilization Works** |  | 2027-10-31 | 2027-11-06 |  |  |  |
| HO-120 |  | Remove material stock & Storage area | 5d | 2027-10-31 | 2027-11-06 | HO-110 FF, HO-110 SS |  | -245.5d |
| HO-220 |  | Removing Portable Caravan | 5d | 2027-10-31 | 2027-11-06 | HO-110 SS, HO-110 FF |  | -245.5d |
| HO-230 |  | Remove Temporary Car Shades | 5d | 2027-10-31 | 2027-11-06 | HO-110 SS, HO-110 FF |  | -245.5d |
|  | 3 | **Handing Over** |  | 2027-10-31 | 2027-11-08 |  |  |  |
| HO-110 |  | Final Testing Work | 5d | 2027-10-31 | 2027-11-06 | HO-100 FF, T/C-PW, T/C-SW, T/C-SD, T/C-SL, T/C-TE, T/C-MV, T/C-RD, T/C-SPS, T/C-DPO, T/C-IR, HO-210 FF, HO-200 FF, HO-190 FF, HO-150 FF, HO-180 FF, HO-170 FF, HO-130 FF, HO-160 FF, HO-140 FF |  | -245.5d |
| HO-250 |  | Review B.O.Q Qty. to ensure compliance with the actual status | 5d | 2027-10-31 | 2027-11-06 | HO-260 SS |  | -247.5d |
| HO-260 |  | Review FIR Approval to ensure compliance with the actual status | 5d | 2027-10-31 | 2027-11-06 | MS-CF-TE, MS-CF-MV, MS-CF-IR, MS-CF-SL, MS-CF-SW, MS-CF-PW, MS-CF-SD, MS-CF-RD, HO-270 SS |  | -247.5d |
| HO-270 |  | Review the sample drawing to ensure compliance with the actual status | 5d | 2027-10-31 | 2027-11-06 | HO-180, HO-150, HO-190, HO-130, HO-160, HO-170, HO-200, HO-210, HO-100 FF, HO-140 |  | -247.5d |
| HO-240 |  | Final Walkthrough and Inspection | 2d | 2027-11-06 | 2027-11-08 | HO-250, HO-260, HO-270 |  | -247.5d |
| HO-280 |  | Punch List Completion | 2d | 2027-11-06 | 2027-11-08 | HO-250, HO-260, HO-270, HO-110 FF, HO-240 FF |  | -247.5d |

## Version 4 (data date 2026-10-13, saved 2026-10-13, file 03.DAM3-02-007-UPS Level 5 -13-10-2026.xer)

Note of the change: Name weekly folders by the Thursday each week starts on (W01 - 01-Oct-2026 … W10 - 03-Dec-2026); tidy step keeps uploads in place

Last finish 2027-11-08 → 2027-12-20 (+42d). Complete tasks 1147 → 1173.

Changed:

| ID | Task | Start | Finish | Duration | Total float | Predecessors | Other |
| --- | --- | --- | --- | --- | --- | --- | --- |
| MS | **Key Milestones** |  | 2027-11-08 → 2027-12-20 (+42d) |  |  |  |  |
| CM | **Contractual Milestones** |  | 2027-11-08 → 2027-12-20 (+42d) |  |  |  |  |
| MS-CF-MV | Completion of Construction Works for Medium Voltage Network | 2027-08-21 → 2027-03-23 (-151d) | 2027-08-21 → 2027-03-23 (-151d) |  | -245d → -121d |  |  |
| MS-CF-TE | Completion of Construction Works for Telecom Network | 2027-04-28 → 2027-05-10 (+12d) | 2027-04-28 → 2027-05-10 (+12d) |  | -200d → -210d |  |  |
| MS-CF-IR | Completion of Construction Works for Irrigation Network | 2027-07-13 → 2027-07-22 (+9d) | 2027-07-13 → 2027-07-22 (+9d) |  | -212d → -220d |  |  |
| MS-CF-SW | Completion of Construction Works for Sewage Network | 2027-08-03 → 2027-08-12 (+9d) | 2027-08-03 → 2027-08-12 (+9d) |  | -221d → -229d | CO-R09.S01-SW-130, CO-R09-SW-TF-100, CO-R09-SW-TF-110, CO-R09-SW-TF-120, CO-R18-SW-TF-100, CO-R18-SW-TF-110, CO-R18-SW-TF-130, CO-R10-SW-TF-100, CO-R10-SW-TF-110, CO-R10-SW-TF-130, CO-R11.S05-SW-130, CO-R11-SW-TF-100, CO-R11-SW-TF-110, CO-R11-SW-TF-130, CO-R14.S07-SW-130, CO-R14-SW-TF-100, CO-R14-SW-TF-110, CO-R14-SW-TF-130, CO-R15.S09-SW-130, CO-R15-SW-TF-100, CO-R15-SW-TF-110, CO-R15-SW-TF-130, CO-R16.S11-SW-130, CO-R16-SW-TF-100, CO-R16-SW-TF-110, CO-R16-SW-TF-130, CO-R17.S13-SW-130, CO-R17-SW-TF-100, CO-R17-SW-TF-110, CO-R17-SW-TF-130, CO-R11.S06-SW-130 FF, CO-R14.S08-SW-130 FF, CO-R09.S02-SW-130 FF → CO-R09.S01-SW-130, CO-R09-SW-TF-100, CO-R09-SW-TF-110, CO-R09-SW-TF-120, CO-R18-SW-TF-100, CO-R18-SW-TF-110, CO-R18-SW-TF-130, CO-R10-SW-TF-100, CO-R10-SW-TF-110, CO-R10-SW-TF-130, CO-R11.S05-SW-130, CO-R11-SW-TF-100, CO-R11-SW-TF-110, CO-R11-SW-TF-130, CO-R14.S07-SW-130, CO-R14-SW-TF-100, CO-R14-SW-TF-110, CO-R14-SW-TF-130, CO-R15.S09-SW-130, CO-R15-SW-TF-100, CO-R15-SW-TF-110, CO-R15-SW-TF-130, CO-R16.S11-SW-130, CO-R16-SW-TF-100, CO-R16-SW-TF-110, CO-R16-SW-TF-130, CO-R17.S13-SW-130, CO-R17-SW-TF-100, CO-R17-SW-TF-110, CO-R17-SW-TF-130, CO-R11.S06-SW-130 FF, CO-R14.S08-SW-130 FF, CO-R09.S02-SW-130 FF, CO-R09.S01-SW-210 |  |
| MS-CF-SD | Completion of Construction Works for Storm Drainage Network | 2027-08-23 → 2027-09-01 (+9d) | 2027-08-23 → 2027-09-01 (+9d) |  | -205d → -217d | CO-R09.S01-SD-130, CO-R09.S01-SD-170, CO-R09-SD-TF-100, CO-R09-SD-TF-110, CO-R09-SD-TF-120, CO-R09-SD-TF-130, CO-R18-SD-TF-100, CO-R18-SD-TF-110, CO-R18-SD-TF-120, CO-R18-SD-TF-130, CO-R10.S03-ES-SD-130, CO-R10.S03-ES-SD-170, CO-R10-SD-TF-100, CO-R10-SD-TF-110, CO-R10-SD-TF-120, CO-R10-SD-TF-130, CO-R11.S05-SD-130, CO-R11.S05-SD-170, CO-R11-SD-TF-100, CO-R11-SD-TF-110, CO-R11-SD-TF-120, CO-R11-SD-TF-130, CO-R14.S07-SD-130, CO-R14.S07-SD-170, CO-R14-SD-TF-110, CO-R14-SD-TF-120, CO-R14-SD-TF-130, CO-R15.S09-SD-130, CO-R15.S09-SD-170, CO-R15-SD-TF-100, CO-R15-SD-TF-110, CO-R15-SD-TF-120, CO-R15-SD-TF-130, CO-R16.S11-SD-130, CO-R16.S11-SD-170, CO-R16-SD-TF-100, CO-R16-SD-TF-110, CO-R16-SD-TF-120, CO-R16-SD-TF-130, CO-R17.S13-SD-130, CO-R17.S13-SD-170, CO-R17-SD-TF-100, CO-R17-SD-TF-110, CO-R17-SD-TF-120, CO-R17-SD-TF-130, CO-R14-SD-TF-100, CO-R10.S03-WE-SD-130, CO-R10.S03-WE-SD-170 → CO-R09.S01-SD-130, CO-R09.S01-SD-170, CO-R09-SD-TF-100, CO-R09-SD-TF-110, CO-R09-SD-TF-120, CO-R09-SD-TF-130, CO-R18-SD-TF-100, CO-R18-SD-TF-110, CO-R18-SD-TF-120, CO-R18-SD-TF-130, CO-R10.S03-ES-SD-130, CO-R10.S03-ES-SD-170, CO-R10-SD-TF-100, CO-R10-SD-TF-110, CO-R10-SD-TF-120, CO-R10-SD-TF-130, CO-R11.S05-SD-130, CO-R11.S05-SD-170, CO-R11-SD-TF-100, CO-R11-SD-TF-110, CO-R11-SD-TF-120, CO-R11-SD-TF-130, CO-R14.S07-SD-130, CO-R14.S07-SD-170, CO-R14-SD-TF-110, CO-R14-SD-TF-120, CO-R14-SD-TF-130, CO-R15.S09-SD-130, CO-R15.S09-SD-170, CO-R15-SD-TF-100, CO-R15-SD-TF-110, CO-R15-SD-TF-120, CO-R15-SD-TF-130, CO-R16.S11-SD-130, CO-R16.S11-SD-170, CO-R16-SD-TF-100, CO-R16-SD-TF-110, CO-R16-SD-TF-120, CO-R16-SD-TF-130, CO-R17.S13-SD-130, CO-R17.S13-SD-170, CO-R17-SD-TF-100, CO-R17-SD-TF-110, CO-R17-SD-TF-120, CO-R17-SD-TF-130, CO-R14-SD-TF-100, CO-R10.S03-WE-SD-130, CO-R10.S03-WE-SD-170, PRO-R11-SD-DL-140, CO-R09.S01-SD-210 | constraint finish on or before 2027-01-12 → finish on or before 2026-12-12 |
| MS-CF-SL | Completion of Construction Works for Street Lighting Network | 2027-09-11 → 2027-10-03 (+22d) | 2027-09-11 → 2027-10-03 (+22d) |  | -274d → -292d |  |  |
| MS-CF-PW | Completion of Construction Works for Potable Water Network | 2027-08-30 → 2027-10-04 (+35d) | 2027-08-30 → 2027-10-04 (+35d) |  | -235d → -264d |  |  |
| MS-CF-RD | Completion of Construction Works for Road Works | 2027-10-25 → 2027-12-06 (+42d) | 2027-10-25 → 2027-12-06 (+42d) |  | -247.5d → -283.5d | CO-R09-S1-RD-F-150 FF, CO-R09-S2-RD-F-170 FF, CO-R18-S15-RD-F-130 FF, CO-R18-S16-RD-F-160 FF, CO-R10-S03-RD-F-100 FF, CO-R10-S04-RD-F-130 FF, CO-R11-S05-RD-F-100 FF, CO-R11-S06-RD-F-130 FF, CO-R11-S07-RD-F-100 FF, CO-R11-S08-RD-F-130 FF, CO-R15-S09-RD-F-100 FF, CO-R15-S10-RD-F-130 FF, CO-R16-S11-RD-F-100 FF, CO-R16-S12-RD-F-130 FF, CO-R17-S13-RD-F-100 FF, CO-R17-S14-RD-F-130 FF, CO-R09-S1-RD-F-140 FF, CO-R09-S2-RD-F-160 FF, CO-R18-S15-RD-F-120 FF, CO-R18-S16-RD-F-140 FF, CO-R10-S03-RD-F-160 FF, CO-R10-S04-RD-F-170 FF, CO-R11-S05-RD-F-160 FF, CO-R11-S06-RD-F-170 FF, CO-R11-S07-RD-F-160 FF, CO-R11-S08-RD-F-170 FF, CO-R15-S09-RD-F-160 FF, CO-R15-S10-RD-F-170 FF, CO-R16-S11-RD-F-160 FF, CO-R16-S12-RD-F-170 FF, CO-R17-S13-RD-F-160 FF, CO-R17-S14-RD-F-170 FF, CO-R18.S15-RD-P-150 FF, CO-R18.S16-RD-P-150 FF → CO-R09-S1-RD-F-150 FF, CO-R09-S2-RD-F-170 FF, CO-R18-S15-RD-F-130 FF, CO-R18-S16-RD-F-160 FF, CO-R10-S03-RD-F-100 FF, CO-R10-S04-RD-F-130 FF, CO-R11-S05-RD-F-100 FF, CO-R11-S06-RD-F-130 FF, CO-R11-S07-RD-F-100 FF, CO-R11-S08-RD-F-130 FF, CO-R15-S09-RD-F-100 FF, CO-R15-S10-RD-F-130 FF, CO-R16-S11-RD-F-100 FF, CO-R16-S12-RD-F-130 FF, CO-R17-S13-RD-F-100 FF, CO-R17-S14-RD-F-130 FF, CO-R09-S1-RD-F-140 FF, CO-R09-S2-RD-F-160 FF, CO-R18-S15-RD-F-120 FF, CO-R18-S16-RD-F-140 FF, CO-R10-S03-RD-F-160 FF, CO-R10-S04-RD-F-170 FF, CO-R11-S05-RD-F-160 FF, CO-R11-S06-RD-F-170 FF, CO-R11-S07-RD-F-160 FF, CO-R11-S08-RD-F-170 FF, CO-R15-S09-RD-F-160 FF, CO-R15-S10-RD-F-170 FF, CO-R16-S11-RD-F-160 FF, CO-R16-S12-RD-F-170 FF, CO-R17-S13-RD-F-160 FF, CO-R17-S14-RD-F-170 FF, CO-R18.S15-RD-P-150 FF, CO-R18.S16-RD-P-150 FF, CO-R18.S16-PW-270 |  |
| MS-CF-PF | Project Completion Date | 2027-11-08 → 2027-12-20 (+42d) | 2027-11-08 → 2027-12-20 (+42d) |  | -247.5d → -283.5d |  |  |
| CM1 | **Control Milestones** |  | 2026-10-06 → 2026-12-14 (+69d) |  |  |  |  |
| MS-CS-SW | The Employer Approval NOC for Sewage Network |  |  |  |  | CO-R18.S15-SW-220 SS → CO-R09.S01-SW-100 SS |  |
| MS-CS-SD | The Employer Approval NOC for Storm Drainage Network |  |  |  |  | CO-R18.S15-SD-230 SS → CO-R09.S01-SD-100 SS |  |
| MS-CS-IR | The Employer Approval NOC for Irrigation Network |  |  |  |  | CO-R18.S15-IR-140 SS → CO-R09.S01-IR-100 SS |  |
| MS-CS-PW | The Employer Approval NOC for Potable Water Network |  |  |  |  | CO-R18.S16-PW-230 SS → CO-R09.S02-EW-120 |  |
| MS-CS-SL | The Employer Approval NOC for Street Lighting Network |  |  |  |  | CO-R18.S16-SL-100 SS → CO-R09.S01-EW-110 |  |
| MS-CS-TE | The Employer Approval NOC for Telecom Network |  |  |  |  | CO-R18.S15-TE-170 SS → ENG-SH-TE-A-110 |  |
| MS-CS-RD | The Employer Approval NOC for Roads Works |  |  |  |  | CO-R18.S15-RD-P-160 SS → ENG-SH-RD-A-100 |  |
| MS-CS-MV | The Employer Approval NOC for Medium Voltage Network | 2026-10-06 → 2026-12-14 (+69d) | 2026-10-06 → 2026-12-14 (+69d) |  | -141d → -195d | CO-R18.S15-MV-ML-340 SS → CO-R09.S01-MV-100 SS |  |
| MM | **Intermediate Milestones** | 2027-07-25 → 2027-06-15 (-40d) | 2027-10-25 → 2027-12-06 (+42d) |  |  |  |  |
| MS-MO-10 | Completion of Sewage Pump Stations | 2027-07-25 → 2027-06-15 (-40d) | 2027-07-25 → 2027-06-15 (-40d) |  | -177d → -143d |  |  |
| MS-MO-20 | Completion of Storm Drainage Ponds | 2027-08-04 → 2027-08-02 (-2d) | 2027-08-04 → 2027-08-02 (-2d) |  | -186d → -184d |  |  |
| MS-MO-30 | Completion of Tie In To Existing Networks | 2027-10-25 → 2027-12-06 (+42d) | 2027-10-25 → 2027-12-06 (+42d) |  | -244.5d → -280.5d |  |  |
| ENG-MT-PW-TF-A-100 | Material Approval for Surface Box of Potable Water Network |  |  | 0d → 0.63d |  |  |  |
| ENG-MT-MV-A-10 | Material Approval for RMU of Medium Voltage Network |  |  |  |  |  | resources Supply & installation of (33) kv MV Switch (RMU) for Normally-open Points (NOP) according to the Saudi Electric Company specification [3] → Supply & installation of (33) kv MV Switch (RMU) for Normally-open Points (NOP) according to the Saudi Electric Company specification |
| ENG-MT-SPS-MC-A-110 | Material Approval for Electromechanical Works for Sewage Pump Stations |  |  |  |  |  | resources Constant speed drive, sewage pumps, centrifugal submersible type; 2 duty / 1 standby capable of delivering a flow rate of flow 424 l/s against a total head of 22m, rate includes provision of MCC [1]; Odour control system [1]; Gate valves for the pump station [3]; Non return valves for the pump station [3]; Penstok for the pump station [1]; Standby Diesel Generator Set 400/230KVA, 3P, 60Hz in Sound Attenuated Enclosure KVA rating by contractor as per total load onsite after pumps selection [1]; Supply, install, test and commission of manually operated fuel pump, The pump should be supplied with all accessories as specified. [1]; Supply, install, test and commission of Fuel pump with capacity of not less than 1 hour to fill the daily tank of generator at required head. [1]; supply, install, test & commission Automatic Transfer Switch ATS panel including all accessories & works required. [1]; Supply, install, test and commission under ground fuel tank for 3 days of continuous operation of the standby generator at full load. The tank should be supplied with all accessories such as black steel pipes, float switches with two contactors …etc. as s [1]; 4Cx 185mm2 Cu/XLPE//PVC from nearest power supply (SEC) and generator to the ATS and from ATS to MCC-SPS [600]; 4Cx 95mm2 Cu/XLPE//PVC from nearest power supply (SEC) and generator to the ATS and from ATS to MCC-SPS [400]; 4Cx 10mm2 Cu/XLPE/SWA/PVC from MCC-SPS to ELP [50]; 4Cx 150mm2 + 1Cx25mm2 SUBMERGED RUBBER INSULATED FLEXIBLE CABLE from MCC to PUMP1& PUMP2. [210]; 4Cx 10mm2 + 1Cx10mm2 Cu/XLPE/PVC FROM MCC-SPS to DB-SPS [50]; 4Cx 10mm2 + 1Cx10mm2 Cu/XLPE/PVC FROM MCC-SPS to Penstok [100]; 4Cx 10mm2 + 1Cx10mm2 Cu/XLPE/PVC FROM MCC-SPS to Odor Control Unit [100]; 4Cx 6mm2 + 1Cx6mm2 Cu/XLPE/PVC FROM MCC-SPS to the mechanical bar screen [80]; 3Cx 6mm2 Cu/XLPE/PVC FROM MCC-SPS to the two fuel pumps. [100]; 3Cx 4mm2 Cu/XLPE/PVC to the AC. [80]; MCC [1]; Surge protection system study [1]; Surge protection system [1]; Local Control Panel, IP 65 [4]; Isolator/disconnect switches IP65 [16]; DB-SPS Panel [4]; ELP Panel: phtocell , timer,40 Ampere, 3P, IP66,60Hz incomer MCCB & 5ways outgoing MCCB [4]; Electrical Hand Hole 600mm x 600mm x 800mm concrete hand hole with hot dip galvanized heavy duty steel cover [10]; Electrical Hand Hole 400mm x 400mm x 600mm concrete hand hole with hot dip galvanized heavy duty steel cover [10]; Surfaced Mounted Light [8]; 13A DOUBLE SWITCH SOCKET OUTLET (WEATHER PROOF) [8]; 20A SWITCH SOCKET OUTLET (FOR SPLIT UNIT), (WEATHER PROOF) [8]; Supply, install and test the following grounding and lightning system including ground wires, ground rods, inspection pits, terminations, bonding/clamping, civil works and all materials and accessories required to complete the work according to specificat [2]; Supply and install telephone and fire alarm system including smoke detector, cabinet, control panel, cables, conduits, switches, and other accessories to complete as per drawings and specifications. [1]; "Supply, installation, testing and commissioning of PLC system, serving the pumping station and all related utilities. The PLC shall consists but limited to the following: [2]; Supply, installation, testing and commissioning of all control, instrumentation( as shown on the P & ID drawings cable schedule) including all installation accessories such as termination kits, lugs, glands, cable containments, junction boxes , conduits, [2]; Supply, installation, testing and commissioning of all field instruments such as hydrostatic level meter, level switches, flow switch, and all necessary instruments including all installation accessories, etc. all as per specifications and design drawings [2]; DX wall mounted Split/AC [2]; CO2 fire extinguishers [2]; Powder fire extinguishers [2]; Flood lights shall be high pole with 250 watt HPS luminaire [4]; 1 - way duct - not exceeding 1.5m deep [1]; 2 - way duct - not exceeding 1.5m deep [1]; 8 - way duct - not exceeding 1.5m deep [1]; Earth pits [1]; Cable draw pit, 600x600mm [1] → Constant speed drive, sewage pumps, centrifugal submersible type; 2 duty / 1 standby capable of delivering a flow rate of flow 424 l/s against a total head of 22m, rate includes provision of MCC [1]; Odour control system [1]; Gate valves for the pump station [3]; Non return valves for the pump station [3]; Penstok for the pump station [1]; Standby Diesel Generator Set 400/230KVA, 3P, 60Hz in Sound Attenuated Enclosure KVA rating by contractor as per total load onsite after pumps selection [1]; Supply, install, test and commission of manually operated fuel pump, The pump should be supplied with all accessories as specified. [1]; Supply, install, test and commission of Fuel pump with capacity of not less than 1 hour to fill the daily tank of generator at required head. [1]; supply, install, test & commission Automatic Transfer Switch ATS panel including all accessories & works required. [1]; Supply, install, test and commission under ground fuel tank for 3 days of continuous operation of the standby generator at full load. The tank should be supplied with all accessories such as black steel pipes, float switches with two contactors …etc. as s [1]; 4Cx 185mm2 Cu/XLPE//PVC from nearest power supply (SEC) and generator to the ATS and from ATS to MCC-SPS [600]; 4Cx 95mm2 Cu/XLPE//PVC from nearest power supply (SEC) and generator to the ATS and from ATS to MCC-SPS [400]; 4Cx 10mm2 Cu/XLPE/SWA/PVC from MCC-SPS to ELP [50]; 4Cx 150mm2 + 1Cx25mm2 SUBMERGED RUBBER INSULATED FLEXIBLE CABLE from MCC to PUMP1& PUMP2. [210]; 4Cx 10mm2 + 1Cx10mm2 Cu/XLPE/PVC FROM MCC-SPS to DB-SPS [50]; 4Cx 10mm2 + 1Cx10mm2 Cu/XLPE/PVC FROM MCC-SPS to Penstok [100]; 4Cx 10mm2 + 1Cx10mm2 Cu/XLPE/PVC FROM MCC-SPS to Odor Control Unit [100]; 4Cx 6mm2 + 1Cx6mm2 Cu/XLPE/PVC FROM MCC-SPS to the mechanical bar screen [80]; 3Cx 6mm2 Cu/XLPE/PVC FROM MCC-SPS to the two fuel pumps. [100]; 3Cx 4mm2 Cu/XLPE/PVC to the AC. [80]; MCC [1]; Surge protection system study [1]; Surge protection system [1]; Local Control Panel, IP 65 [4]; Isolator/disconnect switches IP65 [16]; DB-SPS Panel [4]; ELP Panel: phtocell , timer,40 Ampere, 3P, IP66,60Hz incomer MCCB & 5ways outgoing MCCB [4]; Electrical Hand Hole 600mm x 600mm x 800mm concrete hand hole with hot dip galvanized heavy duty steel cover [10]; Electrical Hand Hole 400mm x 400mm x 600mm concrete hand hole with hot dip galvanized heavy duty steel cover [10]; Surfaced Mounted Light [8]; 13A DOUBLE SWITCH SOCKET OUTLET (WEATHER PROOF) [8]; 20A SWITCH SOCKET OUTLET (FOR SPLIT UNIT), (WEATHER PROOF) [8]; Supply, install and test the following grounding and lightning system including ground wires, ground rods, inspection pits, terminations, bonding/clamping, civil works and all materials and accessories required to complete the work according to specificat [2]; Supply and install telephone and fire alarm system including smoke detector, cabinet, control panel, cables, conduits, switches, and other accessories to complete as per drawings and specifications. [1]; "Supply, installation, testing and commissioning of PLC system, serving the pumping station and all related utilities. The PLC shall consists but limited to the following:; Supply, installation, testing and commissioning of all control, instrumentation( as shown on the P & ID drawings cable schedule) including all installation accessories such as termination kits, lugs, glands, cable containments, junction boxes , conduits, [2]; Supply, installation, testing and commissioning of all field instruments such as hydrostatic level meter, level switches, flow switch, and all necessary instruments including all installation accessories, etc. all as per specifications and design drawings [2]; DX wall mounted Split/AC [2]; CO2 fire extinguishers [2]; Powder fire extinguishers [2]; Flood lights shall be high pole with 250 watt HPS luminaire [4]; 1 - way duct - not exceeding 1.5m deep [1]; 2 - way duct - not exceeding 1.5m deep [1]; 8 - way duct - not exceeding 1.5m deep [1]; Earth pits [1]; Cable draw pit, 600x600mm [1] |
| PROC | **Procurement Cycle** |  | 2027-07-22 → 2027-07-29 (+7d) |  |  |  |  |
| NLL | **Short Lead Time Items** |  | 2027-07-22 → 2027-07-29 (+7d) |  |  |  |  |
| INF | **Infrastructure Networks** |  | 2027-07-22 → 2027-07-29 (+7d) |  |  |  |  |
| RD | **Road Works** |  | 2027-07-22 → 2027-07-29 (+7d) |  |  |  |  |
| PRO-RD-MF-110 | Manufacturing of Aggregate Base Course for Road Works |  |  | 90d → 110d |  |  |  |
| 1DL | **1st Material Delivery & Site Inspection** |  | 2026-10-12 → 2026-10-19 (+7d) |  |  |  |  |
| 2 | **Pavement Works** | 2026-10-06 → 2026-10-13 (+7d) | 2026-10-12 → 2026-10-19 (+7d) |  |  |  |  |
| PRO-RD-1DL-140 | 1ST Material Delivery for Interlock Tiles of Landscaping | 2026-10-06 → 2026-10-13 (+7d) | 2026-10-12 → 2026-10-19 (+7d) |  | -211d → -13d |  |  |
| PRO-RD-1DL-150 | 1ST Material Delivery for Curbstones of Landscaping | 2026-10-06 → 2026-10-13 (+7d) | 2026-10-12 → 2026-10-19 (+7d) |  | -211d → 14d |  |  |
| 3 | **Traffic Signs Boards and Roads Marking** | 2026-10-06 → 2026-10-13 (+7d) | 2026-10-12 → 2026-10-19 (+7d) |  |  |  |  |
| PRO-RD-1DL-160 | 1ST Material Delivery for Traffic Signs Boards of Road Works | 2026-10-06 → 2026-10-13 (+7d) | 2026-10-12 → 2026-10-19 (+7d) |  | -211d → -217d |  |  |
| PRO-RD-1DL-170 | 1ST Material Delivery for Road Markings of Road Works | 2026-10-06 → 2026-10-13 (+7d) | 2026-10-12 → 2026-10-19 (+7d) |  | -185d → -191d |  |  |
| DL | **Material Delivery & Site Inspection** |  | 2027-07-22 → 2027-07-29 (+7d) |  |  |  |  |
| 1 | **Road 18 Local 1 ( 479 LM )** |  | 2026-12-12 → 2026-12-19 (+7d) |  |  |  |  |
| PRO-R18-RD-DL-180 | Material Delivery & Site Inspection of Interlock Tiles for Landscaping |  |  | 16d → 26d |  | PRO-RD-1DL-140, PRO-R18-RD-DL-230 → PRO-R18-RD-DL-230 |  |
| PRO-R18-RD-DL-190 | Material Delivery & Site Inspection of Curbstones for Landscaping |  |  |  |  | PRO-RD-1DL-150, PRO-R18-RD-DL-180 → PRO-R18-RD-DL-180 |  |
| 3 | **Traffic Signs Boards and Roads Marking** | 2026-10-13 → 2026-10-20 (+7d) | 2026-12-12 → 2026-12-19 (+7d) |  |  |  |  |
| PRO-R18-RD-DL-200 | Material Delivery & Site Inspection of Traffic Signs Boards For Road Works | 2026-10-13 → 2026-10-20 (+7d) | 2026-11-11 → 2026-11-18 (+7d) |  | -211d → -217d |  |  |
| PRO-R18-RD-DL-210 | Material Delivery & Site Inspection of Road Markings For Road Works | 2026-11-12 → 2026-11-19 (+7d) | 2026-12-12 → 2026-12-19 (+7d) |  | -211d → -217d |  |  |
| 9 | **Road 17 Local 1 ( 500 LM )** |  | 2027-01-11 → 2027-01-18 (+7d) |  |  |  |  |
| PRO-R17-RD-DL-100 | Material Delivery & Site Inspection of Interlock Tiles for Landscaping |  |  |  |  | PRO-RD-1DL-140, PRO-R18-RD-DL-180, PRO-R17-RD-DL-130 → PRO-R18-RD-DL-180, PRO-R17-RD-DL-130 |  |
| PRO-R17-RD-DL-110 | Material Delivery & Site Inspection of Curbstones for Landscaping |  |  |  |  | PRO-RD-1DL-150, PRO-R18-RD-DL-190, PRO-R17-RD-DL-100 → PRO-R18-RD-DL-190, PRO-R17-RD-DL-100 |  |
| 3 | **Traffic Signs Boards and Roads Marking** | 2026-11-12 → 2026-11-19 (+7d) | 2027-01-11 → 2027-01-18 (+7d) |  |  |  |  |
| PRO-R17-RD-DL-140 | Material Delivery & Site Inspection of Traffic Signs Boards For Road Works | 2026-11-12 → 2026-11-19 (+7d) | 2026-12-12 → 2026-12-19 (+7d) |  | -211d → -217d |  |  |
| PRO-R17-RD-DL-150 | Material Delivery & Site Inspection of Road Markings For Road Works | 2026-12-13 → 2026-12-20 (+7d) | 2027-01-11 → 2027-01-18 (+7d) |  | -211d → -217d |  |  |
| 8 | **Road 16 Local 1 ( 527 LM )** |  | 2027-02-10 → 2027-02-17 (+7d) |  |  |  |  |
| PRO-R16-RD-DL-120 | Material Delivery & Site Inspection of Interlock Tiles for Landscaping |  |  |  |  | PRO-RD-1DL-140, PRO-R17-RD-DL-100 → PRO-R17-RD-DL-100 |  |
| PRO-R16-RD-DL-130 | Material Delivery & Site Inspection of Curbstones for Landscaping |  |  | 4d → 26d |  | PRO-RD-1DL-150, PRO-R16-RD-DL-110 FF, PRO-R17-RD-DL-110 → PRO-R16-RD-DL-110 FF, PRO-R17-RD-DL-110 |  |
| 3 | **Traffic Signs Boards and Roads Marking** | 2026-12-13 → 2026-12-20 (+7d) | 2027-02-10 → 2027-02-17 (+7d) |  |  |  |  |
| PRO-R16-RD-DL-140 | Material Delivery & Site Inspection of Traffic Signs Boards For Road Works | 2026-12-13 → 2026-12-20 (+7d) | 2027-01-11 → 2027-01-18 (+7d) |  | -185d → -191d |  |  |
| PRO-R16-RD-DL-150 | Material Delivery & Site Inspection of Road Markings For Road Works | 2027-01-12 → 2027-01-19 (+7d) | 2027-02-10 → 2027-02-17 (+7d) |  | -211d → -217d |  |  |
| 7 | **Road 15 Local 1 ( 556 LM )** |  | 2027-03-17 → 2027-03-24 (+7d) |  |  |  |  |
| PRO-R15-RD-DL-100 | Material Delivery & Site Inspection for Subgrade of Road Works |  |  |  |  | PRO-RD-1DL-100 → PRO-RD-1DL-100, PRO-R16-RD-DL-100 |  |
| PRO-R15-RD-DL-130 | Material Delivery & Site Inspection of Curbstones for Landscaping |  |  |  |  | PRO-RD-1DL-150, PRO-R15-RD-DL-110 FF, PRO-R16-RD-DL-130 → PRO-R15-RD-DL-110 FF, PRO-R16-RD-DL-130 |  |
| PRO-R15-RD-DL-120 | Material Delivery & Site Inspection of Interlock Tiles for Landscaping |  |  |  |  | PRO-RD-1DL-140, PRO-R16-RD-DL-120 → PRO-R16-RD-DL-120 |  |
| 3 | **Traffic Signs Boards and Roads Marking** | 2027-01-12 → 2027-01-19 (+7d) | 2027-03-17 → 2027-03-24 (+7d) |  |  |  |  |
| PRO-R15-RD-DL-140 | Material Delivery & Site Inspection of Traffic Signs Boards For Road Works | 2027-01-12 → 2027-01-19 (+7d) | 2027-02-10 → 2027-02-17 (+7d) |  | -185d → -191d |  |  |
| PRO-R15-RD-DL-150 | Material Delivery & Site Inspection of Road Markings For Road Works | 2027-02-11 → 2027-02-18 (+7d) | 2027-03-17 → 2027-03-24 (+7d) |  | -211d → -217d |  |  |
| 4 | **Road 10 Local 2 ( 2352 LM )** |  | 2027-04-17 → 2027-04-24 (+7d) |  |  |  |  |
| PRO-R10-RD-DL-120 | Material Delivery & Site Inspection of Interlock Tiles for Landscaping |  |  |  |  | PRO-RD-1DL-140, PRO-R15-RD-DL-120 → PRO-R15-RD-DL-120 |  |
| PRO-R10-RD-DL-130 | Material Delivery & Site Inspection of Curbstones for Landscaping |  |  |  |  | PRO-RD-1DL-150, PRO-R10-RD-DL-110 FF, PRO-R15-RD-DL-130 → PRO-R10-RD-DL-110 FF, PRO-R15-RD-DL-130 |  |
| 3 | **Traffic Signs Boards and Roads Marking** | 2027-02-11 → 2027-02-18 (+7d) | 2027-04-17 → 2027-04-24 (+7d) |  |  |  |  |
| PRO-R10-RD-DL-140 | Material Delivery & Site Inspection of Traffic Signs Boards For Road Works | 2027-02-11 → 2027-02-18 (+7d) | 2027-03-17 → 2027-03-24 (+7d) |  | -185d → -191d |  |  |

| ID | Task | Start | Finish | Duration | Total float | Predecessors |
| --- | --- | --- | --- | --- | --- | --- |
| PRO-R10-RD-DL-150 | Material Delivery & Site Inspection of Road Markings For Road Works | 2027-03-18 → 2027-03-25 (+7d) | 2027-04-17 → 2027-04-24 (+7d) |  | -211d → -217d |  |
| 6 | **Road 14 Local 1 ( 584 LM )** |  | 2027-05-23 → 2027-05-30 (+7d) |  |  |  |
| PRO-R14-RD-DL-120 | Material Delivery & Site Inspection of Interlock Tiles for Landscaping |  |  |  |  | PRO-RD-1DL-140, PRO-R10-RD-DL-120 → PRO-R10-RD-DL-120 |
| PRO-R14-RD-DL-130 | Material Delivery & Site Inspection of Curbstones for Landscaping |  |  |  |  | PRO-RD-1DL-150, PRO-R14-RD-DL-110 FF, PRO-R10-RD-DL-130 → PRO-R14-RD-DL-110 FF, PRO-R10-RD-DL-130 |
| PRO-R14-RD-DL-160 | Material Delivery & Site Inspection for Prime Coat of Road Works |  |  |  |  | PRO-RD-1DL-120, PRO-R10-RD-DL-160 → PRO-RD-1DL-120 |
| PRO-R14-RD-DL-170 | Material Delivery & Site Inspection for Bituminous Base & Wearing Courses of Road Works |  |  |  |  | PRO-RD-1DL-130, PRO-R14-RD-DL-120, PRO-R10-RD-DL-170 → PRO-RD-1DL-130, PRO-R14-RD-DL-120 |
| 3 | **Traffic Signs Boards and Roads Marking** | 2027-03-18 → 2027-03-25 (+7d) | 2027-05-23 → 2027-05-30 (+7d) |  |  |  |
| PRO-R14-RD-DL-140 | Material Delivery & Site Inspection of Traffic Signs Boards For Road Works | 2027-03-18 → 2027-03-25 (+7d) | 2027-04-17 → 2027-04-24 (+7d) |  | -185d → -191d |  |
| PRO-R14-RD-DL-150 | Material Delivery & Site Inspection of Road Markings For Road Works | 2027-04-18 → 2027-04-25 (+7d) | 2027-05-23 → 2027-05-30 (+7d) |  | -211d → -217d |  |
| 2 | **Road 09 Local 2 ( 2278 LM )** |  | 2027-06-22 → 2027-06-29 (+7d) |  |  |  |
| PRO-R09-RD-DL-120 | Material Delivery & Site Inspection of Interlock Tiles for Landscaping |  |  |  |  | PRO-RD-1DL-140, PRO-R14-RD-DL-120 → PRO-R14-RD-DL-120 |
| PRO-R09-RD-DL-130 | Material Delivery & Site Inspection of Curbstones for Landscaping |  |  |  |  | PRO-RD-1DL-150, PRO-R09-RD-DL-110 FF, PRO-R14-RD-DL-130 → PRO-R09-RD-DL-110 FF, PRO-R14-RD-DL-130 |
| 4 | **Bituminous Construction** | 2026-11-12 → 2026-10-13 (-30d) | 2026-12-12 → 2026-11-11 (-31d) |  |  |  |
| PRO-R09-RD-DL-160 | Material Delivery & Site Inspection for Prime Coat of Road Works | 2026-11-12 → 2026-10-13 (-30d) | 2026-12-12 → 2026-11-11 (-31d) |  | -48d → -11d |  |
| PRO-R09-RD-DL-170 | Material Delivery & Site Inspection for Bituminous Base & Wearing Courses of Road Works | 2026-11-12 → 2026-10-13 (-30d) | 2026-12-12 → 2026-11-11 (-31d) |  | -81d → -55d |  |
| 3 | **Traffic Signs Boards and Roads Marking** | 2027-04-18 → 2027-04-25 (+7d) | 2027-06-22 → 2027-06-29 (+7d) |  |  |  |
| PRO-R09-RD-DL-140 | Material Delivery & Site Inspection of Traffic Signs Boards For Road Works | 2027-04-18 → 2027-04-25 (+7d) | 2027-05-23 → 2027-05-30 (+7d) |  | -185d → -191d |  |
| PRO-R09-RD-DL-150 | Material Delivery & Site Inspection of Road Markings For Road Works | 2027-05-24 → 2027-05-31 (+7d) | 2027-06-22 → 2027-06-29 (+7d) |  | -211d → -217d |  |
| 5 | **Road 11 Local 1 ( 670 LM )** |  | 2027-07-22 → 2027-07-29 (+7d) |  |  |  |
| PRO-R11-RD-DL-120 | Material Delivery & Site Inspection of Interlock Tiles for Landscaping |  |  |  |  | PRO-RD-1DL-140, PRO-R09-RD-DL-120 → PRO-R09-RD-DL-120 |
| PRO-R11-RD-DL-130 | Material Delivery & Site Inspection of Curbstones for Landscaping |  |  |  |  | PRO-RD-1DL-150, PRO-R11-RD-DL-110 FF, PRO-R09-RD-DL-130 → PRO-R11-RD-DL-110 FF, PRO-R09-RD-DL-130 |
| PRO-R11-RD-DL-160 | Material Delivery & Site Inspection for Prime Coat of Road Works |  |  |  |  | PRO-RD-1DL-120, PRO-R09-RD-DL-160 → PRO-RD-1DL-120 |
| PRO-R11-RD-DL-170 | Material Delivery & Site Inspection for Bituminous Base & Wearing Courses of Road Works |  |  |  |  | PRO-RD-1DL-130, PRO-R11-RD-DL-120, PRO-R09-RD-DL-170 → PRO-RD-1DL-130, PRO-R11-RD-DL-120 |
| 3 | **Traffic Signs Boards and Roads Marking** | 2027-05-24 → 2027-05-31 (+7d) | 2027-07-22 → 2027-07-29 (+7d) |  |  |  |
| PRO-R11-RD-DL-140 | Material Delivery & Site Inspection of Traffic Signs Boards For Road Works | 2027-05-24 → 2027-05-31 (+7d) | 2027-06-22 → 2027-06-29 (+7d) |  | -185d → -191d |  |
| PRO-R11-RD-DL-150 | Material Delivery & Site Inspection of Road Markings For Road Works | 2027-06-23 → 2027-06-30 (+7d) | 2027-07-22 → 2027-07-29 (+7d) |  | -211d → -217d |  |
| SW | **Sewage Network** |  | 2027-04-10 → 2027-04-17 (+7d) |  |  |  |
| DL | **Material Delivery & Site Inspection** |  | 2027-04-10 → 2027-04-17 (+7d) |  |  |  |
| PRO-R18-SW-DL-160 | Material Delivery & Site Inspection of Manholes for Sewage Network |  |  | 5d → 10d |  |  |
| 9 | **Road 17 Local 1 ( 500 LM )** |  | 2026-11-04 → 2026-11-11 (+7d) |  |  |  |
| 3 | **Testing and Finishes** | 2026-10-06 → 2026-10-13 (+7d) | 2026-11-04 → 2026-11-11 (+7d) |  |  |  |
| PRO-R17-SW-DL-120 | Material Delivery & Site Inspection of Manholes Covers for Sewage Network | 2026-10-06 → 2026-10-13 (+7d) | 2026-11-04 → 2026-11-11 (+7d) |  | -181d → -187d |  |
| PRO-R17-SW-DL-130 | Material Delivery & Site Inspection of Membrane Insulation for Sewage Network | 2026-10-06 → 2026-10-13 (+7d) | 2026-11-04 → 2026-11-11 (+7d) |  | -178d → -184d |  |
| 8 | **Road 16 Local 1 ( 527 LM )** |  | 2026-12-05 → 2026-12-12 (+7d) |  |  |  |
| 3 | **Testing and Finishes** | 2026-11-05 → 2026-11-12 (+7d) | 2026-12-05 → 2026-12-12 (+7d) |  |  |  |
| PRO-R16-SW-DL-120 | Material Delivery & Site Inspection of Manholes Covers for Sewage Network | 2026-11-05 → 2026-11-12 (+7d) | 2026-12-05 → 2026-12-12 (+7d) |  | -181d → -187d |  |
| PRO-R16-SW-DL-130 | Material Delivery & Site Inspection of Membrane Insulation for Sewage Network | 2026-11-05 → 2026-11-12 (+7d) | 2026-12-05 → 2026-12-12 (+7d) |  | -178d → -184d |  |
| 7 | **Road 15 Local 1 ( 556 LM )** |  | 2027-01-04 → 2027-01-11 (+7d) |  |  |  |
| 3 | **Testing and Finishes** | 2026-12-06 → 2026-12-13 (+7d) | 2027-01-04 → 2027-01-11 (+7d) |  |  |  |
| PRO-R15-SW-DL-120 | Material Delivery & Site Inspection of Manholes Covers for Sewage Network | 2026-12-06 → 2026-12-13 (+7d) | 2027-01-04 → 2027-01-11 (+7d) |  | -181d → -187d |  |
| PRO-R15-SW-DL-130 | Material Delivery & Site Inspection of Membrane Insulation for Sewage Network | 2026-12-06 → 2026-12-13 (+7d) | 2027-01-04 → 2027-01-11 (+7d) |  | -178d → -184d |  |
| 4 | **Road 10 Local 2 ( 2352 LM )** |  | 2027-02-03 → 2027-02-10 (+7d) |  |  |  |
| 3 | **Testing and Finishes** | 2027-01-05 → 2027-01-12 (+7d) | 2027-02-03 → 2027-02-10 (+7d) |  |  |  |
| PRO-R10-SW-DL-120 | Material Delivery & Site Inspection of Manholes Covers for Sewage Network | 2027-01-05 → 2027-01-12 (+7d) | 2027-02-03 → 2027-02-10 (+7d) |  | -181d → -187d |  |
| PRO-R10-SW-DL-130 | Material Delivery & Site Inspection of Membrane Insulation for Sewage Network | 2027-01-05 → 2027-01-12 (+7d) | 2027-02-03 → 2027-02-10 (+7d) |  | -178d → -184d |  |
| 6 | **Road 14 Local 1 ( 584 LM )** |  | 2027-03-07 → 2027-03-17 (+10d) |  |  |  |
| 3 | **Testing and Finishes** | 2027-02-04 → 2027-02-11 (+7d) | 2027-03-07 → 2027-03-17 (+10d) |  |  |  |
| PRO-R14-SW-DL-120 | Material Delivery & Site Inspection of Manholes Covers for Sewage Network | 2027-02-04 → 2027-02-11 (+7d) | 2027-03-07 → 2027-03-17 (+10d) |  | -181d → -187d |  |
| PRO-R14-SW-DL-130 | Material Delivery & Site Inspection of Membrane Insulation for Sewage Network | 2027-02-04 → 2027-02-11 (+7d) | 2027-03-07 → 2027-03-17 (+10d) |  | -178d → -184d |  |
| 2 | **Road 09 Local 2 ( 2278 LM )** |  | 2026-11-18 → 2026-11-25 (+7d) |  |  |  |
| 3 | **Testing and Finishes** | 2026-10-06 → 2026-10-13 (+7d) | 2026-11-18 → 2026-11-25 (+7d) |  |  |  |
| PRO-R09-SW-DL-120 | Material Delivery & Site Inspection of Manholes Covers for Rising Main Network | 2026-10-06 → 2026-10-13 (+7d) | 2026-11-18 → 2026-11-25 (+7d) |  | -70d → -51d |  |
| PRO-R09-SW-DL-130 | Material Delivery & Site Inspection of Membrane Insulation for Rising Main Network | 2026-10-06 → 2026-10-13 (+7d) | 2026-11-18 → 2026-11-25 (+7d) |  | -54d → -48d |  |
| 5 | **Road 11 Local 1 ( 670 LM )** |  | 2027-04-10 → 2027-04-17 (+7d) |  |  |  |
| 3 | **Testing and Finishes** | 2027-03-08 → 2027-03-18 (+10d) | 2027-04-10 → 2027-04-17 (+7d) |  |  |  |
| PRO-R11-SW-DL-120 | Material Delivery & Site Inspection of Manholes Covers for Sewage Network | 2027-03-08 → 2027-03-18 (+10d) | 2027-04-10 → 2027-04-17 (+7d) |  | -181d → -187d |  |
| PRO-R11-SW-DL-130 | Material Delivery & Site Inspection of Membrane Insulation for Sewage Network | 2027-03-08 → 2027-03-18 (+10d) | 2027-04-10 → 2027-04-17 (+7d) |  | -178d → -184d |  |
| SD | **Storm Drainage Network** |  | 2027-01-16 → 2027-04-28 (+102d) |  |  |  |
| DL | **Material Delivery & Site Inspection** |  | 2027-01-16 → 2027-04-28 (+102d) |  |  |  |
| 1 | **Road 18 Local 1 ( 479 LM )** |  | 2026-10-17 → 2026-10-24 (+7d) |  |  |  |
| 3 | **Testing and Finishes** |  | 2026-10-17 → 2026-10-24 (+7d) |  |  |  |
| PRO-R18-SD-DL-190 | Material Delivery & Site Inspection of Manholes Covers for Storm Drainage Network |  | 2026-10-17 → 2026-10-24 (+7d) |  | -120d → -204d | PRO-SD-1DL-140 → PRO-SD-1DL-140 SS |
| PRO-R18-SD-DL-210 | Material Delivery & Site Inspection of Catch Basin Covers for Storm Drainage Network |  | 2026-10-17 → 2026-10-24 (+7d) |  | -106d → -156d | PRO-SD-1DL-150 → PRO-SD-1DL-150 SS |
| PRO-R18-SD-DL-230 | Material Delivery & Site Inspection of Epoxy Insulation for Storm Drainage Network |  | 2026-10-17 → 2026-10-24 (+7d) |  | -94d → -156d | PRO-SD-1DL-160 → PRO-SD-1DL-160 SS |
| 9 | **Road 17 Local 1 ( 500 LM )** |  | 2026-10-28 → 2026-10-24 (-4d) |  |  |  |
| 3 | **Testing and Finishes** |  | 2026-10-28 → 2026-10-24 (-4d) |  |  |  |
| PRO-R17-SD-DL-140 | Material Delivery & Site Inspection of Manholes Covers for Storm Drainage Network |  | 2026-10-28 → 2026-10-24 (-4d) |  | -120d → -204d | PRO-SD-1DL-140, PRO-R18-SD-DL-190 → PRO-SD-1DL-140 FF, PRO-R18-SD-DL-190 FF |
| PRO-R17-SD-DL-150 | Material Delivery & Site Inspection of Catch Basin Covers for Storm Drainage Network |  | 2026-10-28 → 2026-10-24 (-4d) |  | -106d → -156d | PRO-SD-1DL-150, PRO-R18-SD-DL-210 → PRO-SD-1DL-150 FF, PRO-R18-SD-DL-210 FF |
| PRO-R17-SD-DL-160 | Material Delivery & Site Inspection of Epoxy Insulation for Storm Drainage Network |  | 2026-10-28 → 2026-10-24 (-4d) |  | -94d → -156d | PRO-SD-1DL-160, PRO-R18-SD-DL-230 → PRO-SD-1DL-160 FF, PRO-R18-SD-DL-230 FF |
| 8 | **Road 16 Local 1 ( 527 LM )** |  | 2026-11-16 → 2026-11-23 (+7d) |  |  |  |

| ID | Task | Start | Finish | Duration | Total float | Predecessors |
| --- | --- | --- | --- | --- | --- | --- |
| 3 | **Testing and Finishes** | 2026-10-18 → 2026-10-25 (+7d) | 2026-11-16 → 2026-11-23 (+7d) |  |  |  |
| PRO-R16-SD-DL-140 | Material Delivery & Site Inspection of Manholes Covers for Storm Drainage Network | 2026-10-18 → 2026-10-25 (+7d) | 2026-11-16 → 2026-11-23 (+7d) |  | -120d → -204d | PRO-SD-1DL-140, PRO-R17-SD-DL-140 SS → PRO-SD-1DL-140, PRO-R17-SD-DL-140 |
| PRO-R16-SD-DL-150 | Material Delivery & Site Inspection of Catch Basin Covers for Storm Drainage Network | 2026-10-18 → 2026-10-25 (+7d) | 2026-11-16 → 2026-11-23 (+7d) |  | -106d → -156d | PRO-SD-1DL-150, PRO-R17-SD-DL-150 SS → PRO-SD-1DL-150, PRO-R17-SD-DL-150 |
| PRO-R16-SD-DL-160 | Material Delivery & Site Inspection of Epoxy Insulation for Storm Drainage Network | 2026-10-18 → 2026-10-25 (+7d) | 2026-11-16 → 2026-11-23 (+7d) |  | -94d → -156d | PRO-SD-1DL-160, PRO-R17-SD-DL-160 SS → PRO-SD-1DL-160, PRO-R17-SD-DL-160 |
| 7 | **Road 15 Local 1 ( 556 LM )** |  | 2026-11-16 → 2026-12-23 (+37d) |  |  |  |
| PRO-R15-SD-DL-100 | Material Delivery & Site Inspection of Manholes of Storm Drainage Network |  |  | 26d → 25.75d |  |  |
| 3 | **Testing and Finishes** | 2026-10-18 → 2026-11-24 (+37d) | 2026-11-16 → 2026-12-23 (+37d) |  |  |  |
| PRO-R15-SD-DL-140 | Material Delivery & Site Inspection of Manholes Covers for Storm Drainage Network | 2026-10-18 → 2026-11-24 (+37d) | 2026-11-16 → 2026-12-23 (+37d) |  | -120d → -204d | PRO-SD-1DL-140, PRO-R16-SD-DL-140 SS → PRO-SD-1DL-140, PRO-R16-SD-DL-140 |
| PRO-R15-SD-DL-150 | Material Delivery & Site Inspection of Catch Basin Covers for Storm Drainage Network | 2026-10-18 → 2026-11-24 (+37d) | 2026-11-16 → 2026-12-23 (+37d) |  | -106d → -156d | PRO-SD-1DL-150, PRO-R16-SD-DL-150 SS → PRO-SD-1DL-150, PRO-R16-SD-DL-150 |
| PRO-R15-SD-DL-160 | Material Delivery & Site Inspection of Epoxy Insulation for Storm Drainage Network | 2026-10-18 → 2026-11-24 (+37d) | 2026-11-16 → 2026-12-23 (+37d) |  | -94d → -156d | PRO-SD-1DL-160, PRO-R16-SD-DL-160 SS → PRO-SD-1DL-160, PRO-R16-SD-DL-160 |
| 4 | **Road 10 Local 2 ( 2352 LM )** |  | 2026-11-16 → 2027-01-23 (+68d) |  |  |  |
| 3 | **Testing and Finishes** | 2026-10-18 → 2026-12-24 (+67d) | 2026-11-16 → 2027-01-23 (+68d) |  |  |  |
| PRO-R10-SD-DL-140 | Material Delivery & Site Inspection of Manholes Covers for Storm Drainage Network | 2026-10-18 → 2026-12-24 (+67d) | 2026-11-16 → 2027-01-23 (+68d) |  | -120d → -204d | PRO-SD-1DL-140, PRO-R15-SD-DL-140 SS → PRO-SD-1DL-140, PRO-R15-SD-DL-140 |
| PRO-R10-SD-DL-150 | Material Delivery & Site Inspection of Catch Basin Covers for Storm Drainage Network | 2026-10-18 → 2026-12-24 (+67d) | 2026-11-16 → 2027-01-23 (+68d) |  | -106d → -156d | PRO-SD-1DL-150, PRO-R15-SD-DL-150 SS → PRO-SD-1DL-150, PRO-R15-SD-DL-150 |
| PRO-R10-SD-DL-160 | Material Delivery & Site Inspection of Epoxy Insulation for Storm Drainage Network | 2026-10-18 → 2026-12-24 (+67d) | 2026-11-16 → 2027-01-23 (+68d) |  | -94d → -156d | PRO-SD-1DL-160, PRO-R15-SD-DL-160 SS → PRO-SD-1DL-160, PRO-R15-SD-DL-160 |
| 6 | **Road 14 Local 1 ( 584 LM )** |  | 2026-11-16 → 2027-02-23 (+99d) |  |  |  |
| PRO-R14-SD-DL-120 | Material Delivery & Site Inspection of Main Line Pipes of Storm Drainage Network |  |  |  |  | PRO-SD-1DL-110 → PRO-SD-1DL-110, PRO-R10-SD-DL-120 |
| 3 | **Testing and Finishes** | 2026-10-18 → 2027-01-24 (+98d) | 2026-11-16 → 2027-02-23 (+99d) |  |  |  |
| PRO-R14-SD-DL-140 | Material Delivery & Site Inspection of Manholes Covers for Storm Drainage Network | 2026-10-18 → 2027-01-24 (+98d) | 2026-11-16 → 2027-02-23 (+99d) |  | -120d → -204d | PRO-SD-1DL-140, PRO-R10-SD-DL-140 SS → PRO-SD-1DL-140, PRO-R10-SD-DL-140 |
| PRO-R14-SD-DL-150 | Material Delivery & Site Inspection of Catch Basin Covers for Storm Drainage Network | 2026-10-18 → 2027-01-24 (+98d) | 2026-11-16 → 2027-02-23 (+99d) |  | -106d → -156d | PRO-SD-1DL-150, PRO-R10-SD-DL-150 SS → PRO-SD-1DL-150, PRO-R10-SD-DL-150 |
| PRO-R14-SD-DL-160 | Material Delivery & Site Inspection of Epoxy Insulation for Storm Drainage Network | 2026-10-18 → 2027-01-24 (+98d) | 2026-11-16 → 2027-02-23 (+99d) |  | -94d → -156d | PRO-SD-1DL-160, PRO-R10-SD-DL-160 SS → PRO-SD-1DL-160, PRO-R10-SD-DL-160 |
| 2 | **Road 09 Local 2 ( 2278 LM )** |  | 2026-12-16 → 2027-03-29 (+103d) |  |  |  |
| PRO-R09-SD-DL-120 | Material Delivery & Site Inspection of Main Line Pipes of Storm Drainage Network |  |  |  |  | PRO-SD-1DL-110 → PRO-SD-1DL-110, PRO-R14-SD-DL-120 |
| PRO-R09-SD-DL-100 | Material Delivery & Site Inspection of Manholes of Storm Drainage Network |  |  |  |  | PRO-SD-1DL-100 → PRO-SD-1DL-100, PRO-R14-SD-DL-100 |
| 3 | **Testing and Finishes** | 2026-11-17 → 2027-02-24 (+99d) | 2026-12-16 → 2027-03-29 (+103d) |  |  |  |
| PRO-R09-SD-DL-140 | Material Delivery & Site Inspection of Manholes Covers for Storm Drainage Network | 2026-11-17 → 2027-02-24 (+99d) | 2026-12-16 → 2027-03-29 (+103d) |  | -120d → -204d |  |
| PRO-R09-SD-DL-150 | Material Delivery & Site Inspection of Catch Basin Covers for Storm Drainage Network | 2026-11-17 → 2027-02-24 (+99d) | 2026-12-16 → 2027-03-29 (+103d) |  | -106d → -156d |  |
| PRO-R09-SD-DL-160 | Material Delivery & Site Inspection of Epoxy Insulation for Storm Drainage Network | 2026-11-17 → 2027-02-24 (+99d) | 2026-12-16 → 2027-03-29 (+103d) |  | -94d → -156d |  |
| 5 | **Road 11 Local 1 ( 670 LM )** |  | 2027-01-16 → 2027-04-28 (+102d) |  |  |  |
| PRO-R11-SD-DL-120 | Material Delivery & Site Inspection of Main Line Pipes of Storm Drainage Network |  |  |  |  | PRO-SD-1DL-110 → PRO-SD-1DL-110, PRO-R09-SD-DL-120 |
| PRO-R11-SD-DL-100 | Material Delivery & Site Inspection of Manholes of Storm Drainage Network |  |  |  |  | PRO-SD-1DL-100 → PRO-SD-1DL-100, PRO-R09-SD-DL-100 |
| 3 | **Testing and Finishes** | 2026-12-17 → 2027-03-30 (+103d) | 2027-01-16 → 2027-04-28 (+102d) |  |  |  |
| PRO-R11-SD-DL-140 | Material Delivery & Site Inspection of Manholes Covers for Storm Drainage Network | 2026-12-17 → 2027-03-30 (+103d) | 2027-01-16 → 2027-04-28 (+102d) |  | -106d → -114d |  |
| PRO-R11-SD-DL-150 | Material Delivery & Site Inspection of Catch Basin Covers for Storm Drainage Network | 2026-12-17 → 2027-03-30 (+103d) | 2027-01-16 → 2027-04-28 (+102d) |  | -106d → -156d |  |
| PRO-R11-SD-DL-160 | Material Delivery & Site Inspection of Epoxy Insulation for Storm Drainage Network | 2026-12-17 → 2027-03-30 (+103d) | 2027-01-16 → 2027-04-28 (+102d) |  | -94d → -156d |  |
| PW | **Potable Water Network** |  | 2027-05-23 → 2027-04-17 (-36d) |  |  |  |
| 1DL | **1st Material Delivery & Site Inspection** |  | 2026-10-12 → 2026-10-19 (+7d) |  |  |  |
| 4 | **Testing and Finishes** | 2026-10-06 → 2026-10-13 (+7d) | 2026-10-12 → 2026-10-19 (+7d) |  |  |  |
| PRO-PW-1DL-130 | 1ST Material Delivery for Finishes of Potable Water Network | 2026-10-06 → 2026-10-13 (+7d) | 2026-10-12 → 2026-10-19 (+7d) |  | -213d → -179d |  |
| DL | **Material Delivery & Site Inspection** |  | 2027-05-23 → 2027-04-17 (-36d) |  |  |  |
| 1 | **Road 18 Local 1 ( 479 LM )** |  | 2026-11-11 → 2026-11-18 (+7d) |  |  |  |
| 4 | **Testing and Finishes** | 2026-10-13 → 2026-10-20 (+7d) | 2026-11-11 → 2026-11-18 (+7d) |  |  |  |
| PRO-R18-PW-DL-170 | Material Delivery & Site Inspection for Finishes of Potable Water Network | 2026-10-13 → 2026-10-20 (+7d) | 2026-11-11 → 2026-11-18 (+7d) |  | -213d → -179d |  |
| 9 | **Road 17 Local 1 ( 500 LM )** |  | 2026-12-12 → 2026-12-19 (+7d) |  |  |  |
| 1 | **Main Line Sections** |  | 2026-11-04 → 2026-11-11 (+7d) |  |  |  |
| PRO-R17-PW-DL-110 | Material Delivery & Site Inspection of Valves for Potable Water Network | 2026-10-06 → 2026-10-13 (+7d) | 2026-11-04 → 2026-11-11 (+7d) |  | -242.5d → -280.5d |  |
| PRO-R17-PW-DL-120 | Material Delivery & Site Inspection of Fire Hydrants for Potable Water Network |  |  |  |  | PRO-PW-1DL-120 SS, PRO-R18-PW-DL-160 SS → PRO-PW-1DL-120, PRO-R18-PW-DL-160 |
| 4 | **Testing and Finishes** | 2026-11-12 → 2026-11-19 (+7d) | 2026-12-12 → 2026-12-19 (+7d) |  |  |  |
| PRO-R17-PW-DL-130 | Material Delivery & Site Inspection for Finishes of Potable Water Network | 2026-11-12 → 2026-11-19 (+7d) | 2026-12-12 → 2026-12-19 (+7d) |  | -213d → -179d |  |
| 8 | **Road 16 Local 1 ( 527 LM )** |  | 2027-01-11 → 2027-01-18 (+7d) |  |  |  |
| 1 | **Main Line Sections** |  | 2026-11-04 → 2026-12-12 (+38d) |  |  |  |
| PRO-R16-PW-DL-110 | Material Delivery & Site Inspection of Valves for Potable Water Network | 2026-10-06 → 2026-11-12 (+37d) | 2026-11-04 → 2026-12-12 (+38d) |  | -242.5d → -280.5d | PRO-PW-1DL-110 SS, PRO-R17-PW-DL-110 SS → PRO-PW-1DL-110, PRO-R17-PW-DL-110 |
| 4 | **Testing and Finishes** | 2026-12-13 → 2026-12-20 (+7d) | 2027-01-11 → 2027-01-18 (+7d) |  |  |  |
| PRO-R16-PW-DL-130 | Material Delivery & Site Inspection for Finishes of Potable Water Network | 2026-12-13 → 2026-12-20 (+7d) | 2027-01-11 → 2027-01-18 (+7d) |  | -213d → -179d |  |
| 7 | **Road 15 Local 1 ( 556 LM )** |  | 2027-02-10 → 2027-02-17 (+7d) |  |  |  |
| 1 | **Main Line Sections** |  | 2026-11-04 → 2027-01-11 (+68d) |  |  |  |
| PRO-R15-PW-DL-110 | Material Delivery & Site Inspection of Valves for Potable Water Network | 2026-10-06 → 2026-12-13 (+68d) | 2026-11-04 → 2027-01-11 (+68d) |  | -242.5d → -280.5d | PRO-PW-1DL-110 SS, PRO-R16-PW-DL-110 SS → PRO-PW-1DL-110, PRO-R16-PW-DL-110 |
| PRO-R15-PW-DL-120 | Material Delivery & Site Inspection of Fire Hydrants for Potable Water Network |  |  |  |  | PRO-PW-1DL-120, PRO-R16-PW-DL-120 SS → PRO-PW-1DL-120, PRO-R16-PW-DL-120 |
| 4 | **Testing and Finishes** | 2027-01-12 → 2027-01-19 (+7d) | 2027-02-10 → 2027-02-17 (+7d) |  |  |  |
| PRO-R15-PW-DL-130 | Material Delivery & Site Inspection for Finishes of Potable Water Network | 2027-01-12 → 2027-01-19 (+7d) | 2027-02-10 → 2027-02-17 (+7d) |  | -213d → -179d |  |
| 4 | **Road 10 Local 2 ( 2352 LM )** |  | 2027-03-17 → 2027-03-24 (+7d) |  |  |  |
| 1 | **Main Line Sections** |  | 2026-12-05 → 2027-01-11 (+37d) |  |  |  |
| PRO-R10-PW-DL-110 | Material Delivery & Site Inspection of Valves for Potable Water Network |  | 2026-12-05 → 2027-01-11 (+37d) |  | -242.5d → -280.5d | PRO-PW-1DL-110, PRO-R15-PW-DL-110 → PRO-PW-1DL-110, PRO-R15-PW-DL-110 FF |
| 4 | **Testing and Finishes** | 2027-02-11 → 2027-02-18 (+7d) | 2027-03-17 → 2027-03-24 (+7d) |  |  |  |
| PRO-R10-PW-DL-130 | Material Delivery & Site Inspection for Finishes of Potable Water Network | 2027-02-11 → 2027-02-18 (+7d) | 2027-03-17 → 2027-03-24 (+7d) |  | -213d → -179d |  |
| 3 | **Road 14 Local 1 ( 584 LM )** |  | 2026-12-05 → 2027-02-10 (+67d) |  |  |  |
| 1 | **Main Line Sections** |  | 2026-12-05 → 2027-02-10 (+67d) |  |  |  |
| PRO-R14-PW-DL-110 | Material Delivery & Site Inspection of Valves for Potable Water Network | 2026-11-05 → 2027-01-12 (+68d) | 2026-12-05 → 2027-02-10 (+67d) |  | -242.5d → -280.5d | PRO-PW-1DL-110, PRO-R10-PW-DL-110 SS → PRO-PW-1DL-110, PRO-R10-PW-DL-110 |
| PRO-R14-PW-DL-120 | Material Delivery & Site Inspection of Fire Hydrants for Potable Water Network |  |  |  |  | PRO-PW-1DL-120, PRO-R10-PW-DL-120 SS → PRO-PW-1DL-120, PRO-R10-PW-DL-120 |
| PRO-R14-PW-DL-130 | Material Delivery & Site Inspection for Finishes of Potable Water Network |  |  |  |  | PRO-PW-1DL-130, PRO-R10-PW-DL-130 → PRO-PW-MF-130 |

| ID | Task | Start | Finish | Duration | Complete | Total float | Predecessors |
| --- | --- | --- | --- | --- | --- | --- | --- |
| 2 | **Road 09 Local 2 ( 2278 LM )** |  | 2027-04-17 → 2027-03-17 (-31d) |  |  |  |  |
| 1 | **Main Line Sections** |  | 2027-01-04 → 2027-03-17 (+72d) |  |  |  |  |
| PRO-R09-PW-DL-110 | Material Delivery & Site Inspection of Valves for Potable Water Network | 2026-12-06 → 2027-02-11 (+67d) | 2027-01-04 → 2027-03-17 (+72d) |  |  | -242.5d → -280.5d |  |
| PRO-R09-PW-DL-120 | Material Delivery & Site Inspection of Fire Hydrants for Potable Water Network |  |  |  |  |  | PRO-PW-1DL-120, PRO-R14-PW-DL-120 SS → PRO-PW-1DL-120, PRO-R14-PW-DL-120 |
| 4 | **Testing and Finishes** | 2027-03-18 → 2026-10-20 (-149d) | 2027-04-17 → 2026-11-18 (-150d) |  |  |  |  |
| PRO-R09-PW-DL-130 | Material Delivery & Site Inspection for Finishes of Potable Water Network | 2027-03-18 → 2026-10-20 (-149d) | 2027-04-17 → 2026-11-18 (-150d) |  |  | -213d → -89d |  |
| 5 | **Road 11 Local 1 ( 670 LM )** |  | 2027-05-23 → 2027-04-17 (-36d) |  |  |  |  |
| 1 | **Main Line Sections** |  | 2027-02-03 → 2027-04-17 (+73d) |  |  |  |  |
| PRO-R11-PW-DL-100 | Material Delivery & Site Inspection of Main Line Pipes for Potable Water Network |  |  |  |  |  | PRO-PW-1DL-100 → PRO-PW-1DL-100, PRO-R09-PW-DL-100 |
| PRO-R11-PW-DL-110 | Material Delivery & Site Inspection of Valves for Potable Water Network | 2027-01-05 → 2027-03-18 (+72d) | 2027-02-03 → 2027-04-17 (+73d) |  |  | -144d → -213d |  |
| 4 | **Testing and Finishes** | 2027-04-18 → 2026-11-19 (-150d) | 2027-05-23 → 2026-12-19 (-155d) |  |  |  |  |
| PRO-R11-PW-DL-130 | Material Delivery & Site Inspection for Finishes of Potable Water Network | 2027-04-18 → 2026-11-19 (-150d) | 2027-05-23 → 2026-12-19 (-155d) |  |  | -213d → -89d |  |
| IR | **Irrigation Network** |  | 2026-10-28 → 2027-01-02 (+66d) |  |  |  |  |
| 1DL | **1st Material Delivery & Site Inspection** |  | 2026-10-12 → 2026-10-19 (+7d) |  |  |  |  |
| 1 | **Main Line Pipes** |  | 2026-10-12 → 2026-10-19 (+7d) |  |  |  |  |
| PRO-IR-1DL-110 | 1ST Material Delivery for Valves of Irrigation Network | 2026-10-06 → 2026-10-13 (+7d) | 2026-10-12 → 2026-10-19 (+7d) |  |  | -219.5d → -257d |  |
| DL | **Material Delivery & Site Inspection** |  | 2026-10-28 → 2027-01-02 (+66d) |  |  |  |  |
| 1 | **Road 18 Local 1 ( 479 LM )** |  | 2026-10-13 → 2026-11-07 (+25d) |  |  |  |  |
| 1 | **Main Line Pipes** |  | 2026-10-13 → 2026-11-07 (+25d) |  |  |  |  |
| PRO-R18-IR-DL-130 | Material Delivery & Site Inspection of Valves for Irrigation Network | 2026-10-06 → 2026-10-20 (+14d) | 2026-10-13 → 2026-11-07 (+25d) | 7d → 16d |  | -219.5d → -257d | PRO-IR-1DL-110 SS → PRO-IR-1DL-110 |
| 9 | **Road 17 Local 1 ( 500 LM )** |  | 2026-10-21 → 2026-11-25 (+35d) |  |  |  |  |
| 1 | **Main Line Pipes** |  | 2026-10-21 → 2026-11-25 (+35d) |  |  |  |  |
| PRO-R17-IR-DL-110 | Material Delivery & Site Inspection of Valves for Irrigation Network | 2026-10-14 → 2026-11-08 (+25d) | 2026-10-21 → 2026-11-25 (+35d) | 7d → 16d |  | -219.5d → -257d |  |
| 8 | **Road 16 Local 1 ( 527 LM )** |  | 2026-10-21 → 2026-12-14 (+54d) |  |  |  |  |
| 1 | **Main Line Pipes** |  | 2026-10-21 → 2026-12-14 (+54d) |  |  |  |  |
| PRO-R16-IR-DL-110 | Material Delivery & Site Inspection of Valves for Irrigation Network | 2026-10-14 → 2026-11-26 (+43d) | 2026-10-21 → 2026-12-14 (+54d) | 7d → 16d |  | -219.5d → -257d | PRO-IR-1DL-110, PRO-R17-IR-DL-110 SS → PRO-IR-1DL-110, PRO-R17-IR-DL-110 |
| 7 | **Road 15 Local 1 ( 556 LM )** |  | 2026-10-28 → 2027-01-02 (+66d) |  |  |  |  |
| 1 | **Main Line Pipes** |  | 2026-10-28 → 2027-01-02 (+66d) |  |  |  |  |
| PRO-R15-IR-DL-110 | Material Delivery & Site Inspection of Valves for Irrigation Network | 2026-10-22 → 2026-12-15 (+54d) | 2026-10-28 → 2027-01-02 (+66d) | 6d → 16d |  | -219.5d → -257d |  |
| PRO-R19.2-IR-DL-110 | Material Delivery & Site Inspection of Valves for Irrigation Network |  |  |  |  |  | PRO-IR-1DL-110, PRO-R15-IR-DL-110 → PRO-IR-MF-110 |
| PRO-R14-IR-DL-110 | Material Delivery & Site Inspection of Valves for Irrigation Network |  |  |  |  |  | PRO-IR-1DL-110, PRO-R19.2-IR-DL-110 SS → PRO-R19.2-IR-DL-110 |
| PRO-R09-IR-DL-110 | Material Delivery & Site Inspection of Valves for Irrigation Network |  |  |  |  |  | PRO-IR-1DL-110, PRO-R14-IR-DL-110 → PRO-R14-IR-DL-110 |
| PRO-R11-IR-DL-150 | Material Delivery & Site Inspection of Valves for Irrigation Network |  |  |  |  |  | PRO-IR-1DL-110, PRO-R09-IR-DL-110 → PRO-R09-IR-DL-110 |
| MV | **Medium Voltage Network** |  | 2027-07-15 → 2027-01-11 (-185d) |  |  |  |  |
| 1DL | **1st Material Delivery & Site Inspection** |  | 2026-12-05 → 2026-12-12 (+7d) |  |  |  |  |
| 2 | **RMU Concrete Works** | 2026-10-06 → 2026-10-13 (+7d) | 2026-12-05 → 2026-12-12 (+7d) |  |  |  |  |
| PRO-MV-1DL-110 | 1ST Material Delivery for RMU Concrete Foundations of Medium Voltage Network | 2026-10-06 → 2026-10-13 (+7d) | 2026-12-05 → 2026-12-12 (+7d) |  |  | -131d → -99d |  |
| 3 | **Termination and Testing Works** | 2026-10-06 → 2026-10-13 (+7d) | 2026-11-04 → 2026-11-11 (+7d) |  |  |  |  |
| PRO-MV-1DL-120 | 1ST Material Delivery for Termination and Joints Kits of Medium Voltage Network | 2026-10-06 → 2026-10-13 (+7d) | 2026-11-04 → 2026-11-11 (+7d) |  |  | -245d → -49d |  |
| DL | **Material Delivery & Site Inspection** |  | 2027-07-15 → 2027-01-11 (-185d) |  |  |  |  |
| 1 | **Road 18 Local 1 ( 479 LM )** |  | 2026-12-05 → 2026-10-07 (-59d) |  |  |  |  |
| 3 | **Termination and Testing Works** | 2026-11-05 → 2026-10-07 (-29d) | 2026-12-05 → 2026-10-07 (-59d) |  |  |  |  |
| PRO-R18-MV-DL-130 | Material Delivery & Site Inspection of Termination and Joints Kits for Medium Voltage Network | 2026-11-05 → 2026-10-07 A (-29d) | 2026-12-05 → 2026-10-07 A (-59d) |  | 0% → 100% | -245d → none | PRO-MV-1DL-120, PRO-R18-MV-DL-120 → PRO-R18-MV-DL-120 |
| 9 | **Road 17 Local 1 ( 500 LM )** |  | 2027-02-17 → 2026-10-07 (-133d) |  |  |  |  |
| 2 | **RMU Concrete Works** | 2027-01-05 → 2026-10-05 (-92d) | 2027-02-17 → 2026-10-06 (-134d) |  |  |  |  |
| PRO-R17-MV-DL-120 | Material Delivery & Site Inspection of RMU Concrete Foundations for Medium Voltage Network | 2027-01-05 → 2026-10-05 A (-92d) | 2027-02-17 → 2026-10-06 A (-134d) |  | 0% → 100% | -131d → none | PRO-MV-1DL-110, PRO-R10-MV-DL-120 → PRO-MV-MF-120 |
| 3 | **Termination and Testing Works** | 2026-12-06 → 2026-10-05 (-62d) | 2027-01-04 → 2026-10-07 (-89d) |  |  |  |  |
| PRO-R17-MV-DL-110 | Material Delivery & Site Inspection of Termination and Joints Kits for Medium Voltage Network | 2026-12-06 → 2026-10-05 A (-62d) | 2027-01-04 → 2026-10-07 A (-89d) |  | 0% → 100% | -245d → none | PRO-MV-1DL-120, PRO-R18-MV-DL-130 → PRO-R18-MV-DL-130 |
| 3 | **Road 16 Local 1 ( 527 LM )** |  | 2027-02-03 → 2026-10-07 (-119d) |  |  |  |  |
| 3 | **Termination and Testing Works** | 2027-01-05 → 2026-10-05 (-92d) | 2027-02-03 → 2026-10-07 (-119d) |  |  |  |  |
| PRO-R16-MV-DL-110 | Material Delivery & Site Inspection of Termination and Joints Kits for Medium Voltage Network | 2027-01-05 → 2026-10-05 A (-92d) | 2027-02-03 → 2026-10-07 A (-119d) |  | 0% → 100% | -245d → none | PRO-MV-1DL-120, PRO-R17-MV-DL-110 → PRO-R17-MV-DL-110 |
| 7 | **Road 15 Local 1 ( 556 LM )** |  | 2027-03-07 → 2026-10-07 (-151d) |  |  |  |  |
| 3 | **Termination and Testing Works** | 2027-02-04 → 2026-10-07 (-120d) | 2027-03-07 → 2026-10-07 (-151d) |  |  |  |  |
| PRO-R15-MV-DL-110 | Material Delivery & Site Inspection of Termination and Joints Kits for Medium Voltage Network | 2027-02-04 → 2026-10-07 A (-120d) | 2027-03-07 → 2026-10-07 A (-151d) |  | 0% → 100% | -245d → none | PRO-MV-1DL-120, PRO-R16-MV-DL-110 → PRO-R16-MV-DL-110 |
| 4 | **Road 10 Local 2 ( 2352 LM )** |  | 2027-04-10 → 2027-01-11 (-89d) |  |  |  |  |
| 2 | **RMU Concrete Works** | 2026-12-06 → 2026-12-13 (+7d) | 2027-01-04 → 2027-01-11 (+7d) |  |  |  |  |
| PRO-R10-MV-DL-120 | Material Delivery & Site Inspection of RMU Concrete Foundations for Medium Voltage Network | 2026-12-06 → 2026-12-13 (+7d) | 2027-01-04 → 2027-01-11 (+7d) |  |  | -131d → -99d |  |
| 3 | **Termination and Testing Works** | 2027-03-08 → 2026-10-07 (-152d) | 2027-04-10 → 2026-10-07 (-185d) |  |  |  |  |
| PRO-R10-MV-DL-110 | Material Delivery & Site Inspection of Termination and Joints Kits for Medium Voltage Network | 2027-03-08 → 2026-10-07 A (-152d) | 2027-04-10 → 2026-10-07 A (-185d) |  | 0% → 100% | -245d → none | PRO-MV-1DL-120, PRO-R15-MV-DL-110 → PRO-R15-MV-DL-110 |
| 6 | **Road 14 Local 1 ( 584 LM )** |  | 2027-05-10 → 2026-10-07 (-215d) |  |  |  |  |
| PRO-R14-MV-DL-100 | Material Delivery & Site Inspection of Medium Voltage Cables for Medium Voltage Network |  |  |  |  |  | PRO-MV-1DL-100 → PRO-MV-1DL-100, PRO-R10-MV-DL-100 |
| 3 | **Termination and Testing Works** | 2027-04-11 → 2026-10-07 (-186d) | 2027-05-10 → 2026-10-07 (-215d) |  |  |  |  |
| PRO-R14-MV-DL-110 | Material Delivery & Site Inspection of Termination and Joints Kits for Medium Voltage Network | 2027-04-11 → 2026-10-07 A (-186d) | 2027-05-10 → 2026-10-07 A (-215d) |  | 0% → 100% | -245d → none | PRO-MV-1DL-120, PRO-R10-MV-DL-110 → PRO-R10-MV-DL-110 |
| 2 | **Road 09 Local 2 ( 2278 LM )** |  | 2027-06-15 → 2026-11-11 (-216d) |  |  |  |  |
| 1 | **Cabling Works** |  | 2026-11-04 → 2026-11-11 (+7d) |  |  |  |  |
| PRO-R09-MV-DL-100 | Material Delivery & Site Inspection of Medium Voltage Cables for Medium Voltage Network |  | 2026-11-04 → 2026-11-11 (+7d) |  |  | -165d → -171d |  |
| 3 | **Termination and Testing Works** | 2027-05-11 → 2026-10-07 (-216d) | 2027-06-15 → 2026-10-07 (-251d) |  |  |  |  |
| PRO-R09-MV-DL-110 | Material Delivery & Site Inspection of Termination and Joints Kits for Medium Voltage Network | 2027-05-11 → 2026-10-07 A (-216d) | 2027-06-15 → 2026-10-07 A (-251d) |  | 0% → 100% | -245d → none | PRO-MV-1DL-120, PRO-R14-MV-DL-110 → PRO-R14-MV-DL-110 |
| 5 | **Road 11 Local 1 ( 670 LM )** |  | 2027-07-15 → 2026-10-07 (-281d) |  |  |  |  |
| PRO-R11-MV-DL-100 | Material Delivery & Site Inspection of Medium Voltage Cables for Medium Voltage Network |  |  |  |  |  | PRO-MV-1DL-100, PRO-R09-MV-DL-100 → PRO-MV-1DL-100 |

| ID | Task | Start | Finish | Duration | Complete | Total float | Predecessors |
| --- | --- | --- | --- | --- | --- | --- | --- |
| 3 | **Termination and Testing Works** | 2027-06-16 → 2026-10-07 (-252d) | 2027-07-15 → 2026-10-07 (-281d) |  |  |  |  |
| PRO-R11-MV-DL-110 | Material Delivery & Site Inspection of Termination and Joints Kits for Medium Voltage Network | 2027-06-16 → 2026-10-07 A (-252d) | 2027-07-15 → 2026-10-07 A (-281d) |  | 0% → 100% | -245d → none | PRO-MV-1DL-120, PRO-R09-MV-DL-110 → PRO-R09-MV-DL-110 |
| SL | **Street Lighting Network** |  | 2027-07-08 → 2027-07-29 (+21d) |  |  |  |  |
| PRO-SL-MF-160 | Manufacturing of Distrubution Panel Boards for Street Lighting Network |  |  | 16d → 26d |  |  |  |
| PRO-SL-MF-130 | Manufacturing of Fuse Boxes for Street Lighting Network |  |  | 6d → 26d |  |  |  |
| PRO-SL-MF-170 | Manufacturing of Cable Lugs for Street Lighting Network |  |  | 12d → 26d |  |  |  |
| 1DL | **1st Material Delivery & Site Inspection** |  | 2026-10-22 → 2026-10-29 (+7d) |  |  |  |  |
| 2 | **Lighting Poles Works** |  | 2026-10-12 → 2026-10-19 (+7d) |  |  |  |  |
| PRO-SL-1DL-140 | 1ST Material Delivery for Lighting Fixtures of Street Lighting Network | 2026-10-06 → 2026-10-13 (+7d) | 2026-10-12 → 2026-10-19 (+7d) |  |  | -274d → -292d |  |
| 3 | **Distribution Panel Board** | 2026-10-06 → 2026-10-13 (+7d) | 2026-10-12 → 2026-10-19 (+7d) |  |  |  |  |
| PRO-SL-1DL-160 | 1ST Material Delivery for Distrubution Panel Boards of Street Lighting Network | 2026-10-06 → 2026-10-13 (+7d) | 2026-10-12 → 2026-10-19 (+7d) |  |  | -108d → -88d |  |
| 5 | **Termination and Testing Works** | 2026-10-06 → 2026-10-13 (+7d) | 2026-10-22 → 2026-10-29 (+7d) |  |  |  |  |
| PRO-SL-1DL-130 | 1ST Material Delivery for Fuse Boxes of Street Lighting Network | 2026-10-06 → 2026-10-13 (+7d) | 2026-10-12 → 2026-10-29 (+17d) | 6d → 15d |  | -268d → -275d |  |
| PRO-SL-1DL-170 | 1ST Material Delivery for Cable Lugs of Street Lighting Network | 2026-10-06 → 2026-10-13 (+7d) | 2026-10-22 → 2026-10-29 (+7d) |  |  | -269d → -249d |  |
| 4 | **Earthing System Works** | 2026-10-06 → 2026-10-13 (+7d) | 2026-10-12 → 2026-10-19 (+7d) |  |  |  |  |
| PRO-SL-1DL-150 | 1ST Material Delivery for Lighting Earthing of Street Lighting Network | 2026-10-06 → 2026-10-13 (+7d) | 2026-10-12 → 2026-10-19 (+7d) |  |  | -123d → -129d |  |
| DL | **Material Delivery & Site Inspection** |  | 2027-07-08 → 2027-07-29 (+21d) |  |  |  |  |
| 1 | **Road 18 Local 1 ( 479 LM )** |  | 2026-11-28 → 2027-01-18 (+51d) |  |  |  |  |
| 2 | **Lighting Poles Works** |  | 2026-10-24 → 2026-11-18 (+25d) |  |  |  |  |
| PRO-R18-SL-DL-220 | Material Delivery & Site Inspection of Lighting Fixtures for Street Lighting Network | 2026-10-13 → 2026-10-20 (+7d) | 2026-10-24 → 2026-11-18 (+25d) | 10d → 26d |  | -274d → -292d |  |
| 4 | **Termination and Testing Works** | 2026-10-13 → 2026-11-19 (+37d) | 2026-11-28 → 2027-01-18 (+51d) |  |  |  |  |
| PRO-R18-SL-DL-210 | Material Delivery & Site Inspection of Fuse Boxes for Street Lighting Network | 2026-10-13 → 2026-11-19 (+37d) | 2026-10-28 → 2026-12-19 (+52d) | 14d → 26d |  | -274d → -292d | PRO-SL-1DL-130 SS, PRO-R18-SL-DL-220 SS → PRO-SL-1DL-130, PRO-R18-SL-DL-220 |
| PRO-R18-SL-DL-250 | Material Delivery & Site Inspection of Cable Lugs for Street Lighting Network | 2026-10-29 → 2026-12-20 (+52d) | 2026-11-28 → 2027-01-18 (+51d) |  |  | -274d → -292d |  |
| 9 | **Road 17 Local 1 ( 500 LM )** |  | 2026-12-28 → 2027-02-17 (+51d) |  |  |  |  |
| 2 | **Lighting Poles Works** |  | 2026-11-23 → 2026-12-19 (+26d) |  |  |  |  |
| PRO-R17-SL-DL-140 | Material Delivery & Site Inspection of Lighting Fixtures for Street Lighting Network | 2026-10-25 → 2026-11-19 (+25d) | 2026-11-23 → 2026-12-19 (+26d) |  |  | -247.5d → -283.5d |  |
| 4 | **Termination and Testing Works** | 2026-10-13 → 2026-12-20 (+68d) | 2026-12-28 → 2027-02-17 (+51d) |  |  |  |  |
| PRO-R17-SL-DL-130 | Material Delivery & Site Inspection of Fuse Boxes for Street Lighting Network | 2026-10-13 → 2026-12-20 (+68d) | 2026-11-11 → 2027-01-18 (+68d) |  |  | -225.5d → -271.5d | PRO-SL-1DL-130, PRO-R18-SL-DL-210 SS → PRO-SL-1DL-130, PRO-R18-SL-DL-210 |
| PRO-R17-SL-DL-170 | Material Delivery & Site Inspection of Cable Lugs for Street Lighting Network | 2026-11-29 → 2027-01-19 (+51d) | 2026-12-28 → 2027-02-17 (+51d) |  |  | -274d → -292d |  |
| 8 | **Road 16 Local 1 ( 527 LM )** |  | 2027-01-27 → 2027-03-24 (+56d) |  |  |  |  |
| PRO-R16-SL-DL-100 | Material Delivery & Site Inspection of Lighting Cables for Street Lighting Network |  |  |  |  |  | PRO-SL-1DL-100, PRO-R17-SL-DL-100 FF → PRO-SL-1DL-100, PRO-R17-SL-DL-100 |
| 2 | **Lighting Poles Works** |  | 2026-12-23 → 2027-01-18 (+26d) |  |  |  |  |
| PRO-R16-SL-DL-140 | Material Delivery & Site Inspection of Lighting Fixtures for Street Lighting Network | 2026-11-24 → 2026-12-20 (+26d) | 2026-12-23 → 2027-01-18 (+26d) |  |  | -247.5d → -283.5d |  |
| 4 | **Termination and Testing Works** | 2026-10-13 → 2027-01-19 (+98d) | 2027-01-27 → 2027-03-24 (+56d) |  |  |  |  |
| PRO-R16-SL-DL-130 | Material Delivery & Site Inspection of Fuse Boxes for Street Lighting Network | 2026-10-13 → 2027-01-19 (+98d) | 2026-11-11 → 2027-02-17 (+98d) |  |  | -225.5d → -271.5d | PRO-SL-1DL-130 SS, PRO-R17-SL-DL-130 SS → PRO-SL-1DL-130, PRO-R17-SL-DL-130 |
| PRO-R16-SL-DL-170 | Material Delivery & Site Inspection of Cable Lugs for Street Lighting Network | 2026-12-29 → 2027-02-18 (+51d) | 2027-01-27 → 2027-03-24 (+56d) |  |  | -274d → -292d |  |
| 7 | **Road 15 Local 1 ( 556 LM )** |  | 2027-02-28 → 2027-04-24 (+55d) |  |  |  |  |
| PRO-R15-SL-DL-100 | Material Delivery & Site Inspection of Lighting Cables for Street Lighting Network |  |  |  |  |  | PRO-SL-1DL-100, PRO-R16-SL-DL-100 FF → PRO-SL-1DL-100, PRO-R16-SL-DL-100 |
| 2 | **Lighting Poles Works** |  | 2026-12-23 → 2027-02-17 (+56d) |  |  |  |  |
| PRO-R15-SL-DL-110 | Material Delivery & Site Inspection of Lighting Poles Foundations for Street Lighting Network |  |  |  |  |  | PRO-SL-1DL-110 → PRO-SL-1DL-110, PRO-R16-SL-DL-110 |
| PRO-R15-SL-DL-140 | Material Delivery & Site Inspection of Lighting Fixtures for Street Lighting Network | 2026-11-24 → 2027-01-19 (+56d) | 2026-12-23 → 2027-02-17 (+56d) |  |  | -247.5d → -283.5d | PRO-SL-1DL-140, PRO-R16-SL-DL-140 SS → PRO-SL-1DL-140, PRO-R16-SL-DL-140 |
| 4 | **Termination and Testing Works** | 2026-11-12 → 2027-02-18 (+98d) | 2027-02-28 → 2027-04-24 (+55d) |  |  |  |  |
| PRO-R15-SL-DL-130 | Material Delivery & Site Inspection of Fuse Boxes for Street Lighting Network | 2026-11-12 → 2027-02-18 (+98d) | 2026-12-12 → 2027-03-24 (+102d) |  |  | -225.5d → -271.5d |  |
| PRO-R15-SL-DL-170 | Material Delivery & Site Inspection of Cable Lugs for Street Lighting Network | 2027-01-28 → 2027-03-25 (+56d) | 2027-02-28 → 2027-04-24 (+55d) |  |  | -274d → -292d |  |
| 4 | **Road 10 Local 2 ( 2352 LM )** |  | 2027-04-03 → 2027-04-24 (+21d) |  |  |  |  |
| PRO-R10-SL-DL-100 | Material Delivery & Site Inspection of Lighting Cables for Street Lighting Network |  |  |  |  |  | PRO-SL-1DL-100, PRO-R15-SL-DL-100 FF → PRO-SL-1DL-100, PRO-R15-SL-DL-100 |
| 2 | **Lighting Poles Works** |  | 2027-01-23 → 2027-03-24 (+60d) |  |  |  |  |
| PRO-R10-SL-DL-140 | Material Delivery & Site Inspection of Lighting Fixtures for Street Lighting Network | 2026-12-24 → 2027-02-18 (+56d) | 2027-01-23 → 2027-03-24 (+60d) |  |  | -247.5d → -283.5d |  |
| PRO-R10-SL-DL-160 | Material Delivery & Site Inspection of Distrubution Panel Boards for Street Lighting Network |  |  |  |  |  | PRO-SL-1DL-160 → PRO-SL-1DL-160 FF |
| 4 | **Termination and Testing Works** |  | 2027-04-03 → 2027-04-24 (+21d) |  |  |  |  |
| PRO-R10-SL-DL-130 | Material Delivery & Site Inspection of Fuse Boxes for Street Lighting Network |  | 2027-01-11 → 2027-03-24 (+72d) |  |  | -225.5d → -271.5d | PRO-SL-1DL-130, PRO-R15-SL-DL-130 → PRO-SL-1DL-130 FF, PRO-R15-SL-DL-130 FF |
| PRO-R10-SL-DL-170 | Material Delivery & Site Inspection of Cable Lugs for Street Lighting Network |  | 2027-04-03 → 2027-04-24 (+21d) |  |  | -274d → -292d | PRO-SL-1DL-170, PRO-R15-SL-DL-170 → PRO-SL-1DL-170 FF, PRO-R15-SL-DL-170 FF |
| 5 | **Earthing System Works** | 2026-10-13 → 2026-10-20 (+7d) | 2026-11-11 → 2026-11-18 (+7d) |  |  |  |  |
| PRO-R10-SL-DL-150 | Material Delivery & Site Inspection of Lighting Earthing for Street Lighting Network | 2026-10-13 → 2026-10-20 (+7d) | 2026-11-11 → 2026-11-18 (+7d) |  |  | -123d → -129d |  |
| 6 | **Road 14 Local 1 ( 584 LM )** |  | 2027-05-03 → 2027-05-30 (+27d) |  |  |  |  |
| 2 | **Lighting Poles Works** |  | 2027-02-23 → 2027-04-24 (+60d) |  |  |  |  |
| PRO-R14-SL-DL-110 | Material Delivery & Site Inspection of Lighting Poles Foundations for Street Lighting Network |  |  |  |  |  | PRO-SL-1DL-110, PRO-R10-SL-DL-110, PRO-R16-SL-DL-110 → PRO-SL-1DL-110, PRO-R10-SL-DL-110 |
| PRO-R14-SL-DL-140 | Material Delivery & Site Inspection of Lighting Fixtures for Street Lighting Network | 2027-01-24 → 2027-03-25 (+60d) | 2027-02-23 → 2027-04-24 (+60d) |  |  | -247.5d → -283.5d |  |
| 4 | **Termination and Testing Works** | 2027-01-12 → 2027-03-25 (+72d) | 2027-05-03 → 2027-05-30 (+27d) |  |  |  |  |
| PRO-R14-SL-DL-130 | Material Delivery & Site Inspection of Fuse Boxes for Street Lighting Network | 2027-01-12 → 2027-03-25 (+72d) | 2027-02-10 → 2027-04-24 (+73d) |  |  | -225.5d → -271.5d |  |
| PRO-R14-SL-DL-170 | Material Delivery & Site Inspection of Cable Lugs for Street Lighting Network | 2027-04-04 → 2027-04-25 (+21d) | 2027-05-03 → 2027-05-30 (+27d) |  |  | -274d → -292d |  |
| 2 | **Road 09 Local 2 ( 2278 LM )** |  | 2027-06-08 → 2027-06-29 (+21d) |  |  |  |  |
| 2 | **Lighting Poles Works** |  | 2027-03-29 → 2027-05-30 (+62d) |  |  |  |  |
| PRO-R09-SL-DL-140 | Material Delivery & Site Inspection of Lighting Fixtures for Street Lighting Network | 2027-02-24 → 2027-04-25 (+60d) | 2027-03-29 → 2027-05-30 (+62d) |  |  | -247.5d → -283.5d |  |
| PRO-R09-SL-DL-160 | Material Delivery & Site Inspection of Distrubution Panel Boards for Street Lighting Network |  |  |  |  |  | PRO-SL-1DL-160 → MS-CS-PS |
| 4 | **Termination and Testing Works** | 2027-02-11 → 2027-04-25 (+73d) | 2027-06-08 → 2027-06-29 (+21d) |  |  |  |  |
| PRO-R09-SL-DL-130 | Material Delivery & Site Inspection of Fuse Boxes for Street Lighting Network | 2027-02-11 → 2027-04-25 (+73d) | 2027-03-17 → 2027-05-30 (+74d) |  |  | -225.5d → -271.5d |  |
| PRO-R09-SL-DL-170 | Material Delivery & Site Inspection of Cable Lugs for Street Lighting Network | 2027-05-04 → 2027-05-31 (+27d) | 2027-06-08 → 2027-06-29 (+21d) |  |  | -274d → -292d |  |
| 5 | **Earthing System Works** | 2026-10-13 → 2026-10-20 (+7d) | 2026-11-11 → 2026-11-18 (+7d) |  |  |  |  |
| PRO-R09-SL-DL-150 | Material Delivery & Site Inspection of Lighting Earthing for Street Lighting Network | 2026-10-13 → 2026-10-20 (+7d) | 2026-11-11 → 2026-11-18 (+7d) |  |  | -109.5d → -103.5d |  |

| ID | Task | Start | Finish | Duration | Complete | Total float | Predecessors | Other |
| --- | --- | --- | --- | --- | --- | --- | --- | --- |
| 5 | **Road 11 Local 1 ( 670 LM )** |  | 2027-07-08 → 2027-07-29 (+21d) |  |  |  |  |  |
| 2 | **Lighting Poles Works** |  | 2027-04-28 → 2027-06-29 (+62d) |  |  |  |  |  |
| PRO-R11-SL-DL-140 | Material Delivery & Site Inspection of Lighting Fixtures for Street Lighting Network | 2027-03-30 → 2027-05-31 (+62d) | 2027-04-28 → 2027-06-29 (+62d) |  |  | -183.5d → -231.5d |  |  |
| 4 | **Termination and Testing Works** | 2027-03-18 → 2027-05-31 (+74d) | 2027-07-08 → 2027-07-29 (+21d) |  |  |  |  |  |
| PRO-R11-SL-DL-130 | Material Delivery & Site Inspection of Fuse Boxes for Street Lighting Network | 2027-03-18 → 2027-05-31 (+74d) | 2027-04-17 → 2027-06-29 (+73d) |  |  | -204d → -262d |  |  |
| PRO-R11-SL-DL-170 | Material Delivery & Site Inspection of Cable Lugs for Street Lighting Network | 2027-06-09 → 2027-06-30 (+21d) | 2027-07-08 → 2027-07-29 (+21d) |  |  | -274d → -292d |  |  |
| PRO-R17-TE-DL-100 | Material Delivery & Site Inspection for Ducts of Telecom Network |  |  |  |  |  | PRO-TE-1DL-100, PRO-R18-TE-DL-120 FF → PRO-TE-1DL-100, PRO-R18-TE-DL-120 |  |
| PRO-R16-TE-DL-100 | Material Delivery & Site Inspection for Ducts of Telecom Network |  |  |  |  |  | PRO-TE-1DL-100, PRO-R17-TE-DL-100 FF → PRO-TE-1DL-100, PRO-R17-TE-DL-100 |  |
| PRO-R15-TE-DL-100 | Material Delivery & Site Inspection for Ducts of Telecom Network |  |  |  |  |  | PRO-TE-1DL-100, PRO-R16-TE-DL-100 FF → PRO-TE-1DL-100, PRO-R16-TE-DL-100 |  |
| 1 | **Superstructure Works** |  | 2027-03-17 → 2027-01-20 (-56d) |  |  |  |  |  |
| 2 | **Manufacturing of Material** |  | 2026-11-21 → 2026-12-21 (+30d) |  |  |  |  |  |
| TE | **Storm Drainage Ponds ( PO-J1 , PO-J2 )** |  | 2026-11-21 → 2026-12-21 (+30d) |  |  |  |  |  |
| PRO-DPO-CV-MF-20 | Manufacturing of Civil Works for Storm Drainage Ponds ( PO-J2 ) | 2026-10-06 → 2026-10-13 (+7d) | 2026-11-21 → 2026-12-21 (+30d) | 40d → 60d |  | -243d → -226d |  |  |
| 3 | **1st Material Delivery & Site Inspection** |  | 2026-12-21 → 2027-01-20 (+30d) |  |  |  |  |  |
| SL | **Sewage Pump Stations ( PS 06 )** | 2026-10-06 → 2026-10-13 (+7d) | 2026-11-21 → 2026-11-28 (+7d) |  |  |  |  |  |
| PRO-SPS-CV-1DL-10 | 1ST Material Delivery for Civil Works for Sewage Pump Stations ( PS 06 ) | 2026-10-06 → 2026-10-13 (+7d) | 2026-11-21 → 2026-11-28 (+7d) |  |  | -189d → -8d |  |  |
| TE | **Storm Drainage Ponds ( PO-J1 , PO-J2 )** |  | 2026-12-21 → 2027-01-20 (+30d) |  |  |  |  |  |
| PRO-DPO-CV-1DL-20 | 1ST Material Delivery for Civil Works for Storm Drainage Ponds ( PO-J2 ) | 2026-11-22 → 2026-12-22 (+30d) | 2026-12-21 → 2027-01-20 (+30d) |  |  | -243d → -226d |  |  |
| 4 | **Material Delivery & Site Inspection** |  | 2027-03-17 → 2027-01-20 (-56d) |  |  |  |  |  |
| PRO-SPS-CV-DL-10 | Material Delivery & Site Inspection for Civil Works for Sewage Pump Stations ( PS 06 ) |  |  |  |  |  | PRO-SPS-CV-1DL-10 → PRO-SPS-CV-MF-10 |  |
| TE | **Storm Drainage Ponds ( PO-J1 , PO-J2 )** |  | 2027-03-17 → 2027-01-20 (-56d) |  |  |  |  |  |
| PRO-DPO-CV-DL-10 | Material Delivery & Site Inspection for Civil Works for Storm Drainage Ponds ( PO-J1 ) |  | 2026-12-26 → 2027-01-02 (+7d) |  |  | -78d → -84d |  |  |
| PRO-DPO-CV-DL-20 | Material Delivery & Site Inspection for Civil Works for Storm Drainage Ponds ( PO-J2 ) |  | 2027-03-17 → 2027-01-20 (-56d) |  |  | -243d → -184d | PRO-DPO-CV-1DL-20 → PRO-DPO-CV-1DL-20 FF |  |
| LL | **Long Lead Time Items** |  | 2027-05-08 → 2026-12-09 (-150d) |  |  |  |  |  |
| 1 | **Superstructure Works** |  | 2027-05-08 → 2026-12-09 (-150d) |  |  |  |  |  |
| SL | **Sewage Pump Stations ( PS 06 )** |  | 2027-05-08 → 2026-12-09 (-150d) |  |  |  |  |  |
| PRO-SPS-LL-PO-10 | Issuance of Purchase Order for Electromechanical Works for Sewage Pump Stations |  |  |  |  |  | ENG-MS-SPS-A-110, ENG-SH-SPS-A-110, ENG-MT-SPS-MC-A-110, PRO-MV-LL-PO-10, PRO-MV-LL-MF-10 SS → ENG-MS-SPS-A-110, ENG-SH-SPS-A-110, ENG-MT-SPS-MC-A-110, PRO-MV-LL-PO-10, PRO-MV-LL-MF-10 |  |
| 2 | **Manufacturing of Material** |  | 2026-12-02 → 2026-06-30 (-155d) |  |  |  |  |  |
| PRO-SPS7-LL-MF-10 | Manufacturing of Electromechanical Works for Sewage Pump Stations ( PS 06 ) |  | 2026-12-02 → 2026-06-30 A (-155d) |  | 50% → 100% | -172d → none | PRO-SPS-LL-PO-10, PRO-MV-LL-MF-10 SS → PRO-SPS-LL-PO-10, PRO-MV-LL-MF-10 |  |
| 3 | **Material Shipping/Custom Clearance/Delivery** | 2026-12-03 → 2026-07-05 (-151d) | 2027-03-07 → 2026-08-06 (-213d) |  |  |  |  |  |
| PRO-SPS7-LL-SH/DL-10 | Material Delivery for Electromechanical Works for Sewage Pump Stations ( PS 06 ) | 2026-12-03 → 2026-07-05 A (-151d) | 2027-03-07 → 2026-08-06 A (-213d) |  | 0% → 100% | -172d → none |  |  |
| 4 | **Material Site Inspection** | 2026-09-15 → 2026-10-05 (+20d) | 2027-05-08 → 2026-12-09 (-150d) |  |  |  |  |  |
| PRO-SPS7-LL-MSI-10 | Material Site Inspection for Electromechanical Works for Sewage Pump Stations ( PS06 ) | 2026-09-15 A → 2026-10-05 A (+20d) | 2027-05-08 → 2026-12-09 (-150d) |  | 30% → 40% | -172d → -48d |  |  |
| CON | **Construction Works** |  | 2027-10-25 → 2027-12-06 (+42d) |  |  |  |  |  |
| INF | **Infrastructure Networks** |  | 2027-10-25 → 2027-12-06 (+42d) |  |  |  |  |  |
| 1 | **Phase 2 Block "J"** |  | 2027-09-06 → 2027-09-15 (+9d) |  |  |  |  |  |
| SW | **Rising Main Network** |  | 2026-12-14 → 2026-11-05 (-39d) |  |  |  |  |  |
| ML | **Main Line Sections** |  | 2026-12-14 → 2026-11-05 (-39d) |  |  |  |  |  |
| CO-RM-SW-290 | Trench Excavation and Bedding Works for Main Lines of Rising Main Network |  |  |  |  |  | CO-R09.S01-SW-130, CO-R09.S02-SW-130 → CO-R09.S01-SW-130 | resources Skilled Labor/Surveyor [29 h]; Foreman [29 h]; Excavator [288 h]; HDPE force main DN 800mm diameter, in trenches depth: 0- 1.5m [10]; HDPE force main DN 800mm diameter, in trenches depth: 1.51- 2.5m [223.7] → Skilled Labor/Surveyor [51 h]; Foreman [51 h]; Excavator [288 h]; HDPE force main DN 800mm diameter, in trenches depth: 0- 1.5m [10]; HDPE force main DN 800mm diameter, in trenches depth: 1.51- 2.5m [223.7] |
| CO-RM-SW-300 | Pipes Laying Works for Main Lines of Rising Main Network |  | 2026-11-19 → 2026-11-05 (-14d) |  | 96% → 98% | 24d → 57d |  | resources Labor/Helper [768 h]; Skilled Labor/Surveyor [39 h]; Foreman [39 h]; Plumber [384 h]; Excavator [384 h]; HDPE force main DN 800mm diameter, in trenches depth: 0- 1.5m [35]; HDPE force main DN 800mm diameter, in trenches depth: 1.51- 2.5m [782.95] → Labor/Helper [1344 h]; Skilled Labor/Surveyor [48 h]; Foreman [68 h]; Plumber [672 h]; Excavator [384 h]; HDPE force main DN 800mm diameter, in trenches depth: 0- 1.5m [35]; HDPE force main DN 800mm diameter, in trenches depth: 1.51- 2.5m [782.95] |
| CO-RM-SW-310 | Trench Backfilling and Compaction Works for Main Lines of Rising Main Network |  | 2026-12-14 → 2026-11-05 (-39d) |  | 30% → 80% | 24d → 57d | CO-RM-SW-300, CO-RM-SW-370, CO-RM-SW-440 FF → CO-RM-SW-300 SS, CO-RM-SW-370 FF, CO-RM-SW-440 FF | resources Skilled Labor/Surveyor [29 h]; Foreman [29 h]; Excavator [288 h]; HDPE force main DN 800mm diameter, in trenches depth: 0- 1.5m [5]; HDPE force main DN 800mm diameter, in trenches depth: 1.51- 2.5m [111.85] → Skilled Labor/Surveyor [51 h]; Foreman [51 h]; Excavator [288 h]; HDPE force main DN 800mm diameter, in trenches depth: 0- 1.5m [5]; HDPE force main DN 800mm diameter, in trenches depth: 1.51- 2.5m [111.85] |
| MH | **Manholes** |  | 2026-11-16 → 2026-10-19 (-28d) |  |  |  |  |  |
| CO-RM-SW-320 | Excavation Works for Main Line Manholes of Rising Main Network |  |  |  |  |  | CO-RM-SW-290 SS, CO-RM-SW-300 SS → CO-RM-SW-290 SS |  |
| CO-RM-SW-330 | Installation RC Footing Works for Main Line Manholes of Rising Main Network |  | 2026-10-29 → 2026-10-15 (-14d) |  |  | 27d → 72d |  |  |
| CO-RM-SW-340 | Install Grp Liner Wall Works for Main Line Manholes of Rising Main Network |  | 2026-11-05 → 2026-10-19 (-17d) |  |  | 27d → 72d | CO-RM-SW-330 → CO-RM-SW-330 SS |  |
| CO-RM-SW-350 | Pouring Grp Liner Wall Works for Main Line Manholes of Rising Main Network |  | 2026-11-09 → 2026-10-15 (-25d) |  | 30% → 90% | 27d → 73d | CO-RM-SW-340 → CO-RM-SW-340 SS |  |
| CO-RM-SW-360 | Backfilling Works for Main Line Manholes of Rising Main Network |  | 2026-11-15 → 2026-10-18 (-28d) |  | 15% → 80% | 27d → 73d | CO-RM-SW-350 → CO-RM-SW-350 SS |  |
| CO-RM-SW-370 | Testing Works for Main Line Manholes of Rising Main Network | 2026-11-16 → 2026-10-01 A (-46d) | 2026-11-16 → 2026-10-13 (-34d) |  | 0% → 40% | 27d → 77d | CO-RM-SW-360 → CO-RM-SW-360 SS |  |
| VC | **Valves Chamber** |  | 2026-11-15 → 2026-11-01 (-14d) |  |  |  |  |  |
| CO-RM-SW-400 | RC Wall Works for Valve Chambers and Washout chamber of Rising Main Network |  | 2026-10-27 → 2026-10-13 (-14d) |  | 35% → 70% | 49d → 61d |  |  |
| CO-RM-SW-410 | RC Slab Works for Valve Chambers and Washout chamber of Rising Main Network | 2026-10-27 → 2026-10-13 (-14d) | 2026-11-03 → 2026-10-20 (-14d) |  |  | 49d → 61d |  |  |
| CO-RM-SW-420 | Insulation Works for Valve Chambers and Washout chamber of Rising Main Network | 2026-11-04 → 2026-10-21 (-14d) | 2026-11-05 → 2026-10-22 (-14d) |  |  | 49d → 61d |  |  |
| CO-RM-SW-430 | Backfilling Works for Valve Chambers and Washout chamber of Rising Main Network | 2026-11-07 → 2026-10-24 (-14d) | 2026-11-11 → 2026-10-28 (-14d) |  |  | 49d → 61d |  |  |
| CO-RM-SW-440 | Testing and Covering Works for Valve Chambers and Washout chamber of Rising Main Network | 2026-11-12 → 2026-10-29 (-14d) | 2026-11-15 → 2026-11-01 (-14d) |  |  | 49d → 61d |  |  |
| 2 | **Road 09 Local 2 ( 2278 LM )** |  | 2027-08-07 → 2027-09-11 (+35d) |  |  |  |  |  |
| SW_1 | **SW_1** |  | 2027-07-31 → 2027-09-11 (+42d) |  |  |  |  |  |
| CO-R09.S01-EW-110 | Embankments Works Upto Design Level for Earthworks-[Road 09] -[SW-1] |  |  |  |  |  |  | resources Labor/Helper [1560 h]; Skilled Labor/Surveyor [195 h]; Foreman [195 h]; Water Tank [1560 h]; Dozer [1560 h]; Embankments to the ROW, with suitable material other than top soil or rock according to specifications [53596.5] → Labor/Helper [1040 h]; Skilled Labor/Surveyor [130 h]; Foreman [130 h]; Water Tank [1560 h]; Dozer [1560 h]; Embankments to the ROW, with suitable material other than top soil or rock according to specifications [53596.5] |
| CO-R09.S01-EW-100 | Roadway Excavation Works Upto Design Level for Earthworks-[Road 09] -[SW-1] |  |  |  |  |  |  | resources Labor/Helper [1152 h]; Skilled Labor/Surveyor [144 h]; Foreman [144 h]; Water Tank [1152 h]; Dozer [1152 h]; Roadway Excavation for cuttings; on any type of material for all depths including trimming and Preparation of excavated surfaces and disposal. [31838.6] → Labor/Helper [960 h]; Skilled Labor/Surveyor [120 h]; Foreman [120 h]; Water Tank [1152 h]; Dozer [1152 h]; Roadway Excavation for cuttings; on any type of material for all depths including trimming and Preparation of excavated surfaces and disposal. [31838.6] |
| SW | **Sewage Network** |  | 2026-10-06 → 2026-10-13 (+7d) |  |  |  |  |  |
| CO-R09.S01-SW-100 | Trench Excavation and Bedding Works for Main Lines of Sewage Network-[Road 09] -[SW-1] |  |  |  |  |  |  | resources Skilled Labor/Surveyor [29 h]; Foreman [29 h]; Excavator [288 h]; Nominal bore : 160mm; Depth : 1.5m - 2.5m [40]; Nominal bore : 200mm; Depth : 0.0m - 1.5m [10.97]; Nominal bore : 200mm; Depth : 1.5m - 2.5m [30.16]; Nominal bore : 200mm; Depth : 2.5m - 3.5m [44.1]; Nominal bore : 200mm; Depth : 3.5m - 4.5m [51.01]; Nominal bore : 200mm; Depth : 4.5m -5.5m [25.19]; Nominal bore : 200mm; Depth : 5.5m - 6.5m [32.68]; Nominal bore : 250mm; Depth : 4.5m -5.5m [44]; Nominal bore : 250mm; Depth : 5.5m - 6.5m [36]; Nominal bore : 315mm; Depth : 4.5m -5.5m [36]; Nominal bore : 315mm; Depth : 6.5m - 7.5m [40]; Depth : 6.5 -7.5m [50]; Depth :more than 7.5m [120] → Skilled Labor/Surveyor [24 h]; Foreman [24 h]; Excavator [288 h]; Nominal bore : 160mm; Depth : 1.5m - 2.5m [40]; Nominal bore : 200mm; Depth : 0.0m - 1.5m [10.97]; Nominal bore : 200mm; Depth : 1.5m - 2.5m [30.16]; Nominal bore : 200mm; Depth : 2.5m - 3.5m [44.1]; Nominal bore : 200mm; Depth : 3.5m - 4.5m [51.01]; Nominal bore : 200mm; Depth : 4.5m -5.5m [25.19]; Nominal bore : 200mm; Depth : 5.5m - 6.5m [32.68]; Nominal bore : 250mm; Depth : 4.5m -5.5m [44]; Nominal bore : 250mm; Depth : 5.5m - 6.5m [36]; Nominal bore : 315mm; Depth : 4.5m -5.5m [36]; Nominal bore : 315mm; Depth : 6.5m - 7.5m [40]; Depth : 6.5 -7.5m [50]; Depth :more than 7.5m [120] |
| CO-R09.S01-SW-130 | Trench Backfilling and Compaction Works for Main Lines of Sewage Network-[Road 09] -[SW-1] |  |  |  |  |  | ENG-SH-SW-ML-A-110 FF, ENG-MS-SW-ML-A-110 FF, CO-R09.S01-SW-120, CO-R09.S01-SW-210 FF → ENG-SH-SW-ML-A-110 FF, ENG-MS-SW-ML-A-110 FF, CO-R09.S01-SW-120 |  |
| MH | **Manholes** |  | 2026-10-06 → 2026-10-13 (+7d) |  |  |  |  |  |
| CO-R09.S01-SW-210 | Testing Works for Main Line Manholes of Sewage Network-[Road 09] -[SW-1] | 2026-10-06 → 2026-10-13 (+7d) | 2026-10-06 → 2026-10-13 (+7d) |  |  | -239.5d → 22d |  |  |
| SD | **Storm Drainage Network** |  | 2026-11-12 → 2026-10-28 (-15d) |  |  |  |  |  |
| CO-R09.S01-SD-100 | Trench Excavation and Bedding Works for Main Lines of Storm Drainage Network-[Road 09] -[SW-1] |  |  |  |  |  | ENG-SH-SD-ML-A-110, CO-R09.S01-EW-110, CO-R09.S01-EW-100, MS-CS-PS SS, ENG-MS-SD-ML-A-110, CO-R09.S01-SW-130 SS, CO-R09.S01-SW-130 FF, CO-R10.S04-ES-SD-100 → ENG-SH-SD-ML-A-110, CO-R09.S01-EW-110, CO-R09.S01-EW-100, MS-CS-PS SS, ENG-MS-SD-ML-A-110, CO-R09.S01-SW-130 SS+3d, CO-R09.S01-SW-130 FF+3d, CO-R10.S04-ES-SD-100 | resources Skilled Labor/Surveyor [16 h]; Foreman [16 h]; Excavator [160 h]; Pipe with diameter 400mm ; depth: 0.0m - 1.5m [18.55]; Pipe with diameter 600mm ; depth: 0.0m - 1.5m [10]; Pipe with diameter 700mm ; depth: 1.51m - 2.5m [20]; Pipe with diameter 700mm ; depth: 2.51m - 3.5m [10]; Pipe with diameter 800mm ; depth: 1.51m - 2.5m [11.2]; Pipe with diameter 1100mm ; depth: 1.51m - 2.5m [66.7]; Pipe with diameter 1100mm ; depth: 2.51 - 3.5m [17.4] → Skilled Labor/Surveyor [8 h]; Foreman [8 h]; Excavator [160 h]; Pipe with diameter 400mm ; depth: 0.0m - 1.5m [18.55]; Pipe with diameter 600mm ; depth: 0.0m - 1.5m [10]; Pipe with diameter 700mm ; depth: 1.51m - 2.5m [20]; Pipe with diameter 700mm ; depth: 2.51m - 3.5m [10]; Pipe with diameter 800mm ; depth: 1.51m - 2.5m [11.2]; Pipe with diameter 1100mm ; depth: 1.51m - 2.5m [66.7]; Pipe with diameter 1100mm ; depth: 2.51 - 3.5m [17.4] |
| CO-R09.S01-SD-120 | Pipes Laying Works for Main Lines of Storm Drainage Network-[Road 09] -[SW-1] |  |  |  |  |  |  | resources Labor/Helper [672 h]; Skilled Labor/Surveyor [34 h]; Foreman [34 h]; Plumber [336 h]; Excavator [336 h]; Pipe with diameter 400mm ; depth: 0.0m - 1.5m [55.65]; Pipe with diameter 600mm ; depth: 0.0m - 1.5m [30]; Pipe with diameter 700mm ; depth: 1.51m - 2.5m [60]; Pipe with diameter 700mm ; depth: 2.51m - 3.5m [30]; Pipe with diameter 800mm ; depth: 1.51m - 2.5m [33.6]; Pipe with diameter 1000mm ; depth: 2.51 - 3.5m [354.81]; Pipe with diameter 1100mm ; depth: 1.51m - 2.5m [200.1]; Pipe with diameter 1100mm ; depth: 2.51 - 3.5m [52.2]; Pipe encasement dia 300 mm [44.96]; Pipe encasement dia 400 mm [23.04]; Pipe encasement dia 500 mm [16.72]; Pipe encasement dia 600 mm [8.22]; Pipe encasement dia 700 mm [14.54]; Pipe encasement dia 800 mm [7.4]; Pipe encasement dia 900 mm [4.94]; Pipe encasement dia 1000 mm [5.2]; Pipe encasement dia 1100 mm [4.66]; Pipe encasement dia 1200 mm [2.74]; Box Conduit with dimensions 1200*1200 mm ; depth: 0.0m - 1.5m [75]; Box Conduit with dimensions 1200*1200 mm ; depth: 2.51m - 3.5m [678]; Box Conduit with dimensions 1500*1200 mm ; depth: 2.51m - 3.5m [543]; Box Conduit with dimensions 1500*1500 mm ; depth: 2.51m - 3.5m [270]; Box Conduit with dimensions 2000*1200 mm ; depth: 2.51m - 3.5m [485] → Labor/Helper [320 h]; Skilled Labor/Surveyor [16 h]; Foreman [16 h]; Plumber [160 h]; Excavator [336 h]; Pipe with diameter 400mm ; depth: 0.0m - 1.5m [55.65]; Pipe with diameter 600mm ; depth: 0.0m - 1.5m [30]; Pipe with diameter 700mm ; depth: 1.51m - 2.5m [60]; Pipe with diameter 700mm ; depth: 2.51m - 3.5m [30]; Pipe with diameter 800mm ; depth: 1.51m - 2.5m [33.6]; Pipe with diameter 1000mm ; depth: 2.51 - 3.5m [354.81]; Pipe with diameter 1100mm ; depth: 1.51m - 2.5m [200.1]; Pipe with diameter 1100mm ; depth: 2.51 - 3.5m [52.2]; Pipe encasement dia 300 mm [44.96]; Pipe encasement dia 400 mm [23.04]; Pipe encasement dia 500 mm [16.72]; Pipe encasement dia 600 mm [8.22]; Pipe encasement dia 700 mm [14.54]; Pipe encasement dia 800 mm [7.4]; Pipe encasement dia 900 mm [4.94]; Pipe encasement dia 1000 mm [5.2]; Pipe encasement dia 1100 mm [4.66]; Pipe encasement dia 1200 mm [2.74]; Box Conduit with dimensions 1200*1200 mm ; depth: 0.0m - 1.5m [75]; Box Conduit with dimensions 1200*1200 mm ; depth: 2.51m - 3.5m [678]; Box Conduit with dimensions 1500*1200 mm ; depth: 2.51m - 3.5m [543]; Box Conduit with dimensions 1500*1500 mm ; depth: 2.51m - 3.5m [270]; Box Conduit with dimensions 2000*1200 mm ; depth: 2.51m - 3.5m [485] |
| CO-R09.S01-SD-130 | Trench Backfilling and Compaction Works for Main Lines of Storm Drainage Network-[Road 09] -[SW-1] |  |  |  |  |  | ENG-SH-SD-ML-A-110 FF, ENG-MS-SD-ML-A-110 FF, CO-R09.S01-SD-120, CO-R09.S01-SD-220 FF, CO-R09.S01-SD-170 FF, CO-R09.S01-SW-130, CO-R09.S02-SW-130 → ENG-SH-SD-ML-A-110 FF, ENG-MS-SD-ML-A-110 FF, CO-R09.S01-SD-120, CO-R09.S01-SD-220 FF, CO-R09.S01-SW-130 |  |
| MH | **Manholes** |  | 2026-10-08 → 2026-10-14 (+6d) |  |  |  |  |  |
| CO-R09.S01-SD-190 | Install RC Footing Works for Manholes of Storm Drainage Network-[Road 09] -[SW-1] |  |  |  |  |  | CO-R09.S01-SD-180 SS → CO-R09.S01-SD-180 |  |
| CO-R09.S01-SD-200 | Install RC Wall Rings & Slab Works for Manholes of Storm Drainage Network-[Road 09] -[SW-1] |  |  | 5d → 7d |  |  | CO-R09.S01-SD-190 SS → CO-R09.S01-SD-190 |  |

| ID | Task | Start | Finish | Complete | Total float | Predecessors | Other |
| --- | --- | --- | --- | --- | --- | --- | --- |
| CO-R09.S01-SD-220 | Backfilling Works for Manholes of Storm Drainage Network-[Road 09] -[SW-1] |  |  |  |  | CO-R09.S01-SD-210 → CO-R09.S01-SD-200 |  |
| CO-R09.S01-SD-210 | Testing Works for Manholes of Storm Drainage Network-[Road 09] -[SW-1] | 2026-10-07 A | 2026-10-08 → 2026-10-14 (+6d) | 0% → 40% | -239.5d → 50d |  |  |
| CB | **Catch Basin Sections** |  | 2026-11-12 → 2026-10-28 (-15d) |  |  |  |  |
| CO-R09.S01-SD-140 | Trench Excavation and Bedding Works for Catch Basins of Storm Drainage Network-[Road 09] -[SW-1] |  | 2026-10-15 → 2026-10-19 (+4d) |  | -239.5d → -160d |  | resources Skilled Labor/Surveyor [8 h]; Foreman [8 h]; Excavator [80 h]; Pipe with diameter 300mm ; depth: 0 - 1.5m [168.62]; Pipe with diameter 400mm ; depth: 0 - 1.5m [10.28] → Skilled Labor/Surveyor [5 h]; Foreman [5 h]; Excavator [80 h]; Pipe with diameter 300mm ; depth: 0 - 1.5m [168.62]; Pipe with diameter 400mm ; depth: 0 - 1.5m [10.28] |
| CO-R09.S01-SD-150 | Installation and Pipes Laying Connection Works for Catch Basins of Storm Drainage Network-[Road 09] -[SW-1] |  | 2026-10-24 → 2026-10-20 (-4d) |  | -239.5d → -160d | CO-R09.S01-SD-140, PRO-SD-1DL-130 → CO-R09.S01-SD-140 SS, PRO-SD-1DL-130 | resources Labor/Helper [160 h]; Skilled Labor/Surveyor [8 h]; Foreman [8 h]; Excavator [80 h]; Pipe with diameter 300mm ; depth: 0 - 1.5m [505.85]; Pipe with diameter 400mm ; depth: 0 - 1.5m [30.84] → Labor/Helper [112 h]; Skilled Labor/Surveyor [6 h]; Foreman [6 h]; Excavator [80 h]; Pipe with diameter 300mm ; depth: 0 - 1.5m [505.85]; Pipe with diameter 400mm ; depth: 0 - 1.5m [30.84] |
| CO-R09.S01-SD-170 | Trench Backfilling and Compaction Works for Catch Basins of Storm Drainage Network-[Road 09] -[SW-1] |  | 2026-11-12 → 2026-10-28 (-15d) |  | -239.5d → -160d | CO-R09.S01-SD-160 → CO-R09.S01-SD-160 FF |  |
| CO-R09.S01-SD-160 | Testing Works for Catch Basins of Storm Drainage Network-[Road 09] -[SW-1] | 2026-10-25 → 2026-10-21 (-4d) | 2026-11-01 → 2026-10-28 (-4d) |  | -239.5d → -160d |  |  |
| IR | **Irrigation Network** |  | 2026-12-02 → 2026-11-01 (-31d) |  |  |  |  |
| ML | **Main Line Pipes** |  | 2026-12-02 → 2026-11-01 (-31d) |  |  |  |  |
| CO-R09.S01-IR-100 | Trench Excavation and Bedding Works for Main Lines of Irrigation Network-[Road 09] -[SW-1] |  |  |  |  | ENG-SH-IR-ML-A-110, CO-R09.S01-EW-110, ENG-MS-IR-ML-A-110, CO-R09.S01-SD-170 → ENG-SH-IR-ML-A-110, CO-R09.S01-EW-110, ENG-MS-IR-ML-A-110 |  |
| CO-R09.S01-IR-120 | Installation Works for Main Line Valves of Irrigation Network-[Road 09] -[SW-1] |  | 2026-11-21 → 2026-10-20 (-32d) | 20% → 40% | -239.5d → -200.5d | CO-R09.S01-IR-110, PRO-IR-1DL-110, PRO-R09-IR-DL-110 FF+3d → CO-R09.S01-IR-110, PRO-IR-1DL-110 FF, PRO-R09-IR-DL-110 FF+3d |  |
| CO-R09.S01-IR-140 | Trench Backfilling and Compaction Works for Main Lines of Irrigation Network-[Road 09] -[SW-1] | 2026-11-22 → 2026-10-21 (-32d) | 2026-12-02 → 2026-11-01 (-31d) |  | -239.5d → -200.5d |  |  |
| SL | **Street Lighting Network** | 2026-12-03 → 2026-11-02 (-31d) | 2027-06-20 → 2027-08-15 (+56d) |  |  |  |  |
| LP | **Lighting Poles Works** | 2026-12-03 → 2026-11-02 (-31d) | 2027-02-20 → 2027-01-19 (-32d) |  |  |  |  |
| CO-R09.S01-SL-100 | Foundation Excavation Works for Lighting Poles of Street Lighting Network-[Road 09] -[SW-1] | 2026-12-03 → 2026-11-02 (-31d) | 2026-12-14 → 2026-11-12 (-32d) |  | -239.5d → -200.5d |  |  |
| CO-R09.S01-SL-110 | Installation Works for Lighting Poles Foundation of Street Lighting Network-[Road 09] -[SW-1] | 2026-12-15 → 2026-11-14 (-31d) | 2026-12-28 → 2026-11-26 (-32d) |  | -239.5d → -200.5d |  |  |
| CO-R09.S01-SL-120 | Installation Works for Lighting Poles of Street Lighting Network-[Road 09] -[SW-1] | 2027-01-19 → 2026-12-19 (-31d) | 2027-01-31 → 2026-12-30 (-32d) |  | -239.5d → -200.5d |  |  |
| CO-R09.S01-SL-210 | Backfilling Works for Lighting Poles of Street Lighting Network-[Road 09] -[SW-1] | 2027-02-01 → 2026-12-31 (-32d) | 2027-02-14 → 2027-01-13 (-32d) |  | -239.5d → -200.5d |  |  |
| CO-R09.S01-SL-130 | Installation Works for Lighting Fixtures With Drop Wire of Street Lighting Network-[Road 09] -[SW-1] | 2027-02-07 → 2027-01-06 (-32d) | 2027-02-20 → 2027-01-19 (-32d) |  | -216.5d → -177.5d |  |  |
| CO-R09.S01-SL-200 | Testing Works for Lighting Poles of Street Lighting Network-[Road 09] -[SW-1] | 2027-02-15 → 2027-01-14 (-32d) | 2027-02-20 → 2027-01-19 (-32d) |  | -216.5d → -177.5d |  |  |
| CW | **Cabling Works** | 2026-12-15 → 2026-11-14 (-31d) | 2027-01-18 → 2026-12-17 (-32d) |  |  |  |  |
| CO-R09.S01-SL-140 | Trench Excavation and Bedding Works for Street Lighting Network-[Road 09] -[SW-1] | 2026-12-15 → 2026-11-14 (-31d) | 2026-12-26 → 2026-11-24 (-32d) |  | -239.5d → -200.5d |  |  |
| CO-R09.S01-SL-150 | Cable Laying Works for Street Lighting Network-[Road 09] -[SW-1] | 2026-12-27 → 2026-11-25 (-32d) | 2027-01-06 → 2026-12-06 (-31d) |  | -239.5d → -200.5d |  |  |
| CO-R09.S01-SL-160 | Trench Backfilling and Compaction Works for Street Lighting Network-[Road 09] -[SW-1] | 2027-01-07 → 2026-12-07 (-31d) | 2027-01-18 → 2026-12-17 (-32d) |  | -239.5d → -200.5d |  |  |
| DPB | **Distrubution Panel Boards** | 2027-05-01 → 2027-07-01 (+61d) | 2027-06-20 → 2027-08-15 (+56d) |  |  |  |  |
| CO-R09.S01-SL-170 | Foundation Excavation Works For Panel Boards of Street Lighting Network-[Road 09] -[SW-1] | 2027-05-01 → 2027-07-01 (+61d) | 2027-05-23 → 2027-07-18 (+56d) |  | -247.5d → -283.5d |  |  |
| CO-R09.S01-SL-180 | Installation Works for Panel Board Concrete Foundations of Street Lighting Network-[Road 09] -[SW-1] | 2027-05-24 → 2027-07-19 (+56d) | 2027-06-06 → 2027-08-01 (+56d) |  | -247.5d → -283.5d |  |  |
| CO-R09.S01-SL-190 | Installation Works for Lighting Panel Boards of Street Lighting Network-[Road 09] -[SW-1] | 2027-06-07 → 2027-08-02 (+56d) | 2027-06-20 → 2027-08-15 (+56d) |  | -247.5d → -283.5d |  |  |
| CO-R09.S01-SL-220 | A wall of concrete blocks to install the KWH meter of Street Lighting Network-[Road 09] -[SW-1] | 2027-06-07 → 2027-08-02 (+56d) | 2027-06-20 → 2027-08-15 (+56d) |  | -247.5d → -283.5d |  |  |
| MV | **Medium Voltage Network** |  | 2027-02-06 → 2026-12-27 (-41d) |  |  |  |  |
| CW | **Cabling Works** |  | 2027-02-06 → 2026-12-27 (-41d) |  |  |  |  |
| CO-R09.S01-MV-100 | Trench Excavation and Bedding Works for Medium Voltage Network-[Road 09] -[SW-1] |  | 2027-01-23 → 2026-12-17 (-37d) | 20% → 40% | -235d → -200d | ENG-SH-MV-A-110, CO-R09.S01-SD-170 SS+3d, CO-R09.S01-SD-170 FF+3d, CO-R09.S01-EW-110, ENG-MS-MV-A-110, CO-R09.S01-SL-160 → ENG-SH-MV-A-110, CO-R09.S01-SD-170 SS+3d, CO-R09.S01-SD-170 FF+3d, CO-R09.S01-EW-110, ENG-MS-MV-A-110, CO-R09.S01-SL-160 FF |  |
| CO-R09.S01-MV-110 | Cable Laying Works for Medium Voltage Network-[Road 09] -[SW-1] | 2027-01-24 → 2026-10-07 A (-109d) | 2027-01-28 → 2026-12-19 (-40d) | 0% → 40% | -235d → -200d | PRO-MV-1DL-100, CO-R09.S01-MV-100, MS-CS-MV, PRO-R09-MV-DL-100 FF+3d → PRO-MV-1DL-100, CO-R09.S01-MV-100 SS, MS-CS-MV FF, PRO-R09-MV-DL-100 FF+3d |  |
| CO-R09.S01-MV-120 | Trench Backfilling and Compaction Works for Medium Voltage Network-[Road 09] -[SW-1] | 2027-01-30 → 2026-12-20 (-41d) | 2027-02-06 → 2026-12-27 (-41d) |  | -235d → -200d |  |  |
| TE | **Telecom Network** | 2027-02-07 → 2026-12-28 (-41d) | 2027-03-27 → 2027-02-09 (-46d) |  |  |  |  |
| PD | **Ducts Works** | 2027-02-07 → 2026-12-28 (-41d) | 2027-02-20 → 2027-01-10 (-41d) |  |  |  |  |
| CO-R09.S01-TE-100 | Trench Excavation and Bedding Works for Ducts of Telecom Network-[Road 09] -[SW-1] | 2027-02-07 → 2026-12-28 (-41d) | 2027-02-08 → 2026-12-29 (-41d) |  | -235d → -200d |  |  |
| CO-R09.S01-TE-110 | Pipes Laying Works for Ducts of Telecom Network-[Road 09] -[SW-1] | 2027-02-09 → 2026-12-30 (-41d) | 2027-02-13 → 2027-01-03 (-41d) |  | -221d → -186d |  |  |
| CO-R09.S01-TE-120 | Pouring Plain Concrete Above Ducts of Telecom Network-[Road 09] -[SW-1] | 2027-02-14 → 2027-01-04 (-41d) | 2027-02-15 → 2027-01-05 (-41d) |  | -221d → -186d |  |  |
| CO-R09.S01-TE-130 | Trench Backfilling and Compaction Works for Ducts of Telecom Network-[Road 09] -[SW-1] | 2027-02-16 → 2027-01-06 (-41d) | 2027-02-20 → 2027-01-10 (-41d) |  | -221d → -186d |  |  |
| MH | **Manholes Works** | 2027-02-09 → 2026-12-30 (-41d) | 2027-03-27 → 2027-02-09 (-46d) |  |  |  |  |
| CO-R09.S01-TE-140 | Excavation Works for Manholes of Telecom Network-[Road 09] -[SW-1] | 2027-02-09 → 2026-12-30 (-41d) | 2027-02-23 → 2027-01-12 (-42d) |  | -235d → -200d |  |  |
| CO-R09.S01-TE-150 | Installation Works for Manholes of Telecom Network-[Road 09] -[SW-1] | 2027-02-24 → 2027-01-13 (-42d) | 2027-03-13 → 2027-01-26 (-46d) |  | -235d → -200d |  |  |
| CO-R09.S01-TE-160 | Backfilling Works for Manholes of Telecom Network-[Road 09] -[SW-1] | 2027-03-14 → 2027-01-27 (-46d) | 2027-03-27 → 2027-02-09 (-46d) |  | -235d → -200d |  |  |
| RD | **Road Works** |  | 2027-07-31 → 2027-09-11 (+42d) |  |  |  |  |
| RD | **Pre-Bituminous Construction** |  | 2027-04-24 → 2027-02-13 (-70d) |  |  |  |  |
| CO-R09.S01-RD-P-100 | Capping and Subgrade Layer for Road Works-[Road 09] -[SW-1] |  | 2027-04-20 → 2027-02-09 (-70d) |  | -223d → -167d | ENG-SH-RD-A-100, PRO-RD-1DL-100, CO-R09.S01-SD-130, CO-R09.S01-SW-130, CO-R09.S01-SL-160 SS+3d, CO-R09.S01-SL-160 FF+3d, ENG-MS-RD-A-10, CO-R09.S01-MV-120 SS+3d, CO-R09.S01-MV-120 FF+3d, CO-R09.S01-TE-130, CO-R09.S01-TE-160, CO-R09.S02-SW-130 → ENG-SH-RD-A-100, PRO-RD-1DL-100, CO-R09.S01-SD-130, CO-R09.S01-SW-130, CO-R09.S01-SL-160 FF+3d, ENG-MS-RD-A-10, CO-R09.S01-MV-120 FF+3d, CO-R09.S01-TE-130 FF, CO-R09.S01-TE-160 FF, CO-R09.S02-SW-130 SS |  |
| CO-R09.S01-RD-P-110 | Aggregate Base Course Layer for Road Works-[Road 09] -[SW-1] | 2027-03-31 → 2027-01-20 (-70d) | 2027-04-24 → 2027-02-13 (-70d) |  | -181d → -86d |  |  |
| LS | **Pavement Works** |  | 2027-07-31 → 2027-09-11 (+42d) |  |  |  |  |
| CO-R09.S01-RD-P-120 | Fixing of Curbstone for Sidewalks Pavement-[Road 09] -[SW-1] |  |  |  |  | PRO-RD-1DL-150, ENG-SH-HS-A-110, ENG-MS-HS-A-10, CO-R09.S01-RD-P-110, ENG-MT-RD-A-150 → ENG-SH-HS-A-110, ENG-MS-HS-A-10, ENG-MT-RD-A-150 |  |
| CO-R09.S01-RD-P-130 | Fixing of Interlock Tiles for Sidewalks Pavement-[Road 09] -[SW-1] |  | 2027-07-31 → 2027-09-11 (+42d) |  | -247.5d → -283.5d | PRO-RD-1DL-140, CO-R09.S01-RD-P-120, CO-R09-PW-TF-100, CO-R09-PW-TF-110, CO-R09-PW-TF-120, CO-R09-SW-TF-100, CO-R09-SW-TF-110, CO-R09-SW-TF-120, CO-R09-SD-TF-120, CO-R09-SD-TF-100, CO-R09-SL-TF-100, CO-R09-SL-TF-110, CO-R09-SL-ES-100, CO-R09-SL-ES-110, CO-R09-IR-TF-100, CO-R09-MV-TF-100 → PRO-RD-1DL-140 FF, CO-R09.S01-RD-P-120 SS, CO-R09-PW-TF-100 FF, CO-R09-PW-TF-110 FF, CO-R09-PW-TF-120 FF, CO-R09-SW-TF-100 SS, CO-R09-SW-TF-110 FF, CO-R09-SW-TF-120 FF, CO-R09-SD-TF-120 SS, CO-R09-SD-TF-100 SS, CO-R09-SL-TF-100 FF, CO-R09-SL-TF-110 FF, CO-R09-SL-ES-100 FF, CO-R09-SL-ES-110 FF, CO-R09-IR-TF-100 FF, CO-R09-MV-TF-100 FF | resources Labor/Helper [1296 h]; Block Mason [3888 h]; Interlocking block pavers for sidewalk/footpath 60mm thick on and including 30mm Sand Bedding, 200mm Aggregate subbase, all in accordance with authority standards and complete as per specifications [4455.27]; Extraover for Pedestrian ramps [11] → Labor/Helper [864 h]; Block Mason [2592 h]; Interlocking block pavers for sidewalk/footpath 60mm thick on and including 30mm Sand Bedding, 200mm Aggregate subbase, all in accordance with authority standards and complete as per specifications [4455.27]; Extraover for Pedestrian ramps [11] |
| SW_2 | **SW_2** |  | 2027-08-07 → 2027-09-11 (+35d) |  |  |  |  |
| CO-R09.S02-EW-110 | Roadway Excavation Works Upto Design Level for Earthworks-[Road 09]-[SW-2] |  |  |  |  |  | resources Labor/Helper [1152 h]; Skilled Labor/Surveyor [144 h]; Foreman [144 h]; Water Tank [1152 h]; Dozer [1152 h]; Roadway Excavation for cuttings; on any type of material for all depths including trimming and Preparation of excavated surfaces and disposal. [31838.6] → Labor/Helper [640 h]; Skilled Labor/Surveyor [80 h]; Foreman [80 h]; Water Tank [1152 h]; Dozer [1152 h]; Roadway Excavation for cuttings; on any type of material for all depths including trimming and Preparation of excavated surfaces and disposal. [31838.6] |
| CO-R09.S02-EW-120 | Embankments Works Upto Design Level for Earthworks-[Road 09]-[SW-2] |  |  |  |  |  | resources Labor/Helper [1248 h]; Skilled Labor/Surveyor [156 h]; Foreman [156 h]; Water Tank [1248 h]; Dozer [1248 h]; Embankments to the ROW, with suitable material other than top soil or rock according to specifications [53596.5] → Labor/Helper [1040 h]; Skilled Labor/Surveyor [130 h]; Foreman [130 h]; Water Tank [1248 h]; Dozer [1248 h]; Embankments to the ROW, with suitable material other than top soil or rock according to specifications [53596.5] |
| CO-R09.S02-SW-100 | Trench Excavation and Bedding Works for Main Lines of Sewage Network-[Road 09]-[SW-2] |  | 2026-10-10 → 2026-10-26 (+16d) |  | -212.5d → -85d |  | resources Nominal bore : 200mm; Depth : 0.0m - 1.5m [11]; Nominal bore : 200mm; Depth : 1.5m - 2.5m [30.16]; Nominal bore : 200mm; Depth : 2.5m - 3.5m [44.1]; Nominal bore : 200mm; Depth : 3.5m - 4.5m [51.01]; Nominal bore : 200mm; Depth : 4.5m -5.5m [25.19]; Nominal bore : 200mm; Depth : 5.5m - 6.5m [32.68] → Skilled Labor/Surveyor [29 h]; Foreman [58 h]; Nominal bore : 200mm; Depth : 0.0m - 1.5m [11]; Nominal bore : 200mm; Depth : 1.5m - 2.5m [30.16]; Nominal bore : 200mm; Depth : 2.5m - 3.5m [44.1]; Nominal bore : 200mm; Depth : 3.5m - 4.5m [51.01]; Nominal bore : 200mm; Depth : 4.5m -5.5m [25.19]; Nominal bore : 200mm; Depth : 5.5m - 6.5m [29] |
| CO-R09.S02-SW-120 | Pipes Laying Works for Main Lines of Sewage Network-[Road 09]-[SW-2] |  | 2026-10-18 → 2026-10-26 (+8d) |  | -212.5d → -85d | CO-R09.S02-SW-100 → CO-R09.S02-SW-100 SS | resources Nominal bore : 200mm; Depth : 0.0m - 1.5m [33]; Nominal bore : 200mm; Depth : 1.5m - 2.5m [90.49]; Nominal bore : 200mm; Depth : 2.5m - 3.5m [132.3]; Nominal bore : 200mm; Depth : 3.5m - 4.5m [153.04]; Nominal bore : 200mm; Depth : 4.5m -5.5m [75.58]; Nominal bore : 200mm; Depth : 5.5m - 6.5m [98.03] → Labor/Helper [768 h]; Skilled Labor/Surveyor [39 h]; Foreman [39 h]; Plumber [384 h]; Nominal bore : 200mm; Depth : 0.0m - 1.5m [33]; Nominal bore : 200mm; Depth : 1.5m - 2.5m [90.49]; Nominal bore : 200mm; Depth : 2.5m - 3.5m [132.3]; Nominal bore : 200mm; Depth : 3.5m - 4.5m [153.04]; Nominal bore : 200mm; Depth : 4.5m -5.5m [75.58]; Nominal bore : 200mm; Depth : 5.5m - 6.5m [98.03] |
| CO-R09.S02-SW-130 | Trench Backfilling and Compaction Works for Main Lines of Sewage Network-[Road 09]-[SW-2] |  |  |  | -212.5d → -85d | CO-R09.S02-SW-120, CO-R09.S02-SW-210 FF → CO-R09.S02-SW-120 SS, CO-R09.S02-SW-210 FF | resources Nominal bore : 200mm; Depth : 0.0m - 1.5m [5.5]; Nominal bore : 200mm; Depth : 1.5m - 2.5m [15.27]; Nominal bore : 200mm; Depth : 2.5m - 3.5m [22.05]; Nominal bore : 200mm; Depth : 3.5m - 4.5m [25.51]; Nominal bore : 200mm; Depth : 4.5m -5.5m [12.6]; Nominal bore : 200mm; Depth : 5.5m - 6.5m [16.34] → Skilled Labor/Surveyor [29 h]; Foreman [58 h]; Nominal bore : 200mm; Depth : 0.0m - 1.5m [5.5]; Nominal bore : 200mm; Depth : 1.5m - 2.5m [15.27]; Nominal bore : 200mm; Depth : 2.5m - 3.5m [22.05]; Nominal bore : 200mm; Depth : 3.5m - 4.5m [25.51]; Nominal bore : 200mm; Depth : 4.5m -5.5m [12.6]; Nominal bore : 200mm; Depth : 5.5m - 6.5m [29] |
| MH | **Manholes** |  | 2026-10-11 → 2026-10-13 (+2d) |  |  |  |  |
| CO-R09.S02-SW-160 | Excavation Works for Main Line Manholes of Sewage Network-[Road 09]-[SW-2] |  |  |  |  |  | resources Depth: 1.5 - 2.5m [0.45]; Depth: 3.5 - 4.5m [0.15]; Depth: 4.5 - 5.5m [0.15]; Depth:6.5 - 7.5m [0.3] → Labor/Helper [8 h]; Skilled Labor/Surveyor [4 h]; Depth: 1.5 - 2.5m [0.45]; Depth: 3.5 - 4.5m [0.15]; Depth: 4.5 - 5.5m [0.15]; Depth:6.5 - 7.5m [0.3] |
| CO-R09.S02-SW-170 | Installation RC Footing Works for Main Line Manholes of Sewage Network-[Road 09]-[SW-2] |  |  |  |  |  | resources Depth: 1.5 - 2.5m [0.3]; Depth: 3.5 - 4.5m [0.1]; Depth: 4.5 - 5.5m [0.1]; Depth:6.5 - 7.5m [0.2] → Cons. Carpenter [48 h]; Steel Fixer [48 h]; Depth: 1.5 - 2.5m [0.3]; Depth: 3.5 - 4.5m [0.1]; Depth: 4.5 - 5.5m [0.1]; Depth:6.5 - 7.5m [0.2] |
| CO-R09.S02-SW-180 | Install Grp Liner Wall Works for Main Line Manholes of Sewage Network-[Road 09]-[SW-2] |  |  |  |  |  | resources Depth: 1.5 - 2.5m [1.2]; Depth: 3.5 - 4.5m [0.4]; Depth: 4.5 - 5.5m [0.4]; Depth:6.5 - 7.5m [0.8] → Labor/Helper [96 h]; Plumber [96 h]; Depth: 1.5 - 2.5m [1.2]; Depth: 3.5 - 4.5m [0.4]; Depth: 4.5 - 5.5m [0.4]; Depth:6.5 - 7.5m [0.8] |
| CO-R09.S02-SW-190 | Pouring Grp Liner Wall Works for Main Line Manholes of Sewage Network-[Road 09]-[SW-2] |  |  |  |  |  | resources Depth: 1.5 - 2.5m [0.15]; Depth: 3.5 - 4.5m [0.05]; Depth: 4.5 - 5.5m [0.05]; Depth:6.5 - 7.5m [0.1] → Cons. Carpenter [48 h]; Steel Fixer [48 h]; Depth: 1.5 - 2.5m [0.15]; Depth: 3.5 - 4.5m [0.05]; Depth: 4.5 - 5.5m [0.05]; Depth:6.5 - 7.5m [0.1] |
| CO-R09.S02-SW-200 | Backfilling Works for Main Line Manholes of Sewage Network-[Road 09]-[SW-2] |  |  |  |  |  | resources Depth: 1.5 - 2.5m [0.45]; Depth: 3.5 - 4.5m [0.15]; Depth: 4.5 - 5.5m [0.15]; Depth:6.5 - 7.5m [0.3] → Labor/Helper [40 h]; Skilled Labor/Surveyor [20 h]; Depth: 1.5 - 2.5m [0.45]; Depth: 3.5 - 4.5m [0.15]; Depth: 4.5 - 5.5m [0.15]; Depth:6.5 - 7.5m [0.3] |
| CO-R09.S02-SW-210 | Testing Works for Main Line Manholes of Sewage Network-[Road 09]-[SW-2] | 2026-10-11 → 2026-10-13 (+2d) | 2026-10-11 → 2026-10-13 (+2d) |  | -199.5d → -74d |  | resources Depth: 1.5 - 2.5m [0.15]; Depth: 3.5 - 4.5m [0.05]; Depth: 4.5 - 5.5m [0.05]; Depth:6.5 - 7.5m [0.1] → Labor/Helper [8 h]; Plumber [8 h]; Depth: 1.5 - 2.5m [0.15]; Depth: 3.5 - 4.5m [0.05]; Depth: 4.5 - 5.5m [0.05]; Depth:6.5 - 7.5m [0.1] |
| SD | **Storm Drainage Network** |  | 2026-11-29 → 2026-10-25 (-35d) |  |  |  |  |
| ML | **Main Line Sections** |  | 2026-11-16 → 2026-10-07 (-40d) |  |  |  |  |
| CO-R09.S02-SD-100 | Trench Excavation and Bedding Works for Main Lines of Storm Drainage Network-[Road 09]-[SW-2] |  |  |  |  | CO-R09.S02-EW-120, CO-R09.S02-EW-110, CO-R09.S02-SW-130 SS+3d, CO-R09.S02-SW-130 FF+3d, CO-R09.S01-SD-100 → CO-R09.S02-EW-120, CO-R09.S02-EW-110, CO-R09.S01-SD-100 | resources Skilled Labor/Surveyor [12 h]; Foreman [12 h]; Excavator [112 h]; Pipe with diameter 400mm ; depth: 1.51m - 2.5m [18.55]; Pipe with diameter 1100mm ; depth: 1.51m - 2.5m [66.7]; Pipe with diameter 1100mm ; depth: 2.51 - 3.5m [17.4]; Pipe with diameter 1200mm ; depth: 1.51m - 2.5m [31] → Skilled Labor/Surveyor [8 h]; Foreman [8 h]; Excavator [112 h]; Pipe with diameter 400mm ; depth: 1.51m - 2.5m [18.55]; Pipe with diameter 1100mm ; depth: 1.51m - 2.5m [66.7]; Pipe with diameter 1100mm ; depth: 2.51 - 3.5m [17.4]; Pipe with diameter 1200mm ; depth: 1.51m - 2.5m [31] |
| CO-R09.S02-SD-120 | Pipes Laying Works for Main Lines of Storm Drainage Network-[Road 09]-[SW-2] |  |  |  |  |  | resources Labor/Helper [480 h]; Skilled Labor/Surveyor [24 h]; Foreman [24 h]; Plumber [240 h]; Excavator [240 h]; Pipe with diameter 400mm ; depth: 1.51m - 2.5m [55.65]; Pipe with diameter 1100mm ; depth: 1.51m - 2.5m [200.1]; Pipe with diameter 1100mm ; depth: 2.51 - 3.5m [52.2]; Pipe with diameter 1200mm ; depth: 1.51m - 2.5m [93] → Labor/Helper [320 h]; Skilled Labor/Surveyor [16 h]; Foreman [16 h]; Plumber [160 h]; Excavator [240 h]; Pipe with diameter 400mm ; depth: 1.51m - 2.5m [55.65]; Pipe with diameter 1100mm ; depth: 1.51m - 2.5m [200.1]; Pipe with diameter 1100mm ; depth: 2.51 - 3.5m [52.2]; Pipe with diameter 1200mm ; depth: 1.51m - 2.5m [93] |
| CO-R09.S02-SD-130 | Trench Backfilling and Compaction Works for Main Lines of Storm Drainage Network-[Road 09]-[SW-2] |  | 2026-11-16 → 2026-10-07 A (-40d) | 90% → 100% | -212.5d → none |  |  |
| MH | **Manholes** |  | 2026-11-01 → 2026-10-14 (-18d) |  |  |  |  |

| ID | Task | Start | Finish | Complete | Total float | Predecessors | Other |
| --- | --- | --- | --- | --- | --- | --- | --- |
| CO-R09.S02-SD-220 | Backfilling Works for Manholes of Storm Drainage Network-[Road 09]-[SW-2] |  |  |  |  | CO-R09.S02-SD-210 → MS-CS-PS |  |
| CO-R09.S02-SD-210 | Testing Works for Manholes of Storm Drainage Network-[Road 09]-[SW-2] | 2026-10-31 → 2026-10-13 (-18d) | 2026-11-01 → 2026-10-14 (-18d) |  | -199.5d → -78d |  |  |
| CB | **Catch Basin Sections** |  | 2026-11-29 → 2026-10-25 (-35d) |  |  |  |  |
| CO-R09.S02-SD-140 | Trench Excavation and Bedding Works for Catch Basins of Storm Drainage Network-[Road 09]-[SW-2] |  | 2026-11-08 → 2026-10-19 (-20d) | 80% → 90% | -171d → 14d | CO-R09.S02-EW-120, CO-R09.S02-SD-220, CO-R09.S01-SD-140 → CO-R09.S02-EW-120, CO-R09.S02-SD-220, CO-R09.S01-SD-140 FF |  |
| CO-R09.S02-SD-150 | Installation and Pipes Laying Connection Works for Catch Basins of Storm Drainage Network-[Road 09]-[SW-2] |  | 2026-11-16 → 2026-10-20 (-27d) | 80% → 90% | -73d → 14d | CO-R09.S02-SD-140, PRO-R09-SD-DL-130 FF+3d → CO-R09.S02-SD-140 SS, PRO-R09-SD-DL-130 FF+3d |  |
| CO-R09.S02-SD-170 | Trench Backfilling and Compaction Works for Catch Basins of Storm Drainage Network-[Road 09]-[SW-2] |  | 2026-11-29 → 2026-10-25 (-35d) | 80% → 90% | -73d → 14d | CO-R09.S02-SD-160 → CO-R09.S02-SD-160 FF |  |
| CO-R09.S02-SD-160 | Testing Works for Catch Basins of Storm Drainage Network-[Road 09]-[SW-2] | 2026-11-17 → 2026-10-21 (-27d) | 2026-11-21 → 2026-10-25 (-27d) |  | -73d → 14d |  |  |
| PW | **Potable Water Network** |  | 2027-01-17 → 2027-03-21 (+63d) |  |  |  |  |
| ML | **Main Line Sections** |  | 2027-01-17 → 2027-03-21 (+63d) |  |  |  |  |
| CO-R09.S02-PW-100 | Trench Excavation and Bedding Works for Main Lines of Potable Water Network-[Road 09]-[SW-2] |  | 2026-11-24 → 2026-10-20 (-35d) |  | -212.5d → -170.5d | CO-R09.S02-EW-120, CO-R09.S02-EW-110, CO-R09.S02-SD-130 → CO-R09.S02-EW-120, CO-R09.S02-EW-110, CO-R09.S02-SD-130 SS |  |
| CO-R09.S02-PW-110 | Pipes Laying and accessories for Main Lines of Potable Water Network-[Road 09]-[SW-2] |  | 2027-01-07 → 2027-03-21 (+73d) | 85% → 90% | -242.5d → -280.5d | CO-R09.S02-PW-100, PRO-R09-PW-DL-100 FF+3d, PRO-R09-PW-DL-110 FF+3d, MS-CS-PW SS → CO-R09.S02-PW-100 SS, PRO-R09-PW-DL-100 FF+3d, PRO-R09-PW-DL-110 FF+3d, MS-CS-PW SS |  |
| CO-R09.S02-PW-130 | Trench Backfilling and Compaction Works for Main Lines of Potable Water Network-[Road 09]-[SW-2] |  | 2027-01-17 → 2027-03-21 (+63d) | 85% → 90% | -242.5d → -280.5d | CO-R09.S02-PW-110, CO-R09.S02-PW-160 FF, CO-R09.S02-PW-210 FF → CO-R09.S02-PW-110 SS, CO-R09.S02-PW-160 FF, CO-R09.S02-PW-210 FF |  |
| VC | **Valve Chamber** | 2026-11-25 → 2026-10-21 (-35d) | 2026-12-01 → 2026-10-27 (-35d) |  |  |  |  |
| CO-R09.S02-PW-210 | Installation Works for Main Line Valves and Valve Chambers of Potable Water Network-[Road 09]-[SW-2] | 2026-11-25 → 2026-10-21 (-35d) | 2026-12-01 → 2026-10-27 (-35d) |  | -202.5d → -160.5d |  | resources Labor/Helper [24 h]; Plumber [24 h]; Gate valves dia(200)mm on pipes with dia (200) mm. [22]; Wash out valve with dia (100)mm on pipes with dia (200) mm [1] → Labor/Helper [144 h]; Plumber [144 h]; Gate valves dia(200)mm on pipes with dia (200) mm. [22]; Wash out valve with dia (100)mm on pipes with dia (200) mm [1] |
| FH | **Fire Hydrant** | 2026-11-25 → 2026-10-21 (-35d) | 2026-12-13 → 2026-11-08 (-35d) |  |  |  |  |
| CO-R09.S02-PW-140 | Excavation Works for Fire Hydrants of Potable Water Network-[Road 09]-[SW-2] | 2026-11-25 → 2026-10-21 (-35d) | 2026-11-30 → 2026-10-26 (-35d) |  | -212.5d → -170.5d |  |  |
| CO-R09.S02-PW-150 | Installation Works for Fire Hydrant of Potable Water Network-[Road 09]-[SW-2] | 2026-12-01 → 2026-10-27 (-35d) | 2026-12-07 → 2026-11-02 (-35d) |  | -212.5d → -170.5d |  |  |
| CO-R09.S02-PW-160 | Trench Backfilling and Compaction Works for Fire Hydrants of Potable Water Network-[Road 09]-[SW-2] | 2026-12-08 → 2026-11-03 (-35d) | 2026-12-13 → 2026-11-08 (-35d) |  | -212.5d → -170.5d |  |  |
| SL | **Street Lighting Network** | 2027-01-18 → 2027-03-22 (+63d) | 2027-07-01 → 2027-08-26 (+56d) |  |  |  |  |
| LP | **Lighting Poles Works** | 2027-01-18 → 2027-03-22 (+63d) | 2027-04-01 → 2027-06-02 (+62d) |  |  |  |  |
| CO-R09.S02-SL-100 | Foundation Excavation Works for Lighting Poles of Street Lighting Network-[Road 09]-[SW-2] | 2027-01-18 → 2027-03-22 (+63d) | 2027-01-27 → 2027-03-31 (+63d) |  | -242.5d → -280.5d |  |  |
| CO-R09.S02-SL-110 | Installation Works for Lighting Poles Foundation of Street Lighting Network-[Road 09]-[SW-2] | 2027-01-28 → 2027-04-01 (+63d) | 2027-02-07 → 2027-04-11 (+63d) |  | -242.5d → -280.5d |  |  |
| CO-R09.S02-SL-120 | Installation Works for Lighting Poles of Street Lighting Network-[Road 09]-[SW-2] | 2027-02-08 → 2027-04-12 (+63d) | 2027-02-17 → 2027-04-21 (+63d) |  | -242.5d → -280.5d |  |  |
| CO-R09.S02-SL-210 | Backfilling Works for Lighting Poles of Street Lighting Network-[Road 09]-[SW-2] | 2027-02-18 → 2027-04-22 (+63d) | 2027-03-17 → 2027-05-20 (+64d) |  | -242.5d → -280.5d |  |  |
| CO-R09.S02-SL-130 | Installation Works for Lighting Fixtures With Drop Wire of Street Lighting Network-[Road 09]-[SW-2] | 2027-03-14 → 2027-05-09 (+56d) | 2027-04-01 → 2027-06-02 (+62d) |  | -247.5d → -283.5d |  |  |
| CO-R09.S02-SL-200 | Testing Works for Lighting Poles of Street Lighting Network-[Road 09]-[SW-2] | 2027-03-18 → 2027-05-22 (+65d) | 2027-03-27 → 2027-05-30 (+64d) |  | -242.5d → -280.5d |  |  |
| CW | **Cabling Works** | 2027-02-18 → 2027-04-22 (+63d) | 2027-03-29 → 2027-06-01 (+64d) |  |  |  |  |
| CO-R09.S02-SL-140 | Trench Excavation and Bedding Works for Street Lighting Network-[Road 09]-[SW-2] | 2027-02-18 → 2027-04-22 (+63d) | 2027-03-02 → 2027-05-03 (+62d) |  | -209d → -259d |  |  |
| CO-R09.S02-SL-150 | Cable Laying Works for Street Lighting Network-[Road 09]-[SW-2] | 2027-03-03 → 2027-05-04 (+62d) | 2027-03-17 → 2027-05-20 (+64d) |  | -209d → -259d |  |  |
| CO-R09.S02-SL-160 | Trench Backfilling and Compaction Works for Street Lighting Network-[Road 09]-[SW-2] | 2027-03-18 → 2027-05-22 (+65d) | 2027-03-29 → 2027-06-01 (+64d) |  | -209d → -259d |  |  |
| DPB | **Distrubution Panel Boards** | 2027-05-01 → 2027-07-01 (+61d) | 2027-07-01 → 2027-08-26 (+56d) |  |  |  |  |
| CO-R09.S02-SL-170 | Foundation Excavation Works For Panel Boards of Street Lighting Network-[Road 09]-[SW-2] | 2027-05-01 → 2027-07-01 (+61d) | 2027-05-11 → 2027-07-12 (+62d) |  | -226.25d → -274.25d |  | resources Reinforced concrete base With fence for Distribution substation in accordance with SEC Specifications [3] → Labor/Helper [80 h]; Skilled Labor/Surveyor [40 h]; Reinforced concrete base With fence for Distribution substation in accordance with SEC Specifications [3] |
| CO-R09.S02-SL-180 | Installation Works for Panel Board Concrete Foundations of Street Lighting Network-[Road 09]-[SW-2] | 2027-05-12 → 2027-07-13 (+62d) | 2027-05-29 → 2027-07-24 (+56d) |  | -226.25d → -274.25d |  |  |
| CO-R09.S02-SL-190 | Installation Works for Lighting Panel Boards of Street Lighting Network-[Road 09]-[SW-2] | 2027-05-30 → 2027-07-25 (+56d) | 2027-06-09 → 2027-08-04 (+56d) |  | -226.25d → -274.25d |  |  |
| CO-R09.S02-SL-220 | A wall of concrete blocks to install the KWH meter of Street Lighting Network-[Road 09]-[SW-2] | 2027-06-10 → 2027-08-05 (+56d) | 2027-07-01 → 2027-08-26 (+56d) |  | -226.25d → -274.25d |  | resources Block Mason [146 h]; Road crossing ducts, 4 way (4 x 100mm PVC) [107]; Drawpit with medium duty steel cover, size 600x600x1000mm, Type 18 [3]; Drawpit with medium duty steel cover, size 900x900x1200mm, Type 4 [10]; Street Lighting Feeder pillars , Includes foundation and draw pits [3] → Block Mason [144 h]; Road crossing ducts, 4 way (4 x 100mm PVC) [107]; Drawpit with medium duty steel cover, size 600x600x1000mm, Type 18 [3]; Drawpit with medium duty steel cover, size 900x900x1200mm, Type 4 [10]; Street Lighting Feeder pillars , Includes foundation and draw pits [3] |
| TE | **Telecom Network** | 2027-02-21 → 2027-01-11 (-41d) | 2027-04-20 → 2027-03-07 (-44d) |  |  |  |  |
| PD | **Ducts Works** | 2027-02-21 → 2027-01-11 (-41d) | 2027-03-24 → 2027-02-07 (-45d) |  |  |  |  |
| CO-R09.S02-TE-100 | Trench Excavation and Bedding Works for Ducts of Telecom Network-[Road 09]-[SW-2] | 2027-02-21 → 2027-01-11 (-41d) | 2027-02-24 → 2027-01-13 (-42d) |  | -221d → -177d |  | resources Skilled Labor/Surveyor [6 h]; Foreman [6 h]; Excavator [56 h]; 6-way ducts, 50mm dia. HDPE [89]; Road crossing ducts (6-way) [8] → Skilled Labor/Surveyor [3 h]; Foreman [3 h]; Excavator [56 h]; 6-way ducts, 50mm dia. HDPE [89]; Road crossing ducts (6-way) [8] |
| CO-R09.S02-TE-110 | Pipes Laying Works for Ducts of Telecom Network-[Road 09]-[SW-2] | 2027-02-25 → 2027-01-14 (-42d) | 2027-03-04 → 2027-01-21 (-42d) |  | -212d → -177d |  |  |
| CO-R09.S02-TE-120 | Pouring Plain Concrete Above Ducts of Telecom Network-[Road 09]-[SW-2] | 2027-03-06 → 2027-01-23 (-42d) | 2027-03-16 → 2027-01-30 (-45d) |  | -212d → -177d |  |  |
| CO-R09.S02-TE-130 | Trench Backfilling and Compaction Works for Ducts of Telecom Network-[Road 09]-[SW-2] | 2027-03-17 → 2027-01-31 (-45d) | 2027-03-24 → 2027-02-07 (-45d) |  | -212d → -177d |  |  |
| MH | **Manholes Works** | 2027-03-28 → 2027-02-10 (-46d) | 2027-04-20 → 2027-03-07 (-44d) |  |  |  |  |
| CO-R09.S02-TE-140 | Excavation Works for Manholes of Telecom Network-[Road 09]-[SW-2] | 2027-03-28 → 2027-02-10 (-46d) | 2027-04-04 → 2027-02-17 (-46d) |  | -235d → -200d |  |  |
| CO-R09.S02-TE-150 | Installation Works for Manholes of Telecom Network-[Road 09]-[SW-2] | 2027-04-05 → 2027-02-18 (-46d) | 2027-04-12 → 2027-02-27 (-44d) |  | -235d → -200d |  |  |
| CO-R09.S02-TE-160 | Backfilling Works for Manholes of Telecom Network-[Road 09]-[SW-2] | 2027-04-13 → 2027-02-28 (-44d) | 2027-04-20 → 2027-03-07 (-44d) |  | -235d → -200d |  |  |
| RD | **Road Works** |  | 2027-08-07 → 2027-09-11 (+35d) |  |  |  |  |
| RD | **Pre-Bituminous Construction** | 2027-04-21 → 2027-05-25 (+34d) | 2027-05-20 → 2027-06-17 (+28d) |  |  |  |  |
| CO-R09.S02-RD-P-100 | Capping and Subgrade Layer for Road Works-[Road 09]-[SW-2] | 2027-04-21 → 2027-05-25 (+34d) | 2027-05-04 → 2027-06-07 (+34d) |  | -235d → -259d | CO-R09.S02-SD-130, CO-R09.S02-PW-130, CO-R09.S02-PW-160, CO-R09.S02-SL-160 SS+3d, CO-R09.S02-SL-160 FF+3d, PRO-R09-RD-DL-100 FF+3d, CO-R09.S02-TE-130, CO-R09.S02-TE-160 → CO-R09.S02-SD-130, CO-R09.S02-PW-130, CO-R09.S02-PW-160, CO-R09.S02-SL-160 SS+3d, CO-R09.S02-SL-160 FF+3d, PRO-R09-RD-DL-100 FF+3d, CO-R09.S02-TE-130, CO-R09.S02-TE-160, CO-R09.S02-SD-210 | resources Labor/Helper [1152 h]; Skilled Labor/Surveyor [576 h]; Loader [576 h]; Grader [576 h]; Road Roller [576 h]; Water Tank [576 h]; 300mm capping layer underneath subgrade , CBR?15% [6762.42]; 300mm thick Subgrade, including subgrade preparation, CBR?25% [6762.42] → Labor/Helper [768 h]; Skilled Labor/Surveyor [348 h]; Loader [576 h]; Grader [576 h]; Road Roller [576 h]; Water Tank [576 h]; 300mm capping layer underneath subgrade , CBR?15% [6762.42]; 300mm thick Subgrade, including subgrade preparation, CBR?25% [6762.42] |
| CO-R09.S02-RD-P-110 | Aggregate Base Course Layer for Road Works-[Road 09]-[SW-2] | 2027-04-25 → 2027-05-29 (+34d) | 2027-05-20 → 2027-06-17 (+28d) |  | -201d → -168d |  |  |
| LS | **Pavement Works** |  | 2027-08-07 → 2027-09-11 (+35d) |  |  |  |  |
| CO-R09.S02-RD-P-120 | Fixing of Curbstone for Sidewalks Pavement-[Road 09]-[SW-2] |  |  |  |  | PRO-R09-RD-DL-130 FF+3d, CO-R09.S02-RD-P-110 SS+3d, CO-R09.S02-RD-P-110 FF+3d → PRO-R09-RD-DL-130 FF+3d |  |
| CO-R09.S02-RD-P-130 | Fixing of Interlock Tiles for Sidewalks Pavement-[Road 09]-[SW-2] |  | 2027-08-07 → 2027-09-11 (+35d) |  | -246.5d → -276.5d | PRO-R09-RD-DL-120 FF+3d, CO-R09.S02-RD-P-120 SS+3d, CO-R09.S02-RD-P-120 FF+3d, CO-R09-PW-TF-110, CO-R09-PW-TF-120, CO-R09-SW-TF-100, CO-R09-SW-TF-110, CO-R09-SW-TF-120, CO-R09-SD-TF-100, CO-R09-SD-TF-120, CO-R09-SL-TF-100, CO-R09-SL-TF-110, CO-R09-SL-ES-100, CO-R09-SL-ES-110, CO-R09-IR-TF-100, CO-R09-MV-TF-100 → PRO-R09-RD-DL-120 FF+3d, CO-R09.S02-RD-P-120 SS, CO-R09.S02-RD-P-120 FF+3d, CO-R09-PW-TF-110 FF, CO-R09-PW-TF-120 FF, CO-R09-SW-TF-100 SS, CO-R09-SW-TF-110 FF, CO-R09-SW-TF-120 FF, CO-R09-SD-TF-100 SS, CO-R09-SD-TF-120 SS, CO-R09-SL-TF-100 FF, CO-R09-SL-TF-110 FF, CO-R09-SL-ES-100 FF, CO-R09-SL-ES-110 FF, CO-R09-IR-TF-100 FF, CO-R09-MV-TF-100 FF |  |
| 4 | **Road 10 Local 2 ( 2352 LM )** |  | 2027-06-21 → 2027-07-11 (+20d) |  |  |  |  |
| 1 | **SW-3** |  | 2027-06-19 → 2027-07-11 (+22d) |  |  |  |  |
| SW_3 | **SW_3-East** |  | 2027-06-19 → 2027-07-11 (+22d) |  |  |  |  |
| SD | **Storm Drainage Network** |  | 2026-10-17 → 2026-10-10 (-7d) |  |  |  |  |
| CO-R10.S03-ES-SD-130 | Trench Backfilling and Compaction Works for Main Lines of Storm Drainage Network-[Road 10]-[SW-3] |  |  |  |  | ENG-SH-SD-ML-A-110 FF, ENG-MS-SD-ML-A-110 FF, CO-R10.S03-ES-SD-120 → ENG-SH-SD-ML-A-110 FF, ENG-MS-SD-ML-A-110 FF, CO-R10.S03-ES-SD-120, CO-R10.S03-ES-SD-220 FF |  |
| MH | **Manholes** |  | 2026-10-06 → 2026-10-07 (+1d) |  |  |  |  |
| CO-R10.S03-ES-SD-200 | Install RC Wall Rings & Slab Works for Manholes of Storm Drainage Network-[Road 10]-[SW-3] |  |  |  |  |  | resources Cons. Carpenter [320 h]; Steel Fixer [320 h]; MH ; depth: 0.0m - 1.5m [0.68]; MH ; depth: 1.51m - 2.5m [1.8]; MH ; depth: 0.0m - 1.5m [0.45]; MH ; depth: 0.0m - 1.5m [0.23]; MH ; depth: 1.51m - 2.5m [0.68]; MH ; depth: 2.51 - 3.5m [0.9]; MH ; depth: 3.51 - 4.5m [0.45] → Cons. Carpenter [128 h]; Steel Fixer [128 h]; MH ; depth: 0.0m - 1.5m [0.68]; MH ; depth: 1.51m - 2.5m [1.8]; MH ; depth: 0.0m - 1.5m [0.45]; MH ; depth: 0.0m - 1.5m [0.23]; MH ; depth: 1.51m - 2.5m [0.68]; MH ; depth: 2.51 - 3.5m [0.9]; MH ; depth: 3.51 - 4.5m [0.45] |
| CO-R10.S03-ES-SD-220 | Backfilling Works for Manholes of Storm Drainage Network-[Road 10]-[SW-3] |  |  |  |  | CO-R10.S03-ES-SD-200 → CO-R10.S03-ES-SD-210 |  |
| CO-R10.S03-ES-SD-210 | Testing Works for Manholes of Storm Drainage Network-[Road 10]-[SW-3] |  | 2026-10-06 → 2026-10-07 A (+1d) | 90% → 100% | -56d → none | CO-R10.S03-ES-SD-200, CO-R10.S03-ES-SD-220 → CO-R10.S03-ES-SD-200 |  |
| CB | **Catch Basin Sections** |  | 2026-10-17 → 2026-10-10 (-7d) |  |  |  |  |
| CO-R10.S03-ES-SD-140 | Trench Excavation and Bedding Works for Catch Basins of Storm Drainage Network-[Road 10]-[SW-3] |  |  |  |  | CO-R10.S03-ES-EW-110, ENG-SH-SD-CB-A-110, ENG-MS-SD-CB-A-110, CO-R15.S10-SD-140 → CO-R10.S03-ES-EW-110, ENG-SH-SD-CB-A-110, ENG-MS-SD-CB-A-110, CO-R10.S03-ES-SD-220, CO-R15.S10-SD-140 |  |
| CO-R10.S03-ES-SD-170 | Trench Backfilling and Compaction Works for Catch Basins of Storm Drainage Network-[Road 10]-[SW-3] |  |  |  |  | CO-R10.S03-ES-SD-150 → CO-R10.S03-ES-SD-160 |  |
| CO-R10.S03-ES-SD-160 | Testing Works for Catch Basins of Storm Drainage Network-[Road 10]-[SW-3] |  | 2026-10-17 → 2026-10-10 A (-7d) | 90% → 100% | -37d → none |  |  |
| PW | **Potable Water Network** |  | 2026-11-23 → 2026-10-31 (-23d) |  |  |  |  |
| CO-R10.S03-ES-PW-100 | Trench Excavation and Bedding Works for Main Lines of Potable Water Network-[Road 10]-[SW-3] |  |  |  |  | ENG-SH-PW-ML-A-110, CO-R10.S03-ES-EW-110, CO-R10.S03-ES-EW-100, ENG-MS-PW-ML-A-110, ENG-SH-PW-FH-A-110 → ENG-SH-PW-ML-A-110, CO-R10.S03-ES-EW-110, CO-R10.S03-ES-EW-100, ENG-MS-PW-ML-A-110, ENG-SH-PW-FH-A-110, CO-R10.S03-ES-SD-130 |  |
| CO-R10.S03-ES-PW-110 | Pipes Laying and accessories for Main Lines of Potable Water Network-[Road 10]-[SW-3] |  |  |  |  | CO-R10.S03-ES-PW-100, PRO-R10-PW-DL-100 → CO-R10.S03-ES-PW-100 |  |
| VC | **Valve Chamber** | 2026-11-05 → 2026-10-13 (-23d) | 2026-11-23 → 2026-10-31 (-23d) |  |  |  |  |
| CO-R10.S03-ES-PW-170 | Excavation Works for Main Line Valves and Valve Chambers of Potable Water Network-[Road 10]-[SW-3] | 2026-11-05 → 2026-10-13 (-23d) | 2026-11-05 → 2026-10-13 (-23d) |  | -88d → -68d | CO-R10.S03-ES-PW-100, PRO-R17-PW-DL-110 → CO-R10.S03-ES-PW-100 |  |

| ID | Task | Start | Finish | Complete | Total float | Predecessors | Other |
| --- | --- | --- | --- | --- | --- | --- | --- |
| CO-R10.S03-ES-PW-180 | RC Footing Works for Main Line Valves and Valve Chambers of Potable Water Network-[Road 10]-[SW-3] | 2026-11-07 → 2026-10-14 (-24d) | 2026-11-09 → 2026-10-17 (-23d) |  | -88d → -68d |  |  |
| CO-R10.S03-ES-PW-190 | RC Wall Works for Main Line Valves and Valve Chambers of Potable Water Network-[Road 10]-[SW-3] | 2026-11-10 → 2026-10-18 (-23d) | 2026-11-16 → 2026-10-24 (-23d) |  | -88d → -68d |  |  |
| CO-R10.S03-ES-PW-200 | RC Slab Works for Main Line Valves and Valve Chambers of Potable Water Network-[Road 10]-[SW-3] | 2026-11-17 → 2026-10-25 (-23d) | 2026-11-18 → 2026-10-26 (-23d) |  | -88d → -68d |  |  |
| CO-R10.S03-ES-PW-210 | Insulation Works for Main Line Valves and Valve Chambers of Potable Water Network-[Road 10]-[SW-3] | 2026-11-19 → 2026-10-27 (-23d) | 2026-11-19 → 2026-10-27 (-23d) |  | -88d → -68d |  |  |
| CO-R10.S03-ES-PW-220 | Backfilling Works for Main Line Valves and Valve Chambers of Potable Water Network-[Road 10]-[SW-3] | 2026-11-21 → 2026-10-28 (-24d) | 2026-11-23 → 2026-10-31 (-23d) |  | -88d → -68d |  |  |
| FH | **Fire Hydrant** | 2026-10-06 → 2026-10-13 (+7d) | 2026-10-22 → 2026-10-29 (+7d) |  |  |  |  |
| CO-R10.S03-ES-PW-140 | Excavation Works for Fire Hydrants of Potable Water Network-[Road 10]-[SW-3] | 2026-10-06 → 2026-10-13 (+7d) | 2026-10-12 → 2026-10-19 (+7d) |  | -82d → -88d |  |  |
| CO-R10.S03-ES-PW-150 | Installation Works for Fire Hydrant of Potable Water Network-[Road 10]-[SW-3] | 2026-10-13 → 2026-10-20 (+7d) | 2026-10-19 → 2026-10-26 (+7d) |  | -82d → -88d |  |  |
| CO-R10.S03-ES-PW-160 | Trench Backfilling and Compaction Works for Fire Hydrants of Potable Water Network-[Road 10]-[SW-3] | 2026-10-17 → 2026-10-24 (+7d) | 2026-10-22 → 2026-10-29 (+7d) |  | -82d → -88d |  |  |
| CO-R10.S03-ES-IR-100 | Trench Excavation and Bedding Works for Main Lines of Irrigation Network-[Road 10]-[SW-3] |  |  |  |  | ENG-SH-IR-ML-A-110, CO-R10.S03-ES-EW-110, ENG-MS-IR-ML-A-110 → ENG-SH-IR-ML-A-110, CO-R10.S03-ES-EW-110, CO-R10.S03-ES-PW-130, CO-R10.S03-ES-SD-170, ENG-MS-IR-ML-A-110 |  |
| CO-R10.S03-ES-IR-130 | Trench Backfilling and Compaction Works for Main Lines of Irrigation Network-[Road 10]-[SW-3] |  |  |  |  | CO-R10.S03-ES-IR-110 → CO-R10.S03-ES-IR-120, CO-R10.S03-ES-IR-110 |  |
| SL | **Street Lighting Network** | 2026-10-06 → 2026-10-13 (+7d) | 2027-02-23 → 2027-05-05 (+71d) |  |  |  |  |
| LP | **Lighting Poles Works** | 2026-10-06 → 2026-10-13 (+7d) | 2026-11-12 → 2026-11-19 (+7d) |  |  |  |  |
| CO-R10.S03-ES-SL-100 | Foundation Excavation Works for Lighting Poles of Street Lighting Network-[Road 10]-[SW-3] | 2026-10-06 → 2026-10-13 (+7d) | 2026-10-19 → 2026-10-26 (+7d) |  | -191d → -197d |  |  |
| CO-R10.S03-ES-SL-110 | Installation Works for Lighting Poles Foundation of Street Lighting Network-[Road 10]-[SW-3] | 2026-10-12 → 2026-10-19 (+7d) | 2026-10-25 → 2026-11-01 (+7d) |  | -191d → -197d |  |  |
| CO-R10.S03-ES-SL-120 | Installation Works for Lighting Poles of Street Lighting Network-[Road 10]-[SW-3] | 2026-10-18 → 2026-10-25 (+7d) | 2026-11-07 → 2026-11-14 (+7d) |  | -191d → -197d |  |  |
| CO-R10.S03-ES-SL-130 | Installation Works for Lighting Fixtures With Drop Wire of Street Lighting Network-[Road 10]-[SW-3] | 2026-10-24 → 2026-10-31 (+7d) | 2026-11-12 → 2026-11-19 (+7d) |  | -145d → -151d |  |  |
| CO-R10.S03-ES-SL-210 | Backfilling Works for Lighting Poles of Street Lighting Network-[Road 10]-[SW-3] | 2026-10-25 → 2026-11-01 (+7d) | 2026-11-07 → 2026-11-14 (+7d) |  | -181.5d → -175.5d |  |  |
| CO-R10.S03-ES-SL-200 | Testing Works for Lighting Poles of Street Lighting Network-[Road 10]-[SW-3] | 2026-11-08 → 2026-11-15 (+7d) | 2026-11-12 → 2026-11-19 (+7d) |  | -145d → -151d |  |  |
| CW | **Cabling Works** | 2026-11-08 → 2026-11-15 (+7d) | 2026-12-12 → 2026-12-19 (+7d) |  |  |  |  |
| CO-R10.S03-ES-SL-140 | Trench Excavation and Bedding Works for Street Lighting Network-[Road 10]-[SW-3] | 2026-11-08 → 2026-11-15 (+7d) | 2026-11-18 → 2026-11-25 (+7d) |  | -191d → -197d |  |  |
| CO-R10.S03-ES-SL-150 | Cable Laying Works for Street Lighting Network-[Road 10]-[SW-3] | 2026-11-19 → 2026-11-26 (+7d) | 2026-11-30 → 2026-12-07 (+7d) |  | -191d → -197d |  |  |
| CO-R10.S03-ES-SL-160 | Trench Backfilling and Compaction Works for Street Lighting Network-[Road 10]-[SW-3] | 2026-12-01 → 2026-12-08 (+7d) | 2026-12-12 → 2026-12-19 (+7d) |  | -191d → -197d |  |  |
| DPB | **Distrubution Panel Boards** | 2027-01-30 → 2027-04-12 (+72d) | 2027-02-23 → 2027-05-05 (+71d) |  |  |  |  |
| CO-R10.S03-ES-SL-170 | Foundation Excavation Works For Panel Boards of Street Lighting Network-[Road 10]-[SW-3] | 2027-01-30 → 2027-04-12 (+72d) | 2027-02-11 → 2027-04-25 (+73d) |  | -187d → -245d |  |  |
| CO-R10.S03-ES-SL-180 | Installation Works for Panel Board Concrete Foundations of Street Lighting Network-[Road 10]-[SW-3] | 2027-02-06 → 2027-04-19 (+72d) | 2027-02-18 → 2027-05-02 (+73d) |  | -187d → -245d |  |  |
| CO-R10.S03-ES-SL-220 | A wall of concrete blocks to install the KWH meter of Street Lighting Network-[Road 10]-[SW-3] | 2027-02-06 → 2027-04-19 (+72d) | 2027-02-18 → 2027-05-02 (+73d) |  | -184d → -242d |  |  |
| CO-R10.S03-ES-SL-190 | Installation Works for Lighting Panel Boards of Street Lighting Network-[Road 10]-[SW-3] | 2027-02-09 → 2027-04-22 (+72d) | 2027-02-23 → 2027-05-05 (+71d) |  | -187d → -245d |  |  |
| TE | **Telecom Network** | 2026-12-01 → 2026-12-08 (+7d) | 2027-01-02 → 2027-01-09 (+7d) |  |  |  |  |
| PD | **Ducts Works** | 2026-12-01 → 2026-12-08 (+7d) | 2027-01-02 → 2027-01-09 (+7d) |  |  |  |  |
| CO-R10.S03-ES-TE-100 | Trench Excavation and Bedding Works for Ducts of Telecom Network-[Road 10]-[SW-3] | 2026-12-01 → 2026-12-08 (+7d) | 2026-12-08 → 2026-12-15 (+7d) |  | -191d → -197d |  |  |
| CO-R10.S03-ES-TE-110 | Pipes Laying Works for Ducts of Telecom Network-[Road 10]-[SW-3] | 2026-12-09 → 2026-12-16 (+7d) | 2026-12-16 → 2026-12-23 (+7d) |  | -148d → -149d |  |  |
| CO-R10.S03-ES-TE-120 | Pouring Plain Concrete Above Ducts of Telecom Network-[Road 10]-[SW-3] | 2026-12-17 → 2026-12-24 (+7d) | 2026-12-24 → 2026-12-31 (+7d) |  | -148d → -149d |  |  |
| CO-R10.S03-ES-TE-130 | Trench Backfilling and Compaction Works for Ducts of Telecom Network-[Road 10]-[SW-3] | 2026-12-26 → 2027-01-02 (+7d) | 2027-01-02 → 2027-01-09 (+7d) |  | -148d → -149d |  |  |
| MH | **Manholes Works** | 2026-12-09 → 2026-12-16 (+7d) | 2027-01-02 → 2027-01-09 (+7d) |  |  |  |  |
| CO-R10.S03-ES-TE-140 | Excavation Works for Manholes of Telecom Network-[Road 10]-[SW-3] | 2026-12-09 → 2026-12-16 (+7d) | 2026-12-16 → 2026-12-23 (+7d) |  | -146d → -152d |  |  |
| CO-R10.S03-ES-TE-150 | Installation Works for Manholes of Telecom Network-[Road 10]-[SW-3] | 2026-12-17 → 2026-12-24 (+7d) | 2026-12-24 → 2026-12-31 (+7d) |  | -143d → -149d |  |  |
| CO-R10.S03-ES-TE-160 | Backfilling Works for Manholes of Telecom Network-[Road 10]-[SW-3] | 2026-12-26 → 2027-01-02 (+7d) | 2027-01-02 → 2027-01-09 (+7d) |  | -143d → -149d |  |  |
| MV | **Medium Voltage Network** |  | 2027-01-25 → 2026-10-12 (-105d) |  |  |  |  |
| CW | **Cabling Works** |  | 2027-01-25 → 2026-10-12 (-105d) |  |  |  |  |
| CO-R10.S03-ES-MV-100 | Trench Excavation and Bedding Works for Medium Voltage Network-[Road 10]-[SW-3] |  | 2027-01-18 → 2026-10-08 A (-102d) | 80% → 100% | -148d → none | ENG-SH-MV-A-110, CO-R10.S03-ES-SD-170 SS+3d, CO-R10.S03-ES-SD-170 FF+3d, CO-R10.S03-ES-EW-110, CO-R10.S03-ES-TE-130 SS+3d, CO-R10.S03-ES-TE-130 FF+3d, ENG-MS-MV-A-110 → ENG-SH-MV-A-110, CO-R10.S03-ES-SD-170 SS+3d, CO-R10.S03-ES-SD-170 FF+3d, CO-R10.S03-ES-EW-110, ENG-MS-MV-A-110 |  |
| CO-R10.S03-ES-MV-110 | Cable Laying Works for Medium Voltage Network-[Road 10]-[SW-3] |  | 2027-01-21 → 2026-10-10 A (-103d) | 80% → 100% | -148d → none |  |  |
| CO-R10.S03-ES-MV-120 | Trench Backfilling and Compaction Works for Medium Voltage Network-[Road 10]-[SW-3] |  | 2027-01-25 → 2026-10-12 A (-105d) | 80% → 100% | -148d → none |  |  |
| CO-R10.S03-ES-MV-150 | Installation Works for RMU Concrete Foundations of Medium Voltage Network-[Road 10]-[SW-3] |  |  |  |  | CO-R10.S03-ES-MV-130, PRO-R10-MV-DL-120 → CO-R10.S03-ES-MV-130 |  |
| RD | **Road Works** |  | 2027-06-19 → 2027-07-11 (+22d) |  |  |  |  |
| RD | **Pre-Bituminous Construction** | 2027-01-09 → 2027-01-10 (+1d) | 2027-02-01 → 2027-02-02 (+1d) |  |  |  |  |
| CO-R10.S03-ES-RD-100 | Capping and Subgrade Layer for Road Works-[Road 10]-[SW-3] | 2027-01-09 → 2027-01-10 (+1d) | 2027-01-28 → 2027-01-30 (+2d) |  | -148d → -149d |  |  |
| CO-R10.S03-ES-RD-110 | Aggregate Base Course Layer for Road Works-[Road 10]-[SW-3] | 2027-01-12 → 2027-01-13 (+1d) | 2027-02-01 → 2027-02-02 (+1d) |  | -120d → -91d |  |  |
| LS | **Pavement Works** |  | 2027-06-19 → 2027-07-11 (+22d) |  |  |  |  |
| CO-R10.S03-ES-RD-120 | Fixing of Curbstone for Sidewalks Pavement-[Road 10]-[SW-3] |  |  |  |  | CO-R10.S03-ES-RD-110 FF+3d, CO-R10.S03-ES-RD-110 SS+3d → CO-R10.S03-ES-SD-170 |  |
| CO-R10.S03-ES-RD-130 | Fixing of Interlock Tiles for Sidewalks Pavement-[Road 10]-[SW-3] |  | 2027-06-19 → 2027-07-11 (+22d) |  | -216d → -235d | CO-R10.S03-ES-RD-120 SS+3d, CO-R10.S03-ES-RD-120 FF+3d, CO-R10-PW-TF-100, CO-R10-PW-TF-110, CO-R10-PW-TF-120, CO-R10-SW-TF-100, CO-R10-SW-TF-110, CO-R10-SW-TF-130, CO-R10-SD-TF-100, CO-R10-SL-TF-140, CO-R10-SL-TF-150, CO-R10-SL-ES-140, CO-R10-SL-ES-150, CO-R10-IR-TF-120, CO-R10-MV-TF-140 → CO-R10.S03-ES-RD-120 SS, CO-R10.S03-ES-RD-120 FF+3d, CO-R10-PW-TF-100 FF, CO-R10-PW-TF-110 FF, CO-R10-PW-TF-120 FF, CO-R10-SW-TF-100 FF, CO-R10-SW-TF-110 FF, CO-R10-SW-TF-130 FF, CO-R10-SD-TF-100, CO-R10-SL-TF-140 FF, CO-R10-SL-TF-150 FF, CO-R10-SL-ES-140 FF, CO-R10-SL-ES-150 FF, CO-R10-IR-TF-120 FF, CO-R10-MV-TF-140 FF |  |
| SW_31 | **SW_3-West** |  | 2027-06-19 → 2027-07-11 (+22d) |  |  |  |  |
| SD | **Storm Drainage Network** |  | 2026-10-17 → 2026-10-10 (-7d) |  |  |  |  |
| CO-R10.S03-WE-SD-130 | Trench Backfilling and Compaction Works for Main Lines of Storm Drainage Network-[Road 10]-[SW-3] |  |  |  |  | ENG-SH-SD-ML-A-110 FF, ENG-MS-SD-ML-A-110 FF, CO-R10.S03-WE-SD-120 → ENG-SH-SD-ML-A-110 FF, ENG-MS-SD-ML-A-110 FF, CO-R10.S03-WE-SD-120, CO-R10.S03-WE-SD-220 FF |  |
| MH | **Manholes** |  | 2026-10-06 → 2026-10-10 (+4d) |  |  |  |  |
| CO-R10.S03-WE-SD-200 | Install RC Wall Rings & Slab Works for Manholes of Storm Drainage Network-[Road 10]-[SW-3] |  |  |  |  |  | resources Cons. Carpenter [320 h]; Steel Fixer [320 h]; MH ; depth: 0.0m - 1.5m [0.68]; MH ; depth: 1.51m - 2.5m [1.8]; MH ; depth: 0.0m - 1.5m [0.45]; MH ; depth: 0.0m - 1.5m [0.23]; MH ; depth: 1.51m - 2.5m [0.68]; MH ; depth: 2.51 - 3.5m [0.9]; MH ; depth: 3.51 - 4.5m [0.9] → Cons. Carpenter [128 h]; Steel Fixer [128 h]; MH ; depth: 0.0m - 1.5m [0.68]; MH ; depth: 1.51m - 2.5m [1.8]; MH ; depth: 0.0m - 1.5m [0.45]; MH ; depth: 0.0m - 1.5m [0.23]; MH ; depth: 1.51m - 2.5m [0.68]; MH ; depth: 2.51 - 3.5m [0.9]; MH ; depth: 3.51 - 4.5m [0.9] |
| CO-R10.S03-WE-SD-220 | Backfilling Works for Manholes of Storm Drainage Network-[Road 10]-[SW-3] |  |  |  |  | CO-R10.S03-WE-SD-200 → CO-R10.S03-WE-SD-210 |  |
| CO-R10.S03-WE-SD-210 | Testing Works for Manholes of Storm Drainage Network-[Road 10]-[SW-3] | 2026-10-06 → 2026-10-10 A (+4d) | 2026-10-06 → 2026-10-10 A (+4d) | 0% → 100% | -28d → none | CO-R10.S03-WE-SD-200, CO-R10.S03-WE-SD-220 → CO-R10.S03-WE-SD-200 |  |
| CB | **Catch Basin Sections** |  | 2026-10-17 → 2026-10-10 (-7d) |  |  |  |  |
| CO-R10.S03-WE-SD-140 | Trench Excavation and Bedding Works for Catch Basins of Storm Drainage Network-[Road 10]-[SW-3] |  |  |  |  | CO-R10.S03-WE-EW-110, ENG-SH-SD-CB-A-110, ENG-MS-SD-CB-A-110 → CO-R10.S03-WE-EW-110, ENG-SH-SD-CB-A-110, ENG-MS-SD-CB-A-110, CO-R10.S03-WE-SD-220 |  |
| CO-R10.S03-WE-SD-170 | Trench Backfilling and Compaction Works for Catch Basins of Storm Drainage Network-[Road 10]-[SW-3] |  |  |  |  | CO-R10.S03-WE-SD-150 → CO-R10.S03-WE-SD-160 |  |
| CO-R10.S03-WE-SD-160 | Testing Works for Catch Basins of Storm Drainage Network-[Road 10]-[SW-3] | 2026-10-06 → 2026-10-10 A (+4d) | 2026-10-17 → 2026-10-10 A (-7d) | 0% → 100% | 59d → none |  |  |
| PW | **Potable Water Network** |  | 2026-10-24 → 2026-10-31 (+7d) |  |  |  |  |
| CO-R10.S03-WE-PW-100 | Trench Excavation and Bedding Works for Main Lines of Potable Water Network-[Road 10]-[SW-3] |  |  |  |  | ENG-SH-PW-ML-A-110, CO-R10.S03-WE-EW-110, CO-R10.S03-WE-EW-100, ENG-MS-PW-ML-A-110, ENG-SH-PW-FH-A-110 → ENG-SH-PW-ML-A-110, CO-R10.S03-WE-EW-110, CO-R10.S03-WE-EW-100, ENG-MS-PW-ML-A-110, ENG-SH-PW-FH-A-110, CO-R10.S03-WE-SD-130 |  |
| CO-R10.S03-WE-PW-110 | Pipes Laying and accessories for Main Lines of Potable Water Network-[Road 10]-[SW-3] |  |  |  |  | CO-R10.S03-WE-PW-100, PRO-R10-PW-DL-100 → CO-R10.S03-WE-PW-100 |  |
| VC | **Valve Chamber** | 2026-10-06 → 2026-10-13 (+7d) | 2026-10-24 → 2026-10-31 (+7d) |  |  |  |  |
| CO-R10.S03-WE-PW-170 | Excavation Works for Main Line Valves and Valve Chambers of Potable Water Network-[Road 10]-[SW-3] | 2026-10-06 → 2026-10-13 (+7d) | 2026-10-06 → 2026-10-13 (+7d) |  | -62d → -68d |  |  |
| CO-R10.S03-WE-PW-180 | RC Footing Works for Main Line Valves and Valve Chambers of Potable Water Network-[Road 10]-[SW-3] | 2026-10-07 → 2026-10-14 (+7d) | 2026-10-10 → 2026-10-17 (+7d) |  | -62d → -68d |  |  |
| CO-R10.S03-WE-PW-190 | RC Wall Works for Main Line Valves and Valve Chambers of Potable Water Network-[Road 10]-[SW-3] | 2026-10-11 → 2026-10-18 (+7d) | 2026-10-17 → 2026-10-24 (+7d) |  | -62d → -68d |  |  |
| CO-R10.S03-WE-PW-200 | RC Slab Works for Main Line Valves and Valve Chambers of Potable Water Network-[Road 10]-[SW-3] | 2026-10-18 → 2026-10-25 (+7d) | 2026-10-19 → 2026-10-26 (+7d) |  | -62d → -68d |  |  |

| ID | Task | Start | Finish | Complete | Total float | Predecessors | Other |
| --- | --- | --- | --- | --- | --- | --- | --- |
| CO-R10.S03-WE-PW-210 | Insulation Works for Main Line Valves and Valve Chambers of Potable Water Network-[Road 10]-[SW-3] | 2026-10-20 → 2026-10-27 (+7d) | 2026-10-20 → 2026-10-27 (+7d) |  | -62d → -68d |  |  |
| CO-R10.S03-WE-PW-220 | Backfilling Works for Main Line Valves and Valve Chambers of Potable Water Network-[Road 10]-[SW-3] | 2026-10-21 → 2026-10-28 (+7d) | 2026-10-24 → 2026-10-31 (+7d) |  | -62d → -68d |  |  |
| FH | **Fire Hydrant** | 2026-10-06 → 2026-10-13 (+7d) | 2026-10-22 → 2026-10-29 (+7d) |  |  |  |  |
| CO-R10.S03-WE-PW-140 | Excavation Works for Fire Hydrants of Potable Water Network-[Road 10]-[SW-3] | 2026-10-06 → 2026-10-13 (+7d) | 2026-10-12 → 2026-10-19 (+7d) |  | -76d → -82d |  |  |
| CO-R10.S03-WE-PW-150 | Installation Works for Fire Hydrant of Potable Water Network-[Road 10]-[SW-3] | 2026-10-13 → 2026-10-20 (+7d) | 2026-10-19 → 2026-10-26 (+7d) |  | -76d → -82d |  |  |
| CO-R10.S03-WE-PW-160 | Trench Backfilling and Compaction Works for Fire Hydrants of Potable Water Network-[Road 10]-[SW-3] | 2026-10-17 → 2026-10-24 (+7d) | 2026-10-22 → 2026-10-29 (+7d) |  | -76d → -82d |  |  |
| CO-R10.S03-WE-IR-100 | Trench Excavation and Bedding Works for Main Lines of Irrigation Network-[Road 10]-[SW-3] |  |  |  |  | ENG-SH-IR-ML-A-110, CO-R10.S03-WE-EW-110, ENG-MS-IR-ML-A-110 → ENG-SH-IR-ML-A-110, CO-R10.S03-WE-EW-110, CO-R10.S03-WE-PW-130, CO-R10.S03-WE-SD-170, ENG-MS-IR-ML-A-110 |  |
| CO-R10.S03-WE-IR-130 | Trench Backfilling and Compaction Works for Main Lines of Irrigation Network-[Road 10]-[SW-3] |  |  |  |  | CO-R10.S03-WE-IR-110 → CO-R10.S03-WE-IR-120, CO-R10.S03-WE-IR-110 |  |
| SL | **Street Lighting Network** | 2026-10-06 → 2026-10-13 (+7d) | 2027-02-23 → 2027-05-05 (+71d) |  |  |  |  |
| LP | **Lighting Poles Works** | 2026-10-06 → 2026-10-13 (+7d) | 2026-11-12 → 2026-11-19 (+7d) |  |  |  |  |
| CO-R10.S03-WE-SL-100 | Foundation Excavation Works for Lighting Poles of Street Lighting Network-[Road 10]-[SW-3] | 2026-10-06 → 2026-10-13 (+7d) | 2026-10-19 → 2026-10-26 (+7d) |  | -170d → -176d |  |  |
| CO-R10.S03-WE-SL-110 | Installation Works for Lighting Poles Foundation of Street Lighting Network-[Road 10]-[SW-3] | 2026-10-12 → 2026-10-19 (+7d) | 2026-10-25 → 2026-11-01 (+7d) |  | -170d → -176d |  |  |
| CO-R10.S03-WE-SL-120 | Installation Works for Lighting Poles of Street Lighting Network-[Road 10]-[SW-3] | 2026-10-18 → 2026-10-25 (+7d) | 2026-11-07 → 2026-11-14 (+7d) |  | -170d → -176d |  |  |
| CO-R10.S03-WE-SL-130 | Installation Works for Lighting Fixtures With Drop Wire of Street Lighting Network-[Road 10]-[SW-3] | 2026-10-24 → 2026-10-31 (+7d) | 2026-11-12 → 2026-11-19 (+7d) |  | -145d → -151d |  |  |
| CO-R10.S03-WE-SL-210 | Backfilling Works for Lighting Poles of Street Lighting Network-[Road 10]-[SW-3] | 2026-10-25 → 2026-11-01 (+7d) | 2026-11-07 → 2026-11-14 (+7d) |  | -145d → -151d |  |  |
| CO-R10.S03-WE-SL-200 | Testing Works for Lighting Poles of Street Lighting Network-[Road 10]-[SW-3] | 2026-11-08 → 2026-11-15 (+7d) | 2026-11-12 → 2026-11-19 (+7d) |  | -145d → -151d |  |  |
| CW | **Cabling Works** | 2026-11-08 → 2026-11-15 (+7d) | 2026-12-12 → 2026-12-19 (+7d) |  |  |  |  |
| CO-R10.S03-WE-SL-140 | Trench Excavation and Bedding Works for Street Lighting Network-[Road 10]-[SW-3] | 2026-11-08 → 2026-11-15 (+7d) | 2026-11-18 → 2026-11-25 (+7d) |  | -170d → -176d |  |  |
| CO-R10.S03-WE-SL-150 | Cable Laying Works for Street Lighting Network-[Road 10]-[SW-3] | 2026-11-19 → 2026-11-26 (+7d) | 2026-11-30 → 2026-12-07 (+7d) |  | -170d → -176d |  |  |
| CO-R10.S03-WE-SL-160 | Trench Backfilling and Compaction Works for Street Lighting Network-[Road 10]-[SW-3] | 2026-12-01 → 2026-12-08 (+7d) | 2026-12-12 → 2026-12-19 (+7d) |  | -170d → -176d |  |  |
| DPB | **Distrubution Panel Boards** | 2027-01-30 → 2027-04-12 (+72d) | 2027-02-23 → 2027-05-05 (+71d) |  |  |  |  |
| CO-R10.S03-WE-SL-170 | Foundation Excavation Works For Panel Boards of Street Lighting Network-[Road 10]-[SW-3] | 2027-01-30 → 2027-04-12 (+72d) | 2027-02-11 → 2027-04-25 (+73d) |  | -187d → -245d |  |  |
| CO-R10.S03-WE-SL-180 | Installation Works for Panel Board Concrete Foundations of Street Lighting Network-[Road 10]-[SW-3] | 2027-02-06 → 2027-04-19 (+72d) | 2027-02-18 → 2027-05-02 (+73d) |  | -187d → -245d |  |  |
| CO-R10.S03-WE-SL-220 | A wall of concrete blocks to install the KWH meter of Street Lighting Network-[Road 10]-[SW-3] | 2027-02-06 → 2027-04-19 (+72d) | 2027-02-18 → 2027-05-02 (+73d) |  | -184d → -242d |  |  |
| CO-R10.S03-WE-SL-190 | Installation Works for Lighting Panel Boards of Street Lighting Network-[Road 10]-[SW-3] | 2027-02-09 → 2027-04-22 (+72d) | 2027-02-23 → 2027-05-05 (+71d) |  | -187d → -245d |  |  |
| TE | **Telecom Network** | 2027-03-04 → 2026-12-08 (-86d) | 2027-04-04 → 2027-01-04 (-90d) |  |  |  |  |
| PD | **Ducts Works** | 2027-03-04 → 2026-12-08 (-86d) | 2027-04-04 → 2027-01-04 (-90d) |  |  |  |  |
| CO-R10.S03-WE-TE-100 | Trench Excavation and Bedding Works for Ducts of Telecom Network-[Road 10]-[SW-3] | 2027-03-04 → 2026-12-08 (-86d) | 2027-03-07 → 2026-12-10 (-87d) |  | -221d → -148d |  |  |
| CO-R10.S03-WE-TE-110 | Pipes Laying Works for Ducts of Telecom Network-[Road 10]-[SW-3] | 2027-03-08 → 2026-12-12 (-86d) | 2027-03-18 → 2026-12-19 (-89d) |  | -215d → -139d |  |  |
| CO-R10.S03-WE-TE-120 | Pouring Plain Concrete Above Ducts of Telecom Network-[Road 10]-[SW-3] | 2027-03-20 → 2026-12-20 (-90d) | 2027-03-27 → 2026-12-27 (-90d) |  | -215d → -139d |  |  |
| CO-R10.S03-WE-TE-130 | Trench Backfilling and Compaction Works for Ducts of Telecom Network-[Road 10]-[SW-3] | 2027-03-28 → 2026-12-28 (-90d) | 2027-04-04 → 2027-01-04 (-90d) |  | -215d → -139d |  |  |
| MH | **Manholes Works** | 2027-03-08 → 2026-12-12 (-86d) | 2027-04-04 → 2027-01-04 (-90d) |  |  |  |  |
| CO-R10.S03-WE-TE-140 | Excavation Works for Manholes of Telecom Network-[Road 10]-[SW-3] | 2027-03-08 → 2026-12-12 (-86d) | 2027-03-18 → 2026-12-19 (-89d) |  | -221d → -148d |  |  |
| CO-R10.S03-WE-TE-150 | Installation Works for Manholes of Telecom Network-[Road 10]-[SW-3] | 2027-03-20 → 2026-12-20 (-90d) | 2027-03-27 → 2026-12-27 (-90d) |  | -212d → -139d |  |  |
| CO-R10.S03-WE-TE-160 | Backfilling Works for Manholes of Telecom Network-[Road 10]-[SW-3] | 2027-03-28 → 2026-12-28 (-90d) | 2027-04-04 → 2027-01-04 (-90d) |  | -212d → -139d |  |  |
| MV | **Medium Voltage Network** |  | 2027-04-18 → 2026-10-10 (-190d) |  |  |  |  |
| CW | **Cabling Works** |  | 2027-04-18 → 2026-10-10 (-190d) |  |  |  |  |
| CO-R10.S03-WE-MV-100 | Trench Excavation and Bedding Works for Medium Voltage Network-[Road 10]-[SW-3] |  | 2027-04-11 → 2026-10-10 A (-183d) | 80% → 100% | -215d → none | ENG-SH-MV-A-110, CO-R10.S03-WE-SD-170 SS+3d, CO-R10.S03-WE-SD-170 FF+3d, CO-R10.S03-WE-EW-110, CO-R10.S03-WE-TE-130 SS+3d, CO-R10.S03-WE-TE-130 FF+3d, ENG-MS-MV-A-110 → ENG-SH-MV-A-110, CO-R10.S03-WE-SD-170 SS+3d, CO-R10.S03-WE-SD-170 FF+3d, CO-R10.S03-WE-EW-110, ENG-MS-MV-A-110 |  |
| CO-R10.S03-WE-MV-110 | Cable Laying Works for Medium Voltage Network-[Road 10]-[SW-3] |  | 2027-04-14 → 2026-10-10 A (-186d) | 80% → 100% | -215d → none |  | resources Labor/Helper [288 h]; Electrician [288 h]; Low Current Technician [288 h]; 33kv 3Cx400 mm² Al XLPE / LLDPE /PVC Cable [938.25]; 33kv 3Cx400 mm² Al XLPE /LLDPE/PVC [2.8] → Labor/Helper [80 h]; Electrician [80 h]; Low Current Technician [80 h]; 33kv 3Cx400 mm² Al XLPE / LLDPE /PVC Cable [938.25]; 33kv 3Cx400 mm² Al XLPE /LLDPE/PVC [2.8] |
| CO-R10.S03-WE-MV-120 | Trench Backfilling and Compaction Works for Medium Voltage Network-[Road 10]-[SW-3] |  | 2027-04-18 → 2026-10-10 A (-190d) | 80% → 100% | -215d → none |  |  |
| CO-R10.S03-WE-MV-150 | Installation Works for RMU Concrete Foundations of Medium Voltage Network-[Road 10]-[SW-3] |  |  |  |  | CO-R10.S03-WE-MV-130, PRO-R10-MV-DL-120 → CO-R10.S03-WE-MV-130 |  |
| RD | **Road Works** |  | 2027-06-19 → 2027-07-11 (+22d) |  |  |  |  |
| RD | **Pre-Bituminous Construction** | 2027-04-08 → 2027-01-05 (-93d) | 2027-05-02 → 2027-01-28 (-94d) |  |  |  |  |
| CO-R10.S03-WE-RD-100 | Capping and Subgrade Layer for Road Works-[Road 10]-[SW-3] | 2027-04-08 → 2027-01-05 (-93d) | 2027-04-21 → 2027-01-18 (-93d) |  | -215d → -139d |  |  |
| CO-R10.S03-WE-RD-110 | Aggregate Base Course Layer for Road Works-[Road 10]-[SW-3] | 2027-04-12 → 2027-01-09 (-93d) | 2027-05-02 → 2027-01-28 (-94d) |  | -193d → -87d |  |  |
| LS | **Pavement Works** |  | 2027-06-19 → 2027-07-11 (+22d) |  |  |  |  |
| CO-R10.S03-WE-RD-120 | Fixing of Curbstone for Sidewalks Pavement-[Road 10]-[SW-3] |  |  |  |  | CO-R10.S03-WE-RD-110 FF+3d, CO-R10.S03-WE-RD-110 SS+3d → CO-R10.S03-WE-SD-170 |  |
| CO-R10.S03-WE-RD-130 | Fixing of Interlock Tiles for Sidewalks Pavement-[Road 10]-[SW-3] |  | 2027-06-19 → 2027-07-11 (+22d) |  | -216d → -235d | CO-R10.S03-WE-RD-120 SS+3d, CO-R10.S03-WE-RD-120 FF+3d, CO-R10-PW-TF-100, CO-R10-PW-TF-110, CO-R10-PW-TF-120, CO-R10-SW-TF-100, CO-R10-SW-TF-110, CO-R10-SW-TF-130, CO-R10-SD-TF-100, CO-R10-SL-TF-140, CO-R10-SL-TF-150, CO-R10-SL-ES-140, CO-R10-SL-ES-150, CO-R10-IR-TF-120, CO-R10-MV-TF-140 → CO-R10.S03-WE-RD-120 SS, CO-R10.S03-WE-RD-120 FF+3d, CO-R10-PW-TF-100 FF, CO-R10-PW-TF-110 FF, CO-R10-PW-TF-120 FF, CO-R10-SW-TF-100 FF, CO-R10-SW-TF-110 FF, CO-R10-SW-TF-130 FF, CO-R10-SD-TF-100, CO-R10-SL-TF-140 FF, CO-R10-SL-TF-150 FF, CO-R10-SL-ES-140 FF, CO-R10-SL-ES-150 FF, CO-R10-IR-TF-120 FF, CO-R10-MV-TF-140 FF |  |
| 2 | **SW-4** |  | 2027-06-21 → 2027-07-11 (+20d) |  |  |  |  |
| SW_4 | **SW_4-East** |  | 2027-06-19 → 2027-07-11 (+22d) |  |  |  |  |
| SW | **Sewage Network** |  | 2026-10-06 → 2026-10-13 (+7d) |  |  |  |  |
| 1 | **Manholes** |  | 2026-10-06 → 2026-10-13 (+7d) |  |  |  |  |
| CO-R10.S04-ES-SW-210 | Testing Works for Main Line Manholes of Sewage Network-[Road 10]-[SW-4] | 2026-10-06 → 2026-10-13 (+7d) | 2026-10-06 → 2026-10-13 (+7d) |  | -59d → -70d |  |  |
| SD | **Storm Drainage Network** |  | 2026-10-17 → 2026-10-24 (+7d) |  |  |  |  |
| CO-R10.S04-ES-SD-130 | Trench Backfilling and Compaction Works for Main Lines of Storm Drainage Network-[Road 10]-[SW-4] |  |  |  |  | CO-R10.S04-ES-SD-120 → CO-R10.S04-ES-SD-120 SS+3d, CO-R10.S04-ES-SD-120 FF+3d, CO-R10.S04-ES-SD-120, CO-R10.S04-ES-SD-220 FF |  |
| MH | **Manholes** |  | 2026-10-06 → 2026-10-13 (+7d) |  |  |  |  |
| CO-R10.S04-ES-SD-210 | Testing Works for Manholes of Storm Drainage Network-[Road 10]-[SW-4] | 2026-10-06 → 2026-10-13 (+7d) | 2026-10-06 → 2026-10-13 (+7d) |  | -28d → -70d | CO-R10.S04-ES-SD-200, CO-R10.S04-ES-SD-220 → CO-R10.S04-ES-SD-200 |  |
| CB | **Catch Basin Sections** |  | 2026-10-17 → 2026-10-24 (+7d) |  |  |  |  |
| CO-R10.S04-ES-SD-140 | Trench Excavation and Bedding Works for Catch Basins of Storm Drainage Network-[Road 10]-[SW-4] |  |  |  |  | CO-R10.S04-ES-EW-110 → CO-R10.S04-ES-EW-110, CO-R10.S04-ES-SD-220 |  |
| CO-R10.S04-ES-SD-160 | Testing Works for Catch Basins of Storm Drainage Network-[Road 10]-[SW-4] | 2026-10-06 → 2026-10-13 (+7d) | 2026-10-17 → 2026-10-24 (+7d) |  | -37d → -13d |  |  |
| PW | **Potable Water Network** |  | 2027-01-02 → 2026-11-07 (-56d) |  |  |  |  |
| CO-R10.S04-ES-PW-110 | Pipes Laying and accessories for Main Lines of Potable Water Network-[Road 10]-[SW-4] |  |  |  |  | CO-R10.S04-ES-PW-100, PRO-R10-PW-DL-100 FF+3d, PRO-R10-PW-DL-110 FF+3d → CO-R10.S04-ES-PW-100, PRO-R10-PW-DL-100 FF+3d |  |
| CO-R10.S04-ES-PW-130 | Trench Backfilling and Compaction Works for Main Lines of Potable Water Network-[Road 10]-[SW-4] |  |  |  |  | CO-R10.S04-ES-PW-110, CO-R10.S04-ES-PW-220 FF, CO-R10.S04-ES-PW-160 FF → CO-R10.S04-ES-PW-110 |  |
| VC | **Valve Chamber** |  | 2026-10-24 → 2026-10-29 (+5d) |  |  |  |  |
| CO-R10.S04-ES-PW-210 | Insulation Works for Main Line Valves and Valve Chambers of Potable Water Network-[Road 10]-[SW-4] |  | 2026-10-20 → 2026-10-26 (+6d) |  | -79d → -84d | CO-R10.S04-ES-PW-200 → CO-R10.S04-ES-PW-200 FF |  |
| CO-R10.S04-ES-PW-170 | Excavation Works for Main Line Valves and Valve Chambers of Potable Water Network-[Road 10]-[SW-4] | 2026-10-06 → 2026-10-13 (+7d) | 2026-10-06 → 2026-10-13 (+7d) |  | -85d → -91d |  |  |
| CO-R10.S04-ES-PW-180 | RC Footing Works for Main Line Valves and Valve Chambers of Potable Water Network-[Road 10]-[SW-4] | 2026-10-07 → 2026-10-14 (+7d) | 2026-10-10 → 2026-10-17 (+7d) |  | -79d → -84d |  |  |
| CO-R10.S04-ES-PW-190 | RC Wall Works for Main Line Valves and Valve Chambers of Potable Water Network-[Road 10]-[SW-4] | 2026-10-11 → 2026-10-18 (+7d) | 2026-10-17 → 2026-10-24 (+7d) |  | -79d → -84d |  |  |
| CO-R10.S04-ES-PW-200 | RC Slab Works for Main Line Valves and Valve Chambers of Potable Water Network-[Road 10]-[SW-4] | 2026-10-18 → 2026-10-25 (+7d) | 2026-10-19 → 2026-10-26 (+7d) |  | -79d → -84d |  |  |
| CO-R10.S04-ES-PW-220 | Backfilling Works for Main Line Valves and Valve Chambers of Potable Water Network-[Road 10]-[SW-4] | 2026-10-21 → 2026-10-27 (+6d) | 2026-10-24 → 2026-10-29 (+5d) |  | -79d → -84d |  |  |

| ID | Task | Start | Finish | Duration | Total float | Predecessors | Other |
| --- | --- | --- | --- | --- | --- | --- | --- |
| FH | **Fire Hydrant** | 2026-12-09 → 2026-10-14 (-56d) | 2027-01-02 → 2026-11-07 (-56d) |  |  |  |  |
| CO-R10.S04-ES-PW-140 | Excavation Works for Fire Hydrants of Potable Water Network-[Road 10]-[SW-4] | 2026-12-09 → 2026-10-14 (-56d) | 2026-12-16 → 2026-10-21 (-56d) |  | -139d → -91d |  |  |
| CO-R10.S04-ES-PW-150 | Installation Works for Fire Hydrant of Potable Water Network-[Road 10]-[SW-4] | 2026-12-17 → 2026-10-22 (-56d) | 2026-12-24 → 2026-10-29 (-56d) |  | -139d → -91d |  |  |
| CO-R10.S04-ES-PW-160 | Trench Backfilling and Compaction Works for Fire Hydrants of Potable Water Network-[Road 10]-[SW-4] | 2026-12-26 → 2026-10-31 (-56d) | 2027-01-02 → 2026-11-07 (-56d) |  | -139d → -91d |  |  |
| CO-R10.S04-ES-IR-100 | Trench Excavation and Bedding Works for Main Lines of Irrigation Network-[Road 10]-[SW-4] |  |  |  |  | CO-R10.S04-ES-EW-110 → CO-R10.S04-ES-EW-110, CO-R10.S04-ES-PW-130, CO-R10.S04-ES-SD-170 |  |
| SL | **Street Lighting Network** | 2026-10-29 → 2026-10-13 (-16d) | 2027-01-26 → 2027-03-28 (+61d) |  |  |  |  |
| LP | **Lighting Poles Works** | 2026-10-29 → 2026-10-13 (-16d) | 2027-01-26 → 2027-03-28 (+61d) |  |  |  |  |
| CO-R10.S04-ES-SL-100 | Foundation Excavation Works for Lighting Poles of Street Lighting Network-[Road 10]-[SW-4] | 2026-10-29 → 2026-10-13 (-16d) | 2026-11-05 → 2026-10-20 (-16d) |  | -192d → -178d |  | resources Labor/Helper [288 h]; Skilled Labor/Surveyor [144 h]; Excavator [288 h]; Lighting poles with one arm, including the power distribution box, screws, cables, 12 meters in height. [1.2] → Labor/Helper [112 h]; Skilled Labor/Surveyor [144 h]; Excavator [112 h]; Lighting poles with one arm, including the power distribution box, screws, cables, 12 meters in height. [1.2] |
| CO-R10.S04-ES-SL-110 | Installation Works for Lighting Poles Foundation of Street Lighting Network-[Road 10]-[SW-4] | 2026-11-04 → 2026-10-19 (-16d) | 2026-11-11 → 2026-10-26 (-16d) |  | -192d → -178d |  |  |
| CO-R10.S04-ES-SL-120 | Installation Works for Lighting Poles of Street Lighting Network-[Road 10]-[SW-4] | 2026-11-10 → 2026-10-25 (-16d) | 2026-11-17 → 2026-11-01 (-16d) |  | -192d → -178d |  |  |
| CO-R10.S04-ES-SL-210 | Backfilling Works for Lighting Poles of Street Lighting Network-[Road 10]-[SW-4] | 2026-11-10 → 2026-11-15 (+5d) | 2026-11-26 → 2026-12-01 (+5d) |  | -183.5d → -175.5d |  |  |
| CO-R10.S04-ES-SL-200 | Testing Works for Lighting Poles of Street Lighting Network-[Road 10]-[SW-4] | 2026-11-28 → 2026-12-02 (+4d) | 2026-12-05 → 2026-12-09 (+4d) |  | -78.5d → -82.5d |  |  |
| CO-R10.S04-ES-SL-130 | Installation Works for Lighting Fixtures With Drop Wire of Street Lighting Network-[Road 10]-[SW-4] | 2027-01-06 → 2027-03-04 (+57d) | 2027-01-26 → 2027-03-28 (+61d) |  | -123.5d → -171.5d |  | resources Labor/Helper [288 h]; Electrician [288 h]; Manlift [288 h]; Street Lighting( LED) Luminaire,(Type C) complete with control gear and lamp, ?.17000 Lumen [24] → Labor/Helper [261 h]; Electrician [262 h]; Manlift [261 h]; Street Lighting( LED) Luminaire,(Type C) complete with control gear and lamp, ?.17000 Lumen [24] |
| CW | **Cabling Works** | 2026-11-18 → 2026-11-02 (-16d) | 2026-12-12 → 2026-11-25 (-17d) |  |  |  |  |
| CO-R10.S04-ES-SL-140 | Trench Excavation and Bedding Works for Street Lighting Network-[Road 10]-[SW-4] | 2026-11-18 → 2026-11-02 (-16d) | 2026-11-25 → 2026-11-09 (-16d) |  | -192d → -178d |  |  |
| CO-R10.S04-ES-SL-150 | Cable Laying Works for Street Lighting Network-[Road 10]-[SW-4] | 2026-11-26 → 2026-11-10 (-16d) | 2026-12-03 → 2026-11-17 (-16d) |  | -192d → -178d |  |  |
| CO-R10.S04-ES-SL-160 | Trench Backfilling and Compaction Works for Street Lighting Network-[Road 10]-[SW-4] | 2026-12-05 → 2026-11-18 (-17d) | 2026-12-12 → 2026-11-25 (-17d) |  | -192d → -178d |  |  |
| DPB | **Distrubution Panel Boards** | 2026-12-13 → 2026-11-26 (-17d) | 2027-01-26 → 2027-01-10 (-16d) |  |  |  |  |
| CO-R10.S04-ES-SL-170 | Foundation Excavation Works For Panel Boards of Street Lighting Network-[Road 10]-[SW-4] | 2026-12-13 → 2026-11-26 (-17d) | 2027-01-02 → 2026-12-16 (-17d) |  | -173d → -159d |  |  |
| CO-R10.S04-ES-SL-180 | Installation Works for Panel Board Concrete Foundations of Street Lighting Network-[Road 10]-[SW-4] | 2026-12-23 → 2026-12-07 (-16d) | 2027-01-05 → 2026-12-20 (-16d) |  | -164d → -150d |  |  |
| CO-R10.S04-ES-SL-190 | Installation Works for Lighting Panel Boards of Street Lighting Network-[Road 10]-[SW-4] | 2027-01-06 → 2026-12-21 (-16d) | 2027-01-19 → 2027-01-03 (-16d) |  | -164d → -150d |  |  |
| CO-R10.S04-ES-SL-220 | A wall of concrete blocks to install the KWH meter of Street Lighting Network-[Road 10]-[SW-4] | 2027-01-06 → 2026-12-21 (-16d) | 2027-01-26 → 2027-01-10 (-16d) |  | -164d → -150d |  |  |
| TE | **Telecom Network** | 2026-12-10 → 2026-12-16 (+6d) | 2027-04-12 → 2027-01-17 (-85d) |  |  |  |  |
| PD | **Ducts Works** | 2026-12-10 → 2026-12-16 (+6d) | 2027-01-11 → 2027-01-17 (+6d) |  |  |  |  |
| CO-R10.S04-ES-TE-100 | Trench Excavation and Bedding Works for Ducts of Telecom Network-[Road 10]-[SW-4] | 2026-12-10 → 2026-12-16 (+6d) | 2026-12-17 → 2026-12-23 (+6d) |  | -192d → -197d |  |  |
| CO-R10.S04-ES-TE-110 | Pipes Laying Works for Ducts of Telecom Network-[Road 10]-[SW-4] | 2026-12-19 → 2026-12-24 (+5d) | 2026-12-26 → 2026-12-31 (+5d) |  | -147d → -152d |  | resources Labor/Helper [112 h]; Skilled Labor/Surveyor [6 h]; Foreman [6 h]; Plumber [56 h]; Excavator [56 h]; JCB [28 h]; Truck [56 h]; 6-way ducts, 50mm dia. HDPE [268]; Road crossing ducts (6-way) [23] → Labor/Helper [224 h]; Skilled Labor/Surveyor [12 h]; Foreman [12 h]; Plumber [112 h]; Excavator [56 h]; JCB [28 h]; Truck [56 h]; 6-way ducts, 50mm dia. HDPE [268]; Road crossing ducts (6-way) [23] |
| CO-R10.S04-ES-TE-120 | Pouring Plain Concrete Above Ducts of Telecom Network-[Road 10]-[SW-4] | 2026-12-27 → 2027-01-02 (+6d) | 2027-01-03 → 2027-01-09 (+6d) |  | -147d → -152d |  |  |
| CO-R10.S04-ES-TE-130 | Trench Backfilling and Compaction Works for Ducts of Telecom Network-[Road 10]-[SW-4] | 2027-01-04 → 2027-01-10 (+6d) | 2027-01-11 → 2027-01-17 (+6d) |  | -147d → -152d |  |  |
| MH | **Manholes Works** | 2027-03-20 → 2026-12-24 (-86d) | 2027-04-12 → 2027-01-17 (-85d) |  |  |  |  |
| CO-R10.S04-ES-TE-140 | Excavation Works for Manholes of Telecom Network-[Road 10]-[SW-4] | 2027-03-20 → 2026-12-24 (-86d) | 2027-03-27 → 2026-12-31 (-86d) |  | -221d → -152d |  |  |
| CO-R10.S04-ES-TE-150 | Installation Works for Manholes of Telecom Network-[Road 10]-[SW-4] | 2027-03-28 → 2027-01-02 (-85d) | 2027-04-04 → 2027-01-09 (-85d) |  | -221d → -152d |  |  |
| CO-R10.S04-ES-TE-160 | Backfilling Works for Manholes of Telecom Network-[Road 10]-[SW-4] | 2027-04-05 → 2027-01-10 (-85d) | 2027-04-12 → 2027-01-17 (-85d) |  | -221d → -152d |  |  |
| RD | **Road Works** |  | 2027-06-19 → 2027-07-11 (+22d) |  |  |  |  |
| RD | **Pre-Bituminous Construction** | 2027-04-13 → 2027-01-18 (-85d) | 2027-05-02 → 2027-02-06 (-85d) |  |  |  |  |
| CO-R10.S04-ES-RD-100 | Capping and Subgrade Layer for Road Works-[Road 10]-[SW-4] | 2027-04-13 → 2027-01-18 (-85d) | 2027-04-28 → 2027-02-02 (-85d) |  | -221d → -152d | CO-R10.S04-ES-SD-130, CO-R10.S04-ES-SW-130, CO-R10.S04-ES-PW-130, CO-R10.S04-ES-PW-160, CO-R10.S04-ES-SL-160 SS+3d, CO-R10.S04-ES-SL-160 FF+3d, PRO-R10-RD-DL-100 FF+3d, CO-R10.S04-ES-TE-130, CO-R10.S04-ES-TE-160 → CO-R10.S04-ES-SD-130, CO-R10.S04-ES-SW-130, CO-R10.S04-ES-PW-130, CO-R10.S04-ES-PW-160, CO-R10.S04-ES-SL-160 SS+3d, CO-R10.S04-ES-SL-160 FF+3d, PRO-R10-RD-DL-100 FF+3d, CO-R10.S04-ES-TE-130, CO-R10.S04-ES-TE-160, CO-R10.S04-ES-SW-210, CO-R10.S04-ES-PW-220, CO-R10.S04-ES-SD-210 | resources Labor/Helper [288 h]; Skilled Labor/Surveyor [144 h]; Loader [144 h]; Grader [144 h]; Road Roller [144 h]; Water Tank [144 h]; 300mm capping layer underneath subgrade , CBR?15% [3390.73]; 300mm thick Subgrade, including subgrade preparation, CBR?25% [3390.73] → Labor/Helper [896 h]; Skilled Labor/Surveyor [304 h]; Loader [144 h]; Grader [144 h]; Road Roller [144 h]; Water Tank [144 h]; 300mm capping layer underneath subgrade , CBR?15% [3390.73]; 300mm thick Subgrade, including subgrade preparation, CBR?25% [3390.73] |
| CO-R10.S04-ES-RD-110 | Aggregate Base Course Layer for Road Works-[Road 10]-[SW-4] | 2027-04-19 → 2027-01-24 (-85d) | 2027-05-02 → 2027-02-06 (-85d) |  | -191d → -91d | CO-R10.S04-ES-RD-100 SS+3d, CO-R10.S04-ES-RD-100 FF+3d, CO-R10.S04-ES-SD-170 SS+3d, CO-R10.S04-ES-SD-170 FF+3d, PRO-R10-RD-DL-110 FF+3d → CO-R10.S04-ES-RD-100 SS+3d, CO-R10.S04-ES-RD-100 FF+3d, CO-R10.S04-ES-SD-170 SS+3d, CO-R10.S04-ES-SD-170 FF+3d, PRO-R10-RD-DL-110 FF+3d, CO-R10.S04-ES-SD-160 | resources Labor/Helper [288 h]; Skilled Labor/Surveyor [144 h]; Foreman [144 h]; Loader [144 h]; Grader [144 h]; Road Roller [144 h]; Aggregate base course 200mm thick after compaction in two layers(Grading 1); CBR?80%; including watering, compaction and testing [2260.72] → Labor/Helper [384 h]; Skilled Labor/Surveyor [192 h]; Foreman [192 h]; Loader [144 h]; Grader [144 h]; Road Roller [144 h]; Aggregate base course 200mm thick after compaction in two layers(Grading 1); CBR?80%; including watering, compaction and testing [2260.72] |
| LS | **Pavement Works** |  | 2027-06-19 → 2027-07-11 (+22d) |  |  |  |  |
| CO-R10.S04-ES-RD-120 | Fixing of Curbstone for Sidewalks Pavement-[Road 10]-[SW-4] |  |  |  |  | PRO-R10-RD-DL-130 FF+3d, CO-R10.S04-ES-RD-110 SS+3d, CO-R10.S04-ES-RD-110 FF+3d → PRO-R10-RD-DL-130 FF+3d | resources Labor/Helper [288 h]; Block Mason [864 h]; Precast Concrete Kerb, Type K1 [1250.99]; Precast Concrete Kerb, Type L1 [2482.11] → Labor/Helper [768 h]; Block Mason [2304 h]; Precast Concrete Kerb, Type K1 [1250.99]; Precast Concrete Kerb, Type L1 [2482.11] |
| CO-R10.S04-ES-RD-130 | Fixing of Interlock Tiles for Sidewalks Pavement-[Road 10]-[SW-4] |  | 2027-06-19 → 2027-07-11 (+22d) |  | -214d → -233d | PRO-R10-RD-DL-120 FF+3d, CO-R10.S04-ES-RD-120 SS+3d, CO-R10.S04-ES-RD-120 FF+3d, CO-R10-PW-TF-100, CO-R10-PW-TF-110, CO-R10-PW-TF-120, CO-R10-SW-TF-100, CO-R10-SW-TF-110, CO-R10-SW-TF-130, CO-R10-SD-TF-100, CO-R10-SD-TF-120, CO-R10-SL-TF-140, CO-R10-SL-TF-150, CO-R10-SL-ES-140, CO-R10-SL-ES-150, CO-R10-IR-TF-120, CO-R10-MV-TF-140, CO-R10-SL-TF-380 → PRO-R10-RD-DL-120 FF+3d, CO-R10.S04-ES-RD-120 SS, CO-R10.S04-ES-RD-120 FF+3d, CO-R10-PW-TF-100 FF, CO-R10-PW-TF-110 FF, CO-R10-PW-TF-120 FF, CO-R10-SW-TF-100 FF, CO-R10-SW-TF-110 FF, CO-R10-SW-TF-130 FF, CO-R10-SD-TF-100, CO-R10-SD-TF-120 SS, CO-R10-SL-TF-140 FF, CO-R10-SL-TF-150 FF, CO-R10-SL-ES-140 FF, CO-R10-SL-ES-150 FF, CO-R10-IR-TF-120 FF, CO-R10-MV-TF-140 FF, CO-R10-SL-TF-380 FF | resources Labor/Helper [432 h]; Block Mason [1296 h]; Interlocking block pavers for sidewalk/footpath 60mm thick on and including 30mm Sand Bedding, 200mm Aggregate subbase, all in accordance with authority standards and complete as per specifications [2233.91]; Extraover for Pedestrian ramps [5.5] → Labor/Helper [720 h]; Block Mason [2160 h]; Interlocking block pavers for sidewalk/footpath 60mm thick on and including 30mm Sand Bedding, 200mm Aggregate subbase, all in accordance with authority standards and complete as per specifications [2233.91]; Extraover for Pedestrian ramps [5.5] |
| SW_41 | **SW_4-West** |  | 2027-06-21 → 2027-07-11 (+20d) |  |  |  |  |
| CO-R10.S04-WE-EW-100 | Roadway Excavation Works Upto Design Level for Earthworks-[Road 10]-[SW-4] |  |  |  |  |  | resources Labor/Helper [192 h]; Skilled Labor/Surveyor [24 h]; Foreman [24 h]; Water Tank [192 h]; Dozer [192 h]; Roadway Excavation for cuttings; on any type of material for all depths including trimming and Preparation of excavated surfaces and disposal. [15964.1] → Labor/Helper [1152 h]; Skilled Labor/Surveyor [144 h]; Foreman [144 h]; Water Tank [192 h]; Dozer [192 h]; Roadway Excavation for cuttings; on any type of material for all depths including trimming and Preparation of excavated surfaces and disposal. [15964.1] |
| CO-R10.S04-WE-EW-110 | Embankments Works Upto Design Level for Earthworks-[Road 10]-[SW-4] |  |  |  |  |  | resources Labor/Helper [480 h]; Skilled Labor/Surveyor [60 h]; Foreman [60 h]; Water Tank [480 h]; Dozer [480 h]; Embankments to the ROW, with suitable material other than top soil or rock according to specifications [26873.7] → Labor/Helper [1248 h]; Skilled Labor/Surveyor [156 h]; Foreman [156 h]; Water Tank [480 h]; Dozer [480 h]; Embankments to the ROW, with suitable material other than top soil or rock according to specifications [26873.7] |
| SW | **Sewage Network** |  | 2026-10-06 → 2026-10-13 (+7d) |  |  |  |  |
| CO-R10.S04-WE-SW-100 | Trench Excavation and Bedding Works for Main Lines of Sewage Network-[Road 10]-[SW-4] |  |  |  |  | CO-R10.S04-WE-EW-110, ENG-MS-SW-ML-A-110, ENG-SH-SW-ML-A-110 → CO-R10.S04-WE-EW-110, ENG-MS-SW-ML-A-110, ENG-SH-SW-ML-A-110, CO-R11.S06-SW-100 |  |
| CO-R10.S04-WE-SW-120 | Pipes Laying Works for Main Lines of Sewage Network-[Road 10]-[SW-4] |  |  |  |  |  | resources Labor/Helper [192 h]; Skilled Labor/Surveyor [10 h]; Foreman [10 h]; Plumber [96 h]; Excavator [96 h]; Depth : 1.5 - 2.5m [45]; Depth : 2.5 - 3.5m [26.66]; Depth : 3.5 - 4.5m [26.66]; Depth : 5.5 - 6.5m [150]; Depth : 6.5 -7.5m [120]; Depth : 6.5 -7.5m [45]; Depth :more than 7.5m [30] → Labor/Helper [768 h]; Skilled Labor/Surveyor [39 h]; Foreman [39 h]; Plumber [384 h]; Excavator [96 h]; Depth : 1.5 - 2.5m [45]; Depth : 2.5 - 3.5m [26.66]; Depth : 3.5 - 4.5m [26.66]; Depth : 5.5 - 6.5m [150]; Depth : 6.5 -7.5m [120]; Depth : 6.5 -7.5m [45]; Depth :more than 7.5m [30] |
| 1 | **Manholes** |  | 2026-10-06 → 2026-10-13 (+7d) |  |  |  |  |
| CO-R10.S04-WE-SW-210 | Testing Works for Main Line Manholes of Sewage Network-[Road 10]-[SW-4] | 2026-10-06 → 2026-10-13 (+7d) | 2026-10-06 → 2026-10-13 (+7d) |  | -59d → -68d |  |  |
| SD | **Storm Drainage Network** |  | 2026-10-19 → 2026-10-20 (+1d) |  |  |  |  |
| CO-R10.S04-WE-SD-130 | Trench Backfilling and Compaction Works for Main Lines of Storm Drainage Network-[Road 10]-[SW-4] |  |  |  |  | CO-R10.S04-WE-SD-120 SS+3d, CO-R10.S04-WE-SD-120 FF+3d, CO-R10.S04-WE-SD-120 → CO-R10.S04-WE-SD-120 SS+3d, CO-R10.S04-WE-SD-120 FF+3d, CO-R10.S04-WE-SD-120, CO-R10.S04-WE-SD-220 FF |  |
| MH | **Manholes** |  | 2026-10-06 → 2026-10-13 (+7d) |  |  |  |  |
| CO-R10.S04-WE-SD-220 | Backfilling Works for Manholes of Storm Drainage Network-[Road 10]-[SW-4] |  |  |  |  | CO-R10.S04-WE-SD-210 → MS-CS-PS |  |
| CO-R10.S04-WE-SD-210 | Testing Works for Manholes of Storm Drainage Network-[Road 10]-[SW-4] | 2026-10-06 → 2026-10-13 (+7d) | 2026-10-06 → 2026-10-13 (+7d) |  | -38d → -68d |  |  |
| CB | **Catch Basin Sections** |  | 2026-10-19 → 2026-10-20 (+1d) |  |  |  |  |
| CO-R10.S04-WE-SD-140 | Trench Excavation and Bedding Works for Catch Basins of Storm Drainage Network-[Road 10]-[SW-4] |  | 2026-10-08 → 2026-10-14 (+6d) |  | -38d → -207d |  |  |
| CO-R10.S04-WE-SD-150 | Installation and Pipes Laying Connection Works for Catch Basins of Storm Drainage Network-[Road 10]-[SW-4] |  | 2026-10-11 → 2026-10-14 (+3d) |  | -38d → -207d | CO-R10.S04-WE-SD-140, PRO-R10-SD-DL-130 FF+3d → CO-R10.S04-WE-SD-140 SS, PRO-R10-SD-DL-130 FF+3d |  |
| CO-R10.S04-WE-SD-160 | Testing Works for Catch Basins of Storm Drainage Network-[Road 10]-[SW-4] |  | 2026-10-14 → 2026-10-15 (+1d) |  | -38d → -207d | CO-R10.S04-WE-SD-150, CO-R10.S04-WE-SD-120, PRO-R10-SD-DL-110 FF+3d → CO-R10.S04-WE-SD-150 SS, CO-R10.S04-WE-SD-120, PRO-R10-SD-DL-110 FF+3d |  |
| CO-R10.S04-WE-SD-170 | Trench Backfilling and Compaction Works for Catch Basins of Storm Drainage Network-[Road 10]-[SW-4] | 2026-10-12 → 2026-10-13 (+1d) | 2026-10-19 → 2026-10-20 (+1d) |  | -38d → -207d |  |  |
| PW | **Potable Water Network** |  | 2027-01-02 → 2026-11-07 (-56d) |  |  |  |  |
| CO-R10.S04-WE-PW-110 | Pipes Laying and accessories for Main Lines of Potable Water Network-[Road 10]-[SW-4] |  |  |  |  | CO-R10.S04-WE-PW-100, PRO-R10-PW-DL-100 FF+3d, PRO-R10-PW-DL-110 FF+3d → CO-R10.S04-WE-PW-100, PRO-R10-PW-DL-100 FF+3d |  |
| CO-R10.S04-WE-PW-130 | Trench Backfilling and Compaction Works for Main Lines of Potable Water Network-[Road 10]-[SW-4] |  |  | 4d → 10d |  | CO-R10.S04-WE-PW-110, CO-R10.S04-WE-PW-220 FF, CO-R10.S04-WE-PW-160 FF → CO-R10.S04-WE-PW-110 |  |
| VC | **Valve Chamber** |  | 2026-10-24 → 2026-10-29 (+5d) |  |  |  |  |
| CO-R10.S04-WE-PW-210 | Insulation Works for Main Line Valves and Valve Chambers of Potable Water Network-[Road 10]-[SW-4] |  | 2026-10-20 → 2026-10-26 (+6d) |  | -77d → -82d | CO-R10.S04-WE-PW-200 → CO-R10.S04-WE-PW-200 FF |  |
| CO-R10.S04-WE-PW-170 | Excavation Works for Main Line Valves and Valve Chambers of Potable Water Network-[Road 10]-[SW-4] | 2026-10-06 → 2026-10-13 (+7d) | 2026-10-06 → 2026-10-13 (+7d) |  | -83d → -89d |  |  |
| CO-R10.S04-WE-PW-180 | RC Footing Works for Main Line Valves and Valve Chambers of Potable Water Network-[Road 10]-[SW-4] | 2026-10-07 → 2026-10-14 (+7d) | 2026-10-10 → 2026-10-17 (+7d) |  | -77d → -82d |  |  |
| CO-R10.S04-WE-PW-190 | RC Wall Works for Main Line Valves and Valve Chambers of Potable Water Network-[Road 10]-[SW-4] | 2026-10-11 → 2026-10-18 (+7d) | 2026-10-17 → 2026-10-24 (+7d) |  | -77d → -82d |  |  |
| CO-R10.S04-WE-PW-200 | RC Slab Works for Main Line Valves and Valve Chambers of Potable Water Network-[Road 10]-[SW-4] | 2026-10-18 → 2026-10-25 (+7d) | 2026-10-19 → 2026-10-26 (+7d) |  | -77d → -82d |  |  |
| CO-R10.S04-WE-PW-220 | Backfilling Works for Main Line Valves and Valve Chambers of Potable Water Network-[Road 10]-[SW-4] | 2026-10-21 → 2026-10-27 (+6d) | 2026-10-24 → 2026-10-29 (+5d) |  | -77d → -82d |  |  |
| FH | **Fire Hydrant** | 2026-12-09 → 2026-10-14 (-56d) | 2027-01-02 → 2026-11-07 (-56d) |  |  |  |  |
| CO-R10.S04-WE-PW-140 | Excavation Works for Fire Hydrants of Potable Water Network-[Road 10]-[SW-4] | 2026-12-09 → 2026-10-14 (-56d) | 2026-12-16 → 2026-10-21 (-56d) |  | -137d → -89d |  |  |
| CO-R10.S04-WE-PW-150 | Installation Works for Fire Hydrant of Potable Water Network-[Road 10]-[SW-4] | 2026-12-17 → 2026-10-22 (-56d) | 2026-12-24 → 2026-10-29 (-56d) |  | -137d → -89d |  |  |

| ID | Task | Start | Finish | Total float | Predecessors | Other |
| --- | --- | --- | --- | --- | --- | --- |
| CO-R10.S04-WE-PW-160 | Trench Backfilling and Compaction Works for Fire Hydrants of Potable Water Network-[Road 10]-[SW-4] | 2026-12-26 → 2026-10-31 (-56d) | 2027-01-02 → 2026-11-07 (-56d) | -137d → -89d |  |  |
| IR | **Irrigation Network** | 2026-10-06 → 2026-10-21 (+15d) | 2026-11-03 → 2027-01-11 (+69d) |  |  |  |
| ML | **Main Line Pipes** | 2026-10-06 → 2026-10-21 (+15d) | 2026-11-03 → 2027-01-11 (+69d) |  |  |  |
| CO-R10.S04-WE-IR-100 | Trench Excavation and Bedding Works for Main Lines of Irrigation Network-[Road 10]-[SW-4] | 2026-10-06 → 2026-10-21 (+15d) | 2026-10-12 → 2026-10-27 (+15d) | -194d → -207d | CO-R10.S04-WE-EW-110 → CO-R10.S04-WE-EW-110, CO-R10.S04-WE-PW-130, CO-R10.S04-WE-SD-170 | resources Skilled Labor/Surveyor; Foreman; Excavator; 125 mm pipe; depth 0.0m - 1.5m [287.34] → Skilled Labor/Surveyor [5 h]; Foreman [5 h]; Excavator [48 h]; 125 mm pipe; depth 0.0m - 1.5m [287.32] |
| CO-R10.S04-WE-IR-110 | Pipes Laying Works for Main Lines of Irrigation Network-[Road 10]-[SW-4] | 2026-10-13 → 2026-10-28 (+15d) | 2026-10-20 → 2026-11-04 (+15d) | -194d → -207d |  |  |
| CO-R10.S04-WE-IR-120 | Installation Works for Main Line Valves of Irrigation Network-[Road 10]-[SW-4] | 2026-10-26 → 2027-01-03 (+69d) | 2026-10-28 → 2027-01-05 (+69d) | -198d → -257d | CO-R10.S04-WE-IR-110, PRO-R19.2-IR-DL-110 FF+3d → CO-R10.S04-WE-IR-110, PRO-R19.2-IR-DL-110 FF+3d, PRO-R15-IR-DL-110 |  |
| CO-R10.S04-WE-IR-130 | Trench Backfilling and Compaction Works for Main Lines of Irrigation Network-[Road 10]-[SW-4] | 2026-10-29 → 2027-01-06 (+69d) | 2026-11-03 → 2027-01-11 (+69d) | -198d → -257d |  |  |
| SL | **Street Lighting Network** | 2026-11-04 → 2027-01-12 (+69d) | 2027-02-25 → 2027-05-09 (+73d) |  |  |  |
| LP | **Lighting Poles Works** | 2026-11-04 → 2027-01-12 (+69d) | 2027-01-26 → 2027-03-28 (+61d) |  |  |  |
| CO-R10.S04-WE-SL-100 | Foundation Excavation Works for Lighting Poles of Street Lighting Network-[Road 10]-[SW-4] | 2026-11-04 → 2027-01-12 (+69d) | 2026-11-15 → 2027-01-23 (+69d) | -198d → -257d |  |  |
| CO-R10.S04-WE-SL-110 | Installation Works for Lighting Poles Foundation of Street Lighting Network-[Road 10]-[SW-4] | 2026-11-10 → 2027-01-18 (+69d) | 2026-11-21 → 2027-01-28 (+68d) | -198d → -257d |  |  |
| CO-R10.S04-WE-SL-120 | Installation Works for Lighting Poles of Street Lighting Network-[Road 10]-[SW-4] | 2026-11-16 → 2027-01-24 (+69d) | 2026-12-06 → 2027-02-13 (+69d) | -198d → -257d |  |  |
| CO-R10.S04-WE-SL-210 | Backfilling Works for Lighting Poles of Street Lighting Network-[Road 10]-[SW-4] | 2026-11-19 → 2027-01-27 (+69d) | 2026-12-06 → 2027-02-13 (+69d) | -86.5d → -145.5d |  |  |
| CO-R10.S04-WE-SL-200 | Testing Works for Lighting Poles of Street Lighting Network-[Road 10]-[SW-4] | 2026-12-07 → 2027-02-14 (+69d) | 2026-12-14 → 2027-02-21 (+69d) | -86.5d → -145.5d |  |  |
| CO-R10.S04-WE-SL-130 | Installation Works for Lighting Fixtures With Drop Wire of Street Lighting Network-[Road 10]-[SW-4] | 2027-01-06 → 2027-03-04 (+57d) | 2027-01-26 → 2027-03-28 (+61d) | -123.5d → -171.5d |  |  |
| CW | **Cabling Works** | 2026-12-07 → 2027-02-14 (+69d) | 2027-01-10 → 2027-03-24 (+73d) |  |  |  |
| CO-R10.S04-WE-SL-140 | Trench Excavation and Bedding Works for Street Lighting Network-[Road 10]-[SW-4] | 2026-12-07 → 2027-02-14 (+69d) | 2026-12-17 → 2027-02-25 (+70d) | -198d → -257d |  |  |
| CO-R10.S04-WE-SL-150 | Cable Laying Works for Street Lighting Network-[Road 10]-[SW-4] | 2026-12-19 → 2027-02-27 (+70d) | 2026-12-29 → 2027-03-13 (+74d) | -198d → -257d |  |  |
| CO-R10.S04-WE-SL-160 | Trench Backfilling and Compaction Works for Street Lighting Network-[Road 10]-[SW-4] | 2026-12-30 → 2027-03-14 (+74d) | 2027-01-10 → 2027-03-24 (+73d) | -198d → -257d |  |  |
| DPB | **Distrubution Panel Boards** | 2027-01-11 → 2027-03-25 (+73d) | 2027-02-25 → 2027-05-09 (+73d) |  |  |  |
| CO-R10.S04-WE-SL-170 | Foundation Excavation Works For Panel Boards of Street Lighting Network-[Road 10]-[SW-4] | 2027-01-11 → 2027-03-25 (+73d) | 2027-01-31 → 2027-04-14 (+73d) | -198d → -257d |  |  |
| CO-R10.S04-WE-SL-180 | Installation Works for Panel Board Concrete Foundations of Street Lighting Network-[Road 10]-[SW-4] | 2027-01-21 → 2027-04-05 (+74d) | 2027-02-03 → 2027-04-18 (+74d) | -189d → -248d |  |  |
| CO-R10.S04-WE-SL-190 | Installation Works for Lighting Panel Boards of Street Lighting Network-[Road 10]-[SW-4] | 2027-02-04 → 2027-04-19 (+74d) | 2027-02-17 → 2027-05-02 (+74d) | -189d → -248d |  |  |
| CO-R10.S04-WE-SL-220 | A wall of concrete blocks to install the KWH meter of Street Lighting Network-[Road 10]-[SW-4] | 2027-02-04 → 2027-04-19 (+74d) | 2027-02-25 → 2027-05-09 (+73d) | -189d → -248d |  |  |
| TE | **Telecom Network** | 2027-03-08 → 2027-03-23 (+15d) | 2027-04-12 → 2027-04-24 (+12d) |  |  |  |
| PD | **Ducts Works** | 2027-03-08 → 2027-03-23 (+15d) | 2027-04-12 → 2027-04-24 (+12d) |  |  |  |
| CO-R10.S04-WE-TE-100 | Trench Excavation and Bedding Works for Ducts of Telecom Network-[Road 10]-[SW-4] | 2027-03-08 → 2027-03-23 (+15d) | 2027-03-18 → 2027-03-30 (+12d) | -219d → -229d |  |  |
| CO-R10.S04-WE-TE-110 | Pipes Laying Works for Ducts of Telecom Network-[Road 10]-[SW-4] | 2027-03-20 → 2027-03-31 (+11d) | 2027-03-27 → 2027-04-07 (+11d) | -219d → -229d |  |  |
| CO-R10.S04-WE-TE-120 | Pouring Plain Concrete Above Ducts of Telecom Network-[Road 10]-[SW-4] | 2027-03-28 → 2027-04-08 (+11d) | 2027-04-04 → 2027-04-15 (+11d) | -219d → -229d |  |  |
| CO-R10.S04-WE-TE-130 | Trench Backfilling and Compaction Works for Ducts of Telecom Network-[Road 10]-[SW-4] | 2027-04-05 → 2027-04-17 (+12d) | 2027-04-12 → 2027-04-24 (+12d) | -219d → -229d |  |  |
| MH | **Manholes Works** | 2027-03-20 → 2027-03-31 (+11d) | 2027-04-12 → 2027-04-24 (+12d) |  |  |  |
| CO-R10.S04-WE-TE-140 | Excavation Works for Manholes of Telecom Network-[Road 10]-[SW-4] | 2027-03-20 → 2027-03-31 (+11d) | 2027-03-27 → 2027-04-07 (+11d) | -219d → -229d |  |  |
| CO-R10.S04-WE-TE-150 | Installation Works for Manholes of Telecom Network-[Road 10]-[SW-4] | 2027-03-28 → 2027-04-08 (+11d) | 2027-04-04 → 2027-04-15 (+11d) | -219d → -229d |  |  |
| CO-R10.S04-WE-TE-160 | Backfilling Works for Manholes of Telecom Network-[Road 10]-[SW-4] | 2027-04-05 → 2027-04-17 (+12d) | 2027-04-12 → 2027-04-24 (+12d) | -219d → -229d |  |  |
| RD | **Road Works** |  | 2027-06-21 → 2027-07-11 (+20d) |  |  |  |
| RD | **Pre-Bituminous Construction** | 2027-04-13 → 2027-04-25 (+12d) | 2027-04-29 → 2027-05-11 (+12d) |  |  |  |
| CO-R10.S04-WE-RD-100 | Capping and Subgrade Layer for Road Works-[Road 10]-[SW-4] | 2027-04-13 → 2027-04-25 (+12d) | 2027-04-26 → 2027-05-08 (+12d) | -219d → -229d | CO-R10.S04-WE-SD-130, CO-R10.S04-WE-SW-130, CO-R10.S04-WE-PW-130, CO-R10.S04-WE-PW-160, CO-R10.S04-WE-SL-160 SS+3d, CO-R10.S04-WE-SL-160 FF+3d, PRO-R10-RD-DL-100 FF+3d, CO-R10.S04-WE-TE-130, CO-R10.S04-WE-TE-160 → CO-R10.S04-WE-SD-130, CO-R10.S04-WE-SW-130, CO-R10.S04-WE-PW-130, CO-R10.S04-WE-PW-160, CO-R10.S04-WE-SL-160 SS+3d, CO-R10.S04-WE-SL-160 FF+3d, PRO-R10-RD-DL-100 FF+3d, CO-R10.S04-WE-TE-130, CO-R10.S04-WE-TE-160, CO-R10.S04-WE-SW-210, CO-R10.S04-WE-SD-210, CO-R10.S04-WE-PW-220 |  |
| CO-R10.S04-WE-RD-110 | Aggregate Base Course Layer for Road Works-[Road 10]-[SW-4] | 2027-04-17 → 2027-04-28 (+11d) | 2027-04-29 → 2027-05-11 (+12d) | -191d → -168d |  |  |
| LS | **Pavement Works** |  | 2027-06-21 → 2027-07-11 (+20d) |  |  |  |
| CO-R10.S04-WE-RD-120 | Fixing of Curbstone for Sidewalks Pavement-[Road 10]-[SW-4] |  |  |  | PRO-R10-RD-DL-130 FF+3d, CO-R10.S04-WE-RD-110 SS+3d, CO-R10.S04-WE-RD-110 FF+3d → PRO-R10-RD-DL-130 FF+3d | resources Labor/Helper [288 h]; Block Mason [864 h]; Precast Concrete Kerb, Type K1 [1250.99]; Precast Concrete Kerb, Type L1 [2482.11] → Labor/Helper [768 h]; Block Mason [2304 h]; Precast Concrete Kerb, Type K1 [1250.99]; Precast Concrete Kerb, Type L1 [2482.11] |
| CO-R10.S04-WE-RD-130 | Fixing of Interlock Tiles for Sidewalks Pavement-[Road 10]-[SW-4] |  | 2027-06-21 → 2027-07-11 (+20d) | -216d → -233d | PRO-R10-RD-DL-120 FF+3d, CO-R10.S04-WE-RD-120 SS+3d, CO-R10.S04-WE-RD-120 FF+3d, CO-R10-PW-TF-100, CO-R10-PW-TF-110, CO-R10-PW-TF-120, CO-R10-SW-TF-100, CO-R10-SW-TF-110, CO-R10-SW-TF-130, CO-R10-SD-TF-100, CO-R10-SD-TF-120, CO-R10-SL-TF-140, CO-R10-SL-TF-150, CO-R10-SL-ES-140, CO-R10-SL-ES-150, CO-R10-IR-TF-120, CO-R10-MV-TF-140, CO-R10-SL-TF-380 → PRO-R10-RD-DL-120 FF+3d, CO-R10.S04-WE-RD-120 SS, CO-R10.S04-WE-RD-120 FF+3d, CO-R10-PW-TF-100 FF, CO-R10-PW-TF-110 FF, CO-R10-PW-TF-120 FF, CO-R10-SW-TF-100 FF, CO-R10-SW-TF-110 FF, CO-R10-SW-TF-130 FF, CO-R10-SD-TF-100, CO-R10-SD-TF-120 SS, CO-R10-SL-TF-140 FF, CO-R10-SL-TF-150 FF, CO-R10-SL-ES-140 FF, CO-R10-SL-ES-150 FF, CO-R10-IR-TF-120 FF, CO-R10-MV-TF-140 FF, CO-R10-SL-TF-380 FF | resources Labor/Helper [432 h]; Block Mason [1296 h]; Interlocking block pavers for sidewalk/footpath 60mm thick on and including 30mm Sand Bedding, 200mm Aggregate subbase, all in accordance with authority standards and complete as per specifications [2233.91]; Extraover for Pedestrian ramps [5.5] → Labor/Helper [864 h]; Block Mason [2592 h]; Interlocking block pavers for sidewalk/footpath 60mm thick on and including 30mm Sand Bedding, 200mm Aggregate subbase, all in accordance with authority standards and complete as per specifications [2233.91]; Extraover for Pedestrian ramps [5.5] |
| 5 | **Road 11 Local 1 ( 670 LM )** |  | 2027-07-31 → 2027-08-02 (+2d) |  |  |  |
| SW_5 | **SW_5** |  | 2027-07-31 → 2027-08-02 (+2d) |  |  |  |
| CO-R11.S05-SW-100 | Trench Excavation and Bedding Works for Main Lines of Sewage Network-[Road 11]-[SW-5] |  |  |  | CO-R11.S05-EW-110, ENG-MS-SW-ML-A-110, ENG-SH-SW-ML-A-110 → CO-R11.S05-EW-110, ENG-MS-SW-ML-A-110, ENG-SH-SW-ML-A-110, CO-R14.S08-SW-100 |  |
| CO-R11.S05-SW-130 | Trench Backfilling and Compaction Works for Main Lines of Sewage Network-[Road 11]-[SW-5] |  |  |  | ENG-SH-SW-ML-A-110 FF, ENG-MS-SW-ML-A-110 FF, CO-R11.S05-SW-120 → ENG-SH-SW-ML-A-110 FF, ENG-MS-SW-ML-A-110 FF, CO-R11.S05-SW-120, CO-R11.S05-SW-210 FF |  |
| CO-R11.S05-SD-100 | Trench Excavation and Bedding Works for Main Lines of Storm Drainage Network-[Road 11]-[SW-5] |  |  |  | ENG-SH-SD-ML-A-110, CO-R11.S05-EW-110, CO-R11.S05-EW-100, ENG-MS-SD-ML-A-110 → ENG-SH-SD-ML-A-110, CO-R11.S05-EW-110, CO-R11.S05-EW-100, CO-R11.S05-SW-130 SS+3d, CO-R11.S05-SW-130 FF+3d, ENG-MS-SD-ML-A-110, CO-R14.S08-SD-100 |  |
| CO-R11.S05-SD-120 | Pipes Laying Works for Main Lines of Storm Drainage Network-[Road 11]-[SW-5] |  |  |  | CO-R11.S05-SD-100 → CO-R11.S05-SD-100, CO-R14.S08-SD-120 |  |
| CO-R11.S05-SD-130 | Trench Backfilling and Compaction Works for Main Lines of Storm Drainage Network-[Road 11]-[SW-5] |  |  |  | CO-R11.S05-SD-120 SS+3d, CO-R11.S05-SD-120 FF+3d, ENG-SH-SD-ML-A-110 FF, ENG-MS-SD-ML-A-110 FF, CO-R11.S05-SD-120 → CO-R11.S05-SD-120 SS+3d, CO-R11.S05-SD-120 FF+3d, ENG-SH-SD-ML-A-110 FF, CO-R10.S03-ES-SD-130, ENG-MS-SD-ML-A-110 FF, CO-R11.S05-SD-120, CO-R11.S05-SD-220 FF, CO-R10.S03-WE-SD-130 |  |
| IR | **Irrigation Network** |  | 2026-11-19 → 2026-10-24 (-26d) |  |  |  |
| ML | **Main Line Pipes** |  | 2026-11-19 → 2026-10-24 (-26d) |  |  |  |
| CO-R11.S05-IR-110 | Pipes Laying Works for Main Lines of Irrigation Network-[Road 11]-[SW-5] |  | 2026-11-09 → 2026-10-13 (-27d) | -133d → -46d | CO-R11.S05-IR-100, PRO-R11-IR-DL-140 FF+3d → CO-R11.S05-IR-100 SS, PRO-R11-IR-DL-140 FF+3d |  |
| CO-R11.S05-IR-120 | Installation Works for Main Line Valves of Irrigation Network-[Road 11]-[SW-5] | 2026-11-09 → 2026-10-13 (-27d) | 2026-11-11 → 2026-10-15 (-27d) | -133d → -46d |  |  |
| CO-R11.S05-IR-130 | Trench Backfilling and Compaction Works for Main Lines of Irrigation Network-[Road 11]-[SW-5] | 2026-11-12 → 2026-10-17 (-26d) | 2026-11-19 → 2026-10-24 (-26d) | -133d → -46d |  |  |
| TE | **Telecom Network** |  | 2027-04-12 → 2027-01-17 (-85d) |  |  |  |
| CO-R11.S05-TE-100 | Trench Excavation and Bedding Works for Ducts of Telecom Network-[Road 11]-[SW-5] |  |  |  | CO-R11.S05-IR-130, CO-R11.S05-EW-110, CO-R14.S08-TE-100 → CO-R11.S05-EW-110 |  |
| CO-R11.S05-TE-110 | Pipes Laying Works for Ducts of Telecom Network-[Road 11]-[SW-5] |  |  |  | CO-R11.S05-TE-100, CO-R10.S03-ES-TE-110, CO-R10.S03-WE-TE-110 → CO-R11.S05-TE-100 |  |
| CO-R11.S05-TE-120 | Pouring Plain Concrete Above Ducts of Telecom Network-[Road 11]-[SW-5] |  |  |  | CO-R11.S05-TE-110, CO-R10.S03-ES-TE-120, CO-R10.S03-WE-TE-120 → CO-R11.S05-TE-110 |  |
| CO-R11.S05-TE-130 | Trench Backfilling and Compaction Works for Ducts of Telecom Network-[Road 11]-[SW-5] |  |  |  | CO-R11.S05-TE-120, CO-R11.S05-TE-120 FF+3d, CO-R10.S03-ES-TE-130, CO-R10.S03-WE-TE-130 → CO-R11.S05-TE-120, CO-R11.S05-TE-120 FF+3d |  |
| MH | **Manholes Works** | 2027-03-20 → 2026-12-24 (-86d) | 2027-04-12 → 2027-01-17 (-85d) |  |  |  |
| CO-R11.S05-TE-140 | Excavation Works for Manholes of Telecom Network-[Road 11]-[SW-5] | 2027-03-20 → 2026-12-24 (-86d) | 2027-03-27 → 2026-12-31 (-86d) | -206d → -131d |  |  |
| CO-R11.S05-TE-150 | Installation Works for Manholes of Telecom Network-[Road 11]-[SW-5] | 2027-03-28 → 2027-01-02 (-85d) | 2027-04-04 → 2027-01-09 (-85d) | -204d → -124d |  |  |
| CO-R11.S05-TE-160 | Backfilling Works for Manholes of Telecom Network-[Road 11]-[SW-5] | 2027-04-05 → 2027-01-10 (-85d) | 2027-04-12 → 2027-01-17 (-85d) | -204d → -124d |  |  |
| RD | **Road Works** |  | 2027-07-31 → 2027-08-02 (+2d) |  |  |  |
| CO-R11.S05-RD-P-100 | Capping and Subgrade Layer for Road Works-[Road 11]-[SW-5] |  |  |  | ENG-SH-RD-A-100, CO-R11.S05-SD-130, CO-R11.S05-SW-130, ENG-MS-RD-A-10, CO-R11.S05-TE-130, CO-R11.S05-TE-160, CO-R11.S05-MV-120 SS+3d, CO-R11.S05-MV-120 FF+3d → ENG-SH-RD-A-100, CO-R11.S05-SD-130, CO-R11.S05-SW-130, ENG-MS-RD-A-10, CO-R11.S05-TE-130, CO-R11.S05-MV-120 SS+3d, CO-R11.S05-MV-120 FF+3d |  |
| CO-R11.S05-RD-P-110 | Aggregate Base Course Layer for Road Works-[Road 11]-[SW-5] |  |  |  | CO-R11.S05-RD-P-100 SS+3d, CO-R11.S05-RD-P-100 FF+3d, CO-R11.S05-SD-170 SS+3d, CO-R11.S05-SD-170 FF+3d, CO-R10.S03-ES-RD-110, CO-R10.S03-WE-RD-110 → CO-R11.S05-RD-P-100 SS+3d, CO-R11.S05-RD-P-100 FF+3d, CO-R11.S05-SD-170 SS+3d, CO-R11.S05-SD-170 FF+3d |  |
| LS | **Pavement Works** |  | 2027-07-31 → 2027-08-02 (+2d) |  |  |  |
| CO-R11.S05-RD-P-130 | Fixing of Interlock Tiles for Sidewalks Pavement-[Road 11]-[SW-5] |  | 2027-07-31 → 2027-08-02 (+2d) | -242d → -234d | CO-R11.S05-RD-P-120 SS+3d, CO-R11.S05-RD-P-120 FF+3d, CO-R10.S03-ES-RD-130, CO-R11-PW-TF-100, CO-R11-PW-TF-110, CO-R11-PW-TF-120, CO-R11-SW-TF-100, CO-R11-SW-TF-110, CO-R11-SW-TF-130, CO-R11-SD-TF-100, CO-R11-SL-TF-160, CO-R11-SL-TF-170, CO-R11-IR-TF-130, CO-R11-MV-TF-160, CO-R10.S03-WE-RD-130 → CO-R11.S05-RD-P-120 SS, CO-R11.S05-RD-P-120 FF+3d, CO-R10.S03-ES-RD-130 SS, CO-R11-PW-TF-100 FF, CO-R11-PW-TF-110 FF, CO-R11-PW-TF-120 FF, CO-R11-SW-TF-100 FF, CO-R11-SW-TF-110 FF, CO-R11-SW-TF-130 FF, CO-R11-SD-TF-100, CO-R11-SL-TF-160 FF, CO-R11-SL-TF-170 FF, CO-R11-IR-TF-130 FF, CO-R11-MV-TF-160 FF, CO-R10.S03-WE-RD-130 SS | resources Labor/Helper [432 h]; Block Mason [1296 h]; Interlocking block pavers for sidewalk/footpath 60mm thick on and including 30mm Sand Bedding, 200mm Aggregate subbase, all in accordance with authority standards and complete as per specifications [1303.74]; Extraover for Pedestrian ramps [3] → Labor/Helper [432 h]; Block Mason [720 h]; Interlocking block pavers for sidewalk/footpath 60mm thick on and including 30mm Sand Bedding, 200mm Aggregate subbase, all in accordance with authority standards and complete as per specifications [1303.74]; Extraover for Pedestrian ramps [3] |
| SW_6 | **SW_6** |  | 2027-07-31 → 2027-08-02 (+2d) |  |  |  |
| SW | **Sewage Network** |  | 2026-10-11 → 2026-10-18 (+7d) |  |  |  |
| CO-R11.S06-SW-130 | Trench Backfilling and Compaction Works for Main Lines of Sewage Network-[Road 11]-[SW-6] |  |  |  | CO-R11.S06-SW-120, CO-R11.S06-SW-210 FF → CO-R11.S06-SW-120 |  |

| ID | Task | Start | Finish | Complete | Total float | Predecessors | Other |
| --- | --- | --- | --- | --- | --- | --- | --- |
| 1 | **Manholes** |  | 2026-10-11 → 2026-10-18 (+7d) |  |  |  |  |
| CO-R11.S06-SW-180 | Install Grp Liner Wall Works for Main Line Manholes of Sewage Network-[Road 11]-[SW-6] |  | 2026-10-10 → 2026-10-17 (+7d) |  | -51d → -57d | CO-R11.S06-SW-170 → CO-R11.S06-SW-170 SS |  |
| CO-R11.S06-SW-190 | Pouring Grp Liner Wall Works for Main Line Manholes of Sewage Network-[Road 11]-[SW-6] |  |  |  |  | CO-R11.S06-SW-180 → CO-R11.S06-SW-170 |  |
| CO-R11.S06-SW-210 | Testing Works for Main Line Manholes of Sewage Network-[Road 11]-[SW-6] | 2026-10-11 → 2026-10-18 (+7d) | 2026-10-11 → 2026-10-18 (+7d) |  | -51d → -57d | CO-R11.S06-SW-200 → CO-R11.S06-SW-200, CO-R11.S06-SW-180 |  |
| CO-R11.S06-SD-100 | Trench Excavation and Bedding Works for Main Lines of Storm Drainage Network-[Road 11]-[SW-6] |  |  |  |  | CO-R11.S06-EW-110, CO-R11.S06-EW-100, CO-R11.S05-SD-100 → CO-R11.S06-EW-110, CO-R11.S06-EW-100, CO-R11.S06-SW-130 SS+3d, CO-R11.S06-SW-130 FF+3d, CO-R11.S05-SD-100 |  |
| CO-R11.S06-SD-120 | Pipes Laying Works for Main Lines of Storm Drainage Network-[Road 11]-[SW-6] |  |  |  |  | PRO-R11-SD-DL-120 FF+3d, CO-R11.S06-SD-100 → PRO-R11-SD-DL-120 FF+3d, CO-R11.S06-SD-100, CO-R11.S05-SD-120 |  |
| CO-R11.S06-SD-130 | Trench Backfilling and Compaction Works for Main Lines of Storm Drainage Network-[Road 11]-[SW-6] |  |  |  |  | CO-R11.S06-SD-120 → CO-R11.S06-SD-120 SS+3d, CO-R11.S06-SD-120 FF+3d, CO-R10.S04-ES-SD-130, CO-R11.S06-SD-120, CO-R11.S06-SD-220 FF, CO-R10.S04-WE-SD-130 |  |
| CO-R11.S06-SD-220 | Backfilling Works for Manholes of Storm Drainage Network-[Road 11]-[SW-6] |  |  |  |  |  | constraint start on or after 2026-04-05 → none |
| PW | **Potable Water Network** |  | 2027-02-10 → 2027-05-11 (+90d) |  |  |  |  |
| CO-R11.S06-PW-100 | Trench Excavation and Bedding Works for Main Lines of Potable Water Network-[Road 11]-[SW-6] |  |  |  |  | CO-R11.S06-EW-110, CO-R11.S06-EW-100 → CO-R11.S06-EW-110, CO-R11.S06-EW-100, CO-R11.S06-SD-130 |  |
| CO-R11.S06-PW-110 | Pipes Laying and accessories for Main Lines of Potable Water Network-[Road 11]-[SW-6] |  |  |  |  | CO-R11.S06-PW-100, PRO-R11-PW-DL-100 FF+3d → CO-R11.S06-PW-100, CO-R10.S04-ES-PW-110 SS, PRO-R11-PW-DL-100 FF+3d, CO-R10.S04-WE-PW-110 SS |  |
| CO-R11.S06-PW-130 | Trench Backfilling and Compaction Works for Main Lines of Potable Water Network-[Road 11]-[SW-6] |  |  |  |  | CO-R11.S06-PW-110 → CO-R11.S06-PW-110, CO-R10.S04-ES-PW-130, CO-R10.S04-WE-PW-130 |  |
| VC | **Valve Chamber** | 2027-02-04 → 2026-10-13 (-114d) | 2027-02-10 → 2026-10-19 (-114d) |  |  |  |  |
| CO-R11.S06-PW-210 | Installation Works for Main Line Valves and Valve Chambers of Potable Water Network-[Road 11]-[SW-6] | 2027-02-04 → 2026-10-13 (-114d) | 2027-02-10 → 2026-10-19 (-114d) |  | -144d → -42d | CO-R11.S06-PW-100, PRO-R11-PW-DL-110 → CO-R11.S06-PW-100 |  |
| FH | **Fire Hydrant** | 2026-10-06 → 2027-04-18 (+194d) | 2026-10-29 → 2027-05-11 (+194d) |  |  |  |  |
| CO-R11.S06-PW-140 | Excavation Works for Fire Hydrants of Potable Water Network-[Road 11]-[SW-6] | 2026-10-06 → 2027-04-18 (+194d) | 2026-10-13 → 2027-04-25 (+194d) |  | -67d → -213d | CO-R11.S06-PW-110 SS+3d, CO-R11.S06-PW-110 FF+3d, CO-R11.S06-EW-110 → CO-R11.S06-PW-110 SS+3d, CO-R11.S06-PW-110 FF+3d, CO-R11.S06-EW-110, PRO-R11-PW-DL-110 |  |
| CO-R11.S06-PW-150 | Installation Works for Fire Hydrant of Potable Water Network-[Road 11]-[SW-6] | 2026-10-14 → 2027-04-26 (+194d) | 2026-10-21 → 2027-05-03 (+194d) |  | -67d → -213d |  |  |
| CO-R11.S06-PW-160 | Trench Backfilling and Compaction Works for Fire Hydrants of Potable Water Network-[Road 11]-[SW-6] | 2026-10-22 → 2027-05-04 (+194d) | 2026-10-29 → 2027-05-11 (+194d) |  | -67d → -213d |  |  |
| SL | **Street Lighting Network** |  | 2027-05-02 → 2027-07-03 (+62d) |  |  |  |  |
| LP | **Lighting Poles Works** |  | 2027-05-02 → 2027-07-03 (+62d) |  |  |  |  |
| CO-R11.S06-SL-110 | Installation Works for Lighting Poles Foundation of Street Lighting Network-[Road 11]-[SW-6] |  |  |  |  | CO-R11.S06-SL-100, CO-R10.S04-ES-SL-110, PRO-R11-SL-DL-110 FF+3d, CO-R10.S04-WE-SL-110 → CO-R11.S06-SL-100, PRO-R11-SL-DL-110 FF+3d |  |
| CO-R11.S06-SL-210 | Backfilling Works for Lighting Poles of Street Lighting Network-[Road 11]-[SW-6] | 2027-04-01 → 2026-10-13 (-170d) | 2027-04-18 → 2026-10-29 (-171d) |  | -178.5d → -36.5d |  |  |
| CO-R11.S06-SL-200 | Testing Works for Lighting Poles of Street Lighting Network-[Road 11]-[SW-6] | 2027-04-19 → 2026-10-31 (-170d) | 2027-04-26 → 2026-11-07 (-170d) |  | -178.5d → -36.5d |  |  |
| CO-R11.S06-SL-130 | Installation Works for Lighting Fixtures With Drop Wire of Street Lighting Network-[Road 11]-[SW-6] | 2027-04-12 → 2027-06-13 (+62d) | 2027-05-02 → 2027-07-03 (+62d) |  | -183.5d → -231.5d |  |  |
| CW | **Cabling Works** |  | 2026-12-02 → 2026-10-24 (-39d) |  |  |  |  |
| CO-R11.S06-SL-160 | Trench Backfilling and Compaction Works for Street Lighting Network-[Road 11]-[SW-6] | 2026-11-22 → 2026-10-13 (-40d) | 2026-12-02 → 2026-10-24 (-39d) |  | -144d → -72d |  |  |
| DPB | **Distrubution Panel Boards** | 2027-02-01 → 2027-04-15 (+73d) | 2027-03-18 → 2027-06-01 (+75d) |  |  |  |  |
| CO-R11.S06-SL-170 | Foundation Excavation Works For Panel Boards of Street Lighting Network-[Road 11]-[SW-6] | 2027-02-01 → 2027-04-15 (+73d) | 2027-02-14 → 2027-04-28 (+73d) |  | -198d → -257d |  |  |
| CO-R11.S06-SL-180 | Installation Works for Panel Board Concrete Foundations of Street Lighting Network-[Road 11]-[SW-6] | 2027-02-15 → 2027-04-29 (+73d) | 2027-03-01 → 2027-05-12 (+72d) |  | -198d → -257d |  |  |
| CO-R11.S06-SL-190 | Installation Works for Lighting Panel Boards of Street Lighting Network-[Road 11]-[SW-6] | 2027-03-02 → 2027-05-13 (+72d) | 2027-03-18 → 2027-06-01 (+75d) |  | -198d → -257d |  |  |
| CO-R11.S06-SL-220 | A wall of concrete blocks to install the KWH meter of Street Lighting Network-[Road 11]-[SW-6] | 2027-03-02 → 2027-05-13 (+72d) | 2027-03-18 → 2027-06-01 (+75d) |  | -192d → -251d |  |  |
| TE | **Telecom Network** |  | 2027-04-20 → 2027-05-02 (+12d) |  |  |  |  |
| CO-R11.S06-TE-100 | Trench Excavation and Bedding Works for Ducts of Telecom Network-[Road 11]-[SW-6] |  |  |  |  | CO-R11.S06-SL-160, CO-R11.S06-EW-110, CO-R11.S05-TE-100 → CO-R11.S06-EW-110, CO-R11.S05-TE-100 |  |
| CO-R11.S06-TE-110 | Pipes Laying Works for Ducts of Telecom Network-[Road 11]-[SW-6] |  |  |  |  | CO-R11.S06-TE-100, CO-R10.S04-ES-TE-110, PRO-R11-TE-DL-100 FF+3d, CO-R10.S04-WE-TE-110 → CO-R11.S06-TE-100, PRO-R11-TE-DL-100 FF+3d |  |
| CO-R11.S06-TE-120 | Pouring Plain Concrete Above Ducts of Telecom Network-[Road 11]-[SW-6] |  |  |  |  | CO-R11.S06-TE-110, CO-R10.S04-ES-TE-120, CO-R10.S04-WE-TE-120 → CO-R11.S06-TE-110 |  |
| CO-R11.S06-TE-130 | Trench Backfilling and Compaction Works for Ducts of Telecom Network-[Road 11]-[SW-6] |  |  |  |  | CO-R11.S06-TE-120, CO-R10.S04-ES-TE-130, CO-R10.S04-WE-TE-130 → CO-R11.S06-TE-120 |  |
| MH | **Manholes Works** | 2027-03-28 → 2027-04-08 (+11d) | 2027-04-20 → 2027-05-02 (+12d) |  |  |  |  |
| CO-R11.S06-TE-140 | Excavation Works for Manholes of Telecom Network-[Road 11]-[SW-6] | 2027-03-28 → 2027-04-08 (+11d) | 2027-04-04 → 2027-04-15 (+11d) |  | -211d → -210d | CO-R10.S04-ES-TE-140, CO-R11.S05-TE-140 SS, CO-R11.S06-TE-100 SS+6d, CO-R11.S06-TE-100 FF+6d, CO-R10.S04-WE-TE-140 → CO-R10.S04-ES-TE-140, CO-R11.S05-TE-140 SS, CO-R11.S06-TE-100 SS+6d, CO-R11.S06-TE-100 FF+6d, CO-R10.S04-WE-TE-140, CO-R11.S06-SL-160 |  |
| CO-R11.S06-TE-150 | Installation Works for Manholes of Telecom Network-[Road 11]-[SW-6] | 2027-04-05 → 2027-04-17 (+12d) | 2027-04-12 → 2027-04-24 (+12d) |  | -211d → -210d |  |  |
| CO-R11.S06-TE-160 | Backfilling Works for Manholes of Telecom Network-[Road 11]-[SW-6] | 2027-04-13 → 2027-04-25 (+12d) | 2027-04-20 → 2027-05-02 (+12d) |  | -211d → -210d |  |  |
| RD | **Road Works** |  | 2027-07-31 → 2027-08-02 (+2d) |  |  |  |  |
| CO-R11.S06-RD-P-100 | Capping and Subgrade Layer for Road Works-[Road 11]-[SW-6] |  |  |  |  | CO-R11.S06-SD-130, CO-R11.S06-PW-130, CO-R11.S06-PW-160, CO-R11.S06-SL-160 SS+3d, CO-R11.S06-SL-160 FF+3d, PRO-R11-RD-DL-100 FF+3d, CO-R11.S06-TE-130, CO-R11.S06-TE-160, CO-R11.S06-MV-120 SS+3d, CO-R11.S06-MV-120 FF+3d, CO-R11.S06-SW-130 → CO-R11.S06-SD-130, CO-R11.S06-PW-130, PRO-R11-RD-DL-100 FF+3d, CO-R11.S06-TE-130, CO-R11.S06-MV-120 SS+3d, CO-R11.S06-MV-120 FF+3d, CO-R11.S06-SW-130 |  |
| CO-R11.S06-RD-P-110 | Aggregate Base Course Layer for Road Works-[Road 11]-[SW-6] |  |  |  |  | CO-R11.S06-RD-P-100 SS+3d, CO-R11.S06-RD-P-100 FF+3d, CO-R11.S06-SD-170 SS+3d, CO-R11.S06-SD-170 FF+3d, CO-R10.S04-ES-RD-110, PRO-R11-RD-DL-110 FF+3d, CO-R10.S04-WE-RD-110 → CO-R11.S06-RD-P-100 SS+3d, CO-R11.S06-RD-P-100 FF+3d, CO-R11.S06-SD-170 SS+3d, CO-R11.S06-SD-170 FF+3d, PRO-R11-RD-DL-110 FF+3d |  |
| LS | **Pavement Works** |  | 2027-07-31 → 2027-08-02 (+2d) |  |  |  |  |
| CO-R11.S06-RD-P-130 | Fixing of Interlock Tiles for Sidewalks Pavement-[Road 11]-[SW-6] |  | 2027-07-31 → 2027-08-02 (+2d) |  | -240d → -232d | PRO-R11-RD-DL-120 FF+3d, CO-R11.S06-RD-P-120 SS+3d, CO-R11.S06-RD-P-120 FF+3d, CO-R10.S04-ES-RD-130, CO-R11-PW-TF-100, CO-R11-PW-TF-110, CO-R11-PW-TF-120, CO-R11-SW-TF-100, CO-R11-SW-TF-110, CO-R11-SW-TF-130, CO-R11-SD-TF-100, CO-R11-SD-TF-120, CO-R11-SL-TF-160, CO-R11-SL-TF-170, CO-R11-IR-TF-130, CO-R11-MV-TF-160, CO-R10.S04-WE-RD-130 → PRO-R11-RD-DL-120 FF+3d, CO-R11.S06-RD-P-120 SS+3d, CO-R11.S06-RD-P-120 FF+3d, CO-R10.S04-ES-RD-130 SS, CO-R11-PW-TF-100 FF, CO-R11-PW-TF-110 FF, CO-R11-PW-TF-120 FF, CO-R11-SW-TF-100 FF, CO-R11-SW-TF-110 FF, CO-R11-SW-TF-130 FF, CO-R11-SD-TF-100, CO-R11-SD-TF-120 SS, CO-R11-SL-TF-160 FF, CO-R11-SL-TF-170 FF, CO-R11-IR-TF-130 FF, CO-R11-MV-TF-160 FF, CO-R10.S04-WE-RD-130 SS | resources Labor/Helper [432 h]; Block Mason [1296 h]; Interlocking block pavers for sidewalk/footpath 60mm thick on and including 30mm Sand Bedding, 200mm Aggregate subbase, all in accordance with authority standards and complete as per specifications [1303.74]; Extraover for Pedestrian ramps [3] → Labor/Helper [240 h]; Block Mason [720 h]; Interlocking block pavers for sidewalk/footpath 60mm thick on and including 30mm Sand Bedding, 200mm Aggregate subbase, all in accordance with authority standards and complete as per specifications [1303.74]; Extraover for Pedestrian ramps [3] |
| 6 | **Road 14 Local 1 ( 584 LM )** |  | 2027-08-14 → 2027-08-16 (+2d) |  |  |  |  |
| SW_7 | **SW_7** |  | 2027-08-14 → 2027-08-16 (+2d) |  |  |  |  |
| CO-R14.S07-EW-100 | Roadway Excavation Works Upto Design Level for Earthworks-[Road 14]-[SW-7] |  |  |  |  |  | resources Roadway Excavation for cuttings; on any type of material for all depths including trimming and Preparation of excavated surfaces and disposal. [13749.1] → Labor/Helper [3625 h]; Skilled Labor/Surveyor [536 h]; Foreman [536 h]; Roadway Excavation for cuttings; on any type of material for all depths including trimming and Preparation of excavated surfaces and disposal. [13749.1] |
| CO-R14.S07-EW-110 | Embankments Works Upto Design Level for Earthworks-[Road 14]-[SW-7] |  |  |  |  |  | resources Embankments to the ROW, with suitable material other than top soil or rock according to specifications [23144.9] → Labor/Helper [3256 h]; Skilled Labor/Surveyor [205 h]; Foreman [205 h]; Embankments to the ROW, with suitable material other than top soil or rock according to specifications [23144.9] |
| SW | **Sewage Network** |  | 2026-10-06 → 2026-10-13 (+7d) |  |  |  |  |
| 1 | **Manholes** |  | 2026-10-06 → 2026-10-13 (+7d) |  |  |  |  |
| CO-R14.S07-SW-200 | Backfilling Works for Main Line Manholes of Sewage Network-[Road 14]-[SW-7] |  |  |  |  | CO-R14.S07-SW-180 → CO-R14.S07-SW-190 |  |
| CO-R14.S07-SW-210 | Testing Works for Main Line Manholes of Sewage Network-[Road 14]-[SW-7] | 2026-10-06 → 2026-10-13 (+7d) | 2026-10-06 → 2026-10-13 (+7d) |  | -35d → -29d | CO-R14.S07-SW-200, CO-R14.S07-SW-190 → CO-R14.S07-SW-200 |  |
| CO-R14.S07-SD-100 | Trench Excavation and Bedding Works for Main Lines of Storm Drainage Network-[Road 14]-[SW-7] |  |  |  |  | ENG-SH-SD-ML-A-110, CO-R14.S07-EW-110, CO-R14.S07-EW-100, ENG-MS-SD-ML-A-110 → ENG-SH-SD-ML-A-110, CO-R14.S07-EW-110, CO-R14.S07-EW-100, CO-R14.S07-SW-130 SS+3d, CO-R14.S07-SW-130 FF+3d, ENG-MS-SD-ML-A-110, CO-R09.S02-SD-100 |  |
| CO-R14.S07-SD-120 | Pipes Laying Works for Main Lines of Storm Drainage Network-[Road 14]-[SW-7] |  |  |  |  | CO-R14.S07-SD-100 → CO-R14.S07-SD-100, CO-R09.S02-SD-120 |  |
| CO-R14.S07-SD-220 | Backfilling Works for Manholes of Storm Drainage Network-[Road 14]-[SW-7] |  |  |  |  | CO-R14.S07-SD-200 → CO-R14.S07-SD-210 |  |
| CO-R14.S07-SD-140 | Trench Excavation and Bedding Works for Catch Basins of Storm Drainage Network-[Road 14]-[SW-7] |  |  |  |  | CO-R14.S07-EW-110, ENG-SH-SD-CB-A-110, ENG-MS-SD-CB-A-110, CO-R14.S07-SD-220, CO-R09.S02-SD-140 → CO-R14.S07-EW-110, ENG-SH-SD-CB-A-110, ENG-MS-SD-CB-A-110, CO-R14.S07-SD-220 |  |
| SL | **Street Lighting Network** |  | 2027-04-06 → 2026-11-09 (-148d) |  |  |  |  |
| LP | **Lighting Poles Works** | 2026-11-09 → 2026-10-06 (-34d) | 2027-04-06 → 2026-11-02 (-155d) |  |  |  |  |
| CO-R14.S07-SL-100 | Foundation Excavation Works for Lighting Poles of Street Lighting Network-[Road 14]-[SW-7] | 2026-11-09 → 2026-10-06 A (-34d) | 2026-11-22 → 2026-10-12 A (-41d) | 0% → 100% | -171d → none |  |  |
| CO-R14.S07-SL-110 | Installation Works for Lighting Poles Foundation of Street Lighting Network-[Road 14]-[SW-7] | 2026-11-23 → 2026-10-06 A (-48d) | 2026-12-06 → 2026-10-12 A (-55d) | 0% → 100% | -171d → none |  |  |
| CO-R14.S07-SL-120 | Installation Works for Lighting Poles of Street Lighting Network-[Road 14]-[SW-7] | 2026-12-07 → 2026-10-06 A (-62d) | 2026-12-27 → 2026-10-12 A (-76d) | 0% → 100% | -171d → none |  |  |
| CO-R14.S07-SL-210 | Backfilling Works for Lighting Poles of Street Lighting Network-[Road 14]-[SW-7] | 2027-03-18 → 2026-10-06 A (-163d) | 2027-03-31 → 2026-10-12 A (-170d) | 0% → 100% | -192d → none | CO-R14.S07-SL-120 SS, CO-R14.S07-SL-120 FF, CO-R09.S02-SL-210 → CO-R14.S07-SL-120 SS, CO-R14.S07-SL-120 FF |  |
| CO-R14.S07-SL-130 | Installation Works for Lighting Fixtures With Drop Wire of Street Lighting Network-[Road 14]-[SW-7] | 2027-03-17 → 2026-10-13 (-155d) | 2027-04-06 → 2026-11-02 (-155d) |  | -192d → -63d |  |  |
| CO-R14.S07-SL-200 | Testing Works for Lighting Poles of Street Lighting Network-[Road 14]-[SW-7] | 2027-04-01 → 2026-10-13 (-170d) | 2027-04-06 → 2026-10-18 (-170d) |  | -192d → -50d |  |  |
| DPB | **Distrubution Panel Boards** | 2026-10-06 → 2026-10-13 (+7d) | 2026-11-02 → 2026-11-09 (+7d) |  |  |  |  |
| CO-R14.S07-SL-170 | Foundation Excavation Works For Panel Boards of Street Lighting Network-[Road 14]-[SW-7] | 2026-10-06 → 2026-10-13 (+7d) | 2026-10-26 → 2026-11-02 (+7d) |  | -67d → -73d |  |  |
| CO-R14.S07-SL-180 | Installation Works for Panel Board Concrete Foundations of Street Lighting Network-[Road 14]-[SW-7] | 2026-10-10 → 2026-10-17 (+7d) | 2026-10-29 → 2026-11-05 (+7d) |  | -67d → -73d |  |  |
| CO-R14.S07-SL-220 | A wall of concrete blocks to install the KWH meter of Street Lighting Network-[Road 14]-[SW-7] | 2026-10-10 → 2026-10-17 (+7d) | 2026-10-29 → 2026-11-05 (+7d) |  | -64d → -70d |  |  |
| CO-R14.S07-SL-190 | Installation Works for Lighting Panel Boards of Street Lighting Network-[Road 14]-[SW-7] | 2026-10-13 → 2026-10-20 (+7d) | 2026-11-02 → 2026-11-09 (+7d) |  | -67d → -73d |  |  |

| ID | Task | Start | Finish | Total float | Predecessors | Other |
| --- | --- | --- | --- | --- | --- | --- |
| TE | **Telecom Network** | 2027-02-25 → 2027-01-14 (-42d) | 2027-04-20 → 2027-02-10 (-69d) |  |  |  |
| PD | **Ducts Works** | 2027-02-25 → 2027-01-14 (-42d) | 2027-04-12 → 2027-02-10 (-61d) |  |  |  |
| CO-R14.S07-TE-100 | Trench Excavation and Bedding Works for Ducts of Telecom Network-[Road 14]-[SW-7] | 2027-02-25 → 2027-01-14 (-42d) | 2027-02-28 → 2027-01-17 (-42d) | -221d → -145d |  |  |
| CO-R14.S07-TE-110 | Pipes Laying Works for Ducts of Telecom Network-[Road 14]-[SW-7] | 2027-03-20 → 2027-01-18 (-61d) | 2027-03-27 → 2027-01-25 (-61d) | -192d → -138d |  |  |
| CO-R14.S07-TE-120 | Pouring Plain Concrete Above Ducts of Telecom Network-[Road 14]-[SW-7] | 2027-03-28 → 2027-01-26 (-61d) | 2027-04-04 → 2027-02-02 (-61d) | -192d → -138d |  |  |
| CO-R14.S07-TE-130 | Trench Backfilling and Compaction Works for Ducts of Telecom Network-[Road 14]-[SW-7] | 2027-04-05 → 2027-02-03 (-61d) | 2027-04-12 → 2027-02-10 (-61d) | -192d → -138d |  |  |
| MH | **Manholes Works** | 2027-03-28 → 2027-01-18 (-69d) | 2027-04-20 → 2027-02-10 (-69d) |  |  |  |
| CO-R14.S07-TE-140 | Excavation Works for Manholes of Telecom Network-[Road 14]-[SW-7] | 2027-03-28 → 2027-01-18 (-69d) | 2027-04-04 → 2027-01-25 (-69d) | -206d → -145d |  |  |
| CO-R14.S07-TE-150 | Installation Works for Manholes of Telecom Network-[Road 14]-[SW-7] | 2027-04-05 → 2027-01-26 (-69d) | 2027-04-12 → 2027-02-02 (-69d) | -199d → -138d |  |  |
| CO-R14.S07-TE-160 | Backfilling Works for Manholes of Telecom Network-[Road 14]-[SW-7] | 2027-04-13 → 2027-02-03 (-69d) | 2027-04-20 → 2027-02-10 (-69d) | -199d → -138d |  |  |
| RD | **Road Works** |  | 2027-08-14 → 2027-08-16 (+2d) |  |  |  |
| RD | **Pre-Bituminous Construction** |  | 2027-05-29 → 2027-02-24 (-94d) |  |  |  |
| CO-R14.S07-RD-P-100 | Capping and Subgrade Layer for Road Works-[Road 14]-[SW-7] |  |  |  | ENG-SH-RD-A-100, CO-R14.S07-SD-130, CO-R14.S07-SW-130, CO-R14.S07-SL-160 SS+3d, CO-R14.S07-SL-160 FF+3d, ENG-MS-RD-A-10, CO-R14.S07-TE-130, CO-R14.S07-TE-160 → ENG-SH-RD-A-100, CO-R14.S07-SD-130, CO-R14.S07-SW-130, CO-R14.S07-SL-160 SS+3d, CO-R14.S07-SL-160 FF+3d, ENG-MS-RD-A-10 |  |
| CO-R14.S07-RD-P-110 | Aggregate Base Course Layer for Road Works-[Road 14]-[SW-7] | 2027-05-03 → 2027-02-03 (-89d) | 2027-05-29 → 2027-02-24 (-94d) | -191d → -91d | CO-R14.S07-RD-P-100 SS+3d, CO-R14.S07-RD-P-100 FF+3d, CO-R14.S07-SD-170 SS+3d, CO-R14.S07-SD-170 FF+3d, CO-R11.S05-RD-P-110 → CO-R14.S07-RD-P-100 SS+3d, CO-R14.S07-RD-P-100 FF+3d, CO-R14.S07-SD-170 SS+3d, CO-R14.S07-SD-170 FF+3d, CO-R11.S05-RD-P-110, CO-R10.S03-WE-RD-110, CO-R10.S03-ES-RD-110 |  |
| LS | **Pavement Works** |  | 2027-08-14 → 2027-08-16 (+2d) |  |  |  |
| CO-R14.S07-RD-P-120 | Fixing of Curbstone for Sidewalks Pavement-[Road 14]-[SW-7] |  |  |  | CO-R11.S05-RD-P-120, CO-R14.S07-RD-P-110 SS+3d, CO-R14.S07-RD-P-110 FF+3d → CO-R11.S05-RD-P-120 | resources Precast Concrete Kerb, Type K1 [1077.41]; Precast Concrete Kerb, Type L1 [2137.72] → Skilled Labor/Surveyor [144 h]; Block Mason [1152 h]; Precast Concrete Kerb, Type K1 [1077.41]; Precast Concrete Kerb, Type L1 [2137.72] |
| CO-R14.S07-RD-P-130 | Fixing of Interlock Tiles for Sidewalks Pavement-[Road 14]-[SW-7] |  | 2027-08-14 → 2027-08-16 (+2d) | -242d → -244d | CO-R14.S07-RD-P-120 SS+3d, CO-R14.S07-RD-P-120 FF+3d, CO-R11.S05-RD-P-130, CO-R14-PW-TF-100, CO-R14-PW-TF-110, CO-R14-PW-TF-120, CO-R14-SW-TF-100, CO-R14-SW-TF-110, CO-R14-SW-TF-130, CO-R11-SL-TF-180, CO-R11-SL-TF-190, CO-R11-IR-TF-140, CO-R11-MV-TF-180 → CO-R14.S07-RD-P-120 SS, CO-R14.S07-RD-P-120 FF+3d, CO-R11.S05-RD-P-130 SS, CO-R14-PW-TF-100 FF, CO-R14-PW-TF-110 FF, CO-R14-PW-TF-120 FF, CO-R14-SW-TF-100 FF, CO-R14-SW-TF-110 FF, CO-R14-SW-TF-130 FF, CO-R11-SL-TF-180 FF, CO-R11-SL-TF-190 FF, CO-R11-IR-TF-140 FF, CO-R11-MV-TF-180 FF |  |
| SW_8 | **SW_8** |  | 2027-08-14 → 2027-08-16 (+2d) |  |  |  |
| SW | **Sewage Network** |  | 2026-10-06 → 2026-10-13 (+7d) |  |  |  |
| CO-R14.S08-SW-100 | Trench Excavation and Bedding Works for Main Lines of Sewage Network-[Road 14]-[SW-8] |  |  |  | CO-R14.S08-EW-110, ENG-MS-SW-ML-A-110, ENG-SH-SW-ML-A-110 → CO-R14.S08-EW-110, ENG-MS-SW-ML-A-110, ENG-SH-SW-ML-A-110, CO-R14.S07-SW-100 |  |
| 1 | **Manholes** |  | 2026-10-06 → 2026-10-13 (+7d) |  |  |  |
| CO-R14.S08-SW-200 | Backfilling Works for Main Line Manholes of Sewage Network-[Road 14]-[SW-8] |  |  |  | CO-R14.S08-SW-180 → CO-R14.S08-SW-190 |  |
| CO-R14.S08-SW-210 | Testing Works for Main Line Manholes of Sewage Network-[Road 14]-[SW-8] | 2026-10-06 → 2026-10-13 (+7d) | 2026-10-06 → 2026-10-13 (+7d) | -35d → -41d | CO-R14.S08-SW-200, CO-R14.S08-SW-190 → CO-R14.S08-SW-200 |  |
| CO-R14.S08-SD-100 | Trench Excavation and Bedding Works for Main Lines of Storm Drainage Network-[Road 14]-[SW-8] |  |  |  | CO-R14.S08-EW-110, CO-R14.S08-EW-100, CO-R14.S08-SW-130 SS+3d, CO-R14.S08-SW-130 FF+3d → CO-R14.S08-EW-110, CO-R14.S08-EW-100, CO-R14.S08-SW-130 SS+3d, CO-R14.S08-SW-130 FF+3d, CO-R14.S07-SD-100 |  |
| CO-R14.S08-SD-120 | Pipes Laying Works for Main Lines of Storm Drainage Network-[Road 14]-[SW-8] |  |  |  | PRO-R14-SD-DL-120 FF+3d, CO-R14.S08-SD-100 → PRO-R14-SD-DL-120 FF+3d, CO-R14.S08-SD-100, CO-R14.S07-SD-120 |  |
| CO-R14.S08-SD-130 | Trench Backfilling and Compaction Works for Main Lines of Storm Drainage Network-[Road 14]-[SW-8] |  |  |  | CO-R14.S08-SD-120 SS+3d, CO-R14.S08-SD-120 FF+3d, CO-R14.S08-SD-120 → CO-R14.S08-SD-120 SS+3d, CO-R14.S08-SD-120 FF+3d, CO-R11.S06-SD-130, CO-R14.S08-SD-120, CO-R14.S08-SD-220 FF |  |
| CO-R14.S08-SD-190 | Install RC Footing Works for Manholes of Storm Drainage Network-[Road 14]-[SW-8] |  |  |  | CO-R14.S08-SD-180, PRO-R14-SD-DL-100 → CO-R14.S08-SD-180 |  |
| PW | **Potable Water Network** |  | 2026-10-29 → 2026-11-05 (+7d) |  |  |  |
| CO-R14.S08-PW-110 | Pipes Laying and accessories for Main Lines of Potable Water Network-[Road 14]-[SW-8] |  |  |  | CO-R14.S08-PW-100, PRO-R14-PW-DL-100 FF+3d → CO-R14.S08-PW-100, CO-R11.S06-PW-110, PRO-R14-PW-DL-100 FF+3d |  |
| CO-R14.S08-PW-130 | Trench Backfilling and Compaction Works for Main Lines of Potable Water Network-[Road 14]-[SW-8] |  |  |  | CO-R14.S08-PW-110 → CO-R14.S08-PW-110, CO-R11.S06-PW-130, CO-R14.S08-PW-220 FF |  |
| CO-R14.S08-PW-210 | Insulation Works for Main Line Valves and Valve Chambers of Potable Water Network-[Road 14]-[SW-8] |  |  |  | CO-R14.S08-PW-200, PRO-R14-PW-DL-110 → CO-R14.S08-PW-200 |  |
| FH | **Fire Hydrant** | 2026-10-06 → 2026-10-13 (+7d) | 2026-10-29 → 2026-11-05 (+7d) |  |  |  |
| CO-R14.S08-PW-140 | Excavation Works for Fire Hydrants of Potable Water Network-[Road 14]-[SW-8] | 2026-10-06 → 2026-10-13 (+7d) | 2026-10-13 → 2026-10-20 (+7d) | -55d → -12d |  |  |
| CO-R14.S08-PW-150 | Installation Works for Fire Hydrant of Potable Water Network-[Road 14]-[SW-8] | 2026-10-14 → 2026-10-21 (+7d) | 2026-10-21 → 2026-10-28 (+7d) | -55d → -12d |  |  |
| CO-R14.S08-PW-160 | Trench Backfilling and Compaction Works for Fire Hydrants of Potable Water Network-[Road 14]-[SW-8] | 2026-10-22 → 2026-10-29 (+7d) | 2026-10-29 → 2026-11-05 (+7d) | -55d → -12d |  |  |
| SL | **Street Lighting Network** |  | 2027-05-29 → 2027-07-24 (+56d) |  |  |  |
| LP | **Lighting Poles Works** |  | 2027-05-29 → 2027-07-24 (+56d) |  |  |  |
| CO-R14.S08-SL-200 | Testing Works for Lighting Poles of Street Lighting Network-[Road 14]-[SW-8] | 2027-04-01 → 2026-10-13 (-170d) | 2027-04-08 → 2026-10-20 (-170d) | -146d → -4d |  |  |
| CO-R14.S08-SL-850 | Installation Works for Lighting Fixtures With Drop Wire of Street Lighting Network-[Road 14]-[SW-8] | 2027-05-03 → 2027-07-04 (+62d) | 2027-05-29 → 2027-07-24 (+56d) | -183.5d → -231.5d |  |  |
| DPB | **Distrubution Panel Boards** | 2027-02-15 → 2027-04-29 (+73d) | 2027-04-08 → 2027-06-22 (+75d) |  |  |  |
| CO-R14.S08-SL-DB-640 | Foundation Excavation Works For Panel Boards of Street Lighting Network-[Road 14]-[SW-8] | 2027-02-15 → 2027-04-29 (+73d) | 2027-03-08 → 2027-05-25 (+78d) | -184d → -243d |  |  |
| CO-R14.S08-SL-220 | A wall of concrete blocks to install the KWH meter of Street Lighting Network-[Road 14]-[SW-8] | 2027-03-02 → 2027-05-13 (+72d) | 2027-04-03 → 2027-06-16 (+74d) | -193d → -252d |  |  |
| CO-R14.S08-SL-DB-650 | Installation Works for Panel Board Concrete Foundations of Street Lighting Network-[Road 14]-[SW-8] | 2027-03-02 → 2027-05-13 (+72d) | 2027-03-25 → 2027-06-08 (+75d) | -193d → -252d |  |  |
| CO-R14.S08-SL-DB-660 | Installation Works for Lighting Panel Boards of Street Lighting Network-[Road 14]-[SW-8] | 2027-03-20 → 2027-06-02 (+74d) | 2027-04-08 → 2027-06-22 (+75d) | -198d → -257d |  |  |
| TE | **Telecom Network** | 2027-03-01 → 2027-01-18 (-42d) | 2027-04-28 → 2027-05-10 (+12d) |  |  |  |
| PD | **Ducts Works** | 2027-03-01 → 2027-01-18 (-42d) | 2027-04-20 → 2027-02-14 (-65d) |  |  |  |
| CO-R14.S08-TE-100 | Trench Excavation and Bedding Works for Ducts of Telecom Network-[Road 14]-[SW-8] | 2027-03-01 → 2027-01-18 (-42d) | 2027-03-03 → 2027-01-20 (-42d) | -221d → -141d |  |  |
| CO-R14.S08-TE-110 | Pipes Laying Works for Ducts of Telecom Network-[Road 14]-[SW-8] | 2027-03-28 → 2027-01-21 (-66d) | 2027-04-04 → 2027-01-28 (-66d) | -199d → -141d |  |  |
| CO-R14.S08-TE-120 | Pouring Plain Concrete Above Ducts of Telecom Network-[Road 14]-[SW-8] | 2027-04-05 → 2027-01-30 (-65d) | 2027-04-12 → 2027-02-06 (-65d) | -199d → -141d |  |  |
| CO-R14.S08-TE-130 | Trench Backfilling and Compaction Works for Ducts of Telecom Network-[Road 14]-[SW-8] | 2027-04-13 → 2027-02-07 (-65d) | 2027-04-20 → 2027-02-14 (-65d) | -199d → -141d |  |  |
| MH | **Manholes Works** | 2027-04-05 → 2027-04-17 (+12d) | 2027-04-28 → 2027-05-10 (+12d) |  |  |  |
| CO-R14.S08-TE-140 | Excavation Works for Manholes of Telecom Network-[Road 14]-[SW-8] | 2027-04-05 → 2027-04-17 (+12d) | 2027-04-12 → 2027-04-24 (+12d) | -206d → -210d |  |  |
| CO-R14.S08-TE-150 | Installation Works for Manholes of Telecom Network-[Road 14]-[SW-8] | 2027-04-13 → 2027-04-25 (+12d) | 2027-04-20 → 2027-05-02 (+12d) | -206d → -210d |  |  |
| CO-R14.S08-TE-160 | Backfilling Works for Manholes of Telecom Network-[Road 14]-[SW-8] | 2027-04-21 → 2027-05-03 (+12d) | 2027-04-28 → 2027-05-10 (+12d) | -206d → -210d |  |  |
| CO-R14.S08-MV-ML-640 | Trench Excavation and Bedding Works for Medium Voltage Network-[Road 14]-[SW-8] |  |  |  | CO-R14.S08-EW-110 → CO-R14.S08-SD-170 SS+3d, CO-R14.S08-SD-170 FF+3d, CO-R14.S08-EW-110, CO-R11.S06-MV-100 |  |
| CO-R14.S08-MV-ML-650 | Cable Laying Works for Medium Voltage Network-[Road 14]-[SW-8] |  |  |  | CO-R14.S08-MV-ML-640 SS+3d, CO-R14.S08-MV-ML-640 FF+3d, PRO-R14-MV-DL-100 FF+3d → CO-R14.S08-MV-ML-640 SS+3d, CO-R14.S08-MV-ML-640 FF+3d, CO-R11.S06-MV-110, PRO-R14-MV-DL-100 FF+3d |  |
| CO-R14.S08-MV-ML-660 | Trench Backfilling and Compaction Works for Medium Voltage Network-[Road 14]-[SW-8] |  |  |  | CO-R14.S08-MV-ML-650 SS+3d, CO-R14.S08-MV-ML-650 FF+3d, CO-R14.S08-PW-130 FF+3d → CO-R14.S08-MV-ML-650 SS+3d, CO-R14.S08-MV-ML-650 FF+3d, CO-R14.S08-PW-130 FF+3d, CO-R11.S06-MV-120 |  |
| RD | **Road Works** |  | 2027-08-14 → 2027-08-16 (+2d) |  |  |  |
| RD | **Pre-Bituminous Construction** |  | 2027-05-29 → 2027-06-07 (+9d) |  |  |  |
| CO-R14.S08-RD-P-100 | Capping and Subgrade Layer for Road Works-[Road 14]-[SW-8] |  |  |  | CO-R14.S08-SD-130, CO-R14.S08-PW-130, CO-R14.S08-PW-160, CO-R14.S08-SL-660 SS+3d, CO-R14.S08-SL-660 FF+3d, PRO-R14-RD-DL-100 FF+3d, CO-R14.S08-TE-130, CO-R14.S08-TE-160, CO-R14.S08-MV-ML-660 SS+3d, CO-R14.S08-MV-ML-660 FF+3d, CO-R14.S08-SW-130 → CO-R14.S08-SD-130, CO-R14.S08-PW-130, CO-R14.S08-SL-660 SS+3d, CO-R14.S08-SL-660 FF+3d, PRO-R14-RD-DL-100 FF+3d, CO-R14.S08-MV-ML-660 SS+3d, CO-R14.S08-MV-ML-660 FF+3d, CO-R14.S08-SW-130 |  |
| CO-R14.S08-RD-P-110 | Aggregate Base Course Layer for Road Works-[Road 14]-[SW-8] | 2027-05-03 → 2027-05-12 (+9d) | 2027-05-29 → 2027-06-07 (+9d) | -189d → -168d | CO-R14.S08-RD-P-100 SS+3d, CO-R14.S08-RD-P-100 FF+3d, CO-R14.S08-SD-170 SS+3d, CO-R14.S08-SD-170 FF+3d, CO-R11.S06-RD-P-110, PRO-R14-RD-DL-110 FF+3d → CO-R14.S08-RD-P-100 SS+3d, CO-R14.S08-RD-P-100 FF+3d, CO-R14.S08-SD-170 SS+3d, CO-R14.S08-SD-170 FF+3d, CO-R11.S06-RD-P-110, PRO-R14-RD-DL-110 FF+3d, CO-R14.S08-PW-160, CO-R10.S04-WE-RD-110, CO-R10.S04-ES-RD-110 |  |
| LS | **Pavement Works** |  | 2027-08-14 → 2027-08-16 (+2d) |  |  |  |
| CO-R14.S08-RD-P-120 | Fixing of Curbstone for Sidewalks Pavement-[Road 14]-[SW-8] |  |  |  | PRO-R14-RD-DL-130 FF+3d, CO-R11.S06-RD-P-120, CO-R14.S08-RD-P-110 SS+3d, CO-R14.S08-RD-P-110 FF+3d → PRO-R14-RD-DL-130 FF+3d, CO-R11.S06-RD-P-120 |  |
| CO-R14.S08-RD-P-130 | Fixing of Interlock Tiles for Sidewalks Pavement-[Road 14]-[SW-8] |  | 2027-08-14 → 2027-08-16 (+2d) | -240d → -242d | PRO-R14-RD-DL-120 FF+3d, CO-R14.S08-RD-P-120 SS+3d, CO-R14.S08-RD-P-120 FF+3d, CO-R11.S06-RD-P-130, CO-R14-PW-TF-100, CO-R14-PW-TF-110, CO-R14-PW-TF-120, CO-R14-SW-TF-100, CO-R14-SW-TF-110, CO-R14-SW-TF-130, CO-R14-SD-TF-120, CO-R11-SL-TF-180, CO-R11-SL-TF-190, CO-R11-IR-TF-140, CO-R11-MV-TF-180 → PRO-R14-RD-DL-120 FF+3d, CO-R14.S08-RD-P-120 SS, CO-R14.S08-RD-P-120 FF+3d, CO-R11.S06-RD-P-130 SS, CO-R14-PW-TF-100 FF, CO-R14-PW-TF-110 FF, CO-R14-PW-TF-120 FF, CO-R14-SW-TF-100 FF, CO-R14-SW-TF-110 FF, CO-R14-SW-TF-130 FF, CO-R14-SD-TF-120, CO-R11-SL-TF-180 FF, CO-R11-SL-TF-190 FF, CO-R11-IR-TF-140 FF, CO-R11-MV-TF-180 FF | resources Interlocking block pavers for sidewalk/footpath 60mm thick on and including 30mm Sand Bedding, 200mm Aggregate subbase, all in accordance with authority standards and complete as per specifications [1923.95]; Extraover for Pedestrian ramps [5] → Labor/Helper [6048 h]; Block Mason [6048 h]; Interlocking block pavers for sidewalk/footpath 60mm thick on and including 30mm Sand Bedding, 200mm Aggregate subbase, all in accordance with authority standards and complete as per specifications [1923.95]; Extraover for Pedestrian ramps [5] |
| 7 | **Road 15 Local 1 ( 556 LM )** |  | 2027-08-28 → 2027-09-01 (+4d) |  |  |  |
| SW_9 | **SW_9** |  | 2027-08-28 → 2027-09-01 (+4d) |  |  |  |
| CO-R15.S09-SW-120 | Pipes Laying Works for Main Lines of Sewage Network-[Road 15]-[SW-9] |  |  |  | CO-R15.S09-SW-100 FF, PRO-R15-SW-DL-100 FF+3d → CO-R15.S09-SW-100, PRO-R15-SW-DL-100 FF+3d |  |
| CO-R15.S09-SW-130 | Trench Backfilling and Compaction Works for Main Lines of Sewage Network-[Road 15]-[SW-9] |  |  |  | ENG-SH-SW-ML-A-110 FF, ENG-MS-SW-ML-A-110 FF, CO-R15.S09-SW-120, CO-R16.S12-SW-130 → ENG-SH-SW-ML-A-110 FF, ENG-MS-SW-ML-A-110 FF, CO-R15.S09-SW-120, CO-R15.S09-SW-210 FF, CO-R16.S12-SW-130 |  |
| CO-R15.S09-SW-200 | Backfilling Works for Main Line Manholes of Sewage Network-[Road 15]-[SW-9] |  |  |  | CO-R15.S09-SW-180 → CO-R15.S09-SW-190 |  |
| CO-R15.S09-SW-210 | Testing Works for Main Line Manholes of Sewage Network-[Road 15]-[SW-9] |  |  |  | CO-R15.S09-SW-200, CO-R15.S09-SW-190 → CO-R15.S09-SW-200 |  |

| ID | Task | Start | Finish | Total float | Predecessors | Other |
| --- | --- | --- | --- | --- | --- | --- |
| CO-R15.S09-SD-130 | Trench Backfilling and Compaction Works for Main Lines of Storm Drainage Network-[Road 15]-[SW-9] |  |  |  | ENG-SH-SD-ML-A-110 FF, ENG-MS-SD-ML-A-110 FF, CO-R15.S09-SD-120 → CO-R15.S09-SD-120 SS+3d, CO-R15.S09-SD-120 FF+3d, ENG-SH-SD-ML-A-110 FF, CO-R14.S07-SD-130, ENG-MS-SD-ML-A-110 FF, CO-R15.S09-SD-120, CO-R15.S09-SD-220 FF |  |
| CO-R15.S09-SD-220 | Backfilling Works for Manholes of Storm Drainage Network-[Road 15]-[SW-9] |  |  |  | CO-R15.S09-SD-200 → CO-R15.S09-SD-210 |  |
| CO-R15.S09-SD-170 | Trench Backfilling and Compaction Works for Catch Basins of Storm Drainage Network-[Road 15]-[SW-9] |  |  |  | CO-R15.S09-SD-150 → CO-R15.S09-SD-160 |  |
| CO-R15.S09-IR-100 | Trench Excavation and Bedding Works for Main Lines of Irrigation Network-[Road 15]-[SW-9] |  |  |  | ENG-SH-IR-ML-A-110, CO-R15.S09-EW-110, ENG-MS-IR-ML-A-110 → ENG-SH-IR-ML-A-110, CO-R15.S09-EW-110, CO-R15.S09-SD-170, ENG-MS-IR-ML-A-110 |  |
| CO-R15.S09-IR-130 | Trench Backfilling and Compaction Works for Main Lines of Irrigation Network-[Road 15]-[SW-9] |  |  |  | CO-R15.S09-IR-110 → CO-R15.S09-IR-120, CO-R15.S09-IR-110 |  |
| CO-R15.S09-IR-120 | Installation Works for Main Line Valves of Irrigation Network-[Road 15]-[SW-9] |  |  |  | CO-R15.S09-IR-110, PRO-R15-IR-DL-110 FF+3d → CO-R15.S09-IR-110 |  |
| CO-R15.S09-TE-100 | Trench Excavation and Bedding Works for Ducts of Telecom Network-[Road 15]-[SW-9] |  |  |  | CO-R15.S09-IR-130 → CO-R15.S09-IR-130, CO-R16.S12-TE-100 |  |
| CO-R15.S09-MV-ML-250 | Trench Excavation and Bedding Works for Medium Voltage Network-[Road 15]-[SW-9] |  |  |  | ENG-SH-MV-A-110, CO-R15.S09-SD-170 SS+3d, CO-R15.S09-SD-170 FF+3d, CO-R15.S09-EW-110, ENG-MS-MV-A-110 → ENG-SH-MV-A-110, CO-R15.S09-SD-170 SS+3d, CO-R15.S09-SD-170 FF+3d, CO-R15.S09-EW-110, CO-R15.S09-TE-130 SS+3d, CO-R15.S09-TE-130 FF+3d, ENG-MS-MV-A-110, CO-R15.S10-SL-160 |  |
| RD | **Road Works** |  | 2027-08-28 → 2027-09-01 (+4d) |  |  |  |
| CO-R15.S09-RD-P-100 | Capping and Subgrade Layer for Road Works-[Road 15]-[SW-9] |  |  |  | ENG-SH-RD-A-100, CO-R15.S09-SD-130, CO-R15.S09-SW-130, ENG-MS-RD-A-10 → ENG-SH-RD-A-100, CO-R15.S09-SD-130, CO-R15.S09-SW-130, ENG-MS-RD-A-10, CO-R15.S09-TE-130, CO-R15.S09-TE-160, CO-R15.S09-MV-ML-270 SS+3d, CO-R15.S09-MV-ML-270 FF+3d |  |
| CO-R15.S09-RD-P-110 | Aggregate Base Course Layer for Road Works-[Road 15]-[SW-9] |  |  |  | CO-R15.S09-RD-P-100 SS+3d, CO-R15.S09-RD-P-100 FF+3d, CO-R15.S09-SD-170 SS+3d, CO-R15.S09-SD-170 FF+3d, CO-R14.S07-RD-P-110 → CO-R15.S09-RD-P-100 SS+3d, CO-R15.S09-RD-P-100 FF+3d, CO-R15.S09-SD-170 SS+3d, CO-R15.S09-SD-170 FF+3d |  |
| LS | **Pavement Works** |  | 2027-08-28 → 2027-09-01 (+4d) |  |  |  |
| CO-R15.S09-RD-P-130 | Fixing of Interlock Tiles for Sidewalks Pavement-[Road 15]-[SW-9] |  | 2027-08-28 → 2027-09-01 (+4d) | -229d → -233d | CO-R15.S09-RD-P-120 SS+3d, CO-R15.S09-RD-P-120 FF+3d, CO-R14.S07-RD-P-130, CO-R15-PW-TF-100, CO-R15-PW-TF-110, CO-R15-PW-TF-120, CO-R15-SW-TF-100, CO-R15-SW-TF-110, CO-R15-SW-TF-130, CO-R15-SD-TF-100, CO-R15-SL-TF-200, CO-R15-SL-TF-210, CO-R15-IR-TF-150, CO-R15-MV-TF-200 → CO-R15.S09-RD-P-120 SS, CO-R15.S09-RD-P-120 FF+3d, CO-R14.S07-RD-P-130 SS, CO-R15-PW-TF-100 FF, CO-R15-PW-TF-110 FF, CO-R15-PW-TF-120 FF, CO-R15-SW-TF-100 FF, CO-R15-SW-TF-110 FF, CO-R15-SW-TF-130 FF, CO-R15-SD-TF-100, CO-R15-SL-TF-200 FF, CO-R15-SL-TF-210 FF, CO-R15-IR-TF-150 FF, CO-R15-MV-TF-200 FF | resources Labor/Helper [288 h]; Block Mason [864 h]; Interlocking block pavers for sidewalk/footpath 60mm thick on and including 30mm Sand Bedding, 200mm Aggregate subbase, all in accordance with authority standards and complete as per specifications [1097.33]; Extraover for Pedestrian ramps [3] → Labor/Helper [288 h]; Block Mason [576 h]; Interlocking block pavers for sidewalk/footpath 60mm thick on and including 30mm Sand Bedding, 200mm Aggregate subbase, all in accordance with authority standards and complete as per specifications [1097.33]; Extraover for Pedestrian ramps [3] |
| SW_10 | **SW_10** |  | 2027-08-25 → 2027-09-01 (+7d) |  |  |  |
| SW | **Sewage Network** |  | 2026-10-06 → 2026-10-13 (+7d) |  |  |  |
| 1 | **Manholes** |  | 2026-10-06 → 2026-10-13 (+7d) |  |  |  |
| CO-R15.S10-SW-200 | Backfilling Works for Main Line Manholes of Sewage Network-[Road 15]-[SW-10] |  |  |  | CO-R15.S10-SW-180 → CO-R15.S10-SW-190 |  |
| CO-R15.S10-SW-210 | Testing Works for Main Line Manholes of Sewage Network-[Road 15]-[SW-10] | 2026-10-06 → 2026-10-13 (+7d) | 2026-10-06 → 2026-10-13 (+7d) | -23d → -27d | CO-R15.S10-SW-200, CO-R15.S10-SW-190 → CO-R15.S10-SW-200 |  |
| CO-R15.S10-SD-130 | Trench Backfilling and Compaction Works for Main Lines of Storm Drainage Network-[Road 15]-[SW-10] |  |  |  | CO-R15.S10-SD-120 → CO-R15.S10-SD-120 SS+3d, CO-R15.S10-SD-120 FF+3d, CO-R14.S08-SD-130, CO-R15.S10-SD-120, CO-R15.S10-SD-220 FF |  |
| CO-R15.S10-SD-220 | Backfilling Works for Manholes of Storm Drainage Network-[Road 15]-[SW-10] |  |  |  | CO-R15.S10-SD-200 → CO-R15.S10-SD-210 |  |
| CO-R15.S10-SD-170 | Trench Backfilling and Compaction Works for Catch Basins of Storm Drainage Network-[Road 15]-[SW-10] |  |  |  | CO-R15.S10-SD-150 → CO-R15.S10-SD-160 SS+3d, CO-R15.S10-SD-160 FF+3d |  |
| SL | **Street Lighting Network** |  | 2026-12-27 → 2027-02-21 (+56d) |  |  |  |
| LP | **Lighting Poles Works** |  | 2026-12-27 → 2027-02-21 (+56d) |  |  |  |
| CO-R15.S10-SL-200 | Testing Works for Lighting Poles of Street Lighting Network-[Road 15]-[SW-10] | 2026-10-06 → 2026-10-13 (+7d) | 2026-10-11 → 2026-10-18 (+7d) | -117d → -123d |  |  |
| CO-R15.S10-SL-130 | Installation Works for Lighting Fixtures With Drop Wire of Street Lighting Network-[Road 15]-[SW-10] | 2026-12-07 → 2027-02-01 (+56d) | 2026-12-27 → 2027-02-21 (+56d) | -183d → -231d |  |  |
| DPB | **Distrubution Panel Boards** | 2026-10-06 → 2026-10-13 (+7d) | 2026-11-02 → 2026-11-09 (+7d) |  |  |  |
| CO-R15.S10-SL-170 | Foundation Excavation Works For Panel Boards of Street Lighting Network-[Road 15]-[SW-10] | 2026-10-06 → 2026-10-13 (+7d) | 2026-10-26 → 2026-11-02 (+7d) | -53d → -59d |  |  |
| CO-R15.S10-SL-180 | Installation Works for Panel Board Concrete Foundations of Street Lighting Network-[Road 15]-[SW-10] | 2026-10-10 → 2026-10-17 (+7d) | 2026-10-29 → 2026-11-05 (+7d) | -53d → -59d |  |  |
| CO-R15.S10-SL-220 | A wall of concrete blocks to install the KWH meter of Street Lighting Network-[Road 15]-[SW-10] | 2026-10-10 → 2026-10-17 (+7d) | 2026-10-29 → 2026-11-05 (+7d) | -50d → -56d |  |  |
| CO-R15.S10-SL-190 | Installation Works for Lighting Panel Boards of Street Lighting Network-[Road 15]-[SW-10] | 2026-10-13 → 2026-10-20 (+7d) | 2026-11-02 → 2026-11-09 (+7d) | -53d → -59d |  |  |
| PW | **Potable Water Network** |  | 2026-10-26 → 2026-11-03 (+8d) |  |  |  |
| CO-R15.S10-PW-100 | Trench Excavation and Bedding Works for Main Lines of Potable Water Network-[Road 15]-[SW-10] |  |  |  | CO-R15.S10-EW-110, CO-R15.S10-EW-100 → CO-R15.S10-EW-110, CO-R15.S10-EW-100, CO-R15.S10-SW-130, CO-R15.S10-SD-130 |  |
| CO-R15.S10-PW-110 | Pipes Laying and accessories for Main Lines of Potable Water Network-[Road 15]-[SW-10] |  |  |  | CO-R15.S10-PW-100, PRO-R15-PW-DL-100 FF+3d → CO-R15.S10-PW-100, CO-R14.S08-PW-110 SS, PRO-R15-PW-DL-100 FF+3d |  |
| CO-R15.S10-PW-130 | Trench Backfilling and Compaction Works for Main Lines of Potable Water Network-[Road 15]-[SW-10] |  |  |  | CO-R15.S10-PW-110 → CO-R15.S10-PW-110, CO-R14.S08-PW-130 SS, CO-R15.S10-PW-210 FF |  |
| CO-R15.S10-PW-210 | Installation Works for Main Line Valves and Valve Chambers of Potable Water Network-[Road 15]-[SW-10] |  |  |  | CO-R15.S10-PW-110, PRO-R15-PW-DL-110 FF → CO-R15.S10-PW-110 |  |
| FH | **Fire Hydrant** | 2026-10-06 → 2026-10-14 (+8d) | 2026-10-26 → 2026-11-03 (+8d) |  |  |  |
| CO-R15.S10-PW-140 | Excavation Works for Fire Hydrants of Potable Water Network-[Road 15]-[SW-10] | 2026-10-06 → 2026-10-14 (+8d) | 2026-10-12 → 2026-10-20 (+8d) | -4d → -27d | CO-R15.S10-PW-110 SS+3d, CO-R15.S10-PW-110 FF+3d, CO-R15.S10-EW-110, CO-R15.S10-SW-130 SS+3d, CO-R15.S10-SW-130 FF+3d → CO-R15.S10-PW-110 SS+3d, CO-R15.S10-PW-110 FF+3d, CO-R15.S10-EW-110, CO-R15.S10-SW-130 SS+3d, CO-R15.S10-SW-130 FF+3d, CO-R15.S10-SW-210 |  |
| CO-R15.S10-PW-150 | Installation Works for Fire Hydrant of Potable Water Network-[Road 15]-[SW-10] | 2026-10-13 → 2026-10-21 (+8d) | 2026-10-19 → 2026-10-27 (+8d) | -4d → -27d |  |  |
| CO-R15.S10-PW-160 | Trench Backfilling and Compaction Works for Fire Hydrants of Potable Water Network-[Road 15]-[SW-10] | 2026-10-20 → 2026-10-28 (+8d) | 2026-10-26 → 2026-11-03 (+8d) | -4d → -27d |  |  |
| CO-R15.S10-TE-100 | Trench Excavation and Bedding Works for Ducts of Telecom Network-[Road 15]-[SW-10] |  |  |  | CO-R15.S10-SL-140 SS, CO-R15.S10-SL-140 FF → CO-R15.S10-SL-160 SS+5d, CO-R15.S10-SL-160 FF+5d |  |
| RD | **Road Works** |  | 2027-08-25 → 2027-09-01 (+7d) |  |  |  |
| CO-R15.S10-RD-P-100 | Capping and Subgrade Layer for Road Works-[Road 15]-[SW-10] |  |  |  | CO-R15.S10-SD-130, CO-R15.S10-SW-130, PRO-R15-RD-DL-100 FF+3d, CO-R15.S10-PW-130 → CO-R15.S10-SD-130, CO-R15.S10-SW-130, CO-R15.S10-PW-130, PRO-R15-RD-DL-100 FF+3d, CO-R15.S10-TE-130, CO-R15.S10-TE-160, CO-R15.S10-SL-160 SS+3d, CO-R15.S10-SL-160 FF+3d |  |
| CO-R15.S10-RD-P-110 | Aggregate Base Course Layer for Road Works-[Road 15]-[SW-10] |  |  |  | CO-R15.S10-RD-P-100 SS+3d, CO-R15.S10-RD-P-100 FF+3d, CO-R15.S10-SD-170 SS+3d, CO-R15.S10-SD-170 FF+3d, CO-R14.S08-RD-P-110, PRO-R15-RD-DL-110 FF+3d → CO-R15.S10-RD-P-100 SS+3d, CO-R15.S10-RD-P-100 FF+3d, CO-R15.S10-SD-170 SS+3d, CO-R15.S10-SD-170 FF+3d, PRO-R15-RD-DL-110 FF+3d |  |
| LS | **Pavement Works** |  | 2027-08-25 → 2027-09-01 (+7d) |  |  |  |
| CO-R15.S10-RD-P-130 | Fixing of Interlock Tiles for Sidewalks Pavement-[Road 15]-[SW-10] |  | 2027-08-25 → 2027-09-01 (+7d) | -227d → -232d | CO-R15.S10-RD-P-120 SS+3d, CO-R15.S10-RD-P-120 FF+3d, CO-R14.S08-RD-P-130, PRO-R15-RD-DL-120 FF+3d, CO-R15-PW-TF-100, CO-R15-PW-TF-110, CO-R15-PW-TF-120, CO-R15-SW-TF-100, CO-R15-SW-TF-110, CO-R15-SW-TF-130, CO-R15-SD-TF-100, CO-R15-SD-TF-120, CO-R15-SL-TF-200, CO-R15-SL-TF-210, CO-R15-IR-TF-150, CO-R15-MV-TF-200 → CO-R15.S10-RD-P-120 SS, CO-R15.S10-RD-P-120 FF+3d, CO-R14.S08-RD-P-130 SS, PRO-R15-RD-DL-120 FF+3d, CO-R15-PW-TF-100 FF, CO-R15-PW-TF-110 FF, CO-R15-PW-TF-120 FF, CO-R15-SW-TF-100 FF, CO-R15-SW-TF-110 FF, CO-R15-SW-TF-130 FF, CO-R15-SD-TF-100, CO-R15-SD-TF-120, CO-R15-SL-TF-200 FF, CO-R15-SL-TF-210 FF, CO-R15-IR-TF-150 FF, CO-R15-MV-TF-200 FF |  |
| 8 | **Road 16 Local 1 ( 527 LM )** |  | 2027-09-06 → 2027-09-15 (+9d) |  |  |  |
| SW_13 | **SW_11** |  | 2027-08-25 → 2027-09-15 (+21d) |  |  |  |
| CO-R16.S11-SW-130 | Trench Backfilling and Compaction Works for Main Lines of Sewage Network-[Road 16]-[SW-11] |  |  |  | CO-R16.S11-SW-120 SS+3d, CO-R16.S11-SW-120 FF+3d, ENG-SH-SW-ML-A-110 FF, ENG-MS-SW-ML-A-110 FF, CO-R16.S11-SW-120, CO-R17.S14-SW-130 → CO-R16.S11-SW-120 SS+3d, CO-R16.S11-SW-120 FF+3d, ENG-SH-SW-ML-A-110 FF, ENG-MS-SW-ML-A-110 FF, CO-R16.S11-SW-120, CO-R16.S11-SW-210 FF, CO-R17.S14-SW-130 |  |
| CO-R16.S11-SW-200 | Backfilling Works for Main Line Manholes of Sewage Network-[Road 16]-[SW-11] |  |  |  | CO-R16.S11-SW-180 → CO-R16.S11-SW-190 |  |
| CO-R16.S11-SW-210 | Testing Works for Main Line Manholes of Sewage Network-[Road 16]-[SW-11] |  |  |  | CO-R16.S11-SW-190, CO-R16.S11-SW-200 → CO-R16.S11-SW-200 |  |
| CO-R16.S11-SD-130 | Trench Backfilling and Compaction Works for Main Lines of Storm Drainage Network-[Road 16]-[SW-11] |  |  |  | CO-R16.S11-SD-120 SS+3d, CO-R16.S11-SD-120 FF+3d, ENG-SH-SD-ML-A-110 FF, ENG-MS-SD-ML-A-110 FF, CO-R16.S11-SD-120 → CO-R16.S11-SD-120 SS+3d, CO-R16.S11-SD-120 FF+3d, ENG-SH-SD-ML-A-110 FF, CO-R15.S09-SD-130, ENG-MS-SD-ML-A-110 FF, CO-R16.S11-SD-120, CO-R16.S11-SD-220 FF |  |
| CO-R16.S11-SD-220 | Backfilling Works for Manholes of Storm Drainage Network-[Road 16]-[SW-11] |  |  |  | CO-R16.S11-SD-200 → CO-R16.S11-SD-210 |  |
| CO-R16.S11-SD-170 | Trench Backfilling and Compaction Works for Catch Basins of Storm Drainage Network-[Road 16]-[SW-11] |  |  |  | CO-R16.S11-SD-150, CO-R16.S11-IR-110 → CO-R16.S11-SD-160 |  |
| CO-R16.S11-IR-100 | Trench Excavation and Bedding Works for Main Lines of Irrigation Network-[Road 16]-[SW-11] |  |  |  | ENG-SH-IR-ML-A-110, CO-R16.S11-EW-110, ENG-MS-IR-ML-A-110 → ENG-SH-IR-ML-A-110, CO-R16.S11-EW-110, CO-R16.S11-SD-170, ENG-MS-IR-ML-A-110 |  |
| CO-R16.S11-IR-130 | Trench Backfilling and Compaction Works for Main Lines of Irrigation Network-[Road 16]-[SW-11] |  |  |  | CO-R16.S11-IR-110 → CO-R16.S11-IR-120, CO-R16.S11-IR-110 |  |
| CO-R16.S11-IR-120 | Installation Works for Main Line Valves of Irrigation Network-[Road 16]-[SW-11] |  |  |  | CO-R16.S11-IR-110, PRO-R16-IR-DL-110 FF+3d → CO-R16.S11-IR-110 |  |
| CO-R16.S11-TE-140 | Excavation Works for Manholes of Telecom Network-[Road 16]-[SW-11] |  |  |  | CO-R16.S11-TE-100 → CO-R15.S09-TE-140, CO-R16.S11-TE-100 |  |
| CO-R16.S11-TE-150 | Installation Works for Manholes of Telecom Network-[Road 16]-[SW-11] |  |  |  | CO-R16.S11-TE-140 → CO-R16.S11-TE-140, CO-R15.S09-TE-150 |  |
| CO-R16.S11-TE-160 | Backfilling Works for Manholes of Telecom Network-[Road 16]-[SW-11] |  |  |  | CO-R16.S11-TE-150 → CO-R16.S11-TE-150, CO-R15.S09-TE-160 |  |
| CO-R16.S11-MV-ML-280 | Trench Excavation and Bedding Works for Medium Voltage Network-[Road 16]-[SW-11] |  |  |  | ENG-SH-MV-A-110, CO-R16.S11-SD-170 SS+3d, CO-R16.S11-SD-170 FF+3d, CO-R16.S11-EW-110, CO-R15.S09-MV-ML-250, ENG-MS-MV-A-110 → ENG-SH-MV-A-110, CO-R16.S11-SD-170 SS+3d, CO-R16.S11-SD-170 FF+3d, CO-R16.S11-EW-110, CO-R16.S11-TE-130 SS+3d, CO-R16.S11-TE-130 FF+3d, CO-R15.S09-MV-ML-250, ENG-MS-MV-A-110 |  |
| RD | **Road Works** |  | 2027-08-25 → 2027-09-15 (+21d) |  |  |  |
| CO-R16.S11-RD-P-100 | Capping and Subgrade Layer for Road Works-[Road 16]-[SW-11] |  |  |  | ENG-SH-RD-A-100, CO-R16.S11-SD-130, CO-R16.S11-SW-130, ENG-MS-RD-A-10 → ENG-SH-RD-A-100, CO-R16.S11-SD-130, CO-R16.S11-SW-130, ENG-MS-RD-A-10, CO-R16.S11-TE-130, CO-R16.S11-TE-160, CO-R16.S11-MV-ML-300 SS+3d, CO-R16.S11-MV-ML-300 FF+3d | resources Labor/Helper [2788 h]; Skilled Labor/Surveyor [1394 h]; Loader [144 h]; Grader [144 h]; Road Roller [144 h]; Water Tank [144 h]; 300mm capping layer underneath subgrade , CBR?15% [1587.47]; 300mm thick Subgrade, including subgrade preparation, CBR?25% [1587.47] → Labor/Helper [288 h]; Skilled Labor/Surveyor [144 h]; Loader [144 h]; Grader [144 h]; Road Roller [144 h]; Water Tank [144 h]; 300mm capping layer underneath subgrade , CBR?15% [1587.47]; 300mm thick Subgrade, including subgrade preparation, CBR?25% [1587.47] |
| LS | **Pavement Works** |  | 2027-08-25 → 2027-09-15 (+21d) |  |  |  |
| CO-R16.S11-RD-P-130 | Fixing of Interlock Tiles for Sidewalks Pavement-[Road 16]-[SW-11] |  | 2027-08-25 → 2027-09-15 (+21d) | -217d → -235d | CO-R16.S11-RD-P-120 SS+3d, CO-R16.S11-RD-P-120 FF+3d, CO-R15.S09-RD-P-130 SS, CO-R16-PW-TF-100, CO-R16-PW-TF-110, CO-R16-PW-TF-120, CO-R16-SW-TF-100, CO-R16-SW-TF-110, CO-R16-SW-TF-130, CO-R16-SD-TF-100, CO-R16-SL-TF-220, CO-R16-SL-TF-230 SS, CO-R16-IR-TF-160, CO-R16-MV-TF-220 → CO-R16.S11-RD-P-120 SS, CO-R16.S11-RD-P-120 FF+3d, CO-R15.S09-RD-P-130 SS, CO-R16-PW-TF-100 FF, CO-R16-PW-TF-110 FF, CO-R16-PW-TF-120 FF, CO-R16-SW-TF-100 FF, CO-R16-SW-TF-110 FF, CO-R16-SW-TF-130 FF, CO-R16-SD-TF-100 FF, CO-R16-SL-TF-220 FF, CO-R16-SL-TF-230 FF, CO-R16-IR-TF-160 FF, CO-R16-MV-TF-220 FF | resources Labor/Helper [288 h]; Block Mason [864 h]; Interlocking block pavers for sidewalk/footpath 60mm thick on and including 30mm Sand Bedding, 200mm Aggregate subbase, all in accordance with authority standards and complete as per specifications [1045.87]; Extraover for Pedestrian ramps [3] → Labor/Helper [288 h]; Block Mason [480 h]; Interlocking block pavers for sidewalk/footpath 60mm thick on and including 30mm Sand Bedding, 200mm Aggregate subbase, all in accordance with authority standards and complete as per specifications [1045.87]; Extraover for Pedestrian ramps [3] |
| SW_14 | **SW_12** |  | 2027-09-06 → 2027-09-15 (+9d) |  |  |  |
| CO-R16.S12-SW-130 | Trench Backfilling and Compaction Works for Main Lines of Sewage Network-[Road 16]-[SW-12] |  |  |  | CO-R16.S12-SW-120, CO-R16.S11-SW-130 → CO-R16.S12-SW-120, CO-R16.S12-SW-210 FF, CO-R16.S11-SW-130 |  |
| CO-R16.S12-SW-200 | Backfilling Works for Main Line Manholes of Sewage Network-[Road 16]-[SW-12] |  |  |  | CO-R16.S12-SW-180 → CO-R16.S12-SW-190 |  |
| CO-R16.S12-SW-210 | Testing Works for Main Line Manholes of Sewage Network-[Road 16]-[SW-12] |  |  |  | CO-R16.S12-SW-200, CO-R16.S12-SW-190 → CO-R16.S12-SW-200 |  |
| CO-R16.S12-SD-220 | Backfilling Works for Manholes of Storm Drainage Network-[Road 16]-[SW-12] |  |  |  | CO-R16.S12-SD-200 → CO-R16.S12-SD-210 |  |
| CO-R16.S12-SD-170 | Trench Backfilling and Compaction Works for Catch Basins of Storm Drainage Network-[Road 16]-[SW-12] |  |  |  | CO-R16.S12-SD-150 → CO-R16.S12-SD-160 |  |

| ID | Task | Start | Finish | Total float | Predecessors |
| --- | --- | --- | --- | --- | --- |
| PW | **Potable Water Network** |  | 2026-11-02 → 2026-11-10 (+8d) |  |  |
| CO-R16.S12-PW-100 | Trench Excavation and Bedding Works for Main Lines of Potable Water Network-[Road 16]-[SW-12] |  |  |  | CO-R16.S12-EW-110, CO-R16.S12-EW-100 → CO-R16.S12-EW-110, CO-R16.S12-EW-100, CO-R16.S12-SW-130, CO-R16.S12-SD-130 |
| CO-R16.S12-PW-110 | Pipes Laying and accessories for Main Lines of Potable Water Network-[Road 16]-[SW-12] |  |  |  | CO-R16.S12-PW-100, PRO-R16-PW-DL-100 FF+3d → CO-R16.S12-PW-100, CO-R15.S10-PW-110, PRO-R16-PW-DL-100 FF+3d |
| CO-R16.S12-PW-130 | Trench Backfilling and Compaction Works for Main Lines of Potable Water Network-[Road 16]-[SW-12] |  |  |  | CO-R16.S12-PW-110 → CO-R16.S12-PW-110, CO-R15.S10-PW-130, CO-R16.S12-PW-210 FF |
| CO-R16.S12-PW-210 | Installation Works for Main Line Valves and Valve Chambers of Potable Water Network-[Road 16]-[SW-12] |  |  |  | CO-R16.S12-PW-110, PRO-R16-PW-DL-110 → CO-R16.S12-PW-110 |
| FH | **Fire Hydrant** | 2026-10-06 → 2026-10-13 (+7d) | 2026-11-02 → 2026-11-10 (+8d) |  |  |
| CO-R16.S12-PW-140 | Excavation Works for Fire Hydrants of Potable Water Network-[Road 16]-[SW-12] | 2026-10-06 → 2026-10-13 (+7d) | 2026-10-12 → 2026-10-19 (+7d) | 2d → -20d |  |
| CO-R16.S12-PW-150 | Installation Works for Fire Hydrant of Potable Water Network-[Road 16]-[SW-12] | 2026-10-20 → 2026-10-28 (+8d) | 2026-10-26 → 2026-11-03 (+8d) | -4d → -27d |  |
| CO-R16.S12-PW-160 | Trench Backfilling and Compaction Works for Fire Hydrants of Potable Water Network-[Road 16]-[SW-12] | 2026-10-27 → 2026-11-04 (+8d) | 2026-11-02 → 2026-11-10 (+8d) | -4d → -27d |  |
| CO-R16.S12-TE-140 | Excavation Works for Manholes of Telecom Network-[Road 16]-[SW-12] |  |  |  | CO-R15.S10-TE-140, CO-R16.S11-TE-140 SS, CO-R16.S12-TE-100 → CO-R15.S10-TE-140, CO-R16.S11-TE-140, CO-R16.S12-TE-100 |
| RD | **Road Works** |  | 2027-09-06 → 2027-09-15 (+9d) |  |  |
| CO-R16.S12-RD-P-100 | Capping and Subgrade Layer for Road Works-[Road 16]-[SW-12] |  |  |  | CO-R16.S12-SD-130, CO-R16.S12-SW-130, CO-R16.S12-PW-130, PRO-R16-RD-DL-100 FF+3d → CO-R16.S12-SD-130, CO-R16.S12-SW-130, CO-R16.S12-PW-130, PRO-R16-RD-DL-100 FF+3d, CO-R16.S12-TE-130, CO-R16.S12-TE-160 |
| LS | **Pavement Works** |  | 2027-09-06 → 2027-09-15 (+9d) |  |  |
| CO-R16.S12-RD-P-130 | Fixing of Interlock Tiles for Sidewalks Pavement-[Road 16]-[SW-12] |  | 2027-09-06 → 2027-09-15 (+9d) | -227d → -232d | CO-R16.S12-RD-P-120 SS+3d, CO-R16.S12-RD-P-120 FF+3d, CO-R15.S10-RD-P-130, PRO-R16-RD-DL-120 FF+3d, CO-R16-PW-TF-100, CO-R16-PW-TF-110, CO-R16-PW-TF-120, CO-R16-SW-TF-100, CO-R16-SW-TF-110, CO-R16-SW-TF-130, CO-R16-SD-TF-100, CO-R16-SD-TF-120, CO-R16-SL-TF-220, CO-R16-SL-TF-230, CO-R16-IR-TF-160, CO-R16-MV-TF-220 → CO-R16.S12-RD-P-120 SS, CO-R16.S12-RD-P-120 FF+3d, CO-R15.S10-RD-P-130 SS, PRO-R16-RD-DL-120 FF+3d, CO-R16-PW-TF-100 FF, CO-R16-PW-TF-110 FF, CO-R16-PW-TF-120 FF, CO-R16-SW-TF-100 FF, CO-R16-SW-TF-110 FF, CO-R16-SW-TF-130 FF, CO-R16-SD-TF-100 FF, CO-R16-SD-TF-120, CO-R16-SL-TF-220 FF, CO-R16-SL-TF-230 FF, CO-R16-IR-TF-160 FF, CO-R16-MV-TF-220 FF |
| 9 | **Road 17 Local 1 ( 500 LM )** |  | 2026-11-26 → 2026-12-22 (+26d) |  |  |
| CO-R17.S13-SW-100 | Trench Excavation and Bedding Works for Main Lines of Sewage Network-[Road 17]-[SW-13] |  |  |  | CO-R17.S13-EW-110, ENG-MS-SW-ML-A-110, ENG-SH-SW-ML-A-110, CO-R18.S16-SW-220 SS → CO-R17.S13-EW-110, ENG-MS-SW-ML-A-110, ENG-SH-SW-ML-A-110, CO-R18.S16-SW-220 |
| CO-R17.S13-SW-130 | Trench Backfilling and Compaction Works for Main Lines of Sewage Network-[Road 17]-[SW-13] |  |  |  | ENG-SH-SW-ML-A-110 FF, ENG-MS-SW-ML-A-110 FF, CO-R17.S13-SW-120, CO-R18.S16-SW-240 → ENG-SH-SW-ML-A-110 FF, ENG-MS-SW-ML-A-110 FF, CO-R17.S13-SW-120, CO-R17.S13-SW-210 FF, CO-R18.S16-SW-240 |
| CO-R17.S13-SW-200 | Backfilling Works for Main Line Manholes of Sewage Network-[Road 17]-[SW-13] |  |  |  | CO-R17.S13-SW-180 → CO-R17.S13-SW-190 |
| CO-R17.S13-SW-210 | Testing Works for Main Line Manholes of Sewage Network-[Road 17]-[SW-13] |  |  |  | CO-R17.S13-SW-200, CO-R17.S13-SW-190 → CO-R17.S13-SW-200 |
| CO-R17.S13-SD-220 | Backfilling Works for Manholes of Storm Drainage Network-[Road 17]-[SW-13] |  |  |  | CO-R17.S13-SD-200 → CO-R17.S13-SD-210 |
| CO-R17.S13-SD-170 | Trench Backfilling and Compaction Works for Catch Basins of Storm Drainage Network-[Road 17]-[SW-13] |  |  |  | CO-R17.S13-SD-150 → CO-R17.S13-SD-160 |
| CO-R17.S13-IR-100 | Trench Excavation and Bedding Works for Main Lines of Irrigation Network-[Road 17]-[SW-13] |  |  |  | ENG-SH-IR-ML-A-110, CO-R17.S13-EW-110, ENG-MS-IR-ML-A-110 → ENG-SH-IR-ML-A-110, CO-R17.S13-EW-110, CO-R17.S13-SD-170, ENG-MS-IR-ML-A-110 |
| CO-R17.S13-IR-130 | Trench Backfilling and Compaction Works for Main Lines of Irrigation Network-[Road 17]-[SW-13] |  |  |  | CO-R17.S13-IR-110 → CO-R17.S13-IR-120, CO-R17.S13-IR-110 |
| CO-R17.S13-IR-120 | Installation Works for Main Line Valves of Irrigation Network-[Road 17]-[SW-13] |  |  |  | CO-R17.S13-IR-110, PRO-R17-IR-DL-110 FF+3d → CO-R17.S13-IR-110 |
| CO-R17.S13-TE-110 | Pipes Laying Works for Ducts of Telecom Network-[Road 17]-[SW-13] |  |  |  | CO-R17.S13-TE-100 → CO-R17.S13-TE-100, CO-R16.S11-TE-110 |
| CO-R17.S13-TE-120 | Pouring Plain Concrete Above Ducts of Telecom Network-[Road 17]-[SW-13] |  |  |  | CO-R17.S13-TE-110 → CO-R17.S13-TE-110, CO-R16.S11-TE-120 |
| CO-R17.S13-TE-130 | Trench Backfilling and Compaction Works for Ducts of Telecom Network-[Road 17]-[SW-13] |  |  |  | CO-R17.S13-TE-120 → CO-R17.S13-TE-120, CO-R16.S11-TE-130 |
| CO-R17.S13-TE-140 | Excavation Works for Manholes of Telecom Network-[Road 17]-[SW-13] |  |  |  | CO-R17.S13-TE-100 → CO-R16.S11-TE-140, CO-R17.S13-TE-100 |
| CO-R17.S13-TE-150 | Installation Works for Manholes of Telecom Network-[Road 17]-[SW-13] |  |  |  | CO-R17.S13-TE-140 → CO-R17.S13-TE-140, CO-R16.S11-TE-150 |
| CO-R17.S13-TE-160 | Backfilling Works for Manholes of Telecom Network-[Road 17]-[SW-13] |  |  |  | CO-R17.S13-TE-150 → CO-R17.S13-TE-150, CO-R16.S11-TE-160 |
| CO-R17.S13-MV-ML-310 | Trench Excavation and Bedding Works for Medium Voltage Network-[Road 17]-[SW-13] |  |  |  | ENG-SH-MV-A-110, CO-R17.S13-SD-170 SS+3d, CO-R17.S13-SD-170 FF+3d, CO-R17.S13-EW-110, CO-R17.S13-TE-130 SS+3d, CO-R17.S13-TE-130 FF+3d, ENG-MS-MV-A-110, CO-R17.S14-SL-160 → ENG-SH-MV-A-110, CO-R17.S13-SD-170 SS+3d, CO-R17.S13-SD-170 FF+3d, CO-R17.S13-EW-110, CO-R17.S13-TE-130 SS+3d, CO-R17.S13-TE-130 FF+3d, CO-R16.S11-MV-ML-280, ENG-MS-MV-A-110, CO-R17.S14-SL-160 |
| CO-R17.S13-MV-ML-320 | Cable Laying Works for Medium Voltage Network-[Road 17]-[SW-13] |  |  |  | CO-R17.S13-MV-ML-310 SS+3d, CO-R17.S13-MV-ML-310 FF+3d, PRO-R17-MV-DL-100 FF+3d → CO-R17.S13-MV-ML-310 SS+3d, CO-R17.S13-MV-ML-310 FF+3d, CO-R16.S11-MV-ML-290, PRO-R17-MV-DL-100 FF+3d |
| CO-R17.S13-MV-ML-330 | Trench Backfilling and Compaction Works for Medium Voltage Network-[Road 17]-[SW-13] |  |  |  | CO-R17.S13-MV-ML-320 SS+3d, CO-R17.S13-MV-ML-320 FF+3d → CO-R17.S13-MV-ML-320 SS+3d, CO-R17.S13-MV-ML-320 FF+3d, CO-R16.S11-MV-ML-300 |
| CO-R17.S13-RD-P-100 | Capping and Subgrade Layer for Road Works-[Road 17]-[SW-13] |  |  |  | ENG-SH-RD-A-100, CO-R17.S13-SD-130, CO-R17.S13-SW-130, ENG-MS-RD-A-10 → ENG-SH-RD-A-100, CO-R17.S13-SD-130, CO-R17.S13-SW-130, ENG-MS-RD-A-10, CO-R17.S13-TE-130, CO-R17.S13-TE-160, CO-R17.S13-MV-ML-330 SS+3d, CO-R17.S13-MV-ML-330 FF+3d |
| CO-R17.S13-RD-P-110 | Aggregate Base Course Layer for Road Works-[Road 17]-[SW-13] |  |  |  | CO-R17.S13-RD-P-100 SS+3d, CO-R17.S13-RD-P-100 FF+3d, CO-R17.S13-SD-170 SS+3d, CO-R17.S13-SD-170 FF+3d → CO-R17.S13-RD-P-100 SS+3d, CO-R17.S13-RD-P-100 FF+3d, CO-R17.S13-SD-170 SS+3d, CO-R17.S13-SD-170 FF+3d, CO-R16.S11-RD-P-110 |
| CO-R17.S13-RD-P-130 | Fixing of Interlock Tiles for Sidewalks Pavement-[Road 17]-[SW-13] |  |  |  | CO-R17.S13-RD-P-120 SS+3d, CO-R17.S13-RD-P-120 FF+3d, CO-R16.S11-RD-P-130, CO-R17-PW-TF-100, CO-R17-PW-TF-110, CO-R17-PW-TF-120, CO-R17-SW-TF-100, CO-R17-SW-TF-110, CO-R17-SW-TF-130, CO-R17-SD-TF-100, CO-R17-SL-TF-240, CO-R17-SL-TF-250, CO-R17-IR-TF-170, CO-R17-MV-TF-240 → CO-R17.S13-RD-P-120 SS+3d, CO-R17.S13-RD-P-120 FF+3d |
| SW_16 | **SW_14** |  | 2026-11-26 → 2026-12-22 (+26d) |  |  |
| SW | **Sewage Network** |  | 2026-10-06 → 2026-10-13 (+7d) |  |  |
| 1 | **Manholes** |  | 2026-10-06 → 2026-10-13 (+7d) |  |  |
| CO-R17.S14-SW-210 | Testing Works for Main Line Manholes of Sewage Network-[Road 17]-[SW-14] | 2026-10-06 → 2026-10-13 (+7d) | 2026-10-06 → 2026-10-13 (+7d) | 1d → -15d |  |
| CO-R17.S14-SD-130 | Trench Backfilling and Compaction Works for Main Lines of Storm Drainage Network-[Road 17]-[SW-14] |  |  |  | CO-R17.S14-SD-120 SS+3d, CO-R17.S14-SD-120 FF+3d → CO-R17.S14-SD-120 SS+3d, CO-R17.S14-SD-120 FF+3d, CO-R16.S12-SD-130, CO-R17.S14-SD-120, CO-R17.S14-SD-220 FF |
| CO-R17.S14-SD-220 | Backfilling Works for Manholes of Storm Drainage Network-[Road 17]-[SW-14] |  |  |  | CO-R17.S14-SD-200 → CO-R17.S14-SD-210 |
| CO-R17.S14-SD-170 | Trench Backfilling and Compaction Works for Catch Basins of Storm Drainage Network-[Road 17]-[SW-14] |  |  |  | CO-R17.S14-SD-150 → CO-R17.S14-SD-160 |
| SL | **Street Lighting Network** |  | 2026-11-26 → 2026-12-22 (+26d) |  |  |
| LP | **Lighting Poles Works** |  | 2026-11-26 → 2026-12-22 (+26d) |  |  |
| CO-R17.S14-SL-200 | Testing Works for Lighting Poles of Street Lighting Network-[Road 17]-[SW-14] | 2026-10-06 → 2026-10-13 (+7d) | 2026-10-11 → 2026-10-18 (+7d) | -32d → -38d |  |
| CO-R17.S14-SL-130 | Installation Works for Lighting Fixtures With Drop Wire of Street Lighting Network-[Road 17]-[SW-14] | 2026-11-07 → 2026-12-02 (+25d) | 2026-11-26 → 2026-12-22 (+26d) | -72d → -94d |  |
| DPB | **Distrubution Panel Boards** | 2026-10-06 → 2026-10-13 (+7d) | 2026-11-02 → 2026-11-09 (+7d) |  |  |
| CO-R17.S14-SL-170 | Foundation Excavation Works For Panel Boards of Street Lighting Network-[Road 17]-[SW-14] | 2026-10-06 → 2026-10-13 (+7d) | 2026-10-26 → 2026-11-02 (+7d) | -29d → -35d |  |
| CO-R17.S14-SL-180 | Installation Works for Panel Board Concrete Foundations of Street Lighting Network-[Road 17]-[SW-14] | 2026-10-10 → 2026-10-17 (+7d) | 2026-10-29 → 2026-11-05 (+7d) | -29d → -35d |  |
| CO-R17.S14-SL-220 | A wall of concrete blocks to install the KWH meter of Street Lighting Network-[Road 17]-[SW-14] | 2026-10-10 → 2026-10-17 (+7d) | 2026-10-29 → 2026-11-05 (+7d) | -26d → -32d |  |
| CO-R17.S14-SL-190 | Installation Works for Lighting Panel Boards of Street Lighting Network-[Road 17]-[SW-14] | 2026-10-13 → 2026-10-20 (+7d) | 2026-11-02 → 2026-11-09 (+7d) | -29d → -35d |  |
| PW | **Potable Water Network** |  | 2026-11-09 → 2026-11-17 (+8d) |  |  |
| CO-R17.S14-PW-100 | Trench Excavation and Bedding Works for Main Lines of Potable Water Network-[Road 17]-[SW-14] |  |  |  | CO-R17.S14-EW-110, CO-R17.S14-EW-100, CO-R17.S14-SW-130 FF, CO-R17.S14-SD-130 → CO-R17.S14-EW-110, CO-R17.S14-EW-100, CO-R17.S14-SW-130, CO-R17.S14-SD-130 |
| CO-R17.S14-PW-130 | Trench Backfilling and Compaction Works for Main Lines of Potable Water Network-[Road 17]-[SW-14] |  |  |  | CO-R17.S14-PW-110 SS+3d, CO-R17.S14-PW-110 FF+3d → CO-R17.S14-PW-110 SS+3d, CO-R17.S14-PW-110 FF+3d, CO-R16.S12-PW-130, CO-R17.S14-PW-210 FF |
| CO-R17.S14-PW-210 | Installation Works for Main Line Valves and Valve Chambers of Potable Water Network-[Road 17]-[SW-14] |  |  |  | CO-R17.S14-PW-130 → CO-R17.S14-PW-110 |
| FH | **Fire Hydrant** | 2026-10-06 → 2026-10-14 (+8d) | 2026-11-09 → 2026-11-17 (+8d) |  |  |
| CO-R17.S14-PW-140 | Excavation Works for Fire Hydrants of Potable Water Network-[Road 17]-[SW-14] | 2026-10-06 → 2026-10-14 (+8d) | 2026-10-12 → 2026-10-20 (+8d) | 8d → -15d | CO-R17.S14-PW-110 SS+3d, CO-R17.S14-PW-110 FF+3d, CO-R17.S14-EW-110, CO-R17.S14-SW-130 SS+3d, CO-R17.S14-SW-130 FF+3d → CO-R17.S14-PW-110 SS+3d, CO-R17.S14-PW-110 FF+3d, CO-R17.S14-EW-110, CO-R17.S14-SW-130 SS+3d, CO-R17.S14-SW-130 FF+3d, CO-R17.S14-SW-210 |
| CO-R17.S14-PW-150 | Installation Works for Fire Hydrant of Potable Water Network-[Road 17]-[SW-14] | 2026-10-27 → 2026-11-04 (+8d) | 2026-11-02 → 2026-11-10 (+8d) | -4d → -27d |  |
| CO-R17.S14-PW-160 | Trench Backfilling and Compaction Works for Fire Hydrants of Potable Water Network-[Road 17]-[SW-14] | 2026-11-03 → 2026-11-11 (+8d) | 2026-11-09 → 2026-11-17 (+8d) | -4d → -27d |  |
| TE | **Telecom Network** |  | 2026-10-29 → 2026-11-05 (+7d) |  |  |
| CO-R17.S14-TE-100 | Trench Excavation and Bedding Works for Ducts of Telecom Network-[Road 17]-[SW-14] |  |  |  | CO-R17.S14-EW-110, CO-R17.S13-TE-100 SS → CO-R17.S14-EW-110, CO-R17.S14-SL-160 SS+5d, CO-R17.S14-SL-160 FF+5d, CO-R17.S13-TE-100 |
| CO-R17.S14-TE-110 | Pipes Laying Works for Ducts of Telecom Network-[Road 17]-[SW-14] |  |  |  | CO-R17.S14-TE-100, PRO-R17-TE-DL-100 FF+3d → CO-R17.S14-TE-100, CO-R16.S12-TE-110, PRO-R17-TE-DL-100 FF+3d |
| CO-R17.S14-TE-120 | Pouring Plain Concrete Above Ducts of Telecom Network-[Road 17]-[SW-14] |  |  |  | CO-R17.S14-TE-110 → CO-R17.S14-TE-110, CO-R16.S12-TE-120 |
| CO-R17.S14-TE-130 | Trench Backfilling and Compaction Works for Ducts of Telecom Network-[Road 17]-[SW-14] |  |  |  | CO-R17.S14-TE-120 → CO-R17.S14-TE-120, CO-R16.S12-TE-130 |
| MH | **Manholes Works** | 2026-10-06 → 2026-10-13 (+7d) | 2026-10-29 → 2026-11-05 (+7d) |  |  |
| CO-R17.S14-TE-140 | Excavation Works for Manholes of Telecom Network-[Road 17]-[SW-14] | 2026-10-06 → 2026-10-13 (+7d) | 2026-10-13 → 2026-10-20 (+7d) | -49d → -55d |  |
| CO-R17.S14-TE-150 | Installation Works for Manholes of Telecom Network-[Road 17]-[SW-14] | 2026-10-14 → 2026-10-21 (+7d) | 2026-10-21 → 2026-10-28 (+7d) | -49d → -55d |  |
| CO-R17.S14-TE-160 | Backfilling Works for Manholes of Telecom Network-[Road 17]-[SW-14] | 2026-10-22 → 2026-10-29 (+7d) | 2026-10-29 → 2026-11-05 (+7d) | -49d → -55d |  |
| CO-R17.S14-RD-P-100 | Capping and Subgrade Layer for Road Works-[Road 17]-[SW-14] |  |  |  | CO-R17.S14-SD-130, CO-R17.S14-SW-130, CO-R17.S14-PW-130, PRO-R17-RD-DL-120 FF+3d → CO-R17.S14-SD-130, CO-R17.S14-SW-130, CO-R17.S14-PW-130, PRO-R17-RD-DL-120 FF+3d, CO-R17.S14-TE-130, CO-R17.S14-SL-160 SS+3d, CO-R17.S14-SL-160 FF+3d |

| ID | Task | Start | Finish | Duration | Total float | Predecessors | Other |
| --- | --- | --- | --- | --- | --- | --- | --- |
| CO-R17.S14-RD-P-110 | Aggregate Base Course Layer for Road Works-[Road 17]-[SW-14] |  |  |  |  | CO-R17.S14-RD-P-100 SS+3d, CO-R17.S14-RD-P-100 FF+3d, CO-R17.S14-SD-170 SS+3d, CO-R17.S14-SD-170 FF+3d, PRO-R17-RD-DL-130 FF+3d → CO-R17.S14-RD-P-100 SS+3d, CO-R17.S14-RD-P-100 FF+3d, CO-R17.S14-SD-170 SS+3d, CO-R17.S14-SD-170 FF+3d, CO-R16.S12-RD-P-110, PRO-R17-RD-DL-130 FF+3d |  |
| CO-R17.S14-RD-P-120 | Fixing of Curbstone for Sidewalks Pavement-[Road 17]-[SW-14] |  |  |  |  |  | resources Labor/Helper [288 h]; Block Mason [864 h]; Precast Concrete Kerb, Type K1 [556.87]; Precast Concrete Kerb, Type L1 [1104.89] → Labor/Helper [150 h]; Block Mason [520 h]; Precast Concrete Kerb, Type K1 [556.87]; Precast Concrete Kerb, Type L1 [1104.89] |
| CO-R17.S14-RD-P-130 | Fixing of Interlock Tiles for Sidewalks Pavement-[Road 17]-[SW-14] |  |  |  |  | CO-R17.S14-RD-P-120 SS+3d, CO-R17.S14-RD-P-120 FF+3d, CO-R16.S12-RD-P-130, PRO-R17-RD-DL-100 FF+3d, CO-R17-PW-TF-100, CO-R17-PW-TF-110, CO-R17-PW-TF-120, CO-R17-SW-TF-100, CO-R17-SW-TF-110, CO-R17-SW-TF-130, CO-R17-SD-TF-100, CO-R17-SD-TF-120, CO-R17-SL-TF-240, CO-R17-SL-TF-250, CO-R17-IR-TF-170, CO-R17-MV-TF-240 → CO-R17.S14-RD-P-120 SS+3d, CO-R17.S14-RD-P-120 FF+3d, PRO-R17-RD-DL-100 FF+3d, CO-R17-SD-TF-120 |  |
| 1 | **Road 18 Local 1 ( 479 LM )** |  | 2026-11-02 → 2026-11-22 (+20d) |  |  |  |  |
| CO-R18.S15-SW-220 | Trench Excavation and Bedding Works for Main Lines of Sewage Network-[Road 18]-[SW-15] |  |  | 6d → 12d |  |  |  |
| CO-R18.S15-SW-240 | Trench Backfilling and Compaction Works for Main Lines of Sewage Network-[Road 18]-[SW-15] |  |  |  |  | CO-R18.S15-SW-230 → CO-R18.S15-SW-230, CO-R18.S15-SW-300 FF |  |
| CO-R18.S15-SW-290 | Backfilling Works for Main Line Manholes of Sewage Network-[Road 18]-[SW-15] |  |  |  |  | CO-R18.S15-SW-270 → CO-R18.S15-SW-280 |  |
| CO-R18.S15-SW-300 | Testing Works for Main Line Manholes of Sewage Network-[Road 18]-[SW-15] |  |  |  |  | CO-R18.S15-SW-290, CO-R18.S15-SW-280 → CO-R18.S15-SW-290 |  |
| CO-R18.S15-SD-230 | Trench Excavation and Bedding Works for Main Lines of Storm Drainage Network-[Road 18]-[SW-15] |  |  |  |  | CO-R18.S15-EW-130, CO-R18.S15-EW-120 → CO-R18.S15-EW-130, CO-R18.S15-EW-120, CO-R18.S15-SW-240, CO-R18.S15-SW-240 FF+3d |  |
| CO-R18.S15-SD-340 | Backfilling Works for Manholes of Storm Drainage Network-[Road 18]-[SW-15] |  |  |  |  | CO-R18.S15-SD-320 → CO-R18.S15-SD-330 |  |
| CO-R18.S15-SD-290 | Trench Backfilling and Compaction Works for Catch Basins of Storm Drainage Network-[Road 18]-[SW-15] |  |  |  |  | CO-R18.S15-SD-270 → CO-R18.S15-SD-280 |  |
| CO-R18.S15-IR-170 | Trench Backfilling and Compaction Works for Main Lines of Irrigation Network-[Road 18]-[SW-15] |  |  |  |  | CO-R18.S15-IR-150 → CO-R18.S15-IR-160, CO-R18.S15-IR-150 |  |
| CO-R18.S15-IR-160 | Installation Works for Main Line Valves of Irrigation Network-[Road 18]-[SW-15] |  |  |  |  | CO-R18.S15-IR-150, PRO-R18-IR-DL-130 FF+3d → CO-R18.S15-IR-150 |  |
| CO-R18.S15-MV-ML-340 | Trench Excavation and Bedding Works for Medium Voltage Network-[Road 18]-[SW-15] |  |  |  |  | CO-R18.S15-SD-290 SS+3d, CO-R18.S15-SD-290 FF+3d, CO-R18.S15-EW-130, CO-R18.S15-TE-190 SS+3d, CO-R18.S16-SL-160 → CO-R18.S15-SD-290 SS+3d, CO-R18.S15-SD-290 FF+3d, CO-R18.S15-EW-130, CO-R18.S15-TE-190 SS+3d, CO-R18.S15-TE-190 FF+3d, CO-R18.S16-SL-160 |  |
| CO-R18.S15-MV-ML-350 | Cable Laying Works for Medium Voltage Network-[Road 18]-[SW-15] |  |  |  |  |  | resources Labor/Helper [576 h]; Electrician [576 h]; Low Current Technician [576 h]; 33kv 3Cx400 mm² Al XLPE / LLDPE /PVC Cable [807.76]; 33kv 3Cx400 mm² Al XLPE /LLDPE/PVC [2.8] → Labor/Helper [144 h]; Electrician [144 h]; Low Current Technician [144 h]; 33kv 3Cx400 mm² Al XLPE / LLDPE /PVC Cable [807.76]; 33kv 3Cx400 mm² Al XLPE /LLDPE/PVC [2.8] |
| CO-R18.S15-RD-P-160 | Capping and Subgrade Layer for Road Works-[Road 18]-[SW-15] |  |  |  |  | CO-R18.S15-SD-250, CO-R18.S15-SW-240, PRO-R18-RD-DL-220 → CO-R18.S15-SD-250, CO-R18.S15-SW-240, CO-R18.S15-TE-190, CO-R18.S15-TE-220, CO-R18.S15-MV-ML-360 SS+3d, CO-R18.S15-MV-ML-360 FF+3d, PRO-R18-RD-DL-220 |  |
| SW_16 | **SW_16** |  | 2026-11-02 → 2026-11-22 (+20d) |  |  |  |  |
| CO-R18.S16-SW-220 | Trench Excavation and Bedding Works for Main Lines of Sewage Network-[Road 18]-[SW-16] |  |  | 6d → 12d |  | CO-R18.S16-EW-130, ENG-MS-SW-ML-A-110, ENG-SH-SW-ML-A-110, CO-R18.S15-SW-220 SS → CO-R18.S16-EW-130, ENG-MS-SW-ML-A-110, ENG-SH-SW-ML-A-110, CO-R18.S15-SW-220 |  |
| CO-R18.S16-SW-240 | Trench Backfilling and Compaction Works for Main Lines of Sewage Network-[Road 18]-[SW-16] |  |  |  |  | CO-R18.S16-SW-230 → CO-R18.S16-SW-230, CO-R18.S16-SW-300 FF, CO-R18.S15-SW-240 |  |
| CO-R18.S16-SW-290 | Backfilling Works for Main Line Manholes of Sewage Network-[Road 18]-[SW-16] |  |  |  |  | CO-R18.S16-SW-270 → CO-R18.S16-SW-280 |  |
| CO-R18.S16-SW-300 | Testing Works for Main Line Manholes of Sewage Network-[Road 18]-[SW-16] |  |  |  |  | CO-R18.S16-SW-290, CO-R18.S16-SW-280 → CO-R18.S16-SW-290 |  |
| CO-R18.S16-SD-340 | Backfilling Works for Manholes of Storm Drainage Network-[Road 18]-[SW-16] |  |  |  |  | CO-R18.S16-SD-320 → CO-R18.S16-SD-330 |  |
| CO-R18.S16-SD-290 | Trench Backfilling and Compaction Works for Catch Basins of Storm Drainage Network-[Road 18]-[SW-16] |  |  |  |  | CO-R18.S16-SD-270 → CO-R18.S16-SD-280 |  |
| SL | **Street Lighting Network** |  | 2026-11-02 → 2026-11-22 (+20d) |  |  |  |  |
| LP | **Lighting Poles Works** |  | 2026-10-27 → 2026-11-22 (+26d) |  |  |  |  |
| CO-R18.S16-SL-200 | Testing Works for Lighting Poles of Street Lighting Network-[Road 18]-[SW-16] | 2026-10-06 → 2026-10-13 (+7d) | 2026-10-11 → 2026-10-18 (+7d) |  | -8.25d → -14.25d |  |  |
| CO-R18.S16-SL-130 | Installation Works for Lighting Fixtures With Drop Wire of Street Lighting Network-[Road 18]-[SW-16] | 2026-10-07 → 2026-11-02 (+26d) | 2026-10-27 → 2026-11-22 (+26d) |  | -22.25d → -44.25d |  |  |
| DPB | **Distrubution Panel Boards** | 2026-10-06 → 2026-10-13 (+7d) | 2026-11-02 → 2026-11-09 (+7d) |  |  |  |  |
| CO-R18.S16-SL-170 | Foundation Excavation Works For Panel Boards of Street Lighting Network-[Road 18]-[SW-16] | 2026-10-06 → 2026-10-13 (+7d) | 2026-10-26 → 2026-11-02 (+7d) |  | -29d → -35d |  |  |
| CO-R18.S16-SL-180 | Installation Works for Panel Board Concrete Foundations of Street Lighting Network-[Road 18]-[SW-16] | 2026-10-10 → 2026-10-17 (+7d) | 2026-10-29 → 2026-11-05 (+7d) |  | -29d → -35d |  |  |
| CO-R18.S16-SL-220 | A wall of concrete blocks to install the KWH meter of Street Lighting Network-[Road 18]-[SW-16] | 2026-10-10 → 2026-10-17 (+7d) | 2026-10-29 → 2026-11-05 (+7d) |  | -26d → -32d |  |  |
| CO-R18.S16-SL-190 | Installation Works for Lighting Panel Boards of Street Lighting Network-[Road 18]-[SW-16] | 2026-10-13 → 2026-10-20 (+7d) | 2026-11-02 → 2026-11-09 (+7d) |  | -29d → -35d |  |  |
| PW | **Potable Water Network** |  | 2026-10-26 → 2026-11-02 (+7d) |  |  |  |  |
| CO-R18.S16-PW-240 | Pipes Laying and accessories for Main Lines of Potable Water Network-[Road 18]-[SW-16] |  |  |  |  | CO-R18.S16-PW-230, PRO-R18-PW-DL-140 FF+3d → CO-R18.S16-PW-230, PRO-R18-PW-DL-150 FF+3d, PRO-R18-PW-DL-140 FF+3d |  |
| CO-R18.S16-PW-280 | Trench Backfilling and Compaction Works for Main Lines of Potable Water Network-[Road 18]-[SW-16] |  |  |  |  | CO-R18.S16-PW-240 SS+3d, CO-R18.S16-PW-240 FF+3d → CO-R18.S16-PW-240 SS+3d, CO-R18.S16-PW-240 FF+3d, CO-R18.S16-PW-330 FF |  |
| CO-R18.S16-PW-330 | Installation Works for Main Line Valves and Valve Chambers of Potable Water Network-[Road 18]-[SW-16] |  |  |  |  | CO-R18.S16-PW-280, PRO-R18-PW-DL-150 → CO-R18.S16-PW-240 |  |
| FH | **Fire Hydrant** | 2026-10-06 → 2026-10-13 (+7d) | 2026-10-26 → 2026-11-02 (+7d) |  |  |  |  |
| CO-R18.S16-PW-250 | Excavation Works for Fire Hydrants of Potable Water Network-[Road 18]-[SW-16] | 2026-10-06 → 2026-10-13 (+7d) | 2026-10-12 → 2026-10-19 (+7d) |  | 8d → 48d |  |  |
| CO-R18.S16-PW-260 | Installation Works for Fire Hydrant of Potable Water Network-[Road 18]-[SW-16] | 2026-10-13 → 2026-10-20 (+7d) | 2026-10-19 → 2026-10-26 (+7d) |  | 8d → 48d |  |  |
| CO-R18.S16-PW-270 | Trench Backfilling and Compaction Works for Fire Hydrants of Potable Water Network-[Road 18]-[SW-16] | 2026-10-20 → 2026-10-27 (+7d) | 2026-10-26 → 2026-11-02 (+7d) |  | 8d → 48d |  |  |
| CO-R18.S16-TE-170 | Trench Excavation and Bedding Works for Ducts of Telecom Network-[Road 18]-[SW-16] |  |  |  |  | CO-R18.S16-EW-130, CO-R18.S15-TE-170 → CO-R18.S16-EW-130, CO-R18.S16-SL-160 SS+5d, CO-R18.S16-SL-160 FF+5d, CO-R18.S15-TE-170 |  |
| CO-R18.S16-RD-P-160 | Capping and Subgrade Layer for Road Works-[Road 18]-[SW-16] |  |  |  |  | CO-R18.S16-SD-250, CO-R18.S16-SW-240, CO-R18.S16-PW-280 → CO-R18.S16-SD-250, CO-R18.S16-SW-240, CO-R18.S16-PW-280, CO-R18.S16-TE-190, CO-R18.S16-TE-220, CO-R18.S16-SL-160 SS+3d, CO-R18.S16-SL-160 FF+3d |  |
| 3 | **Finishes for Infrastructure Networks** |  | 2027-10-25 → 2027-12-06 (+42d) |  |  |  |  |
| 1 | **Phase 2 Block "J"** |  | 2027-10-25 → 2027-12-06 (+42d) |  |  |  |  |
| 2 | **Road 09 Local 2 ( 2278 LM )** |  | 2027-10-06 → 2027-11-10 (+35d) |  |  |  |  |
| 10 | **Sewage Network** |  | 2027-05-31 → 2027-06-28 (+28d) |  |  |  |  |
| TF | **Testing and Finishes** |  | 2027-05-31 → 2027-06-28 (+28d) |  |  |  |  |
| CO-R09-SW-TF-100 | Final Testing For Main Line of Sewage Network-[Road 09] |  | 2027-05-08 → 2027-06-10 (+33d) |  | -235d → -259d | CO-R09.S01-SW-130, CO-R09.S01-RD-P-100 SS+3d, CO-R09.S01-RD-P-100 FF+3d, CO-R09.S02-RD-P-100 SS+3d, CO-R09.S02-RD-P-100 FF+3d → CO-R09.S01-SW-130, CO-R09.S01-RD-P-100 FF+3d, CO-R09.S02-RD-P-100 FF+3d |  |
| CO-R09-SW-TF-110 | Install Manhole Cover Works for External Finishes of Sewage Network-[Road 09] | 2027-05-09 → 2027-06-12 (+34d) | 2027-05-27 → 2027-06-24 (+28d) |  | -221d → -220d |  |  |
| CO-R09-SW-TF-120 | Main Manhole Internal Finishes (Benching + Insulation) of Sewage Network-[Road 09] | 2027-05-12 → 2027-06-15 (+34d) | 2027-05-31 → 2027-06-28 (+28d) |  | -208d → -220d |  |  |
| 11 | **Storm Drainage Network** |  | 2027-06-15 → 2027-06-29 (+14d) |  |  |  |  |
| TF | **Testing and Finishes** |  | 2027-06-15 → 2027-06-29 (+14d) |  |  |  |  |
| CO-R09-SD-TF-100 | Testing Work for Pipes of Storm Drainage Network-[Road 09] |  | 2027-05-09 → 2027-06-12 (+34d) |  | -235d → -259d | CO-R09.S01-SD-130 SS+3d, PRO-SD-1DL-140, PRO-R09-SD-DL-140 FF+3d, CO-R09.S01-RD-P-100 SS+3d, CO-R09.S01-RD-P-100 FF+3d, CO-R09.S01-SD-130 FF+3d, CO-R09.S01-SD-120 SS, CO-R09.S01-SD-120, ENG-SH-SD-ML-A-110, ENG-MS-SD-ML-A-110, CO-R09.S02-RD-P-100 SS+3d, CO-R09.S02-RD-P-100 FF+3d, CO-R10.S03-ES-SD-210 → CO-R09.S01-SD-130 SS+3d, PRO-SD-1DL-140 FF, PRO-R09-SD-DL-140 FF+3d, CO-R09.S01-RD-P-100 SS+3d, CO-R09.S01-RD-P-100 FF+3d, CO-R09.S01-SD-130 FF+3d, CO-R09.S01-SD-120 SS, CO-R09.S01-SD-120, ENG-SH-SD-ML-A-110, ENG-MS-SD-ML-A-110, CO-R09.S02-RD-P-100 FF+3d |  |
| CO-R09-SD-TF-110 | Install Catch Basin Cover Works for External Finishes of Storm Drainage Network-[Road 09] |  | 2027-05-09 → 2027-04-01 (-38d) |  | -210d → -146d | CO-R09.S01-SD-170 SS+3d, PRO-SD-1DL-150, PRO-R09-SD-DL-150 FF+3d, CO-R09.S01-RD-P-100 FF+3d, CO-R09.S01-RD-P-100, CO-R09.S01-SD-170 FF+3d → CO-R09.S01-SD-170 FF+3d, PRO-SD-1DL-150 FF, PRO-R09-SD-DL-150 FF+3d, CO-R09.S01-RD-P-100 FF+3d, CO-R09.S01-RD-P-100 SS |  |
| CO-R09-SD-TF-120 | Main Manhole Internal Finishes (Benching + Insulation ) for Storm Drainage Network-[Road 09] |  | 2027-06-15 → 2027-06-29 (+14d) |  | -221d → -217d | CO-R09-SD-TF-100 SS+3d, CO-R09-SD-TF-100 FF+3d, PRO-R09-SD-DL-160 FF+3d, PRO-SD-1DL-160, CO-R09-SD-TF-100, CO-R09-SD-TF-110 SS, CO-R09-SD-TF-110, CO-R09-SD-TF-110 FF, CO-R09-SW-TF-110 SS, CO-R09-SW-TF-110, CO-R09-SW-TF-110 FF, ENG-SH-RD-A-100, ENG-SH-RD-A-100 FF, ENG-MS-RD-A-10, ENG-MS-RD-A-10 FF, PRO-R09-SD-DL-100 → CO-R09-SD-TF-100 SS+3d, CO-R09-SD-TF-100 FF+3d, PRO-R09-SD-DL-160 FF+3d, PRO-SD-1DL-160 FF, CO-R09-SD-TF-100 SS, CO-R09-SD-TF-110 SS, CO-R09-SD-TF-110 FF, CO-R09-SW-TF-110 FF, ENG-SH-RD-A-100, ENG-SH-RD-A-100 FF, ENG-MS-RD-A-10, ENG-MS-RD-A-10 FF, PRO-R09-SD-DL-100 |  |
| CO-R09-SD-TF-130 | Catch Basin Internal Finishes (Benching + Insulation ) for Storm Drainage Network-[Road 09] |  | 2027-06-15 → 2027-06-29 (+14d) |  | -162d → -178d | CO-R09-SD-TF-110 SS+3d, CO-R09-SD-TF-110 FF+3d, PRO-R09-SD-DL-160 FF+3d, PRO-SD-1DL-160, CO-R09-SD-TF-100 SS, CO-R09-SD-TF-100, CO-R09-SD-TF-100 FF, CO-R09-SD-TF-110, CO-R09-SW-TF-110 SS, CO-R09-SW-TF-110, CO-R09-SW-TF-110 FF, ENG-SH-RD-A-100, ENG-SH-RD-A-100 FF, ENG-MS-RD-A-10, ENG-MS-RD-A-10 FF → CO-R09-SD-TF-110 SS+3d, CO-R09-SD-TF-110 FF+3d, PRO-R09-SD-DL-160 FF+3d, PRO-SD-1DL-160 FF, CO-R09-SD-TF-100 SS, CO-R09-SD-TF-100 FF, CO-R09-SD-TF-110 SS, CO-R09-SW-TF-110 FF, ENG-SH-RD-A-100, ENG-SH-RD-A-100 FF, ENG-MS-RD-A-10, ENG-MS-RD-A-10 FF |  |
| 9 | **Potable Water Network** | 2027-05-09 → 2027-06-17 (+39d) | 2027-06-21 → 2027-07-25 (+34d) |  |  |  |  |
| TF | **Testing and Finishes** | 2027-05-09 → 2027-06-17 (+39d) | 2027-06-21 → 2027-07-25 (+34d) |  |  |  |  |
| CO-R09-PW-TF-110 | Testing Work for Main Line of Potable Water Network-[Road 09] | 2027-05-09 → 2027-06-17 (+39d) | 2027-05-24 → 2027-06-27 (+34d) |  | -235d → -264d |  |  |
| CO-R09-PW-TF-100 | Final Finishes works and Covers for Valves and Valve Chambers of Potable Water Network-[Road 09] | 2027-05-25 → 2027-06-28 (+34d) | 2027-06-07 → 2027-07-11 (+34d) |  | -226d → -243d |  |  |
| CO-R09-PW-TF-120 | Fire Hydrant Finishies (S.Box + Safety + Marker Post ) of Potable Water Network-[Road 09] | 2027-06-08 → 2027-07-12 (+34d) | 2027-06-21 → 2027-07-25 (+34d) |  | -226d → -243d |  |  |
| 13 | **Irrigation Network** | 2027-05-05 → 2027-06-08 (+34d) | 2027-05-29 → 2027-06-26 (+28d) |  |  |  |  |
| TF | **Testing and Finishes** | 2027-05-05 → 2027-06-08 (+34d) | 2027-05-29 → 2027-06-26 (+28d) |  |  |  |  |
| CO-R09-IR-TF-100 | Final Testing (pressure tests) of Irrigation Network-[Road 09] | 2027-05-05 → 2027-06-08 (+34d) | 2027-05-29 → 2027-06-26 (+28d) |  | -206d → -218d | CO-R09.S01-IR-140, CO-R09.S01-RD-P-100, CO-R09.S02-RD-P-100, CO-R18.S15-IR-160 → CO-R09.S01-IR-140, CO-R09.S01-RD-P-100, CO-R09.S02-RD-P-100 |  |
| 12 | **Street Lighting Network** | 2027-04-03 → 2027-06-03 (+61d) | 2027-07-17 → 2027-09-11 (+56d) |  |  |  |  |
| TR | **Termination and Testing Works** | 2027-04-03 → 2027-06-03 (+61d) | 2027-07-14 → 2027-09-08 (+56d) |  |  |  |  |
| CO-R09-SL-TF-100 | Termination Works For Lighting Poles Cables of Street Lighting Network-[Road 09] | 2027-04-03 → 2027-06-03 (+61d) | 2027-04-15 → 2027-06-16 (+62d) |  | -247.5d → -283.5d |  |  |
| CO-R09-SL-TF-110 | Termination Works For Panel Board Cables of Street Lighting Network-[Road 09] | 2027-06-21 → 2027-08-16 (+56d) | 2027-07-03 → 2027-08-28 (+56d) |  | -247.5d → -283.5d |  |  |
| CO-R09-SL-TF-380 | Testing Works For Panel Board Cables of Street Lighting Network-[Road 09] | 2027-07-03 → 2027-08-28 (+56d) | 2027-07-14 → 2027-09-08 (+56d) |  | -225.5d → -273.5d |  |  |
| ES | **Earthing System Works** | 2027-04-17 → 2027-06-17 (+61d) | 2027-07-17 → 2027-09-11 (+56d) |  |  |  |  |

| ID | Task | Start | Finish | Total float | Predecessors |
| --- | --- | --- | --- | --- | --- |
| CO-R09-SL-ES-100 | Install Earthing System Works for Lighting Poles of Street Lighting Network-[Road 09] | 2027-04-17 → 2027-06-17 (+61d) | 2027-04-29 → 2027-06-30 (+62d) | -247.5d → -283.5d |  |
| CO-R09-SL-ES-110 | Install Earthing System Works for Lighting Panel Boards of Street Lighting Network-[Road 09] | 2027-07-03 → 2027-08-28 (+56d) | 2027-07-17 → 2027-09-11 (+56d) | -247.5d → -283.5d |  |
| 14 | **Medium Voltage Network** | 2027-06-01 → 2027-02-10 (-111d) | 2027-06-19 → 2027-03-01 (-110d) |  |  |
| TT | **Termination and Testing Works** | 2027-06-01 → 2027-02-10 (-111d) | 2027-06-19 → 2027-03-01 (-110d) |  |  |
| CO-R09-MV-TF-100 | Termination Works of Medium Voltage Network-[Road 09] | 2027-06-01 → 2027-02-10 (-111d) | 2027-06-19 → 2027-03-01 (-110d) | -224d → -126d |  |
| 1 | **Road Works** | 2027-07-31 → 2027-09-11 (+42d) | 2027-10-06 → 2027-11-10 (+35d) |  |  |
| 1 | **Bituminous Construction** | 2027-07-31 → 2027-09-11 (+42d) | 2027-08-31 → 2027-10-06 (+36d) |  |  |
| CO-R09-S1-RD-F-100 | Application of Prime Coat Layer for Road Works - S.W 01-[Road 09] | 2027-07-31 → 2027-09-11 (+42d) | 2027-08-14 → 2027-09-26 (+43d) | -247.5d → -283.5d |  |
| CO-R09-S2-RD-F-110 | Application of Prime Coat Layer for Road Works- S.W 02-[Road 09] | 2027-08-07 → 2027-09-11 (+35d) | 2027-08-28 → 2027-10-03 (+36d) | -246.5d → -276.5d |  |
| CO-R09-S1-RD-F-120 | Bituminous Base & Wearing Courses Layers for Road Works- S.W 01-[Road 09] | 2027-08-03 → 2027-09-14 (+42d) | 2027-08-17 → 2027-09-29 (+43d) | -247.5d → -283.5d |  |
| CO-R09-S2-RD-F-130 | Bituminous Base & Wearing Courses Layers for Road Works- S.W 02-[Road 09] | 2027-08-10 → 2027-09-14 (+35d) | 2027-08-31 → 2027-10-06 (+36d) | -246.5d → -276.5d |  |
| TS | **Traffic Signs Boards and Roads Marking** | 2027-08-17 → 2027-09-29 (+43d) | 2027-10-06 → 2027-11-10 (+35d) |  |  |
| CO-R09-S1-RD-F-140 | Application of Road Marking Works For Road Works- S.W 01-[Road 09] | 2027-08-17 → 2027-09-29 (+43d) | 2027-08-31 → 2027-10-13 (+43d) | -247.5d → -283.5d |  |
| CO-R09-S2-RD-F-160 | Application of Road Marking Works For Road Works- S.W 02-[Road 09] | 2027-08-31 → 2027-10-06 (+36d) | 2027-09-18 → 2027-10-24 (+36d) | -246.5d → -276.5d |  |
| CO-R09-S1-RD-F-150 | Installation Works of Traffic Signs Boards For Road Works- S.W 01-[Road 09] | 2027-08-31 → 2027-10-13 (+43d) | 2027-09-14 → 2027-10-27 (+43d) | -247.5d → -283.5d | PRO-RD-1DL-160, ENG-SH-TSB-A-100, CO-R09.S01-RD-P-130, ENG-SH-RD-A-100, ENG-MS-TSB-A-10, ENG-MS-RD-A-10, PRO-R09-RD-DL-140 SS+6d, CO-R09-S1-RD-F-140 → PRO-RD-1DL-160, ENG-SH-TSB-A-100, CO-R09.S01-RD-P-130, ENG-SH-RD-A-100, ENG-MS-TSB-A-10, ENG-MS-RD-A-10, PRO-R09-RD-DL-140 SS+6d, CO-R09-S1-RD-F-140, PRO-RD-1DL-150, CO-R09.S01-RD-P-110 |
| CO-R09-S2-RD-F-170 | Installation Works of Traffic Signs Boards For Road Works- S.W 02-[Road 09] | 2027-09-18 → 2027-10-24 (+36d) | 2027-10-06 → 2027-11-10 (+35d) | -246.5d → -276.5d | PRO-R09-RD-DL-140 FF+6d, CO-R09.S02-RD-P-130, CO-R09-S2-RD-F-160 → PRO-R09-RD-DL-140 FF+6d, CO-R09.S02-RD-P-130, CO-R09-S2-RD-F-160, CO-R09.S02-RD-P-110 |
| 4 | **Road 10 Local 2 ( 2352 LM )** |  | 2027-07-20 → 2027-08-09 (+20d) |  |  |
| 10 | **Sewage Network** | 2027-04-19 → 2027-04-28 (+9d) | 2027-05-25 → 2027-06-03 (+9d) |  |  |
| TF | **Testing and Finishes** | 2027-04-19 → 2027-04-28 (+9d) | 2027-05-25 → 2027-06-03 (+9d) |  |  |
| CO-R10-SW-TF-100 | Final Testing For Main Line of Sewage Network-[Road 10] | 2027-04-19 → 2027-04-28 (+9d) | 2027-05-02 → 2027-05-11 (+9d) | -221d → -229d | CO-R10.S03-ES-RD-100 SS+3d, CO-R10.S03-ES-RD-100 FF+3d, CO-R10.S04-ES-RD-100 SS+3d, CO-R10.S04-ES-RD-100 FF+3d, CO-R09.S02-SW-130, CO-R10.S03-WE-RD-100 SS+3d, CO-R10.S03-WE-RD-100 FF+3d, CO-R10.S04-WE-RD-100 SS+3d, CO-R10.S04-WE-RD-100 FF+3d, CO-R10.S04-ES-SW-210, CO-R10.S04-WE-SW-210 → CO-R10.S03-ES-RD-100 SS+3d, CO-R10.S03-ES-RD-100 FF+3d, CO-R10.S04-ES-RD-100 SS+3d, CO-R10.S04-ES-RD-100 FF+3d, CO-R09.S02-SW-130, CO-R10.S03-WE-RD-100 SS+3d, CO-R10.S03-WE-RD-100 FF+3d, CO-R10.S04-WE-RD-100 SS+3d, CO-R10.S04-WE-RD-100 FF+3d |
| CO-R10-SW-TF-110 | Install Manhole Cover Works for External Finishes of Sewage Network-[Road 10] | 2027-05-03 → 2027-05-12 (+9d) | 2027-05-22 → 2027-05-31 (+9d) | -221d → -229d |  |
| CO-R10-SW-TF-130 | Main Manhole Internal Finishes (Benching + Insulation) of Sewage Network-[Road 10] | 2027-05-06 → 2027-05-22 (+16d) | 2027-05-25 → 2027-06-03 (+9d) | -221d → -229d |  |
| 11 | **Storm Drainage Network** |  | 2027-06-09 → 2027-05-31 (-9d) |  |  |
| TF | **Testing and Finishes** |  | 2027-06-09 → 2027-05-31 (-9d) |  |  |
| CO-R10-SD-TF-100 | Testing Work for Pipes of Storm Drainage Network-[Road 10] |  |  |  | CO-R10.S03-ES-SD-130 SS+3d, CO-R10.S03-ES-RD-100 SS+3d, CO-R10.S03-ES-RD-100 FF+3d, CO-R10.S03-ES-SD-130 FF+3d, CO-R10.S03-ES-SD-120 SS, CO-R10.S03-ES-SD-120, ENG-SH-SD-ML-A-110, ENG-MS-SD-ML-A-110, PRO-R10-SD-DL-140 FF+3d, CO-R10.S04-ES-RD-100 SS+3d, CO-R10.S04-ES-RD-100 FF+3d, CO-R10.S03-WE-SD-130 SS+3d, CO-R10.S03-WE-RD-100 SS+3d, CO-R10.S03-WE-RD-100 FF+3d, CO-R10.S03-WE-SD-130 FF+3d, CO-R10.S03-WE-SD-120 SS, CO-R10.S03-WE-SD-120, CO-R10.S04-WE-RD-100 SS+3d, CO-R10.S04-WE-RD-100 FF+3d, CO-R10.S03-ES-SD-160, CO-R10.S04-ES-SD-210, CO-R10.S04-ES-SD-160, CO-R10.S03-WE-SD-210 → CO-R10.S03-ES-SD-130 SS+3d, CO-R10.S03-ES-SD-130 FF+3d, CO-R10.S03-ES-SD-120 SS, CO-R10.S03-ES-SD-120, ENG-SH-SD-ML-A-110, ENG-MS-SD-ML-A-110, CO-R10.S03-WE-SD-130 SS+3d, CO-R10.S03-WE-SD-130 FF+3d, CO-R10.S03-WE-SD-120 SS, CO-R10.S03-WE-SD-120 |
| CO-R10-SD-TF-110 | Install Catch Basin Cover Works for External Finishes of Storm Drainage Network-[Road 10] |  | 2027-05-10 → 2027-05-11 (+1d) | -209d → -186d | CO-R10.S03-ES-SD-170 SS+3d, PRO-R10-SD-DL-150 FF+3d, CO-R10.S03-ES-RD-100 SS+3d, CO-R10.S03-ES-RD-100 FF+3d, CO-R10.S03-ES-RD-100, CO-R10.S03-ES-SD-170 FF+3d, CO-R10.S04-ES-RD-100 SS+3d, CO-R10.S04-ES-RD-100 FF+3d, CO-R10.S03-WE-SD-170 SS+3d, CO-R10.S03-WE-RD-100 SS+3d, CO-R10.S03-WE-RD-100 FF+3d, CO-R10.S03-WE-RD-100, CO-R10.S03-WE-SD-170 FF+3d, CO-R10.S04-WE-RD-100 SS+3d, CO-R10.S04-WE-RD-100 FF+3d → CO-R10.S03-ES-SD-170 SS+3d, PRO-R10-SD-DL-150 FF+3d, CO-R10.S03-ES-RD-100 FF+3d, CO-R10.S03-ES-RD-100 FF, CO-R10.S03-ES-SD-170 FF+3d, CO-R10.S04-ES-RD-100 FF+3d, CO-R10.S03-WE-SD-170 SS+3d, CO-R10.S03-WE-RD-100 FF+3d, CO-R10.S03-WE-RD-100 FF, CO-R10.S03-WE-SD-170 FF+3d, CO-R10.S04-WE-RD-100 FF+3d |
| CO-R10-SD-TF-120 | Main Manhole Internal Finishes (Benching + Insulation ) for Storm Drainage Network-[Road 10] |  | 2027-06-05 → 2027-05-31 (-5d) | -214d → -198d | CO-R10-SD-TF-100 SS+3d, CO-R10-SD-TF-100 FF+3d, PRO-R10-SD-DL-160 FF+3d, CO-R10-SD-TF-100, CO-R10-SD-TF-110 SS, CO-R10-SD-TF-110, CO-R10-SD-TF-110 FF, CO-R10-SW-TF-110 SS, CO-R10-SW-TF-110, CO-R10-SW-TF-110 FF, ENG-SH-RD-A-100, ENG-SH-RD-A-100 FF, ENG-MS-RD-A-10, ENG-MS-RD-A-10 FF, PRO-R10-SD-DL-100 FF+3d → CO-R10-SD-TF-100 SS+3d, CO-R10-SD-TF-100 FF+3d, PRO-R10-SD-DL-160 FF+3d, CO-R10-SD-TF-100 SS, CO-R10-SD-TF-110 SS, CO-R10-SD-TF-110 FF, CO-R10-SW-TF-110 FF, ENG-SH-RD-A-100, ENG-SH-RD-A-100 FF, ENG-MS-RD-A-10, ENG-MS-RD-A-10 FF, PRO-R10-SD-DL-100 FF+3d |
| CO-R10-SD-TF-130 | Catch Basin Internal Finishes (Benching + Insulation ) for Storm Drainage Network-[Road 10] |  | 2027-06-09 → 2027-05-31 (-9d) | -201d → -137d | CO-R10-SD-TF-110 SS+3d, CO-R10-SD-TF-110 FF+3d, PRO-R10-SD-DL-160 FF+3d, CO-R10-SD-TF-100 SS, CO-R10-SD-TF-100, CO-R10-SD-TF-100 FF, CO-R10-SD-TF-110, CO-R10-SW-TF-110 SS, CO-R10-SW-TF-110, CO-R10-SW-TF-110 FF, ENG-SH-RD-A-100, ENG-SH-RD-A-100 FF, ENG-MS-RD-A-10, ENG-MS-RD-A-10 FF → CO-R10-SD-TF-110 SS+3d, CO-R10-SD-TF-110 FF+3d, PRO-R10-SD-DL-160 FF+3d, CO-R10-SD-TF-100 SS, CO-R10-SD-TF-100 FF, CO-R10-SD-TF-110 SS, CO-R10-SW-TF-110 FF, ENG-SH-RD-A-100, ENG-SH-RD-A-100 FF, ENG-MS-RD-A-10, ENG-MS-RD-A-10 FF |
| 9 | **Potable Water Network** | 2027-04-26 → 2027-03-15 (-42d) | 2027-06-07 → 2027-07-11 (+34d) |  |  |
| TF | **Testing and Finishes** | 2027-04-26 → 2027-03-15 (-42d) | 2027-06-07 → 2027-07-11 (+34d) |  |  |
| CO-R10-PW-TF-100 | Final Finishes works and Covers for Valves and Valve Chambers of Potable Water Network-[Road 10] | 2027-04-26 → 2027-03-15 (-42d) | 2027-05-09 → 2027-03-28 (-42d) | -215d → -179d |  |
| CO-R10-PW-TF-120 | Fire Hydrant Finishies (S.Box + Safety + Marker Post ) of Potable Water Network-[Road 10] | 2027-05-10 → 2027-03-29 (-42d) | 2027-05-29 → 2027-04-11 (-48d) | -215d → -179d |  |
| CO-R10-PW-TF-110 | Testing Work for Main Line of Potable Water Network-[Road 10] | 2027-05-25 → 2027-06-28 (+34d) | 2027-06-07 → 2027-07-11 (+34d) | -235d → -264d |  |
| 13 | **Irrigation Network** | 2027-04-29 → 2027-05-09 (+10d) | 2027-05-10 → 2027-05-25 (+15d) |  |  |
| TF | **Testing and Finishes** | 2027-04-29 → 2027-05-09 (+10d) | 2027-05-10 → 2027-05-25 (+15d) |  |  |
| CO-R10-IR-TF-120 | Final Testing (pressure tests) of Irrigation Network-[Road 10] | 2027-04-29 → 2027-05-09 (+10d) | 2027-05-10 → 2027-05-25 (+15d) | -212d → -220d | CO-R10.S03-ES-IR-130, CO-R10.S03-ES-RD-100, CO-R10.S04-ES-RD-100, CO-R10.S03-WE-IR-130, CO-R10.S03-WE-RD-100, CO-R10.S04-WE-RD-100, CO-R10.S03-ES-IR-120, CO-R10.S03-WE-IR-120 → CO-R10.S03-ES-IR-130, CO-R10.S03-ES-RD-100, CO-R10.S04-ES-RD-100, CO-R10.S03-WE-IR-130, CO-R10.S03-WE-RD-100, CO-R10.S04-WE-RD-100 |
| 12 | **Street Lighting Network** | 2027-01-02 → 2027-03-15 (+72d) | 2027-04-08 → 2027-05-31 (+53d) |  |  |
| TR | **Termination and Testing Works** | 2027-01-02 → 2027-03-15 (+72d) | 2027-04-08 → 2027-05-31 (+53d) |  |  |
| CO-R10-SL-TF-140 | Termination Works For Lighting Poles Cables of Street Lighting Network-[Road 10] | 2027-01-02 → 2027-03-15 (+72d) | 2027-01-14 → 2027-03-28 (+73d) | -187d → -245d |  |
| CO-R10-SL-TF-150 | Termination Works For Panel Board Cables of Street Lighting Network-[Road 10] | 2027-03-24 → 2027-05-10 (+47d) | 2027-04-06 → 2027-05-29 (+53d) | -208d → -248d |  |
| CO-R10-SL-TF-380 | Testing Works For Panel Board Cables of Street Lighting Network-[Road 10] | 2027-04-07 → 2027-05-30 (+53d) | 2027-04-08 → 2027-05-31 (+53d) | -188d → -228d |  |
| ES | **Earthing System Works** | 2027-01-16 → 2027-03-29 (+72d) | 2027-02-15 → 2027-04-28 (+72d) |  |  |
| CO-R10-SL-ES-140 | Install Earthing System Works for Lighting Poles of Street Lighting Network-[Road 10] | 2027-01-16 → 2027-03-29 (+72d) | 2027-01-28 → 2027-04-11 (+73d) | -187d → -245d |  |
| CO-R10-SL-ES-150 | Install Earthing System Works for Lighting Panel Boards of Street Lighting Network-[Road 10] | 2027-02-02 → 2027-04-15 (+72d) | 2027-02-15 → 2027-04-28 (+72d) | -187d → -245d |  |
| 14 | **Medium Voltage Network** | 2027-04-19 → 2026-10-13 (-188d) | 2027-04-26 → 2026-10-20 (-188d) |  |  |
| TT | **Termination and Testing Works** | 2027-04-19 → 2026-10-13 (-188d) | 2027-04-26 → 2026-10-20 (-188d) |  |  |
| CO-R10-MV-TF-140 | Termination Works of Medium Voltage Network-[Road 10] | 2027-04-19 → 2026-10-13 (-188d) | 2027-04-26 → 2026-10-20 (-188d) | -185d → -28d |  |
| 1 | **Road Works** | 2027-06-20 → 2027-07-12 (+22d) | 2027-07-20 → 2027-08-09 (+20d) |  |  |
| 1 | **Bituminous Construction** | 2027-06-20 → 2027-07-12 (+22d) | 2027-07-06 → 2027-07-26 (+20d) |  |  |
| CO-R10-S03-RD-F-110 | Application of Prime Coat Layer for Road Works- S.W 05-[Road 10] | 2027-06-20 → 2027-07-12 (+22d) | 2027-06-30 → 2027-07-22 (+22d) | -216d → -235d |  |
| CO-R10-S04-RD-F-140 | Application of Prime Coat Layer for Road Works- S.W 06-[Road 10] | 2027-06-22 → 2027-07-12 (+20d) | 2027-07-03 → 2027-07-22 (+19d) | -216d → -233d |  |
| CO-R10-S03-RD-F-120 | Bituminous Base & Wearing Courses Layers for Road Works- S.W 05-[Road 10] | 2027-06-23 → 2027-07-15 (+22d) | 2027-07-04 → 2027-07-26 (+22d) | -216d → -235d |  |
| CO-R10-S04-RD-F-150 | Bituminous Base & Wearing Courses Layers for Road Works- S.W 06-[Road 10] | 2027-06-26 → 2027-07-15 (+19d) | 2027-07-06 → 2027-07-26 (+20d) | -216d → -233d |  |
| TS | **Traffic Signs Boards and Roads Marking** | 2027-07-05 → 2027-07-27 (+22d) | 2027-07-20 → 2027-08-09 (+20d) |  |  |
| CO-R10-S03-RD-F-100 | Installation Works of Traffic Signs Boards For Road Works- S.W 05-[Road 10] | 2027-07-05 → 2027-07-27 (+22d) | 2027-07-18 → 2027-08-09 (+22d) | -216d → -235d |  |
| CO-R10-S03-RD-F-160 | Application of Road Marking Works For Road Works- S.W 05-[Road 10] | 2027-07-05 → 2027-07-27 (+22d) | 2027-07-18 → 2027-08-09 (+22d) | -216d → -235d |  |
| CO-R10-S04-RD-F-170 | Application of Road Marking Works For Road Works- S.W 06-[Road 10] | 2027-07-07 → 2027-07-27 (+20d) | 2027-07-20 → 2027-08-09 (+20d) | -216d → -233d |  |
| CO-R10-S04-RD-F-130 | Installation Works of Traffic Signs Boards For Road Works- S.W 06-[Road 10] | 2027-07-10 → 2027-07-29 (+19d) | 2027-07-20 → 2027-08-09 (+20d) | -215d → -232d |  |
| 5 | **Road 11 Local 1 ( 670 LM )** |  | 2027-08-30 → 2027-08-21 (-9d) |  |  |
| 10 | **Sewage Network** | 2027-05-03 → 2027-05-12 (+9d) | 2027-06-08 → 2027-06-17 (+9d) |  |  |
| TF | **Testing and Finishes** | 2027-05-03 → 2027-05-12 (+9d) | 2027-06-08 → 2027-06-17 (+9d) |  |  |
| CO-R11-SW-TF-100 | Final Testing For Main Line of Sewage Network-[Road 11] | 2027-05-03 → 2027-05-12 (+9d) | 2027-05-22 → 2027-05-31 (+9d) | -221d → -229d | CO-R11.S05-SW-130, CO-R11.S05-RD-P-100 SS+3d, CO-R11.S05-RD-P-100 FF+3d, CO-R10-SW-TF-100, CO-R11.S06-RD-P-100 SS+3d, CO-R11.S06-RD-P-100 FF+3d, CO-R11.S06-SW-130, CO-R11.S05-SW-210 → CO-R11.S05-SW-130, CO-R11.S05-RD-P-100 SS+3d, CO-R11.S05-RD-P-100 FF+3d, CO-R10-SW-TF-100, CO-R11.S06-RD-P-100 SS+3d, CO-R11.S06-RD-P-100 FF+3d, CO-R11.S06-SW-130, CO-R11.S06-SW-210 |
| CO-R11-SW-TF-110 | Install Manhole Cover Works for External Finishes of Sewage Network-[Road 11] | 2027-05-23 → 2027-06-01 (+9d) | 2027-06-05 → 2027-06-14 (+9d) | -221d → -229d |  |
| CO-R11-SW-TF-130 | Main Manhole Internal Finishes (Benching + Insulation) of Sewage Network-[Road 11] | 2027-05-26 → 2027-06-05 (+10d) | 2027-06-08 → 2027-06-17 (+9d) | -221d → -229d |  |
| 11 | **Storm Drainage Network** |  | 2027-06-28 → 2027-06-14 (-14d) |  |  |
| TF | **Testing and Finishes** |  | 2027-06-28 → 2027-06-14 (-14d) |  |  |
| CO-R11-SD-TF-130 | Catch Basin Internal Finishes (Benching + Insulation ) for Storm Drainage Network-[Road 11] |  | 2027-06-28 → 2027-06-14 (-14d) | -201d → -149d | CO-R11-SD-TF-110 SS+3d, CO-R11-SD-TF-110 FF+3d, PRO-R11-SD-DL-160 FF+3d, CO-R11-SD-TF-100 SS, CO-R11-SD-TF-100, CO-R11-SD-TF-100 FF, CO-R11-SD-TF-110, CO-R11-SW-TF-110 SS, CO-R11-SW-TF-110, CO-R11-SW-TF-110 FF, ENG-SH-RD-A-100, ENG-SH-RD-A-100 FF, CO-R10-SD-TF-130, ENG-MS-RD-A-10, ENG-MS-RD-A-10 FF → CO-R11-SD-TF-110 FF+3d, PRO-R11-SD-DL-160 FF+3d, CO-R11-SD-TF-100 FF, CO-R11-SD-TF-110 FF, CO-R11-SW-TF-110 FF, ENG-SH-RD-A-100, ENG-SH-RD-A-100 FF, CO-R10-SD-TF-130 SS, ENG-MS-RD-A-10, ENG-MS-RD-A-10 FF |
| CO-R11-SD-TF-120 | Main Manhole Internal Finishes (Benching + Insulation ) for Storm Drainage Network-[Road 11] |  | 2027-06-19 → 2027-06-14 (-5d) | -214d → -188d | CO-R11-SD-TF-100 SS+3d, CO-R11-SD-TF-100 FF+3d, PRO-R11-SD-DL-160 FF+3d, CO-R11-SD-TF-100, CO-R11-SD-TF-110 SS, CO-R11-SD-TF-110, CO-R11-SD-TF-110 FF, CO-R11-SW-TF-110 SS, CO-R11-SW-TF-110, CO-R11-SW-TF-110 FF, ENG-SH-RD-A-100, ENG-SH-RD-A-100 FF, CO-R10-SD-TF-120, ENG-MS-RD-A-10, ENG-MS-RD-A-10 FF, PRO-R11-SD-DL-100 FF+3d → CO-R11-SD-TF-100 FF+3d, PRO-R11-SD-DL-160 FF+3d, CO-R11-SD-TF-100 FF, CO-R11-SD-TF-110 FF, CO-R11-SW-TF-110 FF, ENG-SH-RD-A-100, ENG-SH-RD-A-100 FF, CO-R10-SD-TF-120 SS, ENG-MS-RD-A-10, ENG-MS-RD-A-10 FF, PRO-R11-SD-DL-100 FF+3d |
| CO-R11-SD-TF-100 | Testing Work for Pipes of Storm Drainage Network-[Road 11] |  |  |  | CO-R11.S05-SD-130 SS+3d, PRO-R11-SD-DL-140 FF+3d, CO-R11.S05-RD-P-100 SS+3d, CO-R11.S05-RD-P-100 FF+3d, CO-R11.S05-SD-130 FF+3d, CO-R11.S05-SD-120 SS, CO-R11.S05-SD-120, ENG-SH-SD-ML-A-110, CO-R10-SD-TF-100, ENG-MS-SD-ML-A-110, CO-R11.S06-RD-P-100 SS+3d, CO-R11.S06-RD-P-100 FF → CO-R11.S05-SD-130 SS+3d, CO-R11.S05-RD-P-100 SS+3d, CO-R11.S05-RD-P-100 FF+3d, CO-R11.S05-SD-130 FF+3d, CO-R11.S05-SD-120 SS, CO-R11.S05-SD-120, ENG-SH-SD-ML-A-110, CO-R10-SD-TF-100, ENG-MS-SD-ML-A-110, CO-R11.S06-RD-P-100 SS+3d, CO-R11.S06-RD-P-100 FF |
| CO-R11-SD-TF-110 | Install Catch Basin Cover Works for External Finishes of Storm Drainage Network-[Road 11] |  | 2027-05-30 → 2027-05-06 (-24d) | -209d → -160d | CO-R11.S05-SD-170 SS+3d, PRO-R11-SD-DL-150 FF+3d, CO-R11.S05-RD-P-100 SS+3d, CO-R11.S05-RD-P-100 FF+3d, CO-R11.S05-RD-P-100, CO-R11.S05-SD-170 FF+3d, CO-R10-SD-TF-110, CO-R11.S06-RD-P-100 SS+3d, CO-R11.S06-RD-P-100 FF+3d → CO-R11.S05-SD-170 SS+3d, PRO-R11-SD-DL-150 FF+3d, CO-R11.S05-RD-P-100 SS+3d, CO-R11.S05-RD-P-100 FF+3d, CO-R11.S05-RD-P-100, CO-R11.S05-SD-170 FF+3d, CO-R10-SD-TF-110 SS, CO-R11.S06-RD-P-100 SS+3d, CO-R11.S06-RD-P-100 FF+3d |

| ID | Task | Start | Finish | Total float | Predecessors |
| --- | --- | --- | --- | --- | --- |
| 9 | **Potable Water Network** | 2027-05-10 → 2027-03-29 (-42d) | 2027-06-21 → 2027-07-25 (+34d) |  |  |
| TF | **Testing and Finishes** | 2027-05-10 → 2027-03-29 (-42d) | 2027-06-21 → 2027-07-25 (+34d) |  |  |
| CO-R11-PW-TF-100 | Final Finishes works and Covers for Valves and Valve Chambers of Potable Water Network-[Road 11] | 2027-05-10 → 2027-03-29 (-42d) | 2027-05-29 → 2027-04-11 (-48d) | -215d → -179d |  |
| CO-R11-PW-TF-120 | Fire Hydrant Finishies (S.Box + Safety + Marker Post ) of Potable Water Network-[Road 11] | 2027-05-30 → 2027-04-12 (-48d) | 2027-06-12 → 2027-04-25 (-48d) | -215d → -179d |  |
| CO-R11-PW-TF-110 | Testing Work for Main Line of Potable Water Network-[Road 11] | 2027-06-08 → 2027-07-12 (+34d) | 2027-06-21 → 2027-07-25 (+34d) | -235d → -264d | CO-R10-PW-TF-110, CO-R11.S06-PW-210 → CO-R10-PW-TF-110 |
| 13 | **Irrigation Network** | 2027-05-11 → 2027-05-26 (+15d) | 2027-05-27 → 2027-06-06 (+10d) |  |  |
| TF | **Testing and Finishes** | 2027-05-11 → 2027-05-26 (+15d) | 2027-05-27 → 2027-06-06 (+10d) |  |  |
| CO-R11-IR-TF-130 | Final Testing (pressure tests) of Irrigation Network-[Road 11] | 2027-05-11 → 2027-05-26 (+15d) | 2027-05-27 → 2027-06-06 (+10d) | -212d → -220d | CO-R11.S05-IR-130, CO-R11.S05-RD-P-100, CO-R10-IR-TF-120, CO-R11.S06-RD-P-100 → CO-R11.S05-IR-130, CO-R11.S05-RD-P-100, CO-R10-IR-TF-120, CO-R11.S06-RD-P-100, CO-R11.S06-PW-210, CO-R11.S06-PW-160 |
| 12 | **Street Lighting Network** | 2027-04-07 → 2027-06-20 (+74d) | 2027-07-14 → 2027-08-04 (+21d) |  |  |
| TR | **Termination and Testing Works** | 2027-04-07 → 2027-06-20 (+74d) | 2027-07-14 → 2027-08-04 (+21d) |  |  |
| CO-R11-SL-TF-160 | Termination Works For Lighting Poles Cables of Street Lighting Network-[Road 11] | 2027-04-07 → 2027-06-20 (+74d) | 2027-04-20 → 2027-07-03 (+74d) | -204d → -262d |  |
| CO-R11-SL-TF-170 | Termination Works For Panel Board Cables of Street Lighting Network-[Road 11] | 2027-06-29 → 2027-07-20 (+21d) | 2027-07-12 → 2027-08-02 (+21d) | -274d → -292d |  |
| CO-R11-SL-TF-380 | Testing Works For Panel Board Cables of Street Lighting Network-[Road 11] | 2027-07-13 → 2027-08-03 (+21d) | 2027-07-14 → 2027-08-04 (+21d) | -264d → -282d |  |
| 14 | **Medium Voltage Network** | 2027-07-12 → 2027-01-12 (-181d) | 2027-07-19 → 2027-01-19 (-181d) |  |  |
| TT | **Termination and Testing Works** | 2027-07-12 → 2027-01-12 (-181d) | 2027-07-19 → 2027-01-19 (-181d) |  |  |
| CO-R11-MV-TF-160 | Termination Works of Medium Voltage Network-[Road 11] | 2027-07-12 → 2027-01-12 (-181d) | 2027-07-19 → 2027-01-19 (-181d) | -245d → -99d | CO-R10.S03-ES-MV-170, CO-R11.S05-MV-120, CO-R10-MV-TF-140, PRO-R11-MV-DL-110 FF+3d, CO-R17.S13-MV-170, CO-R10.S03-WE-MV-170 → CO-R10.S03-ES-MV-170, CO-R11.S05-MV-120, CO-R10-MV-TF-140, PRO-R11-MV-DL-110 FF+3d, CO-R17.S13-MV-170, CO-R10.S03-WE-MV-170, PRO-R10-MV-DL-120 |
| 1 | **Road Works** |  | 2027-08-30 → 2027-08-21 (-9d) |  |  |
| 1 | **Bituminous Construction** |  | 2027-08-18 → 2027-08-09 (-9d) |  |  |
| CO-R11-S05-RD-F-110 | Application of Prime Coat Layer for Road Works- S.W 07-[Road 11] |  |  |  | CO-R10-S03-RD-F-110, CO-R11.S05-RD-P-130, CO-SD-PO-K2-130 → CO-R11-SD-TF-100 |
| CO-R11-S06-RD-F-140 | Application of Prime Coat Layer for Road Works- S.W 08-[Road 11] |  |  |  | CO-R10-S04-RD-F-140, PRO-R11-RD-DL-160 FF+3d, CO-R11.S06-RD-P-130, CO-R11-S05-RD-F-110 SS, CO-SD-PO-K2-130 → PRO-R11-RD-DL-160 FF+3d, CO-R11-S05-RD-F-110 SS |
| CO-R11-S05-RD-F-120 | Bituminous Base & Wearing Courses Layers for Road Works- S.W 07-[Road 11] | 2027-08-05 → 2027-07-27 (-9d) | 2027-08-18 → 2027-08-09 (-9d) | -243d → -235d |  |
| CO-R11-S06-RD-F-150 | Bituminous Base & Wearing Courses Layers for Road Works- S.W 08-[Road 11] | 2027-08-05 → 2027-07-27 (-9d) | 2027-08-18 → 2027-08-09 (-9d) | -241d → -233d |  |
| TS | **Traffic Signs Boards and Roads Marking** | 2027-08-19 → 2027-08-10 (-9d) | 2027-08-30 → 2027-08-21 (-9d) |  |  |
| CO-R11-S05-RD-F-100 | Installation Works of Traffic Signs Boards For Road Works- S.W 07-[Road 11] | 2027-08-19 → 2027-08-10 (-9d) | 2027-08-30 → 2027-08-21 (-9d) | -243d → -235d |  |
| CO-R11-S05-RD-F-160 | Application of Road Marking Works For Road Works- S.W 07-[Road 11] | 2027-08-19 → 2027-08-10 (-9d) | 2027-08-30 → 2027-08-21 (-9d) | -243d → -235d |  |
| CO-R11-S06-RD-F-130 | Installation Works of Traffic Signs Boards For Road Works- S.W 08-[Road 11] | 2027-08-19 → 2027-08-10 (-9d) | 2027-08-30 → 2027-08-21 (-9d) | -240d → -232d |  |
| CO-R11-S06-RD-F-170 | Application of Road Marking Works For Road Works- S.W 08-[Road 11] | 2027-08-19 → 2027-08-10 (-9d) | 2027-08-30 → 2027-08-21 (-9d) | -241d → -233d |  |
| 6 | **Road 14 Local 1 ( 584 LM )** |  | 2027-09-13 → 2027-09-14 (+1d) |  |  |
| 10 | **Sewage Network** | 2027-05-23 → 2027-06-01 (+9d) | 2027-06-22 → 2027-07-01 (+9d) |  |  |
| TF | **Testing and Finishes** | 2027-05-23 → 2027-06-01 (+9d) | 2027-06-22 → 2027-07-01 (+9d) |  |  |
| CO-R14-SW-TF-100 | Final Testing For Main Line of Sewage Network-[Road 14] | 2027-05-23 → 2027-06-01 (+9d) | 2027-06-05 → 2027-06-14 (+9d) | -221d → -229d | CO-R14.S07-SW-130, CO-R14.S07-RD-P-100 SS+3d, CO-R14.S07-RD-P-100 FF+3d, CO-R11-SW-TF-100, CO-R14.S08-RD-P-100 SS+3d, CO-R14.S08-RD-P-100 FF+3d, CO-R14.S08-SW-130, CO-R14.S08-SW-210, CO-R14.S07-SW-210 → CO-R14.S07-SW-130, CO-R14.S07-RD-P-100 SS+3d, CO-R14.S07-RD-P-100 FF+3d, CO-R11-SW-TF-100, CO-R14.S08-RD-P-100 SS+3d, CO-R14.S08-RD-P-100 FF+3d, CO-R14.S08-SW-130, CO-R14.S08-SW-210 |
| CO-R14-SW-TF-110 | Install Manhole Cover Works for External Finishes of Sewage Network-[Road 14] | 2027-06-06 → 2027-06-15 (+9d) | 2027-06-19 → 2027-06-28 (+9d) | -221d → -229d | CO-R14.S07-SW-130 SS+3d, PRO-R14-SW-DL-120 FF+3d, CO-R14-SW-TF-100, CO-R14.S07-SW-130 FF+3d, CO-R14.S07-RD-P-100 SS+3d, CO-R14.S07-RD-P-100 FF+3d, CO-R14.S07-SW-120 SS, CO-R14.S07-SW-120, CO-R14.S07-SW-120 FF, ENG-SH-SW-ML-A-110, ENG-SH-SW-ML-A-110 FF, CO-R11-SW-TF-110, ENG-MS-SW-ML-A-110, ENG-MS-SW-ML-A-110 FF, CO-R14.S08-RD-P-100 SS+3d, CO-R14.S08-RD-P-100 FF+3d, CO-R14.S08-SW-130 SS+3d, CO-R14.S08-SW-130 FF+3d → CO-R14.S07-SW-130 SS+3d, PRO-R14-SW-DL-120 FF+3d, CO-R14-SW-TF-100, CO-R14.S07-SW-130 FF+3d, CO-R14.S07-RD-P-100 SS+3d, CO-R14.S07-RD-P-100 FF+3d, CO-R14.S07-SW-120 SS, CO-R14.S07-SW-120, CO-R14.S07-SW-120 FF, ENG-SH-SW-ML-A-110, ENG-SH-SW-ML-A-110 FF, CO-R11-SW-TF-110, ENG-MS-SW-ML-A-110, ENG-MS-SW-ML-A-110 FF, CO-R14.S08-RD-P-100 SS+3d, CO-R14.S08-RD-P-100 FF+3d, CO-R14.S08-SW-130 SS+3d, CO-R14.S08-SW-130 FF+3d, CO-R14.S07-SW-210 |
| CO-R14-SW-TF-130 | Main Manhole Internal Finishes (Benching + Insulation) of Sewage Network-[Road 14] | 2027-06-09 → 2027-06-19 (+10d) | 2027-06-22 → 2027-07-01 (+9d) | -221d → -229d |  |
| CO-R14-SD-TF-100 | Testing Work for Pipes of Storm Drainage Network-[Road 14] |  |  |  | CO-R14.S07-SD-120 SS+2d, CO-R14.S08-SD-120 SS+2d, CO-R14.S07-SD-130, CO-R14.S07-RD-P-100 SS, CO-R14.S07-RD-P-100 FF, CO-R14.S07-SD-210 → CO-R14.S07-SD-120 SS+2d, CO-R14.S08-SD-120 SS+2d, CO-R14.S07-SD-130, CO-R14.S07-RD-P-100 SS, CO-R14.S07-RD-P-100 FF |
| CO-R14-SD-TF-110 | Install Catch Basin Cover Works for External Finishes of Storm Drainage Network-[Road 14] |  |  |  | CO-R14.S07-SD-170 SS+3d, PRO-R14-SD-DL-150 FF+3d, CO-R14.S07-RD-P-100 SS+3d, CO-R14.S07-RD-P-100 FF+3d, CO-R14.S07-RD-P-100, CO-R14.S07-SD-170 FF+3d, CO-R11-SD-TF-110, CO-R14.S08-RD-P-100 SS+3d, CO-R14.S08-RD-P-100 FF+3d, CO-R14-SD-TF-100, CO-R14.S07-SD-170 → CO-R14.S07-SD-170 SS+3d, CO-R14.S07-RD-P-100 SS+3d, CO-R14.S07-RD-P-100 FF+3d, CO-R14.S07-RD-P-100, CO-R14.S07-SD-170 FF+3d, CO-R14.S08-RD-P-100 SS+3d, CO-R14.S08-RD-P-100 FF+3d, CO-R14-SD-TF-100, CO-R14.S07-SD-170 |
| CO-R14-SD-TF-120 | Main Manhole Internal Finishes (Benching + Insulation ) for Storm Drainage Network-[Road 14] |  |  |  | PRO-R14-SD-DL-160 FF+3d, CO-R14-SD-TF-110 SS, CO-R14-SD-TF-110, CO-R14-SD-TF-110 FF, CO-R14-SW-TF-110 SS, CO-R14-SW-TF-110, CO-R14-SW-TF-110 FF, ENG-SH-RD-A-100, ENG-SH-RD-A-100 FF, CO-R11-SD-TF-120, ENG-MS-RD-A-10, ENG-MS-RD-A-10 FF, CO-R14.S07-SD-220 → CO-R14-SD-TF-110 SS, CO-R14-SD-TF-110, CO-R14-SD-TF-110 FF, ENG-SH-RD-A-100, ENG-SH-RD-A-100 FF, ENG-MS-RD-A-10, ENG-MS-RD-A-10 FF, CO-R14.S07-SD-220, PRO-R14-SD-DL-100 FF+3d |
| CO-R14-SD-TF-130 | Catch Basin Internal Finishes (Benching + Insulation ) for Storm Drainage Network-[Road 14] |  |  |  | CO-R14-SD-TF-110 SS+3d, CO-R14-SD-TF-110 FF+3d, PRO-R14-SD-DL-160 FF+3d, CO-R14-SD-TF-110, CO-R14-SW-TF-110 SS, CO-R14-SW-TF-110, CO-R14-SW-TF-110 FF, ENG-SH-RD-A-100, ENG-SH-RD-A-100 FF, CO-R11-SD-TF-130, ENG-MS-RD-A-10, ENG-MS-RD-A-10 FF, CO-R14.S07-SD-150 → CO-R14-SD-TF-110 SS+3d, CO-R14-SD-TF-110 FF+3d, CO-R14-SD-TF-110, ENG-SH-RD-A-100, ENG-SH-RD-A-100 FF, ENG-MS-RD-A-10, ENG-MS-RD-A-10 FF, CO-R14.S07-SD-150 |
| 9 | **Potable Water Network** | 2027-05-30 → 2027-04-12 (-48d) | 2027-07-05 → 2027-08-08 (+34d) |  |  |
| TF | **Testing and Finishes** | 2027-05-30 → 2027-04-12 (-48d) | 2027-07-05 → 2027-08-08 (+34d) |  |  |
| CO-R14-PW-TF-100 | Final Finishes works and Covers for Valves and Valve Chambers of Potable Water Network-[Road 14] | 2027-05-30 → 2027-04-12 (-48d) | 2027-06-12 → 2027-04-25 (-48d) | -215d → -179d | CO-R14.S07-RD-P-100 FS+3d, CO-R11-PW-TF-100, PRO-R14-PW-DL-130 FF+3d, CO-R14.S08-PW-220 → CO-R14.S07-RD-P-100 FS+3d, CO-R11-PW-TF-100, PRO-R14-PW-DL-130 FF+3d |
| CO-R14-PW-TF-120 | Fire Hydrant Finishies (S.Box + Safety + Marker Post ) of Potable Water Network-[Road 14] | 2027-06-13 → 2027-04-26 (-48d) | 2027-06-26 → 2027-05-09 (-48d) | -215d → -179d |  |
| CO-R14-PW-TF-110 | Testing Work for Main Line of Potable Water Network-[Road 14] | 2027-06-22 → 2027-07-26 (+34d) | 2027-07-05 → 2027-08-08 (+34d) | -235d → -264d |  |
| 13 | **Irrigation Network** | 2027-05-29 → 2027-06-07 (+9d) | 2027-06-08 → 2027-06-17 (+9d) |  |  |
| TF | **Testing and Finishes** | 2027-05-29 → 2027-06-07 (+9d) | 2027-06-08 → 2027-06-17 (+9d) |  |  |
| CO-R11-IR-TF-140 | Final Testing (pressure tests) of Irrigation Network-[Road 14] | 2027-05-29 → 2027-06-07 (+9d) | 2027-06-08 → 2027-06-17 (+9d) | -212d → -220d |  |
| 12 | **Street Lighting Network** | 2027-04-21 → 2027-07-04 (+74d) | 2027-07-28 → 2027-08-18 (+21d) |  |  |
| TR | **Termination and Testing Works** | 2027-04-21 → 2027-07-04 (+74d) | 2027-07-28 → 2027-08-18 (+21d) |  |  |
| CO-R11-SL-TF-180 | Termination Works For Lighting Poles Cables of Street Lighting Network-[Road 14] | 2027-04-21 → 2027-07-04 (+74d) | 2027-05-04 → 2027-07-17 (+74d) | -204d → -262d |  |
| CO-R11-SL-TF-190 | Termination Works For Panel Board Cables of Street Lighting Network-[Road 14] | 2027-07-13 → 2027-08-03 (+21d) | 2027-07-26 → 2027-08-16 (+21d) | -274d → -292d |  |
| CO-R14-SL-TF-380 | Testing Works For Panel Board Cables of Street Lighting Network-[Road 14] | 2027-07-27 → 2027-08-17 (+21d) | 2027-07-28 → 2027-08-18 (+21d) | -274d → -292d |  |
| 14 | **Medium Voltage Network** | 2027-07-20 → 2027-01-20 (-181d) | 2027-07-27 → 2027-01-27 (-181d) |  |  |
| TT | **Termination and Testing Works** | 2027-07-20 → 2027-01-20 (-181d) | 2027-07-27 → 2027-01-27 (-181d) |  |  |
| CO-R11-MV-TF-180 | Termination Works of Medium Voltage Network-[Road 14] | 2027-07-20 → 2027-01-20 (-181d) | 2027-07-27 → 2027-01-27 (-181d) | -245d → -99d |  |
| 1 | **Road Works** | 2027-08-15 → 2027-08-17 (+2d) | 2027-09-13 → 2027-09-14 (+1d) |  |  |
| 1 | **Bituminous Construction** | 2027-08-15 → 2027-08-17 (+2d) | 2027-08-31 → 2027-09-02 (+2d) |  |  |
| CO-R11-S07-RD-F-110 | Application of Prime Coat Layer for Road Works- S.W 09-[Road 14] | 2027-08-15 → 2027-08-17 (+2d) | 2027-08-28 → 2027-08-30 (+2d) | -242d → -244d |  |
| CO-R11-S08-RD-F-140 | Application of Prime Coat Layer for Road Works- S.W 10-[Road 14] | 2027-08-15 → 2027-08-17 (+2d) | 2027-08-25 → 2027-08-28 (+3d) | -240d → -242d |  |
| CO-R11-S07-RD-F-120 | Bituminous Base & Wearing Courses Layers for Road Works- S.W 09-[Road 14] | 2027-08-21 → 2027-08-23 (+2d) | 2027-08-31 → 2027-09-02 (+2d) | -242d → -244d |  |
| CO-R11-S08-RD-F-150 | Bituminous Base & Wearing Courses Layers for Road Works- S.W 10-[Road 14] | 2027-08-21 → 2027-08-23 (+2d) | 2027-08-31 → 2027-09-02 (+2d) | -242d → -244d |  |
| TS | **Traffic Signs Boards and Roads Marking** | 2027-08-31 → 2027-09-01 (+1d) | 2027-09-13 → 2027-09-14 (+1d) |  |  |
| CO-R11-S07-RD-F-100 | Installation Works of Traffic Signs Boards For Road Works- S.W 09-[Road 14] | 2027-08-31 → 2027-09-01 (+1d) | 2027-09-13 → 2027-09-14 (+1d) | -243d → -244d | CO-R14.S07-RD-P-130, CO-R11-S05-RD-F-100, CO-R11-S07-RD-F-160 FF → CO-R14.S07-RD-P-130, CO-R11-S05-RD-F-100, CO-R11-S07-RD-F-160 FF, CO-R14.S07-RD-P-110 |
| CO-R11-S07-RD-F-160 | Application of Road Marking Works For Road Works- S.W 09-[Road 14] | 2027-09-01 → 2027-09-04 (+3d) | 2027-09-12 → 2027-09-14 (+2d) | -242d → -244d |  |
| CO-R11-S08-RD-F-130 | Installation Works of Traffic Signs Boards For Road Works- S.W 10-[Road 14] | 2027-09-01 → 2027-09-04 (+3d) | 2027-09-12 → 2027-09-14 (+2d) | -241d → -243d | PRO-R14-RD-DL-140 FF+3d, CO-R14.S08-RD-P-130, CO-R11-S06-RD-F-130, CO-R11-S08-RD-F-170 FF → PRO-R14-RD-DL-140 FF+3d, CO-R14.S08-RD-P-130, CO-R11-S06-RD-F-130, CO-R11-S08-RD-F-170 FF, CO-R14.S08-RD-P-110 |
| CO-R11-S08-RD-F-170 | Application of Road Marking Works For Road Works- S.W 10-[Road 14] | 2027-09-01 → 2027-09-04 (+3d) | 2027-09-12 → 2027-09-14 (+2d) | -242d → -244d |  |
| 7 | **Road 15 Local 1 ( 556 LM )** |  | 2027-09-27 → 2027-09-29 (+2d) |  |  |
| 10 | **Sewage Network** | 2027-06-06 → 2027-06-15 (+9d) | 2027-07-06 → 2027-07-15 (+9d) |  |  |
| TF | **Testing and Finishes** | 2027-06-06 → 2027-06-15 (+9d) | 2027-07-06 → 2027-07-15 (+9d) |  |  |
| CO-R15-SW-TF-100 | Final Testing For Main Line of Sewage Network-[Road 15] | 2027-06-06 → 2027-06-15 (+9d) | 2027-06-19 → 2027-06-28 (+9d) | -221d → -229d | CO-R15.S09-SW-130, CO-R15.S09-RD-P-100 SS+3d, CO-R15.S09-RD-P-100 FF+3d, CO-R14-SW-TF-100, CO-R15.S10-RD-P-100 SS+3d, CO-R15.S10-RD-P-100 FF+3d, CO-R15.S09-SW-210, CO-R15.S10-SW-210 → CO-R15.S09-SW-130, CO-R15.S09-RD-P-100 SS+3d, CO-R15.S09-RD-P-100 FF+3d, CO-R14-SW-TF-100, CO-R15.S10-RD-P-100 SS+3d, CO-R15.S10-RD-P-100 FF+3d |
| CO-R15-SW-TF-110 | Install Manhole Cover Works for External Finishes of Sewage Network-[Road 15] | 2027-06-20 → 2027-06-29 (+9d) | 2027-07-03 → 2027-07-12 (+9d) | -221d → -229d |  |
| CO-R15-SW-TF-130 | Main Manhole Internal Finishes (Benching + Insulation) of Sewage Network-[Road 15] | 2027-06-23 → 2027-07-03 (+10d) | 2027-07-06 → 2027-07-15 (+9d) | -221d → -229d |  |

| ID | Task | Start | Finish | Total float | Predecessors |
| --- | --- | --- | --- | --- | --- |
| 11 | **Storm Drainage Network** |  | 2027-07-21 → 2027-07-31 (+10d) |  |  |
| TF | **Testing and Finishes** |  | 2027-07-21 → 2027-07-31 (+10d) |  |  |
| CO-R15-SD-TF-100 | Testing Work for Pipes of Storm Drainage Network-[Road 15] |  |  |  | CO-R15.S09-SD-130 SS+3d, PRO-R15-SD-DL-140 FF+3d, CO-R15.S09-RD-P-100 SS+3d, CO-R15.S09-RD-P-100 FF+3d, CO-R15.S09-SD-130 FF+3d, CO-R15.S09-SD-120 SS, CO-R15.S09-SD-120, ENG-SH-SD-ML-A-110, ENG-MS-SD-ML-A-110, CO-R15.S10-RD-P-100 SS+3d, CO-R15.S10-RD-P-100 FF+3d, CO-R15.S09-SD-210, CO-R15.S10-SD-210, CO-R15.S09-SD-160, CO-R15.S10-SD-160 → CO-R15.S09-SD-130 SS+3d, CO-R15.S09-RD-P-100 SS+3d, CO-R15.S09-RD-P-100 FF+3d, CO-R15.S09-SD-130 FF+3d, CO-R15.S09-SD-120 SS, CO-R15.S09-SD-120, ENG-SH-SD-ML-A-110, ENG-MS-SD-ML-A-110, CO-R15.S10-RD-P-100 SS+3d, CO-R15.S10-RD-P-100 FF+3d |
| CO-R15-SD-TF-120 | Main Manhole Internal Finishes (Benching + Insulation ) for Storm Drainage Network-[Road 15] |  |  |  | CO-R15-SD-TF-100 SS+3d, CO-R15-SD-TF-100 FF+3d, PRO-R15-SD-DL-160 FF+3d, CO-R15-SD-TF-100, CO-R15-SD-TF-110 SS, CO-R15-SD-TF-110, CO-R15-SD-TF-110 FF, CO-R15-SW-TF-110 SS, CO-R15-SW-TF-110, CO-R15-SW-TF-110 FF, ENG-SH-RD-A-100, ENG-SH-RD-A-100 FF, CO-R14-SD-TF-120, ENG-MS-RD-A-10, ENG-MS-RD-A-10 FF, PRO-R15-SD-DL-100 FF+3d → CO-R15-SD-TF-100 SS+3d, CO-R15-SD-TF-100 FF+3d, CO-R15-SD-TF-100, ENG-SH-RD-A-100, ENG-SH-RD-A-100 FF, CO-R14-SD-TF-120, ENG-MS-RD-A-10, ENG-MS-RD-A-10 FF, PRO-R15-SD-DL-100 FF+3d |
| CO-R15-SD-TF-110 | Install Catch Basin Cover Works for External Finishes of Storm Drainage Network-[Road 15] | 2027-05-31 → 2026-12-14 (-168d) | 2027-06-13 → 2026-12-27 (-168d) | -188d → -57d |  |
| CO-R15-SD-TF-130 | Catch Basin Internal Finishes (Benching + Insulation ) for Storm Drainage Network-[Road 15] | 2027-07-04 → 2027-07-13 (+9d) | 2027-07-21 → 2027-07-31 (+10d) | -205d → -217d |  |
| 9 | **Potable Water Network** | 2027-06-13 → 2027-04-26 (-48d) | 2027-07-19 → 2027-08-22 (+34d) |  |  |
| TF | **Testing and Finishes** | 2027-06-13 → 2027-04-26 (-48d) | 2027-07-19 → 2027-08-22 (+34d) |  |  |
| CO-R15-PW-TF-100 | Final Finishes works and Covers for Valves and Valve Chambers of Potable Water Network-[Road 15] | 2027-06-13 → 2027-04-26 (-48d) | 2027-06-26 → 2027-05-09 (-48d) | -215d → -179d |  |
| CO-R15-PW-TF-120 | Fire Hydrant Finishies (S.Box + Safety + Marker Post ) of Potable Water Network-[Road 15] | 2027-06-27 → 2027-05-10 (-48d) | 2027-07-10 → 2027-05-29 (-42d) | -215d → -179d |  |
| CO-R15-PW-TF-110 | Testing Work for Main Line of Potable Water Network-[Road 15] | 2027-07-06 → 2027-08-09 (+34d) | 2027-07-19 → 2027-08-22 (+34d) | -235d → -264d | CO-R14-PW-TF-110, CO-R15.S10-PW-210 → CO-R14-PW-TF-110 |
| 13 | **Irrigation Network** | 2027-06-09 → 2027-06-19 (+10d) | 2027-06-20 → 2027-06-29 (+9d) |  |  |
| TF | **Testing and Finishes** | 2027-06-09 → 2027-06-19 (+10d) | 2027-06-20 → 2027-06-29 (+9d) |  |  |
| CO-R15-IR-TF-150 | Final Testing (pressure tests) of Irrigation Network-[Road 15] | 2027-06-09 → 2027-06-19 (+10d) | 2027-06-20 → 2027-06-29 (+9d) | -212d → -220d | CO-R15.S09-IR-130, CO-R15.S09-RD-P-100, CO-R11-IR-TF-140, CO-R15.S10-RD-P-100, CO-R15.S09-IR-120 → CO-R15.S09-IR-130, CO-R15.S09-RD-P-100, CO-R11-IR-TF-140, CO-R15.S10-RD-P-100 |
| 12 | **Street Lighting Network** | 2027-05-05 → 2027-07-18 (+74d) | 2027-08-30 → 2027-09-20 (+21d) |  |  |
| TR | **Termination and Testing Works** | 2027-05-05 → 2027-07-18 (+74d) | 2027-08-30 → 2027-09-20 (+21d) |  |  |
| CO-R15-SL-TF-200 | Termination Works For Lighting Poles Cables of Street Lighting Network-[Road 15] | 2027-05-05 → 2027-07-18 (+74d) | 2027-05-24 → 2027-07-31 (+68d) | -204d → -262d |  |
| CO-R15-SL-TF-210 | Termination Works For Panel Board Cables of Street Lighting Network-[Road 15] | 2027-07-29 → 2027-08-19 (+21d) | 2027-08-11 → 2027-09-01 (+21d) | -274d → -292d |  |
| CO-R15-SL-TF-380 | Testing Works For Panel Board Cables of Street Lighting Network-[Road 15] | 2027-08-12 → 2027-09-02 (+21d) | 2027-08-30 → 2027-09-20 (+21d) | -268d → -286d |  |
| 14 | **Medium Voltage Network** | 2027-07-28 → 2027-01-28 (-181d) | 2027-08-04 → 2027-02-04 (-181d) |  |  |
| TT | **Termination and Testing Works** | 2027-07-28 → 2027-01-28 (-181d) | 2027-08-04 → 2027-02-04 (-181d) |  |  |
| CO-R15-MV-TF-200 | Termination Works of Medium Voltage Network-[Road 15] | 2027-07-28 → 2027-01-28 (-181d) | 2027-08-04 → 2027-02-04 (-181d) | -245d → -99d |  |
| 1 | **Road Works** |  | 2027-09-27 → 2027-09-29 (+2d) |  |  |
| CO-R15-S09-RD-F-110 | Application of Prime Coat Layer for Road Works- S.W 11-[Road 15] |  |  |  | CO-R11-S07-RD-F-110, CO-R15.S09-RD-P-130 → MS-CS-PS |
| CO-R15-S09-RD-F-120 | Bituminous Base & Wearing Courses Layers for Road Works- S.W 11-[Road 15] |  |  |  | CO-R15-S09-RD-F-110 SS+3d, CO-R15-S09-RD-F-110 FF+3d, CO-R11-S07-RD-F-120 → CO-R15-S09-RD-F-110 SS+3d, CO-R15-S09-RD-F-110 FF+3d |
| CO-R15-S10-RD-F-140 | Application of Prime Coat Layer for Road Works- S.W 12-[Road 15] |  |  |  | CO-R11-S08-RD-F-140, PRO-R15-RD-DL-160 FF+3d, CO-R15.S10-RD-P-130, CO-R15-S09-RD-F-110 SS → PRO-R15-RD-DL-160 FF+3d, CO-R15-S09-RD-F-110 SS |
| CO-R15-S10-RD-F-150 | Bituminous Base & Wearing Courses Layers for Road Works- S.W 12-[Road 15] |  |  |  | CO-R15-S10-RD-F-140 SS+3d, CO-R15-S10-RD-F-140 FF+3d, CO-R11-S08-RD-F-150, PRO-R15-RD-DL-170 FF+3d, CO-R15-S09-RD-F-120 SS → CO-R15-S10-RD-F-140 SS+3d, CO-R15-S10-RD-F-140 FF+3d, PRO-R15-RD-DL-170 FF+3d, CO-R15-S09-RD-F-120 SS |
| TS | **Traffic Signs Boards and Roads Marking** | 2027-09-13 → 2027-09-15 (+2d) | 2027-09-27 → 2027-09-29 (+2d) |  |  |
| CO-R15-S09-RD-F-100 | Installation Works of Traffic Signs Boards For Road Works- S.W 11-[Road 15] | 2027-09-14 → 2027-09-15 (+1d) | 2027-09-26 → 2027-09-27 (+1d) | -243d → -244d |  |
| CO-R15-S09-RD-F-160 | Application of Road Marking Works For Road Works- S.W 11-[Road 15] | 2027-09-13 → 2027-09-15 (+2d) | 2027-09-25 → 2027-09-27 (+2d) | -242d → -244d |  |
| CO-R15-S10-RD-F-130 | Installation Works of Traffic Signs Boards For Road Works- S.W 12-[Road 15] | 2027-09-13 → 2027-09-15 (+2d) | 2027-09-27 → 2027-09-29 (+2d) | -241d → -243d |  |
| CO-R15-S10-RD-F-170 | Application of Road Marking Works For Road Works- S.W 12-[Road 15] | 2027-09-13 → 2027-09-15 (+2d) | 2027-09-25 → 2027-09-27 (+2d) | -242d → -244d |  |
| 8 | **Road 16 Local 1 ( 527 LM )** |  | 2027-10-09 → 2027-10-11 (+2d) |  |  |
| 10 | **Sewage Network** | 2027-06-20 → 2027-06-29 (+9d) | 2027-07-20 → 2027-07-29 (+9d) |  |  |
| TF | **Testing and Finishes** | 2027-06-20 → 2027-06-29 (+9d) | 2027-07-20 → 2027-07-29 (+9d) |  |  |
| CO-R16-SW-TF-100 | Final Testing For Main Line of Sewage Network-[Road 16] | 2027-06-20 → 2027-06-29 (+9d) | 2027-07-03 → 2027-07-12 (+9d) | -221d → -229d | CO-R16.S11-SW-130, CO-R16.S11-RD-P-100 SS+3d, CO-R16.S11-RD-P-100 FF+3d, CO-R15-SW-TF-100, CO-R16.S12-RD-P-100 SS+3d, CO-R16.S12-RD-P-100 FF+3d, CO-R16.S11-SW-210, CO-R16.S12-SW-210 → CO-R16.S11-SW-130, CO-R16.S11-RD-P-100 SS+3d, CO-R16.S11-RD-P-100 FF+3d, CO-R15-SW-TF-100, CO-R16.S12-RD-P-100 SS+3d, CO-R16.S12-RD-P-100 FF+3d |
| CO-R16-SW-TF-110 | Install Manhole Cover Works for External Finishes of Sewage Network-[Road 16] | 2027-07-04 → 2027-07-13 (+9d) | 2027-07-17 → 2027-07-26 (+9d) | -221d → -229d |  |
| CO-R16-SW-TF-130 | Main Manhole Internal Finishes (Benching + Insulation) of Sewage Network-[Road 16] | 2027-07-07 → 2027-07-17 (+10d) | 2027-07-20 → 2027-07-29 (+9d) | -221d → -229d |  |
| 11 | **Storm Drainage Network** |  | 2027-08-09 → 2027-08-18 (+9d) |  |  |
| TF | **Testing and Finishes** |  | 2027-08-09 → 2027-08-18 (+9d) |  |  |
| CO-R16-SD-TF-120 | Main Manhole Internal Finishes (Benching + Insulation ) for Storm Drainage Network-[Road 16] |  |  |  | CO-R16-SD-TF-100 SS+3d, CO-R16-SD-TF-100 FF+3d, PRO-R16-SD-DL-160 FF+3d, CO-R16-SD-TF-100, CO-R16-SD-TF-110 SS, CO-R16-SD-TF-110, CO-R16-SD-TF-110 FF, CO-R16-SW-TF-110 SS, CO-R16-SW-TF-110, CO-R16-SW-TF-110 FF, ENG-SH-RD-A-100, ENG-SH-RD-A-100 FF, CO-R15-SD-TF-120, ENG-MS-RD-A-10, ENG-MS-RD-A-10 FF, PRO-R16-SD-DL-100 FF+3d → ENG-SH-RD-A-100, ENG-SH-RD-A-100 FF, CO-R15-SD-TF-120, ENG-MS-RD-A-10, ENG-MS-RD-A-10 FF, PRO-R16-SD-DL-100 FF+3d |
| CO-R16-SD-TF-100 | Testing Work for Pipes of Storm Drainage Network-[Road 16] | 2026-11-21 → 2026-11-09 (-12d) | 2026-12-08 → 2026-11-26 (-12d) | -21d → -15d | CO-R16.S11-SD-130 SS+3d, PRO-R16-SD-DL-140 FF+3d, CO-R16.S11-RD-P-100 SS+3d, CO-R16.S11-RD-P-100 FF+3d, CO-R16.S11-SD-130 FF+3d, CO-R16.S11-SD-120 SS, CO-R16.S11-SD-120, ENG-SH-SD-ML-A-110, CO-R15-SD-TF-100, ENG-MS-SD-ML-A-110, CO-R16.S12-RD-P-100 SS+3d, CO-R16.S12-RD-P-100 FF+3d, CO-R16.S11-SD-210, CO-R16.S11-SD-160, CO-R16.S12-SD-210, CO-R16.S12-SD-160 → CO-R16.S11-SD-130 SS+3d, PRO-R16-SD-DL-140 FF+3d, CO-R16.S11-RD-P-100 SS+3d, CO-R16.S11-RD-P-100 FF+3d, CO-R16.S11-SD-130 FF+3d, CO-R16.S11-SD-120 SS, CO-R16.S11-SD-120, ENG-SH-SD-ML-A-110, CO-R15-SD-TF-100, ENG-MS-SD-ML-A-110, CO-R16.S12-RD-P-100 SS+3d, CO-R16.S12-RD-P-100 FF+3d |
| CO-R16-SD-TF-110 | Install Catch Basin Cover Works for External Finishes of Storm Drainage Network-[Road 16] | 2027-06-14 → 2026-12-28 (-168d) | 2027-06-27 → 2027-01-10 (-168d) | -184d → -53d |  |
| CO-R16-SD-TF-130 | Catch Basin Internal Finishes (Benching + Insulation ) for Storm Drainage Network-[Road 16] | 2027-07-22 → 2027-08-01 (+10d) | 2027-08-09 → 2027-08-18 (+9d) | -205d → -217d |  |
| 9 | **Potable Water Network** | 2027-06-27 → 2027-05-10 (-48d) | 2027-08-02 → 2027-09-05 (+34d) |  |  |
| TF | **Testing and Finishes** | 2027-06-27 → 2027-05-10 (-48d) | 2027-08-02 → 2027-09-05 (+34d) |  |  |
| CO-R16-PW-TF-100 | Final Finishes works and Covers for Valves and Valve Chambers of Potable Water Network-[Road 16] | 2027-06-27 → 2027-05-10 (-48d) | 2027-07-10 → 2027-05-29 (-42d) | -215d → -179d |  |
| CO-R16-PW-TF-120 | Fire Hydrant Finishies (S.Box + Safety + Marker Post ) of Potable Water Network-[Road 16] | 2027-07-11 → 2027-05-30 (-42d) | 2027-07-24 → 2027-06-12 (-42d) | -215d → -179d |  |
| CO-R16-PW-TF-110 | Testing Work for Main Line of Potable Water Network-[Road 16] | 2027-07-20 → 2027-08-23 (+34d) | 2027-08-02 → 2027-09-05 (+34d) | -235d → -264d | CO-R15-PW-TF-110, CO-R16.S12-PW-210 → CO-R15-PW-TF-110 |
| 13 | **Irrigation Network** | 2027-06-21 → 2027-06-30 (+9d) | 2027-07-01 → 2027-07-11 (+10d) |  |  |
| TF | **Testing and Finishes** | 2027-06-21 → 2027-06-30 (+9d) | 2027-07-01 → 2027-07-11 (+10d) |  |  |
| CO-R16-IR-TF-160 | Final Testing (pressure tests) of Irrigation Network-[Road 16] | 2027-06-21 → 2027-06-30 (+9d) | 2027-07-01 → 2027-07-11 (+10d) | -212d → -220d | CO-R16.S11-IR-130, CO-R16.S11-RD-P-100, CO-R15-IR-TF-150, CO-R16.S12-RD-P-100, CO-R16.S11-IR-120 → CO-R16.S11-IR-130, CO-R16.S11-RD-P-100, CO-R15-IR-TF-150, CO-R16.S12-RD-P-100 |
| 12 | **Street Lighting Network** | 2027-05-25 → 2027-08-01 (+68d) | 2027-09-01 → 2027-09-22 (+21d) |  |  |
| TR | **Termination and Testing Works** | 2027-05-25 → 2027-08-01 (+68d) | 2027-09-01 → 2027-09-22 (+21d) |  |  |
| CO-R16-SL-TF-220 | Termination Works For Lighting Poles Cables of Street Lighting Network-[Road 16] | 2027-05-25 → 2027-08-01 (+68d) | 2027-06-07 → 2027-08-14 (+68d) | -204d → -262d |  |
| CO-R16-SL-TF-230 | Termination Works For Panel Board Cables of Street Lighting Network-[Road 16] | 2027-08-12 → 2027-09-02 (+21d) | 2027-08-25 → 2027-09-15 (+21d) | -274d → -292d |  |
| CO-R16-SL-TF-380 | Testing Works For Panel Board Cables of Street Lighting Network-[Road 16] | 2027-08-31 → 2027-09-21 (+21d) | 2027-09-01 → 2027-09-22 (+21d) | -268d → -286d |  |
| 14 | **Medium Voltage Network** | 2027-08-05 → 2027-02-06 (-180d) | 2027-08-12 → 2027-02-13 (-180d) |  |  |
| TT | **Termination and Testing Works** | 2027-08-05 → 2027-02-06 (-180d) | 2027-08-12 → 2027-02-13 (-180d) |  |  |
| CO-R16-MV-TF-220 | Termination Works of Medium Voltage Network-[Road 16] | 2027-08-05 → 2027-02-06 (-180d) | 2027-08-12 → 2027-02-13 (-180d) | -245d → -99d |  |
| 1 | **Road Works** |  | 2027-10-09 → 2027-10-11 (+2d) |  |  |
| CO-R16-S11-RD-F-110 | Application of Prime Coat Layer for Road Works - S.W 13-[Road 16] |  |  |  | CO-R15-S09-RD-F-110, CO-R16.S11-RD-P-130 → CO-R15-S09-RD-F-110 |
| CO-R16-S12-RD-F-140 | Application of Prime Coat Layer for Road Works- S.W 14-[Road 16] |  |  |  | CO-R15-S10-RD-F-140, PRO-R16-RD-DL-160 FF+3d, CO-R16.S12-RD-P-130, CO-R16-S11-RD-F-110 SS → CO-R15-S10-RD-F-140, PRO-R16-RD-DL-160 FF+3d, CO-R16-S11-RD-F-110 SS |
| TS | **Traffic Signs Boards and Roads Marking** | 2027-09-26 → 2027-09-28 (+2d) | 2027-10-09 → 2027-10-11 (+2d) |  |  |
| CO-R16-S11-RD-F-100 | Installation Works of Traffic Signs Boards For Road Works- S.W 13-[Road 16] | 2027-09-27 → 2027-09-28 (+1d) | 2027-10-07 → 2027-10-09 (+2d) | -243d → -244d |  |
| CO-R16-S11-RD-F-160 | Application of Road Marking Works For Road Works- S.W 13-[Road 16] | 2027-09-26 → 2027-09-28 (+2d) | 2027-10-06 → 2027-10-09 (+3d) | -242d → -244d |  |
| CO-R16-S12-RD-F-170 | Application of Road Marking Works For Road Works- S.W 14-[Road 16] | 2027-09-26 → 2027-09-28 (+2d) | 2027-10-06 → 2027-10-09 (+3d) | -242d → -244d |  |
| CO-R16-S12-RD-F-130 | Installation Works of Traffic Signs Boards For Road Works- S.W 14-[Road 16] | 2027-09-28 → 2027-09-30 (+2d) | 2027-10-09 → 2027-10-11 (+2d) | -241d → -243d |  |
| 9 | **Road 17 Local 1 ( 500 LM )** |  | 2027-10-19 → 2027-10-20 (+1d) |  |  |
| 10 | **Sewage Network** | 2027-07-04 → 2027-07-13 (+9d) | 2027-08-03 → 2027-08-12 (+9d) |  |  |

| ID | Task | Start | Finish | Total float | Predecessors |
| --- | --- | --- | --- | --- | --- |
| TF | **Testing and Finishes** | 2027-07-04 → 2027-07-13 (+9d) | 2027-08-03 → 2027-08-12 (+9d) |  |  |
| CO-R17-SW-TF-100 | Final Testing For Main Line of Sewage Network-[Road 17] | 2027-07-04 → 2027-07-13 (+9d) | 2027-07-17 → 2027-07-26 (+9d) | -221d → -229d | CO-R17.S13-SW-130, CO-R17.S13-RD-P-100 SS+3d, CO-R17.S13-RD-P-100 FF+3d, CO-R16-SW-TF-100, CO-R17.S14-RD-P-100 SS+3d, CO-R17.S14-RD-P-100 FF+3d, CO-R17.S13-SW-210, CO-R17.S14-SW-210 → CO-R17.S13-SW-130, CO-R17.S13-RD-P-100 SS+3d, CO-R17.S13-RD-P-100 FF+3d, CO-R16-SW-TF-100, CO-R17.S14-RD-P-100 SS+3d, CO-R17.S14-RD-P-100 FF+3d |
| CO-R17-SW-TF-110 | Install Manhole Cover Works for External Finishes of Sewage Network-[Road 17] | 2027-07-18 → 2027-07-27 (+9d) | 2027-07-31 → 2027-08-09 (+9d) | -221d → -229d |  |
| CO-R17-SW-TF-130 | Main Manhole Internal Finishes (Benching + Insulation) of Sewage Network-[Road 17] | 2027-07-21 → 2027-07-31 (+10d) | 2027-08-03 → 2027-08-12 (+9d) | -221d → -229d |  |
| 11 | **Storm Drainage Network** |  | 2027-08-23 → 2027-09-01 (+9d) |  |  |
| TF | **Testing and Finishes** |  | 2027-08-23 → 2027-09-01 (+9d) |  |  |
| CO-R17-SD-TF-120 | Main Manhole Internal Finishes (Benching + Insulation ) for Storm Drainage Network-[Road 17] |  |  |  | CO-R17-SD-TF-100 SS+3d, CO-R17-SD-TF-100 FF+3d, PRO-R17-SD-DL-160 FF+3d, CO-R17-SD-TF-100, CO-R17-SD-TF-110 SS, CO-R17-SD-TF-110, CO-R17-SD-TF-110 FF, CO-R17-SW-TF-110 SS, CO-R17-SW-TF-110, CO-R17-SW-TF-110 FF, ENG-SH-RD-A-100, ENG-SH-RD-A-100 FF, CO-R16-SD-TF-120, ENG-MS-RD-A-10, ENG-MS-RD-A-10 FF, PRO-R17-SD-DL-100 FF+3d → ENG-SH-RD-A-100, ENG-SH-RD-A-100 FF, CO-R16-SD-TF-120, ENG-MS-RD-A-10, ENG-MS-RD-A-10 FF, PRO-R17-SD-DL-100 FF+3d |
| CO-R17-SD-TF-100 | Testing Work for Pipes of Storm Drainage Network-[Road 17] | 2026-12-09 → 2026-11-28 (-11d) | 2026-12-27 → 2026-12-15 (-12d) | -21d → -15d | CO-R17.S13-SD-130 SS+3d, PRO-R17-SD-DL-140 FF+3d, CO-R17.S13-RD-P-100 SS+3d, CO-R17.S13-RD-P-100 FF+3d, CO-R17.S13-SD-130 FF+3d, CO-R17.S13-SD-120 SS, CO-R17.S13-SD-120, ENG-SH-SD-ML-A-110, CO-R16-SD-TF-100, ENG-MS-SD-ML-A-110, CO-R17.S14-RD-P-100 SS+3d, CO-R17.S14-RD-P-100 FF+3d, CO-R17.S13-SD-210, CO-R17.S13-SD-160, CO-R17.S14-SD-210 → CO-R17.S13-SD-130 SS+3d, PRO-R17-SD-DL-140 FF+3d, CO-R17.S13-RD-P-100 SS+3d, CO-R17.S13-RD-P-100 FF+3d, CO-R17.S13-SD-130 FF+3d, CO-R17.S13-SD-120 SS, CO-R17.S13-SD-120, ENG-SH-SD-ML-A-110, CO-R16-SD-TF-100, ENG-MS-SD-ML-A-110, CO-R17.S14-RD-P-100 SS+3d, CO-R17.S14-RD-P-100 FF+3d |
| CO-R17-SD-TF-110 | Install Catch Basin Cover Works for External Finishes of Storm Drainage Network-[Road 17] | 2027-06-28 → 2027-01-11 (-168d) | 2027-07-11 → 2027-01-24 (-168d) | -180d → -49d |  |
| CO-R17-SD-TF-130 | Catch Basin Internal Finishes (Benching + Insulation ) for Storm Drainage Network-[Road 17] | 2027-08-10 → 2027-08-19 (+9d) | 2027-08-23 → 2027-09-01 (+9d) | -205d → -217d | CO-R17-SD-TF-110 SS+3d, CO-R17-SD-TF-110 FF+3d, PRO-R17-SD-DL-160 FF+3d, CO-R17-SD-TF-100 SS, CO-R17-SD-TF-100, CO-R17-SD-TF-100 FF, CO-R17-SD-TF-110, CO-R17-SW-TF-110 SS, CO-R17-SW-TF-110, CO-R17-SW-TF-110 FF, ENG-SH-RD-A-100, ENG-SH-RD-A-100 FF, CO-R16-SD-TF-130, ENG-MS-RD-A-10, ENG-MS-RD-A-10 FF, CO-R17.S14-SD-160 → CO-R17-SD-TF-110 SS+3d, CO-R17-SD-TF-110 FF+3d, PRO-R17-SD-DL-160 FF+3d, CO-R17-SD-TF-100 SS, CO-R17-SD-TF-100, CO-R17-SD-TF-100 FF, CO-R17-SD-TF-110, CO-R17-SW-TF-110 SS, CO-R17-SW-TF-110, CO-R17-SW-TF-110 FF, ENG-SH-RD-A-100, ENG-SH-RD-A-100 FF, CO-R16-SD-TF-130, ENG-MS-RD-A-10, ENG-MS-RD-A-10 FF |
| 9 | **Potable Water Network** | 2027-07-11 → 2027-05-30 (-42d) | 2027-08-16 → 2027-09-19 (+34d) |  |  |
| TF | **Testing and Finishes** | 2027-07-11 → 2027-05-30 (-42d) | 2027-08-16 → 2027-09-19 (+34d) |  |  |
| CO-R17-PW-TF-100 | Final Finishes works and Covers for Valves and Valve Chambers of Potable Water Network-[Road 17] | 2027-07-11 → 2027-05-30 (-42d) | 2027-07-24 → 2027-06-12 (-42d) | -215d → -179d |  |
| CO-R17-PW-TF-120 | Fire Hydrant Finishies (S.Box + Safety + Marker Post ) of Potable Water Network-[Road 17] | 2027-07-25 → 2027-06-13 (-42d) | 2027-08-07 → 2027-06-26 (-42d) | -215d → -179d | CO-R17-PW-TF-100, CO-R16-PW-TF-120, PRO-R17-PW-DL-130 FF+3d, CO-R17.S14-PW-160 → CO-R17-PW-TF-100, CO-R16-PW-TF-120, PRO-R17-PW-DL-130 FF+3d |
| CO-R17-PW-TF-110 | Testing Work for Main Line of Potable Water Network-[Road 17] | 2027-08-03 → 2027-09-06 (+34d) | 2027-08-16 → 2027-09-19 (+34d) | -235d → -264d | CO-R16-PW-TF-110, CO-R17.S14-PW-210 → CO-R16-PW-TF-110 |
| 13 | **Irrigation Network** | 2027-07-03 → 2027-07-12 (+9d) | 2027-07-13 → 2027-07-22 (+9d) |  |  |
| TF | **Testing and Finishes** | 2027-07-03 → 2027-07-12 (+9d) | 2027-07-13 → 2027-07-22 (+9d) |  |  |
| CO-R17-IR-TF-170 | Final Testing (pressure tests) of Irrigation Network-[Road 17] | 2027-07-03 → 2027-07-12 (+9d) | 2027-07-13 → 2027-07-22 (+9d) | -212d → -220d | CO-R17.S13-IR-130, CO-R17.S13-RD-P-100, CO-R16-IR-TF-160, CO-R17.S14-RD-P-100, CO-R17.S13-IR-120 → CO-R17.S13-IR-130, CO-R17.S13-RD-P-100, CO-R16-IR-TF-160, CO-R17.S14-RD-P-100, CO-R17.S14-PW-160 |
| 12 | **Street Lighting Network** | 2027-06-08 → 2027-08-15 (+68d) | 2027-09-11 → 2027-10-03 (+22d) |  |  |
| TR | **Termination and Testing Works** | 2027-06-08 → 2027-08-15 (+68d) | 2027-09-11 → 2027-10-03 (+22d) |  |  |
| CO-R17-SL-TF-240 | Termination Works For Lighting Poles Cables of Street Lighting Network-[Road 17] | 2027-06-08 → 2027-08-15 (+68d) | 2027-06-21 → 2027-08-28 (+68d) | -204d → -262d |  |
| CO-R17-SL-TF-250 | Termination Works For Panel Board Cables of Street Lighting Network-[Road 17] | 2027-08-26 → 2027-09-16 (+21d) | 2027-09-08 → 2027-09-30 (+22d) | -274d → -292d |  |
| CO-R17-SL-TF-380 | Testing Works For Panel Board Cables of Street Lighting Network-[Road 17] | 2027-09-09 → 2027-10-02 (+23d) | 2027-09-11 → 2027-10-03 (+22d) | -274d → -292d |  |
| 14 | **Medium Voltage Network** | 2027-08-14 → 2027-02-14 (-181d) | 2027-08-21 → 2027-02-21 (-181d) |  |  |
| TT | **Termination and Testing Works** | 2027-08-14 → 2027-02-14 (-181d) | 2027-08-21 → 2027-02-21 (-181d) |  |  |
| CO-R17-MV-TF-240 | Termination Works of Medium Voltage Network-[Road 17] | 2027-08-14 → 2027-02-14 (-181d) | 2027-08-21 → 2027-02-21 (-181d) | -245d → -99d |  |
| 1 | **Road Works** |  | 2027-10-19 → 2027-10-20 (+1d) |  |  |
| TS | **Traffic Signs Boards and Roads Marking** | 2027-10-07 → 2027-10-10 (+3d) | 2027-10-19 → 2027-10-20 (+1d) |  |  |
| CO-R17-S13-RD-F-100 | Installation Works of Traffic Signs Boards For Road Works- S.W 15-[Road 17] | 2027-10-09 → 2027-10-10 (+1d) | 2027-10-19 → 2027-10-20 (+1d) | -243d → -244d |  |
| CO-R17-S13-RD-F-160 | Application of Road Marking Works For Road Works- S.W 15-[Road 17] | 2027-10-07 → 2027-10-10 (+3d) | 2027-10-18 → 2027-10-20 (+2d) | -242d → -244d |  |
| CO-R17-S14-RD-F-170 | Application of Road Marking Works For Road Works- S.W 16-[Road 17] | 2027-10-07 → 2027-10-10 (+3d) | 2027-10-18 → 2027-10-20 (+2d) | -242d → -244d |  |
| CO-R17-S14-RD-F-130 | Installation Works of Traffic Signs Boards For Road Works- S.W 16-[Road 17] | 2027-10-11 → 2027-10-13 (+2d) | 2027-10-18 → 2027-10-20 (+2d) | -242d → -244d |  |
| 3 | **Road 18 Local 1 ( 479 LM )** |  | 2027-10-25 → 2027-12-06 (+42d) |  |  |
| 10 | **Sewage Network** | 2027-05-09 → 2027-06-12 (+34d) | 2027-06-14 → 2027-07-12 (+28d) |  |  |
| TF | **Testing and Finishes** | 2027-05-09 → 2027-06-12 (+34d) | 2027-06-14 → 2027-07-12 (+28d) |  |  |
| CO-R18-SW-TF-100 | Final Testing For Main Line of Sewage Network-[Road 18] | 2027-05-09 → 2027-06-12 (+34d) | 2027-05-27 → 2027-06-24 (+28d) | -175d → -199d | CO-R09-SW-TF-100, CO-R11.S06-RD-P-100, CO-R18.S15-RD-P-160 SS, CO-R18.S15-RD-P-160 FF, CO-R18.S15-SW-300, CO-R18.S16-SW-300 → CO-R09-SW-TF-100, CO-R11.S06-RD-P-100, CO-R18.S15-RD-P-160 SS, CO-R18.S15-RD-P-160 FF |
| CO-R18-SW-TF-110 | Install Manhole Cover Works for External Finishes of Sewage Network-[Road 18] | 2027-05-29 → 2027-06-26 (+28d) | 2027-06-10 → 2027-07-08 (+28d) | -175d → -199d |  |
| CO-R18-SW-TF-130 | Main Manhole Internal Finishes (Benching + Insulation) of Sewage Network-[Road 18] | 2027-06-01 → 2027-06-29 (+28d) | 2027-06-14 → 2027-07-12 (+28d) | -178d → -202d |  |
| 11 | **Storm Drainage Network** |  | 2027-07-04 → 2027-07-18 (+14d) |  |  |
| TF | **Testing and Finishes** |  | 2027-07-04 → 2027-07-18 (+14d) |  |  |
| CO-R18-SD-TF-120 | Main Manhole Internal Finishes (Benching + Insulation ) for Storm Drainage Network-[Road 18] |  |  |  | CO-R18-SD-TF-100 SS+3d, CO-R18-SD-TF-100 FF+3d, CO-R18-SD-TF-100, CO-R18-SD-TF-110 SS, CO-R18-SD-TF-110, CO-R18-SD-TF-110 FF, CO-R18-SW-TF-110 SS, CO-R18-SW-TF-110 FF, ENG-SH-RD-A-100, ENG-SH-RD-A-100 FF, CO-R09-SD-TF-120, ENG-MS-RD-A-10, ENG-MS-RD-A-10 FF, PRO-R18-SD-DL-190, PRO-R18-SD-DL-170 FF+3d → ENG-SH-RD-A-100, ENG-SH-RD-A-100 FF, ENG-MS-RD-A-10, ENG-MS-RD-A-10 FF, PRO-R18-SD-DL-170 FF+3d |
| CO-R18-SD-TF-110 | Install Catch Basin Cover Works for External Finishes of Storm Drainage Network-[Road 18] | 2027-05-10 → 2027-04-03 (-37d) | 2027-06-02 → 2027-04-20 (-43d) | -151d → -123d |  |
| CO-R18-SD-TF-100 | Testing Work for Pipes of Storm Drainage Network-[Road 18] | 2027-05-09 → 2027-06-12 (+34d) | 2027-06-01 → 2027-06-29 (+28d) | -150d → -178d | ENG-SH-SD-ML-A-110, CO-R09-SD-TF-100, ENG-MS-SD-ML-A-110, CO-R17.S13-RD-P-100 SS+3d, CO-R17.S13-RD-P-100 FF+3d, CO-R18.S15-SD-280, CO-R18.S15-SD-330, CO-R18.S16-SD-280, CO-R18.S16-SD-330 → ENG-SH-SD-ML-A-110, CO-R09-SD-TF-100, ENG-MS-SD-ML-A-110, CO-R17.S13-RD-P-100 SS+3d, CO-R17.S13-RD-P-100 FF+3d |
| CO-R18-SD-TF-130 | Catch Basin Internal Finishes (Benching + Insulation ) for Storm Drainage Network-[Road 18] | 2027-06-16 → 2027-06-30 (+14d) | 2027-07-04 → 2027-07-18 (+14d) | -162d → -178d |  |
| 9 | **Potable Water Network** | 2027-06-08 → 2027-07-12 (+34d) | 2027-08-30 → 2027-10-04 (+35d) |  |  |
| TF | **Testing and Finishes** | 2027-06-08 → 2027-07-12 (+34d) | 2027-08-30 → 2027-10-04 (+35d) |  |  |
| CO-R18-PW-TF-100 | Final Finishes works and Covers for Valves and Valve Chambers of Potable Water Network-[Road 18] | 2027-06-08 → 2027-07-12 (+34d) | 2027-06-21 → 2027-07-25 (+34d) | -187d → -216d |  |
| CO-R18-PW-TF-120 | Fire Hydrant Finishies (S.Box + Safety + Marker Post ) of Potable Water Network-[Road 18] | 2027-06-22 → 2027-07-26 (+34d) | 2027-07-05 → 2027-08-08 (+34d) | -187d → -216d | CO-R18-PW-TF-100, CO-R09-PW-TF-120, CO-R18.S16-PW-270 → CO-R18-PW-TF-100, CO-R09-PW-TF-120 |
| CO-R18-PW-TF-110 | Testing Work for Main Line of Potable Water Network-[Road 18] | 2027-08-17 → 2027-09-20 (+34d) | 2027-08-30 → 2027-10-04 (+35d) | -235d → -264d | CO-R09-PW-TF-110, CO-R17-PW-TF-110, PRO-R18-PW-DL-170, CO-R18.S16-PW-330 → CO-R09-PW-TF-110, CO-R17-PW-TF-110, PRO-R18-PW-DL-170 |
| 13 | **Irrigation Network** | 2027-05-30 → 2027-06-27 (+28d) | 2027-06-16 → 2027-07-14 (+28d) |  |  |
| TF | **Testing and Finishes** | 2027-05-30 → 2027-06-27 (+28d) | 2027-06-16 → 2027-07-14 (+28d) |  |  |
| CO-R18-IR-TF-110 | Final Testing (pressure tests) of Irrigation Network-[Road 18] | 2027-05-30 → 2027-06-27 (+28d) | 2027-06-16 → 2027-07-14 (+28d) | -189d → -213d |  |
| 12 | **Street Lighting Network** | 2027-04-17 → 2027-06-17 (+61d) | 2027-07-19 → 2027-09-13 (+56d) |  |  |
| TR | **Termination and Testing Works** | 2027-04-17 → 2027-06-17 (+61d) | 2027-07-19 → 2027-09-13 (+56d) |  |  |
| CO-R18-SL-TF-120 | Termination Works For Lighting Poles Cables of Street Lighting Network-[Road 18] | 2027-04-17 → 2027-06-17 (+61d) | 2027-05-01 → 2027-07-01 (+61d) | -164.25d → -212.25d |  |
| CO-R18-SL-TF-130 | Termination Works For Panel Board Cables of Street Lighting Network-[Road 18] | 2027-07-03 → 2027-08-28 (+56d) | 2027-07-17 → 2027-09-11 (+56d) | -227.5d → -275.5d |  |
| CO-R18-SL-TF-380 | Testing Works For Panel Board Cables of Street Lighting Network-[Road 18] | 2027-07-17 → 2027-09-11 (+56d) | 2027-07-19 → 2027-09-13 (+56d) | -227.5d → -275.5d |  |
| 14 | **Medium Voltage Network** | 2027-06-20 → 2027-03-02 (-110d) | 2027-07-07 → 2027-03-23 (-106d) |  |  |
| TT | **Termination and Testing Works** | 2027-06-20 → 2027-03-02 (-110d) | 2027-07-07 → 2027-03-23 (-106d) |  |  |
| CO-R18-MV-TF-120 | Termination Works of Medium Voltage Network-[Road 18] | 2027-06-20 → 2027-03-02 (-110d) | 2027-07-07 → 2027-03-23 (-106d) | -207d → -121d |  |
| 1 | **Road Works** |  | 2027-10-25 → 2027-12-06 (+42d) |  |  |
| CO-R18-S15-RD-F-100 | Application of Prime Coat Layer for Road Works- S.W 03-[Road 18] |  |  |  | CO-R09-S1-RD-F-100, CO-R18.S15-RD-P-140, PRO-R18-RD-DL-240 → CO-R18.S15-RD-P-140, PRO-R18-RD-DL-240 |
| CO-R18-S15-RD-F-110 | Bituminous Base & Wearing Courses Layers for Road Works- S.W 03-[Road 18] |  |  |  | CO-R18-S15-RD-F-100 SS+3d, CO-R18-S15-RD-F-100 FF+3d, CO-R09-S1-RD-F-120, PRO-R18-RD-DL-250 FF+3d → CO-R18-S15-RD-F-100 SS+3d, CO-R18-S15-RD-F-100 FF+3d, PRO-R18-RD-DL-250 FF+3d |
| CO-R18-S16-RD-F-150 | Application of Prime Coat Layer for Road Works- S.W 04-[Road 18] |  |  |  | CO-R09-S2-RD-F-110, CO-R18-S15-RD-F-100 SS, PRO-R18-RD-DL-240 → CO-R18-S15-RD-F-100 SS, PRO-R18-RD-DL-240 |
| CO-R18-S16-RD-F-170 | Bituminous Base & Wearing Courses Layers for Road Works- S.W 04-[Road 18] |  |  |  | CO-R18-S16-RD-F-150 SS+3d, CO-R18-S16-RD-F-150 FF+3d, CO-R09-S2-RD-F-130, CO-R18-S15-RD-F-110 SS, PRO-R18-RD-DL-250 FF+3d → CO-R18-S16-RD-F-150 SS+3d, CO-R18-S16-RD-F-150 FF+3d, CO-R18-S15-RD-F-110 SS, PRO-R18-RD-DL-250 FF+3d |
| TS | **Traffic Signs Boards and Roads Marking** | 2027-09-14 → 2027-10-27 (+43d) | 2027-10-25 → 2027-12-06 (+42d) |  |  |
| CO-R18-S15-RD-F-120 | Application of Road Marking Works For Road Works- S.W 03-[Road 18] | 2027-09-14 → 2027-10-27 (+43d) | 2027-09-29 → 2027-11-10 (+42d) | -247.5d → -283.5d |  |
| CO-R18-S15-RD-F-130 | Installation Works of Traffic Signs Boards For Road Works- S.W 03-[Road 18] | 2027-09-29 → 2027-11-10 (+42d) | 2027-10-13 → 2027-11-24 (+42d) | -247.5d → -283.5d |  |
| CO-R18-S16-RD-F-140 | Application of Road Marking Works For Road Works- S.W 04-[Road 18] | 2027-10-06 → 2027-11-10 (+35d) | 2027-10-24 → 2027-11-28 (+35d) | -246.5d → -276.5d |  |
| CO-R18-S16-RD-F-160 | Installation Works of Traffic Signs Boards For Road Works- S.W 04-[Road 18] | 2027-10-13 → 2027-11-24 (+42d) | 2027-10-25 → 2027-12-06 (+42d) | -247.5d → -283.5d |  |

| ID | Task | Start | Finish | Total float |
| --- | --- | --- | --- | --- |
| GEN | **Independent Works** |  | 2027-10-25 → 2027-12-06 (+42d) |  |
| CON | **Tie In To Existing Networks** | 2027-04-29 → 2027-03-24 (-36d) | 2027-10-25 → 2027-12-06 (+42d) |  |
| 1 | **Phase 2 Block "J"** | 2027-04-29 → 2027-03-24 (-36d) | 2027-10-25 → 2027-12-06 (+42d) |  |
| 2 | **Road 09 Local 2 ( 2278 LM )** | 2027-07-14 → 2027-03-24 (-112d) | 2027-10-03 → 2027-10-24 (+21d) |  |
| 15 | **Storm Drainage Network** | 2027-08-24 → 2027-09-02 (+9d) | 2027-08-31 → 2027-09-09 (+9d) |  |
| TIE-SD-R09 | TIE IN Existing Network For Storm Drainage Network | 2027-08-24 → 2027-09-02 (+9d) | 2027-08-31 → 2027-09-09 (+9d) | -205d → -207d |
| 16 | **Sewage Network** | 2027-08-04 → 2027-08-14 (+10d) | 2027-08-17 → 2027-08-26 (+9d) |  |
| TIE-SW-R09 | TIE IN Existing Network For Sewage Network | 2027-08-04 → 2027-08-14 (+10d) | 2027-08-17 → 2027-08-26 (+9d) |  |
| 17 | **Potable Water Network** | 2027-08-31 → 2027-10-05 (+35d) | 2027-09-13 → 2027-10-18 (+35d) |  |
| TIE-PW-R09 | TIE IN Existing Network For Potable Water Network | 2027-08-31 → 2027-10-05 (+35d) | 2027-09-13 → 2027-10-18 (+35d) | -218d → -239d |
| 1 | **Irrigation Network** | 2027-07-14 → 2027-07-24 (+10d) | 2027-07-27 → 2027-08-05 (+9d) |  |
| TIE-IR-R09 | TIE IN Existing Network For Irrigation Network | 2027-07-14 → 2027-07-24 (+10d) | 2027-07-27 → 2027-08-05 (+9d) |  |
| 18 | **Meduim Voltage Network** | 2027-08-22 → 2027-03-24 (-151d) | 2027-09-11 → 2027-04-13 (-151d) |  |
| TIE-R09-MV | TIE IN Existing Network For Medium Voltage Network | 2027-08-22 → 2027-03-24 (-151d) | 2027-09-11 → 2027-04-13 (-151d) | -219d → -84d |
| 2 | **Street Lighting Network** | 2027-09-12 → 2027-10-04 (+22d) | 2027-10-03 → 2027-10-24 (+21d) |  |
| TIE-R09-SL | TIE IN Existing Network For Street Lighting Network | 2027-09-12 → 2027-10-04 (+22d) | 2027-10-03 → 2027-10-24 (+21d) | -240d → -244d |
| 3 | **Telecom Network** | 2027-08-22 → 2027-05-11 (-103d) | 2027-09-01 → 2027-05-27 (-97d) |  |
| TIE-R09-TE | TIE IN Existing Network For Telecom Network | 2027-08-22 → 2027-05-11 (-103d) | 2027-09-01 → 2027-05-27 (-97d) | -221d → -117d |
| 4 | **Road 10 Local 2 ( 2352 LM )** | 2027-07-14 → 2027-03-24 (-112d) | 2027-10-25 → 2027-12-06 (+42d) |  |
| 15 | **Storm Drainage Network** | 2027-08-24 → 2027-09-02 (+9d) | 2027-08-31 → 2027-09-09 (+9d) |  |
| TIE-SD-R10 | TIE IN Existing Network For Storm Drainage Network | 2027-08-24 → 2027-09-02 (+9d) | 2027-08-31 → 2027-09-09 (+9d) | -205d → -207d |
| 16 | **Sewage Network** | 2027-08-04 → 2027-08-14 (+10d) | 2027-08-17 → 2027-08-26 (+9d) |  |
| TIE-SW-R10 | TIE IN Existing Network For Sewage Network | 2027-08-04 → 2027-08-14 (+10d) | 2027-08-17 → 2027-08-26 (+9d) |  |
| 17 | **Potable Water Network** | 2027-08-31 → 2027-10-05 (+35d) | 2027-09-13 → 2027-10-18 (+35d) |  |
| TIE-PW-R10 | TIE IN Existing Network For Potable Water Network | 2027-08-31 → 2027-10-05 (+35d) | 2027-09-13 → 2027-10-18 (+35d) | -218d → -239d |
| 1 | **Irrigation Network** | 2027-07-14 → 2027-07-24 (+10d) | 2027-07-27 → 2027-08-05 (+9d) |  |
| TIE-IR-R10 | TIE IN Existing Network For Irrigation Network | 2027-07-14 → 2027-07-24 (+10d) | 2027-07-27 → 2027-08-05 (+9d) |  |
| 18 | **Meduim Voltage Network** | 2027-08-22 → 2027-03-24 (-151d) | 2027-09-11 → 2027-04-13 (-151d) |  |
| TIE-R10-MV | TIE IN Existing Network For Medium Voltage Network | 2027-08-22 → 2027-03-24 (-151d) | 2027-09-11 → 2027-04-13 (-151d) | -219d → -84d |
| 2 | **Street Lighting Network** | 2027-09-12 → 2027-10-04 (+22d) | 2027-10-03 → 2027-10-24 (+21d) |  |
| TIE-R10-SL | TIE IN Existing Network For Street Lighting Network | 2027-09-12 → 2027-10-04 (+22d) | 2027-10-03 → 2027-10-24 (+21d) | -240d → -244d |
| 4 | **Telecom Network** | 2027-08-22 → 2027-05-11 (-103d) | 2027-09-01 → 2027-05-27 (-97d) |  |
| TIE-R10-TE | TIE IN Existing Network For Telecom Network | 2027-08-22 → 2027-05-11 (-103d) | 2027-09-01 → 2027-05-27 (-97d) | -221d → -122d |
| 3 | **Road Works** | 2027-10-19 → 2027-11-30 (+42d) | 2027-10-25 → 2027-12-06 (+42d) |  |
| TIE-R10-RD | TIE IN Existing Network For Road Works | 2027-10-19 → 2027-11-30 (+42d) | 2027-10-25 → 2027-12-06 (+42d) | -245.5d → -280.5d |
| 5 | **Road 11 Local 1 ( 670 LM )** | 2027-07-14 → 2027-03-24 (-112d) | 2027-10-25 → 2027-12-06 (+42d) |  |
| 15 | **Storm Drainage Network** | 2027-08-24 → 2027-09-02 (+9d) | 2027-08-31 → 2027-09-09 (+9d) |  |
| TIE-SD-R11 | TIE IN Existing Network For Storm Drainage Network | 2027-08-24 → 2027-09-02 (+9d) | 2027-08-31 → 2027-09-09 (+9d) | -205d → -207d |
| 16 | **Sewage Network** | 2027-08-04 → 2027-08-14 (+10d) | 2027-08-17 → 2027-08-26 (+9d) |  |
| TIE-SW-R11 | TIE IN Existing Network For Sewage Network | 2027-08-04 → 2027-08-14 (+10d) | 2027-08-17 → 2027-08-26 (+9d) |  |
| 17 | **Potable Water Network** | 2027-08-31 → 2027-10-05 (+35d) | 2027-09-13 → 2027-10-18 (+35d) |  |
| TIE-PW-R11 | TIE IN Existing Network For Potable Water Network | 2027-08-31 → 2027-10-05 (+35d) | 2027-09-13 → 2027-10-18 (+35d) | -218d → -239d |
| 1 | **Irrigation Network** | 2027-07-14 → 2027-07-24 (+10d) | 2027-07-27 → 2027-08-05 (+9d) |  |
| TIE-IR-R11 | TIE IN Existing Network For Irrigation Network | 2027-07-14 → 2027-07-24 (+10d) | 2027-07-27 → 2027-08-05 (+9d) |  |
| 18 | **Meduim Voltage Network** | 2027-08-22 → 2027-03-24 (-151d) | 2027-09-11 → 2027-04-13 (-151d) |  |
| TIE-R11-MV | TIE IN Existing Network For Medium Voltage Network | 2027-08-22 → 2027-03-24 (-151d) | 2027-09-11 → 2027-04-13 (-151d) | -219d → -84d |
| 2 | **Street Lighting Network** | 2027-09-12 → 2027-10-04 (+22d) | 2027-10-03 → 2027-10-24 (+21d) |  |
| TIE-R11-SL | TIE IN Existing Network For Street Lighting Network | 2027-09-12 → 2027-10-04 (+22d) | 2027-10-03 → 2027-10-24 (+21d) | -240d → -244d |
| 4 | **Telecom Network** | 2027-08-22 → 2027-05-11 (-103d) | 2027-09-01 → 2027-05-27 (-97d) |  |
| TIE-R11-TE | TIE IN Existing Network For Telecom Network | 2027-08-22 → 2027-05-11 (-103d) | 2027-09-01 → 2027-05-27 (-97d) | -221d → -118d |
| 3 | **Road Works** | 2027-10-19 → 2027-11-30 (+42d) | 2027-10-25 → 2027-12-06 (+42d) |  |
| TIE-R11-RD | TIE IN Existing Network For Road Works | 2027-10-19 → 2027-11-30 (+42d) | 2027-10-25 → 2027-12-06 (+42d) | -245.5d → -276.5d |
| 6 | **Road 14 Local 1 ( 584 LM )** | 2027-07-14 → 2027-03-24 (-112d) | 2027-10-25 → 2027-12-06 (+42d) |  |
| 15 | **Storm Drainage Network** | 2027-08-24 → 2027-09-02 (+9d) | 2027-08-31 → 2027-09-09 (+9d) |  |
| TIE-SD-R14 | TIE IN Existing Network For Storm Drainage Network | 2027-08-24 → 2027-09-02 (+9d) | 2027-08-31 → 2027-09-09 (+9d) | -205d → -207d |
| 16 | **Sewage Network** | 2027-08-04 → 2027-08-14 (+10d) | 2027-08-17 → 2027-08-26 (+9d) |  |
| TIE-SW-R14 | TIE IN Existing Network For Sewage Network | 2027-08-04 → 2027-08-14 (+10d) | 2027-08-17 → 2027-08-26 (+9d) |  |
| 17 | **Potable Water Network** | 2027-08-31 → 2027-10-05 (+35d) | 2027-09-13 → 2027-10-18 (+35d) |  |
| TIE-PW-R14 | TIE IN Existing Network For Potable Water Network | 2027-08-31 → 2027-10-05 (+35d) | 2027-09-13 → 2027-10-18 (+35d) | -218d → -239d |
| 1 | **Irrigation Network** | 2027-07-14 → 2027-07-24 (+10d) | 2027-07-27 → 2027-08-05 (+9d) |  |
| TIE-IR-R14 | TIE IN Existing Network For Irrigation Network | 2027-07-14 → 2027-07-24 (+10d) | 2027-07-27 → 2027-08-05 (+9d) |  |
| 18 | **Meduim Voltage Network** | 2027-08-22 → 2027-03-24 (-151d) | 2027-09-11 → 2027-04-13 (-151d) |  |
| TIE-R14-MV | TIE IN Existing Network For Medium Voltage Network | 2027-08-22 → 2027-03-24 (-151d) | 2027-09-11 → 2027-04-13 (-151d) | -219d → -84d |
| 2 | **Street Lighting Network** | 2027-09-12 → 2027-10-04 (+22d) | 2027-10-03 → 2027-10-24 (+21d) |  |
| TIE-R14-SL | TIE IN Existing Network For Street Lighting Network | 2027-09-12 → 2027-10-04 (+22d) | 2027-10-03 → 2027-10-24 (+21d) | -240d → -244d |
| 4 | **Telecom Network** | 2027-08-22 → 2027-05-11 (-103d) | 2027-09-01 → 2027-05-27 (-97d) |  |
| TIE-R14-TE | TIE IN Existing Network For Telecom Network | 2027-08-22 → 2027-05-11 (-103d) | 2027-09-01 → 2027-05-27 (-97d) | -221d → -117d |
| 3 | **Road Works** | 2027-10-19 → 2027-11-30 (+42d) | 2027-10-25 → 2027-12-06 (+42d) |  |
| TIE-R14-RD | TIE IN Existing Network For Road Works | 2027-10-19 → 2027-11-30 (+42d) | 2027-10-25 → 2027-12-06 (+42d) | -245.5d → -280.5d |
| 7 | **Road 15 Local 1 ( 556 LM )** | 2027-07-14 → 2027-03-24 (-112d) | 2027-10-03 → 2027-10-24 (+21d) |  |

| ID | Task | Start | Finish | Total float | Predecessors |
| --- | --- | --- | --- | --- | --- |
| 15 | **Storm Drainage Network** | 2027-08-24 → 2027-09-02 (+9d) | 2027-08-31 → 2027-09-09 (+9d) |  |  |
| TIE-SD-R15 | TIE IN Existing Network For Storm Drainage Network | 2027-08-24 → 2027-09-02 (+9d) | 2027-08-31 → 2027-09-09 (+9d) | -205d → -207d |  |
| 16 | **Sewage Network** | 2027-08-04 → 2027-08-14 (+10d) | 2027-08-17 → 2027-08-26 (+9d) |  |  |
| TIE-SW-R15 | TIE IN Existing Network For Sewage Network | 2027-08-04 → 2027-08-14 (+10d) | 2027-08-17 → 2027-08-26 (+9d) |  |  |
| 17 | **Potable Water Network** | 2027-08-31 → 2027-10-05 (+35d) | 2027-09-13 → 2027-10-18 (+35d) |  |  |
| TIE-PW-R15 | TIE IN Existing Network For Potable Water Network | 2027-08-31 → 2027-10-05 (+35d) | 2027-09-13 → 2027-10-18 (+35d) | -218d → -239d |  |
| 1 | **Irrigation Network** | 2027-07-14 → 2027-07-24 (+10d) | 2027-07-27 → 2027-08-05 (+9d) |  |  |
| TIE-IR-R15 | TIE IN Existing Network For Irrigation Network | 2027-07-14 → 2027-07-24 (+10d) | 2027-07-27 → 2027-08-05 (+9d) |  |  |
| 18 | **Meduim Voltage Network** | 2027-08-22 → 2027-03-24 (-151d) | 2027-09-11 → 2027-04-13 (-151d) |  |  |
| TIE-R15-MV | TIE IN Existing Network For Medium Voltage Network | 2027-08-22 → 2027-03-24 (-151d) | 2027-09-11 → 2027-04-13 (-151d) | -219d → -84d |  |
| 2 | **Street Lighting Network** | 2027-09-12 → 2027-10-04 (+22d) | 2027-10-03 → 2027-10-24 (+21d) |  |  |
| TIE-R15-SL | TIE IN Existing Network For Street Lighting Network | 2027-09-12 → 2027-10-04 (+22d) | 2027-10-03 → 2027-10-24 (+21d) | -240d → -244d |  |
| 3 | **Telecom Network** | 2027-08-22 → 2027-05-11 (-103d) | 2027-09-01 → 2027-05-27 (-97d) |  |  |
| TIE-R15-TE | TIE IN Existing Network For Telecom Network | 2027-08-22 → 2027-05-11 (-103d) | 2027-09-01 → 2027-05-27 (-97d) | -221d → -117d |  |
| 8 | **Road 16 Local 1 ( 527 LM )** | 2027-07-14 → 2027-03-24 (-112d) | 2027-10-03 → 2027-10-24 (+21d) |  |  |
| 15 | **Storm Drainage Network** | 2027-08-24 → 2027-09-02 (+9d) | 2027-08-31 → 2027-09-09 (+9d) |  |  |
| TIE-SD-R16 | TIE IN Existing Network For Storm Drainage Network | 2027-08-24 → 2027-09-02 (+9d) | 2027-08-31 → 2027-09-09 (+9d) | -205d → -207d |  |
| 16 | **Sewage Network** | 2027-08-04 → 2027-08-14 (+10d) | 2027-08-17 → 2027-08-26 (+9d) |  |  |
| TIE-SW-R16 | TIE IN Existing Network For Sewage Network | 2027-08-04 → 2027-08-14 (+10d) | 2027-08-17 → 2027-08-26 (+9d) |  |  |
| 17 | **Potable Water Network** | 2027-08-31 → 2027-10-05 (+35d) | 2027-09-13 → 2027-10-18 (+35d) |  |  |
| TIE-PW-R16 | TIE IN Existing Network For Potable Water Network | 2027-08-31 → 2027-10-05 (+35d) | 2027-09-13 → 2027-10-18 (+35d) | -218d → -239d |  |
| 1 | **Irrigation Network** | 2027-07-14 → 2027-07-24 (+10d) | 2027-07-27 → 2027-08-05 (+9d) |  |  |
| TIE-IR-R16 | TIE IN Existing Network For Irrigation Network | 2027-07-14 → 2027-07-24 (+10d) | 2027-07-27 → 2027-08-05 (+9d) |  |  |
| 18 | **Meduim Voltage Network** | 2027-08-22 → 2027-03-24 (-151d) | 2027-09-11 → 2027-04-13 (-151d) |  |  |
| TIE-R16-MV | TIE IN Existing Network For Medium Voltage Network | 2027-08-22 → 2027-03-24 (-151d) | 2027-09-11 → 2027-04-13 (-151d) | -219d → -84d |  |
| 2 | **Street Lighting Network** | 2027-09-12 → 2027-10-04 (+22d) | 2027-10-03 → 2027-10-24 (+21d) |  |  |
| TIE-R16-SL | TIE IN Existing Network For Street Lighting Network | 2027-09-12 → 2027-10-04 (+22d) | 2027-10-03 → 2027-10-24 (+21d) | -240d → -244d |  |
| 3 | **Telecom Network** | 2027-08-22 → 2027-05-11 (-103d) | 2027-09-01 → 2027-05-27 (-97d) |  |  |
| TIE-R16-TE | TIE IN Existing Network For Telecom Network | 2027-08-22 → 2027-05-11 (-103d) | 2027-09-01 → 2027-05-27 (-97d) | -221d → -117d |  |
| 9 | **Road 17 Local 1 ( 500 LM )** | 2027-07-14 → 2027-03-24 (-112d) | 2027-10-03 → 2027-10-24 (+21d) |  |  |
| 15 | **Storm Drainage Network** | 2027-08-24 → 2027-09-02 (+9d) | 2027-08-31 → 2027-09-09 (+9d) |  |  |
| TIE-SD-R17 | TIE IN Existing Network For Storm Drainage Network | 2027-08-24 → 2027-09-02 (+9d) | 2027-08-31 → 2027-09-09 (+9d) | -205d → -207d |  |
| 16 | **Sewage Network** | 2027-08-04 → 2027-08-14 (+10d) | 2027-08-17 → 2027-08-26 (+9d) |  |  |
| TIE-SW-R17 | TIE IN Existing Network For Sewage Network | 2027-08-04 → 2027-08-14 (+10d) | 2027-08-17 → 2027-08-26 (+9d) |  |  |
| 17 | **Potable Water Network** | 2027-08-31 → 2027-10-05 (+35d) | 2027-09-13 → 2027-10-18 (+35d) |  |  |
| TIE-PW-R17 | TIE IN Existing Network For Potable Water Network | 2027-08-31 → 2027-10-05 (+35d) | 2027-09-13 → 2027-10-18 (+35d) | -218d → -239d |  |
| 1 | **Irrigation Network** | 2027-07-14 → 2027-07-24 (+10d) | 2027-07-27 → 2027-08-05 (+9d) |  |  |
| TIE-IR-R17 | TIE IN Existing Network For Irrigation Network | 2027-07-14 → 2027-07-24 (+10d) | 2027-07-27 → 2027-08-05 (+9d) |  |  |
| 18 | **Meduim Voltage Network** | 2027-08-22 → 2027-03-24 (-151d) | 2027-09-11 → 2027-04-13 (-151d) |  |  |
| TIE-R17-MV | TIE IN Existing Network For Medium Voltage Network | 2027-08-22 → 2027-03-24 (-151d) | 2027-09-11 → 2027-04-13 (-151d) | -219d → -84d |  |
| 2 | **Street Lighting Network** | 2027-09-12 → 2027-10-04 (+22d) | 2027-10-03 → 2027-10-24 (+21d) |  |  |
| TIE-R17-SL | TIE IN Existing Network For Street Lighting Network | 2027-09-12 → 2027-10-04 (+22d) | 2027-10-03 → 2027-10-24 (+21d) | -240d → -244d |  |
| 3 | **Telecom Network** | 2027-08-22 → 2027-05-11 (-103d) | 2027-09-01 → 2027-05-27 (-97d) |  |  |
| TIE-R17-TE | TIE IN Existing Network For Telecom Network | 2027-08-22 → 2027-05-11 (-103d) | 2027-09-01 → 2027-05-27 (-97d) | -221d → -117d |  |
| 1 | **Road 18 Local 1 ( 479 LM )** | 2027-04-29 → 2027-03-24 (-36d) | 2027-10-03 → 2027-10-24 (+21d) |  |  |
| 15 | **Storm Drainage Network** | 2027-08-24 → 2027-09-02 (+9d) | 2027-08-31 → 2027-09-09 (+9d) |  |  |
| TIE-SD-R18 | TIE IN Existing Network For Storm Drainage Network | 2027-08-24 → 2027-09-02 (+9d) | 2027-08-31 → 2027-09-09 (+9d) | -205d → -203d |  |
| 16 | **Sewage Network** | 2027-08-04 → 2027-08-14 (+10d) | 2027-08-17 → 2027-08-26 (+9d) |  |  |
| TIE-SW-R18 | TIE IN Existing Network For Sewage Network | 2027-08-04 → 2027-08-14 (+10d) | 2027-08-17 → 2027-08-26 (+9d) | -195d → -191d |  |
| 17 | **Potable Water Network** | 2027-08-31 → 2027-10-05 (+35d) | 2027-09-13 → 2027-10-18 (+35d) |  |  |
| TIE-PW-R18 | TIE IN Existing Network For Potable Water Network | 2027-08-31 → 2027-10-05 (+35d) | 2027-09-13 → 2027-10-18 (+35d) | -218d → -235d |  |
| 1 | **Irrigation Network** | 2027-07-14 → 2027-07-24 (+10d) | 2027-07-27 → 2027-08-05 (+9d) |  |  |
| TIE-IR-R18 | TIE IN Existing Network For Irrigation Network | 2027-07-14 → 2027-07-24 (+10d) | 2027-07-27 → 2027-08-05 (+9d) | -177d → -173d |  |
| 18 | **Meduim Voltage Network** | 2027-08-22 → 2027-03-24 (-151d) | 2027-09-11 → 2027-04-13 (-151d) |  |  |
| TIE-R18-MV10 | TIE IN Existing Network For Medium Voltage Network | 2027-08-22 → 2027-03-24 (-151d) | 2027-09-11 → 2027-04-13 (-151d) | -219d → -80d |  |
| 2 | **Street Lighting Network** | 2027-09-12 → 2027-10-04 (+22d) | 2027-10-03 → 2027-10-24 (+21d) |  |  |
| TIE-R18-SL10 | TIE IN Existing Network For Street Lighting Network | 2027-09-12 → 2027-10-04 (+22d) | 2027-10-03 → 2027-10-24 (+21d) |  |  |
| 3 | **Telecom Network** | 2027-04-29 → 2027-05-11 (+12d) | 2027-05-12 → 2027-05-30 (+18d) |  |  |
| TIE-R18-TE10 | TIE IN Existing Network For Telecom Network | 2027-04-29 → 2027-05-11 (+12d) | 2027-05-12 → 2027-05-30 (+18d) | -130d → -115d | MS-CF-TE, CO-R18.S15-TE-220, CO-R18.S16-TE-190, CO-R18.S16-TE-220 → MS-CF-TE |
| 2 | **Sewage Pump Stations** |  | 2027-07-25 → 2027-06-15 (-40d) |  |  |
| 1 | **Sewage Pump Station ( PS 06 )** |  | 2027-07-25 → 2027-06-15 (-40d) |  |  |
| 1 | **Pump Station Main Building** |  | 2027-06-17 → 2027-04-10 (-68d) |  |  |
| CO-SW-PS7-MB-100 | Excavation Main Bulding |  |  |  | ENG-SH-SPS-A-110, ENG-MS-SPS-A-110, ENG-MT-SPS-CV-A-110, ENG-MT-SPS-MC-A-110, PRO-SPS-CV-1DL-10, CO-R14.S07-SD-130, CO-R15.S09-SD-130, CO-R16.S12-SD-130 → ENG-SH-SPS-A-110, ENG-MS-SPS-A-110, ENG-MT-SPS-CV-A-110, ENG-MT-SPS-MC-A-110, CO-R14.S07-SD-130, CO-R15.S09-SD-130, CO-R16.S12-SD-130 |
| CO-SW-PS7-MB-110 | Concrete Works of Superstrucure |  | 2026-12-26 → 2026-11-16 (-40d) | -189d → -155d |  |
| CO-SW-PS7-MB-120 | Internal Finishes Works of Superstrucure | 2026-12-27 → 2026-11-17 (-40d) | 2027-01-30 → 2026-12-21 (-40d) | -189d → -155d |  |
| CO-SW-PS7-MB-130 | Internal Electrical Works | 2027-01-31 → 2026-12-22 (-40d) | 2027-03-07 → 2027-01-25 (-41d) | -152d → -118d |  |
| CO-SW-PS7-MB-140 | Internal Mechanical Works | 2027-03-08 → 2027-01-26 (-41d) | 2027-04-14 → 2027-03-02 (-43d) | -152d → -118d |  |
| CO-SW-PS7-MB-150 | Electromechanical Main Works | 2027-05-09 → 2027-03-03 (-67d) | 2027-06-17 → 2027-04-10 (-68d) | -172d → -118d |  |
| 2 | **Generator With Umbrella Tank** | 2027-01-31 → 2026-12-22 (-40d) | 2027-05-02 → 2027-03-23 (-40d) |  |  |
| CO-SW-PS7-GN-100 | Concrete Works of Base | 2027-01-31 → 2026-12-22 (-40d) | 2027-02-13 → 2027-01-04 (-40d) | -189d → -155d |  |

| ID | Task | Start | Finish | Complete | Total float | Predecessors | Other |
| --- | --- | --- | --- | --- | --- | --- | --- |
| CO-SW-PS7-GN-110 | Install Manually Operated Fuel Pump | 2027-02-14 → 2027-01-05 (-40d) | 2027-03-14 → 2027-01-28 (-45d) |  | -189d → -155d |  |  |
| CO-SW-PS7-GN-120 | Install Ground Fuel Tank | 2027-03-15 → 2027-01-30 (-44d) | 2027-04-07 → 2027-02-23 (-43d) |  | -189d → -155d |  |  |
| CO-SW-PS7-GN-130 | Fix Steel Structure for Umbrella | 2027-04-08 → 2027-02-24 (-43d) | 2027-05-02 → 2027-03-23 (-40d) |  | -189d → -155d |  |  |
| 5 | **Motor Control Centre Building** | 2026-12-27 → 2026-11-17 (-40d) | 2027-06-07 → 2027-04-11 (-57d) |  |  |  |  |
| CO-SW-PS7-MCC-100 | Excavation Main Bulding | 2026-12-27 → 2026-11-17 (-40d) | 2027-01-13 → 2026-12-05 (-39d) |  | -153d → -119d |  |  |
| CO-SW-PS7-MCC-110 | Concrete Works of Superstrucure | 2027-01-14 → 2026-12-06 (-39d) | 2027-02-07 → 2026-12-29 (-40d) |  | -153d → -119d |  | resources Skilled Labor/Surveyor [72 h]; Foreman [72 h]; Cons. Carpenter [1440 h]; Block Mason [720 h]; Plain concrete foundation [0.8]; Reinfirced concrete foundation [8]; Reinforced concrete columns [10]; Reinfirced concrete SOG [21]; Reinfirced concrete slab [36]; CMU walls with thickness 200mm [150]; Waterproofing for foundation [60]; Roof Insulation [45] → Skilled Labor/Surveyor [72 h]; Foreman [72 h]; Cons. Carpenter [1008 h]; Block Mason [504 h]; Plain concrete foundation [0.8]; Reinfirced concrete foundation [8]; Reinforced concrete columns [10]; Reinfirced concrete SOG [21]; Reinfirced concrete slab [36]; CMU walls with thickness 200mm [150]; Waterproofing for foundation [60]; Roof Insulation [45] |
| CO-SW-PS7-MCC-120 | Internal Finishes Works of Superstrucure | 2027-02-08 → 2026-12-30 (-40d) | 2027-03-04 → 2027-01-23 (-40d) |  | -153d → -119d |  | resources Labor/Helper [720 h]; Block Mason [720 h]; Plasterer [720 h]; Painter [720 h]; Acrylic paint on elevations including plastering [150]; Acrylic paint on internal wallsand ceiling including plastering [190]; Epoxy paint on floors [40]; Supply and install 2000*3000 mm double leaf manufacturer label shall pass the test requirements complete with accessories as per door schedule and material as approved by the Client. [1]; Plinth for odour control system [20] → Labor/Helper [504 h]; Block Mason [504 h]; Plasterer [504 h]; Painter [504 h]; Acrylic paint on elevations including plastering [150]; Acrylic paint on internal wallsand ceiling including plastering [190]; Epoxy paint on floors [40]; Supply and install 2000*3000 mm double leaf manufacturer label shall pass the test requirements complete with accessories as per door schedule and material as approved by the Client. [1]; Plinth for odour control system [20] |
| CO-SW-PS7-MCC-130 | Internal Electrical Works | 2027-03-06 → 2027-01-24 (-41d) | 2027-04-01 → 2027-02-16 (-44d) |  | -153d → -119d |  |  |
| CO-SW-PS7-MCC-140 | Internal Mechanical Works | 2027-04-03 → 2027-02-17 (-45d) | 2027-04-26 → 2027-03-17 (-40d) |  | -153d → -119d |  | resources Labor/Helper [640 h]; Electrician [640 h]; MCC [1] → Labor/Helper [336 h]; Electrician [336 h]; MCC [1] |
| CO-SW-PS7-MCC-150 | Electromechanical Main Works | 2027-05-09 → 2027-03-18 (-52d) | 2027-06-07 → 2027-04-11 (-57d) |  | -163d → -119d |  |  |
| 6 | **Simple Building Works** | 2027-05-03 → 2027-03-24 (-40d) | 2027-07-05 → 2027-05-26 (-40d) |  |  |  |  |
| CO-SW-PS7-SBL-100 | Perimeter Fencing | 2027-05-03 → 2027-03-24 (-40d) | 2027-06-03 → 2027-04-19 (-45d) |  | -189d → -155d |  |  |
| CO-SW-PS7-SBL-110 | Outside Lighting | 2027-06-05 → 2027-04-20 (-46d) | 2027-07-05 → 2027-05-26 (-40d) |  | -187d → -153d |  |  |
| CO-SW-PS7-SBL-120 | Outside Duct Works | 2027-06-05 → 2027-04-20 (-46d) | 2027-06-30 → 2027-05-22 (-39d) |  | -189d → -155d |  |  |
| CO-SW-PS7-SBL-130 | Rectangular Wet Wells | 2027-06-05 → 2027-04-20 (-46d) | 2027-07-05 → 2027-05-26 (-40d) |  | -187d → -153d |  |  |
| CO-SW-PS7-SBL-140 | Round Wet Well Structure for basket screen | 2027-06-05 → 2027-04-20 (-46d) | 2027-07-05 → 2027-05-26 (-40d) |  | -187d → -153d |  |  |
| CO-SW-PS7-SBL-150 | Motorized basket screen | 2027-06-05 → 2027-04-20 (-46d) | 2027-07-05 → 2027-05-26 (-40d) |  | -187d → -153d |  |  |
| 7 | **Site Work and Service Road** | 2027-07-01 → 2027-05-23 (-39d) | 2027-07-25 → 2027-06-15 (-40d) |  |  |  |  |
| CO-SW-PS7-SWS-100 | Outside Strom Drainage System | 2027-07-01 → 2027-05-23 (-39d) | 2027-07-07 → 2027-05-29 (-39d) |  | -189d → -155d |  |  |
| CO-SW-PS7-SWS-110 | Bituminous Works | 2027-07-08 → 2027-05-30 (-39d) | 2027-07-25 → 2027-06-15 (-40d) |  | -189d → -155d | CO-SW-PS7-MCC-150, CO-SW-PS7-SWS-100, CO-SW-PS7-SBL-120, CO-SW-PS7-SBL-110, CO-SW-PS7-SBL-100, CO-SW-PS7-GN-130, CO-SW-PS7-GN-120, CO-SW-PS7-MB-150, CO-SW-PS7-SBL-130, CO-SW-PS7-SBL-140, CO-SW-PS7-SBL-150, PRO-SPS-CV-DL-10 FF+3d → CO-SW-PS7-MCC-150, CO-SW-PS7-SWS-100, CO-SW-PS7-SBL-120, CO-SW-PS7-SBL-110, CO-SW-PS7-SBL-100, CO-SW-PS7-GN-130, CO-SW-PS7-GN-120, CO-SW-PS7-MB-150, CO-SW-PS7-SBL-130, CO-SW-PS7-SBL-140, CO-SW-PS7-SBL-150, PRO-SPS-CV-DL-10 FF+3d, PRO-SPS-CV-1DL-10 |  |
| 1 | **Storm Drainage Ponds** |  | 2027-08-04 → 2027-08-02 (-2d) |  |  |  |  |
| 1 | **Storm Drainage Pond ( PO-J1)** |  | 2027-03-17 → 2027-03-24 (+7d) |  |  |  |  |
| CO-SD-PO-K1-100-P1 | Excavation & Filling Works - PART 1 |  |  |  |  | ENG-SH-DPO-A-110, ENG-MS-DPO-A-110, ENG-MT-DPO-CV-A-110 → CO-R10.S04-ES-SD-130, PRO-DPO-CV-1DL-10, ENG-SH-DPO-A-110, ENG-MS-DPO-A-110, ENG-MT-DPO-CV-A-110, CO-R11.S06-SD-130, CO-R10.S04-WE-SD-130 |  |
| CO-SD-PO-K1-110-P1 | Finished Grouted Riprap - PART 1 | 2026-10-06 → 2026-10-13 (+7d) | 2026-10-29 → 2026-11-05 (+7d) |  | -141d → -147d |  |  |
| CO-SD-PO-K1-110-P2 | Finished Grouted Riprap - PART 2 | 2026-10-31 → 2026-11-07 (+7d) | 2026-11-23 → 2026-11-30 (+7d) |  | -141d → -147d |  |  |
| CO-SD-PO-K1-110-P3 | Finished Grouted Riprap - PART 3 | 2026-11-24 → 2026-12-01 (+7d) | 2026-12-17 → 2026-12-24 (+7d) |  | -141d → -147d |  |  |
| CO-SD-PO-K1-110-P4 | Finished Grouted Riprap - PART 4 | 2026-12-19 → 2026-12-26 (+7d) | 2027-01-11 → 2027-01-18 (+7d) |  | -141d → -147d |  |  |
| CO-SD-PO-K1-120 | Outfall structure | 2027-01-12 → 2027-01-19 (+7d) | 2027-02-10 → 2027-02-17 (+7d) |  | -141d → -147d |  |  |
| CO-SD-PO-K1-130 | Acess Entrace Ramp | 2027-02-11 → 2027-02-18 (+7d) | 2027-03-17 → 2027-03-24 (+7d) |  | -141d → -147d |  |  |
| 2 | **Storm Drainage Pond ( PO-J2)** | 2026-12-22 → 2027-01-21 (+30d) | 2027-08-04 → 2027-08-02 (-2d) |  |  |  |  |
| CO-SD-PO-K2-100-P1 | Excavation & Filling Works - PART 1 | 2026-12-22 → 2027-01-21 (+30d) | 2027-01-14 → 2027-02-14 (+31d) |  | -215d → -226d | CO-SD-PO-K1-100-P1, PRO-DPO-CV-1DL-20, ENG-SH-DPO-A-110, ENG-MS-DPO-A-110, ENG-MT-DPO-CV-A-110 → CO-SD-PO-K1-100-P1, CO-R11.S06-SD-130, PRO-DPO-CV-1DL-20, ENG-SH-DPO-A-110, ENG-MS-DPO-A-110, ENG-MT-DPO-CV-A-110 |  |
| CO-SD-PO-K2-100-P2 | Excavation & Filling Works - PART 2 | 2027-01-16 → 2027-02-15 (+30d) | 2027-02-08 → 2027-03-15 (+35d) |  | -215d → -226d |  |  |
| CO-SD-PO-K2-110-P1 | Finished Grouted Riprap - PART 1 | 2027-01-16 → 2027-02-15 (+30d) | 2027-02-08 → 2027-03-15 (+35d) |  | -215d → -226d |  |  |
| CO-SD-PO-K2-100-P3 | Excavation & Filling Works - PART 3 | 2027-03-18 → 2027-03-16 (-2d) | 2027-04-11 → 2027-04-08 (-3d) |  | -243d → -226d |  |  |
| CO-SD-PO-K2-110-P2 | Finished Grouted Riprap - PART 2 | 2027-02-09 → 2027-03-16 (+35d) | 2027-03-06 → 2027-04-08 (+33d) |  | -215d → -226d |  |  |
| CO-SD-PO-K2-100-P4 | Excavation & Filling Works - PART 4 | 2027-04-12 → 2027-04-10 (-2d) | 2027-05-05 → 2027-05-03 (-2d) |  | -243d → -226d |  |  |
| CO-SD-PO-K2-110-P3 | Finished Grouted Riprap - PART 3 | 2027-04-12 → 2027-04-10 (-2d) | 2027-05-05 → 2027-05-03 (-2d) |  | -243d → -226d |  |  |
| CO-SD-PO-K2-110-P4 | Finished Grouted Riprap - PART 4 | 2027-05-06 → 2027-05-04 (-2d) | 2027-06-05 → 2027-06-02 (-3d) |  | -243d → -226d |  |  |
| CO-SD-PO-K2-120 | Outfall structure | 2027-06-06 → 2027-06-03 (-3d) | 2027-07-05 → 2027-07-03 (-2d) |  | -243d → -226d |  |  |
| CO-SD-PO-K2-130 | Acess Entrace Ramp | 2027-07-06 → 2027-07-04 (-2d) | 2027-08-04 → 2027-08-02 (-2d) |  | -243d → -226d |  |  |
| TC | **Testing and Comissioning** |  | 2027-10-31 → 2027-12-06 (+36d) |  |  |  |  |
| INF | **Infrastructure Networks** |  | 2027-10-31 → 2027-12-06 (+36d) |  |  |  |  |
| PW1 | **Irrigation Network** |  | 2027-08-10 → 2027-08-05 (-5d) |  |  |  |  |
| T/C-IR | Testing and Commissioning of Irrigation Network |  | 2027-08-10 → 2027-08-05 (-5d) |  | -177d → -173d | TIE-IR-R09, TIE-IR-R10, TIE-IR-R11, TIE-IR-R14, TIE-IR-R15, TIE-IR-R16, TIE-IR-R17, TIE-IR-R18 → TIE-IR-R09 FF, TIE-IR-R10 FF, TIE-IR-R11 FF, TIE-IR-R14 FF, TIE-IR-R15 FF, TIE-IR-R16 FF, TIE-IR-R17 FF, TIE-IR-R18 FF |  |
| PW | **Potable Water Network** |  | 2027-09-28 → 2027-10-18 (+20d) |  |  |  |  |
| T/C-PW | Testing and Commissioning of Potable Water Network |  | 2027-09-28 → 2027-10-18 (+20d) | 55% → 60% | -218d → -235d | TIE-PW-R09, TIE-PW-R10, TIE-PW-R11, TIE-PW-R14, TIE-PW-R15, TIE-PW-R16, TIE-PW-R17, TIE-PW-R18 → TIE-PW-R09 FF, TIE-PW-R10 FF, TIE-PW-R11 FF, TIE-PW-R14 FF, TIE-PW-R15 FF, TIE-PW-R16 FF, TIE-PW-R17 FF, TIE-PW-R18 FF |  |
| SW | **Sewage Network** |  | 2027-10-10 → 2027-10-07 (-3d) |  |  |  |  |
| T/C-SW | Testing and Commissioning of Sewage Network |  | 2027-10-10 → 2027-10-07 (-3d) | 80% → 85% | -228d → -226d | TIE-SW-R09, TIE-SW-R10, TIE-SW-R11, TIE-SW-R14, TIE-SW-R15, TIE-SW-R16, TIE-SW-R17, T/C-SPS FF, TIE-SW-R18 → TIE-SW-R09 FF, TIE-SW-R10 FF, TIE-SW-R11 FF, TIE-SW-R14 FF, TIE-SW-R15 FF, TIE-SW-R16 FF, TIE-SW-R17 FF, T/C-SPS FF, TIE-SW-R18 FF |  |
| SD | **Storm Drainage Network** |  | 2027-09-12 → 2027-09-09 (-3d) |  |  |  |  |
| T/C-SD | Testing and Commissioning of Storm Drainage Network |  | 2027-09-12 → 2027-09-09 (-3d) | 80% → 85% | -205d → -203d | TIE-SD-R09, TIE-SD-R10, TIE-SD-R11, TIE-SD-R14, TIE-SD-R15, TIE-SD-R16, TIE-SD-R17, T/C-DPO FF, TIE-SD-R18, CO-R10.S03-WE-SD-160 → TIE-SD-R09 FF, TIE-SD-R10 FF, TIE-SD-R11 FF, TIE-SD-R14 FF, TIE-SD-R15 FF, TIE-SD-R16 FF, TIE-SD-R17 FF, T/C-DPO FF, TIE-SD-R18 FF |  |
| T/C-SL | Testing and Commissioning of Street Lighting Network |  |  |  |  | TIE-R09-SL, TIE-R10-SL, TIE-R11-SL, TIE-R14-SL, TIE-R15-SL, TIE-R16-SL, TIE-R17-SL, TIE-R18-SL10 → TIE-R09-SL FF, TIE-R10-SL FF, TIE-R11-SL FF, TIE-R14-SL FF, TIE-R15-SL FF, TIE-R16-SL FF, TIE-R17-SL FF, TIE-R18-SL10 FF |  |
| TE | **Telecom Network** |  | 2027-09-20 → 2027-09-06 (-14d) |  |  |  |  |
| T/C-TE | Testing and Commissioning of Telecom Network |  | 2027-09-20 → 2027-09-06 (-14d) |  | -227d → -200d | TIE-R09-TE, TIE-R10-TE, TIE-R11-TE, TIE-R14-TE, TIE-R15-TE, TIE-R16-TE, TIE-R17-TE, T/C-DPO, TIE-R18-TE10 → TIE-R09-TE FF, TIE-R10-TE FF, TIE-R11-TE FF, TIE-R14-TE FF, TIE-R15-TE FF, TIE-R16-TE FF, TIE-R17-TE FF, T/C-DPO FF, TIE-R18-TE10 FF |  |
| MV | **Medium Voltage Network** |  | 2027-10-03 → 2027-09-06 (-27d) |  |  |  |  |
| T/C-MV | Testing and Commissioning of Medium Voltage Network |  | 2027-10-03 → 2027-09-06 (-27d) | 50% → 55% | -227d → -200d | TIE-R09-MV, TIE-R10-MV, TIE-R11-MV, TIE-R14-MV, TIE-R15-MV, TIE-R16-MV, TIE-R17-MV, T/C-TE, TIE-R18-MV10 → TIE-R09-MV FF, TIE-R10-MV FF, TIE-R11-MV FF, TIE-R14-MV FF, TIE-R15-MV FF, TIE-R16-MV FF, TIE-R17-MV FF, T/C-TE SS, TIE-R18-MV10 FF |  |
| RD | **Road Works** |  | 2027-10-31 → 2027-12-06 (+36d) |  |  |  |  |
| T/C-RD | Testing and Commissioning of Road Works |  | 2027-10-31 → 2027-12-06 (+36d) |  | -245.5d → -276.5d | TIE-R10-RD, TIE-R11-RD, TIE-R14-RD, T/C-MV → TIE-R10-RD FF, TIE-R11-RD FF, TIE-R14-RD FF, T/C-MV FF |  |
| 1 | **Independent Works** | 2027-08-05 → 2027-08-03 (-2d) | 2027-10-10 → 2027-10-07 (-3d) |  |  |  |  |
| T/C-DPO | Testing and Commissioning of Storm Drainage Ponds | 2027-08-05 → 2027-08-03 (-2d) | 2027-09-08 → 2027-09-06 (-2d) |  | -228d → -226d |  |  |
| T/C-SPS | Testing and Commissioning of Sewage Pump Stations | 2027-09-09 → 2027-09-07 (-2d) | 2027-10-10 → 2027-10-07 (-3d) |  | -228d → -226d |  |  |
| 1 | **Handing over and close out** | 2027-07-14 → 2027-06-16 (-28d) | 2027-11-08 → 2027-12-20 (+42d) |  |  |  |  |
| 2 | **As-Built** | 2027-07-14 → 2027-06-16 (-28d) | 2027-11-02 → 2027-12-14 (+42d) |  |  |  |  |
| HO-210 | Submission As-Built Drawing For Pump station | 2027-07-26 → 2027-06-16 (-40d) | 2027-08-08 → 2027-06-29 (-40d) |  | -177d → -143d |  |  |
| HO-180 | Submission As-Built Drawing For Irrigation Network | 2027-07-14 → 2027-07-24 (+10d) | 2027-07-27 → 2027-08-05 (+9d) |  | -179d → -187d |  |  |
| HO-130 | Submission As-Built Drawing For Pond | 2027-08-05 → 2027-08-07 (+2d) | 2027-08-18 → 2027-08-19 (+1d) |  | -186d → -187d |  |  |
| HO-160 | Submission As-Built Drawing For Telecom Network | 2027-07-28 → 2027-08-07 (+10d) | 2027-08-10 → 2027-08-19 (+9d) |  | -179d → -187d |  |  |
| HO-170 | Submission As-Built Drawing For Medium Voltage Network | 2027-08-22 → 2027-08-07 (-15d) | 2027-09-04 → 2027-08-19 (-16d) |  | -200d → -187d |  |  |
| HO-200 | Submission As-Built Drawing For Storm Network | 2027-08-24 → 2027-09-02 (+9d) | 2027-09-06 → 2027-09-15 (+9d) |  | -202d → -210d |  |  |
| HO-150 | Submission As-Built Drawing For Street Lighting Network | 2027-09-12 → 2027-10-04 (+22d) | 2027-09-26 → 2027-10-17 (+21d) |  | -218d → -236d |  |  |
| HO-190 | As-Built Drawing For Potable Water Network | 2027-08-31 → 2027-10-05 (+35d) | 2027-09-13 → 2027-10-18 (+35d) |  | -208d → -237d |  |  |

| ID | Task | Start | Finish | Total float |
| --- | --- | --- | --- | --- |
| HO-100 | Submission As-Built Drawing For Sewage Network | 2027-10-25 → 2027-12-06 (+42d) | 2027-11-02 → 2027-12-14 (+42d) | -244.5d → -280.5d |
| HO-140 | Submission As-Built Drawing For Roads Network | 2027-10-25 → 2027-12-06 (+42d) | 2027-10-31 → 2027-12-12 (+42d) | -247.5d → -283.5d |
| 1 | **De-Mobilization Works** | 2027-10-31 → 2027-12-08 (+38d) | 2027-11-06 → 2027-12-14 (+38d) |  |
| HO-120 | Remove material stock & Storage area | 2027-10-31 → 2027-12-08 (+38d) | 2027-11-06 → 2027-12-14 (+38d) | -245.5d → -278.5d |
| HO-220 | Removing Portable Caravan | 2027-10-31 → 2027-12-08 (+38d) | 2027-11-06 → 2027-12-14 (+38d) | -245.5d → -278.5d |
| HO-230 | Remove Temporary Car Shades | 2027-10-31 → 2027-12-08 (+38d) | 2027-11-06 → 2027-12-14 (+38d) | -245.5d → -278.5d |
| 3 | **Handing Over** | 2027-10-31 → 2027-12-08 (+38d) | 2027-11-08 → 2027-12-20 (+42d) |  |
| HO-110 | Final Testing Work | 2027-10-31 → 2027-12-08 (+38d) | 2027-11-06 → 2027-12-14 (+38d) | -245.5d → -278.5d |
| HO-250 | Review B.O.Q Qty. to ensure compliance with the actual status | 2027-10-31 → 2027-12-12 (+42d) | 2027-11-06 → 2027-12-18 (+42d) | -247.5d → -283.5d |
| HO-260 | Review FIR Approval to ensure compliance with the actual status | 2027-10-31 → 2027-12-12 (+42d) | 2027-11-06 → 2027-12-18 (+42d) | -247.5d → -283.5d |
| HO-270 | Review the sample drawing to ensure compliance with the actual status | 2027-10-31 → 2027-12-12 (+42d) | 2027-11-06 → 2027-12-18 (+42d) | -247.5d → -283.5d |
| HO-240 | Final Walkthrough and Inspection | 2027-11-06 → 2027-12-18 (+42d) | 2027-11-08 → 2027-12-20 (+42d) | -247.5d → -283.5d |
| HO-280 | Punch List Completion | 2027-11-06 → 2027-12-18 (+42d) | 2027-11-08 → 2027-12-20 (+42d) | -247.5d → -283.5d |

## Version 5 (data date 2026-10-20, saved 2026-10-20, file 03.DAM3-02-007-UPS Level 5 -20-10-2026.xer)

Note of the change: Weekly folders named by the Thursday the week ends on: a report dated after one Thursday up to the next goes in the next Thursday's folder (26-Oct → W05 - 29-Oct-2026); all weeks moved accordingly, W00 removed

Last finish 2027-12-20 → 2027-08-31 (-111d). Complete tasks 1173 → 1221.

Changed:

| ID | Task | Start | Finish | Complete | Total float | Predecessors |
| --- | --- | --- | --- | --- | --- | --- |
| MS | **Key Milestones** |  | 2027-12-20 → 2027-08-31 (-111d) |  |  |  |
| CM | **Contractual Milestones** |  | 2027-12-20 → 2027-08-31 (-111d) |  |  |  |
| MS-CF-TE | Completion of Construction Works for Telecom Network | 2027-05-10 → 2027-03-13 (-58d) | 2027-05-10 → 2027-03-13 (-58d) |  | -210d → -160d |  |
| MS-CF-MV | Completion of Construction Works for Medium Voltage Network | 2027-03-23 → 2027-03-27 (+4d) | 2027-03-23 → 2027-03-27 (+4d) |  | -121d → -124d | CO-R09.S01-MV-120, CO-R09-MV-TF-100, ENG-SH-MV-A-110, CO-R09.S01-EW-100, CO-R09.S01-EW-110, CO-R18-MV-TF-120, CO-R10.S03-ES-MV-120, CO-R10-MV-TF-140, CO-R10.S03-ES-EW-100, CO-R10.S03-ES-EW-110, CO-R11.S05-MV-120, CO-R11-MV-TF-160, CO-R11.S05-EW-100, CO-R11.S05-EW-110, CO-R11-MV-TF-180, CO-R14.S07-EW-100, CO-R14.S07-EW-110, CO-R15.S09-MV-ML-270, CO-R15-MV-TF-200, CO-R15.S09-EW-200, CO-R15.S09-EW-110, CO-R16.S11-MV-ML-300, CO-R16-MV-TF-220, CO-R16.S11-EW-100, CO-R16.S11-EW-110, CO-R17.S13-MV-ML-330, CO-R17-MV-TF-240, CO-R17.S13-EW-100, CO-R17.S13-EW-110, ENG-MS-MV-A-110, CO-R10.S03-WE-MV-120, CO-R10.S03-WE-EW-100, CO-R10.S03-WE-EW-110 → CO-R09.S01-MV-120, CO-R09-MV-TF-100, ENG-SH-MV-A-110, CO-R09.S01-EW-100, CO-R09.S01-EW-110, CO-R18-MV-TF-120, CO-R10.S03-ES-MV-120, CO-R10-MV-TF-140, CO-R10.S03-ES-EW-100, CO-R10.S03-ES-EW-110, CO-R11.S05-MV-120, CO-R11-MV-TF-160, CO-R11.S05-EW-100, CO-R11.S05-EW-110, CO-R11-MV-TF-180, CO-R14.S07-EW-100, CO-R14.S07-EW-110, CO-R15.S09-MV-ML-270, CO-R15-MV-TF-200, CO-R15.S09-EW-200, CO-R15.S09-EW-110, CO-R16.S11-MV-ML-300, CO-R16-MV-TF-220, CO-R16.S11-EW-100, CO-R16.S11-EW-110, CO-R17.S13-MV-ML-330, CO-R17-MV-TF-240, CO-R17.S13-EW-100, CO-R17.S13-EW-110, ENG-MS-MV-A-110, CO-R10.S03-WE-MV-120, CO-R10.S03-WE-EW-100, CO-R10.S03-WE-EW-110, MS-CS-MV |
| MS-CF-IR | Completion of Construction Works for Irrigation Network | 2027-07-22 → 2027-05-05 (-78d) | 2027-07-22 → 2027-05-05 (-78d) |  | -220d → -158d | CO-R09.S01-IR-140, CO-R09-IR-TF-100, CO-R18-IR-TF-110, CO-R10.S03-ES-IR-130, CO-R10-IR-TF-120, CO-R11.S05-IR-130, CO-R11-IR-TF-130, CO-R14.S07-IR-130, CO-R11-IR-TF-140, CO-R15.S09-IR-130, CO-R15-IR-TF-150, CO-R16.S11-IR-130, CO-R16-IR-TF-160, CO-R17.S13-IR-130, CO-R17-IR-TF-170, CO-R10.S03-WE-IR-130 → CO-R09.S01-IR-140, CO-R09-IR-TF-100, CO-R18-IR-TF-110, CO-R10.S03-ES-IR-130, CO-R10-IR-TF-120, CO-R11.S05-IR-130, CO-R11-IR-TF-130, CO-R14.S07-IR-130, CO-R11-IR-TF-140, CO-R15.S09-IR-130, CO-R15-IR-TF-150, CO-R16.S11-IR-130, CO-R16-IR-TF-160, CO-R17.S13-IR-130, CO-R17-IR-TF-170, CO-R10.S03-WE-IR-130, CO-R10.S03-ES-IR-120, CO-R14.S07-IR-120, CO-R15.S09-IR-120, CO-R16.S11-IR-120, CO-R17.S13-IR-120, CO-R10.S04-ES-IR-120, CO-R18.S15-IR-160, CO-R10.S03-WE-IR-120, CO-R09.S01-IR-120 |
| MS-CF-SW | Completion of Construction Works for Sewage Network | 2027-08-12 → 2027-06-15 (-58d) | 2027-08-12 → 2027-06-15 (-58d) |  | -229d → -179d | CO-R09.S01-SW-130, CO-R09-SW-TF-100, CO-R09-SW-TF-110, CO-R09-SW-TF-120, CO-R18-SW-TF-100, CO-R18-SW-TF-110, CO-R18-SW-TF-130, CO-R10-SW-TF-100, CO-R10-SW-TF-110, CO-R10-SW-TF-130, CO-R11.S05-SW-130, CO-R11-SW-TF-100, CO-R11-SW-TF-110, CO-R11-SW-TF-130, CO-R14.S07-SW-130, CO-R14-SW-TF-100, CO-R14-SW-TF-110, CO-R14-SW-TF-130, CO-R15.S09-SW-130, CO-R15-SW-TF-100, CO-R15-SW-TF-110, CO-R15-SW-TF-130, CO-R16.S11-SW-130, CO-R16-SW-TF-100, CO-R16-SW-TF-110, CO-R16-SW-TF-130, CO-R17.S13-SW-130, CO-R17-SW-TF-100, CO-R17-SW-TF-110, CO-R17-SW-TF-130, CO-R11.S06-SW-130 FF, CO-R14.S08-SW-130 FF, CO-R09.S02-SW-130 FF, CO-R09.S01-SW-210 → CO-R09.S01-SW-130, CO-R09-SW-TF-100, CO-R09-SW-TF-110, CO-R09-SW-TF-120, CO-R18-SW-TF-100, CO-R18-SW-TF-110, CO-R18-SW-TF-130, CO-R10-SW-TF-100, CO-R10-SW-TF-110, CO-R10-SW-TF-130, CO-R11.S05-SW-130, CO-R11-SW-TF-100, CO-R11-SW-TF-110, CO-R11-SW-TF-130, CO-R14.S07-SW-130, CO-R14-SW-TF-100, CO-R14-SW-TF-110, CO-R14-SW-TF-130, CO-R15.S09-SW-130, CO-R15-SW-TF-100, CO-R15-SW-TF-110, CO-R15-SW-TF-130, CO-R16.S11-SW-130, CO-R16-SW-TF-100, CO-R16-SW-TF-110, CO-R16-SW-TF-130, CO-R17.S13-SW-130, CO-R17-SW-TF-100, CO-R17-SW-TF-110, CO-R17-SW-TF-130, CO-R11.S06-SW-130 FF, CO-R14.S08-SW-130 FF, CO-R09.S02-SW-130 FF, CO-R09.S01-SW-210, CO-R14.S08-SW-210 |
| MS-CF-PW | Completion of Construction Works for Potable Water Network | 2027-10-04 → 2027-06-19 (-107d) | 2027-10-04 → 2027-06-19 (-107d) |  | -264d → -173d | CO-R09-PW-TF-100, CO-R09-PW-TF-110, CO-R09-PW-TF-120, CO-R18-PW-TF-100, CO-R18-PW-TF-110, CO-R18-PW-TF-120, CO-R10.S03-ES-PW-130, CO-R10.S03-ES-PW-160, CO-R10-PW-TF-100, CO-R10-PW-TF-110, CO-R10-PW-TF-120, CO-R11-PW-TF-100, CO-R11-PW-TF-110, CO-R11-PW-TF-120, CO-R14-PW-TF-100, CO-R14-PW-TF-110, CO-R14-PW-TF-120, CO-R15-PW-TF-100, CO-R15-PW-TF-110, CO-R15-PW-TF-120, CO-R16-PW-TF-100, CO-R16-PW-TF-110, CO-R16-PW-TF-120, CO-R17-PW-TF-100, CO-R17-PW-TF-110, CO-R17-PW-TF-120, CO-R10.S03-WE-PW-130, CO-R10.S03-WE-PW-160 → CO-R09-PW-TF-100, CO-R09-PW-TF-110, CO-R09-PW-TF-120, CO-R18-PW-TF-100, CO-R18-PW-TF-110, CO-R18-PW-TF-120, CO-R10.S03-ES-PW-130, CO-R10.S03-ES-PW-160, CO-R10-PW-TF-100, CO-R10-PW-TF-110, CO-R10-PW-TF-120, CO-R11-PW-TF-100, CO-R11-PW-TF-110, CO-R11-PW-TF-120, CO-R14-PW-TF-100, CO-R14-PW-TF-110, CO-R14-PW-TF-120, CO-R15-PW-TF-100, CO-R15-PW-TF-110, CO-R15-PW-TF-120, CO-R16-PW-TF-100, CO-R16-PW-TF-110, CO-R16-PW-TF-120, CO-R17-PW-TF-100, CO-R17-PW-TF-110, CO-R17-PW-TF-120, CO-R10.S03-WE-PW-130, CO-R10.S03-WE-PW-160, CO-R15.S10-PW-210, CO-R16.S12-PW-210, CO-R17.S14-PW-210, CO-R18.S16-PW-330, CO-R14.S08-PW-160 |
| MS-CF-SL | Completion of Construction Works for Street Lighting Network | 2027-10-03 → 2027-06-24 (-101d) | 2027-10-03 → 2027-06-24 (-101d) |  | -292d → -207d |  |
| MS-CF-SD | Completion of Construction Works for Storm Drainage Network | 2027-09-01 → 2027-07-05 (-58d) | 2027-09-01 → 2027-07-05 (-58d) |  | -217d → -167d |  |
| MS-CF-RD | Completion of Construction Works for Road Works | 2027-12-06 → 2027-08-17 (-111d) | 2027-12-06 → 2027-08-17 (-111d) |  | -283.5d → -189.5d |  |
| MS-CF-PF | Project Completion Date | 2027-12-20 → 2027-08-31 (-111d) | 2027-12-20 → 2027-08-31 (-111d) |  | -283.5d → -189.5d |  |
| MM | **Intermediate Milestones** | 2027-06-15 → 2027-04-25 (-51d) | 2027-12-06 → 2027-08-17 (-111d) |  |  |  |
| MS-MO-20 | Completion of Storm Drainage Ponds | 2027-08-02 → 2027-04-25 (-99d) | 2027-08-02 → 2027-04-25 (-99d) |  | -184d → -104d |  |
| MS-MO-10 | Completion of Sewage Pump Stations | 2027-06-15 → 2027-05-30 (-16d) | 2027-06-15 → 2027-05-30 (-16d) |  | -143d → -129d |  |
| MS-MO-30 | Completion of Tie In To Existing Networks | 2027-12-06 → 2027-08-17 (-111d) | 2027-12-06 → 2027-08-17 (-111d) |  | -280.5d → -186.5d |  |
| PROC | **Procurement Cycle** |  | 2027-07-29 → 2026-12-29 (-212d) |  |  |  |
| NLL | **Short Lead Time Items** |  | 2027-07-29 → 2026-12-29 (-212d) |  |  |  |
| INF | **Infrastructure Networks** |  | 2027-07-29 → 2026-12-29 (-212d) |  |  |  |
| RD | **Road Works** |  | 2027-07-29 → 2026-11-25 (-246d) |  |  |  |
| 1DL | **1st Material Delivery & Site Inspection** |  | 2026-10-19 → 2026-10-26 (+7d) |  |  |  |
| 2 | **Pavement Works** | 2026-10-13 → 2026-07-13 (-92d) | 2026-10-19 → 2026-07-19 (-92d) |  |  |  |
| PRO-RD-1DL-140 | 1ST Material Delivery for Interlock Tiles of Landscaping | 2026-10-13 → 2026-07-13 A (-92d) | 2026-10-19 → 2026-07-19 A (-92d) | 0% → 100% | -13d → none |  |
| PRO-RD-1DL-150 | 1ST Material Delivery for Curbstones of Landscaping | 2026-10-13 → 2026-07-13 A (-92d) | 2026-10-19 → 2026-07-19 A (-92d) | 0% → 100% | 14d → none |  |
| 3 | **Traffic Signs Boards and Roads Marking** | 2026-10-13 → 2026-10-20 (+7d) | 2026-10-19 → 2026-10-26 (+7d) |  |  |  |
| PRO-RD-1DL-160 | 1ST Material Delivery for Traffic Signs Boards of Road Works | 2026-10-13 → 2026-10-20 (+7d) | 2026-10-19 → 2026-10-26 (+7d) |  | -217d → -25d |  |
| PRO-RD-1DL-170 | 1ST Material Delivery for Road Markings of Road Works | 2026-10-13 → 2026-10-20 (+7d) | 2026-10-19 → 2026-10-26 (+7d) |  | -191d → -25d |  |
| DL | **Material Delivery & Site Inspection** |  | 2027-07-29 → 2026-11-25 (-246d) |  |  |  |
| 1 | **Road 18 Local 1 ( 479 LM )** |  | 2026-12-19 → 2026-11-25 (-24d) |  |  |  |
| 3 | **Traffic Signs Boards and Roads Marking** | 2026-10-20 → 2026-10-27 (+7d) | 2026-12-19 → 2026-11-25 (-24d) |  |  |  |
| PRO-R18-RD-DL-200 | Material Delivery & Site Inspection of Traffic Signs Boards For Road Works | 2026-10-20 → 2026-10-27 (+7d) | 2026-11-18 → 2026-11-25 (+7d) |  | -217d → -25d | PRO-R18-RD-DL-250 FF, PRO-RD-1DL-160, PRO-R18-RD-DL-250 → PRO-R18-RD-DL-250 FF, PRO-RD-1DL-160, PRO-R18-RD-DL-250 SS |
| PRO-R18-RD-DL-210 | Material Delivery & Site Inspection of Road Markings For Road Works | 2026-11-19 → 2026-10-27 (-23d) | 2026-12-19 → 2026-11-25 (-24d) |  | -217d → -25d | PRO-R18-RD-DL-200 SS, PRO-RD-1DL-170, PRO-R18-RD-DL-200 → PRO-R18-RD-DL-200 SS, PRO-RD-1DL-170 |
| 9 | **Road 17 Local 1 ( 500 LM )** |  | 2027-01-18 → 2026-11-25 (-54d) |  |  |  |
| 3 | **Traffic Signs Boards and Roads Marking** | 2026-11-19 → 2026-10-27 (-23d) | 2027-01-18 → 2026-11-25 (-54d) |  |  |  |
| PRO-R17-RD-DL-140 | Material Delivery & Site Inspection of Traffic Signs Boards For Road Works | 2026-11-19 → 2026-10-27 (-23d) | 2026-12-19 → 2026-11-25 (-24d) |  | -217d → -25d | PRO-RD-1DL-160, PRO-R17-RD-DL-170 FF, PRO-R18-RD-DL-200, PRO-R17-RD-DL-170 → PRO-RD-1DL-160, PRO-R17-RD-DL-170 FF, PRO-R18-RD-DL-200 SS, PRO-R18-RD-DL-200 FF, PRO-R17-RD-DL-170 SS |
| PRO-R17-RD-DL-150 | Material Delivery & Site Inspection of Road Markings For Road Works | 2026-12-20 → 2026-10-27 (-54d) | 2027-01-18 → 2026-11-25 (-54d) |  | -217d → -25d | PRO-RD-1DL-170, PRO-R17-RD-DL-140 SS, PRO-R18-RD-DL-210, PRO-R17-RD-DL-140 → PRO-RD-1DL-170, PRO-R17-RD-DL-140 SS, PRO-R18-RD-DL-210 SS, PRO-R18-RD-DL-210 FF |
| 8 | **Road 16 Local 1 ( 527 LM )** |  | 2027-02-17 → 2026-11-25 (-84d) |  |  |  |
| 3 | **Traffic Signs Boards and Roads Marking** | 2026-12-20 → 2026-10-27 (-54d) | 2027-02-17 → 2026-11-25 (-84d) |  |  |  |
| PRO-R16-RD-DL-140 | Material Delivery & Site Inspection of Traffic Signs Boards For Road Works | 2026-12-20 → 2026-10-27 (-54d) | 2027-01-18 → 2026-11-25 (-54d) |  | -191d → -25d | PRO-RD-1DL-160, PRO-R16-RD-DL-170 FF, PRO-R17-RD-DL-140 → PRO-RD-1DL-160, PRO-R16-RD-DL-170 FF, PRO-R17-RD-DL-140 SS, PRO-R17-RD-DL-140 FF |
| PRO-R16-RD-DL-150 | Material Delivery & Site Inspection of Road Markings For Road Works | 2027-01-19 → 2026-10-27 (-84d) | 2027-02-17 → 2026-11-25 (-84d) |  | -217d → -25d | PRO-RD-1DL-170, PRO-R16-RD-DL-140 SS, PRO-R17-RD-DL-150 → PRO-RD-1DL-170, PRO-R16-RD-DL-140 SS, PRO-R17-RD-DL-150 SS, PRO-R17-RD-DL-150 FF |
| 7 | **Road 15 Local 1 ( 556 LM )** |  | 2027-03-24 → 2026-11-25 (-119d) |  |  |  |
| 3 | **Traffic Signs Boards and Roads Marking** | 2027-01-19 → 2026-10-27 (-84d) | 2027-03-24 → 2026-11-25 (-119d) |  |  |  |
| PRO-R15-RD-DL-140 | Material Delivery & Site Inspection of Traffic Signs Boards For Road Works | 2027-01-19 → 2026-10-27 (-84d) | 2027-02-17 → 2026-11-25 (-84d) |  | -191d → -25d | PRO-RD-1DL-160, PRO-R15-RD-DL-170 FF, PRO-R16-RD-DL-140 → PRO-RD-1DL-160, PRO-R15-RD-DL-170 FF, PRO-R16-RD-DL-140 SS, PRO-R16-RD-DL-140 FF |
| PRO-R15-RD-DL-150 | Material Delivery & Site Inspection of Road Markings For Road Works | 2027-02-18 → 2026-10-27 (-114d) | 2027-03-24 → 2026-11-25 (-119d) |  | -217d → -25d | PRO-RD-1DL-170, PRO-R15-RD-DL-140 SS, PRO-R16-RD-DL-150 → PRO-RD-1DL-170, PRO-R15-RD-DL-140 SS, PRO-R16-RD-DL-150 SS, PRO-R16-RD-DL-150 FF |
| 4 | **Road 10 Local 2 ( 2352 LM )** |  | 2027-04-24 → 2026-11-25 (-150d) |  |  |  |
| 4 | **Bituminous Construction** | 2026-10-13 → 2026-10-20 (+7d) | 2026-11-11 → 2026-11-18 (+7d) |  |  |  |
| PRO-R10-RD-DL-160 | Material Delivery & Site Inspection for Prime Coat of Road Works | 2026-10-13 → 2026-10-20 (+7d) | 2026-11-11 → 2026-11-18 (+7d) |  | -28d → -34d | PRO-RD-1DL-120, PRO-R15-RD-DL-160 → PRO-RD-1DL-120, PRO-R15-RD-DL-160 SS, PRO-R15-RD-DL-160 FF |
| PRO-R10-RD-DL-170 | Material Delivery & Site Inspection for Bituminous Base & Wearing Courses of Road Works | 2026-10-13 → 2026-10-20 (+7d) | 2026-11-11 → 2026-11-18 (+7d) |  | -81d → -31d | PRO-RD-1DL-130, PRO-R10-RD-DL-120, PRO-R15-RD-DL-170 → PRO-RD-1DL-130, PRO-R15-RD-DL-170 SS, PRO-R15-RD-DL-170 FF, PRO-R10-RD-DL-120 SS |
| 3 | **Traffic Signs Boards and Roads Marking** | 2027-02-18 → 2026-10-27 (-114d) | 2027-04-24 → 2026-11-25 (-150d) |  |  |  |
| PRO-R10-RD-DL-140 | Material Delivery & Site Inspection of Traffic Signs Boards For Road Works | 2027-02-18 → 2026-10-27 (-114d) | 2027-03-24 → 2026-11-25 (-119d) |  | -191d → -25d | PRO-RD-1DL-160, PRO-R10-RD-DL-170 FF, PRO-R15-RD-DL-140 → PRO-RD-1DL-160, PRO-R10-RD-DL-170 FF, PRO-R15-RD-DL-140 SS, PRO-R15-RD-DL-140 FF |
| PRO-R10-RD-DL-150 | Material Delivery & Site Inspection of Road Markings For Road Works | 2027-03-25 → 2026-10-27 (-149d) | 2027-04-24 → 2026-11-25 (-150d) |  | -217d → -25d | PRO-RD-1DL-170, PRO-R10-RD-DL-140 SS, PRO-R15-RD-DL-150 → PRO-RD-1DL-170, PRO-R10-RD-DL-140 SS, PRO-R15-RD-DL-150 SS, PRO-R15-RD-DL-150 FF |
| 6 | **Road 14 Local 1 ( 584 LM )** |  | 2027-05-30 → 2026-11-25 (-186d) |  |  |  |
| 3 | **Traffic Signs Boards and Roads Marking** | 2027-03-25 → 2026-10-27 (-149d) | 2027-05-30 → 2026-11-25 (-186d) |  |  |  |
| PRO-R14-RD-DL-140 | Material Delivery & Site Inspection of Traffic Signs Boards For Road Works | 2027-03-25 → 2026-10-27 (-149d) | 2027-04-24 → 2026-11-25 (-150d) |  | -191d → -15d | PRO-RD-1DL-160, PRO-R14-RD-DL-170 FF, PRO-R10-RD-DL-140 → PRO-RD-1DL-160, PRO-R14-RD-DL-170 FF, PRO-R10-RD-DL-140 SS, PRO-R10-RD-DL-140 FF |
| PRO-R14-RD-DL-150 | Material Delivery & Site Inspection of Road Markings For Road Works | 2027-04-25 → 2026-10-27 (-180d) | 2027-05-30 → 2026-11-25 (-186d) |  | -217d → -15d | PRO-RD-1DL-170, PRO-R14-RD-DL-140 SS, PRO-R10-RD-DL-150 → PRO-RD-1DL-170, PRO-R14-RD-DL-140 SS, PRO-R10-RD-DL-150 SS, PRO-R10-RD-DL-150 FF |
| 2 | **Road 09 Local 2 ( 2278 LM )** |  | 2027-06-29 → 2026-11-25 (-216d) |  |  |  |
| 4 | **Bituminous Construction** | 2026-10-13 → 2026-10-20 (+7d) | 2026-11-11 → 2026-11-18 (+7d) |  |  |  |
| PRO-R09-RD-DL-160 | Material Delivery & Site Inspection for Prime Coat of Road Works | 2026-10-13 → 2026-10-20 (+7d) | 2026-11-11 → 2026-11-18 (+7d) |  | -11d → -17d | PRO-RD-1DL-120, PRO-RD-1DL-120 FF, PRO-R14-RD-DL-160 → PRO-RD-1DL-120, PRO-RD-1DL-120 FF, PRO-R14-RD-DL-160 SS, PRO-R14-RD-DL-160 FF |
| PRO-R09-RD-DL-170 | Material Delivery & Site Inspection for Bituminous Base & Wearing Courses of Road Works | 2026-10-13 → 2026-10-20 (+7d) | 2026-11-11 → 2026-11-18 (+7d) |  | -55d → -14d | PRO-RD-1DL-130, PRO-RD-1DL-130 FF, PRO-R09-RD-DL-120, PRO-R14-RD-DL-170 → PRO-RD-1DL-130, PRO-RD-1DL-130 FF, PRO-R14-RD-DL-170 SS, PRO-R14-RD-DL-170 FF, PRO-R09-RD-DL-120 SS |
| 3 | **Traffic Signs Boards and Roads Marking** | 2027-04-25 → 2026-10-27 (-180d) | 2027-06-29 → 2026-11-25 (-216d) |  |  |  |
| PRO-R09-RD-DL-140 | Material Delivery & Site Inspection of Traffic Signs Boards For Road Works | 2027-04-25 → 2026-10-27 (-180d) | 2027-05-30 → 2026-11-25 (-186d) |  | -191d → -15d | PRO-RD-1DL-160, PRO-R09-RD-DL-170, PRO-R14-RD-DL-140 → PRO-RD-1DL-160, PRO-R14-RD-DL-140 SS, PRO-R14-RD-DL-140 FF, PRO-R09-RD-DL-170 SS |
| PRO-R09-RD-DL-150 | Material Delivery & Site Inspection of Road Markings For Road Works | 2027-05-31 → 2026-10-27 (-216d) | 2027-06-29 → 2026-11-25 (-216d) |  | -217d → -15d | PRO-RD-1DL-170, PRO-R09-RD-DL-140 SS, PRO-R14-RD-DL-150 → PRO-RD-1DL-170, PRO-R09-RD-DL-140 SS, PRO-R14-RD-DL-150 SS, PRO-R14-RD-DL-150 FF |
| 5 | **Road 11 Local 1 ( 670 LM )** |  | 2027-07-29 → 2026-11-25 (-246d) |  |  |  |
| 3 | **Traffic Signs Boards and Roads Marking** | 2027-05-31 → 2026-10-27 (-216d) | 2027-07-29 → 2026-11-25 (-246d) |  |  |  |
| PRO-R11-RD-DL-140 | Material Delivery & Site Inspection of Traffic Signs Boards For Road Works | 2027-05-31 → 2026-10-27 (-216d) | 2027-06-29 → 2026-11-25 (-216d) |  | -191d → -15d | PRO-RD-1DL-160, PRO-R11-RD-DL-170 FF, PRO-R09-RD-DL-140 → PRO-RD-1DL-160, PRO-R11-RD-DL-170 FF, PRO-R09-RD-DL-140 SS, PRO-R09-RD-DL-140 FF |
| PRO-R11-RD-DL-150 | Material Delivery & Site Inspection of Road Markings For Road Works | 2027-06-30 → 2026-10-27 (-246d) | 2027-07-29 → 2026-11-25 (-246d) |  | -217d → -15d | PRO-RD-1DL-170, PRO-R11-RD-DL-140 SS, PRO-R09-RD-DL-150 → PRO-RD-1DL-170, PRO-R11-RD-DL-140 SS, PRO-R09-RD-DL-150 SS, PRO-R09-RD-DL-150 FF |
| SW | **Sewage Network** |  | 2027-04-17 → 2026-12-02 (-136d) |  |  |  |
| DL | **Material Delivery & Site Inspection** |  | 2027-04-17 → 2026-12-02 (-136d) |  |  |  |
| 9 | **Road 17 Local 1 ( 500 LM )** |  | 2026-11-11 → 2026-11-18 (+7d) |  |  |  |
| 3 | **Testing and Finishes** | 2026-10-13 → 2026-10-20 (+7d) | 2026-11-11 → 2026-11-18 (+7d) |  |  |  |
| PRO-R17-SW-DL-120 | Material Delivery & Site Inspection of Manholes Covers for Sewage Network | 2026-10-13 → 2026-10-20 (+7d) | 2026-11-11 → 2026-11-18 (+7d) |  | -187d → -75d | PRO-SW-1DL-120, PRO-R18-SW-DL-170 → PRO-SW-1DL-120, PRO-R18-SW-DL-170 SS, PRO-R18-SW-DL-170 FF |

| ID | Task | Start | Finish | Complete | Total float | Predecessors |
| --- | --- | --- | --- | --- | --- | --- |
| PRO-R17-SW-DL-130 | Material Delivery & Site Inspection of Membrane Insulation for Sewage Network | 2026-10-13 → 2026-10-20 (+7d) | 2026-11-11 → 2026-11-18 (+7d) |  | -184d → -72d | PRO-SW-1DL-140, PRO-R18-SW-DL-190 → PRO-SW-1DL-140, PRO-R18-SW-DL-190 SS, PRO-R18-SW-DL-190 FF |
| 8 | **Road 16 Local 1 ( 527 LM )** |  | 2026-12-12 → 2026-11-18 (-24d) |  |  |  |
| 3 | **Testing and Finishes** | 2026-11-12 → 2026-10-20 (-23d) | 2026-12-12 → 2026-11-18 (-24d) |  |  |  |
| PRO-R16-SW-DL-120 | Material Delivery & Site Inspection of Manholes Covers for Sewage Network | 2026-11-12 → 2026-10-20 (-23d) | 2026-12-12 → 2026-11-18 (-24d) |  | -187d → -75d | PRO-SW-1DL-120, PRO-R17-SW-DL-120 → PRO-SW-1DL-120, PRO-R17-SW-DL-120 SS, PRO-R17-SW-DL-120 FF |
| PRO-R16-SW-DL-130 | Material Delivery & Site Inspection of Membrane Insulation for Sewage Network | 2026-11-12 → 2026-10-20 (-23d) | 2026-12-12 → 2026-11-18 (-24d) |  | -184d → -72d | PRO-SW-1DL-140, PRO-R17-SW-DL-130 → PRO-SW-1DL-140, PRO-R17-SW-DL-130 SS, PRO-R17-SW-DL-130 FF |
| 7 | **Road 15 Local 1 ( 556 LM )** |  | 2027-01-11 → 2026-11-18 (-54d) |  |  |  |
| 3 | **Testing and Finishes** | 2026-12-13 → 2026-10-20 (-54d) | 2027-01-11 → 2026-11-18 (-54d) |  |  |  |
| PRO-R15-SW-DL-120 | Material Delivery & Site Inspection of Manholes Covers for Sewage Network | 2026-12-13 → 2026-10-20 (-54d) | 2027-01-11 → 2026-11-18 (-54d) |  | -187d → -75d | PRO-SW-1DL-120, PRO-R16-SW-DL-120 → PRO-SW-1DL-120, PRO-R16-SW-DL-120 SS, PRO-R16-SW-DL-120 FF |
| PRO-R15-SW-DL-130 | Material Delivery & Site Inspection of Membrane Insulation for Sewage Network | 2026-12-13 → 2026-10-20 (-54d) | 2027-01-11 → 2026-11-18 (-54d) |  | -184d → -72d | PRO-SW-1DL-140, PRO-R16-SW-DL-130 → PRO-SW-1DL-140, PRO-R16-SW-DL-130 SS, PRO-R16-SW-DL-130 FF |
| 4 | **Road 10 Local 2 ( 2352 LM )** |  | 2027-02-10 → 2026-11-18 (-84d) |  |  |  |
| 3 | **Testing and Finishes** | 2027-01-12 → 2026-10-20 (-84d) | 2027-02-10 → 2026-11-18 (-84d) |  |  |  |
| PRO-R10-SW-DL-120 | Material Delivery & Site Inspection of Manholes Covers for Sewage Network | 2027-01-12 → 2026-10-20 (-84d) | 2027-02-10 → 2026-11-18 (-84d) |  | -187d → -75d | PRO-SW-1DL-120, PRO-R15-SW-DL-120 → PRO-SW-1DL-120, PRO-R15-SW-DL-120 SS, PRO-R15-SW-DL-120 FF |
| PRO-R10-SW-DL-130 | Material Delivery & Site Inspection of Membrane Insulation for Sewage Network | 2027-01-12 → 2026-10-20 (-84d) | 2027-02-10 → 2026-11-18 (-84d) |  | -184d → -72d | PRO-SW-1DL-140, PRO-R15-SW-DL-130 → PRO-SW-1DL-140, PRO-R15-SW-DL-130 SS, PRO-R15-SW-DL-130 FF |
| 6 | **Road 14 Local 1 ( 584 LM )** |  | 2027-03-17 → 2026-11-18 (-119d) |  |  |  |
| 3 | **Testing and Finishes** | 2027-02-11 → 2026-10-20 (-114d) | 2027-03-17 → 2026-11-18 (-119d) |  |  |  |
| PRO-R14-SW-DL-120 | Material Delivery & Site Inspection of Manholes Covers for Sewage Network | 2027-02-11 → 2026-10-20 (-114d) | 2027-03-17 → 2026-11-18 (-119d) |  | -187d → -63d | PRO-SW-1DL-120, PRO-R10-SW-DL-120 → PRO-SW-1DL-120, PRO-R10-SW-DL-120 SS, PRO-R10-SW-DL-120 FF |
| PRO-R14-SW-DL-130 | Material Delivery & Site Inspection of Membrane Insulation for Sewage Network | 2027-02-11 → 2026-10-20 (-114d) | 2027-03-17 → 2026-11-18 (-119d) |  | -184d → -60d | PRO-SW-1DL-140, PRO-R10-SW-DL-130 → PRO-SW-1DL-140, PRO-R10-SW-DL-130 SS, PRO-R10-SW-DL-130 FF |
| 2 | **Road 09 Local 2 ( 2278 LM )** |  | 2026-11-25 → 2026-12-02 (+7d) |  |  |  |
| 3 | **Testing and Finishes** | 2026-10-13 → 2026-10-20 (+7d) | 2026-11-25 → 2026-12-02 (+7d) |  |  |  |
| PRO-R09-SW-DL-120 | Material Delivery & Site Inspection of Manholes Covers for Rising Main Network | 2026-10-13 → 2026-10-20 (+7d) | 2026-11-25 → 2026-12-02 (+7d) |  | -51d → -58d |  |
| PRO-R09-SW-DL-130 | Material Delivery & Site Inspection of Membrane Insulation for Rising Main Network | 2026-10-13 → 2026-10-20 (+7d) | 2026-11-25 → 2026-12-02 (+7d) |  | -48d → -55d |  |
| 5 | **Road 11 Local 1 ( 670 LM )** |  | 2027-04-17 → 2026-11-18 (-150d) |  |  |  |
| 3 | **Testing and Finishes** | 2027-03-18 → 2026-10-20 (-149d) | 2027-04-17 → 2026-11-18 (-150d) |  |  |  |
| PRO-R11-SW-DL-120 | Material Delivery & Site Inspection of Manholes Covers for Sewage Network | 2027-03-18 → 2026-10-20 (-149d) | 2027-04-17 → 2026-11-18 (-150d) |  | -187d → -63d | PRO-SW-1DL-120, PRO-R14-SW-DL-120 → PRO-SW-1DL-120, PRO-R14-SW-DL-120 SS, PRO-R14-SW-DL-120 FF |
| PRO-R11-SW-DL-130 | Material Delivery & Site Inspection of Membrane Insulation for Sewage Network | 2027-03-18 → 2026-10-20 (-149d) | 2027-04-17 → 2026-11-18 (-150d) |  | -184d → -60d | PRO-SW-1DL-140, PRO-R14-SW-DL-130 → PRO-SW-1DL-140, PRO-R14-SW-DL-130 SS, PRO-R14-SW-DL-130 FF |
| SD | **Storm Drainage Network** |  | 2027-04-28 → 2026-12-07 (-142d) |  |  |  |
| DL | **Material Delivery & Site Inspection** |  | 2027-04-28 → 2026-12-07 (-142d) |  |  |  |
| 1 | **Road 18 Local 1 ( 479 LM )** |  | 2026-10-24 → 2026-11-18 (+25d) |  |  |  |
| 3 | **Testing and Finishes** | 2026-06-27 → 2026-10-20 (+115d) | 2026-10-24 → 2026-11-18 (+25d) |  |  |  |
| PRO-R18-SD-DL-190 | Material Delivery & Site Inspection of Manholes Covers for Storm Drainage Network | 2026-06-27 A → 2026-10-20 (+115d) | 2026-10-24 → 2026-11-18 (+25d) |  | -204d → -96d |  |
| PRO-R18-SD-DL-210 | Material Delivery & Site Inspection of Catch Basin Covers for Storm Drainage Network | 2026-06-27 A → 2026-10-20 (+115d) | 2026-10-24 → 2026-11-18 (+25d) |  | -156d → -27d |  |
| PRO-R18-SD-DL-230 | Material Delivery & Site Inspection of Epoxy Insulation for Storm Drainage Network | 2026-06-27 A → 2026-10-20 (+115d) | 2026-10-24 → 2026-11-18 (+25d) |  | -156d → -27d |  |
| 9 | **Road 17 Local 1 ( 500 LM )** |  | 2026-10-24 → 2026-11-18 (+25d) |  |  |  |
| 3 | **Testing and Finishes** |  | 2026-10-24 → 2026-11-18 (+25d) |  |  |  |
| PRO-R17-SD-DL-160 | Material Delivery & Site Inspection of Epoxy Insulation for Storm Drainage Network |  | 2026-10-24 → 2026-11-18 (+25d) | 0% → 20% | -156d → -27d |  |
| PRO-R17-SD-DL-140 | Material Delivery & Site Inspection of Manholes Covers for Storm Drainage Network | 2026-06-20 A → 2026-10-20 (+122d) | 2026-10-24 → 2026-11-18 (+25d) |  | -204d → -96d | PRO-SD-1DL-140 FF, PRO-R18-SD-DL-190 FF → PRO-SD-1DL-140 FF, PRO-R18-SD-DL-190 FF, PRO-SD-1DL-140 SS, PRO-R18-SD-DL-190 SS |
| PRO-R17-SD-DL-150 | Material Delivery & Site Inspection of Catch Basin Covers for Storm Drainage Network | 2026-06-20 A → 2026-10-20 (+122d) | 2026-10-24 → 2026-11-18 (+25d) |  | -156d → -27d | PRO-SD-1DL-150 FF, PRO-R18-SD-DL-210 FF → PRO-SD-1DL-150 FF, PRO-R18-SD-DL-210 FF, PRO-SD-1DL-150 SS, PRO-R18-SD-DL-210 SS |
| 8 | **Road 16 Local 1 ( 527 LM )** |  | 2026-11-23 → 2026-12-07 (+14d) |  |  |  |
| 3 | **Testing and Finishes** | 2026-10-25 → 2026-10-20 (-5d) | 2026-11-23 → 2026-12-07 (+14d) |  |  |  |
| PRO-R16-SD-DL-140 | Material Delivery & Site Inspection of Manholes Covers for Storm Drainage Network | 2026-10-25 → 2026-10-20 (-5d) | 2026-11-23 → 2026-11-18 (-5d) |  | -204d → -96d | PRO-SD-1DL-140, PRO-R17-SD-DL-140 → PRO-SD-1DL-140, PRO-R17-SD-DL-140 SS, PRO-R17-SD-DL-140 FF |
| PRO-R16-SD-DL-150 | Material Delivery & Site Inspection of Catch Basin Covers for Storm Drainage Network | 2026-10-25 → 2026-10-20 (-5d) | 2026-11-23 → 2026-11-18 (-5d) |  | -156d → -27d | PRO-SD-1DL-150, PRO-R17-SD-DL-150 → PRO-SD-1DL-150, PRO-R17-SD-DL-150 SS, PRO-R17-SD-DL-150 FF |
| PRO-R16-SD-DL-160 | Material Delivery & Site Inspection of Epoxy Insulation for Storm Drainage Network | 2026-10-25 → 2026-11-08 (+14d) | 2026-11-23 → 2026-12-07 (+14d) |  | -156d → -27d | PRO-SD-1DL-160, PRO-R17-SD-DL-160 → PRO-SD-1DL-160, PRO-R17-SD-DL-160 SS, PRO-R17-SD-DL-160 FF |
| 7 | **Road 15 Local 1 ( 556 LM )** |  | 2026-12-23 → 2026-12-07 (-16d) |  |  |  |
| 3 | **Testing and Finishes** | 2026-11-24 → 2026-10-20 (-35d) | 2026-12-23 → 2026-12-07 (-16d) |  |  |  |
| PRO-R15-SD-DL-140 | Material Delivery & Site Inspection of Manholes Covers for Storm Drainage Network | 2026-11-24 → 2026-10-20 (-35d) | 2026-12-23 → 2026-11-18 (-35d) |  | -204d → -96d | PRO-SD-1DL-140, PRO-R16-SD-DL-140 → PRO-SD-1DL-140, PRO-R16-SD-DL-140 SS, PRO-R16-SD-DL-140 FF |
| PRO-R15-SD-DL-150 | Material Delivery & Site Inspection of Catch Basin Covers for Storm Drainage Network | 2026-11-24 → 2026-10-20 (-35d) | 2026-12-23 → 2026-11-18 (-35d) |  | -156d → -27d | PRO-SD-1DL-150, PRO-R16-SD-DL-150 → PRO-SD-1DL-150, PRO-R16-SD-DL-150 SS, PRO-R16-SD-DL-150 FF |
| PRO-R15-SD-DL-160 | Material Delivery & Site Inspection of Epoxy Insulation for Storm Drainage Network | 2026-11-24 → 2026-11-08 (-16d) | 2026-12-23 → 2026-12-07 (-16d) |  | -156d → -27d | PRO-SD-1DL-160, PRO-R16-SD-DL-160 → PRO-SD-1DL-160, PRO-R16-SD-DL-160 SS, PRO-R16-SD-DL-160 FF |
| 4 | **Road 10 Local 2 ( 2352 LM )** |  | 2027-01-23 → 2026-11-18 (-66d) |  |  |  |
| 3 | **Testing and Finishes** | 2026-12-24 → 2026-07-24 (-153d) | 2027-01-23 → 2026-11-18 (-66d) |  |  |  |
| PRO-R10-SD-DL-160 | Material Delivery & Site Inspection of Epoxy Insulation for Storm Drainage Network | 2026-12-24 → 2026-07-24 A (-153d) | 2027-01-23 → 2026-07-30 A (-177d) | 0% → 100% | -156d → none | PRO-SD-1DL-160, PRO-R15-SD-DL-160 → PRO-SD-1DL-160 |
| PRO-R10-SD-DL-150 | Material Delivery & Site Inspection of Catch Basin Covers for Storm Drainage Network | 2026-12-24 → 2026-08-24 A (-122d) | 2027-01-23 → 2026-08-30 A (-146d) | 0% → 100% | -156d → none | PRO-SD-1DL-150, PRO-R15-SD-DL-150 → PRO-SD-1DL-150 |
| PRO-R10-SD-DL-140 | Material Delivery & Site Inspection of Manholes Covers for Storm Drainage Network | 2026-12-24 → 2026-10-20 (-65d) | 2027-01-23 → 2026-11-18 (-66d) |  | -204d → -96d | PRO-SD-1DL-140, PRO-R15-SD-DL-140 → PRO-SD-1DL-140, PRO-R15-SD-DL-140 SS, PRO-R15-SD-DL-140 FF |
| 6 | **Road 14 Local 1 ( 584 LM )** |  | 2027-02-23 → 2026-11-18 (-97d) |  |  |  |
| 3 | **Testing and Finishes** | 2027-01-24 → 2026-07-24 (-184d) | 2027-02-23 → 2026-11-18 (-97d) |  |  |  |
| PRO-R14-SD-DL-160 | Material Delivery & Site Inspection of Epoxy Insulation for Storm Drainage Network | 2027-01-24 → 2026-07-24 A (-184d) | 2027-02-23 → 2026-07-30 A (-208d) | 0% → 100% | -156d → none |  |
| PRO-R14-SD-DL-140 | Material Delivery & Site Inspection of Manholes Covers for Storm Drainage Network | 2027-01-24 → 2026-10-20 (-96d) | 2027-02-23 → 2026-11-18 (-97d) |  | -204d → -96d | PRO-SD-1DL-140, PRO-R10-SD-DL-140 → PRO-SD-1DL-140, PRO-R10-SD-DL-140 SS, PRO-R10-SD-DL-140 FF |
| PRO-R14-SD-DL-150 | Material Delivery & Site Inspection of Catch Basin Covers for Storm Drainage Network | 2027-01-24 → 2026-10-20 (-96d) | 2027-02-23 → 2026-11-18 (-97d) |  | -156d → -15d | PRO-SD-1DL-150, PRO-R10-SD-DL-150 → PRO-SD-1DL-150, PRO-R10-SD-DL-150 SS, PRO-R10-SD-DL-150 FF |
| 2 | **Road 09 Local 2 ( 2278 LM )** |  | 2027-03-29 → 2026-11-18 (-131d) |  |  |  |
| 3 | **Testing and Finishes** | 2027-02-24 → 2026-08-24 (-184d) | 2027-03-29 → 2026-11-18 (-131d) |  |  |  |
| PRO-R09-SD-DL-160 | Material Delivery & Site Inspection of Epoxy Insulation for Storm Drainage Network | 2027-02-24 → 2026-08-24 A (-184d) | 2027-03-29 → 2026-08-29 A (-212d) | 0% → 100% | -156d → none |  |
| PRO-R09-SD-DL-140 | Material Delivery & Site Inspection of Manholes Covers for Storm Drainage Network | 2027-02-24 → 2026-10-20 (-127d) | 2027-03-29 → 2026-11-18 (-131d) |  | -204d → -96d | PRO-SD-1DL-140, PRO-R14-SD-DL-140 → PRO-SD-1DL-140, PRO-R14-SD-DL-140 SS, PRO-R14-SD-DL-140 FF |
| PRO-R09-SD-DL-150 | Material Delivery & Site Inspection of Catch Basin Covers for Storm Drainage Network | 2027-02-24 → 2026-10-20 (-127d) | 2027-03-29 → 2026-11-18 (-131d) |  | -156d → -15d | PRO-SD-1DL-150, PRO-R14-SD-DL-150 → PRO-SD-1DL-150, PRO-R14-SD-DL-150 SS, PRO-R14-SD-DL-150 FF |
| 5 | **Road 11 Local 1 ( 670 LM )** |  | 2027-04-28 → 2026-11-18 (-161d) |  |  |  |
| 3 | **Testing and Finishes** | 2027-03-30 → 2026-07-28 (-245d) | 2027-04-28 → 2026-11-18 (-161d) |  |  |  |
| PRO-R11-SD-DL-150 | Material Delivery & Site Inspection of Catch Basin Covers for Storm Drainage Network | 2027-03-30 → 2026-07-28 A (-245d) | 2027-04-28 → 2026-08-30 A (-241d) | 0% → 100% | -156d → none | PRO-SD-1DL-150, PRO-R09-SD-DL-150 → PRO-SD-1DL-150 |
| PRO-R11-SD-DL-160 | Material Delivery & Site Inspection of Epoxy Insulation for Storm Drainage Network | 2027-03-30 → 2026-09-02 A (-209d) | 2027-04-28 → 2026-09-16 A (-224d) | 0% → 100% | -156d → none |  |
| PRO-R11-SD-DL-140 | Material Delivery & Site Inspection of Manholes Covers for Storm Drainage Network | 2027-03-30 → 2026-10-20 (-161d) | 2027-04-28 → 2026-11-18 (-161d) |  | -114d → 20d | PRO-SD-1DL-140, PRO-R09-SD-DL-140 → PRO-SD-1DL-140, PRO-R09-SD-DL-140 SS, PRO-R09-SD-DL-140 FF |
| PW | **Potable Water Network** |  | 2027-04-17 → 2026-12-19 (-119d) |  |  |  |
| 1DL | **1st Material Delivery & Site Inspection** |  | 2026-10-19 → 2026-10-26 (+7d) |  |  |  |
| 4 | **Testing and Finishes** | 2026-10-13 → 2026-10-20 (+7d) | 2026-10-19 → 2026-10-26 (+7d) |  |  |  |

| ID | Task | Start | Finish | Complete | Total float | Predecessors |
| --- | --- | --- | --- | --- | --- | --- |
| PRO-PW-1DL-130 | 1ST Material Delivery for Finishes of Potable Water Network | 2026-10-13 → 2026-10-20 (+7d) | 2026-10-19 → 2026-10-26 (+7d) |  | -179d → -81d |  |
| DL | **Material Delivery & Site Inspection** |  | 2027-04-17 → 2026-12-19 (-119d) |  |  |  |
| 1 | **Road 18 Local 1 ( 479 LM )** |  | 2026-11-18 → 2026-11-25 (+7d) |  |  |  |
| 4 | **Testing and Finishes** | 2026-10-20 → 2026-10-27 (+7d) | 2026-11-18 → 2026-11-25 (+7d) |  |  |  |
| PRO-R18-PW-DL-170 | Material Delivery & Site Inspection for Finishes of Potable Water Network | 2026-10-20 → 2026-10-27 (+7d) | 2026-11-18 → 2026-11-25 (+7d) |  | -179d → -81d |  |
| 9 | **Road 17 Local 1 ( 500 LM )** |  | 2026-12-19 → 2026-11-25 (-24d) |  |  |  |
| 1 | **Main Line Sections** |  | 2026-11-11 → 2026-11-18 (+7d) |  |  |  |
| PRO-R17-PW-DL-110 | Material Delivery & Site Inspection of Valves for Potable Water Network | 2026-10-13 → 2026-10-20 (+7d) | 2026-11-11 → 2026-11-18 (+7d) |  | -280.5d → -115d | PRO-PW-1DL-110, PRO-R18-PW-DL-150 → PRO-PW-1DL-110, PRO-R18-PW-DL-150 SS, PRO-R18-PW-DL-150 FF |
| 4 | **Testing and Finishes** | 2026-11-19 → 2026-10-27 (-23d) | 2026-12-19 → 2026-11-25 (-24d) |  |  |  |
| PRO-R17-PW-DL-130 | Material Delivery & Site Inspection for Finishes of Potable Water Network | 2026-11-19 → 2026-10-27 (-23d) | 2026-12-19 → 2026-11-25 (-24d) |  | -179d → -81d | PRO-PW-1DL-130, PRO-R18-PW-DL-170 → PRO-PW-1DL-130, PRO-R18-PW-DL-170 SS, PRO-R18-PW-DL-170 FF |
| 8 | **Road 16 Local 1 ( 527 LM )** |  | 2027-01-18 → 2026-11-25 (-54d) |  |  |  |
| 1 | **Main Line Sections** |  | 2026-12-12 → 2026-11-18 (-24d) |  |  |  |
| PRO-R16-PW-DL-110 | Material Delivery & Site Inspection of Valves for Potable Water Network | 2026-11-12 → 2026-10-20 (-23d) | 2026-12-12 → 2026-11-18 (-24d) |  | -280.5d → -115d | PRO-PW-1DL-110, PRO-R17-PW-DL-110 → PRO-PW-1DL-110, PRO-R17-PW-DL-110 SS, PRO-R17-PW-DL-110 FF |
| 4 | **Testing and Finishes** | 2026-12-20 → 2026-10-27 (-54d) | 2027-01-18 → 2026-11-25 (-54d) |  |  |  |
| PRO-R16-PW-DL-130 | Material Delivery & Site Inspection for Finishes of Potable Water Network | 2026-12-20 → 2026-10-27 (-54d) | 2027-01-18 → 2026-11-25 (-54d) |  | -179d → -81d | PRO-PW-1DL-130, PRO-R17-PW-DL-130 → PRO-PW-1DL-130, PRO-R17-PW-DL-130 SS, PRO-R17-PW-DL-130 FF |
| 7 | **Road 15 Local 1 ( 556 LM )** |  | 2027-02-17 → 2026-11-25 (-84d) |  |  |  |
| 1 | **Main Line Sections** |  | 2027-01-11 → 2026-11-18 (-54d) |  |  |  |
| PRO-R15-PW-DL-110 | Material Delivery & Site Inspection of Valves for Potable Water Network | 2026-12-13 → 2026-10-20 (-54d) | 2027-01-11 → 2026-11-18 (-54d) |  | -280.5d → -115d | PRO-PW-1DL-110, PRO-R16-PW-DL-110 → PRO-PW-1DL-110, PRO-R16-PW-DL-110 SS, PRO-R16-PW-DL-110 FF |
| 4 | **Testing and Finishes** | 2027-01-19 → 2026-10-27 (-84d) | 2027-02-17 → 2026-11-25 (-84d) |  |  |  |
| PRO-R15-PW-DL-130 | Material Delivery & Site Inspection for Finishes of Potable Water Network | 2027-01-19 → 2026-10-27 (-84d) | 2027-02-17 → 2026-11-25 (-84d) |  | -179d → -81d | PRO-PW-1DL-130, PRO-R16-PW-DL-130 → PRO-PW-1DL-130, PRO-R16-PW-DL-130 SS, PRO-R16-PW-DL-130 FF |
| 4 | **Road 10 Local 2 ( 2352 LM )** |  | 2027-03-24 → 2026-11-25 (-119d) |  |  |  |
| 1 | **Main Line Sections** |  | 2027-01-11 → 2026-11-18 (-54d) |  |  |  |
| PRO-R10-PW-DL-110 | Material Delivery & Site Inspection of Valves for Potable Water Network |  | 2027-01-11 → 2026-11-18 (-54d) |  | -280.5d → -115d |  |
| 4 | **Testing and Finishes** | 2027-02-18 → 2026-10-27 (-114d) | 2027-03-24 → 2026-11-25 (-119d) |  |  |  |
| PRO-R10-PW-DL-130 | Material Delivery & Site Inspection for Finishes of Potable Water Network | 2027-02-18 → 2026-10-27 (-114d) | 2027-03-24 → 2026-11-25 (-119d) |  | -179d → -81d | PRO-PW-1DL-130, PRO-R15-PW-DL-130 → PRO-PW-1DL-130, PRO-R15-PW-DL-130 SS, PRO-R15-PW-DL-130 FF |
| 3 | **Road 14 Local 1 ( 584 LM )** |  | 2027-02-10 → 2026-11-19 (-83d) |  |  |  |
| 1 | **Main Line Sections** |  | 2027-02-10 → 2026-11-19 (-83d) |  |  |  |
| PRO-R14-PW-DL-110 | Material Delivery & Site Inspection of Valves for Potable Water Network | 2027-01-12 → 2026-10-10 A (-94d) | 2027-02-10 → 2026-11-19 (-83d) | 0% → 10% | -280.5d → -115d | PRO-PW-1DL-110, PRO-R10-PW-DL-110 → PRO-PW-1DL-110, PRO-R10-PW-DL-110 SS, PRO-R10-PW-DL-110 FF |
| 2 | **Road 09 Local 2 ( 2278 LM )** |  | 2027-03-17 → 2026-11-25 (-112d) |  |  |  |
| 1 | **Main Line Sections** |  | 2027-03-17 → 2026-08-17 (-212d) |  |  |  |
| PRO-R09-PW-DL-110 | Material Delivery & Site Inspection of Valves for Potable Water Network | 2027-02-11 → 2026-08-11 A (-184d) | 2027-03-17 → 2026-08-17 A (-212d) | 0% → 100% | -280.5d → none | PRO-PW-1DL-110, PRO-R14-PW-DL-110 → PRO-PW-1DL-110 |
| 4 | **Testing and Finishes** | 2026-10-20 → 2026-10-27 (+7d) | 2026-11-18 → 2026-11-25 (+7d) |  |  |  |
| PRO-R09-PW-DL-130 | Material Delivery & Site Inspection for Finishes of Potable Water Network | 2026-10-20 → 2026-10-27 (+7d) | 2026-11-18 → 2026-11-25 (+7d) |  | -89d → -69d | PRO-PW-1DL-130, PRO-R14-PW-DL-130 → PRO-PW-1DL-130, PRO-R14-PW-DL-130 SS, PRO-R14-PW-DL-130 FF |
| 5 | **Road 11 Local 1 ( 670 LM )** |  | 2027-04-17 → 2026-12-19 (-119d) |  |  |  |
| 1 | **Main Line Sections** |  | 2027-04-17 → 2026-12-19 (-119d) |  |  |  |
| PRO-R11-PW-DL-110 | Material Delivery & Site Inspection of Valves for Potable Water Network | 2027-03-18 → 2026-11-19 (-119d) | 2027-04-17 → 2026-12-19 (-119d) |  | -213d → -115d | PRO-PW-1DL-110, PRO-R09-PW-DL-110 → PRO-PW-1DL-110, PRO-R09-PW-DL-110 SS, PRO-R09-PW-DL-110 FF, PRO-R14-PW-DL-110 SS, PRO-R14-PW-DL-110 FF |
| 4 | **Testing and Finishes** | 2026-11-19 → 2026-10-27 (-23d) | 2026-12-19 → 2026-11-25 (-24d) |  |  |  |
| PRO-R11-PW-DL-130 | Material Delivery & Site Inspection for Finishes of Potable Water Network | 2026-11-19 → 2026-10-27 (-23d) | 2026-12-19 → 2026-11-25 (-24d) |  | -89d → -69d | PRO-PW-1DL-130, PRO-R09-PW-DL-130 → PRO-PW-1DL-130, PRO-R09-PW-DL-130 SS, PRO-R09-PW-DL-130 FF |
| IR | **Irrigation Network** |  | 2027-01-02 → 2026-11-10 (-53d) |  |  |  |
| 1DL | **1st Material Delivery & Site Inspection** |  | 2026-10-19 → 2026-10-22 (+3d) |  |  |  |
| 1 | **Main Line Pipes** |  | 2026-10-19 → 2026-10-22 (+3d) |  |  |  |
| PRO-IR-1DL-110 | 1ST Material Delivery for Valves of Irrigation Network | 2026-10-13 → 2026-10-08 A (-5d) | 2026-10-19 → 2026-10-22 (+3d) | 0% → 50% | -257d → -207d |  |
| DL | **Material Delivery & Site Inspection** |  | 2027-01-02 → 2026-11-10 (-53d) |  |  |  |
| 1 | **Road 18 Local 1 ( 479 LM )** |  | 2026-11-07 → 2026-11-10 (+3d) |  |  |  |
| 1 | **Main Line Pipes** |  | 2026-11-07 → 2026-11-10 (+3d) |  |  |  |
| PRO-R18-IR-DL-130 | Material Delivery & Site Inspection of Valves for Irrigation Network | 2026-10-20 → 2026-10-24 (+4d) | 2026-11-07 → 2026-11-10 (+3d) |  | -257d → -207d |  |
| 9 | **Road 17 Local 1 ( 500 LM )** |  | 2026-11-25 → 2026-11-10 (-15d) |  |  |  |
| 1 | **Main Line Pipes** |  | 2026-11-25 → 2026-11-10 (-15d) |  |  |  |
| PRO-R17-IR-DL-110 | Material Delivery & Site Inspection of Valves for Irrigation Network | 2026-11-08 → 2026-10-24 (-15d) | 2026-11-25 → 2026-11-10 (-15d) |  | -257d → -207d | PRO-IR-1DL-110, PRO-R18-IR-DL-130 → PRO-IR-1DL-110, PRO-R18-IR-DL-130 SS, PRO-R18-IR-DL-130 FF |
| 8 | **Road 16 Local 1 ( 527 LM )** |  | 2026-12-14 → 2026-11-10 (-34d) |  |  |  |
| 1 | **Main Line Pipes** |  | 2026-12-14 → 2026-11-10 (-34d) |  |  |  |
| PRO-R16-IR-DL-110 | Material Delivery & Site Inspection of Valves for Irrigation Network | 2026-11-26 → 2026-10-24 (-33d) | 2026-12-14 → 2026-11-10 (-34d) |  | -257d → -207d | PRO-IR-1DL-110, PRO-R17-IR-DL-110 → PRO-IR-1DL-110, PRO-R17-IR-DL-110 SS, PRO-R17-IR-DL-110 FF |
| 7 | **Road 15 Local 1 ( 556 LM )** |  | 2027-01-02 → 2026-11-10 (-53d) |  |  |  |
| 1 | **Main Line Pipes** |  | 2027-01-02 → 2026-11-10 (-53d) |  |  |  |
| PRO-R15-IR-DL-110 | Material Delivery & Site Inspection of Valves for Irrigation Network | 2026-12-15 → 2026-10-24 (-52d) | 2027-01-02 → 2026-11-10 (-53d) |  | -257d → -207d | PRO-IR-1DL-110, PRO-R16-IR-DL-110 → PRO-IR-1DL-110, PRO-R16-IR-DL-110 SS, PRO-R16-IR-DL-110 FF |
| MV | **Medium Voltage Network** |  | 2027-01-11 → 2026-11-18 (-54d) |  |  |  |
| 1DL | **1st Material Delivery & Site Inspection** |  | 2026-12-12 → 2026-11-18 (-24d) |  |  |  |
| 2 | **RMU Concrete Works** | 2026-10-13 → 2026-07-13 (-92d) | 2026-12-12 → 2026-07-13 (-152d) |  |  |  |
| PRO-MV-1DL-110 | 1ST Material Delivery for RMU Concrete Foundations of Medium Voltage Network | 2026-10-13 → 2026-07-13 A (-92d) | 2026-12-12 → 2026-07-13 A (-152d) | 0% → 100% | -99d → none |  |
| 3 | **Termination and Testing Works** | 2026-10-13 → 2026-10-20 (+7d) | 2026-11-11 → 2026-11-18 (+7d) |  |  |  |
| PRO-MV-1DL-120 | 1ST Material Delivery for Termination and Joints Kits of Medium Voltage Network | 2026-10-13 → 2026-10-20 (+7d) | 2026-11-11 → 2026-11-18 (+7d) |  | -49d → -56d |  |
| DL | **Material Delivery & Site Inspection** |  | 2027-01-11 → 2026-10-07 (-96d) |  |  |  |
| 4 | **Road 10 Local 2 ( 2352 LM )** |  | 2027-01-11 → 2026-10-07 (-96d) |  |  |  |
| 2 | **RMU Concrete Works** | 2026-12-13 → 2026-07-15 (-151d) | 2027-01-11 → 2026-07-16 (-179d) |  |  |  |
| PRO-R10-MV-DL-120 | Material Delivery & Site Inspection of RMU Concrete Foundations for Medium Voltage Network | 2026-12-13 → 2026-07-15 A (-151d) | 2027-01-11 → 2026-07-16 A (-179d) | 0% → 100% | -99d → none |  |
| 2 | **Road 09 Local 2 ( 2278 LM )** |  | 2026-11-11 → 2026-10-07 (-35d) |  |  |  |
| 1 | **Cabling Works** |  | 2026-11-11 → 2026-09-11 (-61d) |  |  |  |
| PRO-R09-MV-DL-100 | Material Delivery & Site Inspection of Medium Voltage Cables for Medium Voltage Network |  | 2026-11-11 → 2026-09-11 A (-61d) | 90% → 100% | -171d → none |  |
| SL | **Street Lighting Network** |  | 2027-07-29 → 2026-12-29 (-212d) |  |  |  |
| 1DL | **1st Material Delivery & Site Inspection** |  | 2026-10-29 → 2026-11-05 (+7d) |  |  |  |

| ID | Task | Start | Finish | Complete | Total float | Predecessors |
| --- | --- | --- | --- | --- | --- | --- |
| 2 | **Lighting Poles Works** |  | 2026-10-19 → 2026-10-26 (+7d) |  |  |  |
| PRO-SL-1DL-140 | 1ST Material Delivery for Lighting Fixtures of Street Lighting Network | 2026-10-13 → 2026-10-20 (+7d) | 2026-10-19 → 2026-10-26 (+7d) |  | -292d → -153d |  |
| 3 | **Distribution Panel Board** | 2026-10-13 → 2026-10-20 (+7d) | 2026-10-19 → 2026-10-26 (+7d) |  |  |  |
| PRO-SL-1DL-160 | 1ST Material Delivery for Distrubution Panel Boards of Street Lighting Network | 2026-10-13 → 2026-10-20 (+7d) | 2026-10-19 → 2026-10-26 (+7d) |  | -88d → -94d |  |
| 5 | **Termination and Testing Works** | 2026-10-13 → 2026-10-20 (+7d) | 2026-10-29 → 2026-11-05 (+7d) |  |  |  |
| PRO-SL-1DL-130 | 1ST Material Delivery for Fuse Boxes of Street Lighting Network | 2026-10-13 → 2026-10-20 (+7d) | 2026-10-29 → 2026-11-05 (+7d) |  | -275d → -156d |  |
| PRO-SL-1DL-170 | 1ST Material Delivery for Cable Lugs of Street Lighting Network | 2026-10-13 → 2026-10-20 (+7d) | 2026-10-29 → 2026-11-05 (+7d) |  | -249d → -119d |  |
| 4 | **Earthing System Works** | 2026-10-13 → 2026-10-20 (+7d) | 2026-10-19 → 2026-10-26 (+7d) |  |  |  |
| PRO-SL-1DL-150 | 1ST Material Delivery for Lighting Earthing of Street Lighting Network | 2026-10-13 → 2026-10-20 (+7d) | 2026-10-19 → 2026-10-26 (+7d) |  | -129d → -135d |  |
| DL | **Material Delivery & Site Inspection** |  | 2027-07-29 → 2026-12-29 (-212d) |  |  |  |
| 1 | **Road 18 Local 1 ( 479 LM )** |  | 2027-01-18 → 2026-12-06 (-43d) |  |  |  |
| PRO-R18-SL-DL-220 | Material Delivery & Site Inspection of Lighting Fixtures for Street Lighting Network |  |  |  | -292d → -153d | PRO-SL-1DL-140, PRO-R18-SL-DL-200 → PRO-SL-1DL-140 SS, PRO-R18-SL-DL-200 SS |
| 4 | **Termination and Testing Works** | 2026-11-19 → 2026-11-07 (-12d) | 2027-01-18 → 2026-12-06 (-43d) |  |  |  |
| PRO-R18-SL-DL-210 | Material Delivery & Site Inspection of Fuse Boxes for Street Lighting Network | 2026-11-19 → 2026-11-07 (-12d) | 2026-12-19 → 2026-12-06 (-13d) |  | -292d → -156d | PRO-SL-1DL-130, PRO-R18-SL-DL-220 → PRO-SL-1DL-130, PRO-R18-SL-DL-220 SS |
| PRO-R18-SL-DL-250 | Material Delivery & Site Inspection of Cable Lugs for Street Lighting Network | 2026-12-20 → 2026-11-07 (-43d) | 2027-01-18 → 2026-12-06 (-43d) |  | -292d → -119d | PRO-SL-1DL-170, PRO-R18-SL-DL-210 → PRO-SL-1DL-170, PRO-R18-SL-DL-210 SS |
| 9 | **Road 17 Local 1 ( 500 LM )** |  | 2027-02-17 → 2026-12-06 (-73d) |  |  |  |
| 2 | **Lighting Poles Works** |  | 2026-12-19 → 2026-11-18 (-31d) |  |  |  |
| PRO-R17-SL-DL-140 | Material Delivery & Site Inspection of Lighting Fixtures for Street Lighting Network | 2026-11-19 → 2026-10-20 (-30d) | 2026-12-19 → 2026-11-18 (-31d) |  | -283.5d → -153d | PRO-SL-1DL-140, PRO-R18-SL-DL-220 → PRO-SL-1DL-140 SS, PRO-R18-SL-DL-220 SS, PRO-R18-SL-DL-220 FF |
| 4 | **Termination and Testing Works** | 2026-12-20 → 2026-11-07 (-43d) | 2027-02-17 → 2026-12-06 (-73d) |  |  |  |
| PRO-R17-SL-DL-130 | Material Delivery & Site Inspection of Fuse Boxes for Street Lighting Network | 2026-12-20 → 2026-11-07 (-43d) | 2027-01-18 → 2026-12-06 (-43d) |  | -271.5d → -156d | PRO-SL-1DL-130, PRO-R18-SL-DL-210 → PRO-SL-1DL-130, PRO-R18-SL-DL-210 SS, PRO-R18-SL-DL-210 FF |
| PRO-R17-SL-DL-170 | Material Delivery & Site Inspection of Cable Lugs for Street Lighting Network | 2027-01-19 → 2026-11-07 (-73d) | 2027-02-17 → 2026-12-06 (-73d) |  | -292d → -119d | PRO-SL-1DL-170, PRO-R18-SL-DL-250 → PRO-SL-1DL-170, PRO-R18-SL-DL-250 SS, PRO-R18-SL-DL-250 FF |
| 8 | **Road 16 Local 1 ( 527 LM )** |  | 2027-03-24 → 2026-12-06 (-108d) |  |  |  |
| 2 | **Lighting Poles Works** |  | 2027-01-18 → 2026-11-18 (-61d) |  |  |  |
| PRO-R16-SL-DL-140 | Material Delivery & Site Inspection of Lighting Fixtures for Street Lighting Network | 2026-12-20 → 2026-10-20 (-61d) | 2027-01-18 → 2026-11-18 (-61d) |  | -283.5d → -153d | PRO-SL-1DL-140, PRO-R17-SL-DL-140 → PRO-SL-1DL-140 SS, PRO-R17-SL-DL-140 SS, PRO-R17-SL-DL-140 FF |
| 4 | **Termination and Testing Works** | 2027-01-19 → 2026-11-07 (-73d) | 2027-03-24 → 2026-12-06 (-108d) |  |  |  |
| PRO-R16-SL-DL-130 | Material Delivery & Site Inspection of Fuse Boxes for Street Lighting Network | 2027-01-19 → 2026-11-07 (-73d) | 2027-02-17 → 2026-12-06 (-73d) |  | -271.5d → -156d | PRO-SL-1DL-130, PRO-R17-SL-DL-130 → PRO-SL-1DL-130, PRO-R17-SL-DL-130 SS, PRO-R17-SL-DL-130 FF |
| PRO-R16-SL-DL-170 | Material Delivery & Site Inspection of Cable Lugs for Street Lighting Network | 2027-02-18 → 2026-11-07 (-103d) | 2027-03-24 → 2026-12-06 (-108d) |  | -292d → -119d | PRO-SL-1DL-170, PRO-R17-SL-DL-170 → PRO-SL-1DL-170, PRO-R17-SL-DL-170 SS, PRO-R17-SL-DL-170 FF |
| 7 | **Road 15 Local 1 ( 556 LM )** |  | 2027-04-24 → 2026-12-06 (-139d) |  |  |  |
| 2 | **Lighting Poles Works** |  | 2027-02-17 → 2026-11-18 (-91d) |  |  |  |
| PRO-R15-SL-DL-140 | Material Delivery & Site Inspection of Lighting Fixtures for Street Lighting Network | 2027-01-19 → 2026-10-20 (-91d) | 2027-02-17 → 2026-11-18 (-91d) |  | -283.5d → -153d | PRO-SL-1DL-140, PRO-R16-SL-DL-140 → PRO-SL-1DL-140 SS, PRO-R16-SL-DL-140 SS, PRO-R16-SL-DL-140 FF |
| 4 | **Termination and Testing Works** | 2027-02-18 → 2026-11-07 (-103d) | 2027-04-24 → 2026-12-06 (-139d) |  |  |  |
| PRO-R15-SL-DL-130 | Material Delivery & Site Inspection of Fuse Boxes for Street Lighting Network | 2027-02-18 → 2026-11-07 (-103d) | 2027-03-24 → 2026-12-06 (-108d) |  | -271.5d → -156d | PRO-SL-1DL-130, PRO-R16-SL-DL-130 → PRO-SL-1DL-130, PRO-R16-SL-DL-130 SS, PRO-R16-SL-DL-130 FF |
| PRO-R15-SL-DL-170 | Material Delivery & Site Inspection of Cable Lugs for Street Lighting Network | 2027-03-25 → 2026-11-07 (-138d) | 2027-04-24 → 2026-12-06 (-139d) |  | -292d → -119d | PRO-SL-1DL-170, PRO-R16-SL-DL-170 → PRO-SL-1DL-170, PRO-R16-SL-DL-170 SS, PRO-R16-SL-DL-170 FF |
| 4 | **Road 10 Local 2 ( 2352 LM )** |  | 2027-04-24 → 2026-12-06 (-139d) |  |  |  |
| 2 | **Lighting Poles Works** |  | 2027-03-24 → 2026-11-18 (-126d) |  |  |  |
| PRO-R10-SL-DL-140 | Material Delivery & Site Inspection of Lighting Fixtures for Street Lighting Network | 2027-02-18 → 2026-10-20 (-121d) | 2027-03-24 → 2026-11-18 (-126d) |  | -283.5d → -128.5d | PRO-SL-1DL-140, PRO-R15-SL-DL-140 → PRO-SL-1DL-140 SS, PRO-R15-SL-DL-140 SS, PRO-R15-SL-DL-140 FF |
| 3 | **Distribution Panel Board** |  | 2026-11-11 → 2026-10-26 (-16d) |  |  |  |
| PRO-R10-SL-DL-160 | Material Delivery & Site Inspection of Distrubution Panel Boards for Street Lighting Network |  | 2026-11-11 → 2026-10-26 (-16d) |  | -108d → -94d |  |
| 4 | **Termination and Testing Works** |  | 2027-04-24 → 2026-12-06 (-139d) |  |  |  |
| PRO-R10-SL-DL-130 | Material Delivery & Site Inspection of Fuse Boxes for Street Lighting Network |  | 2027-03-24 → 2026-12-06 (-108d) |  | -271.5d → -156d |  |
| PRO-R10-SL-DL-170 | Material Delivery & Site Inspection of Cable Lugs for Street Lighting Network |  | 2027-04-24 → 2026-12-06 (-139d) |  | -292d → -119d |  |
| 5 | **Earthing System Works** | 2026-10-20 → 2026-10-27 (+7d) | 2026-11-18 → 2026-11-25 (+7d) |  |  |  |
| PRO-R10-SL-DL-150 | Material Delivery & Site Inspection of Lighting Earthing for Street Lighting Network | 2026-10-20 → 2026-10-27 (+7d) | 2026-11-18 → 2026-11-25 (+7d) |  | -129d → -135d |  |
| 6 | **Road 14 Local 1 ( 584 LM )** |  | 2027-05-30 → 2026-12-29 (-152d) |  |  |  |
| 2 | **Lighting Poles Works** |  | 2027-04-24 → 2026-11-18 (-157d) |  |  |  |
| PRO-R14-SL-DL-140 | Material Delivery & Site Inspection of Lighting Fixtures for Street Lighting Network | 2027-03-25 → 2026-10-20 (-156d) | 2027-04-24 → 2026-11-18 (-157d) |  | -283.5d → -128.5d | PRO-SL-1DL-140, PRO-R10-SL-DL-140 → PRO-SL-1DL-140 SS, PRO-R10-SL-DL-140 SS, PRO-R10-SL-DL-140 FF |
| 4 | **Termination and Testing Works** | 2027-03-25 → 2026-11-30 (-115d) | 2027-05-30 → 2026-12-29 (-152d) |  |  |  |
| PRO-R14-SL-DL-130 | Material Delivery & Site Inspection of Fuse Boxes for Street Lighting Network | 2027-03-25 → 2026-11-30 (-115d) | 2027-04-24 → 2026-12-29 (-116d) |  | -271.5d → -151.5d | PRO-SL-1DL-130, PRO-R10-SL-DL-130 → PRO-SL-1DL-130, PRO-R10-SL-DL-130 SS, PRO-R10-SL-DL-130 FF |
| PRO-R14-SL-DL-170 | Material Delivery & Site Inspection of Cable Lugs for Street Lighting Network | 2027-04-25 → 2026-11-30 (-146d) | 2027-05-30 → 2026-12-29 (-152d) |  | -292d → -119d | PRO-SL-1DL-170, PRO-R10-SL-DL-170 → PRO-SL-1DL-170, PRO-R10-SL-DL-170 SS, PRO-R10-SL-DL-170 FF |
| 2 | **Road 09 Local 2 ( 2278 LM )** |  | 2027-06-29 → 2026-12-29 (-182d) |  |  |  |
| 2 | **Lighting Poles Works** |  | 2027-05-30 → 2026-11-18 (-193d) |  |  |  |
| PRO-R09-SL-DL-140 | Material Delivery & Site Inspection of Lighting Fixtures for Street Lighting Network | 2027-04-25 → 2026-10-20 (-187d) | 2027-05-30 → 2026-11-18 (-193d) |  | -283.5d → -128.5d | PRO-SL-1DL-140, PRO-R14-SL-DL-140 → PRO-SL-1DL-140 SS, PRO-R14-SL-DL-140 SS, PRO-R14-SL-DL-140 FF |
| 4 | **Termination and Testing Works** | 2027-04-25 → 2026-11-30 (-146d) | 2027-06-29 → 2026-12-29 (-182d) |  |  |  |
| PRO-R09-SL-DL-130 | Material Delivery & Site Inspection of Fuse Boxes for Street Lighting Network | 2027-04-25 → 2026-11-30 (-146d) | 2027-05-30 → 2026-12-29 (-152d) |  | -271.5d → -151.5d | PRO-SL-1DL-130, PRO-R14-SL-DL-130 → PRO-SL-1DL-130, PRO-R14-SL-DL-130 SS, PRO-R14-SL-DL-130 FF |
| PRO-R09-SL-DL-170 | Material Delivery & Site Inspection of Cable Lugs for Street Lighting Network | 2027-05-31 → 2026-11-30 (-182d) | 2027-06-29 → 2026-12-29 (-182d) |  | -292d → -119d | PRO-SL-1DL-170, PRO-R14-SL-DL-170 → PRO-SL-1DL-170, PRO-R14-SL-DL-170 SS, PRO-R14-SL-DL-170 FF |
| 5 | **Earthing System Works** | 2026-10-20 → 2026-10-27 (+7d) | 2026-11-18 → 2026-11-25 (+7d) |  |  |  |
| PRO-R09-SL-DL-150 | Material Delivery & Site Inspection of Lighting Earthing for Street Lighting Network | 2026-10-20 → 2026-10-27 (+7d) | 2026-11-18 → 2026-11-25 (+7d) |  | -103.5d → -110.5d |  |
| 5 | **Road 11 Local 1 ( 670 LM )** |  | 2027-07-29 → 2026-12-29 (-212d) |  |  |  |
| 2 | **Lighting Poles Works** |  | 2027-06-29 → 2026-11-18 (-223d) |  |  |  |
| PRO-R11-SL-DL-140 | Material Delivery & Site Inspection of Lighting Fixtures for Street Lighting Network | 2027-05-31 → 2026-10-20 (-223d) | 2027-06-29 → 2026-11-18 (-223d) |  | -231.5d → -49.5d | PRO-SL-1DL-140, PRO-R09-SL-DL-140 → PRO-SL-1DL-140 SS, PRO-R09-SL-DL-140 SS, PRO-R09-SL-DL-140 FF |
| 4 | **Termination and Testing Works** | 2027-05-31 → 2026-11-30 (-182d) | 2027-07-29 → 2026-12-29 (-212d) |  |  |  |
| PRO-R11-SL-DL-130 | Material Delivery & Site Inspection of Fuse Boxes for Street Lighting Network | 2027-05-31 → 2026-11-30 (-182d) | 2027-06-29 → 2026-12-29 (-182d) |  | -262d → -115d | PRO-SL-1DL-130, PRO-R09-SL-DL-130 → PRO-SL-1DL-130, PRO-R09-SL-DL-130 SS, PRO-R09-SL-DL-130 FF |
| PRO-R11-SL-DL-170 | Material Delivery & Site Inspection of Cable Lugs for Street Lighting Network | 2027-06-30 → 2026-11-30 (-212d) | 2027-07-29 → 2026-12-29 (-212d) |  | -292d → -119d | PRO-SL-1DL-170, PRO-R09-SL-DL-170 → PRO-SL-1DL-170, PRO-R09-SL-DL-170 SS, PRO-R09-SL-DL-170 FF |
| 1 | **Superstructure Works** |  | 2027-01-20 → 2026-12-05 (-46d) |  |  |  |
| 2 | **Manufacturing of Material** |  | 2026-12-21 → 2026-08-09 (-134d) |  |  |  |
| TE | **Storm Drainage Ponds ( PO-J1 , PO-J2 )** |  | 2026-12-21 → 2026-08-09 (-134d) |  |  |  |
| PRO-DPO-CV-MF-20 | Manufacturing of Civil Works for Storm Drainage Ponds ( PO-J2 ) | 2026-10-13 → 2026-06-01 A (-134d) | 2026-12-21 → 2026-08-09 A (-134d) | 0% → 100% | -226d → none |  |
| 3 | **1st Material Delivery & Site Inspection** |  | 2027-01-20 → 2026-12-05 (-46d) |  |  |  |
| SL | **Sewage Pump Stations ( PS 06 )** | 2026-10-13 → 2026-10-20 (+7d) | 2026-11-28 → 2026-12-05 (+7d) |  |  |  |
| PRO-SPS-CV-1DL-10 | 1ST Material Delivery for Civil Works for Sewage Pump Stations ( PS 06 ) | 2026-10-13 → 2026-10-20 (+7d) | 2026-11-28 → 2026-12-05 (+7d) |  | -8d → -14d |  |

| ID | Task | Start | Finish | Complete | Total float | Predecessors |
| --- | --- | --- | --- | --- | --- | --- |
| TE | **Storm Drainage Ponds ( PO-J1 , PO-J2 )** |  | 2027-01-20 → 2026-09-08 (-134d) |  |  |  |
| PRO-DPO-CV-1DL-20 | 1ST Material Delivery for Civil Works for Storm Drainage Ponds ( PO-J2 ) | 2026-12-22 → 2026-08-10 A (-134d) | 2027-01-20 → 2026-09-08 A (-134d) | 0% → 100% | -226d → none |  |
| 4 | **Material Delivery & Site Inspection** |  | 2027-01-20 → 2026-11-01 (-80d) |  |  |  |
| TE | **Storm Drainage Ponds ( PO-J1 , PO-J2 )** |  | 2027-01-20 → 2026-11-01 (-80d) |  |  |  |
| PRO-DPO-CV-DL-10 | Material Delivery & Site Inspection for Civil Works for Storm Drainage Ponds ( PO-J1 ) |  | 2027-01-02 → 2026-10-22 (-72d) |  | -84d → -23d |  |
| PRO-DPO-CV-DL-20 | Material Delivery & Site Inspection for Civil Works for Storm Drainage Ponds ( PO-J2 ) |  | 2027-01-20 → 2026-11-01 (-80d) |  | -184d → -115d |  |
| LL | **Long Lead Time Items** |  | 2026-12-09 → 2026-11-23 (-16d) |  |  |  |
| 1 | **Superstructure Works** |  | 2026-12-09 → 2026-11-23 (-16d) |  |  |  |
| SL | **Sewage Pump Stations ( PS 06 )** |  | 2026-12-09 → 2026-11-23 (-16d) |  |  |  |
| 4 | **Material Site Inspection** |  | 2026-12-09 → 2026-11-23 (-16d) |  |  |  |
| PRO-SPS7-LL-MSI-10 | Material Site Inspection for Electromechanical Works for Sewage Pump Stations ( PS06 ) |  | 2026-12-09 → 2026-11-23 (-16d) |  | -48d → -34d |  |
| CON | **Construction Works** |  | 2027-12-06 → 2027-08-17 (-111d) |  |  |  |
| INF | **Infrastructure Networks** |  | 2027-12-06 → 2027-08-17 (-111d) |  |  |  |
| 1 | **Phase 2 Block "J"** |  | 2027-09-15 → 2027-06-01 (-106d) |  |  |  |
| SW | **Rising Main Network** |  | 2026-11-05 → 2026-11-08 (+3d) |  |  |  |
| ML | **Main Line Sections** |  | 2026-11-05 → 2026-11-08 (+3d) |  |  |  |
| CO-RM-SW-300 | Pipes Laying Works for Main Lines of Rising Main Network |  | 2026-11-05 → 2026-10-13 A (-23d) | 98% → 100% | 57d → none |  |
| CO-RM-SW-310 | Trench Backfilling and Compaction Works for Main Lines of Rising Main Network |  | 2026-11-05 → 2026-11-08 (+3d) | 80% → 98% | 57d → 55d |  |
| MH | **Manholes** |  | 2026-10-19 → 2026-10-20 (+1d) |  |  |  |
| CO-RM-SW-330 | Installation RC Footing Works for Main Line Manholes of Rising Main Network |  | 2026-10-15 → 2026-10-20 (+5d) |  | 72d → 71d |  |
| CO-RM-SW-340 | Install Grp Liner Wall Works for Main Line Manholes of Rising Main Network |  | 2026-10-19 → 2026-10-20 (+1d) |  | 72d → 71d | CO-RM-SW-330 SS → CO-RM-SW-330 SS, CO-RM-SW-330 FF |
| CO-RM-SW-350 | Pouring Grp Liner Wall Works for Main Line Manholes of Rising Main Network |  | 2026-10-15 → 2026-10-20 (+5d) |  | 73d → 71d | CO-RM-SW-340 SS → CO-RM-SW-340 SS, CO-RM-SW-340 FF |
| CO-RM-SW-360 | Backfilling Works for Main Line Manholes of Rising Main Network |  | 2026-10-18 → 2026-10-20 (+2d) |  | 73d → 71d | CO-RM-SW-350 SS → CO-RM-SW-350 SS, CO-RM-SW-350 FF |
| CO-RM-SW-370 | Testing Works for Main Line Manholes of Rising Main Network |  | 2026-10-13 → 2026-10-20 (+7d) | 40% → 80% | 77d → 71d | CO-RM-SW-360 SS → CO-RM-SW-360 SS, CO-RM-SW-360 FF |
| VC | **Valves Chamber** |  | 2026-11-01 → 2026-11-08 (+7d) |  |  |  |
| CO-RM-SW-400 | RC Wall Works for Valve Chambers and Washout chamber of Rising Main Network |  | 2026-10-13 → 2026-10-20 (+7d) |  | 61d → 55d |  |
| CO-RM-SW-410 | RC Slab Works for Valve Chambers and Washout chamber of Rising Main Network | 2026-10-13 → 2026-10-20 (+7d) | 2026-10-20 → 2026-10-27 (+7d) |  | 61d → 55d |  |
| CO-RM-SW-420 | Insulation Works for Valve Chambers and Washout chamber of Rising Main Network | 2026-10-21 → 2026-10-28 (+7d) | 2026-10-22 → 2026-10-29 (+7d) |  | 61d → 55d |  |
| CO-RM-SW-430 | Backfilling Works for Valve Chambers and Washout chamber of Rising Main Network | 2026-10-24 → 2026-10-31 (+7d) | 2026-10-28 → 2026-11-04 (+7d) |  | 61d → 55d |  |
| CO-RM-SW-440 | Testing and Covering Works for Valve Chambers and Washout chamber of Rising Main Network | 2026-10-29 → 2026-11-05 (+7d) | 2026-11-01 → 2026-11-08 (+7d) |  | 61d → 55d |  |
| 2 | **Road 09 Local 2 ( 2278 LM )** |  | 2027-09-11 → 2027-06-01 (-102d) |  |  |  |
| SW_1 | **SW_1** |  | 2027-09-11 → 2027-05-23 (-111d) |  |  |  |
| CO-R09.S01-SW-210 | Testing Works for Main Line Manholes of Sewage Network-[Road 09] -[SW-1] | 2026-10-13 A | 2026-10-13 A | 0% → 100% | 22d → none |  |
| SD | **Storm Drainage Network** |  | 2026-10-28 → 2026-10-27 (-1d) |  |  |  |
| MH | **Manholes** |  | 2026-10-14 → 2026-10-21 (+7d) |  |  |  |
| CO-R09.S01-SD-210 | Testing Works for Manholes of Storm Drainage Network-[Road 09] -[SW-1] |  | 2026-10-14 → 2026-10-21 (+7d) |  | 50d → 44d | CO-R09.S01-SD-200 → CO-R09.S01-SD-200, CO-R09.S02-SD-210 SS+2d |
| CB | **Catch Basin Sections** | 2026-06-27 → 2026-06-14 (-13d) | 2026-10-28 → 2026-10-27 (-1d) |  |  |  |
| CO-R09.S01-SD-160 | Testing Works for Catch Basins of Storm Drainage Network-[Road 09] -[SW-1] | 2026-10-21 → 2026-06-14 A (-129d) | 2026-10-28 → 2026-10-27 (-1d) | 0% → 90% | -160d → -122d | CO-R09.S01-SD-150, CO-R09.S01-SD-120 SS+3d, CO-R09.S01-SD-120 FF+3d, PRO-SD-1DL-120 → CO-R09.S01-SD-120 SS+3d, CO-R09.S01-SD-120 FF+3d, PRO-SD-1DL-120, CO-R09.S01-SD-150 FF+1d |
| CO-R09.S01-SD-140 | Trench Excavation and Bedding Works for Catch Basins of Storm Drainage Network-[Road 09] -[SW-1] |  | 2026-10-19 → 2026-10-22 (+3d) |  | -160d → -119d | CO-R09.S01-EW-110, ENG-SH-SD-CB-A-110, ENG-MS-SD-CB-A-110, CO-R09.S01-SD-220 → CO-R09.S01-EW-110, ENG-SH-SD-CB-A-110, ENG-MS-SD-CB-A-110, CO-R09.S01-SD-220, CO-R09.S02-SD-140 SS+2d, CO-R09.S02-SD-140 FF+2d |
| CO-R09.S01-SD-150 | Installation and Pipes Laying Connection Works for Catch Basins of Storm Drainage Network-[Road 09] -[SW-1] |  | 2026-10-20 → 2026-10-22 (+2d) |  | -160d → -119d | CO-R09.S01-SD-140 SS, PRO-SD-1DL-130 → CO-R09.S01-SD-140 SS, PRO-SD-1DL-130, CO-R09.S02-SD-150 SS+2d, CO-R09.S01-SD-140 FF |
| CO-R09.S01-SD-170 | Trench Backfilling and Compaction Works for Catch Basins of Storm Drainage Network-[Road 09] -[SW-1] |  | 2026-10-28 → 2026-10-27 (-1d) |  | -160d → -122d | CO-R09.S01-SD-160 FF → CO-R09.S01-SD-160 FF, CO-R09.S02-SD-170 SS+2d |
| IR | **Irrigation Network** |  | 2026-11-01 → 2026-10-27 (-5d) |  |  |  |
| ML | **Main Line Pipes** |  | 2026-11-01 → 2026-10-27 (-5d) |  |  |  |
| CO-R09.S01-IR-140 | Trench Backfilling and Compaction Works for Main Lines of Irrigation Network-[Road 09] -[SW-1] | 2026-10-21 → 2026-04-09 A (-195d) | 2026-11-01 → 2026-04-19 A (-196d) | 0% → 100% | -200.5d → none | CO-R09.S01-IR-120, CO-R09.S01-IR-110 → CO-R09.S01-IR-110 |
| CO-R09.S01-IR-120 | Installation Works for Main Line Valves of Irrigation Network-[Road 09] -[SW-1] | 2026-05-02 A → 2026-10-20 (+171d) | 2026-10-20 → 2026-10-27 (+7d) | 40% → 0% | -200.5d → -189.5d |  |
| SL | **Street Lighting Network** | 2026-11-02 → 2026-10-28 (-5d) | 2027-08-15 → 2027-04-20 (-117d) |  |  |  |
| LP | **Lighting Poles Works** | 2026-11-02 → 2026-10-28 (-5d) | 2027-01-19 → 2027-01-17 (-2d) |  |  |  |
| CO-R09.S01-SL-100 | Foundation Excavation Works for Lighting Poles of Street Lighting Network-[Road 09] -[SW-1] | 2026-11-02 → 2026-10-28 (-5d) | 2026-11-12 → 2026-11-08 (-4d) |  | -200.5d → -189.5d | CO-R09.S01-EW-110, ENG-SH-SL-A-110, CO-R09.S01-EW-100, PRO-SL-1DL-110, ENG-MS-SL-A-110, CO-R09.S01-IR-100 SS+3d, CO-R09.S01-IR-140 → CO-R09.S01-EW-110, ENG-SH-SL-A-110, CO-R09.S01-EW-100, PRO-SL-1DL-110, ENG-MS-SL-A-110, CO-R09.S01-IR-100 SS+3d, CO-R09.S01-IR-140, CO-R09.S01-IR-120 |
| CO-R09.S01-SL-110 | Installation Works for Lighting Poles Foundation of Street Lighting Network-[Road 09] -[SW-1] | 2026-11-14 → 2026-11-09 (-5d) | 2026-11-26 → 2026-11-22 (-4d) |  | -200.5d → -189.5d |  |
| CO-R09.S01-SL-120 | Installation Works for Lighting Poles of Street Lighting Network-[Road 09] -[SW-1] | 2026-12-19 → 2026-12-16 (-3d) | 2026-12-30 → 2026-12-28 (-2d) |  | -200.5d → -189.5d |  |
| CO-R09.S01-SL-210 | Backfilling Works for Lighting Poles of Street Lighting Network-[Road 09] -[SW-1] | 2026-12-31 → 2026-12-29 (-2d) | 2027-01-13 → 2027-01-11 (-2d) |  | -200.5d → -189.5d |  |
| CO-R09.S01-SL-130 | Installation Works for Lighting Fixtures With Drop Wire of Street Lighting Network-[Road 09] -[SW-1] | 2027-01-06 → 2027-01-04 (-2d) | 2027-01-19 → 2027-01-17 (-2d) |  | -177.5d → -183.5d |  |
| CO-R09.S01-SL-200 | Testing Works for Lighting Poles of Street Lighting Network-[Road 09] -[SW-1] | 2027-01-14 → 2027-01-12 (-2d) | 2027-01-19 → 2027-01-17 (-2d) |  | -177.5d → -183.5d |  |
| CW | **Cabling Works** | 2026-11-14 → 2026-11-11 (-3d) | 2026-12-17 → 2026-12-15 (-2d) |  |  |  |
| CO-R09.S01-SL-140 | Trench Excavation and Bedding Works for Street Lighting Network-[Road 09] -[SW-1] | 2026-11-14 → 2026-11-11 (-3d) | 2026-11-24 → 2026-11-22 (-2d) |  | -200.5d → -189.5d | ENG-SH-SL-A-110, CO-R09.S01-SL-110 SS, ENG-MS-SL-A-110 → ENG-SH-SL-A-110, CO-R09.S01-SL-110 SS, ENG-MS-SL-A-110, CO-R09.S01-SL-110 FF |
| CO-R09.S01-SL-150 | Cable Laying Works for Street Lighting Network-[Road 09] -[SW-1] | 2026-11-25 → 2026-11-23 (-2d) | 2026-12-06 → 2026-12-03 (-3d) |  | -200.5d → -189.5d |  |
| CO-R09.S01-SL-160 | Trench Backfilling and Compaction Works for Street Lighting Network-[Road 09] -[SW-1] | 2026-12-07 → 2026-12-05 (-2d) | 2026-12-17 → 2026-12-15 (-2d) |  | -200.5d → -189.5d | CO-R09.S01-SL-150, CO-R09.S01-IR-140 → CO-R09.S01-SL-150, CO-R09.S01-IR-140, CO-R09.S01-IR-120 |
| DPB | **Distrubution Panel Boards** | 2027-07-01 → 2027-03-03 (-120d) | 2027-08-15 → 2027-04-20 (-117d) |  |  |  |
| CO-R09.S01-SL-170 | Foundation Excavation Works For Panel Boards of Street Lighting Network-[Road 09] -[SW-1] | 2027-07-01 → 2027-03-03 (-120d) | 2027-07-18 → 2027-03-23 (-117d) |  | -283.5d → -189.5d |  |
| CO-R09.S01-SL-180 | Installation Works for Panel Board Concrete Foundations of Street Lighting Network-[Road 09] -[SW-1] | 2027-07-19 → 2027-03-24 (-117d) | 2027-08-01 → 2027-04-06 (-117d) |  | -283.5d → -189.5d |  |
| CO-R09.S01-SL-190 | Installation Works for Lighting Panel Boards of Street Lighting Network-[Road 09] -[SW-1] | 2027-08-02 → 2027-04-07 (-117d) | 2027-08-15 → 2027-04-20 (-117d) |  | -283.5d → -189.5d |  |
| CO-R09.S01-SL-220 | A wall of concrete blocks to install the KWH meter of Street Lighting Network-[Road 09] -[SW-1] | 2027-08-02 → 2027-04-07 (-117d) | 2027-08-15 → 2027-04-20 (-117d) |  | -283.5d → -189.5d |  |
| MV | **Medium Voltage Network** |  | 2026-12-27 → 2026-12-16 (-11d) |  |  |  |
| CW | **Cabling Works** |  | 2026-12-27 → 2026-12-16 (-11d) |  |  |  |
| CO-R09.S01-MV-100 | Trench Excavation and Bedding Works for Medium Voltage Network-[Road 09] -[SW-1] |  | 2026-12-17 → 2026-12-15 (-2d) | 40% → 80% | -200d → -161d |  |
| CO-R09.S01-MV-110 | Cable Laying Works for Medium Voltage Network-[Road 09] -[SW-1] |  | 2026-12-19 → 2026-12-15 (-4d) | 40% → 80% | -200d → -161d | PRO-MV-1DL-100, CO-R09.S01-MV-100 SS, MS-CS-MV FF, PRO-R09-MV-DL-100 FF+3d → PRO-MV-1DL-100, CO-R09.S01-MV-100 SS, PRO-R09-MV-DL-100 FF+3d, CO-R09.S01-MV-100 FF |
| CO-R09.S01-MV-120 | Trench Backfilling and Compaction Works for Medium Voltage Network-[Road 09] -[SW-1] | 2026-12-20 → 2026-10-13 A (-68d) | 2026-12-27 → 2026-12-16 (-11d) | 0% → 80% | -200d → -161d | CO-R09.S01-MV-110 → CO-R09.S01-MV-110 SS, CO-R09.S01-MV-110 FF+1d |
| TE | **Telecom Network** | 2026-12-28 → 2026-12-31 (+3d) | 2027-02-09 → 2027-02-13 (+4d) |  |  |  |
| PD | **Ducts Works** | 2026-12-28 → 2026-12-31 (+3d) | 2027-01-10 → 2027-01-13 (+3d) |  |  |  |
| CO-R09.S01-TE-100 | Trench Excavation and Bedding Works for Ducts of Telecom Network-[Road 09] -[SW-1] | 2026-12-28 → 2026-12-31 (+3d) | 2026-12-29 → 2027-01-02 (+4d) |  | -200d → -173d | ENG-SH-TE-A-110, CO-R09.S01-IR-140 SS+3d, CO-R09.S01-IR-140 FF+3d, CO-R09.S01-SL-160 SS+5d, CO-R09.S01-SL-160 FF+5d, CO-R09.S01-EW-110, ENG-MS-TE-A-110, CO-R09.S01-MV-120, CO-R10.S04-ES-TE-100 → ENG-SH-TE-A-110, CO-R09.S01-IR-140 SS+3d, CO-R09.S01-IR-140 FF+3d, CO-R09.S01-SL-160 SS+5d, CO-R09.S01-SL-160 FF+5d, CO-R09.S01-EW-110, ENG-MS-TE-A-110, CO-R09.S01-MV-120, CO-R10.S04-ES-TE-100, CO-R09.S01-IR-120 FS+3d |

| ID | Task | Start | Finish | Complete | Total float | Predecessors |
| --- | --- | --- | --- | --- | --- | --- |
| CO-R09.S01-TE-110 | Pipes Laying Works for Ducts of Telecom Network-[Road 09] -[SW-1] | 2026-12-30 → 2027-01-03 (+4d) | 2027-01-03 → 2027-01-06 (+3d) |  | -186d → -159d |  |
| CO-R09.S01-TE-120 | Pouring Plain Concrete Above Ducts of Telecom Network-[Road 09] -[SW-1] | 2027-01-04 → 2027-01-07 (+3d) | 2027-01-05 → 2027-01-09 (+4d) |  | -186d → -159d |  |
| CO-R09.S01-TE-130 | Trench Backfilling and Compaction Works for Ducts of Telecom Network-[Road 09] -[SW-1] | 2027-01-06 → 2027-01-10 (+4d) | 2027-01-10 → 2027-01-13 (+3d) |  | -186d → -159d |  |
| MH | **Manholes Works** | 2026-12-30 → 2027-01-03 (+4d) | 2027-02-09 → 2027-02-13 (+4d) |  |  |  |
| CO-R09.S01-TE-140 | Excavation Works for Manholes of Telecom Network-[Road 09] -[SW-1] | 2026-12-30 → 2027-01-03 (+4d) | 2027-01-12 → 2027-01-16 (+4d) |  | -200d → -173d |  |
| CO-R09.S01-TE-150 | Installation Works for Manholes of Telecom Network-[Road 09] -[SW-1] | 2027-01-13 → 2027-01-17 (+4d) | 2027-01-26 → 2027-01-30 (+4d) |  | -200d → -173d |  |
| CO-R09.S01-TE-160 | Backfilling Works for Manholes of Telecom Network-[Road 09] -[SW-1] | 2027-01-27 → 2027-01-31 (+4d) | 2027-02-09 → 2027-02-13 (+4d) |  | -200d → -173d |  |
| RD | **Road Works** |  | 2027-09-11 → 2027-05-23 (-111d) |  |  |  |
| RD | **Pre-Bituminous Construction** |  | 2027-02-13 → 2027-02-28 (+15d) |  |  |  |
| CO-R09.S01-RD-P-100 | Capping and Subgrade Layer for Road Works-[Road 09] -[SW-1] |  | 2027-02-09 → 2027-02-13 (+4d) |  | -167d → -173d |  |
| CO-R09.S01-RD-P-110 | Aggregate Base Course Layer for Road Works-[Road 09] -[SW-1] | 2027-01-20 → 2027-02-03 (+14d) | 2027-02-13 → 2027-02-28 (+15d) |  | -86d → -98d |  |
| LS | **Pavement Works** |  | 2027-09-11 → 2027-05-23 (-111d) |  |  |  |
| CO-R09.S01-RD-P-130 | Fixing of Interlock Tiles for Sidewalks Pavement-[Road 09] -[SW-1] | 2026-08-25 A → 2027-05-03 (+251d) | 2027-09-11 → 2027-05-23 (-111d) | 50% → 0% | -283.5d → -189.5d | PRO-RD-1DL-140 FF, CO-R09.S01-RD-P-120 SS, CO-R09-PW-TF-100 FF, CO-R09-PW-TF-110 FF, CO-R09-PW-TF-120 FF, CO-R09-SW-TF-100 SS, CO-R09-SW-TF-110 FF, CO-R09-SW-TF-120 FF, CO-R09-SD-TF-120 SS, CO-R09-SD-TF-100 SS, CO-R09-SL-TF-100 FF, CO-R09-SL-TF-110 FF, CO-R09-SL-ES-100 FF, CO-R09-SL-ES-110 FF, CO-R09-IR-TF-100 FF, CO-R09-MV-TF-100 FF → PRO-RD-1DL-140 FF, CO-R09.S01-RD-P-120 SS, CO-R09-PW-TF-100 FF, CO-R09-PW-TF-110 FF, CO-R09-PW-TF-120 FF, CO-R09-SW-TF-100 SS, CO-R09-SW-TF-110 FF, CO-R09-SW-TF-120 FF, CO-R09-SL-TF-100 FF, CO-R09-SL-TF-110 FF, CO-R09-SL-ES-100 FF, CO-R09-SL-ES-110 FF, CO-R09-IR-TF-100 FF, CO-R09-MV-TF-100 FF |
| SW_2 | **SW_2** |  | 2027-09-11 → 2027-06-01 (-102d) |  |  |  |
| SW | **Sewage Network** |  | 2026-10-26 → 2026-10-21 (-5d) |  |  |  |
| ML | **Main Line Sections** |  | 2026-10-26 → 2026-10-21 (-5d) |  |  |  |
| CO-R09.S02-SW-100 | Trench Excavation and Bedding Works for Main Lines of Sewage Network-[Road 09]-[SW-2] |  | 2026-10-26 → 2026-10-20 (-6d) | 95% → 98% | -85d → -82d | CO-R09.S02-EW-120, ENG-MS-SW-ML-A-110, ENG-SH-SW-ML-A-110, CO-R09.S01-SW-100 → CO-R09.S02-EW-120, ENG-MS-SW-ML-A-110, ENG-SH-SW-ML-A-110, CO-R09.S01-SW-100 SS+2d |
| CO-R09.S02-SW-120 | Pipes Laying Works for Main Lines of Sewage Network-[Road 09]-[SW-2] |  | 2026-10-26 → 2026-10-20 (-6d) | 95% → 98% | -85d → -82d | CO-R09.S02-SW-100 SS → CO-R09.S02-SW-100 SS, CO-R09.S01-SW-120 SS+2d, CO-R09.S02-SW-100 FF |
| CO-R09.S02-SW-130 | Trench Backfilling and Compaction Works for Main Lines of Sewage Network-[Road 09]-[SW-2] |  | 2026-10-26 → 2026-10-21 (-5d) | 90% → 98% | -85d → -82d | CO-R09.S02-SW-120 SS, CO-R09.S02-SW-210 FF → CO-R09.S02-SW-120 SS, CO-R09.S02-SW-210 FF, CO-R09.S01-SW-130 SS+2d, CO-R09.S02-SW-120 FF |
| MH | **Manholes** |  | 2026-10-13 → 2026-10-20 (+7d) |  |  |  |
| CO-R09.S02-SW-210 | Testing Works for Main Line Manholes of Sewage Network-[Road 09]-[SW-2] | 2026-10-13 → 2026-10-20 (+7d) | 2026-10-13 → 2026-10-20 (+7d) |  | -74d → -81d | CO-R09.S02-SW-200 → CO-R09.S02-SW-200, CO-R09.S01-SW-210 SS+2d |
| SD | **Storm Drainage Network** |  | 2026-10-25 → 2026-10-24 (-1d) |  |  |  |
| CO-R09.S02-SD-130 | Trench Backfilling and Compaction Works for Main Lines of Storm Drainage Network-[Road 09]-[SW-2] |  |  |  |  | CO-R09.S02-SD-120, CO-R09.S02-SD-220 FF → CO-R09.S02-SD-120 |
| MH | **Manholes** |  | 2026-10-14 → 2026-10-21 (+7d) |  |  |  |
| CO-R09.S02-SD-220 | Backfilling Works for Manholes of Storm Drainage Network-[Road 09]-[SW-2] |  | 2026-03-30 A → 2026-10-20 (+204d) | 100% → 90% | none → -119d |  |
| CO-R09.S02-SD-210 | Testing Works for Manholes of Storm Drainage Network-[Road 09]-[SW-2] | 2026-10-13 → 2026-09-25 A (-18d) | 2026-10-14 → 2026-10-21 (+7d) | 0% → 90% | -78d → -73d |  |
| CB | **Catch Basin Sections** |  | 2026-10-25 → 2026-10-24 (-1d) |  |  |  |
| CO-R09.S02-SD-140 | Trench Excavation and Bedding Works for Catch Basins of Storm Drainage Network-[Road 09]-[SW-2] |  | 2026-10-19 → 2026-10-20 (+1d) |  | 14d → -119d | CO-R09.S02-EW-120, CO-R09.S02-SD-220, CO-R09.S01-SD-140 FF → CO-R09.S02-EW-120, CO-R09.S02-SD-220 SS, CO-R09.S02-SD-220 FF+1d |
| CO-R09.S02-SD-150 | Installation and Pipes Laying Connection Works for Catch Basins of Storm Drainage Network-[Road 09]-[SW-2] |  |  |  | 14d → -119d | CO-R09.S02-SD-140 SS, PRO-R09-SD-DL-130 FF+3d → CO-R09.S02-SD-140 SS, PRO-R09-SD-DL-130 FF+3d, CO-R09.S02-SD-140 FF |
| CO-R09.S02-SD-170 | Trench Backfilling and Compaction Works for Catch Basins of Storm Drainage Network-[Road 09]-[SW-2] |  | 2026-10-25 → 2026-10-24 (-1d) |  | 14d → -119d |  |
| CO-R09.S02-SD-160 | Testing Works for Catch Basins of Storm Drainage Network-[Road 09]-[SW-2] | 2026-10-21 → 2026-07-17 A (-96d) | 2026-10-25 → 2026-10-24 (-1d) | 0% → 90% | 14d → -119d | CO-R09.S02-SD-150, CO-R09.S02-SD-120, PRO-R09-SD-DL-110 FF+3d → CO-R09.S02-SD-120, PRO-R09-SD-DL-110 FF+3d, CO-R09.S01-SD-160 SS+2d, CO-R09.S02-SD-150 SS, CO-R09.S02-SD-150 FF+1d |
| PW | **Potable Water Network** |  | 2027-03-21 → 2026-11-08 (-133d) |  |  |  |
| ML | **Main Line Sections** |  | 2027-03-21 → 2026-11-08 (-133d) |  |  |  |
| CO-R09.S02-PW-110 | Pipes Laying and accessories for Main Lines of Potable Water Network-[Road 09]-[SW-2] |  | 2027-03-21 → 2026-10-20 (-152d) |  | -280.5d → -155.5d |  |
| CO-R09.S02-PW-130 | Trench Backfilling and Compaction Works for Main Lines of Potable Water Network-[Road 09]-[SW-2] |  | 2027-03-21 → 2026-11-08 (-133d) |  | -280.5d → -171.5d | CO-R09.S02-PW-110 SS, CO-R09.S02-PW-160 FF, CO-R09.S02-PW-210 FF → CO-R09.S02-PW-110 SS, CO-R09.S02-PW-160 FF, CO-R09.S02-PW-210 FF, CO-R09.S02-PW-110 FF |
| SL | **Street Lighting Network** | 2027-03-22 → 2026-11-09 (-133d) | 2027-08-26 → 2027-05-12 (-106d) |  |  |  |
| LP | **Lighting Poles Works** | 2027-03-22 → 2026-11-09 (-133d) | 2027-06-02 → 2027-02-01 (-121d) |  |  |  |
| CO-R09.S02-SL-100 | Foundation Excavation Works for Lighting Poles of Street Lighting Network-[Road 09]-[SW-2] | 2027-03-22 → 2026-11-09 (-133d) | 2027-03-31 → 2026-11-18 (-133d) |  | -280.5d → -171.5d | CO-R09.S02-EW-120, CO-R09.S02-EW-110, CO-R09.S02-PW-130 → CO-R09.S02-EW-120, CO-R09.S02-EW-110, CO-R09.S02-PW-130, CO-R09.S01-SL-100 SS+2d |
| CO-R09.S02-SL-110 | Installation Works for Lighting Poles Foundation of Street Lighting Network-[Road 09]-[SW-2] | 2027-04-01 → 2026-11-19 (-133d) | 2027-04-11 → 2026-11-29 (-133d) |  | -280.5d → -171.5d | CO-R09.S02-SL-100, PRO-R09-SL-DL-110 FF+3d → CO-R09.S02-SL-100, PRO-R09-SL-DL-110 FF+3d, CO-R09.S01-SL-110 SS+2d, CO-R09.S01-SL-110 FF+2d |
| CO-R09.S02-SL-120 | Installation Works for Lighting Poles of Street Lighting Network-[Road 09]-[SW-2] | 2027-04-12 → 2026-12-19 (-114d) | 2027-04-21 → 2026-12-28 (-114d) |  | -280.5d → -187.5d | CO-R09.S02-SL-110, PRO-R09-SL-DL-120 FF+3d → CO-R09.S02-SL-110, PRO-R09-SL-DL-120 FF+3d, CO-R09.S01-SL-120 SS+2d |
| CO-R09.S02-SL-210 | Backfilling Works for Lighting Poles of Street Lighting Network-[Road 09]-[SW-2] | 2027-04-22 → 2026-12-31 (-112d) | 2027-05-20 → 2027-01-23 (-117d) |  | -280.5d → -189.5d | CO-R09.S02-SL-120, CO-R09.S01-SL-210 → CO-R09.S02-SL-120, CO-R09.S01-SL-210 SS+2d |
| CO-R09.S02-SL-130 | Installation Works for Lighting Fixtures With Drop Wire of Street Lighting Network-[Road 09]-[SW-2] | 2027-05-09 → 2027-01-13 (-116d) | 2027-06-02 → 2027-02-01 (-121d) |  | -283.5d → -189.5d | CO-R09.S02-SL-120, PRO-R09-SL-DL-140 FF+3d, CO-R09.S02-SL-200 FF → CO-R09.S02-SL-120, PRO-R09-SL-DL-140 FF+3d, CO-R09.S02-SL-200 FF, CO-R09.S01-SL-130 SS+2d |
| CO-R09.S02-SL-200 | Testing Works for Lighting Poles of Street Lighting Network-[Road 09]-[SW-2] | 2027-05-22 → 2027-01-24 (-118d) | 2027-05-30 → 2027-02-01 (-118d) |  | -280.5d → -189.5d | CO-R09.S02-SL-210, CO-R09.S02-SL-120 → CO-R09.S02-SL-210, CO-R09.S02-SL-120, CO-R09.S01-SL-200 SS+2d |
| CW | **Cabling Works** | 2027-04-22 → 2026-12-29 (-114d) | 2027-06-01 → 2027-02-01 (-120d) |  |  |  |
| CO-R09.S02-SL-140 | Trench Excavation and Bedding Works for Street Lighting Network-[Road 09]-[SW-2] | 2027-04-22 → 2026-12-29 (-114d) | 2027-05-03 → 2027-01-09 (-114d) |  | -259d → -163d | CO-R09.S02-EW-120, CO-R09.S02-SL-120, CO-R09.S02-SL-110 → CO-R09.S02-EW-120, CO-R09.S02-SL-120, CO-R09.S02-SL-110, CO-R09.S01-SL-140 SS+2d |
| CO-R09.S02-SL-150 | Cable Laying Works for Street Lighting Network-[Road 09]-[SW-2] | 2027-05-04 → 2027-01-10 (-114d) | 2027-05-20 → 2027-01-20 (-120d) |  | -259d → -163d | CO-R09.S02-SL-140, PRO-R09-SL-DL-100 FF+3d → CO-R09.S02-SL-140, PRO-R09-SL-DL-100 FF+3d, CO-R09.S01-SL-150 SS+2d |
| CO-R09.S02-SL-160 | Trench Backfilling and Compaction Works for Street Lighting Network-[Road 09]-[SW-2] | 2027-05-22 → 2027-01-21 (-121d) | 2027-06-01 → 2027-02-01 (-120d) |  | -259d → -163d | CO-R09.S02-SL-150 → CO-R09.S02-SL-150, CO-R09.S01-SL-160 SS+2d |
| DPB | **Distrubution Panel Boards** | 2027-07-01 → 2027-03-06 (-117d) | 2027-08-26 → 2027-05-12 (-106d) |  |  |  |
| CO-R09.S02-SL-170 | Foundation Excavation Works For Panel Boards of Street Lighting Network-[Road 09]-[SW-2] | 2027-07-01 → 2027-03-06 (-117d) | 2027-07-12 → 2027-03-20 (-114d) |  | -274.25d → -181.25d | CO-R09.S02-EW-120, CO-R09.S02-SL-160 SS, CO-R09-SL-ES-100 → CO-R09.S02-EW-120, CO-R09.S02-SL-160 SS, CO-R09-SL-ES-100, CO-R09.S01-SL-170 SS+2d |
| CO-R09.S02-SL-180 | Installation Works for Panel Board Concrete Foundations of Street Lighting Network-[Road 09]-[SW-2] | 2027-07-13 → 2027-03-27 (-108d) | 2027-07-24 → 2027-04-06 (-109d) |  | -274.25d → -186.25d | CO-R09.S02-SL-170 → CO-R09.S02-SL-170, CO-R09.S01-SL-180 SS+2d |
| CO-R09.S02-SL-190 | Installation Works for Lighting Panel Boards of Street Lighting Network-[Road 09]-[SW-2] | 2027-07-25 → 2027-04-10 (-106d) | 2027-08-04 → 2027-04-20 (-106d) |  | -274.25d → -188.25d | CO-R09.S02-SL-180, PRO-R09-SL-DL-160 FF+3d → CO-R09.S02-SL-180, PRO-R09-SL-DL-160 FF+3d, CO-R09.S01-SL-190 SS+2d |
| CO-R09.S02-SL-220 | A wall of concrete blocks to install the KWH meter of Street Lighting Network-[Road 09]-[SW-2] | 2027-08-05 → 2027-04-21 (-106d) | 2027-08-26 → 2027-05-12 (-106d) |  | -274.25d → -188.25d | CO-R09.S02-SL-180, CO-R09.S02-SL-190 → CO-R09.S02-SL-180, CO-R09.S02-SL-190, CO-R09.S01-SL-220 SS+2d |
| TE | **Telecom Network** | 2027-01-11 → 2027-01-03 (-8d) | 2027-03-07 → 2027-02-09 (-26d) |  |  |  |
| PD | **Ducts Works** | 2027-01-11 → 2027-01-03 (-8d) | 2027-02-07 → 2027-01-30 (-8d) |  |  |  |
| CO-R09.S02-TE-100 | Trench Excavation and Bedding Works for Ducts of Telecom Network-[Road 09]-[SW-2] | 2027-01-11 → 2027-01-03 (-8d) | 2027-01-13 → 2027-01-05 (-8d) |  | -177d → -158d | CO-R09.S01-TE-130, CO-R09.S01-TE-100 → CO-R09.S01-TE-100 SS+2d |
| CO-R09.S02-TE-110 | Pipes Laying Works for Ducts of Telecom Network-[Road 09]-[SW-2] | 2027-01-14 → 2027-01-06 (-8d) | 2027-01-21 → 2027-01-13 (-8d) |  | -177d → -158d | CO-R09.S02-TE-100, PRO-R09-TE-DL-100 FF+3d → CO-R09.S02-TE-100, PRO-R09-TE-DL-100 FF+3d, CO-R09.S01-TE-110 SS+2d |
| CO-R09.S02-TE-120 | Pouring Plain Concrete Above Ducts of Telecom Network-[Road 09]-[SW-2] | 2027-01-23 → 2027-01-14 (-9d) | 2027-01-30 → 2027-01-21 (-9d) |  | -177d → -158d | CO-R09.S02-TE-110 → CO-R09.S02-TE-110, CO-R09.S01-TE-120 SS+2d |
| CO-R09.S02-TE-130 | Trench Backfilling and Compaction Works for Ducts of Telecom Network-[Road 09]-[SW-2] | 2027-01-31 → 2027-01-23 (-8d) | 2027-02-07 → 2027-01-30 (-8d) |  | -177d → -158d | CO-R09.S02-TE-120 → CO-R09.S02-TE-120, CO-R09.S01-TE-130 SS+2d |
| MH | **Manholes Works** | 2027-02-10 → 2027-01-06 (-35d) | 2027-03-07 → 2027-02-09 (-26d) |  |  |  |
| CO-R09.S02-TE-140 | Excavation Works for Manholes of Telecom Network-[Road 09]-[SW-2] | 2027-02-10 → 2027-01-06 (-35d) | 2027-02-17 → 2027-01-13 (-35d) |  | -200d → -158d | CO-R09.S02-TE-100, CO-R09.S01-TE-140, CO-R09.S01-TE-160 → CO-R09.S02-TE-100, CO-R09.S01-TE-140 SS+2d |
| CO-R09.S02-TE-150 | Installation Works for Manholes of Telecom Network-[Road 09]-[SW-2] | 2027-02-18 → 2027-01-19 (-30d) | 2027-02-27 → 2027-01-26 (-32d) |  | -200d → -162d | CO-R09.S02-TE-140, PRO-R09-TE-DL-110 FF+3d → CO-R09.S02-TE-140, PRO-R09-TE-DL-110 FF+3d, CO-R09.S01-TE-150 SS+2d |
| CO-R09.S02-TE-160 | Backfilling Works for Manholes of Telecom Network-[Road 09]-[SW-2] | 2027-02-28 → 2027-02-02 (-26d) | 2027-03-07 → 2027-02-09 (-26d) |  | -200d → -167d | CO-R09.S02-TE-150 → CO-R09.S02-TE-150, CO-R09.S01-TE-160 SS+2d |
| RD | **Road Works** | 2026-08-25 → 2026-06-10 (-76d) | 2027-09-11 → 2027-06-01 (-102d) |  |  |  |
| RD | **Pre-Bituminous Construction** | 2027-05-25 → 2026-06-10 (-349d) | 2027-06-17 → 2027-03-07 (-102d) |  |  |  |
| CO-R09.S02-RD-P-100 | Capping and Subgrade Layer for Road Works-[Road 09]-[SW-2] | 2027-05-25 → 2026-06-10 A (-349d) | 2027-06-07 → 2027-02-16 (-111d) | 0% → 60% | -259d → -173d | CO-R09.S02-SD-130, CO-R09.S02-PW-130, CO-R09.S02-PW-160, CO-R09.S02-SL-160 SS+3d, CO-R09.S02-SL-160 FF+3d, PRO-R09-RD-DL-100 FF+3d, CO-R09.S02-TE-130, CO-R09.S02-TE-160, CO-R09.S02-SD-210 → CO-R09.S02-SD-130 FF, CO-R09.S02-SL-160 FF+3d, PRO-R09-RD-DL-100 FF+3d, CO-R09.S01-RD-P-100 SS+2d, CO-R09.S02-PW-130 FF+1d, CO-R09.S02-SD-210 FF+1d, CO-R09.S02-SD-220 SS, CO-R09.S02-SD-220 FF+1d |
| CO-R09.S02-RD-P-110 | Aggregate Base Course Layer for Road Works-[Road 09]-[SW-2] | 2027-05-29 → 2027-02-14 (-104d) | 2027-06-17 → 2027-03-07 (-102d) |  | -168d → -88d | CO-R09.S02-RD-P-100 SS+3d, CO-R09.S02-RD-P-100 FF+3d, CO-R09.S02-SD-170 SS+3d, CO-R09.S02-SD-170 FF+3d, PRO-R09-RD-DL-110 FF+3d → CO-R09.S02-RD-P-100 SS+3d, CO-R09.S02-RD-P-100 FF+3d, CO-R09.S02-SD-170 SS+3d, CO-R09.S02-SD-170 FF+3d, PRO-R09-RD-DL-110 FF+3d, CO-R09.S01-RD-P-110 SS+2d, CO-R09.S02-PW-160 FS+3d, CO-R09.S02-SL-160 SS+6d, CO-R09.S02-TE-130 FS+3d, CO-R09.S02-TE-160 FS+3d |
| LS | **Pavement Works** |  | 2027-09-11 → 2027-06-01 (-102d) |  |  |  |
| CO-R09.S02-RD-P-130 | Fixing of Interlock Tiles for Sidewalks Pavement-[Road 09]-[SW-2] | 2026-08-25 A → 2027-05-05 (+253d) | 2027-09-11 → 2027-06-01 (-102d) | 50% → 0% | -276.5d → -189.5d | PRO-R09-RD-DL-120 FF+3d, CO-R09.S02-RD-P-120 SS, CO-R09.S02-RD-P-120 FF+3d, CO-R09-PW-TF-110 FF, CO-R09-PW-TF-120 FF, CO-R09-SW-TF-100 SS, CO-R09-SW-TF-110 FF, CO-R09-SW-TF-120 FF, CO-R09-SD-TF-100 SS, CO-R09-SD-TF-120 SS, CO-R09-SL-TF-100 FF, CO-R09-SL-TF-110 FF, CO-R09-SL-ES-100 FF, CO-R09-SL-ES-110 FF, CO-R09-IR-TF-100 FF, CO-R09-MV-TF-100 FF → PRO-R09-RD-DL-120 FF+3d, CO-R09.S02-RD-P-120 SS, CO-R09.S02-RD-P-120 FF+3d, CO-R09-PW-TF-110 FF, CO-R09-PW-TF-120 FF, CO-R09-SW-TF-100 SS, CO-R09-SW-TF-110 FF, CO-R09-SW-TF-120 FF, CO-R09-SL-TF-100 FF, CO-R09-SL-TF-110 FF, CO-R09-SL-ES-100 FF, CO-R09-SL-ES-110 FF, CO-R09-IR-TF-100 FF, CO-R09-MV-TF-100 FF, CO-R09.S01-RD-P-130 SS+2d |
| 4 | **Road 10 Local 2 ( 2352 LM )** |  | 2027-07-11 → 2027-04-08 (-94d) |  |  |  |
| 1 | **SW-3** |  | 2027-07-11 → 2027-03-31 (-102d) |  |  |  |

| ID | Task | Start | Finish | Complete | Total float | Predecessors |
| --- | --- | --- | --- | --- | --- | --- |
| SW_3 | **SW_3-East** |  | 2027-07-11 → 2027-03-31 (-102d) |  |  |  |
| PW | **Potable Water Network** | 2025-08-05 → 2025-07-07 (-29d) | 2026-10-31 → 2026-11-05 (+5d) |  |  |  |
| VC | **Valve Chamber** | 2026-10-13 → 2025-07-07 (-463d) | 2026-10-31 → 2026-07-16 (-107d) |  |  |  |
| CO-R10.S03-ES-PW-170 | Excavation Works for Main Line Valves and Valve Chambers of Potable Water Network-[Road 10]-[SW-3] | 2026-10-13 → 2025-07-07 A (-463d) | 2026-10-13 → 2026-07-16 A (-89d) | 0% → 100% | -68d → none |  |
| CO-R10.S03-ES-PW-180 | RC Footing Works for Main Line Valves and Valve Chambers of Potable Water Network-[Road 10]-[SW-3] | 2026-10-14 → 2025-07-07 A (-464d) | 2026-10-17 → 2026-07-16 A (-93d) | 0% → 100% | -68d → none |  |
| CO-R10.S03-ES-PW-190 | RC Wall Works for Main Line Valves and Valve Chambers of Potable Water Network-[Road 10]-[SW-3] | 2026-10-18 → 2025-07-07 A (-468d) | 2026-10-24 → 2026-07-16 A (-100d) | 0% → 100% | -68d → none |  |
| CO-R10.S03-ES-PW-200 | RC Slab Works for Main Line Valves and Valve Chambers of Potable Water Network-[Road 10]-[SW-3] | 2026-10-25 → 2025-07-07 A (-475d) | 2026-10-26 → 2026-07-16 A (-102d) | 0% → 100% | -68d → none |  |
| CO-R10.S03-ES-PW-210 | Insulation Works for Main Line Valves and Valve Chambers of Potable Water Network-[Road 10]-[SW-3] | 2026-10-27 → 2025-07-07 A (-477d) | 2026-10-27 → 2026-07-16 A (-103d) | 0% → 100% | -68d → none |  |
| CO-R10.S03-ES-PW-220 | Backfilling Works for Main Line Valves and Valve Chambers of Potable Water Network-[Road 10]-[SW-3] | 2026-10-28 → 2025-07-07 A (-478d) | 2026-10-31 → 2026-07-16 A (-107d) | 0% → 100% | -68d → none |  |
| FH | **Fire Hydrant** | 2026-10-13 → 2026-10-20 (+7d) | 2026-10-29 → 2026-11-05 (+7d) |  |  |  |
| CO-R10.S03-ES-PW-140 | Excavation Works for Fire Hydrants of Potable Water Network-[Road 10]-[SW-3] | 2026-10-13 → 2026-10-20 (+7d) | 2026-10-19 → 2026-10-26 (+7d) |  |  |  |
| CO-R10.S03-ES-PW-150 | Installation Works for Fire Hydrant of Potable Water Network-[Road 10]-[SW-3] | 2026-10-20 → 2026-10-27 (+7d) | 2026-10-26 → 2026-11-02 (+7d) |  |  |  |
| CO-R10.S03-ES-PW-160 | Trench Backfilling and Compaction Works for Fire Hydrants of Potable Water Network-[Road 10]-[SW-3] | 2026-10-24 → 2026-10-31 (+7d) | 2026-10-29 → 2026-11-05 (+7d) |  |  |  |
| IR | **Irrigation Network** |  | 2025-10-06 → 2026-10-21 (+380d) |  |  |  |
| ML | **Main Line Pipes** |  | 2025-10-06 → 2026-10-21 (+380d) |  |  |  |
| CO-R10.S03-ES-IR-130 | Trench Backfilling and Compaction Works for Main Lines of Irrigation Network-[Road 10]-[SW-3] |  |  |  |  | CO-R10.S03-ES-IR-120, CO-R10.S03-ES-IR-110 → CO-R10.S03-ES-IR-110 |
| CO-R10.S03-ES-IR-120 | Installation Works for Main Line Valves of Irrigation Network-[Road 10]-[SW-3] | 2025-10-01 A → 2026-10-20 (+384d) | 2025-10-06 A → 2026-10-21 (+380d) | 100% → 0% | none → 6d |  |
| SL | **Street Lighting Network** | 2026-10-13 → 2026-10-20 (+7d) | 2027-05-05 → 2027-02-16 (-78d) |  |  |  |
| LP | **Lighting Poles Works** | 2026-10-13 → 2026-10-20 (+7d) | 2026-11-19 → 2026-11-26 (+7d) |  |  |  |
| CO-R10.S03-ES-SL-100 | Foundation Excavation Works for Lighting Poles of Street Lighting Network-[Road 10]-[SW-3] | 2026-10-13 → 2026-10-20 (+7d) | 2026-10-26 → 2026-11-02 (+7d) |  | -197d → -182d |  |
| CO-R10.S03-ES-SL-110 | Installation Works for Lighting Poles Foundation of Street Lighting Network-[Road 10]-[SW-3] | 2026-10-19 → 2026-10-26 (+7d) | 2026-11-01 → 2026-11-08 (+7d) |  | -197d → -182d |  |
| CO-R10.S03-ES-SL-120 | Installation Works for Lighting Poles of Street Lighting Network-[Road 10]-[SW-3] | 2026-10-25 → 2026-11-01 (+7d) | 2026-11-14 → 2026-11-21 (+7d) |  | -197d → -182d |  |
| CO-R10.S03-ES-SL-130 | Installation Works for Lighting Fixtures With Drop Wire of Street Lighting Network-[Road 10]-[SW-3] | 2026-10-31 → 2026-11-07 (+7d) | 2026-11-19 → 2026-11-26 (+7d) |  | -151d → -157d |  |
| CO-R10.S03-ES-SL-210 | Backfilling Works for Lighting Poles of Street Lighting Network-[Road 10]-[SW-3] | 2026-11-01 → 2026-11-08 (+7d) | 2026-11-14 → 2026-11-21 (+7d) |  | -175.5d → -172.5d |  |
| CO-R10.S03-ES-SL-200 | Testing Works for Lighting Poles of Street Lighting Network-[Road 10]-[SW-3] | 2026-11-15 → 2026-11-22 (+7d) | 2026-11-19 → 2026-11-26 (+7d) |  | -151d → -157d |  |
| CW | **Cabling Works** | 2026-11-15 → 2026-11-22 (+7d) | 2026-12-19 → 2026-12-26 (+7d) |  |  |  |
| CO-R10.S03-ES-SL-140 | Trench Excavation and Bedding Works for Street Lighting Network-[Road 10]-[SW-3] | 2026-11-15 → 2026-11-22 (+7d) | 2026-11-25 → 2026-12-02 (+7d) |  | -197d → -182d |  |
| CO-R10.S03-ES-SL-150 | Cable Laying Works for Street Lighting Network-[Road 10]-[SW-3] | 2026-11-26 → 2026-12-03 (+7d) | 2026-12-07 → 2026-12-14 (+7d) |  | -197d → -182d |  |
| CO-R10.S03-ES-SL-160 | Trench Backfilling and Compaction Works for Street Lighting Network-[Road 10]-[SW-3] | 2026-12-08 → 2026-12-15 (+7d) | 2026-12-19 → 2026-12-26 (+7d) |  | -197d → -182d |  |
| DPB | **Distrubution Panel Boards** | 2027-04-12 → 2027-01-24 (-78d) | 2027-05-05 → 2027-02-16 (-78d) |  |  |  |
| CO-R10.S03-ES-SL-170 | Foundation Excavation Works For Panel Boards of Street Lighting Network-[Road 10]-[SW-3] | 2027-04-12 → 2027-01-24 (-78d) | 2027-04-25 → 2027-02-06 (-78d) |  | -245d → -182d |  |
| CO-R10.S03-ES-SL-180 | Installation Works for Panel Board Concrete Foundations of Street Lighting Network-[Road 10]-[SW-3] | 2027-04-19 → 2027-01-31 (-78d) | 2027-05-02 → 2027-02-13 (-78d) |  | -245d → -182d |  |
| CO-R10.S03-ES-SL-220 | A wall of concrete blocks to install the KWH meter of Street Lighting Network-[Road 10]-[SW-3] | 2027-04-19 → 2027-01-31 (-78d) | 2027-05-02 → 2027-02-13 (-78d) |  | -242d → -179d |  |
| CO-R10.S03-ES-SL-190 | Installation Works for Lighting Panel Boards of Street Lighting Network-[Road 10]-[SW-3] | 2027-04-22 → 2027-02-03 (-78d) | 2027-05-05 → 2027-02-16 (-78d) |  | -245d → -182d |  |
| TE | **Telecom Network** | 2026-12-08 → 2026-12-15 (+7d) | 2027-01-09 → 2027-01-16 (+7d) |  |  |  |
| PD | **Ducts Works** | 2026-12-08 → 2026-12-15 (+7d) | 2027-01-09 → 2027-01-16 (+7d) |  |  |  |
| CO-R10.S03-ES-TE-100 | Trench Excavation and Bedding Works for Ducts of Telecom Network-[Road 10]-[SW-3] | 2026-12-08 → 2026-12-15 (+7d) | 2026-12-15 → 2026-12-22 (+7d) |  | -197d → -173d |  |
| CO-R10.S03-ES-TE-110 | Pipes Laying Works for Ducts of Telecom Network-[Road 10]-[SW-3] | 2026-12-16 → 2026-12-23 (+7d) | 2026-12-23 → 2026-12-30 (+7d) |  |  |  |
| CO-R10.S03-ES-TE-120 | Pouring Plain Concrete Above Ducts of Telecom Network-[Road 10]-[SW-3] | 2026-12-24 → 2026-12-31 (+7d) | 2026-12-31 → 2027-01-07 (+7d) |  |  |  |
| CO-R10.S03-ES-TE-130 | Trench Backfilling and Compaction Works for Ducts of Telecom Network-[Road 10]-[SW-3] | 2027-01-02 → 2027-01-09 (+7d) | 2027-01-09 → 2027-01-16 (+7d) |  |  |  |
| MH | **Manholes Works** | 2026-12-16 → 2026-12-23 (+7d) | 2027-01-09 → 2027-01-16 (+7d) |  |  |  |
| CO-R10.S03-ES-TE-140 | Excavation Works for Manholes of Telecom Network-[Road 10]-[SW-3] | 2026-12-16 → 2026-12-23 (+7d) | 2026-12-23 → 2026-12-30 (+7d) |  | -152d → -156d |  |
| CO-R10.S03-ES-TE-150 | Installation Works for Manholes of Telecom Network-[Road 10]-[SW-3] | 2026-12-24 → 2026-12-31 (+7d) | 2026-12-31 → 2027-01-07 (+7d) |  |  |  |
| CO-R10.S03-ES-TE-160 | Backfilling Works for Manholes of Telecom Network-[Road 10]-[SW-3] | 2027-01-02 → 2027-01-09 (+7d) | 2027-01-09 → 2027-01-16 (+7d) |  |  |  |
| RD | **Road Works** |  | 2027-07-11 → 2027-03-31 (-102d) |  |  |  |
| RD | **Pre-Bituminous Construction** | 2027-01-10 → 2026-09-10 (-122d) | 2027-02-02 → 2027-02-09 (+7d) |  |  |  |
| CO-R10.S03-ES-RD-100 | Capping and Subgrade Layer for Road Works-[Road 10]-[SW-3] | 2027-01-10 → 2026-09-10 A (-122d) | 2027-01-30 → 2026-12-29 (-32d) | 0% → 50% | -149d → -122d | ENG-SH-RD-A-100, CO-R10.S03-ES-SD-130, CO-R10.S03-ES-PW-130, CO-R10.S03-ES-PW-160, CO-R10.S03-ES-SL-160 SS+3d, CO-R10.S03-ES-SL-160 FF+3d, ENG-MS-RD-A-10, CO-R10.S03-ES-TE-130, CO-R10.S03-ES-TE-160, CO-R10.S03-ES-MV-120 SS+3d, CO-R10.S03-ES-MV-120 FF+3d → ENG-SH-RD-A-100, CO-R10.S03-ES-SD-130, CO-R10.S03-ES-PW-130, CO-R10.S03-ES-SL-160 FF+3d, ENG-MS-RD-A-10, CO-R10.S03-ES-MV-120 FF+3d |
| CO-R10.S03-ES-RD-110 | Aggregate Base Course Layer for Road Works-[Road 10]-[SW-3] | 2027-01-13 → 2027-01-20 (+7d) | 2027-02-02 → 2027-02-09 (+7d) |  | -91d → -79d | CO-R10.S03-ES-RD-100 SS+3d, CO-R10.S03-ES-RD-100 FF+3d, CO-R10.S03-ES-SD-170 SS+3d, CO-R10.S03-ES-SD-170 FF+3d → CO-R10.S03-ES-RD-100 SS+3d, CO-R10.S03-ES-RD-100 FF+3d, CO-R10.S03-ES-SD-170 SS+3d, CO-R10.S03-ES-SD-170 FF+3d, CO-R10.S03-ES-PW-160 FS+3d, CO-R10.S03-ES-SL-160 SS+6d, CO-R10.S03-ES-TE-130 FS+3d, CO-R10.S03-ES-TE-160 FS+3d |
| LS | **Pavement Works** |  | 2027-07-11 → 2027-03-31 (-102d) |  |  |  |
| CO-R10.S03-ES-RD-130 | Fixing of Interlock Tiles for Sidewalks Pavement-[Road 10]-[SW-3] | 2026-08-25 A → 2027-03-21 (+208d) | 2027-07-11 → 2027-03-31 (-102d) | 50% → 0% | -235d → -153d |  |
| SW_31 | **SW_3-West** |  | 2027-07-11 → 2027-03-31 (-102d) |  |  |  |
| PW | **Potable Water Network** |  | 2026-10-31 → 2026-11-05 (+5d) |  |  |  |
| VC | **Valve Chamber** | 2026-10-13 → 2026-07-07 (-98d) | 2026-10-31 → 2026-07-17 (-106d) |  |  |  |
| CO-R10.S03-WE-PW-170 | Excavation Works for Main Line Valves and Valve Chambers of Potable Water Network-[Road 10]-[SW-3] | 2026-10-13 → 2026-07-07 A (-98d) | 2026-10-13 → 2026-07-17 A (-88d) | 0% → 100% | -68d → none |  |
| CO-R10.S03-WE-PW-180 | RC Footing Works for Main Line Valves and Valve Chambers of Potable Water Network-[Road 10]-[SW-3] | 2026-10-14 → 2026-07-07 A (-99d) | 2026-10-17 → 2026-07-17 A (-92d) | 0% → 100% | -68d → none |  |
| CO-R10.S03-WE-PW-190 | RC Wall Works for Main Line Valves and Valve Chambers of Potable Water Network-[Road 10]-[SW-3] | 2026-10-18 → 2026-07-07 A (-103d) | 2026-10-24 → 2026-07-17 A (-99d) | 0% → 100% | -68d → none |  |
| CO-R10.S03-WE-PW-200 | RC Slab Works for Main Line Valves and Valve Chambers of Potable Water Network-[Road 10]-[SW-3] | 2026-10-25 → 2026-07-07 A (-110d) | 2026-10-26 → 2026-07-17 A (-101d) | 0% → 100% | -68d → none |  |
| CO-R10.S03-WE-PW-210 | Insulation Works for Main Line Valves and Valve Chambers of Potable Water Network-[Road 10]-[SW-3] | 2026-10-27 → 2026-07-07 A (-112d) | 2026-10-27 → 2026-07-17 A (-102d) | 0% → 100% | -68d → none |  |
| CO-R10.S03-WE-PW-220 | Backfilling Works for Main Line Valves and Valve Chambers of Potable Water Network-[Road 10]-[SW-3] | 2026-10-28 → 2026-07-07 A (-113d) | 2026-10-31 → 2026-07-17 A (-106d) | 0% → 100% | -68d → none |  |
| FH | **Fire Hydrant** | 2026-10-13 → 2026-10-20 (+7d) | 2026-10-29 → 2026-11-05 (+7d) |  |  |  |
| CO-R10.S03-WE-PW-140 | Excavation Works for Fire Hydrants of Potable Water Network-[Road 10]-[SW-3] | 2026-10-13 → 2026-10-20 (+7d) | 2026-10-19 → 2026-10-26 (+7d) |  | -82d → -88d |  |
| CO-R10.S03-WE-PW-150 | Installation Works for Fire Hydrant of Potable Water Network-[Road 10]-[SW-3] | 2026-10-20 → 2026-10-27 (+7d) | 2026-10-26 → 2026-11-02 (+7d) |  | -82d → -88d |  |
| CO-R10.S03-WE-PW-160 | Trench Backfilling and Compaction Works for Fire Hydrants of Potable Water Network-[Road 10]-[SW-3] | 2026-10-24 → 2026-10-31 (+7d) | 2026-10-29 → 2026-11-05 (+7d) |  | -82d → -88d |  |
| IR | **Irrigation Network** |  | 2026-07-05 → 2026-10-21 (+108d) |  |  |  |
| ML | **Main Line Pipes** |  | 2026-07-05 → 2026-10-21 (+108d) |  |  |  |
| CO-R10.S03-WE-IR-130 | Trench Backfilling and Compaction Works for Main Lines of Irrigation Network-[Road 10]-[SW-3] |  |  |  |  | CO-R10.S03-WE-IR-120, CO-R10.S03-WE-IR-110 → CO-R10.S03-WE-IR-110 |
| CO-R10.S03-WE-IR-120 | Installation Works for Main Line Valves of Irrigation Network-[Road 10]-[SW-3] | 2026-07-01 A → 2026-10-20 (+111d) | 2026-07-05 A → 2026-10-21 (+108d) | 100% → 0% | none → 6d |  |
| SL | **Street Lighting Network** | 2026-10-13 → 2026-10-20 (+7d) | 2027-05-05 → 2027-02-16 (-78d) |  |  |  |
| LP | **Lighting Poles Works** | 2026-10-13 → 2026-10-20 (+7d) | 2026-11-19 → 2026-11-26 (+7d) |  |  |  |
| CO-R10.S03-WE-SL-100 | Foundation Excavation Works for Lighting Poles of Street Lighting Network-[Road 10]-[SW-3] | 2026-10-13 → 2026-10-20 (+7d) | 2026-10-26 → 2026-11-02 (+7d) |  | -176d → -182d |  |

| ID | Task | Start | Finish | Complete | Total float | Predecessors |
| --- | --- | --- | --- | --- | --- | --- |
| CO-R10.S03-WE-SL-110 | Installation Works for Lighting Poles Foundation of Street Lighting Network-[Road 10]-[SW-3] | 2026-10-19 → 2026-10-26 (+7d) | 2026-11-01 → 2026-11-08 (+7d) |  | -176d → -182d |  |
| CO-R10.S03-WE-SL-120 | Installation Works for Lighting Poles of Street Lighting Network-[Road 10]-[SW-3] | 2026-10-25 → 2026-11-01 (+7d) | 2026-11-14 → 2026-11-21 (+7d) |  | -176d → -182d |  |
| CO-R10.S03-WE-SL-130 | Installation Works for Lighting Fixtures With Drop Wire of Street Lighting Network-[Road 10]-[SW-3] | 2026-10-31 → 2026-11-07 (+7d) | 2026-11-19 → 2026-11-26 (+7d) |  | -151d → -157d |  |
| CO-R10.S03-WE-SL-210 | Backfilling Works for Lighting Poles of Street Lighting Network-[Road 10]-[SW-3] | 2026-11-01 → 2026-11-08 (+7d) | 2026-11-14 → 2026-11-21 (+7d) |  | -151d → -157d |  |
| CO-R10.S03-WE-SL-200 | Testing Works for Lighting Poles of Street Lighting Network-[Road 10]-[SW-3] | 2026-11-15 → 2026-11-22 (+7d) | 2026-11-19 → 2026-11-26 (+7d) |  | -151d → -157d |  |
| CW | **Cabling Works** | 2026-11-15 → 2026-11-22 (+7d) | 2026-12-19 → 2026-12-26 (+7d) |  |  |  |
| CO-R10.S03-WE-SL-140 | Trench Excavation and Bedding Works for Street Lighting Network-[Road 10]-[SW-3] | 2026-11-15 → 2026-11-22 (+7d) | 2026-11-25 → 2026-12-02 (+7d) |  | -176d → -182d |  |
| CO-R10.S03-WE-SL-150 | Cable Laying Works for Street Lighting Network-[Road 10]-[SW-3] | 2026-11-26 → 2026-12-03 (+7d) | 2026-12-07 → 2026-12-14 (+7d) |  | -176d → -182d |  |
| CO-R10.S03-WE-SL-160 | Trench Backfilling and Compaction Works for Street Lighting Network-[Road 10]-[SW-3] | 2026-12-08 → 2026-12-15 (+7d) | 2026-12-19 → 2026-12-26 (+7d) |  | -176d → -182d |  |
| DPB | **Distrubution Panel Boards** | 2027-04-12 → 2027-01-24 (-78d) | 2027-05-05 → 2027-02-16 (-78d) |  |  |  |
| CO-R10.S03-WE-SL-170 | Foundation Excavation Works For Panel Boards of Street Lighting Network-[Road 10]-[SW-3] | 2027-04-12 → 2027-01-24 (-78d) | 2027-04-25 → 2027-02-06 (-78d) |  | -245d → -182d |  |
| CO-R10.S03-WE-SL-180 | Installation Works for Panel Board Concrete Foundations of Street Lighting Network-[Road 10]-[SW-3] | 2027-04-19 → 2027-01-31 (-78d) | 2027-05-02 → 2027-02-13 (-78d) |  | -245d → -182d |  |
| CO-R10.S03-WE-SL-220 | A wall of concrete blocks to install the KWH meter of Street Lighting Network-[Road 10]-[SW-3] | 2027-04-19 → 2027-01-31 (-78d) | 2027-05-02 → 2027-02-13 (-78d) |  | -242d → -179d |  |
| CO-R10.S03-WE-SL-190 | Installation Works for Lighting Panel Boards of Street Lighting Network-[Road 10]-[SW-3] | 2027-04-22 → 2027-02-03 (-78d) | 2027-05-05 → 2027-02-16 (-78d) |  | -245d → -182d |  |
| TE | **Telecom Network** | 2026-12-08 → 2026-12-15 (+7d) | 2027-01-04 → 2027-01-11 (+7d) |  |  |  |
| PD | **Ducts Works** | 2026-12-08 → 2026-12-15 (+7d) | 2027-01-04 → 2027-01-11 (+7d) |  |  |  |
| CO-R10.S03-WE-TE-100 | Trench Excavation and Bedding Works for Ducts of Telecom Network-[Road 10]-[SW-3] | 2026-12-08 → 2026-12-15 (+7d) | 2026-12-10 → 2026-12-17 (+7d) |  | -148d → -152d |  |
| CO-R10.S03-WE-TE-110 | Pipes Laying Works for Ducts of Telecom Network-[Road 10]-[SW-3] | 2026-12-12 → 2026-12-19 (+7d) | 2026-12-19 → 2026-12-26 (+7d) |  | -139d → -145d |  |
| CO-R10.S03-WE-TE-120 | Pouring Plain Concrete Above Ducts of Telecom Network-[Road 10]-[SW-3] | 2026-12-20 → 2026-12-27 (+7d) | 2026-12-27 → 2027-01-03 (+7d) |  | -139d → -145d |  |
| CO-R10.S03-WE-TE-130 | Trench Backfilling and Compaction Works for Ducts of Telecom Network-[Road 10]-[SW-3] | 2026-12-28 → 2027-01-04 (+7d) | 2027-01-04 → 2027-01-11 (+7d) |  | -139d → -145d |  |
| MH | **Manholes Works** | 2026-12-12 → 2026-12-19 (+7d) | 2027-01-04 → 2027-01-11 (+7d) |  |  |  |
| CO-R10.S03-WE-TE-140 | Excavation Works for Manholes of Telecom Network-[Road 10]-[SW-3] | 2026-12-12 → 2026-12-19 (+7d) | 2026-12-19 → 2026-12-26 (+7d) |  | -148d → -152d |  |
| CO-R10.S03-WE-TE-150 | Installation Works for Manholes of Telecom Network-[Road 10]-[SW-3] | 2026-12-20 → 2026-12-27 (+7d) | 2026-12-27 → 2027-01-03 (+7d) |  | -139d → -145d |  |
| CO-R10.S03-WE-TE-160 | Backfilling Works for Manholes of Telecom Network-[Road 10]-[SW-3] | 2026-12-28 → 2027-01-04 (+7d) | 2027-01-04 → 2027-01-11 (+7d) |  | -139d → -145d |  |
| RD | **Road Works** | 2026-08-25 → 2026-08-22 (-3d) | 2027-07-11 → 2027-03-31 (-102d) |  |  |  |
| RD | **Pre-Bituminous Construction** | 2027-01-05 → 2026-08-22 (-136d) | 2027-01-28 → 2027-02-04 (+7d) |  |  |  |
| CO-R10.S03-WE-RD-100 | Capping and Subgrade Layer for Road Works-[Road 10]-[SW-3] | 2027-01-05 → 2026-08-22 A (-136d) | 2027-01-18 → 2026-12-29 (-20d) | 0% → 10% | -139d → -122d | ENG-SH-RD-A-100, CO-R10.S03-WE-SD-130, CO-R10.S03-WE-PW-130, CO-R10.S03-WE-PW-160, CO-R10.S03-WE-SL-160 SS+3d, CO-R10.S03-WE-SL-160 FF+3d, ENG-MS-RD-A-10, CO-R10.S03-WE-TE-130, CO-R10.S03-WE-TE-160, CO-R10.S03-WE-MV-120 SS+3d, CO-R10.S03-WE-MV-120 FF+3d → ENG-SH-RD-A-100, CO-R10.S03-WE-SD-130, CO-R10.S03-WE-PW-130, CO-R10.S03-WE-SL-160 FF+3d, ENG-MS-RD-A-10, CO-R10.S03-WE-MV-120 FF+3d |
| CO-R10.S03-WE-RD-110 | Aggregate Base Course Layer for Road Works-[Road 10]-[SW-3] | 2027-01-09 → 2027-01-16 (+7d) | 2027-01-28 → 2027-02-04 (+7d) |  | -87d → -75d | CO-R10.S03-WE-RD-100 SS+3d, CO-R10.S03-WE-RD-100 FF+3d, CO-R10.S03-WE-SD-170 SS+3d, CO-R10.S03-WE-SD-170 FF+3d → CO-R10.S03-WE-RD-100 SS+3d, CO-R10.S03-WE-RD-100 FF+3d, CO-R10.S03-WE-SD-170 SS+3d, CO-R10.S03-WE-SD-170 FF+3d, CO-R10.S03-WE-PW-160 FS+3d, CO-R10.S03-WE-SL-160 SS+6d, CO-R10.S03-WE-TE-130 FS+3d, CO-R10.S03-WE-TE-160 FS+3d |
| LS | **Pavement Works** |  | 2027-07-11 → 2027-03-31 (-102d) |  |  |  |
| CO-R10.S03-WE-RD-130 | Fixing of Interlock Tiles for Sidewalks Pavement-[Road 10]-[SW-3] | 2026-08-25 A → 2027-03-21 (+208d) | 2027-07-11 → 2027-03-31 (-102d) | 50% → 0% | -235d → -153d |  |
| 2 | **SW-4** |  | 2027-07-11 → 2027-04-08 (-94d) |  |  |  |
| SW_4 | **SW_4-East** |  | 2027-07-11 → 2027-04-06 (-96d) |  |  |  |
| SW | **Sewage Network** |  | 2026-10-13 → 2025-11-21 (-326d) |  |  |  |
| 1 | **Manholes** |  | 2026-10-13 → 2025-11-21 (-326d) |  |  |  |
| CO-R10.S04-ES-SW-210 | Testing Works for Main Line Manholes of Sewage Network-[Road 10]-[SW-4] | 2026-10-13 → 2025-11-06 A (-341d) | 2026-10-13 → 2025-11-21 A (-326d) | 0% → 100% | -70d → none |  |
| SD | **Storm Drainage Network** |  | 2026-10-24 → 2026-10-13 (-11d) |  |  |  |
| CO-R10.S04-ES-SD-210 | Testing Works for Manholes of Storm Drainage Network-[Road 10]-[SW-4] | 2026-10-13 A | 2026-10-13 A | 0% → 100% | -70d → none |  |
| CB | **Catch Basin Sections** |  | 2026-10-24 → 2026-10-13 (-11d) |  |  |  |
| CO-R10.S04-ES-SD-160 | Testing Works for Catch Basins of Storm Drainage Network-[Road 10]-[SW-4] | 2026-10-13 A | 2026-10-24 → 2026-10-13 A (-11d) | 0% → 100% | -13d → none |  |
| PW | **Potable Water Network** |  | 2026-11-07 → 2026-11-12 (+5d) |  |  |  |
| VC | **Valve Chamber** | 2026-06-21 → 2026-07-07 (+16d) | 2026-10-29 → 2026-07-16 (-105d) |  |  |  |
| CO-R10.S04-ES-PW-170 | Excavation Works for Main Line Valves and Valve Chambers of Potable Water Network-[Road 10]-[SW-4] | 2026-10-13 → 2026-07-07 A (-98d) | 2026-10-13 → 2026-07-16 A (-89d) | 0% → 100% | -91d → none |  |
| CO-R10.S04-ES-PW-180 | RC Footing Works for Main Line Valves and Valve Chambers of Potable Water Network-[Road 10]-[SW-4] | 2026-10-14 → 2026-07-07 A (-99d) | 2026-10-17 → 2026-07-16 A (-93d) | 0% → 100% | -84d → none |  |
| CO-R10.S04-ES-PW-190 | RC Wall Works for Main Line Valves and Valve Chambers of Potable Water Network-[Road 10]-[SW-4] | 2026-10-18 → 2026-07-07 A (-103d) | 2026-10-24 → 2026-07-16 A (-100d) | 0% → 100% | -84d → none |  |
| CO-R10.S04-ES-PW-200 | RC Slab Works for Main Line Valves and Valve Chambers of Potable Water Network-[Road 10]-[SW-4] | 2026-10-25 → 2026-07-07 A (-110d) | 2026-10-26 → 2026-07-16 A (-102d) | 0% → 100% | -84d → none |  |
| CO-R10.S04-ES-PW-210 | Insulation Works for Main Line Valves and Valve Chambers of Potable Water Network-[Road 10]-[SW-4] | 2026-06-21 A → 2026-07-07 A (+16d) | 2026-10-26 → 2026-07-16 A (-102d) | 60% → 100% | -84d → none |  |
| CO-R10.S04-ES-PW-220 | Backfilling Works for Main Line Valves and Valve Chambers of Potable Water Network-[Road 10]-[SW-4] | 2026-10-27 → 2026-07-07 A (-112d) | 2026-10-29 → 2026-07-16 A (-105d) | 0% → 100% | -84d → none |  |
| FH | **Fire Hydrant** | 2026-10-14 → 2026-10-20 (+6d) | 2026-11-07 → 2026-11-12 (+5d) |  |  |  |
| CO-R10.S04-ES-PW-140 | Excavation Works for Fire Hydrants of Potable Water Network-[Road 10]-[SW-4] | 2026-10-14 → 2026-10-20 (+6d) | 2026-10-21 → 2026-10-27 (+6d) |  | -91d → -94d |  |
| CO-R10.S04-ES-PW-150 | Installation Works for Fire Hydrant of Potable Water Network-[Road 10]-[SW-4] | 2026-10-22 → 2026-10-28 (+6d) | 2026-10-29 → 2026-11-04 (+6d) |  | -91d → -94d |  |
| CO-R10.S04-ES-PW-160 | Trench Backfilling and Compaction Works for Fire Hydrants of Potable Water Network-[Road 10]-[SW-4] | 2026-10-31 → 2026-11-05 (+5d) | 2026-11-07 → 2026-11-12 (+5d) |  | -91d → -94d |  |
| IR | **Irrigation Network** |  | 2026-06-20 → 2026-10-24 (+126d) |  |  |  |
| ML | **Main Line Pipes** |  | 2026-06-20 → 2026-10-24 (+126d) |  |  |  |
| CO-R10.S04-ES-IR-130 | Trench Backfilling and Compaction Works for Main Lines of Irrigation Network-[Road 10]-[SW-4] |  |  |  |  | CO-R10.S04-ES-IR-120, CO-R10.S04-ES-IR-110 → CO-R10.S04-ES-IR-110 |
| CO-R10.S04-ES-IR-120 | Installation Works for Main Line Valves of Irrigation Network-[Road 10]-[SW-4] | 2026-06-10 A → 2026-10-20 (+132d) | 2026-06-20 A → 2026-10-24 (+126d) | 100% → 0% | none → 4d |  |
| SL | **Street Lighting Network** | 2026-10-13 → 2026-10-20 (+7d) | 2027-03-28 → 2027-01-17 (-70d) |  |  |  |
| LP | **Lighting Poles Works** | 2026-10-13 → 2026-10-20 (+7d) | 2027-03-28 → 2026-12-16 (-102d) |  |  |  |
| CO-R10.S04-ES-SL-100 | Foundation Excavation Works for Lighting Poles of Street Lighting Network-[Road 10]-[SW-4] | 2026-10-13 → 2026-10-20 (+7d) | 2026-10-20 → 2026-10-27 (+7d) |  | -178d → -165d |  |
| CO-R10.S04-ES-SL-110 | Installation Works for Lighting Poles Foundation of Street Lighting Network-[Road 10]-[SW-4] | 2026-10-19 → 2026-10-26 (+7d) | 2026-10-26 → 2026-11-02 (+7d) |  | -178d → -165d |  |
| CO-R10.S04-ES-SL-120 | Installation Works for Lighting Poles of Street Lighting Network-[Road 10]-[SW-4] | 2026-10-25 → 2026-11-01 (+7d) | 2026-11-01 → 2026-11-08 (+7d) |  | -178d → -165d |  |
| CO-R10.S04-ES-SL-210 | Backfilling Works for Lighting Poles of Street Lighting Network-[Road 10]-[SW-4] | 2026-11-15 → 2026-11-22 (+7d) | 2026-12-01 → 2026-12-08 (+7d) |  | -175.5d → -172.5d |  |
| CO-R10.S04-ES-SL-130 | Installation Works for Lighting Fixtures With Drop Wire of Street Lighting Network-[Road 10]-[SW-4] | 2027-03-04 → 2026-11-26 (-98d) | 2027-03-28 → 2026-12-16 (-102d) |  | -171.5d → -88.5d |  |
| CO-R10.S04-ES-SL-200 | Testing Works for Lighting Poles of Street Lighting Network-[Road 10]-[SW-4] | 2026-12-02 → 2026-12-09 (+7d) | 2026-12-09 → 2026-12-16 (+7d) |  | -82.5d → -88.5d |  |
| CW | **Cabling Works** | 2026-11-02 → 2026-11-09 (+7d) | 2026-11-25 → 2026-12-02 (+7d) |  |  |  |
| CO-R10.S04-ES-SL-140 | Trench Excavation and Bedding Works for Street Lighting Network-[Road 10]-[SW-4] | 2026-11-02 → 2026-11-09 (+7d) | 2026-11-09 → 2026-11-16 (+7d) |  | -178d → -165d |  |
| CO-R10.S04-ES-SL-150 | Cable Laying Works for Street Lighting Network-[Road 10]-[SW-4] | 2026-11-10 → 2026-11-17 (+7d) | 2026-11-17 → 2026-11-24 (+7d) |  | -178d → -165d |  |
| CO-R10.S04-ES-SL-160 | Trench Backfilling and Compaction Works for Street Lighting Network-[Road 10]-[SW-4] | 2026-11-18 → 2026-11-25 (+7d) | 2026-11-25 → 2026-12-02 (+7d) |  | -178d → -165d |  |
| DPB | **Distrubution Panel Boards** | 2026-11-26 → 2026-12-03 (+7d) | 2027-01-10 → 2027-01-17 (+7d) |  |  |  |
| CO-R10.S04-ES-SL-170 | Foundation Excavation Works For Panel Boards of Street Lighting Network-[Road 10]-[SW-4] | 2026-11-26 → 2026-12-03 (+7d) | 2026-12-16 → 2026-12-23 (+7d) |  | -159d → -165d |  |
| CO-R10.S04-ES-SL-180 | Installation Works for Panel Board Concrete Foundations of Street Lighting Network-[Road 10]-[SW-4] | 2026-12-07 → 2026-12-14 (+7d) | 2026-12-20 → 2026-12-27 (+7d) |  | -150d → -156d |  |

| ID | Task | Start | Finish | Complete | Total float | Predecessors |
| --- | --- | --- | --- | --- | --- | --- |
| CO-R10.S04-ES-SL-190 | Installation Works for Lighting Panel Boards of Street Lighting Network-[Road 10]-[SW-4] | 2026-12-21 → 2026-12-28 (+7d) | 2027-01-03 → 2027-01-10 (+7d) |  | -150d → -156d |  |
| CO-R10.S04-ES-SL-220 | A wall of concrete blocks to install the KWH meter of Street Lighting Network-[Road 10]-[SW-4] | 2026-12-21 → 2026-12-28 (+7d) | 2027-01-10 → 2027-01-17 (+7d) |  | -150d → -156d |  |
| TE | **Telecom Network** | 2026-12-16 → 2026-12-23 (+7d) | 2027-01-17 → 2027-01-24 (+7d) |  |  |  |
| PD | **Ducts Works** | 2026-12-16 → 2026-12-23 (+7d) | 2027-01-17 → 2027-01-24 (+7d) |  |  |  |
| CO-R10.S04-ES-TE-100 | Trench Excavation and Bedding Works for Ducts of Telecom Network-[Road 10]-[SW-4] | 2026-12-16 → 2026-12-23 (+7d) | 2026-12-23 → 2026-12-30 (+7d) |  | -197d → -173d |  |
| CO-R10.S04-ES-TE-110 | Pipes Laying Works for Ducts of Telecom Network-[Road 10]-[SW-4] | 2026-12-24 → 2026-12-31 (+7d) | 2026-12-31 → 2027-01-07 (+7d) |  | -152d → -156d |  |
| CO-R10.S04-ES-TE-120 | Pouring Plain Concrete Above Ducts of Telecom Network-[Road 10]-[SW-4] | 2027-01-02 → 2027-01-09 (+7d) | 2027-01-09 → 2027-01-16 (+7d) |  | -152d → -156d |  |
| CO-R10.S04-ES-TE-130 | Trench Backfilling and Compaction Works for Ducts of Telecom Network-[Road 10]-[SW-4] | 2027-01-10 → 2027-01-17 (+7d) | 2027-01-17 → 2027-01-24 (+7d) |  | -152d → -156d |  |
| MH | **Manholes Works** | 2026-12-24 → 2026-12-31 (+7d) | 2027-01-17 → 2027-01-24 (+7d) |  |  |  |
| CO-R10.S04-ES-TE-140 | Excavation Works for Manholes of Telecom Network-[Road 10]-[SW-4] | 2026-12-24 → 2026-12-31 (+7d) | 2026-12-31 → 2027-01-07 (+7d) |  | -152d → -156d |  |
| CO-R10.S04-ES-TE-150 | Installation Works for Manholes of Telecom Network-[Road 10]-[SW-4] | 2027-01-02 → 2027-01-09 (+7d) | 2027-01-09 → 2027-01-16 (+7d) |  | -152d → -156d |  |
| CO-R10.S04-ES-TE-160 | Backfilling Works for Manholes of Telecom Network-[Road 10]-[SW-4] | 2027-01-10 → 2027-01-17 (+7d) | 2027-01-17 → 2027-01-24 (+7d) |  | -152d → -156d |  |
| RD | **Road Works** |  | 2027-07-11 → 2027-04-06 (-96d) |  |  |  |
| RD | **Pre-Bituminous Construction** | 2027-01-18 → 2026-09-20 (-120d) | 2027-02-06 → 2027-02-10 (+4d) |  |  |  |
| CO-R10.S04-ES-RD-100 | Capping and Subgrade Layer for Road Works-[Road 10]-[SW-4] | 2027-01-18 → 2026-09-20 A (-120d) | 2027-02-02 → 2026-12-06 (-58d) | 0% → 70% | -152d → -102d | CO-R10.S04-ES-SD-130, CO-R10.S04-ES-SW-130, CO-R10.S04-ES-PW-130, CO-R10.S04-ES-PW-160, CO-R10.S04-ES-SL-160 SS+3d, CO-R10.S04-ES-SL-160 FF+3d, PRO-R10-RD-DL-100 FF+3d, CO-R10.S04-ES-TE-130, CO-R10.S04-ES-TE-160, CO-R10.S04-ES-SW-210, CO-R10.S04-ES-PW-220, CO-R10.S04-ES-SD-210 → CO-R10.S04-ES-SD-130, CO-R10.S04-ES-SW-130, CO-R10.S04-ES-PW-130, CO-R10.S04-ES-SL-160 FF+3d, PRO-R10-RD-DL-100 FF+3d, CO-R10.S04-ES-SW-210, CO-R10.S04-ES-PW-220, CO-R10.S04-ES-SD-210 FF |
| CO-R10.S04-ES-RD-110 | Aggregate Base Course Layer for Road Works-[Road 10]-[SW-4] | 2027-01-24 → 2027-01-28 (+4d) | 2027-02-06 → 2027-02-10 (+4d) |  | -91d → -77d | CO-R10.S04-ES-RD-100 SS+3d, CO-R10.S04-ES-RD-100 FF+3d, CO-R10.S04-ES-SD-170 SS+3d, CO-R10.S04-ES-SD-170 FF+3d, PRO-R10-RD-DL-110 FF+3d, CO-R10.S04-ES-SD-160 → CO-R10.S04-ES-RD-100 SS+3d, CO-R10.S04-ES-RD-100 FF+3d, CO-R10.S04-ES-SD-170 SS+3d, CO-R10.S04-ES-SD-170 FF+3d, PRO-R10-RD-DL-110 FF+3d, CO-R10.S04-ES-SD-160, CO-R10.S04-ES-PW-160 FS+3d, CO-R10.S04-ES-SL-160 SS+6d, CO-R10.S04-ES-TE-130 FS+3d, CO-R10.S04-ES-TE-160 FS+3d |
| LS | **Pavement Works** |  | 2027-07-11 → 2027-04-06 (-96d) |  |  |  |
| CO-R10.S04-ES-RD-130 | Fixing of Interlock Tiles for Sidewalks Pavement-[Road 10]-[SW-4] | 2026-08-25 A → 2027-03-27 (+214d) | 2027-07-11 → 2027-04-06 (-96d) | 50% → 0% | -233d → -156d |  |
| SW_41 | **SW_4-West** |  | 2027-07-11 → 2027-04-08 (-94d) |  |  |  |
| SW | **Sewage Network** |  | 2026-10-13 → 2026-07-04 (-101d) |  |  |  |
| 1 | **Manholes** |  | 2026-10-13 → 2026-07-04 (-101d) |  |  |  |
| CO-R10.S04-WE-SW-210 | Testing Works for Main Line Manholes of Sewage Network-[Road 10]-[SW-4] | 2026-10-13 → 2026-06-27 A (-108d) | 2026-10-13 → 2026-07-04 A (-101d) | 0% → 100% | -68d → none |  |
| SD | **Storm Drainage Network** |  | 2026-10-20 → 2026-10-19 (-1d) |  |  |  |
| MH | **Manholes** |  | 2026-10-13 → 2026-10-14 (+1d) |  |  |  |
| CO-R10.S04-WE-SD-210 | Testing Works for Manholes of Storm Drainage Network-[Road 10]-[SW-4] | 2026-10-13 A | 2026-10-13 A | 0% → 100% | -68d → none |  |
| CO-R10.S04-WE-SD-220 | Backfilling Works for Manholes of Storm Drainage Network-[Road 10]-[SW-4] | 2025-11-12 A → 2026-10-14 A (+336d) | 2025-12-20 A → 2026-10-14 A (+298d) |  |  |  |
| CB | **Catch Basin Sections** |  | 2026-10-20 → 2026-10-19 (-1d) |  |  |  |
| CO-R10.S04-WE-SD-140 | Trench Excavation and Bedding Works for Catch Basins of Storm Drainage Network-[Road 10]-[SW-4] |  | 2026-10-14 A | 80% → 100% | -207d → none |  |
| CO-R10.S04-WE-SD-150 | Installation and Pipes Laying Connection Works for Catch Basins of Storm Drainage Network-[Road 10]-[SW-4] |  | 2026-10-14 → 2026-10-15 A (+1d) | 70% → 100% | -207d → none |  |
| CO-R10.S04-WE-SD-160 | Testing Works for Catch Basins of Storm Drainage Network-[Road 10]-[SW-4] |  | 2026-10-15 → 2026-10-17 A (+2d) | 70% → 100% | -207d → none |  |
| CO-R10.S04-WE-SD-170 | Trench Backfilling and Compaction Works for Catch Basins of Storm Drainage Network-[Road 10]-[SW-4] | 2026-10-13 A | 2026-10-20 → 2026-10-19 A (-1d) | 0% → 100% | -207d → none |  |
| PW | **Potable Water Network** |  | 2026-11-07 → 2026-11-14 (+7d) |  |  |  |
| VC | **Valve Chamber** |  | 2026-10-29 → 2026-11-05 (+7d) |  |  |  |
| CO-R10.S04-WE-PW-210 | Insulation Works for Main Line Valves and Valve Chambers of Potable Water Network-[Road 10]-[SW-4] |  | 2026-10-26 → 2026-11-02 (+7d) |  | -82d → -88d |  |
| CO-R10.S04-WE-PW-170 | Excavation Works for Main Line Valves and Valve Chambers of Potable Water Network-[Road 10]-[SW-4] | 2026-10-13 → 2026-10-20 (+7d) | 2026-10-13 → 2026-10-20 (+7d) |  | -89d → -95d |  |
| CO-R10.S04-WE-PW-180 | RC Footing Works for Main Line Valves and Valve Chambers of Potable Water Network-[Road 10]-[SW-4] | 2026-10-14 → 2026-10-21 (+7d) | 2026-10-17 → 2026-10-24 (+7d) |  | -82d → -88d |  |
| CO-R10.S04-WE-PW-190 | RC Wall Works for Main Line Valves and Valve Chambers of Potable Water Network-[Road 10]-[SW-4] | 2026-10-18 → 2026-10-25 (+7d) | 2026-10-24 → 2026-10-31 (+7d) |  | -82d → -88d |  |
| CO-R10.S04-WE-PW-200 | RC Slab Works for Main Line Valves and Valve Chambers of Potable Water Network-[Road 10]-[SW-4] | 2026-10-25 → 2026-11-01 (+7d) | 2026-10-26 → 2026-11-02 (+7d) |  | -82d → -88d |  |
| CO-R10.S04-WE-PW-220 | Backfilling Works for Main Line Valves and Valve Chambers of Potable Water Network-[Road 10]-[SW-4] | 2026-10-27 → 2026-11-03 (+7d) | 2026-10-29 → 2026-11-05 (+7d) |  | -82d → -88d |  |
| FH | **Fire Hydrant** | 2026-10-14 → 2026-10-21 (+7d) | 2026-11-07 → 2026-11-14 (+7d) |  |  |  |
| CO-R10.S04-WE-PW-140 | Excavation Works for Fire Hydrants of Potable Water Network-[Road 10]-[SW-4] | 2026-10-14 → 2026-10-21 (+7d) | 2026-10-21 → 2026-10-28 (+7d) |  | -89d → -95d |  |
| CO-R10.S04-WE-PW-150 | Installation Works for Fire Hydrant of Potable Water Network-[Road 10]-[SW-4] | 2026-10-22 → 2026-10-29 (+7d) | 2026-10-29 → 2026-11-05 (+7d) |  | -89d → -95d |  |
| CO-R10.S04-WE-PW-160 | Trench Backfilling and Compaction Works for Fire Hydrants of Potable Water Network-[Road 10]-[SW-4] | 2026-10-31 → 2026-11-07 (+7d) | 2026-11-07 → 2026-11-14 (+7d) |  | -89d → -95d |  |
| IR | **Irrigation Network** | 2026-10-21 → 2026-10-13 (-8d) | 2027-01-11 → 2026-11-14 (-58d) |  |  |  |
| ML | **Main Line Pipes** | 2026-10-21 → 2026-10-13 (-8d) | 2027-01-11 → 2026-11-14 (-58d) |  |  |  |
| CO-R10.S04-WE-IR-100 | Trench Excavation and Bedding Works for Main Lines of Irrigation Network-[Road 10]-[SW-4] | 2026-10-21 → 2026-10-13 A (-8d) | 2026-10-27 → 2026-10-26 (-1d) | 0% → 70% | -207d → -195d | CO-R10.S04-WE-EW-110, CO-R10.S04-WE-PW-130, CO-R10.S04-WE-SD-170 → CO-R10.S04-WE-EW-110, CO-R10.S04-WE-PW-130, CO-R10.S04-WE-SD-170 SS |
| CO-R10.S04-WE-IR-110 | Pipes Laying Works for Main Lines of Irrigation Network-[Road 10]-[SW-4] | 2026-10-28 → 2026-10-15 A (-13d) | 2026-11-04 → 2026-10-27 (-8d) | 0% → 70% | -207d → -195d | CO-R10.S04-WE-IR-100, PRO-R19.2-IR-DL-100 FF+3d → PRO-R19.2-IR-DL-100 FF+3d, CO-R10.S04-WE-IR-100 SS, CO-R10.S04-WE-IR-100 FF+1d |
| CO-R10.S04-WE-IR-130 | Trench Backfilling and Compaction Works for Main Lines of Irrigation Network-[Road 10]-[SW-4] | 2027-01-06 → 2026-10-17 A (-81d) | 2027-01-11 → 2026-10-28 (-75d) | 0% → 70% | -257d → -193d | CO-R10.S04-WE-IR-120, CO-R10.S04-WE-IR-110 → CO-R10.S04-WE-IR-110 SS, CO-R10.S04-WE-IR-110 FF+1d |
| CO-R10.S04-WE-IR-120 | Installation Works for Main Line Valves of Irrigation Network-[Road 10]-[SW-4] | 2027-01-03 → 2026-11-11 (-53d) | 2027-01-05 → 2026-11-14 (-52d) |  | -257d → -207d |  |
| SL | **Street Lighting Network** | 2027-01-12 → 2026-11-15 (-58d) | 2027-05-09 → 2027-03-08 (-62d) |  |  |  |
| LP | **Lighting Poles Works** | 2027-01-12 → 2026-11-15 (-58d) | 2027-03-28 → 2026-12-24 (-94d) |  |  |  |
| CO-R10.S04-WE-SL-100 | Foundation Excavation Works for Lighting Poles of Street Lighting Network-[Road 10]-[SW-4] | 2027-01-12 → 2026-11-15 (-58d) | 2027-01-23 → 2026-11-25 (-59d) |  | -257d → -207d | CO-R10.S04-WE-EW-110, CO-R10.S04-WE-EW-100, CO-R10.S04-WE-IR-130 → CO-R10.S04-WE-EW-110, CO-R10.S04-WE-EW-100, CO-R10.S04-WE-IR-130, CO-R10.S04-WE-IR-120 |
| CO-R10.S04-WE-SL-110 | Installation Works for Lighting Poles Foundation of Street Lighting Network-[Road 10]-[SW-4] | 2027-01-18 → 2026-11-21 (-58d) | 2027-01-28 → 2026-12-01 (-58d) |  | -257d → -207d |  |
| CO-R10.S04-WE-SL-120 | Installation Works for Lighting Poles of Street Lighting Network-[Road 10]-[SW-4] | 2027-01-24 → 2026-11-26 (-59d) | 2027-02-13 → 2026-12-16 (-59d) |  | -257d → -207d |  |
| CO-R10.S04-WE-SL-210 | Backfilling Works for Lighting Poles of Street Lighting Network-[Road 10]-[SW-4] | 2027-01-27 → 2026-11-30 (-58d) | 2027-02-13 → 2026-12-16 (-59d) |  | -145.5d → -95.5d |  |
| CO-R10.S04-WE-SL-130 | Installation Works for Lighting Fixtures With Drop Wire of Street Lighting Network-[Road 10]-[SW-4] | 2027-03-04 → 2026-12-05 (-89d) | 2027-03-28 → 2026-12-24 (-94d) |  | -171.5d → -95.5d |  |
| CO-R10.S04-WE-SL-200 | Testing Works for Lighting Poles of Street Lighting Network-[Road 10]-[SW-4] | 2027-02-14 → 2026-12-17 (-59d) | 2027-02-21 → 2026-12-24 (-59d) |  | -145.5d → -95.5d |  |
| CW | **Cabling Works** | 2027-02-14 → 2026-12-17 (-59d) | 2027-03-24 → 2027-01-20 (-63d) |  |  |  |
| CO-R10.S04-WE-SL-140 | Trench Excavation and Bedding Works for Street Lighting Network-[Road 10]-[SW-4] | 2027-02-14 → 2026-12-17 (-59d) | 2027-02-25 → 2026-12-28 (-59d) |  | -257d → -207d | CO-R10.S04-WE-IR-130, CO-R10.S04-WE-EW-110, CO-R10.S04-WE-SL-120, CO-R10.S04-WE-SL-110 → CO-R10.S04-WE-IR-130, CO-R10.S04-WE-EW-110, CO-R10.S04-WE-SL-120, CO-R10.S04-WE-SL-110, CO-R10.S04-WE-IR-120 |
| CO-R10.S04-WE-SL-150 | Cable Laying Works for Street Lighting Network-[Road 10]-[SW-4] | 2027-02-27 → 2026-12-29 (-60d) | 2027-03-13 → 2027-01-09 (-63d) |  | -257d → -207d |  |
| CO-R10.S04-WE-SL-160 | Trench Backfilling and Compaction Works for Street Lighting Network-[Road 10]-[SW-4] | 2027-03-14 → 2027-01-10 (-63d) | 2027-03-24 → 2027-01-20 (-63d) |  | -257d → -207d | CO-R10.S04-WE-SL-150, CO-R10.S04-WE-IR-130 → CO-R10.S04-WE-SL-150, CO-R10.S04-WE-IR-130, CO-R10.S04-WE-IR-120 |
| DPB | **Distrubution Panel Boards** | 2027-03-25 → 2027-01-21 (-63d) | 2027-05-09 → 2027-03-08 (-62d) |  |  |  |
| CO-R10.S04-WE-SL-170 | Foundation Excavation Works For Panel Boards of Street Lighting Network-[Road 10]-[SW-4] | 2027-03-25 → 2027-01-21 (-63d) | 2027-04-14 → 2027-02-10 (-63d) |  | -257d → -207d |  |
| CO-R10.S04-WE-SL-180 | Installation Works for Panel Board Concrete Foundations of Street Lighting Network-[Road 10]-[SW-4] | 2027-04-05 → 2027-02-01 (-63d) | 2027-04-18 → 2027-02-14 (-63d) |  | -248d → -198d |  |
| CO-R10.S04-WE-SL-190 | Installation Works for Lighting Panel Boards of Street Lighting Network-[Road 10]-[SW-4] | 2027-04-19 → 2027-02-15 (-63d) | 2027-05-02 → 2027-03-01 (-62d) |  | -248d → -198d |  |
| CO-R10.S04-WE-SL-220 | A wall of concrete blocks to install the KWH meter of Street Lighting Network-[Road 10]-[SW-4] | 2027-04-19 → 2027-02-15 (-63d) | 2027-05-09 → 2027-03-08 (-62d) |  | -248d → -198d |  |
| TE | **Telecom Network** | 2027-03-23 → 2027-01-19 (-63d) | 2027-04-24 → 2027-02-20 (-63d) |  |  |  |
| PD | **Ducts Works** | 2027-03-23 → 2027-01-19 (-63d) | 2027-04-24 → 2027-02-20 (-63d) |  |  |  |
| CO-R10.S04-WE-TE-100 | Trench Excavation and Bedding Works for Ducts of Telecom Network-[Road 10]-[SW-4] | 2027-03-23 → 2027-01-19 (-63d) | 2027-03-30 → 2027-01-26 (-63d) |  | -229d → -179d | CO-R10.S04-WE-IR-130 SS+3d, CO-R10.S04-WE-IR-130 FF+3d, CO-R10.S04-WE-SL-160 SS+5d, CO-R10.S04-WE-SL-160 FF+5d, CO-R10.S04-WE-EW-110, CO-R10.S03-WE-TE-100 → CO-R10.S04-WE-IR-130 SS+3d, CO-R10.S04-WE-IR-130 FF+3d, CO-R10.S04-WE-SL-160 SS+5d, CO-R10.S04-WE-SL-160 FF+5d, CO-R10.S04-WE-EW-110, CO-R10.S03-WE-TE-100, CO-R10.S04-WE-IR-120 FS+3d |
| CO-R10.S04-WE-TE-110 | Pipes Laying Works for Ducts of Telecom Network-[Road 10]-[SW-4] | 2027-03-31 → 2027-01-27 (-63d) | 2027-04-07 → 2027-02-03 (-63d) |  | -229d → -179d |  |

| ID | Task | Start | Finish | Complete | Total float | Predecessors |
| --- | --- | --- | --- | --- | --- | --- |
| CO-R10.S04-WE-TE-120 | Pouring Plain Concrete Above Ducts of Telecom Network-[Road 10]-[SW-4] | 2027-04-08 → 2027-02-04 (-63d) | 2027-04-15 → 2027-02-11 (-63d) |  | -229d → -179d |  |
| CO-R10.S04-WE-TE-130 | Trench Backfilling and Compaction Works for Ducts of Telecom Network-[Road 10]-[SW-4] | 2027-04-17 → 2027-02-13 (-63d) | 2027-04-24 → 2027-02-20 (-63d) |  | -229d → -179d |  |
| MH | **Manholes Works** | 2027-03-31 → 2027-01-27 (-63d) | 2027-04-24 → 2027-02-20 (-63d) |  |  |  |
| CO-R10.S04-WE-TE-140 | Excavation Works for Manholes of Telecom Network-[Road 10]-[SW-4] | 2027-03-31 → 2027-01-27 (-63d) | 2027-04-07 → 2027-02-03 (-63d) |  | -229d → -179d |  |
| CO-R10.S04-WE-TE-150 | Installation Works for Manholes of Telecom Network-[Road 10]-[SW-4] | 2027-04-08 → 2027-02-04 (-63d) | 2027-04-15 → 2027-02-11 (-63d) |  | -229d → -179d |  |
| CO-R10.S04-WE-TE-160 | Backfilling Works for Manholes of Telecom Network-[Road 10]-[SW-4] | 2027-04-17 → 2027-02-13 (-63d) | 2027-04-24 → 2027-02-20 (-63d) |  | -229d → -179d |  |
| RD | **Road Works** | 2026-08-25 → 2026-07-30 (-26d) | 2027-07-11 → 2027-04-08 (-94d) |  |  |  |
| RD | **Pre-Bituminous Construction** | 2027-04-25 → 2026-07-30 (-269d) | 2027-05-11 → 2027-03-14 (-58d) |  |  |  |
| CO-R10.S04-WE-RD-100 | Capping and Subgrade Layer for Road Works-[Road 10]-[SW-4] | 2027-04-25 → 2026-07-30 A (-269d) | 2027-05-08 → 2027-01-24 (-104d) | 0% → 60% | -229d → -144d | CO-R10.S04-WE-SD-130, CO-R10.S04-WE-SW-130, CO-R10.S04-WE-PW-130, CO-R10.S04-WE-PW-160, CO-R10.S04-WE-SL-160 SS+3d, CO-R10.S04-WE-SL-160 FF+3d, PRO-R10-RD-DL-100 FF+3d, CO-R10.S04-WE-TE-130, CO-R10.S04-WE-TE-160, CO-R10.S04-WE-SW-210, CO-R10.S04-WE-SD-210, CO-R10.S04-WE-PW-220 → CO-R10.S04-WE-SD-130, CO-R10.S04-WE-SW-130, CO-R10.S04-WE-PW-130, CO-R10.S04-WE-SL-160 FF+3d, PRO-R10-RD-DL-100 FF+3d, CO-R10.S04-WE-SW-210, CO-R10.S04-WE-SD-210 FF |
| CO-R10.S04-WE-RD-110 | Aggregate Base Course Layer for Road Works-[Road 10]-[SW-4] | 2027-04-28 → 2027-02-25 (-62d) | 2027-05-11 → 2027-03-14 (-58d) |  | -168d → -100d | CO-R10.S04-WE-RD-100 SS+3d, CO-R10.S04-WE-RD-100 FF+3d, CO-R10.S04-WE-SD-170 SS+3d, CO-R10.S04-WE-SD-170 FF+3d, PRO-R10-RD-DL-110 FF+3d → CO-R10.S04-WE-RD-100 SS+3d, CO-R10.S04-WE-RD-100 FF+3d, CO-R10.S04-WE-SD-170 SS+3d, CO-R10.S04-WE-SD-170 FF+3d, PRO-R10-RD-DL-110 FF+3d, CO-R10.S04-WE-PW-160 FS+3d, CO-R10.S04-WE-SL-160 SS+6d, CO-R10.S04-WE-TE-130 FS+3d, CO-R10.S04-WE-TE-160 FS+3d, CO-R10.S04-WE-PW-220 FS+3d |
| LS | **Pavement Works** |  | 2027-07-11 → 2027-04-08 (-94d) |  |  |  |
| CO-R10.S04-WE-RD-130 | Fixing of Interlock Tiles for Sidewalks Pavement-[Road 10]-[SW-4] | 2026-08-25 A → 2027-03-27 (+214d) | 2027-07-11 → 2027-04-08 (-94d) | 50% → 0% | -233d → -158d |  |
| 5 | **Road 11 Local 1 ( 670 LM )** |  | 2027-08-02 → 2027-03-29 (-126d) |  |  |  |
| SW_5 | **SW_5** |  | 2027-08-02 → 2027-01-24 (-190d) |  |  |  |
| IR | **Irrigation Network** |  | 2026-10-24 → 2026-11-03 (+10d) |  |  |  |
| ML | **Main Line Pipes** |  | 2026-10-24 → 2026-11-03 (+10d) |  |  |  |
| CO-R11.S05-IR-110 | Pipes Laying Works for Main Lines of Irrigation Network-[Road 11]-[SW-5] |  | 2026-10-13 → 2026-10-22 (+9d) |  | -46d → -55d |  |
| CO-R11.S05-IR-120 | Installation Works for Main Line Valves of Irrigation Network-[Road 11]-[SW-5] | 2026-10-13 → 2026-10-24 (+11d) | 2026-10-15 → 2026-10-26 (+11d) |  | -46d → -55d |  |
| CO-R11.S05-IR-130 | Trench Backfilling and Compaction Works for Main Lines of Irrigation Network-[Road 11]-[SW-5] | 2026-10-17 → 2026-10-27 (+10d) | 2026-10-24 → 2026-11-03 (+10d) |  | -46d → -55d |  |
| TE | **Telecom Network** |  | 2027-01-17 → 2027-01-24 (+7d) |  |  |  |
| MH | **Manholes Works** | 2026-12-24 → 2026-12-31 (+7d) | 2027-01-17 → 2027-01-24 (+7d) |  |  |  |
| CO-R11.S05-TE-140 | Excavation Works for Manholes of Telecom Network-[Road 11]-[SW-5] | 2026-12-24 → 2026-12-31 (+7d) | 2026-12-31 → 2027-01-07 (+7d) |  | -131d → -137d |  |
| CO-R11.S05-TE-150 | Installation Works for Manholes of Telecom Network-[Road 11]-[SW-5] | 2027-01-02 → 2027-01-09 (+7d) | 2027-01-09 → 2027-01-16 (+7d) |  | -124d → -130d |  |
| CO-R11.S05-TE-160 | Backfilling Works for Manholes of Telecom Network-[Road 11]-[SW-5] | 2027-01-10 → 2027-01-17 (+7d) | 2027-01-17 → 2027-01-24 (+7d) |  | -124d → -130d |  |
| RD | **Road Works** |  | 2027-08-02 → 2026-09-10 (-326d) |  |  |  |
| LS | **Pavement Works** |  | 2027-08-02 → 2026-09-10 (-326d) |  |  |  |
| CO-R11.S05-RD-P-130 | Fixing of Interlock Tiles for Sidewalks Pavement-[Road 11]-[SW-5] |  | 2027-08-02 → 2026-09-10 A (-326d) | 50% → 100% | -234d → none | CO-R11.S05-RD-P-120 SS, CO-R11.S05-RD-P-120 FF+3d, CO-R10.S03-ES-RD-130 SS, CO-R11-PW-TF-100 FF, CO-R11-PW-TF-110 FF, CO-R11-PW-TF-120 FF, CO-R11-SW-TF-100 FF, CO-R11-SW-TF-110 FF, CO-R11-SW-TF-130 FF, CO-R11-SD-TF-100, CO-R11-SL-TF-160 FF, CO-R11-SL-TF-170 FF, CO-R11-IR-TF-130 FF, CO-R11-MV-TF-160 FF, CO-R10.S03-WE-RD-130 SS → CO-R11.S05-RD-P-120 SS, CO-R11.S05-RD-P-120 FF+3d, CO-R11-SD-TF-100 |
| SW_6 | **SW_6** |  | 2027-08-02 → 2027-03-29 (-126d) |  |  |  |
| SW | **Sewage Network** |  | 2026-10-18 → 2026-07-09 (-101d) |  |  |  |
| 1 | **Manholes** |  | 2026-10-18 → 2026-07-09 (-101d) |  |  |  |
| CO-R11.S06-SW-180 | Install Grp Liner Wall Works for Main Line Manholes of Sewage Network-[Road 11]-[SW-6] |  | 2026-10-17 → 2026-07-01 A (-108d) | 50% → 100% | -57d → none |  |
| CO-R11.S06-SW-210 | Testing Works for Main Line Manholes of Sewage Network-[Road 11]-[SW-6] | 2026-10-18 → 2026-07-01 A (-109d) | 2026-10-18 → 2026-07-09 A (-101d) | 0% → 100% | -57d → none |  |
| PW | **Potable Water Network** |  | 2027-05-11 → 2027-01-12 (-119d) |  |  |  |
| VC | **Valve Chamber** | 2026-10-13 → 2026-10-20 (+7d) | 2026-10-19 → 2026-10-26 (+7d) |  |  |  |
| CO-R11.S06-PW-210 | Installation Works for Main Line Valves and Valve Chambers of Potable Water Network-[Road 11]-[SW-6] | 2026-10-13 → 2026-10-20 (+7d) | 2026-10-19 → 2026-10-26 (+7d) |  | -42d → -48d |  |
| FH | **Fire Hydrant** | 2027-04-18 → 2026-12-20 (-119d) | 2027-05-11 → 2027-01-12 (-119d) |  |  |  |
| CO-R11.S06-PW-140 | Excavation Works for Fire Hydrants of Potable Water Network-[Road 11]-[SW-6] | 2027-04-18 → 2026-12-20 (-119d) | 2027-04-25 → 2026-12-27 (-119d) |  | -213d → -115d |  |
| CO-R11.S06-PW-150 | Installation Works for Fire Hydrant of Potable Water Network-[Road 11]-[SW-6] | 2027-04-26 → 2026-12-28 (-119d) | 2027-05-03 → 2027-01-04 (-119d) |  | -213d → -115d |  |
| CO-R11.S06-PW-160 | Trench Backfilling and Compaction Works for Fire Hydrants of Potable Water Network-[Road 11]-[SW-6] | 2027-05-04 → 2027-01-05 (-119d) | 2027-05-11 → 2027-01-12 (-119d) |  | -213d → -115d |  |
| SL | **Street Lighting Network** |  | 2027-07-03 → 2027-03-29 (-96d) |  |  |  |
| LP | **Lighting Poles Works** |  | 2027-07-03 → 2027-01-14 (-170d) |  |  |  |
| CO-R11.S06-SL-210 | Backfilling Works for Lighting Poles of Street Lighting Network-[Road 11]-[SW-6] | 2026-10-13 → 2026-10-20 (+7d) | 2026-10-29 → 2026-11-05 (+7d) |  | -36.5d → -42.5d |  |
| CO-R11.S06-SL-200 | Testing Works for Lighting Poles of Street Lighting Network-[Road 11]-[SW-6] | 2026-10-31 → 2026-11-07 (+7d) | 2026-11-07 → 2026-11-14 (+7d) |  | -36.5d → -42.5d |  |
| CO-R11.S06-SL-130 | Installation Works for Lighting Fixtures With Drop Wire of Street Lighting Network-[Road 11]-[SW-6] | 2027-06-13 → 2026-12-26 (-169d) | 2027-07-03 → 2027-01-14 (-170d) |  | -231.5d → -95.5d |  |
| CW | **Cabling Works** |  | 2026-10-24 → 2026-10-31 (+7d) |  |  |  |
| CO-R11.S06-SL-160 | Trench Backfilling and Compaction Works for Street Lighting Network-[Road 11]-[SW-6] | 2026-10-13 → 2026-10-20 (+7d) | 2026-10-24 → 2026-10-31 (+7d) |  | -72d → -78d |  |
| DPB | **Distrubution Panel Boards** | 2027-04-15 → 2027-02-11 (-63d) | 2027-06-01 → 2027-03-29 (-64d) |  |  |  |
| CO-R11.S06-SL-170 | Foundation Excavation Works For Panel Boards of Street Lighting Network-[Road 11]-[SW-6] | 2027-04-15 → 2027-02-11 (-63d) | 2027-04-28 → 2027-02-25 (-62d) |  | -257d → -207d |  |
| CO-R11.S06-SL-180 | Installation Works for Panel Board Concrete Foundations of Street Lighting Network-[Road 11]-[SW-6] | 2027-04-29 → 2027-02-27 (-61d) | 2027-05-12 → 2027-03-15 (-58d) |  | -257d → -207d |  |
| CO-R11.S06-SL-190 | Installation Works for Lighting Panel Boards of Street Lighting Network-[Road 11]-[SW-6] | 2027-05-13 → 2027-03-16 (-58d) | 2027-06-01 → 2027-03-29 (-64d) |  | -257d → -207d |  |
| CO-R11.S06-SL-220 | A wall of concrete blocks to install the KWH meter of Street Lighting Network-[Road 11]-[SW-6] | 2027-05-13 → 2027-03-16 (-58d) | 2027-06-01 → 2027-03-29 (-64d) |  | -251d → -201d |  |
| TE | **Telecom Network** |  | 2027-05-02 → 2027-03-01 (-62d) |  |  |  |
| MH | **Manholes Works** | 2027-04-08 → 2027-02-04 (-63d) | 2027-05-02 → 2027-03-01 (-62d) |  |  |  |
| CO-R11.S06-TE-140 | Excavation Works for Manholes of Telecom Network-[Road 11]-[SW-6] | 2027-04-08 → 2027-02-04 (-63d) | 2027-04-15 → 2027-02-11 (-63d) |  | -210d → -160d |  |
| CO-R11.S06-TE-150 | Installation Works for Manholes of Telecom Network-[Road 11]-[SW-6] | 2027-04-17 → 2027-02-13 (-63d) | 2027-04-24 → 2027-02-20 (-63d) |  | -210d → -160d |  |
| CO-R11.S06-TE-160 | Backfilling Works for Manholes of Telecom Network-[Road 11]-[SW-6] | 2027-04-25 → 2027-02-21 (-63d) | 2027-05-02 → 2027-03-01 (-62d) |  | -210d → -160d |  |
| RD | **Road Works** |  | 2027-08-02 → 2026-09-10 (-326d) |  |  |  |
| LS | **Pavement Works** |  | 2027-08-02 → 2026-09-10 (-326d) |  |  |  |
| CO-R11.S06-RD-P-130 | Fixing of Interlock Tiles for Sidewalks Pavement-[Road 11]-[SW-6] |  | 2027-08-02 → 2026-09-10 A (-326d) | 50% → 100% | -232d → none | PRO-R11-RD-DL-120 FF+3d, CO-R11.S06-RD-P-120 SS+3d, CO-R11.S06-RD-P-120 FF+3d, CO-R10.S04-ES-RD-130 SS, CO-R11-PW-TF-100 FF, CO-R11-PW-TF-110 FF, CO-R11-PW-TF-120 FF, CO-R11-SW-TF-100 FF, CO-R11-SW-TF-110 FF, CO-R11-SW-TF-130 FF, CO-R11-SD-TF-100, CO-R11-SD-TF-120 SS, CO-R11-SL-TF-160 FF, CO-R11-SL-TF-170 FF, CO-R11-IR-TF-130 FF, CO-R11-MV-TF-160 FF, CO-R10.S04-WE-RD-130 SS → PRO-R11-RD-DL-120 FF+3d, CO-R11.S06-RD-P-120 SS+3d, CO-R11.S06-RD-P-120 FF+3d, CO-R11-SD-TF-100, CO-R11-SD-TF-120 SS |
| 6 | **Road 14 Local 1 ( 584 LM )** |  | 2027-08-16 → 2027-05-03 (-105d) |  |  |  |
| SW_7 | **SW_7** |  | 2027-08-16 → 2027-05-03 (-105d) |  |  |  |
| SW | **Sewage Network** |  | 2026-10-13 → 2026-10-20 (+7d) |  |  |  |
| 1 | **Manholes** |  | 2026-10-13 → 2026-10-20 (+7d) |  |  |  |
| CO-R14.S07-SW-210 | Testing Works for Main Line Manholes of Sewage Network-[Road 14]-[SW-7] | 2026-10-13 → 2026-10-20 (+7d) | 2026-10-13 → 2026-10-20 (+7d) |  | -29d → -35d |  |
| IR | **Irrigation Network** |  | 2025-12-07 → 2026-10-27 (+324d) |  |  |  |
| ML | **Main Line Pipes** |  | 2025-12-07 → 2026-10-27 (+324d) |  |  |  |
| CO-R14.S07-IR-130 | Trench Backfilling and Compaction Works for Main Lines of Irrigation Network-[Road 14]-[SW-7] |  |  |  |  | CO-R14.S07-IR-120, CO-R14.S07-IR-110 → CO-R14.S07-IR-110 |
| CO-R14.S07-IR-120 | Installation Works for Main Line Valves of Irrigation Network-[Road 14]-[SW-7] | 2025-12-01 A → 2026-10-20 (+323d) | 2025-12-07 A → 2026-10-27 (+324d) | 100% → 0% | none → 1d |  |
| SL | **Street Lighting Network** |  | 2026-11-09 → 2026-11-16 (+7d) |  |  |  |
| LP | **Lighting Poles Works** |  | 2026-11-02 → 2026-11-09 (+7d) |  |  |  |

| ID | Task | Start | Finish | Complete | Total float | Predecessors |
| --- | --- | --- | --- | --- | --- | --- |
| CO-R14.S07-SL-130 | Installation Works for Lighting Fixtures With Drop Wire of Street Lighting Network-[Road 14]-[SW-7] | 2026-10-13 → 2026-10-20 (+7d) | 2026-11-02 → 2026-11-09 (+7d) |  | -63d → -69d |  |
| CO-R14.S07-SL-200 | Testing Works for Lighting Poles of Street Lighting Network-[Road 14]-[SW-7] | 2026-10-13 → 2026-10-20 (+7d) | 2026-10-18 → 2026-10-25 (+7d) |  | -50d → -56d |  |
| DPB | **Distrubution Panel Boards** | 2026-10-13 → 2026-10-20 (+7d) | 2026-11-09 → 2026-11-16 (+7d) |  |  |  |
| CO-R14.S07-SL-170 | Foundation Excavation Works For Panel Boards of Street Lighting Network-[Road 14]-[SW-7] | 2026-10-13 → 2026-10-20 (+7d) | 2026-11-02 → 2026-11-09 (+7d) |  | -73d → -79d |  |
| CO-R14.S07-SL-180 | Installation Works for Panel Board Concrete Foundations of Street Lighting Network-[Road 14]-[SW-7] | 2026-10-17 → 2026-10-24 (+7d) | 2026-11-05 → 2026-11-12 (+7d) |  | -73d → -79d |  |
| CO-R14.S07-SL-220 | A wall of concrete blocks to install the KWH meter of Street Lighting Network-[Road 14]-[SW-7] | 2026-10-17 → 2026-10-24 (+7d) | 2026-11-05 → 2026-11-12 (+7d) |  | -70d → -76d |  |
| CO-R14.S07-SL-190 | Installation Works for Lighting Panel Boards of Street Lighting Network-[Road 14]-[SW-7] | 2026-10-20 → 2026-10-27 (+7d) | 2026-11-09 → 2026-11-16 (+7d) |  | -73d → -79d |  |
| TE | **Telecom Network** | 2027-01-14 → 2027-01-06 (-8d) | 2027-02-10 → 2027-02-02 (-8d) |  |  |  |
| PD | **Ducts Works** | 2027-01-14 → 2027-01-06 (-8d) | 2027-02-10 → 2027-02-02 (-8d) |  |  |  |
| CO-R14.S07-TE-100 | Trench Excavation and Bedding Works for Ducts of Telecom Network-[Road 14]-[SW-7] | 2027-01-14 → 2027-01-06 (-8d) | 2027-01-17 → 2027-01-09 (-8d) |  | -145d → -138d |  |
| CO-R14.S07-TE-110 | Pipes Laying Works for Ducts of Telecom Network-[Road 14]-[SW-7] | 2027-01-18 → 2027-01-10 (-8d) | 2027-01-25 → 2027-01-17 (-8d) |  | -138d → -131d |  |
| CO-R14.S07-TE-120 | Pouring Plain Concrete Above Ducts of Telecom Network-[Road 14]-[SW-7] | 2027-01-26 → 2027-01-18 (-8d) | 2027-02-02 → 2027-01-25 (-8d) |  | -138d → -131d |  |
| CO-R14.S07-TE-130 | Trench Backfilling and Compaction Works for Ducts of Telecom Network-[Road 14]-[SW-7] | 2027-02-03 → 2027-01-26 (-8d) | 2027-02-10 → 2027-02-02 (-8d) |  | -138d → -131d |  |
| MH | **Manholes Works** | 2027-01-18 → 2027-01-10 (-8d) | 2027-02-10 → 2027-02-02 (-8d) |  |  |  |
| CO-R14.S07-TE-140 | Excavation Works for Manholes of Telecom Network-[Road 14]-[SW-7] | 2027-01-18 → 2027-01-10 (-8d) | 2027-01-25 → 2027-01-17 (-8d) |  | -145d → -138d |  |
| CO-R14.S07-TE-150 | Installation Works for Manholes of Telecom Network-[Road 14]-[SW-7] | 2027-01-26 → 2027-01-18 (-8d) | 2027-02-02 → 2027-01-25 (-8d) |  | -138d → -131d |  |
| CO-R14.S07-TE-160 | Backfilling Works for Manholes of Telecom Network-[Road 14]-[SW-7] | 2027-02-03 → 2027-01-26 (-8d) | 2027-02-10 → 2027-02-02 (-8d) |  | -138d → -131d |  |
| RD | **Road Works** |  | 2027-08-16 → 2027-05-03 (-105d) |  |  |  |
| RD | **Pre-Bituminous Construction** |  | 2027-02-24 → 2026-09-09 (-168d) |  |  |  |
| CO-R14.S07-RD-P-110 | Aggregate Base Course Layer for Road Works-[Road 14]-[SW-7] | 2027-02-03 → 2026-09-05 A (-151d) | 2027-02-24 → 2026-09-09 A (-168d) | 0% → 100% | -91d → none | CO-R14.S07-RD-P-100 SS+3d, CO-R14.S07-RD-P-100 FF+3d, CO-R14.S07-SD-170 SS+3d, CO-R14.S07-SD-170 FF+3d, CO-R11.S05-RD-P-110, CO-R10.S03-WE-RD-110, CO-R10.S03-ES-RD-110 → CO-R14.S07-RD-P-100 SS+3d, CO-R14.S07-RD-P-100 FF+3d, CO-R14.S07-SD-170 SS+3d, CO-R14.S07-SD-170 FF+3d, CO-R11.S05-RD-P-110 |
| LS | **Pavement Works** |  | 2027-08-16 → 2027-05-03 (-105d) |  |  |  |
| CO-R14.S07-RD-P-130 | Fixing of Interlock Tiles for Sidewalks Pavement-[Road 14]-[SW-7] | 2026-08-25 A → 2027-04-20 (+238d) | 2027-08-16 → 2027-05-03 (-105d) | 50% → 0% | -244d → -159d | CO-R14.S07-RD-P-120 SS, CO-R14.S07-RD-P-120 FF+3d, CO-R11.S05-RD-P-130 SS, CO-R14-PW-TF-100 FF, CO-R14-PW-TF-110 FF, CO-R14-PW-TF-120 FF, CO-R14-SW-TF-100 FF, CO-R14-SW-TF-110 FF, CO-R14-SW-TF-130 FF, CO-R11-SL-TF-180 FF, CO-R11-SL-TF-190 FF, CO-R11-IR-TF-140 FF, CO-R11-MV-TF-180 FF → CO-R14.S07-RD-P-120 SS, CO-R14.S07-RD-P-120 FF+3d, CO-R11.S05-RD-P-130 SS, CO-R14-PW-TF-100 FF, CO-R14-PW-TF-110 FF, CO-R14-PW-TF-120 FF, CO-R14-SW-TF-100 FF, CO-R14-SW-TF-110 FF, CO-R14-SW-TF-130 FF, CO-R11-SL-TF-180 FF, CO-R11-SL-TF-190 FF, CO-R11-IR-TF-140 FF, CO-R11-MV-TF-180 FF, CO-R11-SW-TF-100 FF, CO-R14.S08-SW-210 FF |
| SW_8 | **SW_8** |  | 2027-08-16 → 2027-05-03 (-105d) |  |  |  |
| SW | **Sewage Network** |  | 2026-10-13 → 2026-10-20 (+7d) |  |  |  |
| 1 | **Manholes** |  | 2026-10-13 → 2026-10-20 (+7d) |  |  |  |
| CO-R14.S08-SW-210 | Testing Works for Main Line Manholes of Sewage Network-[Road 14]-[SW-8] | 2026-10-13 → 2026-10-20 (+7d) | 2026-10-13 → 2026-10-20 (+7d) |  | -41d → -35d |  |
| PW | **Potable Water Network** |  | 2026-11-05 → 2026-11-12 (+7d) |  |  |  |
| FH | **Fire Hydrant** | 2026-10-13 → 2026-10-20 (+7d) | 2026-11-05 → 2026-11-12 (+7d) |  |  |  |
| CO-R14.S08-PW-140 | Excavation Works for Fire Hydrants of Potable Water Network-[Road 14]-[SW-8] | 2026-10-13 → 2026-10-20 (+7d) | 2026-10-20 → 2026-10-27 (+7d) |  | -12d → 5d |  |
| CO-R14.S08-PW-150 | Installation Works for Fire Hydrant of Potable Water Network-[Road 14]-[SW-8] | 2026-10-21 → 2026-10-28 (+7d) | 2026-10-28 → 2026-11-04 (+7d) |  | -12d → 5d |  |
| CO-R14.S08-PW-160 | Trench Backfilling and Compaction Works for Fire Hydrants of Potable Water Network-[Road 14]-[SW-8] | 2026-10-29 → 2026-11-05 (+7d) | 2026-11-05 → 2026-11-12 (+7d) |  | -12d → 5d |  |
| SL | **Street Lighting Network** |  | 2027-07-24 → 2027-04-19 (-96d) |  |  |  |
| LP | **Lighting Poles Works** |  | 2027-07-24 → 2027-02-04 (-170d) |  |  |  |
| CO-R14.S08-SL-200 | Testing Works for Lighting Poles of Street Lighting Network-[Road 14]-[SW-8] | 2026-10-13 → 2026-10-20 (+7d) | 2026-10-20 → 2026-10-27 (+7d) |  | -4d → -10d |  |
| CO-R14.S08-SL-850 | Installation Works for Lighting Fixtures With Drop Wire of Street Lighting Network-[Road 14]-[SW-8] | 2027-07-04 → 2027-01-16 (-169d) | 2027-07-24 → 2027-02-04 (-170d) |  | -231.5d → -95.5d |  |
| DPB | **Distrubution Panel Boards** | 2027-04-29 → 2027-02-27 (-61d) | 2027-06-22 → 2027-04-19 (-64d) |  |  |  |
| CO-R14.S08-SL-DB-640 | Foundation Excavation Works For Panel Boards of Street Lighting Network-[Road 14]-[SW-8] | 2027-04-29 → 2027-02-27 (-61d) | 2027-05-25 → 2027-03-22 (-64d) |  | -243d → -193d |  |
| CO-R14.S08-SL-220 | A wall of concrete blocks to install the KWH meter of Street Lighting Network-[Road 14]-[SW-8] | 2027-05-13 → 2027-03-16 (-58d) | 2027-06-16 → 2027-04-13 (-64d) |  | -252d → -202d |  |
| CO-R14.S08-SL-DB-650 | Installation Works for Panel Board Concrete Foundations of Street Lighting Network-[Road 14]-[SW-8] | 2027-05-13 → 2027-03-16 (-58d) | 2027-06-08 → 2027-04-05 (-64d) |  | -252d → -202d |  |
| CO-R14.S08-SL-DB-660 | Installation Works for Lighting Panel Boards of Street Lighting Network-[Road 14]-[SW-8] | 2027-06-02 → 2027-03-30 (-64d) | 2027-06-22 → 2027-04-19 (-64d) |  | -257d → -207d |  |
| TE | **Telecom Network** | 2027-01-18 → 2027-01-10 (-8d) | 2027-05-10 → 2027-03-13 (-58d) |  |  |  |
| PD | **Ducts Works** | 2027-01-18 → 2027-01-10 (-8d) | 2027-02-14 → 2027-02-06 (-8d) |  |  |  |
| CO-R14.S08-TE-100 | Trench Excavation and Bedding Works for Ducts of Telecom Network-[Road 14]-[SW-8] | 2027-01-18 → 2027-01-10 (-8d) | 2027-01-20 → 2027-01-12 (-8d) |  | -141d → -134d |  |
| CO-R14.S08-TE-110 | Pipes Laying Works for Ducts of Telecom Network-[Road 14]-[SW-8] | 2027-01-21 → 2027-01-13 (-8d) | 2027-01-28 → 2027-01-20 (-8d) |  | -141d → -134d |  |
| CO-R14.S08-TE-120 | Pouring Plain Concrete Above Ducts of Telecom Network-[Road 14]-[SW-8] | 2027-01-30 → 2027-01-21 (-9d) | 2027-02-06 → 2027-01-28 (-9d) |  | -141d → -134d |  |
| CO-R14.S08-TE-130 | Trench Backfilling and Compaction Works for Ducts of Telecom Network-[Road 14]-[SW-8] | 2027-02-07 → 2027-01-30 (-8d) | 2027-02-14 → 2027-02-06 (-8d) |  | -141d → -134d |  |
| MH | **Manholes Works** | 2027-04-17 → 2027-02-13 (-63d) | 2027-05-10 → 2027-03-13 (-58d) |  |  |  |
| CO-R14.S08-TE-140 | Excavation Works for Manholes of Telecom Network-[Road 14]-[SW-8] | 2027-04-17 → 2027-02-13 (-63d) | 2027-04-24 → 2027-02-20 (-63d) |  | -210d → -160d |  |
| CO-R14.S08-TE-150 | Installation Works for Manholes of Telecom Network-[Road 14]-[SW-8] | 2027-04-25 → 2027-02-21 (-63d) | 2027-05-02 → 2027-03-01 (-62d) |  | -210d → -160d |  |
| CO-R14.S08-TE-160 | Backfilling Works for Manholes of Telecom Network-[Road 14]-[SW-8] | 2027-05-03 → 2027-03-02 (-62d) | 2027-05-10 → 2027-03-13 (-58d) |  | -210d → -160d |  |
| RD | **Road Works** |  | 2027-08-16 → 2027-05-03 (-105d) |  |  |  |
| RD | **Pre-Bituminous Construction** |  | 2027-06-07 → 2026-09-09 (-271d) |  |  |  |
| CO-R14.S08-RD-P-110 | Aggregate Base Course Layer for Road Works-[Road 14]-[SW-8] | 2027-05-12 → 2026-09-05 A (-249d) | 2027-06-07 → 2026-09-09 A (-271d) | 0% → 100% | -168d → none | CO-R14.S08-RD-P-100 SS+3d, CO-R14.S08-RD-P-100 FF+3d, CO-R14.S08-SD-170 SS+3d, CO-R14.S08-SD-170 FF+3d, CO-R11.S06-RD-P-110, PRO-R14-RD-DL-110 FF+3d, CO-R14.S08-PW-160, CO-R10.S04-WE-RD-110, CO-R10.S04-ES-RD-110 → CO-R14.S08-RD-P-100 SS+3d, CO-R14.S08-RD-P-100 FF+3d, CO-R14.S08-SD-170 SS+3d, CO-R14.S08-SD-170 FF+3d, CO-R11.S06-RD-P-110, PRO-R14-RD-DL-110 FF+3d |
| LS | **Pavement Works** |  | 2027-08-16 → 2027-05-03 (-105d) |  |  |  |
| CO-R14.S08-RD-P-130 | Fixing of Interlock Tiles for Sidewalks Pavement-[Road 14]-[SW-8] | 2026-08-25 A → 2027-04-20 (+238d) | 2027-08-16 → 2027-05-03 (-105d) | 50% → 0% | -242d → -157d | PRO-R14-RD-DL-120 FF+3d, CO-R14.S08-RD-P-120 SS, CO-R14.S08-RD-P-120 FF+3d, CO-R11.S06-RD-P-130 SS, CO-R14-PW-TF-100 FF, CO-R14-PW-TF-110 FF, CO-R14-PW-TF-120 FF, CO-R14-SW-TF-100 FF, CO-R14-SW-TF-110 FF, CO-R14-SW-TF-130 FF, CO-R14-SD-TF-120, CO-R11-SL-TF-180 FF, CO-R11-SL-TF-190 FF, CO-R11-IR-TF-140 FF, CO-R11-MV-TF-180 FF → PRO-R14-RD-DL-120 FF+3d, CO-R14.S08-RD-P-120 SS, CO-R14.S08-RD-P-120 FF+3d, CO-R11.S06-RD-P-130 SS, CO-R14-PW-TF-100 FF, CO-R14-PW-TF-110 FF, CO-R14-PW-TF-120 FF, CO-R14-SW-TF-100 FF, CO-R14-SW-TF-110 FF, CO-R14-SW-TF-130 FF, CO-R14-SD-TF-120, CO-R11-SL-TF-180 FF, CO-R11-SL-TF-190 FF, CO-R11-IR-TF-140 FF, CO-R11-MV-TF-180 FF, CO-R11-SW-TF-100 FF, CO-R14.S08-SW-210 FF |
| 7 | **Road 15 Local 1 ( 556 LM )** |  | 2027-09-01 → 2026-11-22 (-283d) |  |  |  |
| SW_9 | **SW_9** |  | 2027-09-01 → 2026-10-27 (-309d) |  |  |  |
| IR | **Irrigation Network** |  | 2026-07-13 → 2026-10-27 (+106d) |  |  |  |
| ML | **Main Line Pipes** |  | 2026-07-13 → 2026-10-27 (+106d) |  |  |  |
| CO-R15.S09-IR-130 | Trench Backfilling and Compaction Works for Main Lines of Irrigation Network-[Road 15]-[SW-9] |  |  |  |  | CO-R15.S09-IR-120, CO-R15.S09-IR-110 → CO-R15.S09-IR-110 |
| CO-R15.S09-IR-120 | Installation Works for Main Line Valves of Irrigation Network-[Road 15]-[SW-9] | 2026-07-11 A → 2026-10-20 (+101d) | 2026-07-13 A → 2026-10-27 (+106d) | 100% → 0% | none → 1d |  |
| RD | **Road Works** |  | 2027-09-01 → 2026-10-12 (-324d) |  |  |  |
| LS | **Pavement Works** |  | 2027-09-01 → 2026-10-12 (-324d) |  |  |  |
| CO-R15.S09-RD-P-130 | Fixing of Interlock Tiles for Sidewalks Pavement-[Road 15]-[SW-9] |  | 2027-09-01 → 2026-10-12 A (-324d) | 90% → 100% | -233d → none | CO-R15.S09-RD-P-120 SS, CO-R15.S09-RD-P-120 FF+3d, CO-R14.S07-RD-P-130 SS, CO-R15-PW-TF-100 FF, CO-R15-PW-TF-110 FF, CO-R15-PW-TF-120 FF, CO-R15-SW-TF-100 FF, CO-R15-SW-TF-110 FF, CO-R15-SW-TF-130 FF, CO-R15-SD-TF-100, CO-R15-SL-TF-200 FF, CO-R15-SL-TF-210 FF, CO-R15-IR-TF-150 FF, CO-R15-MV-TF-200 FF → CO-R15.S09-RD-P-120 SS, CO-R15.S09-RD-P-120 FF+3d, CO-R15-SD-TF-100 |
| SW_10 | **SW_10** |  | 2027-09-01 → 2026-11-22 (-283d) |  |  |  |
| SW | **Sewage Network** |  | 2026-10-13 → 2026-07-07 (-98d) |  |  |  |
| 1 | **Manholes** |  | 2026-10-13 → 2026-07-07 (-98d) |  |  |  |
| CO-R15.S10-SW-210 | Testing Works for Main Line Manholes of Sewage Network-[Road 15]-[SW-10] | 2026-10-13 → 2025-07-09 A (-461d) | 2026-10-13 → 2025-07-12 A (-458d) | 0% → 100% | -27d → none |  |
| SL | **Street Lighting Network** |  | 2027-02-21 → 2026-11-22 (-91d) |  |  |  |
| LP | **Lighting Poles Works** |  | 2027-02-21 → 2026-11-22 (-91d) |  |  |  |

| ID | Task | Start | Finish | Complete | Total float | Predecessors |
| --- | --- | --- | --- | --- | --- | --- |
| CO-R15.S10-SL-200 | Testing Works for Lighting Poles of Street Lighting Network-[Road 15]-[SW-10] | 2026-10-13 → 2026-10-20 (+7d) | 2026-10-18 → 2026-10-25 (+7d) |  | -123d → -129d |  |
| CO-R15.S10-SL-130 | Installation Works for Lighting Fixtures With Drop Wire of Street Lighting Network-[Road 15]-[SW-10] | 2027-02-01 → 2026-11-02 (-91d) | 2027-02-21 → 2026-11-22 (-91d) |  | -231d → -153d |  |
| DPB | **Distrubution Panel Boards** | 2026-10-13 → 2026-10-20 (+7d) | 2026-11-09 → 2026-11-16 (+7d) |  |  |  |
| CO-R15.S10-SL-170 | Foundation Excavation Works For Panel Boards of Street Lighting Network-[Road 15]-[SW-10] | 2026-10-13 → 2026-10-20 (+7d) | 2026-11-02 → 2026-11-09 (+7d) |  | -59d → -65d |  |
| CO-R15.S10-SL-180 | Installation Works for Panel Board Concrete Foundations of Street Lighting Network-[Road 15]-[SW-10] | 2026-10-17 → 2026-10-24 (+7d) | 2026-11-05 → 2026-11-12 (+7d) |  | -59d → -65d |  |
| CO-R15.S10-SL-220 | A wall of concrete blocks to install the KWH meter of Street Lighting Network-[Road 15]-[SW-10] | 2026-10-17 → 2026-10-24 (+7d) | 2026-11-05 → 2026-11-12 (+7d) |  | -56d → -62d |  |
| CO-R15.S10-SL-190 | Installation Works for Lighting Panel Boards of Street Lighting Network-[Road 15]-[SW-10] | 2026-10-20 → 2026-10-27 (+7d) | 2026-11-09 → 2026-11-16 (+7d) |  | -59d → -65d |  |
| PW | **Potable Water Network** |  | 2026-11-03 → 2026-11-09 (+6d) |  |  |  |
| CO-R15.S10-PW-130 | Trench Backfilling and Compaction Works for Main Lines of Potable Water Network-[Road 15]-[SW-10] |  |  |  |  | CO-R15.S10-PW-110, CO-R14.S08-PW-130 SS, CO-R15.S10-PW-210 FF → CO-R15.S10-PW-110, CO-R14.S08-PW-130 SS |
| VC | **Valve Chamber** | 2026-07-09 → 2026-10-20 (+103d) | 2026-07-12 → 2026-10-26 (+106d) |  |  |  |
| CO-R15.S10-PW-210 | Installation Works for Main Line Valves and Valve Chambers of Potable Water Network-[Road 15]-[SW-10] | 2026-07-09 A → 2026-10-20 (+103d) | 2026-07-12 A → 2026-10-26 (+106d) | 100% → 0% | none → 20d |  |
| FH | **Fire Hydrant** | 2026-10-14 → 2026-10-20 (+6d) | 2026-11-03 → 2026-11-09 (+6d) |  |  |  |
| CO-R15.S10-PW-140 | Excavation Works for Fire Hydrants of Potable Water Network-[Road 15]-[SW-10] | 2026-10-14 → 2026-10-20 (+6d) | 2026-10-20 → 2026-10-26 (+6d) |  | -27d → -32d |  |
| CO-R15.S10-PW-150 | Installation Works for Fire Hydrant of Potable Water Network-[Road 15]-[SW-10] | 2026-10-21 → 2026-10-27 (+6d) | 2026-10-27 → 2026-11-02 (+6d) |  | -27d → -32d |  |
| CO-R15.S10-PW-160 | Trench Backfilling and Compaction Works for Fire Hydrants of Potable Water Network-[Road 15]-[SW-10] | 2026-10-28 → 2026-11-03 (+6d) | 2026-11-03 → 2026-11-09 (+6d) |  | -27d → -32d |  |
| RD | **Road Works** |  | 2027-09-01 → 2026-10-12 (-324d) |  |  |  |
| LS | **Pavement Works** |  | 2027-09-01 → 2026-10-12 (-324d) |  |  |  |
| CO-R15.S10-RD-P-130 | Fixing of Interlock Tiles for Sidewalks Pavement-[Road 15]-[SW-10] |  | 2027-09-01 → 2026-10-12 A (-324d) | 50% → 100% | -232d → none | CO-R15.S10-RD-P-120 SS, CO-R15.S10-RD-P-120 FF+3d, CO-R14.S08-RD-P-130 SS, PRO-R15-RD-DL-120 FF+3d, CO-R15-PW-TF-100 FF, CO-R15-PW-TF-110 FF, CO-R15-PW-TF-120 FF, CO-R15-SW-TF-100 FF, CO-R15-SW-TF-110 FF, CO-R15-SW-TF-130 FF, CO-R15-SD-TF-100, CO-R15-SD-TF-120, CO-R15-SL-TF-200 FF, CO-R15-SL-TF-210 FF, CO-R15-IR-TF-150 FF, CO-R15-MV-TF-200 FF → CO-R15.S10-RD-P-120 SS, CO-R15.S10-RD-P-120 FF+3d, PRO-R15-RD-DL-120 FF+3d, CO-R15-SD-TF-100, CO-R15-SD-TF-120 |
| 8 | **Road 16 Local 1 ( 527 LM )** |  | 2027-09-15 → 2026-11-16 (-303d) |  |  |  |
| SW_13 | **SW_11** |  | 2027-09-15 → 2026-10-27 (-323d) |  |  |  |
| IR | **Irrigation Network** |  | 2026-07-13 → 2026-10-27 (+106d) |  |  |  |
| ML | **Main Line Pipes** |  | 2026-07-13 → 2026-10-27 (+106d) |  |  |  |
| CO-R16.S11-IR-130 | Trench Backfilling and Compaction Works for Main Lines of Irrigation Network-[Road 16]-[SW-11] |  |  |  |  | CO-R16.S11-IR-120, CO-R16.S11-IR-110 → CO-R16.S11-IR-110 |
| CO-R16.S11-IR-120 | Installation Works for Main Line Valves of Irrigation Network-[Road 16]-[SW-11] | 2026-07-09 A → 2026-10-20 (+103d) | 2026-07-13 A → 2026-10-27 (+106d) | 100% → 0% | none → 1d |  |
| RD | **Road Works** |  | 2027-09-15 → 2026-10-12 (-338d) |  |  |  |
| LS | **Pavement Works** |  | 2027-09-15 → 2026-10-12 (-338d) |  |  |  |
| CO-R16.S11-RD-P-130 | Fixing of Interlock Tiles for Sidewalks Pavement-[Road 16]-[SW-11] |  | 2027-09-15 → 2026-10-12 A (-338d) | 90% → 100% | -235d → none | CO-R16.S11-RD-P-120 SS, CO-R16.S11-RD-P-120 FF+3d, CO-R15.S09-RD-P-130 SS, CO-R16-PW-TF-100 FF, CO-R16-PW-TF-110 FF, CO-R16-PW-TF-120 FF, CO-R16-SW-TF-100 FF, CO-R16-SW-TF-110 FF, CO-R16-SW-TF-130 FF, CO-R16-SD-TF-100 FF, CO-R16-SL-TF-220 FF, CO-R16-SL-TF-230 FF, CO-R16-IR-TF-160 FF, CO-R16-MV-TF-220 FF → CO-R16.S11-RD-P-120 SS, CO-R16.S11-RD-P-120 FF+3d, CO-R15.S09-RD-P-130 SS |
| SW_14 | **SW_12** |  | 2027-09-15 → 2026-11-16 (-303d) |  |  |  |
| PW | **Potable Water Network** |  | 2026-11-10 → 2026-11-16 (+6d) |  |  |  |
| CO-R16.S12-PW-130 | Trench Backfilling and Compaction Works for Main Lines of Potable Water Network-[Road 16]-[SW-12] |  |  |  |  | CO-R16.S12-PW-110, CO-R15.S10-PW-130, CO-R16.S12-PW-210 FF → CO-R16.S12-PW-110, CO-R15.S10-PW-130 |
| VC | **Valve Chamber** | 2026-07-09 → 2026-10-20 (+103d) | 2026-07-12 → 2026-10-26 (+106d) |  |  |  |
| CO-R16.S12-PW-210 | Installation Works for Main Line Valves and Valve Chambers of Potable Water Network-[Road 16]-[SW-12] | 2026-07-09 A → 2026-10-20 (+103d) | 2026-07-12 A → 2026-10-26 (+106d) | 100% → 0% | none → 20d |  |
| FH | **Fire Hydrant** | 2026-10-13 → 2026-10-20 (+7d) | 2026-11-10 → 2026-11-16 (+6d) |  |  |  |
| CO-R16.S12-PW-140 | Excavation Works for Fire Hydrants of Potable Water Network-[Road 16]-[SW-12] | 2026-10-13 → 2026-10-20 (+7d) | 2026-10-19 → 2026-10-26 (+7d) |  | -20d → -26d |  |
| CO-R16.S12-PW-150 | Installation Works for Fire Hydrant of Potable Water Network-[Road 16]-[SW-12] | 2026-10-28 → 2026-11-03 (+6d) | 2026-11-03 → 2026-11-09 (+6d) |  | -27d → -32d |  |
| CO-R16.S12-PW-160 | Trench Backfilling and Compaction Works for Fire Hydrants of Potable Water Network-[Road 16]-[SW-12] | 2026-11-04 → 2026-11-10 (+6d) | 2026-11-10 → 2026-11-16 (+6d) |  | -27d → -32d |  |
| RD | **Road Works** |  | 2027-09-15 → 2026-10-12 (-338d) |  |  |  |
| LS | **Pavement Works** |  | 2027-09-15 → 2026-10-12 (-338d) |  |  |  |
| CO-R16.S12-RD-P-130 | Fixing of Interlock Tiles for Sidewalks Pavement-[Road 16]-[SW-12] |  | 2027-09-15 → 2026-10-12 A (-338d) | 90% → 100% | -232d → none | CO-R16.S12-RD-P-120 SS, CO-R16.S12-RD-P-120 FF+3d, CO-R15.S10-RD-P-130 SS, PRO-R16-RD-DL-120 FF+3d, CO-R16-PW-TF-100 FF, CO-R16-PW-TF-110 FF, CO-R16-PW-TF-120 FF, CO-R16-SW-TF-100 FF, CO-R16-SW-TF-110 FF, CO-R16-SW-TF-130 FF, CO-R16-SD-TF-100 FF, CO-R16-SD-TF-120, CO-R16-SL-TF-220 FF, CO-R16-SL-TF-230 FF, CO-R16-IR-TF-160 FF, CO-R16-MV-TF-220 FF → CO-R16.S12-RD-P-120 SS, CO-R16.S12-RD-P-120 FF+3d, CO-R15.S10-RD-P-130 SS, PRO-R16-RD-DL-120 FF+3d, CO-R16-SD-TF-120 |
| 9 | **Road 17 Local 1 ( 500 LM )** |  | 2026-12-22 → 2026-11-23 (-29d) |  |  |  |
| SW_15 | **SW_13** |  | 2026-09-19 → 2026-10-27 (+38d) |  |  |  |
| IR | **Irrigation Network** |  | 2026-07-12 → 2026-10-27 (+107d) |  |  |  |
| ML | **Main Line Pipes** |  | 2026-07-12 → 2026-10-27 (+107d) |  |  |  |
| CO-R17.S13-IR-130 | Trench Backfilling and Compaction Works for Main Lines of Irrigation Network-[Road 17]-[SW-13] |  |  |  |  | CO-R17.S13-IR-120, CO-R17.S13-IR-110 → CO-R17.S13-IR-110 |
| CO-R17.S13-IR-120 | Installation Works for Main Line Valves of Irrigation Network-[Road 17]-[SW-13] | 2026-07-09 A → 2026-10-20 (+103d) | 2026-07-12 A → 2026-10-27 (+107d) | 100% → 0% | none → 1d |  |
| CO-R17.S13-RD-P-130 | Fixing of Interlock Tiles for Sidewalks Pavement-[Road 17]-[SW-13] | 2026-08-25 A → 2026-09-12 A (+18d) |  |  |  |  |
| SW_16 | **SW_14** |  | 2026-12-22 → 2026-11-23 (-29d) |  |  |  |
| SW | **Sewage Network** |  | 2026-10-13 → 2025-07-05 (-465d) |  |  |  |
| 1 | **Manholes** |  | 2026-10-13 → 2025-06-28 (-472d) |  |  |  |
| CO-R17.S14-SW-210 | Testing Works for Main Line Manholes of Sewage Network-[Road 17]-[SW-14] | 2026-10-13 → 2025-06-22 A (-478d) | 2026-10-13 → 2025-06-28 A (-472d) | 0% → 100% | -15d → none |  |
| SL | **Street Lighting Network** |  | 2026-12-22 → 2026-11-22 (-30d) |  |  |  |
| LP | **Lighting Poles Works** |  | 2026-12-22 → 2026-11-22 (-30d) |  |  |  |
| CO-R17.S14-SL-200 | Testing Works for Lighting Poles of Street Lighting Network-[Road 17]-[SW-14] | 2026-10-13 → 2026-10-20 (+7d) | 2026-10-18 → 2026-10-25 (+7d) |  | -38d → -44d |  |
| CO-R17.S14-SL-130 | Installation Works for Lighting Fixtures With Drop Wire of Street Lighting Network-[Road 17]-[SW-14] | 2026-12-02 → 2026-11-02 (-30d) | 2026-12-22 → 2026-11-22 (-30d) |  | -94d → -68d |  |
| DPB | **Distrubution Panel Boards** | 2026-10-13 → 2026-10-20 (+7d) | 2026-11-09 → 2026-11-16 (+7d) |  |  |  |
| CO-R17.S14-SL-170 | Foundation Excavation Works For Panel Boards of Street Lighting Network-[Road 17]-[SW-14] | 2026-10-13 → 2026-10-20 (+7d) | 2026-11-02 → 2026-11-09 (+7d) |  | -35d → -41d |  |
| CO-R17.S14-SL-180 | Installation Works for Panel Board Concrete Foundations of Street Lighting Network-[Road 17]-[SW-14] | 2026-10-17 → 2026-10-24 (+7d) | 2026-11-05 → 2026-11-12 (+7d) |  | -35d → -41d |  |
| CO-R17.S14-SL-220 | A wall of concrete blocks to install the KWH meter of Street Lighting Network-[Road 17]-[SW-14] | 2026-10-17 → 2026-10-24 (+7d) | 2026-11-05 → 2026-11-12 (+7d) |  | -32d → -38d |  |
| CO-R17.S14-SL-190 | Installation Works for Lighting Panel Boards of Street Lighting Network-[Road 17]-[SW-14] | 2026-10-20 → 2026-10-27 (+7d) | 2026-11-09 → 2026-11-16 (+7d) |  | -35d → -41d |  |
| PW | **Potable Water Network** |  | 2026-11-17 → 2026-11-23 (+6d) |  |  |  |
| CO-R17.S14-PW-130 | Trench Backfilling and Compaction Works for Main Lines of Potable Water Network-[Road 17]-[SW-14] |  |  |  |  | CO-R17.S14-PW-110 SS+3d, CO-R17.S14-PW-110 FF+3d, CO-R16.S12-PW-130, CO-R17.S14-PW-210 FF → CO-R17.S14-PW-110 SS+3d, CO-R17.S14-PW-110 FF+3d, CO-R16.S12-PW-130 |
| VC | **Valve Chamber** | 2026-07-07 → 2026-10-20 (+105d) | 2026-07-13 → 2026-10-26 (+105d) |  |  |  |
| CO-R17.S14-PW-210 | Installation Works for Main Line Valves and Valve Chambers of Potable Water Network-[Road 17]-[SW-14] | 2026-07-07 A → 2026-10-20 (+105d) | 2026-07-13 A → 2026-10-26 (+105d) | 100% → 0% | none → 20d |  |
| FH | **Fire Hydrant** | 2026-10-14 → 2026-10-20 (+6d) | 2026-11-17 → 2026-11-23 (+6d) |  |  |  |
| CO-R17.S14-PW-140 | Excavation Works for Fire Hydrants of Potable Water Network-[Road 17]-[SW-14] | 2026-10-14 → 2026-10-20 (+6d) | 2026-10-20 → 2026-10-26 (+6d) |  | -15d → -20d |  |
| CO-R17.S14-PW-150 | Installation Works for Fire Hydrant of Potable Water Network-[Road 17]-[SW-14] | 2026-11-04 → 2026-11-10 (+6d) | 2026-11-10 → 2026-11-16 (+6d) |  | -27d → -32d |  |
| CO-R17.S14-PW-160 | Trench Backfilling and Compaction Works for Fire Hydrants of Potable Water Network-[Road 17]-[SW-14] | 2026-11-11 → 2026-11-17 (+6d) | 2026-11-17 → 2026-11-23 (+6d) |  | -27d → -32d |  |
| TE | **Telecom Network** |  | 2026-11-05 → 2026-11-12 (+7d) |  |  |  |
| MH | **Manholes Works** | 2026-10-13 → 2026-10-20 (+7d) | 2026-11-05 → 2026-11-12 (+7d) |  |  |  |
| CO-R17.S14-TE-140 | Excavation Works for Manholes of Telecom Network-[Road 17]-[SW-14] | 2026-10-13 → 2026-10-20 (+7d) | 2026-10-20 → 2026-10-27 (+7d) |  | -55d → -61d |  |

| ID | Task | Start | Finish | Complete | Total float | Predecessors |
| --- | --- | --- | --- | --- | --- | --- |
| CO-R17.S14-TE-150 | Installation Works for Manholes of Telecom Network-[Road 17]-[SW-14] | 2026-10-21 → 2026-10-28 (+7d) | 2026-10-28 → 2026-11-04 (+7d) |  | -55d → -61d |  |
| CO-R17.S14-TE-160 | Backfilling Works for Manholes of Telecom Network-[Road 17]-[SW-14] | 2026-10-29 → 2026-11-05 (+7d) | 2026-11-05 → 2026-11-12 (+7d) |  | -55d → -61d |  |
| CO-R17.S14-RD-P-130 | Fixing of Interlock Tiles for Sidewalks Pavement-[Road 17]-[SW-14] | 2026-08-25 A → 2026-09-05 A (+11d) |  |  |  |  |
| SW_15 | **SW_15** |  | 2026-09-20 → 2026-10-27 (+37d) |  |  |  |
| IR | **Irrigation Network** |  | 2026-07-13 → 2026-10-27 (+106d) |  |  |  |
| ML | **Main Line Pipes** |  | 2026-07-13 → 2026-10-27 (+106d) |  |  |  |
| CO-R18.S15-IR-170 | Trench Backfilling and Compaction Works for Main Lines of Irrigation Network-[Road 18]-[SW-15] |  |  |  |  | CO-R18.S15-IR-160, CO-R18.S15-IR-150 → CO-R18.S15-IR-150 |
| CO-R18.S15-IR-160 | Installation Works for Main Line Valves of Irrigation Network-[Road 18]-[SW-15] | 2026-07-11 A → 2026-10-20 (+101d) | 2026-07-13 A → 2026-10-27 (+106d) | 100% → 0% | none → 1d |  |
| CO-R18.S15-RD-P-150 | Fixing of Interlock Tiles for Sidewalks Pavement-[Road 18]-[SW-15] | 2026-08-25 A → 2026-09-02 A (+8d) |  |  |  |  |
| CO-R18.S16-SL-200 | Testing Works for Lighting Poles of Street Lighting Network-[Road 18]-[SW-16] | 2026-10-13 → 2026-10-20 (+7d) | 2026-10-18 → 2026-10-25 (+7d) |  | -14.25d → -20.25d |  |
| DPB | **Distrubution Panel Boards** | 2026-10-13 → 2026-10-20 (+7d) | 2026-11-09 → 2026-11-16 (+7d) |  |  |  |
| CO-R18.S16-SL-170 | Foundation Excavation Works For Panel Boards of Street Lighting Network-[Road 18]-[SW-16] | 2026-10-13 → 2026-10-20 (+7d) | 2026-11-02 → 2026-11-09 (+7d) |  | -35d → -41d |  |
| CO-R18.S16-SL-180 | Installation Works for Panel Board Concrete Foundations of Street Lighting Network-[Road 18]-[SW-16] | 2026-10-17 → 2026-10-24 (+7d) | 2026-11-05 → 2026-11-12 (+7d) |  | -35d → -41d |  |
| CO-R18.S16-SL-220 | A wall of concrete blocks to install the KWH meter of Street Lighting Network-[Road 18]-[SW-16] | 2026-10-17 → 2026-10-24 (+7d) | 2026-11-05 → 2026-11-12 (+7d) |  | -32d → -38d |  |
| CO-R18.S16-SL-190 | Installation Works for Lighting Panel Boards of Street Lighting Network-[Road 18]-[SW-16] | 2026-10-20 → 2026-10-27 (+7d) | 2026-11-09 → 2026-11-16 (+7d) |  | -35d → -41d |  |
| PW | **Potable Water Network** |  | 2026-11-02 → 2026-11-09 (+7d) |  |  |  |
| CO-R18.S16-PW-280 | Trench Backfilling and Compaction Works for Main Lines of Potable Water Network-[Road 18]-[SW-16] |  |  |  |  | CO-R18.S16-PW-240 SS+3d, CO-R18.S16-PW-240 FF+3d, CO-R18.S16-PW-330 FF → CO-R18.S16-PW-240 SS+3d, CO-R18.S16-PW-240 FF+3d |
| VC | **Valve Chamber** | 2026-07-07 → 2026-10-20 (+105d) | 2026-07-13 → 2026-10-26 (+105d) |  |  |  |
| CO-R18.S16-PW-330 | Installation Works for Main Line Valves and Valve Chambers of Potable Water Network-[Road 18]-[SW-16] | 2026-07-07 A → 2026-10-20 (+105d) | 2026-07-13 A → 2026-10-26 (+105d) | 100% → 0% | none → 20d |  |
| FH | **Fire Hydrant** | 2026-10-13 → 2026-10-20 (+7d) | 2026-11-02 → 2026-11-09 (+7d) |  |  |  |
| CO-R18.S16-PW-250 | Excavation Works for Fire Hydrants of Potable Water Network-[Road 18]-[SW-16] | 2026-10-13 → 2026-10-20 (+7d) | 2026-10-19 → 2026-10-26 (+7d) |  | 48d → 42d |  |
| CO-R18.S16-PW-260 | Installation Works for Fire Hydrant of Potable Water Network-[Road 18]-[SW-16] | 2026-10-20 → 2026-10-27 (+7d) | 2026-10-26 → 2026-11-02 (+7d) |  | 48d → 42d |  |
| CO-R18.S16-PW-270 | Trench Backfilling and Compaction Works for Fire Hydrants of Potable Water Network-[Road 18]-[SW-16] | 2026-10-27 → 2026-11-03 (+7d) | 2026-11-02 → 2026-11-09 (+7d) |  | 48d → 42d |  |
| RD | **Road Works** |  | 2026-09-06 → 2026-09-01 (-5d) |  |  |  |
| LS | **Pavement Works** |  | 2026-09-06 → 2026-09-01 (-5d) |  |  |  |
| CO-R18.S16-RD-P-150 | Fixing of Interlock Tiles for Sidewalks Pavement-[Road 18]-[SW-16] |  | 2026-09-06 A → 2026-09-01 A (-5d) |  |  |  |
| 3 | **Finishes for Infrastructure Networks** |  | 2027-12-06 → 2027-08-17 (-111d) |  |  |  |
| 1 | **Phase 2 Block "J"** |  | 2027-12-06 → 2027-08-17 (-111d) |  |  |  |
| 2 | **Road 09 Local 2 ( 2278 LM )** |  | 2027-11-10 → 2027-07-31 (-102d) |  |  |  |
| 10 | **Sewage Network** |  | 2027-06-28 → 2027-03-14 (-106d) |  |  |  |
| TF | **Testing and Finishes** |  | 2027-06-28 → 2027-03-14 (-106d) |  |  |  |
| CO-R09-SW-TF-100 | Final Testing For Main Line of Sewage Network-[Road 09] |  | 2027-06-10 → 2027-02-20 (-110d) |  | -259d → -173d | CO-R09.S01-SW-130, CO-R09.S01-RD-P-100 FF+3d, CO-R09.S02-RD-P-100 FF+3d → CO-R09.S01-SW-130, CO-R09.S01-RD-P-100 FF+3d, CO-R09.S02-RD-P-100 FF+3d, CO-R09.S02-PW-160 FF+3d, CO-R09.S02-TE-130 FF+3d, CO-R09.S02-TE-160 FF+3d |
| CO-R09-SW-TF-110 | Install Manhole Cover Works for External Finishes of Sewage Network-[Road 09] | 2027-06-12 → 2027-02-21 (-111d) | 2027-06-24 → 2027-03-07 (-109d) |  | -220d → -135d |  |
| CO-R09-SW-TF-120 | Main Manhole Internal Finishes (Benching + Insulation) of Sewage Network-[Road 09] | 2027-06-15 → 2027-02-25 (-110d) | 2027-06-28 → 2027-03-14 (-106d) |  | -220d → -135d |  |
| 11 | **Storm Drainage Network** | 2026-06-17 → 2027-02-03 (+231d) | 2027-06-29 → 2027-03-07 (-114d) |  |  |  |
| TF | **Testing and Finishes** | 2026-06-17 → 2027-02-03 (+231d) | 2027-06-29 → 2027-03-07 (-114d) |  |  |  |
| CO-R09-SD-TF-110 | Install Catch Basin Cover Works for External Finishes of Storm Drainage Network-[Road 09] | 2026-06-20 A → 2027-02-03 (+228d) | 2027-04-01 → 2027-02-21 (-39d) | 20% → 0% | -146d → -93d |  |
| CO-R09-SD-TF-100 | Testing Work for Pipes of Storm Drainage Network-[Road 09] | 2026-06-17 A → 2027-02-07 (+235d) | 2027-06-12 → 2027-02-20 (-112d) | 75% → 0% | -259d → -173d | CO-R09.S01-SD-130 SS+3d, PRO-SD-1DL-140 FF, PRO-R09-SD-DL-140 FF+3d, CO-R09.S01-RD-P-100 SS+3d, CO-R09.S01-RD-P-100 FF+3d, CO-R09.S01-SD-130 FF+3d, CO-R09.S01-SD-120 SS, CO-R09.S01-SD-120, ENG-SH-SD-ML-A-110, ENG-MS-SD-ML-A-110, CO-R09.S02-RD-P-100 FF+3d → CO-R09.S01-SD-130 SS+3d, PRO-SD-1DL-140 FF, PRO-R09-SD-DL-140 FF+3d, CO-R09.S01-RD-P-100 SS+3d, CO-R09.S01-RD-P-100 FF+3d, CO-R09.S01-SD-130 FF+3d, CO-R09.S01-SD-120 SS, CO-R09.S01-SD-120, ENG-SH-SD-ML-A-110, ENG-MS-SD-ML-A-110, CO-R09.S02-RD-P-100 FF+3d, CO-R09.S02-PW-160 FF+3d, CO-R09.S02-TE-130 FF+3d, CO-R09.S02-TE-160 FF+3d |
| CO-R09-SD-TF-120 | Main Manhole Internal Finishes (Benching + Insulation ) for Storm Drainage Network-[Road 09] | 2026-06-21 A → 2027-02-16 (+240d) | 2027-06-29 → 2027-03-07 (-114d) | 85% → 0% | -217d → -72d | CO-R09-SD-TF-100 SS+3d, CO-R09-SD-TF-100 FF+3d, PRO-R09-SD-DL-160 FF+3d, PRO-SD-1DL-160 FF, CO-R09-SD-TF-100 SS, CO-R09-SD-TF-110 SS, CO-R09-SD-TF-110 FF, CO-R09-SW-TF-110 FF, ENG-SH-RD-A-100, ENG-SH-RD-A-100 FF, ENG-MS-RD-A-10, ENG-MS-RD-A-10 FF, PRO-R09-SD-DL-100 → CO-R09-SD-TF-100 SS+3d, CO-R09-SD-TF-100 FF+3d, PRO-R09-SD-DL-160 FF+3d, PRO-SD-1DL-160 FF, CO-R09-SD-TF-110 SS, CO-R09-SD-TF-110 FF, CO-R09-SW-TF-110 FF, ENG-SH-RD-A-100, ENG-SH-RD-A-100 FF, ENG-MS-RD-A-10, ENG-MS-RD-A-10 FF, PRO-R09-SD-DL-100 |
| CO-R09-SD-TF-130 | Catch Basin Internal Finishes (Benching + Insulation ) for Storm Drainage Network-[Road 09] | 2026-06-22 A → 2027-02-16 (+239d) | 2027-06-29 → 2027-03-07 (-114d) | 20% → 0% | -178d → -88d | CO-R09-SD-TF-110 SS+3d, CO-R09-SD-TF-110 FF+3d, PRO-R09-SD-DL-160 FF+3d, PRO-SD-1DL-160 FF, CO-R09-SD-TF-100 SS, CO-R09-SD-TF-100 FF, CO-R09-SD-TF-110 SS, CO-R09-SW-TF-110 FF, ENG-SH-RD-A-100, ENG-SH-RD-A-100 FF, ENG-MS-RD-A-10, ENG-MS-RD-A-10 FF → CO-R09-SD-TF-110 SS+3d, CO-R09-SD-TF-110 FF+3d, PRO-R09-SD-DL-160 FF+3d, PRO-SD-1DL-160 FF, CO-R09-SD-TF-100 SS, CO-R09-SD-TF-100 FF, CO-R09-SW-TF-110 FF, ENG-SH-RD-A-100, ENG-SH-RD-A-100 FF, ENG-MS-RD-A-10, ENG-MS-RD-A-10 FF |
| 9 | **Potable Water Network** | 2027-06-17 → 2027-02-21 (-116d) | 2027-07-25 → 2027-04-04 (-112d) |  |  |  |
| TF | **Testing and Finishes** | 2027-06-17 → 2027-02-21 (-116d) | 2027-07-25 → 2027-04-04 (-112d) |  |  |  |
| CO-R09-PW-TF-110 | Testing Work for Main Line of Potable Water Network-[Road 09] | 2027-06-17 → 2027-02-21 (-116d) | 2027-06-27 → 2027-03-03 (-116d) |  | -264d → -173d |  |
| CO-R09-PW-TF-100 | Final Finishes works and Covers for Valves and Valve Chambers of Potable Water Network-[Road 09] | 2027-06-28 → 2027-03-04 (-116d) | 2027-07-11 → 2027-03-21 (-112d) |  | -243d → -153d |  |
| CO-R09-PW-TF-120 | Fire Hydrant Finishies (S.Box + Safety + Marker Post ) of Potable Water Network-[Road 09] | 2027-07-12 → 2027-03-22 (-112d) | 2027-07-25 → 2027-04-04 (-112d) |  | -243d → -153d |  |
| 13 | **Irrigation Network** | 2027-06-08 → 2027-02-17 (-111d) | 2027-06-26 → 2027-03-08 (-110d) |  |  |  |
| TF | **Testing and Finishes** | 2027-06-08 → 2027-02-17 (-111d) | 2027-06-26 → 2027-03-08 (-110d) |  |  |  |
| CO-R09-IR-TF-100 | Final Testing (pressure tests) of Irrigation Network-[Road 09] | 2027-06-08 → 2027-02-17 (-111d) | 2027-06-26 → 2027-03-08 (-110d) |  | -218d → -133d | CO-R09.S01-IR-140, CO-R09.S01-RD-P-100, CO-R09.S02-RD-P-100 → CO-R09.S01-IR-140, CO-R09.S01-RD-P-100, CO-R09.S02-RD-P-100, CO-R09.S01-IR-120, CO-R09.S02-PW-160, CO-R09.S02-SL-160 SS+3d, CO-R09.S02-TE-130, CO-R09.S02-TE-160 |
| 12 | **Street Lighting Network** | 2027-06-03 → 2027-02-02 (-121d) | 2027-09-11 → 2027-05-23 (-111d) |  |  |  |
| TR | **Termination and Testing Works** | 2027-06-03 → 2027-02-02 (-121d) | 2027-09-08 → 2027-05-20 (-111d) |  |  |  |
| CO-R09-SL-TF-100 | Termination Works For Lighting Poles Cables of Street Lighting Network-[Road 09] | 2027-06-03 → 2027-02-02 (-121d) | 2027-06-16 → 2027-02-15 (-121d) |  | -283.5d → -189.5d |  |
| CO-R09-SL-TF-110 | Termination Works For Panel Board Cables of Street Lighting Network-[Road 09] | 2027-08-16 → 2027-04-21 (-117d) | 2027-08-28 → 2027-05-03 (-117d) |  | -283.5d → -189.5d |  |
| CO-R09-SL-TF-380 | Testing Works For Panel Board Cables of Street Lighting Network-[Road 09] | 2027-08-28 → 2027-05-03 (-117d) | 2027-09-08 → 2027-05-20 (-111d) |  | -273.5d → -178.5d |  |
| ES | **Earthing System Works** | 2027-06-17 → 2027-02-16 (-121d) | 2027-09-11 → 2027-05-23 (-111d) |  |  |  |
| CO-R09-SL-ES-100 | Install Earthing System Works for Lighting Poles of Street Lighting Network-[Road 09] | 2027-06-17 → 2027-02-16 (-121d) | 2027-06-30 → 2027-03-02 (-120d) |  | -283.5d → -189.5d |  |
| CO-R09-SL-ES-110 | Install Earthing System Works for Lighting Panel Boards of Street Lighting Network-[Road 09] | 2027-08-28 → 2027-05-03 (-117d) | 2027-09-11 → 2027-05-23 (-111d) |  | -283.5d → -189.5d |  |
| 14 | **Medium Voltage Network** | 2027-02-10 → 2027-02-14 (+4d) | 2027-03-01 → 2027-03-04 (+3d) |  |  |  |
| TT | **Termination and Testing Works** | 2027-02-10 → 2027-02-14 (+4d) | 2027-03-01 → 2027-03-04 (+3d) |  |  |  |
| CO-R09-MV-TF-100 | Termination Works of Medium Voltage Network-[Road 09] | 2027-02-10 → 2027-02-14 (+4d) | 2027-03-01 → 2027-03-04 (+3d) |  | -126d → -130d |  |
| 1 | **Road Works** | 2027-09-11 → 2027-05-23 (-111d) | 2027-11-10 → 2027-07-31 (-102d) |  |  |  |
| 1 | **Bituminous Construction** | 2027-09-11 → 2027-05-23 (-111d) | 2027-10-06 → 2027-06-26 (-102d) |  |  |  |
| CO-R09-S1-RD-F-100 | Application of Prime Coat Layer for Road Works - S.W 01-[Road 09] | 2027-09-11 → 2027-05-23 (-111d) | 2027-09-26 → 2027-06-06 (-112d) |  | -283.5d → -188.5d |  |
| CO-R09-S1-RD-F-120 | Bituminous Base & Wearing Courses Layers for Road Works- S.W 01-[Road 09] | 2027-09-14 → 2027-05-26 (-111d) | 2027-09-29 → 2027-06-09 (-112d) |  | -283.5d → -188.5d |  |
| CO-R09-S2-RD-F-110 | Application of Prime Coat Layer for Road Works- S.W 02-[Road 09] | 2027-09-11 → 2027-06-01 (-102d) | 2027-10-03 → 2027-06-22 (-103d) |  | -276.5d → -189.5d | PRO-R09-RD-DL-160 FF+3d, CO-R09.S02-RD-P-130, CO-R09-S1-RD-F-100 SS → PRO-R09-RD-DL-160 FF+3d, CO-R09.S02-RD-P-130 |
| CO-R09-S2-RD-F-130 | Bituminous Base & Wearing Courses Layers for Road Works- S.W 02-[Road 09] | 2027-09-14 → 2027-06-05 (-101d) | 2027-10-06 → 2027-06-26 (-102d) |  | -276.5d → -189.5d | CO-R09-S2-RD-F-110 SS+3d, CO-R09-S2-RD-F-110 FF+3d, PRO-R09-RD-DL-170 FF+3d, CO-R09-S1-RD-F-120 SS → CO-R09-S2-RD-F-110 SS+3d, CO-R09-S2-RD-F-110 FF+3d, PRO-R09-RD-DL-170 FF+3d |
| TS | **Traffic Signs Boards and Roads Marking** | 2027-09-29 → 2027-06-09 (-112d) | 2027-11-10 → 2027-07-31 (-102d) |  |  |  |
| CO-R09-S1-RD-F-140 | Application of Road Marking Works For Road Works- S.W 01-[Road 09] | 2027-09-29 → 2027-06-09 (-112d) | 2027-10-13 → 2027-06-23 (-112d) |  | -283.5d → -188.5d |  |
| CO-R09-S1-RD-F-150 | Installation Works of Traffic Signs Boards For Road Works- S.W 01-[Road 09] | 2027-10-13 → 2027-06-23 (-112d) | 2027-10-27 → 2027-07-07 (-112d) |  | -283.5d → -188.5d |  |
| CO-R09-S2-RD-F-160 | Application of Road Marking Works For Road Works- S.W 02-[Road 09] | 2027-10-06 → 2027-06-26 (-102d) | 2027-10-24 → 2027-07-13 (-103d) |  | -276.5d → -189.5d | PRO-R09-RD-DL-150 FF+3d, CO-R09-S2-RD-F-130 → PRO-R09-RD-DL-150 FF+3d, CO-R09-S2-RD-F-130, CO-R09-S1-RD-F-140 SS+2d |
| CO-R09-S2-RD-F-170 | Installation Works of Traffic Signs Boards For Road Works- S.W 02-[Road 09] | 2027-10-24 → 2027-07-13 (-103d) | 2027-11-10 → 2027-07-31 (-102d) |  | -276.5d → -189.5d | PRO-R09-RD-DL-140 FF+6d, CO-R09.S02-RD-P-130, CO-R09-S2-RD-F-160, CO-R09.S02-RD-P-110 → PRO-R09-RD-DL-140 FF+6d, CO-R09.S02-RD-P-130, CO-R09-S2-RD-F-160, CO-R09.S02-RD-P-110, CO-R09-S1-RD-F-150 SS+2d |

| ID | Task | Start | Finish | Total float | Predecessors |
| --- | --- | --- | --- | --- | --- |
| 4 | **Road 10 Local 2 ( 2352 LM )** |  | 2027-08-09 → 2027-05-08 (-93d) |  |  |
| 10 | **Sewage Network** | 2027-04-28 → 2027-02-25 (-62d) | 2027-06-03 → 2027-03-31 (-64d) |  |  |
| TF | **Testing and Finishes** | 2027-04-28 → 2027-02-25 (-62d) | 2027-06-03 → 2027-03-31 (-64d) |  |  |
| CO-R10-SW-TF-100 | Final Testing For Main Line of Sewage Network-[Road 10] | 2027-04-28 → 2027-02-25 (-62d) | 2027-05-11 → 2027-03-14 (-58d) | -229d → -179d | CO-R10.S03-ES-RD-100 SS+3d, CO-R10.S03-ES-RD-100 FF+3d, CO-R10.S04-ES-RD-100 SS+3d, CO-R10.S04-ES-RD-100 FF+3d, CO-R09.S02-SW-130, CO-R10.S03-WE-RD-100 SS+3d, CO-R10.S03-WE-RD-100 FF+3d, CO-R10.S04-WE-RD-100 SS+3d, CO-R10.S04-WE-RD-100 FF+3d → CO-R10.S03-ES-RD-100 SS+3d, CO-R10.S03-ES-RD-100 FF+3d, CO-R10.S04-ES-RD-100 SS+3d, CO-R10.S04-ES-RD-100 FF+3d, CO-R09.S02-SW-130, CO-R10.S03-WE-RD-100 SS+3d, CO-R10.S03-WE-RD-100 FF+3d, CO-R10.S04-WE-RD-100 SS+3d, CO-R10.S04-WE-RD-100 FF+3d, CO-R10.S03-ES-PW-160 FS+3d, CO-R10.S03-ES-SL-160 SS+6d, CO-R10.S04-ES-PW-160 FS+3d, CO-R10.S04-ES-SL-160 SS+6d, CO-R10.S03-ES-TE-130 FS+3d, CO-R10.S03-ES-TE-160 FS+3d, CO-R10.S04-ES-TE-130 FS+3d, CO-R10.S04-ES-TE-160 FS+3d, CO-R10.S03-WE-PW-160 FS+3d, CO-R10.S03-WE-SL-160 SS+6d, CO-R10.S03-WE-TE-130 FS+3d, CO-R10.S03-WE-TE-160 FS+3d, CO-R10.S04-WE-PW-160 FS+3d, CO-R10.S04-WE-SL-160 SS+6d, CO-R10.S04-WE-TE-130 FS+3d, CO-R10.S04-WE-TE-160 FS+3d, CO-R10.S04-WE-PW-220 FS+3d |
| CO-R10-SW-TF-110 | Install Manhole Cover Works for External Finishes of Sewage Network-[Road 10] | 2027-05-12 → 2027-03-15 (-58d) | 2027-05-31 → 2027-03-28 (-64d) | -229d → -179d | PRO-R10-SW-DL-120 FF+3d, CO-R10-SW-TF-100, CO-R10.S03-ES-RD-100 SS+3d, CO-R10.S03-ES-RD-100 FF+3d, ENG-SH-SW-ML-A-110, ENG-SH-SW-ML-A-110 FF, ENG-MS-SW-ML-A-110, ENG-MS-SW-ML-A-110 FF, CO-R10.S04-ES-RD-100 SS+3d, CO-R10.S04-ES-RD-100 FS+3d, CO-R10.S03-WE-RD-100 SS+3d, CO-R10.S03-WE-RD-100 FF+3d, CO-R10.S04-WE-RD-100 SS+3d, CO-R10.S04-WE-RD-100 FS+3d → PRO-R10-SW-DL-120 FF+3d, CO-R10-SW-TF-100, CO-R10.S03-ES-RD-100 SS+3d, CO-R10.S03-ES-RD-100 FF+3d, ENG-SH-SW-ML-A-110, ENG-SH-SW-ML-A-110 FF, ENG-MS-SW-ML-A-110, ENG-MS-SW-ML-A-110 FF, CO-R10.S04-ES-RD-100 SS+3d, CO-R10.S04-ES-RD-100 FS+3d, CO-R10.S03-WE-RD-100 SS+3d, CO-R10.S03-WE-RD-100 FF+3d, CO-R10.S04-WE-RD-100 SS+3d, CO-R10.S04-WE-RD-100 FS+3d, CO-R10.S03-ES-PW-160 FS+3d, CO-R10.S03-ES-SL-160 SS+6d, CO-R10.S04-ES-PW-160 FS+3d, CO-R10.S04-ES-SL-160 SS+6d, CO-R10.S03-ES-TE-130 FS+3d, CO-R10.S03-ES-TE-160 FS+3d, CO-R10.S04-ES-TE-130 FS+3d, CO-R10.S04-ES-TE-160 FS+3d, CO-R10.S03-WE-PW-160 FS+3d, CO-R10.S03-WE-SL-160 SS+6d, CO-R10.S03-WE-TE-130 FS+3d, CO-R10.S03-WE-TE-160 FS+3d, CO-R10.S04-WE-PW-160 FS+3d, CO-R10.S04-WE-SL-160 SS+6d, CO-R10.S04-WE-TE-130 FS+3d, CO-R10.S04-WE-TE-160 FS+3d, CO-R10.S04-WE-PW-220 FS+3d |
| CO-R10-SW-TF-130 | Main Manhole Internal Finishes (Benching + Insulation) of Sewage Network-[Road 10] | 2027-05-22 → 2027-03-18 (-65d) | 2027-06-03 → 2027-03-31 (-64d) | -229d → -179d |  |
| 11 | **Storm Drainage Network** |  | 2027-05-31 → 2027-03-28 (-64d) |  |  |
| TF | **Testing and Finishes** |  | 2027-05-31 → 2027-03-28 (-64d) |  |  |
| CO-R10-SD-TF-110 | Install Catch Basin Cover Works for External Finishes of Storm Drainage Network-[Road 10] |  | 2027-05-11 → 2027-02-24 (-76d) | -186d → -134d | CO-R10.S03-ES-SD-170 SS+3d, PRO-R10-SD-DL-150 FF+3d, CO-R10.S03-ES-RD-100 FF+3d, CO-R10.S03-ES-RD-100 FF, CO-R10.S03-ES-SD-170 FF+3d, CO-R10.S04-ES-RD-100 FF+3d, CO-R10.S03-WE-SD-170 SS+3d, CO-R10.S03-WE-RD-100 FF+3d, CO-R10.S03-WE-RD-100 FF, CO-R10.S03-WE-SD-170 FF+3d, CO-R10.S04-WE-RD-100 FF+3d → CO-R10.S03-ES-SD-170 SS+3d, PRO-R10-SD-DL-150 FF+3d, CO-R10.S03-ES-RD-100 FF+3d, CO-R10.S03-ES-SD-170 FF+3d, CO-R10.S04-ES-RD-100 FF+3d, CO-R10.S03-WE-SD-170 SS+3d, CO-R10.S03-WE-RD-100 FF+3d, CO-R10.S03-WE-SD-170 FF+3d, CO-R10.S04-WE-RD-100 FF+3d, CO-R10.S03-ES-PW-160 FF+3d, CO-R10.S04-ES-PW-160 FF+3d, CO-R10.S03-ES-TE-130 FF+3d, CO-R10.S03-ES-TE-160 FF+3d, CO-R10.S04-ES-TE-130 FF+3d, CO-R10.S04-ES-TE-160 FF+3d, CO-R10.S03-WE-PW-160 FF+3d, CO-R10.S03-WE-TE-130 FF+3d, CO-R10.S03-WE-TE-160 FF+3d, CO-R10.S04-WE-PW-160 FF+3d, CO-R10.S04-WE-TE-130 FF+3d, CO-R10.S04-WE-TE-160 FF+3d, CO-R10.S04-WE-PW-220 FF+3d |
| CO-R10-SD-TF-120 | Main Manhole Internal Finishes (Benching + Insulation ) for Storm Drainage Network-[Road 10] |  | 2027-05-31 → 2027-03-28 (-64d) | -198d → -158d | CO-R10-SD-TF-100 SS+3d, CO-R10-SD-TF-100 FF+3d, PRO-R10-SD-DL-160 FF+3d, CO-R10-SD-TF-100 SS, CO-R10-SD-TF-110 SS, CO-R10-SD-TF-110 FF, CO-R10-SW-TF-110 FF, ENG-SH-RD-A-100, ENG-SH-RD-A-100 FF, ENG-MS-RD-A-10, ENG-MS-RD-A-10 FF, PRO-R10-SD-DL-100 FF+3d → CO-R10-SD-TF-100 SS+3d, CO-R10-SD-TF-100 FF+3d, PRO-R10-SD-DL-160 FF+3d, CO-R10-SD-TF-110 SS, CO-R10-SD-TF-110 FF, CO-R10-SW-TF-110 FF, ENG-SH-RD-A-100, ENG-SH-RD-A-100 FF, ENG-MS-RD-A-10, ENG-MS-RD-A-10 FF, PRO-R10-SD-DL-100 FF+3d |
| CO-R10-SD-TF-130 | Catch Basin Internal Finishes (Benching + Insulation ) for Storm Drainage Network-[Road 10] |  | 2027-05-31 → 2027-03-28 (-64d) | -137d → -89d | CO-R10-SD-TF-110 SS+3d, CO-R10-SD-TF-110 FF+3d, PRO-R10-SD-DL-160 FF+3d, CO-R10-SD-TF-100 SS, CO-R10-SD-TF-100 FF, CO-R10-SD-TF-110 SS, CO-R10-SW-TF-110 FF, ENG-SH-RD-A-100, ENG-SH-RD-A-100 FF, ENG-MS-RD-A-10, ENG-MS-RD-A-10 FF → CO-R10-SD-TF-110 SS+3d, CO-R10-SD-TF-110 FF+3d, PRO-R10-SD-DL-160 FF+3d, CO-R10-SD-TF-100 SS, CO-R10-SD-TF-100 FF, CO-R10-SW-TF-110 FF, ENG-SH-RD-A-100, ENG-SH-RD-A-100 FF, ENG-MS-RD-A-10, ENG-MS-RD-A-10 FF |
| 9 | **Potable Water Network** | 2027-03-15 → 2027-01-20 (-54d) | 2027-07-11 → 2027-03-21 (-112d) |  |  |
| TF | **Testing and Finishes** | 2027-03-15 → 2027-01-20 (-54d) | 2027-07-11 → 2027-03-21 (-112d) |  |  |
| CO-R10-PW-TF-100 | Final Finishes works and Covers for Valves and Valve Chambers of Potable Water Network-[Road 10] | 2027-03-15 → 2027-01-20 (-54d) | 2027-03-28 → 2027-02-02 (-54d) | -179d → -137d | CO-R10.S03-ES-RD-100 FS+3d, PRO-R10-PW-DL-130 FF+3d, CO-R10.S03-WE-RD-100 FS+3d → CO-R10.S03-ES-RD-100 FS+3d, PRO-R10-PW-DL-130 FF+3d, CO-R10.S03-WE-RD-100 FS+3d, CO-R10.S03-ES-PW-160 FS+3d, CO-R10.S03-ES-SL-160 SS+6d, CO-R10.S03-ES-TE-130 FS+3d, CO-R10.S03-ES-TE-160 FS+3d, CO-R10.S03-WE-PW-160 FS+3d, CO-R10.S03-WE-SL-160 SS+6d, CO-R10.S03-WE-TE-130 FS+3d, CO-R10.S03-WE-TE-160 FS+3d |
| CO-R10-PW-TF-120 | Fire Hydrant Finishies (S.Box + Safety + Marker Post ) of Potable Water Network-[Road 10] | 2027-03-29 → 2027-02-03 (-54d) | 2027-04-11 → 2027-02-16 (-54d) | -179d → -137d |  |
| CO-R10-PW-TF-110 | Testing Work for Main Line of Potable Water Network-[Road 10] | 2027-06-28 → 2027-03-04 (-116d) | 2027-07-11 → 2027-03-21 (-112d) | -264d → -173d |  |
| 13 | **Irrigation Network** | 2027-05-09 → 2027-02-21 (-77d) | 2027-05-25 → 2027-03-04 (-82d) |  |  |
| TF | **Testing and Finishes** | 2027-05-09 → 2027-02-21 (-77d) | 2027-05-25 → 2027-03-04 (-82d) |  |  |
| CO-R10-IR-TF-120 | Final Testing (pressure tests) of Irrigation Network-[Road 10] | 2027-05-09 → 2027-02-21 (-77d) | 2027-05-25 → 2027-03-04 (-82d) | -220d → -158d | CO-R10.S03-ES-IR-130, CO-R10.S03-ES-RD-100, CO-R10.S04-ES-RD-100, CO-R10.S03-WE-IR-130, CO-R10.S03-WE-RD-100, CO-R10.S04-WE-RD-100 → CO-R10.S03-ES-IR-130, CO-R10.S03-ES-RD-100, CO-R10.S04-ES-RD-100, CO-R10.S03-WE-IR-130, CO-R10.S03-WE-RD-100, CO-R10.S04-WE-RD-100, CO-R10.S03-ES-PW-160, CO-R10.S03-ES-SL-160 SS+3d, CO-R10.S04-ES-PW-160, CO-R10.S04-ES-SL-160 SS+3d, CO-R10.S03-ES-TE-130, CO-R10.S03-ES-TE-160, CO-R10.S04-ES-TE-130, CO-R10.S04-ES-TE-160, CO-R10.S03-WE-PW-160, CO-R10.S03-WE-SL-160 SS+3d, CO-R10.S03-WE-TE-130, CO-R10.S03-WE-TE-160, CO-R10.S04-WE-PW-160, CO-R10.S04-WE-SL-160 SS+3d, CO-R10.S04-WE-TE-130, CO-R10.S04-WE-TE-160, CO-R10.S04-WE-PW-220 |
| 12 | **Street Lighting Network** | 2027-03-15 → 2026-12-27 (-78d) | 2027-05-31 → 2027-03-28 (-64d) |  |  |
| TR | **Termination and Testing Works** | 2027-03-15 → 2026-12-27 (-78d) | 2027-05-31 → 2027-03-28 (-64d) |  |  |
| CO-R10-SL-TF-140 | Termination Works For Lighting Poles Cables of Street Lighting Network-[Road 10] | 2027-03-15 → 2026-12-27 (-78d) | 2027-03-28 → 2027-01-09 (-78d) | -245d → -182d |  |
| CO-R10-SL-TF-150 | Termination Works For Panel Board Cables of Street Lighting Network-[Road 10] | 2027-05-10 → 2027-03-13 (-58d) | 2027-05-29 → 2027-03-25 (-65d) | -248d → -198d |  |
| CO-R10-SL-TF-380 | Testing Works For Panel Board Cables of Street Lighting Network-[Road 10] | 2027-05-30 → 2027-03-27 (-64d) | 2027-05-31 → 2027-03-28 (-64d) | -228d → -178d |  |
| ES | **Earthing System Works** | 2027-03-29 → 2027-01-10 (-78d) | 2027-04-28 → 2027-02-09 (-78d) |  |  |
| CO-R10-SL-ES-140 | Install Earthing System Works for Lighting Poles of Street Lighting Network-[Road 10] | 2027-03-29 → 2027-01-10 (-78d) | 2027-04-11 → 2027-01-23 (-78d) | -245d → -182d |  |
| CO-R10-SL-ES-150 | Install Earthing System Works for Lighting Panel Boards of Street Lighting Network-[Road 10] | 2027-04-15 → 2027-01-27 (-78d) | 2027-04-28 → 2027-02-09 (-78d) | -245d → -182d |  |
| 14 | **Medium Voltage Network** | 2026-10-13 → 2026-10-20 (+7d) | 2026-10-20 → 2026-10-27 (+7d) |  |  |
| TT | **Termination and Testing Works** | 2026-10-13 → 2026-10-20 (+7d) | 2026-10-20 → 2026-10-27 (+7d) |  |  |
| CO-R10-MV-TF-140 | Termination Works of Medium Voltage Network-[Road 10] | 2026-10-13 → 2026-10-20 (+7d) | 2026-10-20 → 2026-10-27 (+7d) | -28d → -34d |  |
| 1 | **Road Works** | 2027-07-12 → 2027-04-01 (-102d) | 2027-08-09 → 2027-05-08 (-93d) |  |  |
| 1 | **Bituminous Construction** | 2027-07-12 → 2027-04-01 (-102d) | 2027-07-26 → 2027-04-24 (-93d) |  |  |
| CO-R10-S03-RD-F-110 | Application of Prime Coat Layer for Road Works- S.W 05-[Road 10] | 2027-07-12 → 2027-04-01 (-102d) | 2027-07-22 → 2027-04-12 (-101d) | -235d → -153d |  |
| CO-R10-S03-RD-F-120 | Bituminous Base & Wearing Courses Layers for Road Works- S.W 05-[Road 10] | 2027-07-15 → 2027-04-05 (-101d) | 2027-07-26 → 2027-04-15 (-102d) | -235d → -153d |  |
| CO-R10-S04-RD-F-140 | Application of Prime Coat Layer for Road Works- S.W 06-[Road 10] | 2027-07-12 → 2027-04-10 (-93d) | 2027-07-22 → 2027-04-20 (-93d) | -233d → -158d |  |
| CO-R10-S04-RD-F-150 | Bituminous Base & Wearing Courses Layers for Road Works- S.W 06-[Road 10] | 2027-07-15 → 2027-04-13 (-93d) | 2027-07-26 → 2027-04-24 (-93d) | -233d → -158d |  |
| TS | **Traffic Signs Boards and Roads Marking** | 2027-07-27 → 2027-04-17 (-101d) | 2027-08-09 → 2027-05-08 (-93d) |  |  |
| CO-R10-S03-RD-F-100 | Installation Works of Traffic Signs Boards For Road Works- S.W 05-[Road 10] | 2027-07-27 → 2027-04-17 (-101d) | 2027-08-09 → 2027-04-29 (-102d) | -235d → -153d |  |
| CO-R10-S03-RD-F-160 | Application of Road Marking Works For Road Works- S.W 05-[Road 10] | 2027-07-27 → 2027-04-17 (-101d) | 2027-08-09 → 2027-04-29 (-102d) | -235d → -153d |  |
| CO-R10-S04-RD-F-170 | Application of Road Marking Works For Road Works- S.W 06-[Road 10] | 2027-07-27 → 2027-04-25 (-93d) | 2027-08-09 → 2027-05-08 (-93d) | -233d → -158d |  |
| CO-R10-S04-RD-F-130 | Installation Works of Traffic Signs Boards For Road Works- S.W 06-[Road 10] | 2027-07-29 → 2027-04-27 (-93d) | 2027-08-09 → 2027-05-08 (-93d) | -232d → -157d |  |
| 5 | **Road 11 Local 1 ( 670 LM )** |  | 2027-08-21 → 2027-05-25 (-88d) |  |  |
| 10 | **Sewage Network** | 2027-05-12 → 2027-03-15 (-58d) | 2027-06-17 → 2027-04-14 (-64d) |  |  |
| TF | **Testing and Finishes** | 2027-05-12 → 2027-03-15 (-58d) | 2027-06-17 → 2027-04-14 (-64d) |  |  |
| CO-R11-SW-TF-100 | Final Testing For Main Line of Sewage Network-[Road 11] | 2027-05-12 → 2027-03-15 (-58d) | 2027-05-31 → 2027-03-28 (-64d) | -229d → -179d |  |
| CO-R11-SW-TF-110 | Install Manhole Cover Works for External Finishes of Sewage Network-[Road 11] | 2027-06-01 → 2027-03-29 (-64d) | 2027-06-14 → 2027-04-11 (-64d) | -229d → -179d |  |
| CO-R11-SW-TF-130 | Main Manhole Internal Finishes (Benching + Insulation) of Sewage Network-[Road 11] | 2027-06-05 → 2027-04-01 (-65d) | 2027-06-17 → 2027-04-14 (-64d) | -229d → -179d |  |
| 11 | **Storm Drainage Network** |  | 2027-06-14 → 2027-04-11 (-64d) |  |  |
| TF | **Testing and Finishes** |  | 2027-06-14 → 2027-04-11 (-64d) |  |  |
| CO-R11-SD-TF-130 | Catch Basin Internal Finishes (Benching + Insulation ) for Storm Drainage Network-[Road 11] |  | 2027-06-14 → 2027-04-11 (-64d) | -149d → -99d | CO-R11-SD-TF-110 FF+3d, PRO-R11-SD-DL-160 FF+3d, CO-R11-SD-TF-100 FF, CO-R11-SD-TF-110 FF, CO-R11-SW-TF-110 FF, ENG-SH-RD-A-100, ENG-SH-RD-A-100 FF, CO-R10-SD-TF-130 SS, ENG-MS-RD-A-10, ENG-MS-RD-A-10 FF → CO-R11-SD-TF-110 FF+3d, PRO-R11-SD-DL-160 FF+3d, CO-R11-SD-TF-100 FF, CO-R11-SW-TF-110 FF, ENG-SH-RD-A-100, ENG-SH-RD-A-100 FF, CO-R10-SD-TF-130 SS, ENG-MS-RD-A-10, ENG-MS-RD-A-10 FF |
| CO-R11-SD-TF-120 | Main Manhole Internal Finishes (Benching + Insulation ) for Storm Drainage Network-[Road 11] |  | 2027-06-14 → 2027-04-11 (-64d) | -188d → -148d | CO-R11-SD-TF-100 FF+3d, PRO-R11-SD-DL-160 FF+3d, CO-R11-SD-TF-100 FF, CO-R11-SD-TF-110 FF, CO-R11-SW-TF-110 FF, ENG-SH-RD-A-100, ENG-SH-RD-A-100 FF, CO-R10-SD-TF-120 SS, ENG-MS-RD-A-10, ENG-MS-RD-A-10 FF, PRO-R11-SD-DL-100 FF+3d → CO-R11-SD-TF-100 FF+3d, PRO-R11-SD-DL-160 FF+3d, CO-R11-SD-TF-110 FF, CO-R11-SW-TF-110 FF, ENG-SH-RD-A-100, ENG-SH-RD-A-100 FF, CO-R10-SD-TF-120 SS, ENG-MS-RD-A-10, ENG-MS-RD-A-10 FF, PRO-R11-SD-DL-100 FF+3d |
| CO-R11-SD-TF-110 | Install Catch Basin Cover Works for External Finishes of Storm Drainage Network-[Road 11] |  | 2027-05-06 → 2027-02-20 (-75d) | -160d → -109d |  |
| 9 | **Potable Water Network** | 2027-03-29 → 2027-02-03 (-54d) | 2027-07-25 → 2027-04-04 (-112d) |  |  |
| TF | **Testing and Finishes** | 2027-03-29 → 2027-02-03 (-54d) | 2027-07-25 → 2027-04-04 (-112d) |  |  |
| CO-R11-PW-TF-100 | Final Finishes works and Covers for Valves and Valve Chambers of Potable Water Network-[Road 11] | 2027-03-29 → 2027-02-03 (-54d) | 2027-04-11 → 2027-02-16 (-54d) | -179d → -137d |  |
| CO-R11-PW-TF-120 | Fire Hydrant Finishies (S.Box + Safety + Marker Post ) of Potable Water Network-[Road 11] | 2027-04-12 → 2027-02-17 (-54d) | 2027-04-25 → 2027-03-03 (-53d) | -179d → -137d |  |
| CO-R11-PW-TF-110 | Testing Work for Main Line of Potable Water Network-[Road 11] | 2027-07-12 → 2027-03-22 (-112d) | 2027-07-25 → 2027-04-04 (-112d) | -264d → -173d |  |
| 13 | **Irrigation Network** | 2027-05-26 → 2027-03-06 (-81d) | 2027-06-06 → 2027-03-20 (-78d) |  |  |
| TF | **Testing and Finishes** | 2027-05-26 → 2027-03-06 (-81d) | 2027-06-06 → 2027-03-20 (-78d) |  |  |
| CO-R11-IR-TF-130 | Final Testing (pressure tests) of Irrigation Network-[Road 11] | 2027-05-26 → 2027-03-06 (-81d) | 2027-06-06 → 2027-03-20 (-78d) | -220d → -158d |  |
| 12 | **Street Lighting Network** | 2027-06-20 → 2027-01-10 (-161d) | 2027-08-04 → 2027-04-14 (-112d) |  |  |
| TR | **Termination and Testing Works** | 2027-06-20 → 2027-01-10 (-161d) | 2027-08-04 → 2027-04-14 (-112d) |  |  |
| CO-R11-SL-TF-160 | Termination Works For Lighting Poles Cables of Street Lighting Network-[Road 11] | 2027-06-20 → 2027-01-10 (-161d) | 2027-07-03 → 2027-01-23 (-161d) | -262d → -133d |  |
| CO-R11-SL-TF-170 | Termination Works For Panel Board Cables of Street Lighting Network-[Road 11] | 2027-07-20 → 2027-03-30 (-112d) | 2027-08-02 → 2027-04-12 (-112d) | -292d → -201d |  |
| CO-R11-SL-TF-380 | Testing Works For Panel Board Cables of Street Lighting Network-[Road 11] | 2027-08-03 → 2027-04-13 (-112d) | 2027-08-04 → 2027-04-14 (-112d) | -282d → -191d |  |
| 14 | **Medium Voltage Network** | 2027-01-12 → 2026-10-28 (-76d) | 2027-01-19 → 2026-11-04 (-76d) |  |  |
| TT | **Termination and Testing Works** | 2027-01-12 → 2026-10-28 (-76d) | 2027-01-19 → 2026-11-04 (-76d) |  |  |
| CO-R11-MV-TF-160 | Termination Works of Medium Voltage Network-[Road 11] | 2027-01-12 → 2026-10-28 (-76d) | 2027-01-19 → 2026-11-04 (-76d) | -99d → -34d |  |
| 1 | **Road Works** |  | 2027-08-21 → 2027-05-25 (-88d) |  |  |
| 1 | **Bituminous Construction** |  | 2027-08-09 → 2027-05-08 (-93d) |  |  |

| ID | Task | Start | Finish | Complete | Total float | Predecessors |
| --- | --- | --- | --- | --- | --- | --- |
| CO-R11-S05-RD-F-120 | Bituminous Base & Wearing Courses Layers for Road Works- S.W 07-[Road 11] | 2027-07-27 → 2027-04-17 (-101d) | 2027-08-09 → 2027-04-29 (-102d) |  | -235d → -153d |  |
| CO-R11-S06-RD-F-150 | Bituminous Base & Wearing Courses Layers for Road Works- S.W 08-[Road 11] | 2027-07-27 → 2027-04-25 (-93d) | 2027-08-09 → 2027-05-08 (-93d) |  | -233d → -158d |  |
| TS | **Traffic Signs Boards and Roads Marking** | 2027-08-10 → 2027-05-01 (-101d) | 2027-08-21 → 2027-05-25 (-88d) |  |  |  |
| CO-R11-S05-RD-F-100 | Installation Works of Traffic Signs Boards For Road Works- S.W 07-[Road 11] | 2027-08-10 → 2027-05-01 (-101d) | 2027-08-21 → 2027-05-11 (-102d) |  | -235d → -153d | CO-R11.S05-RD-P-130, CO-R10-S03-RD-F-100, CO-R11-S05-RD-F-160 FF → CO-R11.S05-RD-P-130, CO-R10-S03-RD-F-100, CO-R11-S05-RD-F-160 FF, CO-R11-PW-TF-100, CO-R11-PW-TF-110, CO-R11-PW-TF-120, CO-R11-SW-TF-100, CO-R11-SW-TF-110, CO-R11-SW-TF-130, CO-R11-SL-TF-160, CO-R11-SL-TF-170, CO-R11-IR-TF-130, CO-R11-MV-TF-160 |
| CO-R11-S05-RD-F-160 | Application of Road Marking Works For Road Works- S.W 07-[Road 11] | 2027-08-10 → 2027-05-01 (-101d) | 2027-08-21 → 2027-05-11 (-102d) |  | -235d → -153d |  |
| CO-R11-S06-RD-F-130 | Installation Works of Traffic Signs Boards For Road Works- S.W 08-[Road 11] | 2027-08-10 → 2027-05-09 (-93d) | 2027-08-21 → 2027-05-25 (-88d) |  | -232d → -157d | PRO-R11-RD-DL-140 FF+3d, CO-R11.S06-RD-P-130, CO-R10-S04-RD-F-130, CO-R11-S06-RD-F-170 FF → PRO-R11-RD-DL-140 FF+3d, CO-R11.S06-RD-P-130, CO-R10-S04-RD-F-130, CO-R11-S06-RD-F-170 FF, CO-R11-PW-TF-100, CO-R11-PW-TF-110, CO-R11-PW-TF-120, CO-R11-SW-TF-100, CO-R11-SW-TF-110, CO-R11-SW-TF-130, CO-R11-SL-TF-160, CO-R11-SL-TF-170, CO-R11-IR-TF-130, CO-R11-MV-TF-160 |
| CO-R11-S06-RD-F-170 | Application of Road Marking Works For Road Works- S.W 08-[Road 11] | 2027-08-10 → 2027-05-09 (-93d) | 2027-08-21 → 2027-05-25 (-88d) |  | -233d → -158d |  |
| 6 | **Road 14 Local 1 ( 584 LM )** |  | 2027-09-14 → 2027-06-07 (-99d) |  |  |  |
| 10 | **Sewage Network** | 2027-06-01 → 2026-09-15 (-259d) | 2027-07-01 → 2027-04-28 (-64d) |  |  |  |
| TF | **Testing and Finishes** | 2027-06-01 → 2026-09-15 (-259d) | 2027-07-01 → 2027-04-28 (-64d) |  |  |  |
| CO-R14-SW-TF-100 | Final Testing For Main Line of Sewage Network-[Road 14] | 2027-06-01 → 2026-09-15 A (-259d) | 2027-06-14 → 2026-09-21 A (-266d) | 0% → 100% | -229d → none | CO-R14.S07-SW-130, CO-R14.S07-RD-P-100 SS+3d, CO-R14.S07-RD-P-100 FF+3d, CO-R11-SW-TF-100, CO-R14.S08-RD-P-100 SS+3d, CO-R14.S08-RD-P-100 FF+3d, CO-R14.S08-SW-130, CO-R14.S08-SW-210 → CO-R14.S07-SW-130, CO-R14.S07-RD-P-100 SS+3d, CO-R14.S07-RD-P-100 FF+3d, CO-R14.S08-RD-P-100 SS+3d, CO-R14.S08-RD-P-100 FF+3d, CO-R14.S08-SW-130 |
| CO-R14-SW-TF-110 | Install Manhole Cover Works for External Finishes of Sewage Network-[Road 14] | 2027-06-15 → 2027-04-12 (-64d) | 2027-06-28 → 2027-04-25 (-64d) |  | -229d → -179d | CO-R14.S07-SW-130 SS+3d, PRO-R14-SW-DL-120 FF+3d, CO-R14-SW-TF-100, CO-R14.S07-SW-130 FF+3d, CO-R14.S07-RD-P-100 SS+3d, CO-R14.S07-RD-P-100 FF+3d, CO-R14.S07-SW-120 SS, CO-R14.S07-SW-120, CO-R14.S07-SW-120 FF, ENG-SH-SW-ML-A-110, ENG-SH-SW-ML-A-110 FF, CO-R11-SW-TF-110, ENG-MS-SW-ML-A-110, ENG-MS-SW-ML-A-110 FF, CO-R14.S08-RD-P-100 SS+3d, CO-R14.S08-RD-P-100 FF+3d, CO-R14.S08-SW-130 SS+3d, CO-R14.S08-SW-130 FF+3d, CO-R14.S07-SW-210 → CO-R14.S07-SW-130 SS+3d, PRO-R14-SW-DL-120 FF+3d, CO-R14-SW-TF-100, CO-R14.S07-SW-130 FF+3d, CO-R14.S07-RD-P-100 SS+3d, CO-R14.S07-RD-P-100 FF+3d, CO-R14.S07-SW-120 SS, CO-R14.S07-SW-120, CO-R14.S07-SW-120 FF, ENG-SH-SW-ML-A-110, ENG-SH-SW-ML-A-110 FF, CO-R11-SW-TF-110, ENG-MS-SW-ML-A-110, ENG-MS-SW-ML-A-110 FF, CO-R14.S08-RD-P-100 SS+3d, CO-R14.S08-RD-P-100 FF+3d, CO-R14.S08-SW-130 SS+3d, CO-R14.S08-SW-130 FF+3d, CO-R14.S07-SW-210, CO-R11-SW-TF-100, CO-R14.S08-SW-210 |
| CO-R14-SW-TF-130 | Main Manhole Internal Finishes (Benching + Insulation) of Sewage Network-[Road 14] | 2027-06-19 → 2027-04-15 (-65d) | 2027-07-01 → 2027-04-28 (-64d) |  | -229d → -179d |  |
| 9 | **Potable Water Network** | 2027-04-12 → 2027-02-17 (-54d) | 2027-08-08 → 2027-04-18 (-112d) |  |  |  |
| TF | **Testing and Finishes** | 2027-04-12 → 2027-02-17 (-54d) | 2027-08-08 → 2027-04-18 (-112d) |  |  |  |
| CO-R14-PW-TF-100 | Final Finishes works and Covers for Valves and Valve Chambers of Potable Water Network-[Road 14] | 2027-04-12 → 2027-02-17 (-54d) | 2027-04-25 → 2027-03-03 (-53d) |  | -179d → -137d |  |
| CO-R14-PW-TF-120 | Fire Hydrant Finishies (S.Box + Safety + Marker Post ) of Potable Water Network-[Road 14] | 2027-04-26 → 2027-03-04 (-53d) | 2027-05-09 → 2027-03-21 (-49d) |  | -179d → -137d |  |
| CO-R14-PW-TF-110 | Testing Work for Main Line of Potable Water Network-[Road 14] | 2027-07-26 → 2027-04-05 (-112d) | 2027-08-08 → 2027-04-18 (-112d) |  | -264d → -173d |  |
| 13 | **Irrigation Network** | 2027-06-07 → 2027-03-21 (-78d) | 2027-06-17 → 2027-03-31 (-78d) |  |  |  |
| TF | **Testing and Finishes** | 2027-06-07 → 2027-03-21 (-78d) | 2027-06-17 → 2027-03-31 (-78d) |  |  |  |
| CO-R11-IR-TF-140 | Final Testing (pressure tests) of Irrigation Network-[Road 14] | 2027-06-07 → 2027-03-21 (-78d) | 2027-06-17 → 2027-03-31 (-78d) |  | -220d → -158d |  |
| 12 | **Street Lighting Network** | 2027-07-04 → 2027-01-24 (-161d) | 2027-08-18 → 2027-05-05 (-105d) |  |  |  |
| TR | **Termination and Testing Works** | 2027-07-04 → 2027-01-24 (-161d) | 2027-08-18 → 2027-05-05 (-105d) |  |  |  |
| CO-R11-SL-TF-180 | Termination Works For Lighting Poles Cables of Street Lighting Network-[Road 14] | 2027-07-04 → 2027-01-24 (-161d) | 2027-07-17 → 2027-02-06 (-161d) |  | -262d → -133d |  |
| CO-R11-SL-TF-190 | Termination Works For Panel Board Cables of Street Lighting Network-[Road 14] | 2027-08-03 → 2027-04-20 (-105d) | 2027-08-16 → 2027-05-03 (-105d) |  | -292d → -207d |  |
| CO-R14-SL-TF-380 | Testing Works For Panel Board Cables of Street Lighting Network-[Road 14] | 2027-08-17 → 2027-05-04 (-105d) | 2027-08-18 → 2027-05-05 (-105d) |  | -292d → -207d |  |
| 14 | **Medium Voltage Network** | 2027-01-20 → 2026-11-05 (-76d) | 2027-01-27 → 2026-11-12 (-76d) |  |  |  |
| TT | **Termination and Testing Works** | 2027-01-20 → 2026-11-05 (-76d) | 2027-01-27 → 2026-11-12 (-76d) |  |  |  |
| CO-R11-MV-TF-180 | Termination Works of Medium Voltage Network-[Road 14] | 2027-01-20 → 2026-11-05 (-76d) | 2027-01-27 → 2026-11-12 (-76d) |  | -99d → -34d |  |
| 1 | **Road Works** | 2027-08-17 → 2027-05-04 (-105d) | 2027-09-14 → 2027-06-07 (-99d) |  |  |  |
| 1 | **Bituminous Construction** | 2027-08-17 → 2027-05-04 (-105d) | 2027-09-02 → 2027-05-26 (-99d) |  |  |  |
| CO-R11-S07-RD-F-110 | Application of Prime Coat Layer for Road Works- S.W 09-[Road 14] | 2027-08-17 → 2027-05-04 (-105d) | 2027-08-30 → 2027-05-23 (-99d) |  | -244d → -159d |  |
| CO-R11-S08-RD-F-140 | Application of Prime Coat Layer for Road Works- S.W 10-[Road 14] | 2027-08-17 → 2027-05-04 (-105d) | 2027-08-28 → 2027-05-20 (-100d) |  | -242d → -157d |  |
| CO-R11-S07-RD-F-120 | Bituminous Base & Wearing Courses Layers for Road Works- S.W 09-[Road 14] | 2027-08-23 → 2027-05-10 (-105d) | 2027-09-02 → 2027-05-26 (-99d) |  | -244d → -159d |  |
| CO-R11-S08-RD-F-150 | Bituminous Base & Wearing Courses Layers for Road Works- S.W 10-[Road 14] | 2027-08-23 → 2027-05-10 (-105d) | 2027-09-02 → 2027-05-26 (-99d) |  | -244d → -159d |  |
| TS | **Traffic Signs Boards and Roads Marking** | 2027-09-01 → 2027-05-25 (-99d) | 2027-09-14 → 2027-06-07 (-99d) |  |  |  |
| CO-R11-S07-RD-F-100 | Installation Works of Traffic Signs Boards For Road Works- S.W 09-[Road 14] | 2027-09-01 → 2027-05-25 (-99d) | 2027-09-14 → 2027-06-07 (-99d) |  | -244d → -159d | CO-R14.S07-RD-P-130, CO-R11-S05-RD-F-100, CO-R11-S07-RD-F-160 FF, CO-R14.S07-RD-P-110 → CO-R14.S07-RD-P-130, CO-R11-S05-RD-F-100, CO-R11-S07-RD-F-160 FF, CO-R14.S07-RD-P-110, CO-R10.S03-WE-RD-110, CO-R10.S03-ES-RD-110 |
| CO-R11-S07-RD-F-160 | Application of Road Marking Works For Road Works- S.W 09-[Road 14] | 2027-09-04 → 2027-05-27 (-100d) | 2027-09-14 → 2027-06-07 (-99d) |  | -244d → -159d |  |
| CO-R11-S08-RD-F-130 | Installation Works of Traffic Signs Boards For Road Works- S.W 10-[Road 14] | 2027-09-04 → 2027-05-27 (-100d) | 2027-09-14 → 2027-06-07 (-99d) |  | -243d → -158d | PRO-R14-RD-DL-140 FF+3d, CO-R14.S08-RD-P-130, CO-R11-S06-RD-F-130, CO-R11-S08-RD-F-170 FF, CO-R14.S08-RD-P-110 → PRO-R14-RD-DL-140 FF+3d, CO-R14.S08-RD-P-130, CO-R11-S06-RD-F-130, CO-R11-S08-RD-F-170 FF, CO-R14.S08-RD-P-110, CO-R10.S04-WE-RD-110, CO-R10.S04-ES-RD-110 |
| CO-R11-S08-RD-F-170 | Application of Road Marking Works For Road Works- S.W 10-[Road 14] | 2027-09-04 → 2027-05-27 (-100d) | 2027-09-14 → 2027-06-07 (-99d) |  | -244d → -159d |  |
| 7 | **Road 15 Local 1 ( 556 LM )** |  | 2027-09-29 → 2027-06-21 (-100d) |  |  |  |
| 10 | **Sewage Network** | 2027-06-15 → 2026-09-15 (-273d) | 2027-07-15 → 2027-05-12 (-64d) |  |  |  |
| TF | **Testing and Finishes** | 2027-06-15 → 2026-09-15 (-273d) | 2027-07-15 → 2027-05-12 (-64d) |  |  |  |
| CO-R15-SW-TF-100 | Final Testing For Main Line of Sewage Network-[Road 15] | 2027-06-15 → 2026-09-15 A (-273d) | 2027-06-28 → 2026-09-21 A (-280d) | 0% → 100% | -229d → none |  |
| CO-R15-SW-TF-110 | Install Manhole Cover Works for External Finishes of Sewage Network-[Road 15] | 2027-06-29 → 2027-04-26 (-64d) | 2027-07-12 → 2027-05-09 (-64d) |  | -229d → -179d |  |
| CO-R15-SW-TF-130 | Main Manhole Internal Finishes (Benching + Insulation) of Sewage Network-[Road 15] | 2027-07-03 → 2027-04-29 (-65d) | 2027-07-15 → 2027-05-12 (-64d) |  | -229d → -179d |  |
| 11 | **Storm Drainage Network** |  | 2027-07-31 → 2027-06-02 (-59d) |  |  |  |
| TF | **Testing and Finishes** |  | 2027-07-31 → 2027-06-02 (-59d) |  |  |  |
| CO-R15-SD-TF-110 | Install Catch Basin Cover Works for External Finishes of Storm Drainage Network-[Road 15] | 2026-12-14 → 2026-11-09 (-35d) | 2026-12-27 → 2026-11-22 (-35d) |  | -57d → -27d |  |
| CO-R15-SD-TF-130 | Catch Basin Internal Finishes (Benching + Insulation ) for Storm Drainage Network-[Road 15] | 2027-07-13 → 2027-05-10 (-64d) | 2027-07-31 → 2027-06-02 (-59d) |  | -217d → -167d |  |
| 9 | **Potable Water Network** | 2027-04-26 → 2027-03-04 (-53d) | 2027-08-22 → 2027-05-02 (-112d) |  |  |  |
| TF | **Testing and Finishes** | 2027-04-26 → 2027-03-04 (-53d) | 2027-08-22 → 2027-05-02 (-112d) |  |  |  |
| CO-R15-PW-TF-100 | Final Finishes works and Covers for Valves and Valve Chambers of Potable Water Network-[Road 15] | 2027-04-26 → 2027-03-04 (-53d) | 2027-05-09 → 2027-03-21 (-49d) |  | -179d → -137d |  |
| CO-R15-PW-TF-120 | Fire Hydrant Finishies (S.Box + Safety + Marker Post ) of Potable Water Network-[Road 15] | 2027-05-10 → 2027-03-22 (-49d) | 2027-05-29 → 2027-04-04 (-55d) |  | -179d → -137d |  |
| CO-R15-PW-TF-110 | Testing Work for Main Line of Potable Water Network-[Road 15] | 2027-08-09 → 2027-04-19 (-112d) | 2027-08-22 → 2027-05-02 (-112d) |  | -264d → -173d |  |
| 13 | **Irrigation Network** | 2027-06-19 → 2027-04-01 (-79d) | 2027-06-29 → 2027-04-12 (-78d) |  |  |  |
| TF | **Testing and Finishes** | 2027-06-19 → 2027-04-01 (-79d) | 2027-06-29 → 2027-04-12 (-78d) |  |  |  |
| CO-R15-IR-TF-150 | Final Testing (pressure tests) of Irrigation Network-[Road 15] | 2027-06-19 → 2027-04-01 (-79d) | 2027-06-29 → 2027-04-12 (-78d) |  | -220d → -158d |  |
| 12 | **Street Lighting Network** | 2027-07-18 → 2027-02-07 (-161d) | 2027-09-20 → 2027-06-13 (-99d) |  |  |  |
| TR | **Termination and Testing Works** | 2027-07-18 → 2027-02-07 (-161d) | 2027-09-20 → 2027-06-13 (-99d) |  |  |  |
| CO-R15-SL-TF-200 | Termination Works For Lighting Poles Cables of Street Lighting Network-[Road 15] | 2027-07-18 → 2027-02-07 (-161d) | 2027-07-31 → 2027-02-20 (-161d) |  | -262d → -133d |  |
| CO-R15-SL-TF-210 | Termination Works For Panel Board Cables of Street Lighting Network-[Road 15] | 2027-08-19 → 2027-05-06 (-105d) | 2027-09-01 → 2027-05-25 (-99d) |  | -292d → -207d |  |
| CO-R15-SL-TF-380 | Testing Works For Panel Board Cables of Street Lighting Network-[Road 15] | 2027-09-02 → 2027-05-26 (-99d) | 2027-09-20 → 2027-06-13 (-99d) |  | -286d → -201d |  |
| 14 | **Medium Voltage Network** | 2027-01-28 → 2026-11-14 (-75d) | 2027-02-04 → 2026-11-21 (-75d) |  |  |  |
| TT | **Termination and Testing Works** | 2027-01-28 → 2026-11-14 (-75d) | 2027-02-04 → 2026-11-21 (-75d) |  |  |  |
| CO-R15-MV-TF-200 | Termination Works of Medium Voltage Network-[Road 15] | 2027-01-28 → 2026-11-14 (-75d) | 2027-02-04 → 2026-11-21 (-75d) |  | -99d → -34d |  |
| 1 | **Road Works** |  | 2027-09-29 → 2027-06-21 (-100d) |  |  |  |
| TS | **Traffic Signs Boards and Roads Marking** | 2027-09-15 → 2027-06-08 (-99d) | 2027-09-29 → 2027-06-21 (-100d) |  |  |  |
| CO-R15-S09-RD-F-100 | Installation Works of Traffic Signs Boards For Road Works- S.W 11-[Road 15] | 2027-09-15 → 2027-06-08 (-99d) | 2027-09-27 → 2027-06-19 (-100d) |  | -244d → -159d | CO-R15.S09-RD-P-130, CO-R11-S07-RD-F-100, CO-R15-S09-RD-F-160 FF → CO-R15.S09-RD-P-130, CO-R11-S07-RD-F-100, CO-R15-S09-RD-F-160 FF, CO-R15-PW-TF-100, CO-R15-PW-TF-110, CO-R15-PW-TF-120, CO-R15-SW-TF-100, CO-R15-SW-TF-110, CO-R15-SW-TF-130, CO-R15-SL-TF-200, CO-R15-SL-TF-210, CO-R15-IR-TF-150, CO-R15-MV-TF-200 |
| CO-R15-S09-RD-F-160 | Application of Road Marking Works For Road Works- S.W 11-[Road 15] | 2027-09-15 → 2027-06-08 (-99d) | 2027-09-27 → 2027-06-19 (-100d) |  | -244d → -159d |  |

| ID | Task | Start | Finish | Complete | Total float | Predecessors |
| --- | --- | --- | --- | --- | --- | --- |
| CO-R15-S10-RD-F-130 | Installation Works of Traffic Signs Boards For Road Works- S.W 12-[Road 15] | 2027-09-15 → 2027-06-08 (-99d) | 2027-09-29 → 2027-06-21 (-100d) |  | -243d → -158d | CO-R15.S10-RD-P-130, CO-R11-S08-RD-F-130, PRO-R15-RD-DL-140 FF+3d, CO-R15-S10-RD-F-170 FF → CO-R15.S10-RD-P-130, CO-R11-S08-RD-F-130, PRO-R15-RD-DL-140 FF+3d, CO-R15-S10-RD-F-170 FF, CO-R15-PW-TF-100, CO-R15-PW-TF-110, CO-R15-PW-TF-120, CO-R15-SW-TF-100, CO-R15-SW-TF-110, CO-R15-SW-TF-130, CO-R15-SL-TF-200, CO-R15-SL-TF-210, CO-R15-IR-TF-150, CO-R15-MV-TF-200 |
| CO-R15-S10-RD-F-170 | Application of Road Marking Works For Road Works- S.W 12-[Road 15] | 2027-09-15 → 2027-06-08 (-99d) | 2027-09-27 → 2027-06-19 (-100d) |  | -244d → -159d |  |
| 8 | **Road 16 Local 1 ( 527 LM )** |  | 2027-10-11 → 2027-07-03 (-100d) |  |  |  |
| 10 | **Sewage Network** | 2027-06-29 → 2026-09-15 (-287d) | 2027-07-29 → 2027-06-01 (-58d) |  |  |  |
| TF | **Testing and Finishes** | 2027-06-29 → 2026-09-15 (-287d) | 2027-07-29 → 2027-06-01 (-58d) |  |  |  |
| CO-R16-SW-TF-100 | Final Testing For Main Line of Sewage Network-[Road 16] | 2027-06-29 → 2026-09-15 A (-287d) | 2027-07-12 → 2026-09-21 A (-294d) | 0% → 100% | -229d → none |  |
| CO-R16-SW-TF-110 | Install Manhole Cover Works for External Finishes of Sewage Network-[Road 16] | 2027-07-13 → 2027-05-10 (-64d) | 2027-07-26 → 2027-05-29 (-58d) |  | -229d → -179d |  |
| CO-R16-SW-TF-130 | Main Manhole Internal Finishes (Benching + Insulation) of Sewage Network-[Road 16] | 2027-07-17 → 2027-05-13 (-65d) | 2027-07-29 → 2027-06-01 (-58d) |  | -229d → -179d |  |
| 11 | **Storm Drainage Network** |  | 2027-08-18 → 2027-06-21 (-58d) |  |  |  |
| TF | **Testing and Finishes** |  | 2027-08-18 → 2027-06-21 (-58d) |  |  |  |
| CO-R16-SD-TF-100 | Testing Work for Pipes of Storm Drainage Network-[Road 16] | 2026-11-09 → 2026-11-04 (-5d) | 2026-11-26 → 2026-11-22 (-4d) |  | -15d → -11d |  |
| CO-R16-SD-TF-110 | Install Catch Basin Cover Works for External Finishes of Storm Drainage Network-[Road 16] | 2026-12-28 → 2026-11-23 (-35d) | 2027-01-10 → 2026-12-06 (-35d) |  | -53d → -23d |  |
| CO-R16-SD-TF-130 | Catch Basin Internal Finishes (Benching + Insulation ) for Storm Drainage Network-[Road 16] | 2027-08-01 → 2027-06-03 (-59d) | 2027-08-18 → 2027-06-21 (-58d) |  | -217d → -167d |  |
| 9 | **Potable Water Network** | 2027-05-10 → 2027-03-22 (-49d) | 2027-09-05 → 2027-05-22 (-106d) |  |  |  |
| TF | **Testing and Finishes** | 2027-05-10 → 2027-03-22 (-49d) | 2027-09-05 → 2027-05-22 (-106d) |  |  |  |
| CO-R16-PW-TF-100 | Final Finishes works and Covers for Valves and Valve Chambers of Potable Water Network-[Road 16] | 2027-05-10 → 2027-03-22 (-49d) | 2027-05-29 → 2027-04-04 (-55d) |  | -179d → -137d |  |
| CO-R16-PW-TF-120 | Fire Hydrant Finishies (S.Box + Safety + Marker Post ) of Potable Water Network-[Road 16] | 2027-05-30 → 2027-04-05 (-55d) | 2027-06-12 → 2027-04-18 (-55d) |  | -179d → -137d |  |
| CO-R16-PW-TF-110 | Testing Work for Main Line of Potable Water Network-[Road 16] | 2027-08-23 → 2027-05-03 (-112d) | 2027-09-05 → 2027-05-22 (-106d) |  | -264d → -173d |  |
| 13 | **Irrigation Network** | 2027-06-30 → 2027-04-13 (-78d) | 2027-07-11 → 2027-04-24 (-78d) |  |  |  |
| TF | **Testing and Finishes** | 2027-06-30 → 2027-04-13 (-78d) | 2027-07-11 → 2027-04-24 (-78d) |  |  |  |
| CO-R16-IR-TF-160 | Final Testing (pressure tests) of Irrigation Network-[Road 16] | 2027-06-30 → 2027-04-13 (-78d) | 2027-07-11 → 2027-04-24 (-78d) |  | -220d → -158d |  |
| 12 | **Street Lighting Network** | 2027-08-01 → 2027-02-21 (-161d) | 2027-09-22 → 2027-06-15 (-99d) |  |  |  |
| TR | **Termination and Testing Works** | 2027-08-01 → 2027-02-21 (-161d) | 2027-09-22 → 2027-06-15 (-99d) |  |  |  |
| CO-R16-SL-TF-220 | Termination Works For Lighting Poles Cables of Street Lighting Network-[Road 16] | 2027-08-01 → 2027-02-21 (-161d) | 2027-08-14 → 2027-03-07 (-160d) |  | -262d → -133d |  |
| CO-R16-SL-TF-230 | Termination Works For Panel Board Cables of Street Lighting Network-[Road 16] | 2027-09-02 → 2027-05-26 (-99d) | 2027-09-15 → 2027-06-08 (-99d) |  | -292d → -207d |  |
| CO-R16-SL-TF-380 | Testing Works For Panel Board Cables of Street Lighting Network-[Road 16] | 2027-09-21 → 2027-06-14 (-99d) | 2027-09-22 → 2027-06-15 (-99d) |  | -286d → -201d |  |
| 14 | **Medium Voltage Network** | 2027-02-06 → 2026-11-22 (-76d) | 2027-02-13 → 2026-11-29 (-76d) |  |  |  |
| TT | **Termination and Testing Works** | 2027-02-06 → 2026-11-22 (-76d) | 2027-02-13 → 2026-11-29 (-76d) |  |  |  |
| CO-R16-MV-TF-220 | Termination Works of Medium Voltage Network-[Road 16] | 2027-02-06 → 2026-11-22 (-76d) | 2027-02-13 → 2026-11-29 (-76d) |  | -99d → -34d |  |
| 1 | **Road Works** |  | 2027-10-11 → 2027-07-03 (-100d) |  |  |  |
| TS | **Traffic Signs Boards and Roads Marking** | 2027-09-28 → 2027-06-20 (-100d) | 2027-10-11 → 2027-07-03 (-100d) |  |  |  |
| CO-R16-S11-RD-F-100 | Installation Works of Traffic Signs Boards For Road Works- S.W 13-[Road 16] | 2027-09-28 → 2027-06-20 (-100d) | 2027-10-09 → 2027-06-30 (-101d) |  | -244d → -159d | CO-R16.S11-RD-P-130, CO-R15-S09-RD-F-100, CO-R16-S11-RD-F-160 FF → CO-R16.S11-RD-P-130, CO-R15-S09-RD-F-100, CO-R16-S11-RD-F-160 FF, CO-R16-PW-TF-100, CO-R16-PW-TF-110, CO-R16-PW-TF-120, CO-R16-SW-TF-100, CO-R16-SW-TF-110, CO-R16-SW-TF-130, CO-R16-SD-TF-100, CO-R16-SL-TF-220, CO-R16-SL-TF-230, CO-R16-IR-TF-160, CO-R16-MV-TF-220 |
| CO-R16-S11-RD-F-160 | Application of Road Marking Works For Road Works- S.W 13-[Road 16] | 2027-09-28 → 2027-06-20 (-100d) | 2027-10-09 → 2027-06-30 (-101d) |  | -244d → -159d |  |
| CO-R16-S12-RD-F-170 | Application of Road Marking Works For Road Works- S.W 14-[Road 16] | 2027-09-28 → 2027-06-20 (-100d) | 2027-10-09 → 2027-06-30 (-101d) |  | -244d → -159d |  |
| CO-R16-S12-RD-F-130 | Installation Works of Traffic Signs Boards For Road Works- S.W 14-[Road 16] | 2027-09-30 → 2027-06-22 (-100d) | 2027-10-11 → 2027-07-03 (-100d) |  | -243d → -158d | CO-R16.S12-RD-P-130, CO-R15-S10-RD-F-130, PRO-R16-RD-DL-140 FF+3d, CO-R16-S12-RD-F-170 FF → CO-R16.S12-RD-P-130, CO-R15-S10-RD-F-130, PRO-R16-RD-DL-140 FF+3d, CO-R16-S12-RD-F-170 FF, CO-R16-PW-TF-100, CO-R16-PW-TF-110, CO-R16-PW-TF-120, CO-R16-SW-TF-100, CO-R16-SW-TF-110, CO-R16-SW-TF-130, CO-R16-SD-TF-100, CO-R16-SL-TF-220, CO-R16-SL-TF-230, CO-R16-IR-TF-160, CO-R16-MV-TF-220 |
| 9 | **Road 17 Local 1 ( 500 LM )** |  | 2027-10-20 → 2027-07-12 (-100d) |  |  |  |
| 10 | **Sewage Network** | 2027-07-13 → 2026-09-15 (-301d) | 2027-08-12 → 2027-06-15 (-58d) |  |  |  |
| TF | **Testing and Finishes** | 2027-07-13 → 2026-09-15 (-301d) | 2027-08-12 → 2027-06-15 (-58d) |  |  |  |
| CO-R17-SW-TF-100 | Final Testing For Main Line of Sewage Network-[Road 17] | 2027-07-13 → 2026-09-15 A (-301d) | 2027-07-26 → 2026-09-21 A (-308d) | 0% → 100% | -229d → none |  |
| CO-R17-SW-TF-110 | Install Manhole Cover Works for External Finishes of Sewage Network-[Road 17] | 2027-07-27 → 2027-05-30 (-58d) | 2027-08-09 → 2027-06-12 (-58d) |  | -229d → -179d |  |
| CO-R17-SW-TF-130 | Main Manhole Internal Finishes (Benching + Insulation) of Sewage Network-[Road 17] | 2027-07-31 → 2027-06-02 (-59d) | 2027-08-12 → 2027-06-15 (-58d) |  | -229d → -179d |  |
| 11 | **Storm Drainage Network** |  | 2027-09-01 → 2027-07-05 (-58d) |  |  |  |
| TF | **Testing and Finishes** |  | 2027-09-01 → 2027-07-05 (-58d) |  |  |  |
| CO-R17-SD-TF-100 | Testing Work for Pipes of Storm Drainage Network-[Road 17] | 2026-11-28 → 2026-11-23 (-5d) | 2026-12-15 → 2026-12-10 (-5d) |  | -15d → -11d |  |
| CO-R17-SD-TF-110 | Install Catch Basin Cover Works for External Finishes of Storm Drainage Network-[Road 17] | 2027-01-11 → 2026-12-07 (-35d) | 2027-01-24 → 2026-12-20 (-35d) |  | -49d → -19d |  |
| CO-R17-SD-TF-130 | Catch Basin Internal Finishes (Benching + Insulation ) for Storm Drainage Network-[Road 17] | 2027-08-19 → 2027-06-22 (-58d) | 2027-09-01 → 2027-07-05 (-58d) |  | -217d → -167d |  |
| 9 | **Potable Water Network** | 2027-05-30 → 2027-04-05 (-55d) | 2027-09-19 → 2027-06-05 (-106d) |  |  |  |
| TF | **Testing and Finishes** | 2027-05-30 → 2027-04-05 (-55d) | 2027-09-19 → 2027-06-05 (-106d) |  |  |  |
| CO-R17-PW-TF-100 | Final Finishes works and Covers for Valves and Valve Chambers of Potable Water Network-[Road 17] | 2027-05-30 → 2027-04-05 (-55d) | 2027-06-12 → 2027-04-18 (-55d) |  | -179d → -137d |  |
| CO-R17-PW-TF-120 | Fire Hydrant Finishies (S.Box + Safety + Marker Post ) of Potable Water Network-[Road 17] | 2027-06-13 → 2027-04-19 (-55d) | 2027-06-26 → 2027-05-02 (-55d) |  | -179d → -137d |  |
| CO-R17-PW-TF-110 | Testing Work for Main Line of Potable Water Network-[Road 17] | 2027-09-06 → 2027-05-23 (-106d) | 2027-09-19 → 2027-06-05 (-106d) |  | -264d → -173d |  |
| 13 | **Irrigation Network** | 2027-07-12 → 2027-04-25 (-78d) | 2027-07-22 → 2027-05-05 (-78d) |  |  |  |
| TF | **Testing and Finishes** | 2027-07-12 → 2027-04-25 (-78d) | 2027-07-22 → 2027-05-05 (-78d) |  |  |  |
| CO-R17-IR-TF-170 | Final Testing (pressure tests) of Irrigation Network-[Road 17] | 2027-07-12 → 2027-04-25 (-78d) | 2027-07-22 → 2027-05-05 (-78d) |  | -220d → -158d |  |
| 12 | **Street Lighting Network** | 2027-08-15 → 2027-03-08 (-160d) | 2027-10-03 → 2027-06-24 (-101d) |  |  |  |
| TR | **Termination and Testing Works** | 2027-08-15 → 2027-03-08 (-160d) | 2027-10-03 → 2027-06-24 (-101d) |  |  |  |
| CO-R17-SL-TF-240 | Termination Works For Lighting Poles Cables of Street Lighting Network-[Road 17] | 2027-08-15 → 2027-03-08 (-160d) | 2027-08-28 → 2027-03-24 (-157d) |  | -262d → -133d |  |
| CO-R17-SL-TF-250 | Termination Works For Panel Board Cables of Street Lighting Network-[Road 17] | 2027-09-16 → 2027-06-09 (-99d) | 2027-09-30 → 2027-06-22 (-100d) |  | -292d → -207d |  |
| CO-R17-SL-TF-380 | Testing Works For Panel Board Cables of Street Lighting Network-[Road 17] | 2027-10-02 → 2027-06-23 (-101d) | 2027-10-03 → 2027-06-24 (-101d) |  | -292d → -207d |  |
| 14 | **Medium Voltage Network** | 2027-02-14 → 2026-11-30 (-76d) | 2027-02-21 → 2026-12-07 (-76d) |  |  |  |
| TT | **Termination and Testing Works** | 2027-02-14 → 2026-11-30 (-76d) | 2027-02-21 → 2026-12-07 (-76d) |  |  |  |
| CO-R17-MV-TF-240 | Termination Works of Medium Voltage Network-[Road 17] | 2027-02-14 → 2026-11-30 (-76d) | 2027-02-21 → 2026-12-07 (-76d) |  | -99d → -34d |  |
| 1 | **Road Works** |  | 2027-10-20 → 2027-07-12 (-100d) |  |  |  |
| TS | **Traffic Signs Boards and Roads Marking** | 2027-10-10 → 2027-07-01 (-101d) | 2027-10-20 → 2027-07-12 (-100d) |  |  |  |
| CO-R17-S13-RD-F-100 | Installation Works of Traffic Signs Boards For Road Works- S.W 15-[Road 17] | 2027-10-10 → 2027-07-01 (-101d) | 2027-10-20 → 2027-07-12 (-100d) |  | -244d → -159d |  |
| CO-R17-S13-RD-F-160 | Application of Road Marking Works For Road Works- S.W 15-[Road 17] | 2027-10-10 → 2027-07-01 (-101d) | 2027-10-20 → 2027-07-12 (-100d) |  | -244d → -159d |  |
| CO-R17-S14-RD-F-170 | Application of Road Marking Works For Road Works- S.W 16-[Road 17] | 2027-10-10 → 2027-07-01 (-101d) | 2027-10-20 → 2027-07-12 (-100d) |  | -244d → -159d |  |
| CO-R17-S14-RD-F-130 | Installation Works of Traffic Signs Boards For Road Works- S.W 16-[Road 17] | 2027-10-13 → 2027-07-05 (-100d) | 2027-10-20 → 2027-07-12 (-100d) |  | -244d → -159d |  |
| 3 | **Road 18 Local 1 ( 479 LM )** |  | 2027-12-06 → 2027-08-17 (-111d) |  |  |  |
| 10 | **Sewage Network** | 2027-06-12 → 2026-09-15 (-270d) | 2027-07-12 → 2027-03-28 (-106d) |  |  |  |

| ID | Task | Start | Finish | Complete | Total float | Predecessors |
| --- | --- | --- | --- | --- | --- | --- |
| TF | **Testing and Finishes** | 2027-06-12 → 2026-09-15 (-270d) | 2027-07-12 → 2027-03-28 (-106d) |  |  |  |
| CO-R18-SW-TF-100 | Final Testing For Main Line of Sewage Network-[Road 18] | 2027-06-12 → 2026-09-15 A (-270d) | 2027-06-24 → 2026-09-21 A (-276d) | 0% → 100% | -199d → none | CO-R09-SW-TF-100, CO-R11.S06-RD-P-100, CO-R18.S15-RD-P-160 SS, CO-R18.S15-RD-P-160 FF → CO-R11.S06-RD-P-100, CO-R18.S15-RD-P-160 SS, CO-R18.S15-RD-P-160 FF |
| CO-R18-SW-TF-110 | Install Manhole Cover Works for External Finishes of Sewage Network-[Road 18] | 2027-06-26 → 2027-03-08 (-110d) | 2027-07-08 → 2027-03-24 (-106d) |  | -199d → -113d | CO-R18-SW-TF-100, ENG-SH-SW-ML-A-110, ENG-SH-SW-ML-A-110 FF, CO-R09-SW-TF-110, ENG-MS-SW-ML-A-110, ENG-MS-SW-ML-A-110 FF, PRO-R18-SW-DL-170 → CO-R18-SW-TF-100, ENG-SH-SW-ML-A-110, ENG-SH-SW-ML-A-110 FF, CO-R09-SW-TF-110, ENG-MS-SW-ML-A-110, ENG-MS-SW-ML-A-110 FF, PRO-R18-SW-DL-170, CO-R09-SW-TF-100 |
| CO-R18-SW-TF-130 | Main Manhole Internal Finishes (Benching + Insulation) of Sewage Network-[Road 18] | 2027-06-29 → 2027-03-15 (-106d) | 2027-07-12 → 2027-03-28 (-106d) |  | -202d → -116d |  |
| 11 | **Storm Drainage Network** |  | 2027-07-18 → 2027-04-04 (-105d) |  |  |  |
| TF | **Testing and Finishes** |  | 2027-07-18 → 2027-04-04 (-105d) |  |  |  |
| CO-R18-SD-TF-100 | Testing Work for Pipes of Storm Drainage Network-[Road 18] | 2027-06-12 → 2027-02-21 (-111d) | 2027-06-29 → 2027-03-15 (-106d) |  | -178d → -92d |  |
| CO-R18-SD-TF-110 | Install Catch Basin Cover Works for External Finishes of Storm Drainage Network-[Road 18] | 2027-04-03 → 2027-02-23 (-39d) | 2027-04-20 → 2027-03-16 (-35d) |  | -123d → -93d |  |
| CO-R18-SD-TF-130 | Catch Basin Internal Finishes (Benching + Insulation ) for Storm Drainage Network-[Road 18] | 2027-06-30 → 2027-03-17 (-105d) | 2027-07-18 → 2027-04-04 (-105d) |  | -178d → -93d |  |
| 9 | **Potable Water Network** | 2027-07-12 → 2027-03-22 (-112d) | 2027-10-04 → 2027-06-19 (-107d) |  |  |  |
| TF | **Testing and Finishes** | 2027-07-12 → 2027-03-22 (-112d) | 2027-10-04 → 2027-06-19 (-107d) |  |  |  |
| CO-R18-PW-TF-100 | Final Finishes works and Covers for Valves and Valve Chambers of Potable Water Network-[Road 18] | 2027-07-12 → 2027-03-22 (-112d) | 2027-07-25 → 2027-04-04 (-112d) |  | -216d → -125d |  |
| CO-R18-PW-TF-120 | Fire Hydrant Finishies (S.Box + Safety + Marker Post ) of Potable Water Network-[Road 18] | 2027-07-26 → 2027-04-05 (-112d) | 2027-08-08 → 2027-04-18 (-112d) |  | -216d → -125d |  |
| CO-R18-PW-TF-110 | Testing Work for Main Line of Potable Water Network-[Road 18] | 2027-09-20 → 2027-06-06 (-106d) | 2027-10-04 → 2027-06-19 (-107d) |  | -264d → -173d |  |
| 13 | **Irrigation Network** | 2027-06-27 → 2027-03-13 (-106d) | 2027-07-14 → 2027-03-30 (-106d) |  |  |  |
| TF | **Testing and Finishes** | 2027-06-27 → 2027-03-13 (-106d) | 2027-07-14 → 2027-03-30 (-106d) |  |  |  |
| CO-R18-IR-TF-110 | Final Testing (pressure tests) of Irrigation Network-[Road 18] | 2027-06-27 → 2027-03-13 (-106d) | 2027-07-14 → 2027-03-30 (-106d) |  | -213d → -127d |  |
| 12 | **Street Lighting Network** | 2027-06-17 → 2027-02-16 (-121d) | 2027-09-13 → 2027-06-03 (-102d) |  |  |  |
| TR | **Termination and Testing Works** | 2027-06-17 → 2027-02-16 (-121d) | 2027-09-13 → 2027-06-03 (-102d) |  |  |  |
| CO-R18-SL-TF-120 | Termination Works For Lighting Poles Cables of Street Lighting Network-[Road 18] | 2027-06-17 → 2027-02-16 (-121d) | 2027-07-01 → 2027-03-03 (-120d) |  | -212.25d → -117.25d |  |
| CO-R18-SL-TF-130 | Termination Works For Panel Board Cables of Street Lighting Network-[Road 18] | 2027-08-28 → 2027-05-12 (-108d) | 2027-09-11 → 2027-06-01 (-102d) |  | -275.5d → -188.25d |  |
| CO-R18-SL-TF-380 | Testing Works For Panel Board Cables of Street Lighting Network-[Road 18] | 2027-09-11 → 2027-06-01 (-102d) | 2027-09-13 → 2027-06-03 (-102d) |  | -275.5d → -188.25d |  |
| 14 | **Medium Voltage Network** | 2027-03-02 → 2027-03-06 (+4d) | 2027-03-23 → 2027-03-27 (+4d) |  |  |  |
| TT | **Termination and Testing Works** | 2027-03-02 → 2027-03-06 (+4d) | 2027-03-23 → 2027-03-27 (+4d) |  |  |  |
| CO-R18-MV-TF-120 | Termination Works of Medium Voltage Network-[Road 18] | 2027-03-02 → 2027-03-06 (+4d) | 2027-03-23 → 2027-03-27 (+4d) |  | -121d → -124d |  |
| 1 | **Road Works** |  | 2027-12-06 → 2027-08-17 (-111d) |  |  |  |
| TS | **Traffic Signs Boards and Roads Marking** | 2027-10-27 → 2027-07-07 (-112d) | 2027-12-06 → 2027-08-17 (-111d) |  |  |  |
| CO-R18-S15-RD-F-120 | Application of Road Marking Works For Road Works- S.W 03-[Road 18] | 2027-10-27 → 2027-07-07 (-112d) | 2027-11-10 → 2027-07-21 (-112d) |  | -283.5d → -188.5d |  |
| CO-R18-S15-RD-F-130 | Installation Works of Traffic Signs Boards For Road Works- S.W 03-[Road 18] | 2027-11-10 → 2027-07-21 (-112d) | 2027-11-24 → 2027-08-04 (-112d) |  | -283.5d → -188.5d |  |
| CO-R18-S16-RD-F-140 | Application of Road Marking Works For Road Works- S.W 04-[Road 18] | 2027-11-10 → 2027-07-31 (-102d) | 2027-11-28 → 2027-08-17 (-103d) |  | -276.5d → -189.5d |  |
| CO-R18-S16-RD-F-160 | Installation Works of Traffic Signs Boards For Road Works- S.W 04-[Road 18] | 2027-11-24 → 2027-08-05 (-111d) | 2027-12-06 → 2027-08-17 (-111d) |  | -283.5d → -189.5d |  |
| GEN | **Independent Works** |  | 2027-12-06 → 2027-08-17 (-111d) |  |  |  |
| CON | **Tie In To Existing Networks** | 2027-03-24 → 2027-03-14 (-10d) | 2027-12-06 → 2027-08-17 (-111d) |  |  |  |
| 1 | **Phase 2 Block "J"** | 2027-03-24 → 2027-03-14 (-10d) | 2027-12-06 → 2027-08-17 (-111d) |  |  |  |
| 2 | **Road 09 Local 2 ( 2278 LM )** | 2027-03-24 → 2027-03-28 (+4d) | 2027-10-24 → 2027-07-15 (-101d) |  |  |  |
| 15 | **Storm Drainage Network** | 2027-09-02 → 2027-07-06 (-58d) | 2027-09-09 → 2027-07-13 (-58d) |  |  |  |
| TIE-SD-R09 | TIE IN Existing Network For Storm Drainage Network | 2027-09-02 → 2027-07-06 (-58d) | 2027-09-09 → 2027-07-13 (-58d) |  | -207d → -157d |  |
| 16 | **Sewage Network** | 2027-08-14 → 2027-06-16 (-59d) | 2027-08-26 → 2027-06-29 (-58d) |  |  |  |
| TIE-SW-R09 | TIE IN Existing Network For Sewage Network | 2027-08-14 → 2027-06-16 (-59d) | 2027-08-26 → 2027-06-29 (-58d) |  | -195d → -145d |  |
| 17 | **Potable Water Network** | 2027-10-05 → 2027-06-20 (-107d) | 2027-10-18 → 2027-07-03 (-107d) |  |  |  |
| TIE-PW-R09 | TIE IN Existing Network For Potable Water Network | 2027-10-05 → 2027-06-20 (-107d) | 2027-10-18 → 2027-07-03 (-107d) |  | -239d → -148d |  |
| 1 | **Irrigation Network** | 2027-07-24 → 2027-05-06 (-79d) | 2027-08-05 → 2027-05-25 (-72d) |  |  |  |
| TIE-IR-R09 | TIE IN Existing Network For Irrigation Network | 2027-07-24 → 2027-05-06 (-79d) | 2027-08-05 → 2027-05-25 (-72d) |  | -177d → -115d |  |
| 18 | **Meduim Voltage Network** | 2027-03-24 → 2027-03-28 (+4d) | 2027-04-13 → 2027-04-17 (+4d) |  |  |  |
| TIE-R09-MV | TIE IN Existing Network For Medium Voltage Network | 2027-03-24 → 2027-03-28 (+4d) | 2027-04-13 → 2027-04-17 (+4d) |  | -84d → -87d |  |
| 2 | **Street Lighting Network** | 2027-10-04 → 2027-06-26 (-100d) | 2027-10-24 → 2027-07-15 (-101d) |  |  |  |
| TIE-R09-SL | TIE IN Existing Network For Street Lighting Network | 2027-10-04 → 2027-06-26 (-100d) | 2027-10-24 → 2027-07-15 (-101d) |  | -244d → -159d |  |
| 3 | **Telecom Network** | 2027-05-11 → 2027-03-28 (-44d) | 2027-05-27 → 2027-04-07 (-50d) |  |  |  |
| TIE-R09-TE | TIE IN Existing Network For Telecom Network | 2027-05-11 → 2027-03-28 (-44d) | 2027-05-27 → 2027-04-07 (-50d) |  | -117d → -79d |  |
| 4 | **Road 10 Local 2 ( 2352 LM )** | 2027-03-24 → 2027-03-28 (+4d) | 2027-12-06 → 2027-08-17 (-111d) |  |  |  |
| 15 | **Storm Drainage Network** | 2027-09-02 → 2027-07-06 (-58d) | 2027-09-09 → 2027-07-13 (-58d) |  |  |  |
| TIE-SD-R10 | TIE IN Existing Network For Storm Drainage Network | 2027-09-02 → 2027-07-06 (-58d) | 2027-09-09 → 2027-07-13 (-58d) |  | -207d → -157d |  |
| 16 | **Sewage Network** | 2027-08-14 → 2027-06-16 (-59d) | 2027-08-26 → 2027-06-29 (-58d) |  |  |  |
| TIE-SW-R10 | TIE IN Existing Network For Sewage Network | 2027-08-14 → 2027-06-16 (-59d) | 2027-08-26 → 2027-06-29 (-58d) |  | -195d → -145d |  |
| 17 | **Potable Water Network** | 2027-10-05 → 2027-06-20 (-107d) | 2027-10-18 → 2027-07-03 (-107d) |  |  |  |
| TIE-PW-R10 | TIE IN Existing Network For Potable Water Network | 2027-10-05 → 2027-06-20 (-107d) | 2027-10-18 → 2027-07-03 (-107d) |  | -239d → -148d |  |
| 1 | **Irrigation Network** | 2027-07-24 → 2027-05-06 (-79d) | 2027-08-05 → 2027-05-25 (-72d) |  |  |  |
| TIE-IR-R10 | TIE IN Existing Network For Irrigation Network | 2027-07-24 → 2027-05-06 (-79d) | 2027-08-05 → 2027-05-25 (-72d) |  | -177d → -115d |  |
| 18 | **Meduim Voltage Network** | 2027-03-24 → 2027-03-28 (+4d) | 2027-04-13 → 2027-04-17 (+4d) |  |  |  |
| TIE-R10-MV | TIE IN Existing Network For Medium Voltage Network | 2027-03-24 → 2027-03-28 (+4d) | 2027-04-13 → 2027-04-17 (+4d) |  | -84d → -87d |  |
| 2 | **Street Lighting Network** | 2027-10-04 → 2027-06-26 (-100d) | 2027-10-24 → 2027-07-15 (-101d) |  |  |  |
| TIE-R10-SL | TIE IN Existing Network For Street Lighting Network | 2027-10-04 → 2027-06-26 (-100d) | 2027-10-24 → 2027-07-15 (-101d) |  | -244d → -159d |  |
| 4 | **Telecom Network** | 2027-05-11 → 2027-03-28 (-44d) | 2027-05-27 → 2027-04-07 (-50d) |  |  |  |
| TIE-R10-TE | TIE IN Existing Network For Telecom Network | 2027-05-11 → 2027-03-28 (-44d) | 2027-05-27 → 2027-04-07 (-50d) |  | -122d → -84d |  |
| 3 | **Road Works** | 2027-11-30 → 2027-08-11 (-111d) | 2027-12-06 → 2027-08-17 (-111d) |  |  |  |
| TIE-R10-RD | TIE IN Existing Network For Road Works | 2027-11-30 → 2027-08-11 (-111d) | 2027-12-06 → 2027-08-17 (-111d) |  | -280.5d → -186.5d |  |
| 5 | **Road 11 Local 1 ( 670 LM )** | 2027-03-24 → 2027-03-28 (+4d) | 2027-12-06 → 2027-08-17 (-111d) |  |  |  |
| 15 | **Storm Drainage Network** | 2027-09-02 → 2027-07-06 (-58d) | 2027-09-09 → 2027-07-13 (-58d) |  |  |  |
| TIE-SD-R11 | TIE IN Existing Network For Storm Drainage Network | 2027-09-02 → 2027-07-06 (-58d) | 2027-09-09 → 2027-07-13 (-58d) |  | -207d → -157d |  |
| 16 | **Sewage Network** | 2027-08-14 → 2027-06-16 (-59d) | 2027-08-26 → 2027-06-29 (-58d) |  |  |  |

| ID | Task | Start | Finish | Total float |
| --- | --- | --- | --- | --- |
| TIE-SW-R11 | TIE IN Existing Network For Sewage Network | 2027-08-14 → 2027-06-16 (-59d) | 2027-08-26 → 2027-06-29 (-58d) | -195d → -145d |
| 17 | **Potable Water Network** | 2027-10-05 → 2027-06-20 (-107d) | 2027-10-18 → 2027-07-03 (-107d) |  |
| TIE-PW-R11 | TIE IN Existing Network For Potable Water Network | 2027-10-05 → 2027-06-20 (-107d) | 2027-10-18 → 2027-07-03 (-107d) | -239d → -148d |
| 1 | **Irrigation Network** | 2027-07-24 → 2027-05-06 (-79d) | 2027-08-05 → 2027-05-25 (-72d) |  |
| TIE-IR-R11 | TIE IN Existing Network For Irrigation Network | 2027-07-24 → 2027-05-06 (-79d) | 2027-08-05 → 2027-05-25 (-72d) | -177d → -115d |
| 18 | **Meduim Voltage Network** | 2027-03-24 → 2027-03-28 (+4d) | 2027-04-13 → 2027-04-17 (+4d) |  |
| TIE-R11-MV | TIE IN Existing Network For Medium Voltage Network | 2027-03-24 → 2027-03-28 (+4d) | 2027-04-13 → 2027-04-17 (+4d) | -84d → -87d |
| 2 | **Street Lighting Network** | 2027-10-04 → 2027-06-26 (-100d) | 2027-10-24 → 2027-07-15 (-101d) |  |
| TIE-R11-SL | TIE IN Existing Network For Street Lighting Network | 2027-10-04 → 2027-06-26 (-100d) | 2027-10-24 → 2027-07-15 (-101d) | -244d → -159d |
| 4 | **Telecom Network** | 2027-05-11 → 2027-03-28 (-44d) | 2027-05-27 → 2027-04-07 (-50d) |  |
| TIE-R11-TE | TIE IN Existing Network For Telecom Network | 2027-05-11 → 2027-03-28 (-44d) | 2027-05-27 → 2027-04-07 (-50d) | -118d → -80d |
| 3 | **Road Works** | 2027-11-30 → 2027-08-11 (-111d) | 2027-12-06 → 2027-08-17 (-111d) |  |
| TIE-R11-RD | TIE IN Existing Network For Road Works | 2027-11-30 → 2027-08-11 (-111d) | 2027-12-06 → 2027-08-17 (-111d) | -276.5d → -182.5d |
| 6 | **Road 14 Local 1 ( 584 LM )** | 2027-03-24 → 2027-03-28 (+4d) | 2027-12-06 → 2027-08-17 (-111d) |  |
| 15 | **Storm Drainage Network** | 2027-09-02 → 2027-07-06 (-58d) | 2027-09-09 → 2027-07-13 (-58d) |  |
| TIE-SD-R14 | TIE IN Existing Network For Storm Drainage Network | 2027-09-02 → 2027-07-06 (-58d) | 2027-09-09 → 2027-07-13 (-58d) | -207d → -157d |
| 16 | **Sewage Network** | 2027-08-14 → 2027-06-16 (-59d) | 2027-08-26 → 2027-06-29 (-58d) |  |
| TIE-SW-R14 | TIE IN Existing Network For Sewage Network | 2027-08-14 → 2027-06-16 (-59d) | 2027-08-26 → 2027-06-29 (-58d) | -195d → -145d |
| 17 | **Potable Water Network** | 2027-10-05 → 2027-06-20 (-107d) | 2027-10-18 → 2027-07-03 (-107d) |  |
| TIE-PW-R14 | TIE IN Existing Network For Potable Water Network | 2027-10-05 → 2027-06-20 (-107d) | 2027-10-18 → 2027-07-03 (-107d) | -239d → -148d |
| 1 | **Irrigation Network** | 2027-07-24 → 2027-05-06 (-79d) | 2027-08-05 → 2027-05-25 (-72d) |  |
| TIE-IR-R14 | TIE IN Existing Network For Irrigation Network | 2027-07-24 → 2027-05-06 (-79d) | 2027-08-05 → 2027-05-25 (-72d) | -177d → -115d |
| 18 | **Meduim Voltage Network** | 2027-03-24 → 2027-03-28 (+4d) | 2027-04-13 → 2027-04-17 (+4d) |  |
| TIE-R14-MV | TIE IN Existing Network For Medium Voltage Network | 2027-03-24 → 2027-03-28 (+4d) | 2027-04-13 → 2027-04-17 (+4d) | -84d → -87d |
| 2 | **Street Lighting Network** | 2027-10-04 → 2027-06-26 (-100d) | 2027-10-24 → 2027-07-15 (-101d) |  |
| TIE-R14-SL | TIE IN Existing Network For Street Lighting Network | 2027-10-04 → 2027-06-26 (-100d) | 2027-10-24 → 2027-07-15 (-101d) | -244d → -159d |
| 4 | **Telecom Network** | 2027-05-11 → 2027-03-28 (-44d) | 2027-05-27 → 2027-04-07 (-50d) |  |
| TIE-R14-TE | TIE IN Existing Network For Telecom Network | 2027-05-11 → 2027-03-28 (-44d) | 2027-05-27 → 2027-04-07 (-50d) | -117d → -79d |
| 3 | **Road Works** | 2027-11-30 → 2027-08-11 (-111d) | 2027-12-06 → 2027-08-17 (-111d) |  |
| TIE-R14-RD | TIE IN Existing Network For Road Works | 2027-11-30 → 2027-08-11 (-111d) | 2027-12-06 → 2027-08-17 (-111d) | -280.5d → -186.5d |
| 7 | **Road 15 Local 1 ( 556 LM )** | 2027-03-24 → 2027-03-28 (+4d) | 2027-10-24 → 2027-07-15 (-101d) |  |
| 15 | **Storm Drainage Network** | 2027-09-02 → 2027-07-06 (-58d) | 2027-09-09 → 2027-07-13 (-58d) |  |
| TIE-SD-R15 | TIE IN Existing Network For Storm Drainage Network | 2027-09-02 → 2027-07-06 (-58d) | 2027-09-09 → 2027-07-13 (-58d) | -207d → -157d |
| 16 | **Sewage Network** | 2027-08-14 → 2027-06-16 (-59d) | 2027-08-26 → 2027-06-29 (-58d) |  |
| TIE-SW-R15 | TIE IN Existing Network For Sewage Network | 2027-08-14 → 2027-06-16 (-59d) | 2027-08-26 → 2027-06-29 (-58d) | -195d → -145d |
| 17 | **Potable Water Network** | 2027-10-05 → 2027-06-20 (-107d) | 2027-10-18 → 2027-07-03 (-107d) |  |
| TIE-PW-R15 | TIE IN Existing Network For Potable Water Network | 2027-10-05 → 2027-06-20 (-107d) | 2027-10-18 → 2027-07-03 (-107d) | -239d → -148d |
| 1 | **Irrigation Network** | 2027-07-24 → 2027-05-06 (-79d) | 2027-08-05 → 2027-05-25 (-72d) |  |
| TIE-IR-R15 | TIE IN Existing Network For Irrigation Network | 2027-07-24 → 2027-05-06 (-79d) | 2027-08-05 → 2027-05-25 (-72d) | -177d → -115d |
| 18 | **Meduim Voltage Network** | 2027-03-24 → 2027-03-28 (+4d) | 2027-04-13 → 2027-04-17 (+4d) |  |
| TIE-R15-MV | TIE IN Existing Network For Medium Voltage Network | 2027-03-24 → 2027-03-28 (+4d) | 2027-04-13 → 2027-04-17 (+4d) | -84d → -87d |
| 2 | **Street Lighting Network** | 2027-10-04 → 2027-06-26 (-100d) | 2027-10-24 → 2027-07-15 (-101d) |  |
| TIE-R15-SL | TIE IN Existing Network For Street Lighting Network | 2027-10-04 → 2027-06-26 (-100d) | 2027-10-24 → 2027-07-15 (-101d) | -244d → -159d |
| 3 | **Telecom Network** | 2027-05-11 → 2027-03-28 (-44d) | 2027-05-27 → 2027-04-07 (-50d) |  |
| TIE-R15-TE | TIE IN Existing Network For Telecom Network | 2027-05-11 → 2027-03-28 (-44d) | 2027-05-27 → 2027-04-07 (-50d) | -117d → -79d |
| 8 | **Road 16 Local 1 ( 527 LM )** | 2027-03-24 → 2027-03-28 (+4d) | 2027-10-24 → 2027-07-15 (-101d) |  |
| 15 | **Storm Drainage Network** | 2027-09-02 → 2027-07-06 (-58d) | 2027-09-09 → 2027-07-13 (-58d) |  |
| TIE-SD-R16 | TIE IN Existing Network For Storm Drainage Network | 2027-09-02 → 2027-07-06 (-58d) | 2027-09-09 → 2027-07-13 (-58d) | -207d → -157d |
| 16 | **Sewage Network** | 2027-08-14 → 2027-06-16 (-59d) | 2027-08-26 → 2027-06-29 (-58d) |  |
| TIE-SW-R16 | TIE IN Existing Network For Sewage Network | 2027-08-14 → 2027-06-16 (-59d) | 2027-08-26 → 2027-06-29 (-58d) | -195d → -145d |
| 17 | **Potable Water Network** | 2027-10-05 → 2027-06-20 (-107d) | 2027-10-18 → 2027-07-03 (-107d) |  |
| TIE-PW-R16 | TIE IN Existing Network For Potable Water Network | 2027-10-05 → 2027-06-20 (-107d) | 2027-10-18 → 2027-07-03 (-107d) | -239d → -148d |
| 1 | **Irrigation Network** | 2027-07-24 → 2027-05-06 (-79d) | 2027-08-05 → 2027-05-25 (-72d) |  |
| TIE-IR-R16 | TIE IN Existing Network For Irrigation Network | 2027-07-24 → 2027-05-06 (-79d) | 2027-08-05 → 2027-05-25 (-72d) | -177d → -115d |
| 18 | **Meduim Voltage Network** | 2027-03-24 → 2027-03-28 (+4d) | 2027-04-13 → 2027-04-17 (+4d) |  |
| TIE-R16-MV | TIE IN Existing Network For Medium Voltage Network | 2027-03-24 → 2027-03-28 (+4d) | 2027-04-13 → 2027-04-17 (+4d) | -84d → -87d |
| 2 | **Street Lighting Network** | 2027-10-04 → 2027-06-26 (-100d) | 2027-10-24 → 2027-07-15 (-101d) |  |
| TIE-R16-SL | TIE IN Existing Network For Street Lighting Network | 2027-10-04 → 2027-06-26 (-100d) | 2027-10-24 → 2027-07-15 (-101d) | -244d → -159d |
| 3 | **Telecom Network** | 2027-05-11 → 2027-03-28 (-44d) | 2027-05-27 → 2027-04-07 (-50d) |  |
| TIE-R16-TE | TIE IN Existing Network For Telecom Network | 2027-05-11 → 2027-03-28 (-44d) | 2027-05-27 → 2027-04-07 (-50d) | -117d → -79d |
| 9 | **Road 17 Local 1 ( 500 LM )** | 2027-03-24 → 2027-03-28 (+4d) | 2027-10-24 → 2027-07-15 (-101d) |  |
| 15 | **Storm Drainage Network** | 2027-09-02 → 2027-07-06 (-58d) | 2027-09-09 → 2027-07-13 (-58d) |  |
| TIE-SD-R17 | TIE IN Existing Network For Storm Drainage Network | 2027-09-02 → 2027-07-06 (-58d) | 2027-09-09 → 2027-07-13 (-58d) | -207d → -157d |
| 16 | **Sewage Network** | 2027-08-14 → 2027-06-16 (-59d) | 2027-08-26 → 2027-06-29 (-58d) |  |
| TIE-SW-R17 | TIE IN Existing Network For Sewage Network | 2027-08-14 → 2027-06-16 (-59d) | 2027-08-26 → 2027-06-29 (-58d) | -195d → -145d |
| 17 | **Potable Water Network** | 2027-10-05 → 2027-06-20 (-107d) | 2027-10-18 → 2027-07-03 (-107d) |  |
| TIE-PW-R17 | TIE IN Existing Network For Potable Water Network | 2027-10-05 → 2027-06-20 (-107d) | 2027-10-18 → 2027-07-03 (-107d) | -239d → -148d |
| 1 | **Irrigation Network** | 2027-07-24 → 2027-05-06 (-79d) | 2027-08-05 → 2027-05-25 (-72d) |  |
| TIE-IR-R17 | TIE IN Existing Network For Irrigation Network | 2027-07-24 → 2027-05-06 (-79d) | 2027-08-05 → 2027-05-25 (-72d) | -177d → -115d |
| 18 | **Meduim Voltage Network** | 2027-03-24 → 2027-03-28 (+4d) | 2027-04-13 → 2027-04-17 (+4d) |  |

| ID | Task | Start | Finish | Complete | Total float |
| --- | --- | --- | --- | --- | --- |
| TIE-R17-MV | TIE IN Existing Network For Medium Voltage Network | 2027-03-24 → 2027-03-28 (+4d) | 2027-04-13 → 2027-04-17 (+4d) |  | -84d → -87d |
| 2 | **Street Lighting Network** | 2027-10-04 → 2027-06-26 (-100d) | 2027-10-24 → 2027-07-15 (-101d) |  |  |
| TIE-R17-SL | TIE IN Existing Network For Street Lighting Network | 2027-10-04 → 2027-06-26 (-100d) | 2027-10-24 → 2027-07-15 (-101d) |  | -244d → -159d |
| 3 | **Telecom Network** | 2027-05-11 → 2027-03-28 (-44d) | 2027-05-27 → 2027-04-07 (-50d) |  |  |
| TIE-R17-TE | TIE IN Existing Network For Telecom Network | 2027-05-11 → 2027-03-28 (-44d) | 2027-05-27 → 2027-04-07 (-50d) |  | -117d → -79d |
| 1 | **Road 18 Local 1 ( 479 LM )** | 2027-03-24 → 2027-03-14 (-10d) | 2027-10-24 → 2027-07-15 (-101d) |  |  |
| 15 | **Storm Drainage Network** | 2027-09-02 → 2027-07-06 (-58d) | 2027-09-09 → 2027-07-13 (-58d) |  |  |
| TIE-SD-R18 | TIE IN Existing Network For Storm Drainage Network | 2027-09-02 → 2027-07-06 (-58d) | 2027-09-09 → 2027-07-13 (-58d) |  | -203d → -153d |
| 16 | **Sewage Network** | 2027-08-14 → 2027-06-16 (-59d) | 2027-08-26 → 2027-06-29 (-58d) |  |  |
| TIE-SW-R18 | TIE IN Existing Network For Sewage Network | 2027-08-14 → 2027-06-16 (-59d) | 2027-08-26 → 2027-06-29 (-58d) |  | -191d → -141d |
| 17 | **Potable Water Network** | 2027-10-05 → 2027-06-20 (-107d) | 2027-10-18 → 2027-07-03 (-107d) |  |  |
| TIE-PW-R18 | TIE IN Existing Network For Potable Water Network | 2027-10-05 → 2027-06-20 (-107d) | 2027-10-18 → 2027-07-03 (-107d) |  | -235d → -144d |
| 1 | **Irrigation Network** | 2027-07-24 → 2027-05-06 (-79d) | 2027-08-05 → 2027-05-25 (-72d) |  |  |
| TIE-IR-R18 | TIE IN Existing Network For Irrigation Network | 2027-07-24 → 2027-05-06 (-79d) | 2027-08-05 → 2027-05-25 (-72d) |  | -173d → -111d |
| 18 | **Meduim Voltage Network** | 2027-03-24 → 2027-03-28 (+4d) | 2027-04-13 → 2027-04-17 (+4d) |  |  |
| TIE-R18-MV10 | TIE IN Existing Network For Medium Voltage Network | 2027-03-24 → 2027-03-28 (+4d) | 2027-04-13 → 2027-04-17 (+4d) |  | -80d → -83d |
| 2 | **Street Lighting Network** | 2027-10-04 → 2027-06-26 (-100d) | 2027-10-24 → 2027-07-15 (-101d) |  |  |
| TIE-R18-SL10 | TIE IN Existing Network For Street Lighting Network | 2027-10-04 → 2027-06-26 (-100d) | 2027-10-24 → 2027-07-15 (-101d) |  | -240d → -155d |
| 3 | **Telecom Network** | 2027-05-11 → 2027-03-14 (-58d) | 2027-05-30 → 2027-03-27 (-64d) |  |  |
| TIE-R18-TE10 | TIE IN Existing Network For Telecom Network | 2027-05-11 → 2027-03-14 (-58d) | 2027-05-30 → 2027-03-27 (-64d) |  | -115d → -65d |
| 2 | **Sewage Pump Stations** |  | 2027-06-15 → 2027-05-30 (-16d) |  |  |
| 1 | **Sewage Pump Station ( PS 06 )** |  | 2027-06-15 → 2027-05-30 (-16d) |  |  |
| 1 | **Pump Station Main Building** |  | 2027-04-10 → 2027-03-24 (-17d) |  |  |
| CO-SW-PS7-MB-110 | Concrete Works of Superstrucure |  | 2026-11-16 → 2026-10-31 (-16d) | 0% → 70% | -155d → -141d |
| CO-SW-PS7-MB-120 | Internal Finishes Works of Superstrucure | 2026-11-17 → 2026-11-01 (-16d) | 2026-12-21 → 2026-12-05 (-16d) |  | -155d → -141d |
| CO-SW-PS7-MB-130 | Internal Electrical Works | 2026-12-22 → 2026-12-06 (-16d) | 2027-01-25 → 2027-01-09 (-16d) |  | -118d → -104d |
| CO-SW-PS7-MB-140 | Internal Mechanical Works | 2027-01-26 → 2027-01-10 (-16d) | 2027-03-02 → 2027-02-13 (-17d) |  | -118d → -104d |
| CO-SW-PS7-MB-150 | Electromechanical Main Works | 2027-03-03 → 2027-02-14 (-17d) | 2027-04-10 → 2027-03-24 (-17d) |  | -118d → -104d |
| 2 | **Generator With Umbrella Tank** | 2026-12-22 → 2026-12-06 (-16d) | 2027-03-23 → 2027-03-03 (-20d) |  |  |
| CO-SW-PS7-GN-100 | Concrete Works of Base | 2026-12-22 → 2026-12-06 (-16d) | 2027-01-04 → 2026-12-19 (-16d) |  | -155d → -141d |
| CO-SW-PS7-GN-110 | Install Manually Operated Fuel Pump | 2027-01-05 → 2026-12-20 (-16d) | 2027-01-28 → 2027-01-12 (-16d) |  | -155d → -141d |
| CO-SW-PS7-GN-120 | Install Ground Fuel Tank | 2027-01-30 → 2027-01-13 (-17d) | 2027-02-23 → 2027-02-06 (-17d) |  | -155d → -141d |
| CO-SW-PS7-GN-130 | Fix Steel Structure for Umbrella | 2027-02-24 → 2027-02-07 (-17d) | 2027-03-23 → 2027-03-03 (-20d) |  | -155d → -141d |
| 5 | **Motor Control Centre Building** | 2026-11-17 → 2026-11-01 (-16d) | 2027-04-11 → 2027-03-25 (-17d) |  |  |
| CO-SW-PS7-MCC-100 | Excavation Main Bulding | 2026-11-17 → 2026-11-01 (-16d) | 2026-12-05 → 2026-11-18 (-17d) |  | -119d → -105d |
| CO-SW-PS7-MCC-110 | Concrete Works of Superstrucure | 2026-12-06 → 2026-11-19 (-17d) | 2026-12-29 → 2026-12-13 (-16d) |  | -119d → -105d |
| CO-SW-PS7-MCC-120 | Internal Finishes Works of Superstrucure | 2026-12-30 → 2026-12-14 (-16d) | 2027-01-23 → 2027-01-06 (-17d) |  | -119d → -105d |
| CO-SW-PS7-MCC-130 | Internal Electrical Works | 2027-01-24 → 2027-01-07 (-17d) | 2027-02-16 → 2027-01-31 (-16d) |  | -119d → -105d |
| CO-SW-PS7-MCC-140 | Internal Mechanical Works | 2027-02-17 → 2027-02-01 (-16d) | 2027-03-17 → 2027-02-25 (-20d) |  | -119d → -105d |
| CO-SW-PS7-MCC-150 | Electromechanical Main Works | 2027-03-18 → 2027-02-27 (-19d) | 2027-04-11 → 2027-03-25 (-17d) |  | -119d → -105d |
| 6 | **Simple Building Works** | 2027-03-24 → 2027-03-04 (-20d) | 2027-05-26 → 2027-05-04 (-22d) |  |  |
| CO-SW-PS7-SBL-100 | Perimeter Fencing | 2027-03-24 → 2027-03-04 (-20d) | 2027-04-19 → 2027-04-03 (-16d) |  | -155d → -141d |
| CO-SW-PS7-SBL-110 | Outside Lighting | 2027-04-20 → 2027-04-04 (-16d) | 2027-05-26 → 2027-05-04 (-22d) |  | -153d → -139d |
| CO-SW-PS7-SBL-120 | Outside Duct Works | 2027-04-20 → 2027-04-04 (-16d) | 2027-05-22 → 2027-04-29 (-23d) |  | -155d → -141d |
| CO-SW-PS7-SBL-130 | Rectangular Wet Wells | 2027-04-20 → 2027-04-04 (-16d) | 2027-05-26 → 2027-05-04 (-22d) |  | -153d → -139d |
| CO-SW-PS7-SBL-140 | Round Wet Well Structure for basket screen | 2027-04-20 → 2027-04-04 (-16d) | 2027-05-26 → 2027-05-04 (-22d) |  | -153d → -139d |
| CO-SW-PS7-SBL-150 | Motorized basket screen | 2027-04-20 → 2027-04-04 (-16d) | 2027-05-26 → 2027-05-04 (-22d) |  | -153d → -139d |
| 7 | **Site Work and Service Road** | 2027-05-23 → 2027-05-01 (-22d) | 2027-06-15 → 2027-05-30 (-16d) |  |  |
| CO-SW-PS7-SWS-100 | Outside Strom Drainage System | 2027-05-23 → 2027-05-01 (-22d) | 2027-05-29 → 2027-05-06 (-23d) |  | -155d → -141d |
| CO-SW-PS7-SWS-110 | Bituminous Works | 2027-05-30 → 2027-05-08 (-22d) | 2027-06-15 → 2027-05-30 (-16d) |  | -155d → -141d |
| 1 | **Storm Drainage Ponds** |  | 2027-08-02 → 2027-04-25 (-99d) |  |  |
| 1 | **Storm Drainage Pond ( PO-J1)** |  | 2027-03-24 → 2027-03-31 (+7d) |  |  |
| CO-SD-PO-K1-110-P1 | Finished Grouted Riprap - PART 1 | 2026-10-13 → 2026-10-20 (+7d) | 2026-11-05 → 2026-11-12 (+7d) |  | -147d → -153d |
| CO-SD-PO-K1-110-P2 | Finished Grouted Riprap - PART 2 | 2026-11-07 → 2026-11-14 (+7d) | 2026-11-30 → 2026-12-07 (+7d) |  | -147d → -153d |
| CO-SD-PO-K1-110-P3 | Finished Grouted Riprap - PART 3 | 2026-12-01 → 2026-12-08 (+7d) | 2026-12-24 → 2026-12-31 (+7d) |  | -147d → -153d |
| CO-SD-PO-K1-110-P4 | Finished Grouted Riprap - PART 4 | 2026-12-26 → 2027-01-02 (+7d) | 2027-01-18 → 2027-01-25 (+7d) |  | -147d → -153d |
| CO-SD-PO-K1-120 | Outfall structure | 2027-01-19 → 2027-01-26 (+7d) | 2027-02-17 → 2027-02-25 (+8d) |  | -147d → -153d |
| CO-SD-PO-K1-130 | Acess Entrace Ramp | 2027-02-18 → 2027-02-27 (+9d) | 2027-03-24 → 2027-03-31 (+7d) |  | -147d → -153d |
| 2 | **Storm Drainage Pond ( PO-J2)** | 2027-01-21 → 2026-10-20 (-93d) | 2027-08-02 → 2027-04-25 (-99d) |  |  |
| CO-SD-PO-K2-100-P1 | Excavation & Filling Works - PART 1 | 2027-01-21 → 2026-10-20 (-93d) | 2027-02-14 → 2026-11-12 (-94d) |  | -226d → -146d |
| CO-SD-PO-K2-100-P2 | Excavation & Filling Works - PART 2 | 2027-02-15 → 2026-11-14 (-93d) | 2027-03-15 → 2026-12-07 (-98d) |  | -226d → -146d |
| CO-SD-PO-K2-110-P1 | Finished Grouted Riprap - PART 1 | 2027-02-15 → 2026-11-14 (-93d) | 2027-03-15 → 2026-12-07 (-98d) |  | -226d → -146d |
| CO-SD-PO-K2-100-P3 | Excavation & Filling Works - PART 3 | 2027-03-16 → 2026-12-08 (-98d) | 2027-04-08 → 2026-12-31 (-98d) |  | -226d → -146d |
| CO-SD-PO-K2-110-P2 | Finished Grouted Riprap - PART 2 | 2027-03-16 → 2026-12-08 (-98d) | 2027-04-08 → 2026-12-31 (-98d) |  | -226d → -146d |
| CO-SD-PO-K2-100-P4 | Excavation & Filling Works - PART 4 | 2027-04-10 → 2027-01-02 (-98d) | 2027-05-03 → 2027-01-25 (-98d) |  | -226d → -146d |
| CO-SD-PO-K2-110-P3 | Finished Grouted Riprap - PART 3 | 2027-04-10 → 2027-01-02 (-98d) | 2027-05-03 → 2027-01-25 (-98d) |  | -226d → -146d |
| CO-SD-PO-K2-110-P4 | Finished Grouted Riprap - PART 4 | 2027-05-04 → 2027-01-26 (-98d) | 2027-06-02 → 2027-02-18 (-104d) |  | -226d → -146d |
| CO-SD-PO-K2-120 | Outfall structure | 2027-06-03 → 2027-02-20 (-103d) | 2027-07-03 → 2027-03-25 (-100d) |  | -226d → -146d |
| CO-SD-PO-K2-130 | Acess Entrace Ramp | 2027-07-04 → 2027-03-27 (-99d) | 2027-08-02 → 2027-04-25 (-99d) |  | -226d → -146d |
| TC | **Testing and Comissioning** |  | 2027-12-06 → 2027-08-17 (-111d) |  |  |

| ID | Task | Start | Finish | Complete | Total float |
| --- | --- | --- | --- | --- | --- |
| INF | **Infrastructure Networks** |  | 2027-12-06 → 2027-08-17 (-111d) |  |  |
| PW1 | **Irrigation Network** |  | 2027-08-05 → 2027-05-25 (-72d) |  |  |
| T/C-IR | Testing and Commissioning of Irrigation Network |  | 2027-08-05 → 2027-05-25 (-72d) | 25% → 50% | -173d → -111d |
| PW | **Potable Water Network** |  | 2027-10-18 → 2027-07-03 (-107d) |  |  |
| T/C-PW | Testing and Commissioning of Potable Water Network |  | 2027-10-18 → 2027-07-03 (-107d) |  | -235d → -144d |
| SW | **Sewage Network** |  | 2027-10-07 → 2027-07-05 (-94d) |  |  |
| T/C-SW | Testing and Commissioning of Sewage Network |  | 2027-10-07 → 2027-07-05 (-94d) |  | -226d → -146d |
| SD | **Storm Drainage Network** |  | 2027-09-09 → 2027-07-13 (-58d) |  |  |
| T/C-SD | Testing and Commissioning of Storm Drainage Network |  | 2027-09-09 → 2027-07-13 (-58d) | 85% → 88% | -203d → -153d |
| SL | **Street Lighting Network** |  | 2027-10-24 → 2027-07-15 (-101d) |  |  |
| T/C-SL | Testing and Commissioning of Street Lighting Network |  | 2027-10-24 → 2027-07-15 (-101d) |  | -240d → -155d |
| TE | **Telecom Network** |  | 2027-09-06 → 2027-06-05 (-93d) |  |  |
| T/C-TE | Testing and Commissioning of Telecom Network |  | 2027-09-06 → 2027-06-05 (-93d) |  | -200d → -120d |
| MV | **Medium Voltage Network** |  | 2027-09-06 → 2027-06-02 (-96d) |  |  |
| T/C-MV | Testing and Commissioning of Medium Voltage Network |  | 2027-09-06 → 2027-06-02 (-96d) | 55% → 70% | -200d → -118d |
| RD | **Road Works** |  | 2027-12-06 → 2027-08-17 (-111d) |  |  |
| T/C-RD | Testing and Commissioning of Road Works |  | 2027-12-06 → 2027-08-17 (-111d) |  | -276.5d → -182.5d |
| 1 | **Independent Works** | 2027-08-03 → 2027-04-26 (-99d) | 2027-10-07 → 2027-07-05 (-94d) |  |  |
| T/C-DPO | Testing and Commissioning of Storm Drainage Ponds | 2027-08-03 → 2027-04-26 (-99d) | 2027-09-06 → 2027-06-05 (-93d) |  | -226d → -146d |
| T/C-SPS | Testing and Commissioning of Sewage Pump Stations | 2027-09-07 → 2027-06-06 (-93d) | 2027-10-07 → 2027-07-05 (-94d) |  | -226d → -146d |
| 1 | **Handing over and close out** | 2027-06-16 → 2027-05-06 (-41d) | 2027-12-20 → 2027-08-31 (-111d) |  |  |
| 2 | **As-Built** | 2027-06-16 → 2027-05-06 (-41d) | 2027-12-14 → 2027-08-25 (-111d) |  |  |
| HO-180 | Submission As-Built Drawing For Irrigation Network | 2027-07-24 → 2027-05-06 (-79d) | 2027-08-05 → 2027-05-25 (-72d) |  | -187d → -125d |
| HO-130 | Submission As-Built Drawing For Pond | 2027-08-07 → 2027-05-26 (-73d) | 2027-08-19 → 2027-06-08 (-72d) |  | -187d → -125d |
| HO-160 | Submission As-Built Drawing For Telecom Network | 2027-08-07 → 2027-05-26 (-73d) | 2027-08-19 → 2027-06-08 (-72d) |  | -187d → -125d |
| HO-170 | Submission As-Built Drawing For Medium Voltage Network | 2027-08-07 → 2027-05-26 (-73d) | 2027-08-19 → 2027-06-08 (-72d) |  | -187d → -125d |
| HO-210 | Submission As-Built Drawing For Pump station | 2027-06-16 → 2027-05-31 (-16d) | 2027-06-29 → 2027-06-13 (-16d) |  | -143d → -129d |
| HO-190 | As-Built Drawing For Potable Water Network | 2027-10-05 → 2027-06-20 (-107d) | 2027-10-18 → 2027-07-03 (-107d) |  | -237d → -146d |
| HO-150 | Submission As-Built Drawing For Street Lighting Network | 2027-10-04 → 2027-06-26 (-100d) | 2027-10-17 → 2027-07-08 (-101d) |  | -236d → -151d |
| HO-200 | Submission As-Built Drawing For Storm Network | 2027-09-02 → 2027-07-06 (-58d) | 2027-09-15 → 2027-07-19 (-58d) |  | -210d → -160d |
| HO-100 | Submission As-Built Drawing For Sewage Network | 2027-12-06 → 2027-08-17 (-111d) | 2027-12-14 → 2027-08-25 (-111d) |  | -280.5d → -186.5d |
| HO-140 | Submission As-Built Drawing For Roads Network | 2027-12-06 → 2027-08-17 (-111d) | 2027-12-12 → 2027-08-23 (-111d) |  | -283.5d → -189.5d |
| 1 | **De-Mobilization Works** | 2027-12-08 → 2027-08-19 (-111d) | 2027-12-14 → 2027-08-25 (-111d) |  |  |
| HO-120 | Remove material stock & Storage area | 2027-12-08 → 2027-08-19 (-111d) | 2027-12-14 → 2027-08-25 (-111d) |  | -278.5d → -184.5d |
| HO-220 | Removing Portable Caravan | 2027-12-08 → 2027-08-19 (-111d) | 2027-12-14 → 2027-08-25 (-111d) |  | -278.5d → -184.5d |
| HO-230 | Remove Temporary Car Shades | 2027-12-08 → 2027-08-19 (-111d) | 2027-12-14 → 2027-08-25 (-111d) |  | -278.5d → -184.5d |
| 3 | **Handing Over** | 2027-12-08 → 2027-08-19 (-111d) | 2027-12-20 → 2027-08-31 (-111d) |  |  |
| HO-110 | Final Testing Work | 2027-12-08 → 2027-08-19 (-111d) | 2027-12-14 → 2027-08-25 (-111d) |  | -278.5d → -184.5d |
| HO-250 | Review B.O.Q Qty. to ensure compliance with the actual status | 2027-12-12 → 2027-08-23 (-111d) | 2027-12-18 → 2027-08-29 (-111d) |  | -283.5d → -189.5d |
| HO-260 | Review FIR Approval to ensure compliance with the actual status | 2027-12-12 → 2027-08-23 (-111d) | 2027-12-18 → 2027-08-29 (-111d) |  | -283.5d → -189.5d |
| HO-270 | Review the sample drawing to ensure compliance with the actual status | 2027-12-12 → 2027-08-23 (-111d) | 2027-12-18 → 2027-08-29 (-111d) |  | -283.5d → -189.5d |
| HO-240 | Final Walkthrough and Inspection | 2027-12-18 → 2027-08-29 (-111d) | 2027-12-20 → 2027-08-31 (-111d) |  | -283.5d → -189.5d |
| HO-280 | Punch List Completion | 2027-12-18 → 2027-08-29 (-111d) | 2027-12-20 → 2027-08-31 (-111d) |  | -283.5d → -189.5d |

## Version 6 (data date 2026-10-27, saved 2026-10-29, file 03.DAM3-02-007-UPS Level 5 -27-10-2026.xer)

Last finish 2027-08-31 → 2027-09-07 (+7d). Complete tasks 1221 → 1227.

Changed:

| ID | Task | Start | Finish | Total float | Other |
| --- | --- | --- | --- | --- | --- |
| MS | **Key Milestones** |  | 2027-08-31 → 2027-09-07 (+7d) |  |  |
| CM | **Contractual Milestones** |  | 2027-08-31 → 2027-09-07 (+7d) |  |  |
| MS-CF-TE | Completion of Construction Works for Telecom Network | 2027-03-13 → 2027-03-18 (+5d) | 2027-03-13 → 2027-03-18 (+5d) | -160d → -165d |  |
| MS-CF-MV | Completion of Construction Works for Medium Voltage Network | 2027-03-27 → 2027-04-07 (+11d) | 2027-03-27 → 2027-04-07 (+11d) | -124d → -134d |  |
| MS-CF-IR | Completion of Construction Works for Irrigation Network | 2027-05-05 → 2027-05-11 (+6d) | 2027-05-05 → 2027-05-11 (+6d) | -158d → -163d |  |
| MS-CF-SW | Completion of Construction Works for Sewage Network | 2027-06-15 → 2027-06-21 (+6d) | 2027-06-15 → 2027-06-21 (+6d) | -179d → -184d |  |
| MS-CF-PW | Completion of Construction Works for Potable Water Network | 2027-06-19 → 2027-06-27 (+8d) | 2027-06-19 → 2027-06-27 (+8d) | -173d → -180d |  |
| MS-CF-SL | Completion of Construction Works for Street Lighting Network | 2027-06-24 → 2027-06-30 (+6d) | 2027-06-24 → 2027-06-30 (+6d) | -207d → -212d |  |
| MS-CF-SD | Completion of Construction Works for Storm Drainage Network | 2027-07-05 → 2027-07-11 (+6d) | 2027-07-05 → 2027-07-11 (+6d) | -167d → -172d |  |
| MS-CF-RD | Completion of Construction Works for Road Works | 2027-08-17 → 2027-08-24 (+7d) | 2027-08-17 → 2027-08-24 (+7d) | -189.5d → -195.5d |  |
| MS-CF-PF | Project Completion Date | 2027-08-31 → 2027-09-07 (+7d) | 2027-08-31 → 2027-09-07 (+7d) | -189.5d → -195.5d |  |
| CM1 | **Control Milestones** |  | 2026-12-14 → 2026-12-22 (+8d) |  |  |
| MS-CS-MV | The Employer Approval NOC for Medium Voltage Network | 2026-12-14 → 2026-12-22 (+8d) | 2026-12-14 → 2026-12-22 (+8d) | -39d → -46d |  |
| MM | **Intermediate Milestones** | 2027-04-25 → 2027-05-02 (+7d) | 2027-08-17 → 2027-08-24 (+7d) |  |  |
| MS-MO-20 | Completion of Storm Drainage Ponds | 2027-04-25 → 2027-05-02 (+7d) | 2027-04-25 → 2027-05-02 (+7d) | -104d → -110d |  |
| MS-MO-30 | Completion of Tie In To Existing Networks | 2027-08-17 → 2027-08-24 (+7d) | 2027-08-17 → 2027-08-24 (+7d) | -186.5d → -192.5d |  |
| ENG-MT-MV-ML-A-100 | Material Approval for Medium Voltage Cables of Medium Voltage Network |  |  |  | resources Excavation for Trench size 40cm wide and 80cm deep ( Maximum 1 cable 33kv) [2610]; Excavation for Trench size 60cm wide and 80cm deep ( for Max two cables 33 kv) [148.5]; Excavation for Trench size 90cm wide and 80cm deep ( Maximum 3 cable 33kv) [661.5]; Excavation for Trench size 120cm wide and 80cm deep ( Maximum 4cable 33kv) [225]; Excavation for Trench size 150cm wide and 80cm deep ( Maximum 4cable 33kv) [832.5]; Duct bank for (2) 33 kv cables [90]; Duct bank for (4) 33 kv cables [594]; Duct bank for (6) 33 kv cables [270]; 33kv 3Cx400 mm² Al XLPE / LLDPE /PVC Cable [25771.5]; 33kv 3Cx400 mm² Al XLPE /LLDPE/PVC [60] → Excavation for Trench size 40cm wide and 80cm deep ( Maximum 1 cable 33kv) [2610]; Excavation for Trench size 60cm wide and 80cm deep ( for Max two cables 33 kv) [148.5]; Excavation for Trench size 90cm wide and 80cm deep ( Maximum 3 cable 33kv) [661.5]; Excavation for Trench size 120cm wide and 80cm deep ( Maximum 4cable 33kv) [225]; Excavation for Trench size 150cm wide and 80cm deep ( Maximum 4cable 33kv) [832.5]; Duct bank for (2) 33 kv cables [90]; Duct bank for (4) 33 kv cables [594]; Duct bank for (6) 33 kv cables [270]; 33kv 3Cx400 mmï¿½ Al XLPE / LLDPE /PVC Cable [25771.5]; 33kv 3Cx400 mmï¿½ Al XLPE /LLDPE/PVC [60] |
| ENG-MT-MV-SS-A-100 | Material Approval for RMU Concrete Foundations of Medium Voltage Network |  |  |  | resources 33kv 3Cx400 mm² Al XLPE/LLDPE Cable Termination [20] → 33kv 3Cx400 mmï¿½ Al XLPE/LLDPE Cable Termination [20] |
| ENG-MT-SL-ML-A-100 | Material Approval for Lighting Cables of Street Lighting Network |  |  |  | resources Supply, installation , test and operation of cables, Copper, (4Cx25mm²,Cu/XLPE/SWA/PVC +1x16mm² PVC/PVC) [21000]; Street Lighting Feeder pillars , Includes foundation and draw pits [6] → Supply, installation , test and operation of cables, Copper, (4Cx25mmï¿½,Cu/XLPE/SWA/PVC +1x16mmï¿½ PVC/PVC) [21000]; Street Lighting Feeder pillars , Includes foundation and draw pits [6] |
| ENG-MT-SPS-MC-A-110 | Material Approval for Electromechanical Works for Sewage Pump Stations |  |  |  | resources Constant speed drive, sewage pumps, centrifugal submersible type; 2 duty / 1 standby capable of delivering a flow rate of flow 424 l/s against a total head of 22m, rate includes provision of MCC [1]; Odour control system [1]; Gate valves for the pump station [3]; Non return valves for the pump station [3]; Penstok for the pump station [1]; Standby Diesel Generator Set 400/230KVA, 3P, 60Hz in Sound Attenuated Enclosure KVA rating by contractor as per total load onsite after pumps selection [1]; Supply, install, test and commission of manually operated fuel pump, The pump should be supplied with all accessories as specified. [1]; Supply, install, test and commission of Fuel pump with capacity of not less than 1 hour to fill the daily tank of generator at required head. [1]; supply, install, test & commission Automatic Transfer Switch ATS panel including all accessories & works required. [1]; Supply, install, test and commission under ground fuel tank for 3 days of continuous operation of the standby generator at full load. The tank should be supplied with all accessories such as black steel pipes, float switches with two contactors …etc. as s [1]; 4Cx 185mm2 Cu/XLPE//PVC from nearest power supply (SEC) and generator to the ATS and from ATS to MCC-SPS [600]; 4Cx 95mm2 Cu/XLPE//PVC from nearest power supply (SEC) and generator to the ATS and from ATS to MCC-SPS [400]; 4Cx 10mm2 Cu/XLPE/SWA/PVC from MCC-SPS to ELP [50]; 4Cx 150mm2 + 1Cx25mm2 SUBMERGED RUBBER INSULATED FLEXIBLE CABLE from MCC to PUMP1& PUMP2. [210]; 4Cx 10mm2 + 1Cx10mm2 Cu/XLPE/PVC FROM MCC-SPS to DB-SPS [50]; 4Cx 10mm2 + 1Cx10mm2 Cu/XLPE/PVC FROM MCC-SPS to Penstok [100]; 4Cx 10mm2 + 1Cx10mm2 Cu/XLPE/PVC FROM MCC-SPS to Odor Control Unit [100]; 4Cx 6mm2 + 1Cx6mm2 Cu/XLPE/PVC FROM MCC-SPS to the mechanical bar screen [80]; 3Cx 6mm2 Cu/XLPE/PVC FROM MCC-SPS to the two fuel pumps. [100]; 3Cx 4mm2 Cu/XLPE/PVC to the AC. [80]; MCC [1]; Surge protection system study [1]; Surge protection system [1]; Local Control Panel, IP 65 [4]; Isolator/disconnect switches IP65 [16]; DB-SPS Panel [4]; ELP Panel: phtocell , timer,40 Ampere, 3P, IP66,60Hz incomer MCCB & 5ways outgoing MCCB [4]; Electrical Hand Hole 600mm x 600mm x 800mm concrete hand hole with hot dip galvanized heavy duty steel cover [10]; Electrical Hand Hole 400mm x 400mm x 600mm concrete hand hole with hot dip galvanized heavy duty steel cover [10]; Surfaced Mounted Light [8]; 13A DOUBLE SWITCH SOCKET OUTLET (WEATHER PROOF) [8]; 20A SWITCH SOCKET OUTLET (FOR SPLIT UNIT), (WEATHER PROOF) [8]; Supply, install and test the following grounding and lightning system including ground wires, ground rods, inspection pits, terminations, bonding/clamping, civil works and all materials and accessories required to complete the work according to specificat [2]; Supply and install telephone and fire alarm system including smoke detector, cabinet, control panel, cables, conduits, switches, and other accessories to complete as per drawings and specifications. [1]; "Supply, installation, testing and commissioning of PLC system, serving the pumping station and all related utilities. The PLC shall consists but limited to the following:; Supply, installation, testing and commissioning of all control, instrumentation( as shown on the P & ID drawings cable schedule) including all installation accessories such as termination kits, lugs, glands, cable containments, junction boxes , conduits, [2]; Supply, installation, testing and commissioning of all field instruments such as hydrostatic level meter, level switches, flow switch, and all necessary instruments including all installation accessories, etc. all as per specifications and design drawings [2]; DX wall mounted Split/AC [2]; CO2 fire extinguishers [2]; Powder fire extinguishers [2]; Flood lights shall be high pole with 250 watt HPS luminaire [4]; 1 - way duct - not exceeding 1.5m deep [1]; 2 - way duct - not exceeding 1.5m deep [1]; 8 - way duct - not exceeding 1.5m deep [1]; Earth pits [1]; Cable draw pit, 600x600mm [1] → Constant speed drive, sewage pumps, centrifugal submersible type; 2 duty / 1 standby capable of delivering a flow rate of flow 424 l/s against a total head of 22m, rate includes provision of MCC [1]; Odour control system [1]; Gate valves for the pump station [3]; Non return valves for the pump station [3]; Penstok for the pump station [1]; Standby Diesel Generator Set 400/230KVA, 3P, 60Hz in Sound Attenuated Enclosure KVA rating by contractor as per total load onsite after pumps selection [1]; Supply, install, test and commission of manually operated fuel pump, The pump should be supplied with all accessories as specified. [1]; Supply, install, test and commission of Fuel pump with capacity of not less than 1 hour to fill the daily tank of generator at required head. [1]; supply, install, test & commission Automatic Transfer Switch ATS panel including all accessories & works required. [1]; Supply, install, test and commission under ground fuel tank for 3 days of continuous operation of the standby generator at full load. The tank should be supplied with all accessories such as black steel pipes, float switches with two contactors ï¿½etc. as [1]; 4Cx 185mm2 Cu/XLPE//PVC from nearest power supply (SEC) and generator to the ATS and from ATS to MCC-SPS [600]; 4Cx 95mm2 Cu/XLPE//PVC from nearest power supply (SEC) and generator to the ATS and from ATS to MCC-SPS [400]; 4Cx 10mm2 Cu/XLPE/SWA/PVC from MCC-SPS to ELP [50]; 4Cx 150mm2 + 1Cx25mm2 SUBMERGED RUBBER INSULATED FLEXIBLE CABLE from MCC to PUMP1& PUMP2. [210]; 4Cx 10mm2 + 1Cx10mm2 Cu/XLPE/PVC FROM MCC-SPS to DB-SPS [50]; 4Cx 10mm2 + 1Cx10mm2 Cu/XLPE/PVC FROM MCC-SPS to Penstok [100]; 4Cx 10mm2 + 1Cx10mm2 Cu/XLPE/PVC FROM MCC-SPS to Odor Control Unit [100]; 4Cx 6mm2 + 1Cx6mm2 Cu/XLPE/PVC FROM MCC-SPS to the mechanical bar screen [80]; 3Cx 6mm2 Cu/XLPE/PVC FROM MCC-SPS to the two fuel pumps. [100]; 3Cx 4mm2 Cu/XLPE/PVC to the AC. [80]; MCC [1]; Surge protection system study [1]; Surge protection system [1]; Local Control Panel, IP 65 [4]; Isolator/disconnect switches IP65 [16]; DB-SPS Panel [4]; ELP Panel: phtocell , timer,40 Ampere, 3P, IP66,60Hz incomer MCCB & 5ways outgoing MCCB [4]; Electrical Hand Hole 600mm x 600mm x 800mm concrete hand hole with hot dip galvanized heavy duty steel cover [10]; Electrical Hand Hole 400mm x 400mm x 600mm concrete hand hole with hot dip galvanized heavy duty steel cover [10]; Surfaced Mounted Light [8]; 13A DOUBLE SWITCH SOCKET OUTLET (WEATHER PROOF) [8]; 20A SWITCH SOCKET OUTLET (FOR SPLIT UNIT), (WEATHER PROOF) [8]; Supply, install and test the following grounding and lightning system including ground wires, ground rods, inspection pits, terminations, bonding/clamping, civil works and all materials and accessories required to complete the work according to specificat [2]; Supply and install telephone and fire alarm system including smoke detector, cabinet, control panel, cables, conduits, switches, and other accessories to complete as per drawings and specifications. [1]; "Supply, installation, testing and commissioning of PLC system, serving the pumping station and all related utilities. The PLC shall consists but limited to the following:; Supply, installation, testing and commissioning of all control, instrumentation( as shown on the P & ID drawings cable schedule) including all installation accessories such as termination kits, lugs, glands, cable containments, junction boxes , conduits, [2]; Supply, installation, testing and commissioning of all field instruments such as hydrostatic level meter, level switches, flow switch, and all necessary instruments including all installation accessories, etc. all as per specifications and design drawings [2]; DX wall mounted Split/AC [2]; CO2 fire extinguishers [2]; Powder fire extinguishers [2]; Flood lights shall be high pole with 250 watt HPS luminaire [4]; 1 - way duct - not exceeding 1.5m deep [1]; 2 - way duct - not exceeding 1.5m deep [1]; 8 - way duct - not exceeding 1.5m deep [1]; Earth pits [1]; Cable draw pit, 600x600mm [1] |
| PROC | **Procurement Cycle** |  | 2026-12-29 → 2026-12-26 (-3d) |  |  |
| NLL | **Short Lead Time Items** |  | 2026-12-29 → 2026-12-26 (-3d) |  |  |
| INF | **Infrastructure Networks** |  | 2026-12-29 → 2026-12-26 (-3d) |  |  |
| RD | **Road Works** |  | 2026-11-25 → 2026-12-02 (+7d) |  |  |
| 1DL | **1st Material Delivery & Site Inspection** |  | 2026-10-26 → 2026-11-02 (+7d) |  |  |
| 2 | **Pavement Works** | 2026-07-13 → 2026-02-17 (-146d) |  |  |  |
| PRO-RD-1DL-140 | 1ST Material Delivery for Interlock Tiles of Landscaping | 2026-07-13 A → 2026-02-17 A (-146d) |  |  |  |
| PRO-RD-1DL-150 | 1ST Material Delivery for Curbstones of Landscaping | 2026-07-13 A → 2026-02-17 A (-146d) |  |  |  |
| 3 | **Traffic Signs Boards and Roads Marking** | 2026-10-20 → 2026-10-27 (+7d) | 2026-10-26 → 2026-11-02 (+7d) |  |  |
| PRO-RD-1DL-160 | 1ST Material Delivery for Traffic Signs Boards of Road Works | 2026-10-20 → 2026-10-27 (+7d) | 2026-10-26 → 2026-11-02 (+7d) | -25d → -31d |  |
| PRO-RD-1DL-170 | 1ST Material Delivery for Road Markings of Road Works | 2026-10-20 → 2026-10-27 (+7d) | 2026-10-26 → 2026-11-02 (+7d) | -25d → -31d |  |
| DL | **Material Delivery & Site Inspection** |  | 2026-11-25 → 2026-12-02 (+7d) |  |  |
| 1 | **Road 18 Local 1 ( 479 LM )** |  | 2026-11-25 → 2026-12-02 (+7d) |  |  |
| PRO-R18-RD-DL-250 | Material Delivery & Site Inspection for Bituminous Base & Wearing Courses of Road Works | 2025-10-09 A → 2025-09-23 A (-16d) |  |  |  |
| 3 | **Traffic Signs Boards and Roads Marking** | 2026-10-27 → 2026-11-03 (+7d) | 2026-11-25 → 2026-12-02 (+7d) |  |  |
| PRO-R18-RD-DL-200 | Material Delivery & Site Inspection of Traffic Signs Boards For Road Works | 2026-10-27 → 2026-11-03 (+7d) | 2026-11-25 → 2026-12-02 (+7d) | -25d → -31d |  |
| PRO-R18-RD-DL-210 | Material Delivery & Site Inspection of Road Markings For Road Works | 2026-10-27 → 2026-11-03 (+7d) | 2026-11-25 → 2026-12-02 (+7d) | -25d → -31d |  |
| 9 | **Road 17 Local 1 ( 500 LM )** | 2025-07-08 → 2025-07-06 (-2d) | 2026-11-25 → 2026-12-02 (+7d) |  |  |
| 1 | **Pre-Bituminous Construction** | 2025-07-08 → 2025-07-06 (-2d) |  |  |  |
| PRO-R17-RD-DL-120 | Material Delivery & Site Inspection for Subgrade of Road Works | 2025-07-08 A → 2025-07-06 A (-2d) |  |  |  |
| 4 | **Bituminous Construction** | 2025-09-23 → 2025-09-20 (-3d) |  |  |  |
| PRO-R17-RD-DL-160 | Material Delivery & Site Inspection for Prime Coat of Road Works | 2025-09-23 A → 2025-09-20 A (-3d) |  |  |  |
| 3 | **Traffic Signs Boards and Roads Marking** | 2026-10-27 → 2026-11-03 (+7d) | 2026-11-25 → 2026-12-02 (+7d) |  |  |
| PRO-R17-RD-DL-140 | Material Delivery & Site Inspection of Traffic Signs Boards For Road Works | 2026-10-27 → 2026-11-03 (+7d) | 2026-11-25 → 2026-12-02 (+7d) | -25d → -31d |  |
| PRO-R17-RD-DL-150 | Material Delivery & Site Inspection of Road Markings For Road Works | 2026-10-27 → 2026-11-03 (+7d) | 2026-11-25 → 2026-12-02 (+7d) | -25d → -31d |  |
| 8 | **Road 16 Local 1 ( 527 LM )** |  | 2026-11-25 → 2026-12-02 (+7d) |  |  |
| PRO-R16-RD-DL-110 | Material Delivery & Site Inspection for Aggregate Base Course of Road Works | 2025-10-11 A → 2025-09-17 A (-24d) |  |  |  |
| 3 | **Traffic Signs Boards and Roads Marking** | 2026-10-27 → 2026-11-03 (+7d) | 2026-11-25 → 2026-12-02 (+7d) |  |  |
| PRO-R16-RD-DL-140 | Material Delivery & Site Inspection of Traffic Signs Boards For Road Works | 2026-10-27 → 2026-11-03 (+7d) | 2026-11-25 → 2026-12-02 (+7d) | -25d → -31d |  |
| PRO-R16-RD-DL-150 | Material Delivery & Site Inspection of Road Markings For Road Works | 2026-10-27 → 2026-11-03 (+7d) | 2026-11-25 → 2026-12-02 (+7d) | -25d → -31d |  |
| 7 | **Road 15 Local 1 ( 556 LM )** |  | 2026-11-25 → 2026-12-02 (+7d) |  |  |
| 3 | **Traffic Signs Boards and Roads Marking** | 2026-10-27 → 2026-11-03 (+7d) | 2026-11-25 → 2026-12-02 (+7d) |  |  |
| PRO-R15-RD-DL-140 | Material Delivery & Site Inspection of Traffic Signs Boards For Road Works | 2026-10-27 → 2026-11-03 (+7d) | 2026-11-25 → 2026-12-02 (+7d) | -25d → -31d |  |
| PRO-R15-RD-DL-150 | Material Delivery & Site Inspection of Road Markings For Road Works | 2026-10-27 → 2026-11-03 (+7d) | 2026-11-25 → 2026-12-02 (+7d) | -25d → -31d |  |
| 4 | **Road 10 Local 2 ( 2352 LM )** |  | 2026-11-25 → 2026-12-02 (+7d) |  |  |
| 4 | **Bituminous Construction** | 2026-10-20 → 2026-10-27 (+7d) | 2026-11-18 → 2026-11-25 (+7d) |  |  |
| PRO-R10-RD-DL-160 | Material Delivery & Site Inspection for Prime Coat of Road Works | 2026-10-20 → 2026-10-27 (+7d) | 2026-11-18 → 2026-11-25 (+7d) | -34d → -40d |  |
| PRO-R10-RD-DL-170 | Material Delivery & Site Inspection for Bituminous Base & Wearing Courses of Road Works | 2026-10-20 → 2026-10-27 (+7d) | 2026-11-18 → 2026-11-25 (+7d) | -31d → -37d |  |
| 3 | **Traffic Signs Boards and Roads Marking** | 2026-10-27 → 2026-11-03 (+7d) | 2026-11-25 → 2026-12-02 (+7d) |  |  |
| PRO-R10-RD-DL-140 | Material Delivery & Site Inspection of Traffic Signs Boards For Road Works | 2026-10-27 → 2026-11-03 (+7d) | 2026-11-25 → 2026-12-02 (+7d) | -25d → -31d |  |
| PRO-R10-RD-DL-150 | Material Delivery & Site Inspection of Road Markings For Road Works | 2026-10-27 → 2026-11-03 (+7d) | 2026-11-25 → 2026-12-02 (+7d) | -25d → -31d |  |
| 6 | **Road 14 Local 1 ( 584 LM )** |  | 2026-11-25 → 2026-12-02 (+7d) |  |  |
| 3 | **Traffic Signs Boards and Roads Marking** | 2026-10-27 → 2026-11-03 (+7d) | 2026-11-25 → 2026-12-02 (+7d) |  |  |
| PRO-R14-RD-DL-140 | Material Delivery & Site Inspection of Traffic Signs Boards For Road Works | 2026-10-27 → 2026-11-03 (+7d) | 2026-11-25 → 2026-12-02 (+7d) | -15d → -21d |  |
| PRO-R14-RD-DL-150 | Material Delivery & Site Inspection of Road Markings For Road Works | 2026-10-27 → 2026-11-03 (+7d) | 2026-11-25 → 2026-12-02 (+7d) | -15d → -21d |  |
| 2 | **Road 09 Local 2 ( 2278 LM )** |  | 2026-11-25 → 2026-12-02 (+7d) |  |  |
| 4 | **Bituminous Construction** | 2026-10-20 → 2026-10-27 (+7d) | 2026-11-18 → 2026-11-25 (+7d) |  |  |
| PRO-R09-RD-DL-160 | Material Delivery & Site Inspection for Prime Coat of Road Works | 2026-10-20 → 2026-10-27 (+7d) | 2026-11-18 → 2026-11-25 (+7d) | -17d → -23d |  |
| PRO-R09-RD-DL-170 | Material Delivery & Site Inspection for Bituminous Base & Wearing Courses of Road Works | 2026-10-20 → 2026-10-27 (+7d) | 2026-11-18 → 2026-11-25 (+7d) | -14d → -20d |  |
| 3 | **Traffic Signs Boards and Roads Marking** | 2026-10-27 → 2026-11-03 (+7d) | 2026-11-25 → 2026-12-02 (+7d) |  |  |

| ID | Task | Start | Finish | Total float |
| --- | --- | --- | --- | --- |
| PRO-R09-RD-DL-140 | Material Delivery & Site Inspection of Traffic Signs Boards For Road Works | 2026-10-27 → 2026-11-03 (+7d) | 2026-11-25 → 2026-12-02 (+7d) | -15d → -21d |
| PRO-R09-RD-DL-150 | Material Delivery & Site Inspection of Road Markings For Road Works | 2026-10-27 → 2026-11-03 (+7d) | 2026-11-25 → 2026-12-02 (+7d) | -15d → -21d |
| 5 | **Road 11 Local 1 ( 670 LM )** |  | 2026-11-25 → 2026-12-02 (+7d) |  |
| 2 | **Pavement Works** | 2026-08-23 → 2026-06-01 (-83d) |  |  |
| PRO-R11-RD-DL-130 | Material Delivery & Site Inspection of Curbstones for Landscaping | 2026-08-23 A → 2026-06-01 A (-83d) |  |  |
| 4 | **Bituminous Construction** | 2026-08-23 → 2026-08-13 (-10d) |  |  |
| PRO-R11-RD-DL-160 | Material Delivery & Site Inspection for Prime Coat of Road Works | 2026-08-23 A → 2026-08-13 A (-10d) |  |  |
| 3 | **Traffic Signs Boards and Roads Marking** | 2026-10-27 → 2026-11-03 (+7d) | 2026-11-25 → 2026-12-02 (+7d) |  |
| PRO-R11-RD-DL-140 | Material Delivery & Site Inspection of Traffic Signs Boards For Road Works | 2026-10-27 → 2026-11-03 (+7d) | 2026-11-25 → 2026-12-02 (+7d) | -15d → -21d |
| PRO-R11-RD-DL-150 | Material Delivery & Site Inspection of Road Markings For Road Works | 2026-10-27 → 2026-11-03 (+7d) | 2026-11-25 → 2026-12-02 (+7d) | -15d → -21d |
| SW | **Sewage Network** |  | 2026-12-02 → 2026-12-09 (+7d) |  |
| 3 | **Testing and Finishes** | 2025-05-27 → 2025-05-14 (-13d) |  |  |
| PRO-SW-1DL-120 | 1ST Material Delivery for Manholes Covers of Sewage Network | 2025-05-30 A → 2025-05-14 A (-16d) |  |  |
| DL | **Material Delivery & Site Inspection** |  | 2026-12-02 → 2026-12-09 (+7d) |  |
| 9 | **Road 17 Local 1 ( 500 LM )** | 2025-06-01 → 2025-05-26 (-6d) | 2026-11-18 → 2026-11-25 (+7d) |  |
| 1 | **Main Line Sections** | 2025-06-01 → 2025-05-26 (-6d) |  |  |
| PRO-R17-SW-DL-100 | Material Delivery & Site Inspection of Main Line Pipes for Sewage Network | 2025-06-01 A → 2025-05-26 A (-6d) |  |  |
| 3 | **Testing and Finishes** | 2026-10-20 → 2026-10-27 (+7d) | 2026-11-18 → 2026-11-25 (+7d) |  |
| PRO-R17-SW-DL-120 | Material Delivery & Site Inspection of Manholes Covers for Sewage Network | 2026-10-20 → 2026-10-27 (+7d) | 2026-11-18 → 2026-11-25 (+7d) | -75d → -81d |
| PRO-R17-SW-DL-130 | Material Delivery & Site Inspection of Membrane Insulation for Sewage Network | 2026-10-20 → 2026-10-27 (+7d) | 2026-11-18 → 2026-11-25 (+7d) | -72d → -78d |
| 8 | **Road 16 Local 1 ( 527 LM )** |  | 2026-11-18 → 2026-11-25 (+7d) |  |
| 3 | **Testing and Finishes** | 2026-10-20 → 2026-10-27 (+7d) | 2026-11-18 → 2026-11-25 (+7d) |  |
| PRO-R16-SW-DL-120 | Material Delivery & Site Inspection of Manholes Covers for Sewage Network | 2026-10-20 → 2026-10-27 (+7d) | 2026-11-18 → 2026-11-25 (+7d) | -75d → -81d |
| PRO-R16-SW-DL-130 | Material Delivery & Site Inspection of Membrane Insulation for Sewage Network | 2026-10-20 → 2026-10-27 (+7d) | 2026-11-18 → 2026-11-25 (+7d) | -72d → -78d |
| 7 | **Road 15 Local 1 ( 556 LM )** | 2025-05-20 → 2025-05-09 (-11d) | 2026-11-18 → 2026-11-25 (+7d) |  |
| 1 | **Main Line Sections** | 2025-05-20 → 2025-05-09 (-11d) |  |  |
| PRO-R15-SW-DL-100 | Material Delivery & Site Inspection of Main Line Pipes for Sewage Network | 2025-05-20 A → 2025-05-09 A (-11d) |  |  |
| 3 | **Testing and Finishes** | 2026-10-20 → 2026-10-27 (+7d) | 2026-11-18 → 2026-11-25 (+7d) |  |
| PRO-R15-SW-DL-120 | Material Delivery & Site Inspection of Manholes Covers for Sewage Network | 2026-10-20 → 2026-10-27 (+7d) | 2026-11-18 → 2026-11-25 (+7d) | -75d → -81d |
| PRO-R15-SW-DL-130 | Material Delivery & Site Inspection of Membrane Insulation for Sewage Network | 2026-10-20 → 2026-10-27 (+7d) | 2026-11-18 → 2026-11-25 (+7d) | -72d → -78d |
| 4 | **Road 10 Local 2 ( 2352 LM )** |  | 2026-11-18 → 2026-11-25 (+7d) |  |
| 3 | **Testing and Finishes** | 2026-10-20 → 2026-10-27 (+7d) | 2026-11-18 → 2026-11-25 (+7d) |  |
| PRO-R10-SW-DL-120 | Material Delivery & Site Inspection of Manholes Covers for Sewage Network | 2026-10-20 → 2026-10-27 (+7d) | 2026-11-18 → 2026-11-25 (+7d) | -75d → -81d |
| PRO-R10-SW-DL-130 | Material Delivery & Site Inspection of Membrane Insulation for Sewage Network | 2026-10-20 → 2026-10-27 (+7d) | 2026-11-18 → 2026-11-25 (+7d) | -72d → -78d |
| 6 | **Road 14 Local 1 ( 584 LM )** |  | 2026-11-18 → 2026-11-25 (+7d) |  |
| 3 | **Testing and Finishes** | 2026-10-20 → 2026-10-27 (+7d) | 2026-11-18 → 2026-11-25 (+7d) |  |
| PRO-R14-SW-DL-120 | Material Delivery & Site Inspection of Manholes Covers for Sewage Network | 2026-10-20 → 2026-10-27 (+7d) | 2026-11-18 → 2026-11-25 (+7d) | -63d → -69d |
| PRO-R14-SW-DL-130 | Material Delivery & Site Inspection of Membrane Insulation for Sewage Network | 2026-10-20 → 2026-10-27 (+7d) | 2026-11-18 → 2026-11-25 (+7d) | -60d → -66d |
| 2 | **Road 09 Local 2 ( 2278 LM )** |  | 2026-12-02 → 2026-12-09 (+7d) |  |
| 3 | **Testing and Finishes** | 2026-10-20 → 2026-10-27 (+7d) | 2026-12-02 → 2026-12-09 (+7d) |  |
| PRO-R09-SW-DL-120 | Material Delivery & Site Inspection of Manholes Covers for Rising Main Network | 2026-10-20 → 2026-10-27 (+7d) | 2026-12-02 → 2026-12-09 (+7d) | -58d → -64d |
| PRO-R09-SW-DL-130 | Material Delivery & Site Inspection of Membrane Insulation for Rising Main Network | 2026-10-20 → 2026-10-27 (+7d) | 2026-12-02 → 2026-12-09 (+7d) | -55d → -61d |
| 5 | **Road 11 Local 1 ( 670 LM )** |  | 2026-11-18 → 2026-11-25 (+7d) |  |
| 3 | **Testing and Finishes** | 2026-10-20 → 2026-10-27 (+7d) | 2026-11-18 → 2026-11-25 (+7d) |  |
| PRO-R11-SW-DL-120 | Material Delivery & Site Inspection of Manholes Covers for Sewage Network | 2026-10-20 → 2026-10-27 (+7d) | 2026-11-18 → 2026-11-25 (+7d) | -63d → -69d |
| PRO-R11-SW-DL-130 | Material Delivery & Site Inspection of Membrane Insulation for Sewage Network | 2026-10-20 → 2026-10-27 (+7d) | 2026-11-18 → 2026-11-25 (+7d) | -60d → -66d |
| SD | **Storm Drainage Network** |  | 2026-12-07 → 2026-12-20 (+13d) |  |
| PRO-SD-1DL-100 | 1ST Material Delivery for Manholes of Storm Drainage Network | 2025-05-20 A → 2025-05-11 A (-9d) |  |  |
| 2 | **Catch Basin Sections** | 2025-05-12 → 2025-05-10 (-2d) |  |  |
| PRO-SD-1DL-120 | 1ST Material Delivery for Catch Basin Pipes of Storm Drainage Network | 2025-05-12 A → 2025-05-10 A (-2d) |  |  |
| PRO-SD-1DL-130 | 1ST Material Delivery for Catch Basins of Storm Drainage Network | 2025-05-25 A → 2025-05-19 A (-6d) |  |  |
| 3 | **Testing and Finishes** | 2026-06-24 → 2026-06-17 (-7d) |  |  |
| PRO-SD-1DL-150 | 1ST Material Delivery for Catch Basin Covers of Storm Drainage Network | 2026-06-24 A → 2026-06-17 A (-7d) |  |  |
| PRO-SD-1DL-160 | 1ST Material Delivery for Epoxy Insulation of Storm Drainage Network | 2026-06-24 A → 2026-06-18 A (-6d) |  |  |
| DL | **Material Delivery & Site Inspection** |  | 2026-12-07 → 2026-12-20 (+13d) |  |
| 1 | **Road 18 Local 1 ( 479 LM )** |  | 2026-11-18 → 2026-11-25 (+7d) |  |
| 3 | **Testing and Finishes** | 2026-10-20 → 2026-10-27 (+7d) | 2026-11-18 → 2026-11-25 (+7d) |  |
| PRO-R18-SD-DL-190 | Material Delivery & Site Inspection of Manholes Covers for Storm Drainage Network | 2026-10-20 → 2026-10-27 (+7d) | 2026-11-18 → 2026-11-25 (+7d) | -96d → -102d |
| PRO-R18-SD-DL-210 | Material Delivery & Site Inspection of Catch Basin Covers for Storm Drainage Network | 2026-10-20 → 2026-10-27 (+7d) | 2026-11-18 → 2026-11-25 (+7d) | -27d → -33d |
| PRO-R18-SD-DL-230 | Material Delivery & Site Inspection of Epoxy Insulation for Storm Drainage Network | 2026-10-20 → 2026-10-27 (+7d) | 2026-11-18 → 2026-11-25 (+7d) | -27d → -38d |
| 9 | **Road 17 Local 1 ( 500 LM )** |  | 2026-11-18 → 2026-11-25 (+7d) |  |
| 3 | **Testing and Finishes** |  | 2026-11-18 → 2026-11-25 (+7d) |  |
| PRO-R17-SD-DL-160 | Material Delivery & Site Inspection of Epoxy Insulation for Storm Drainage Network |  | 2026-11-18 → 2026-11-25 (+7d) | -27d → -38d |
| PRO-R17-SD-DL-140 | Material Delivery & Site Inspection of Manholes Covers for Storm Drainage Network | 2026-10-20 → 2026-10-27 (+7d) | 2026-11-18 → 2026-11-25 (+7d) | -96d → -102d |
| PRO-R17-SD-DL-150 | Material Delivery & Site Inspection of Catch Basin Covers for Storm Drainage Network | 2026-10-20 → 2026-10-27 (+7d) | 2026-11-18 → 2026-11-25 (+7d) | -27d → -33d |
| 8 | **Road 16 Local 1 ( 527 LM )** |  | 2026-12-07 → 2026-12-20 (+13d) |  |
| 3 | **Testing and Finishes** | 2026-10-20 → 2026-10-27 (+7d) | 2026-12-07 → 2026-12-20 (+13d) |  |
| PRO-R16-SD-DL-140 | Material Delivery & Site Inspection of Manholes Covers for Storm Drainage Network | 2026-10-20 → 2026-10-27 (+7d) | 2026-11-18 → 2026-11-25 (+7d) | -96d → -102d |
| PRO-R16-SD-DL-150 | Material Delivery & Site Inspection of Catch Basin Covers for Storm Drainage Network | 2026-10-20 → 2026-10-27 (+7d) | 2026-11-18 → 2026-11-25 (+7d) | -27d → -33d |
| PRO-R16-SD-DL-160 | Material Delivery & Site Inspection of Epoxy Insulation for Storm Drainage Network | 2026-11-08 → 2026-11-21 (+13d) | 2026-12-07 → 2026-12-20 (+13d) | -27d → -38d |

| ID | Task | Start | Finish | Complete | Total float |
| --- | --- | --- | --- | --- | --- |
| 7 | **Road 15 Local 1 ( 556 LM )** |  | 2026-12-07 → 2026-12-20 (+13d) |  |  |
| 3 | **Testing and Finishes** | 2026-10-20 → 2026-10-27 (+7d) | 2026-12-07 → 2026-12-20 (+13d) |  |  |
| PRO-R15-SD-DL-140 | Material Delivery & Site Inspection of Manholes Covers for Storm Drainage Network | 2026-10-20 → 2026-10-27 (+7d) | 2026-11-18 → 2026-11-25 (+7d) |  | -96d → -102d |
| PRO-R15-SD-DL-150 | Material Delivery & Site Inspection of Catch Basin Covers for Storm Drainage Network | 2026-10-20 → 2026-10-27 (+7d) | 2026-11-18 → 2026-11-25 (+7d) |  | -27d → -33d |
| PRO-R15-SD-DL-160 | Material Delivery & Site Inspection of Epoxy Insulation for Storm Drainage Network | 2026-11-08 → 2026-11-21 (+13d) | 2026-12-07 → 2026-12-20 (+13d) |  | -27d → -38d |
| 4 | **Road 10 Local 2 ( 2352 LM )** |  | 2026-11-18 → 2026-11-25 (+7d) |  |  |
| 3 | **Testing and Finishes** | 2026-07-24 → 2026-06-17 (-37d) | 2026-11-18 → 2026-11-25 (+7d) |  |  |
| PRO-R10-SD-DL-150 | Material Delivery & Site Inspection of Catch Basin Covers for Storm Drainage Network | 2026-08-24 A → 2026-06-17 A (-68d) |  |  |  |
| PRO-R10-SD-DL-160 | Material Delivery & Site Inspection of Epoxy Insulation for Storm Drainage Network | 2026-07-24 A → 2026-06-18 A (-36d) |  |  |  |
| PRO-R10-SD-DL-140 | Material Delivery & Site Inspection of Manholes Covers for Storm Drainage Network | 2026-10-20 → 2026-10-27 (+7d) | 2026-11-18 → 2026-11-25 (+7d) |  | -96d → -102d |
| 6 | **Road 14 Local 1 ( 584 LM )** |  | 2026-11-18 → 2026-11-25 (+7d) |  |  |
| 3 | **Testing and Finishes** |  | 2026-11-18 → 2026-11-25 (+7d) |  |  |
| PRO-R14-SD-DL-140 | Material Delivery & Site Inspection of Manholes Covers for Storm Drainage Network | 2026-10-20 → 2026-10-27 (+7d) | 2026-11-18 → 2026-11-25 (+7d) |  | -96d → -102d |
| PRO-R14-SD-DL-150 | Material Delivery & Site Inspection of Catch Basin Covers for Storm Drainage Network | 2026-10-20 → 2026-10-27 (+7d) | 2026-11-18 → 2026-11-25 (+7d) |  | -15d → -21d |
| 2 | **Road 09 Local 2 ( 2278 LM )** |  | 2026-11-18 → 2026-11-25 (+7d) |  |  |
| 3 | **Testing and Finishes** |  | 2026-11-18 → 2026-11-25 (+7d) |  |  |
| PRO-R09-SD-DL-140 | Material Delivery & Site Inspection of Manholes Covers for Storm Drainage Network | 2026-10-20 → 2026-10-27 (+7d) | 2026-11-18 → 2026-11-25 (+7d) |  | -96d → -102d |
| PRO-R09-SD-DL-150 | Material Delivery & Site Inspection of Catch Basin Covers for Storm Drainage Network | 2026-10-20 → 2026-10-27 (+7d) | 2026-11-18 → 2026-11-25 (+7d) |  | -15d → -21d |
| 5 | **Road 11 Local 1 ( 670 LM )** |  | 2026-11-18 → 2026-11-25 (+7d) |  |  |
| PRO-R11-SD-DL-110 | Material Delivery & Site Inspection of Catch Basin Pipes for Storm Drainage Network | 2026-07-01 A → 2026-06-14 A (-17d) |  |  |  |
| 3 | **Testing and Finishes** | 2026-07-28 → 2026-06-22 (-36d) | 2026-11-18 → 2026-11-25 (+7d) |  |  |
| PRO-R11-SD-DL-160 | Material Delivery & Site Inspection of Epoxy Insulation for Storm Drainage Network | 2026-09-02 A → 2026-06-22 A (-72d) |  |  |  |
| PRO-R11-SD-DL-150 | Material Delivery & Site Inspection of Catch Basin Covers for Storm Drainage Network | 2026-07-28 A → 2026-06-27 A (-31d) |  |  |  |
| PRO-R11-SD-DL-140 | Material Delivery & Site Inspection of Manholes Covers for Storm Drainage Network | 2026-10-20 → 2026-10-27 (+7d) | 2026-11-18 → 2026-11-25 (+7d) |  | 20d → 14d |
| PW | **Potable Water Network** |  | 2026-12-19 → 2026-12-26 (+7d) |  |  |
| 1DL | **1st Material Delivery & Site Inspection** | 2025-05-13 → 2025-04-29 (-14d) | 2026-10-26 → 2025-12-01 (-329d) |  |  |
| 1 | **Main Line Sections** | 2025-05-13 → 2025-04-29 (-14d) |  |  |  |
| PRO-PW-1DL-100 | 1ST Material Delivery for Main Line Pipes of Potable Water Network | 2025-05-13 A → 2025-04-29 A (-14d) |  |  |  |
| PRO-PW-1DL-110 | 1ST Material Delivery for Valves of Potable Water Network | 2025-10-04 A → 2025-06-21 A (-105d) |  |  |  |
| 4 | **Testing and Finishes** | 2026-10-20 → 2025-11-24 (-330d) | 2026-10-26 → 2025-12-01 (-329d) |  |  |
| PRO-PW-1DL-130 | 1ST Material Delivery for Finishes of Potable Water Network | 2026-10-20 → 2025-11-24 A (-330d) | 2026-10-26 → 2025-12-01 A (-329d) | 0% → 100% | -81d → none |
| DL | **Material Delivery & Site Inspection** | 2025-05-03 → 2025-04-29 (-4d) | 2026-12-19 → 2026-12-26 (+7d) |  |  |
| PRO-R18-PW-DL-150 | Material Delivery & Site Inspection of Valves for Potable Water Network | 2025-10-23 A → 2025-06-21 A (-124d) |  |  |  |
| 1 | **Main Line Sections** |  | 2026-11-18 → 2026-11-25 (+7d) |  |  |
| PRO-R17-PW-DL-110 | Material Delivery & Site Inspection of Valves for Potable Water Network | 2026-10-20 → 2026-10-27 (+7d) | 2026-11-18 → 2026-11-25 (+7d) |  | -115d → -121d |
| 8 | **Road 16 Local 1 ( 527 LM )** | 2025-05-08 → 2025-04-29 (-9d) |  |  |  |
| 1 | **Main Line Sections** | 2025-05-08 → 2025-04-29 (-9d) | 2026-11-18 → 2026-11-25 (+7d) |  |  |
| PRO-R16-PW-DL-100 | Material Delivery & Site Inspection of Main Line Pipes for Potable Water Network | 2025-05-08 A → 2025-04-29 A (-9d) |  |  |  |
| PRO-R16-PW-DL-110 | Material Delivery & Site Inspection of Valves for Potable Water Network | 2026-10-20 → 2026-10-27 (+7d) | 2026-11-18 → 2026-11-25 (+7d) |  | -115d → -121d |
| 1 | **Main Line Sections** |  | 2026-11-18 → 2026-11-25 (+7d) |  |  |
| PRO-R15-PW-DL-110 | Material Delivery & Site Inspection of Valves for Potable Water Network | 2026-10-20 → 2026-10-27 (+7d) | 2026-11-18 → 2026-11-25 (+7d) |  | -115d → -121d |
| 1 | **Main Line Sections** |  | 2026-11-18 → 2026-11-25 (+7d) |  |  |
| PRO-R10-PW-DL-110 | Material Delivery & Site Inspection of Valves for Potable Water Network |  | 2026-11-18 → 2026-11-25 (+7d) |  | -115d → -121d |
| 3 | **Road 14 Local 1 ( 584 LM )** |  | 2026-11-19 → 2026-11-26 (+7d) |  |  |
| 1 | **Main Line Sections** |  | 2026-11-19 → 2026-11-26 (+7d) |  |  |
| PRO-R14-PW-DL-110 | Material Delivery & Site Inspection of Valves for Potable Water Network |  | 2026-11-19 → 2026-11-26 (+7d) |  | -115d → -121d |
| PRO-R09-PW-DL-110 | Material Delivery & Site Inspection of Valves for Potable Water Network | 2026-08-11 A → 2026-06-30 A (-42d) |  |  |  |
| 5 | **Road 11 Local 1 ( 670 LM )** |  | 2026-12-19 → 2026-12-26 (+7d) |  |  |
| 1 | **Main Line Sections** |  | 2026-12-19 → 2026-12-26 (+7d) |  |  |
| PRO-R11-PW-DL-110 | Material Delivery & Site Inspection of Valves for Potable Water Network | 2026-11-19 → 2026-11-26 (+7d) | 2026-12-19 → 2026-12-26 (+7d) |  | -115d → -121d |
| IR | **Irrigation Network** |  | 2026-11-10 → 2026-11-16 (+6d) |  |  |
| 1DL | **1st Material Delivery & Site Inspection** |  | 2026-10-22 → 2026-10-28 (+6d) |  |  |
| 1 | **Main Line Pipes** |  | 2026-10-22 → 2026-10-28 (+6d) |  |  |
| PRO-IR-1DL-110 | 1ST Material Delivery for Valves of Irrigation Network | 2026-10-08 A → 2025-12-11 A (-301d) | 2026-10-22 → 2026-10-28 (+6d) |  | -207d → -212d |
| DL | **Material Delivery & Site Inspection** |  | 2026-11-10 → 2026-11-16 (+6d) |  |  |
| 1 | **Road 18 Local 1 ( 479 LM )** |  | 2026-11-10 → 2026-11-16 (+6d) |  |  |
| 1 | **Main Line Pipes** |  | 2026-11-10 → 2026-11-16 (+6d) |  |  |
| PRO-R18-IR-DL-130 | Material Delivery & Site Inspection of Valves for Irrigation Network | 2026-10-24 → 2026-10-29 (+5d) | 2026-11-10 → 2026-11-16 (+6d) |  | -207d → -212d |
| 9 | **Road 17 Local 1 ( 500 LM )** |  | 2026-11-10 → 2026-11-16 (+6d) |  |  |
| 1 | **Main Line Pipes** |  | 2026-11-10 → 2026-11-16 (+6d) |  |  |
| PRO-R17-IR-DL-110 | Material Delivery & Site Inspection of Valves for Irrigation Network | 2026-10-24 → 2026-10-29 (+5d) | 2026-11-10 → 2026-11-16 (+6d) |  | -207d → -212d |
| 8 | **Road 16 Local 1 ( 527 LM )** |  | 2026-11-10 → 2026-11-16 (+6d) |  |  |
| 1 | **Main Line Pipes** |  | 2026-11-10 → 2026-11-16 (+6d) |  |  |
| PRO-R16-IR-DL-110 | Material Delivery & Site Inspection of Valves for Irrigation Network | 2026-10-24 → 2026-10-29 (+5d) | 2026-11-10 → 2026-11-16 (+6d) |  | -207d → -212d |
| 7 | **Road 15 Local 1 ( 556 LM )** | 2025-05-13 → 2025-05-06 (-7d) | 2026-11-10 → 2026-11-16 (+6d) |  |  |
| 1 | **Main Line Pipes** | 2025-05-13 → 2025-05-06 (-7d) | 2026-11-10 → 2026-11-16 (+6d) |  |  |
| PRO-R15-IR-DL-100 | Material Delivery & Site Inspection of Main Line Pipes for Irrigation Network | 2025-05-13 A → 2025-05-06 A (-7d) |  |  |  |
| PRO-R15-IR-DL-110 | Material Delivery & Site Inspection of Valves for Irrigation Network | 2026-10-24 → 2026-10-29 (+5d) | 2026-11-10 → 2026-11-16 (+6d) |  | -207d → -212d |
| 6 | **Road 14 Local 1 ( 584 LM )** | 2026-05-19 → 2025-10-13 (-218d) |  |  |  |
| 1 | **Main Line Pipes** | 2026-05-19 → 2025-10-13 (-218d) |  |  |  |

| ID | Task | Start | Finish | Complete | Total float | Other |
| --- | --- | --- | --- | --- | --- | --- |
| PRO-R14-IR-DL-100 | Material Delivery & Site Inspection of Main Line Pipes for Irrigation Network | 2026-05-19 A → 2025-10-13 A (-218d) |  |  |  |  |
| 2 | **Road 09 Local 2 ( 2278 LM )** | 2026-05-21 → 2025-11-30 (-172d) |  |  |  |  |
| 1 | **Main Line Pipes** | 2026-05-21 → 2025-11-30 (-172d) |  |  |  |  |
| PRO-R09-IR-DL-100 | Material Delivery & Site Inspection of Main Line Pipes for Irrigation Network | 2026-05-21 A → 2025-11-30 A (-172d) |  |  |  |  |
| 5 | **Road 11 Local 1 ( 670 LM )** | 2026-05-19 → 2025-10-13 (-218d) |  |  |  |  |
| 1 | **Main Line Pipes** | 2026-05-19 → 2025-10-13 (-218d) |  |  |  |  |
| PRO-R11-IR-DL-140 | Material Delivery & Site Inspection of Main Line Pipes for Irrigation Network | 2026-05-20 A → 2025-10-13 A (-219d) |  |  |  |  |
| MV | **Medium Voltage Network** |  | 2026-11-18 → 2026-10-07 (-42d) |  |  |  |
| 1DL | **1st Material Delivery & Site Inspection** |  | 2026-11-18 → 2026-10-05 (-44d) |  |  |  |
| 2 | **RMU Concrete Works** | 2026-07-13 → 2026-07-07 (-6d) |  |  |  |  |
| PRO-MV-1DL-110 | 1ST Material Delivery for RMU Concrete Foundations of Medium Voltage Network | 2026-07-13 A → 2026-07-07 A (-6d) |  |  |  |  |
| 3 | **Termination and Testing Works** | 2026-10-20 → 2026-09-03 (-47d) | 2026-11-18 → 2026-10-05 (-44d) |  |  |  |
| PRO-MV-1DL-120 | 1ST Material Delivery for Termination and Joints Kits of Medium Voltage Network | 2026-10-20 → 2026-09-03 A (-47d) | 2026-11-18 → 2026-10-05 A (-44d) | 0% → 100% | -56d → none |  |
| PRO-R18-MV-DL-120 | Material Delivery & Site Inspection of Medium Voltage Cables for Medium Voltage Network |  |  |  |  | resources Excavation for Trench size 40cm wide and 80cm deep ( Maximum 1 cable 33kv) [171.62]; Excavation for Trench size 60cm wide and 80cm deep ( for Max two cables 33 kv) [9.76]; Excavation for Trench size 90cm wide and 80cm deep ( Maximum 3 cable 33kv) [43.49]; Excavation for Trench size 120cm wide and 80cm deep ( Maximum 4cable 33kv) [14.79]; Excavation for Trench size 150cm wide and 80cm deep ( Maximum 4cable 33kv) [54.74]; Duct bank for (2) 33 kv cables [5.67]; Duct bank for (4) 33 kv cables [39.26]; Duct bank for (6) 33 kv cables [18.03]; 33kv 3Cx400 mm² Al XLPE / LLDPE /PVC Cable [1153.63]; 33kv 3Cx400 mm² Al XLPE /LLDPE/PVC [4] → Excavation for Trench size 40cm wide and 80cm deep ( Maximum 1 cable 33kv) [171.62]; Excavation for Trench size 60cm wide and 80cm deep ( for Max two cables 33 kv) [9.76]; Excavation for Trench size 90cm wide and 80cm deep ( Maximum 3 cable 33kv) [43.49]; Excavation for Trench size 120cm wide and 80cm deep ( Maximum 4cable 33kv) [14.79]; Excavation for Trench size 150cm wide and 80cm deep ( Maximum 4cable 33kv) [54.74]; Duct bank for (2) 33 kv cables [5.67]; Duct bank for (4) 33 kv cables [39.26]; Duct bank for (6) 33 kv cables [18.03]; 33kv 3Cx400 mmï¿½ Al XLPE / LLDPE /PVC Cable [1153.63]; 33kv 3Cx400 mmï¿½ Al XLPE /LLDPE/PVC [4] |
| PRO-R18-MV-DL-130 | Material Delivery & Site Inspection of Termination and Joints Kits for Medium Voltage Network |  |  |  |  | resources 33kv 3Cx400 mm² Al XLPE/LLDPE Cable Termination [2] → 33kv 3Cx400 mmï¿½ Al XLPE/LLDPE Cable Termination [2] |
| PRO-R17-MV-DL-100 | Material Delivery & Site Inspection of Medium Voltage Cables for Medium Voltage Network |  |  |  |  | resources Excavation for Trench size 40cm wide and 80cm deep ( Maximum 1 cable 33kv) [177.46]; Excavation for Trench size 60cm wide and 80cm deep ( for Max two cables 33 kv) [10.1]; Excavation for Trench size 90cm wide and 80cm deep ( Maximum 3 cable 33kv) [44.99]; Excavation for Trench size 120cm wide and 80cm deep ( Maximum 4cable 33kv) [15.3]; Excavation for Trench size 150cm wide and 80cm deep ( Maximum 4cable 33kv) [56.6]; Duct bank for (2) 33 kv cables [6.12]; Duct bank for (4) 33 kv cables [40.39]; Duct bank for (6) 33 kv cables [18.36]; 33kv 3Cx400 mm² Al XLPE / LLDPE /PVC Cable [1193.29]; 33kv 3Cx400 mm² Al XLPE /LLDPE/PVC [4] → Excavation for Trench size 40cm wide and 80cm deep ( Maximum 1 cable 33kv) [177.46]; Excavation for Trench size 60cm wide and 80cm deep ( for Max two cables 33 kv) [10.1]; Excavation for Trench size 90cm wide and 80cm deep ( Maximum 3 cable 33kv) [44.99]; Excavation for Trench size 120cm wide and 80cm deep ( Maximum 4cable 33kv) [15.3]; Excavation for Trench size 150cm wide and 80cm deep ( Maximum 4cable 33kv) [56.6]; Duct bank for (2) 33 kv cables [6.12]; Duct bank for (4) 33 kv cables [40.39]; Duct bank for (6) 33 kv cables [18.36]; 33kv 3Cx400 mmï¿½ Al XLPE / LLDPE /PVC Cable [1193.29]; 33kv 3Cx400 mmï¿½ Al XLPE /LLDPE/PVC [4] |
| 2 | **RMU Concrete Works** | 2026-10-05 → 2026-07-07 (-90d) |  |  |  |  |
| PRO-R17-MV-DL-120 | Material Delivery & Site Inspection of RMU Concrete Foundations for Medium Voltage Network | 2026-10-05 A → 2026-07-07 A (-90d) |  |  |  |  |
| PRO-R17-MV-DL-110 | Material Delivery & Site Inspection of Termination and Joints Kits for Medium Voltage Network |  |  |  |  | resources 33kv 3Cx400 mm² Al XLPE/LLDPE Cable Termination [1] → 33kv 3Cx400 mmï¿½ Al XLPE/LLDPE Cable Termination [1] |
| PRO-R16-MV-DL-100 | Material Delivery & Site Inspection of Medium Voltage Cables for Medium Voltage Network |  |  |  |  | resources Excavation for Trench size 40cm wide and 80cm deep ( Maximum 1 cable 33kv) [186.65]; Excavation for Trench size 60cm wide and 80cm deep ( for Max two cables 33 kv) [10.62]; Excavation for Trench size 90cm wide and 80cm deep ( Maximum 3 cable 33kv) [47.31]; Excavation for Trench size 120cm wide and 80cm deep ( Maximum 4cable 33kv) [16.09]; Excavation for Trench size 150cm wide and 80cm deep ( Maximum 4cable 33kv) [59.53]; Duct bank for (2) 33 kv cables [6.44]; Duct bank for (4) 33 kv cables [42.48]; Duct bank for (6) 33 kv cables [19.31]; 33kv 3Cx400 mm² Al XLPE / LLDPE /PVC Cable [1255.04]; 33kv 3Cx400 mm² Al XLPE /LLDPE/PVC [4] → Excavation for Trench size 40cm wide and 80cm deep ( Maximum 1 cable 33kv) [186.65]; Excavation for Trench size 60cm wide and 80cm deep ( for Max two cables 33 kv) [10.62]; Excavation for Trench size 90cm wide and 80cm deep ( Maximum 3 cable 33kv) [47.31]; Excavation for Trench size 120cm wide and 80cm deep ( Maximum 4cable 33kv) [16.09]; Excavation for Trench size 150cm wide and 80cm deep ( Maximum 4cable 33kv) [59.53]; Duct bank for (2) 33 kv cables [6.44]; Duct bank for (4) 33 kv cables [42.48]; Duct bank for (6) 33 kv cables [19.31]; 33kv 3Cx400 mmï¿½ Al XLPE / LLDPE /PVC Cable [1255.04]; 33kv 3Cx400 mmï¿½ Al XLPE /LLDPE/PVC [4] |
| PRO-R16-MV-DL-110 | Material Delivery & Site Inspection of Termination and Joints Kits for Medium Voltage Network |  |  |  |  | resources 33kv 3Cx400 mm² Al XLPE/LLDPE Cable Termination [2] → 33kv 3Cx400 mmï¿½ Al XLPE/LLDPE Cable Termination [2] |
| PRO-R15-MV-DL-100 | Material Delivery & Site Inspection of Medium Voltage Cables for Medium Voltage Network |  |  |  |  | resources Excavation for Trench size 40cm wide and 80cm deep ( Maximum 1 cable 33kv) [195.83]; Excavation for Trench size 60cm wide and 80cm deep ( for Max two cables 33 kv) [11.14]; Excavation for Trench size 90cm wide and 80cm deep ( Maximum 3 cable 33kv) [49.63]; Excavation for Trench size 120cm wide and 80cm deep ( Maximum 4cable 33kv) [16.88]; Excavation for Trench size 150cm wide and 80cm deep ( Maximum 4cable 33kv) [62.46]; Duct bank for (2) 33 kv cables [6.75]; Duct bank for (4) 33 kv cables [44.57]; Duct bank for (6) 33 kv cables [20.26]; 33kv 3Cx400 mm² Al XLPE / LLDPE /PVC Cable [1316.8]; 33kv 3Cx400 mm² Al XLPE /LLDPE/PVC [4] → Excavation for Trench size 40cm wide and 80cm deep ( Maximum 1 cable 33kv) [195.83]; Excavation for Trench size 60cm wide and 80cm deep ( for Max two cables 33 kv) [11.14]; Excavation for Trench size 90cm wide and 80cm deep ( Maximum 3 cable 33kv) [49.63]; Excavation for Trench size 120cm wide and 80cm deep ( Maximum 4cable 33kv) [16.88]; Excavation for Trench size 150cm wide and 80cm deep ( Maximum 4cable 33kv) [62.46]; Duct bank for (2) 33 kv cables [6.75]; Duct bank for (4) 33 kv cables [44.57]; Duct bank for (6) 33 kv cables [20.26]; 33kv 3Cx400 mmï¿½ Al XLPE / LLDPE /PVC Cable [1316.8]; 33kv 3Cx400 mmï¿½ Al XLPE /LLDPE/PVC [4] |
| PRO-R15-MV-DL-110 | Material Delivery & Site Inspection of Termination and Joints Kits for Medium Voltage Network |  |  |  |  | resources 33kv 3Cx400 mm² Al XLPE/LLDPE Cable Termination [1] → 33kv 3Cx400 mmï¿½ Al XLPE/LLDPE Cable Termination [1] |
| PRO-R10-MV-DL-100 | Material Delivery & Site Inspection of Medium Voltage Cables for Medium Voltage Network |  |  |  |  | resources Excavation for Trench size 40cm wide and 80cm deep ( Maximum 1 cable 33kv) [398.67]; Excavation for Trench size 60cm wide and 80cm deep ( for Max two cables 33 kv) [22.68]; Excavation for Trench size 90cm wide and 80cm deep ( Maximum 3 cable 33kv) [101.04]; Excavation for Trench size 120cm wide and 80cm deep ( Maximum 4cable 33kv) [34.37]; Excavation for Trench size 150cm wide and 80cm deep ( Maximum 4cable 33kv) [127.16]; Duct bank for (2) 33 kv cables [13.75]; Duct bank for (4) 33 kv cables [90.73]; Duct bank for (6) 33 kv cables [41.24]; 33kv 3Cx400 mm² Al XLPE / LLDPE /PVC Cable [2680.69]; 33kv 3Cx400 mm² Al XLPE /LLDPE/PVC [8] → Excavation for Trench size 40cm wide and 80cm deep ( Maximum 1 cable 33kv) [398.67]; Excavation for Trench size 60cm wide and 80cm deep ( for Max two cables 33 kv) [22.68]; Excavation for Trench size 90cm wide and 80cm deep ( Maximum 3 cable 33kv) [101.04]; Excavation for Trench size 120cm wide and 80cm deep ( Maximum 4cable 33kv) [34.37]; Excavation for Trench size 150cm wide and 80cm deep ( Maximum 4cable 33kv) [127.16]; Duct bank for (2) 33 kv cables [13.75]; Duct bank for (4) 33 kv cables [90.73]; Duct bank for (6) 33 kv cables [41.24]; 33kv 3Cx400 mmï¿½ Al XLPE / LLDPE /PVC Cable [2680.69]; 33kv 3Cx400 mmï¿½ Al XLPE /LLDPE/PVC [8] |
| PRO-R10-MV-DL-110 | Material Delivery & Site Inspection of Termination and Joints Kits for Medium Voltage Network |  |  |  |  | resources 33kv 3Cx400 mm² Al XLPE/LLDPE Cable Termination [4] → 33kv 3Cx400 mmï¿½ Al XLPE/LLDPE Cable Termination [4] |
| PRO-R14-MV-DL-100 | Material Delivery & Site Inspection of Medium Voltage Cables for Medium Voltage Network |  |  |  |  | resources Excavation for Trench size 40cm wide and 80cm deep ( Maximum 1 cable 33kv) [343.35]; Excavation for Trench size 60cm wide and 80cm deep ( for Max two cables 33 kv) [19.54]; Excavation for Trench size 90cm wide and 80cm deep ( Maximum 3 cable 33kv) [87.02]; Excavation for Trench size 120cm wide and 80cm deep ( Maximum 4cable 33kv) [29.6]; Excavation for Trench size 150cm wide and 80cm deep ( Maximum 4cable 33kv) [109.52]; Duct bank for (2) 33 kv cables [11.84]; Duct bank for (4) 33 kv cables [78.14]; Duct bank for (6) 33 kv cables [35.52]; 33kv 3Cx400 mm² Al XLPE / LLDPE /PVC Cable [2308.74]; 33kv 3Cx400 mm² Al XLPE /LLDPE/PVC [7] → Excavation for Trench size 40cm wide and 80cm deep ( Maximum 1 cable 33kv) [343.35]; Excavation for Trench size 60cm wide and 80cm deep ( for Max two cables 33 kv) [19.54]; Excavation for Trench size 90cm wide and 80cm deep ( Maximum 3 cable 33kv) [87.02]; Excavation for Trench size 120cm wide and 80cm deep ( Maximum 4cable 33kv) [29.6]; Excavation for Trench size 150cm wide and 80cm deep ( Maximum 4cable 33kv) [109.52]; Duct bank for (2) 33 kv cables [11.84]; Duct bank for (4) 33 kv cables [78.14]; Duct bank for (6) 33 kv cables [35.52]; 33kv 3Cx400 mmï¿½ Al XLPE / LLDPE /PVC Cable [2308.74]; 33kv 3Cx400 mmï¿½ Al XLPE /LLDPE/PVC [7] |
| PRO-R14-MV-DL-110 | Material Delivery & Site Inspection of Termination and Joints Kits for Medium Voltage Network |  |  |  |  | resources 33kv 3Cx400 mm² Al XLPE/LLDPE Cable Termination [2] → 33kv 3Cx400 mmï¿½ Al XLPE/LLDPE Cable Termination [2] |
| PRO-R09-MV-DL-100 | Material Delivery & Site Inspection of Medium Voltage Cables for Medium Voltage Network |  |  |  |  | resources Excavation for Trench size 40cm wide and 80cm deep ( Maximum 1 cable 33kv) [1193.76]; Excavation for Trench size 60cm wide and 80cm deep ( for Max two cables 33 kv) [67.92]; Excavation for Trench size 90cm wide and 80cm deep ( Maximum 3 cable 33kv) [302.56]; Excavation for Trench size 120cm wide and 80cm deep ( Maximum 4cable 33kv) [102.91]; Excavation for Trench size 150cm wide and 80cm deep ( Maximum 4cable 33kv) [380.77]; Duct bank for (2) 33 kv cables [41.42]; Duct bank for (4) 33 kv cables [270.95]; Duct bank for (6) 33 kv cables [123.25]; 33kv 3Cx400 mm² Al XLPE / LLDPE /PVC Cable [8027.33]; 33kv 3Cx400 mm² Al XLPE /LLDPE/PVC [23] → Excavation for Trench size 40cm wide and 80cm deep ( Maximum 1 cable 33kv) [1193.76]; Excavation for Trench size 60cm wide and 80cm deep ( for Max two cables 33 kv) [67.92]; Excavation for Trench size 90cm wide and 80cm deep ( Maximum 3 cable 33kv) [302.56]; Excavation for Trench size 120cm wide and 80cm deep ( Maximum 4cable 33kv) [102.91]; Excavation for Trench size 150cm wide and 80cm deep ( Maximum 4cable 33kv) [380.77]; Duct bank for (2) 33 kv cables [41.42]; Duct bank for (4) 33 kv cables [270.95]; Duct bank for (6) 33 kv cables [123.25]; 33kv 3Cx400 mmï¿½ Al XLPE / LLDPE /PVC Cable [8027.33]; 33kv 3Cx400 mmï¿½ Al XLPE /LLDPE/PVC [23] |
| PRO-R09-MV-DL-110 | Material Delivery & Site Inspection of Termination and Joints Kits for Medium Voltage Network |  |  |  |  | resources 33kv 3Cx400 mm² Al XLPE/LLDPE Cable Termination [6] → 33kv 3Cx400 mmï¿½ Al XLPE/LLDPE Cable Termination [6] |
| 5 | **Road 11 Local 1 ( 670 LM )** | 2026-07-22 → 2026-07-08 (-14d) |  |  |  |  |
| 1 | **Cabling Works** | 2026-07-22 → 2026-07-08 (-14d) |  |  |  |  |
| PRO-R11-MV-DL-100 | Material Delivery & Site Inspection of Medium Voltage Cables for Medium Voltage Network | 2026-07-22 A → 2026-07-08 A (-14d) |  |  |  | resources Excavation for Trench size 40cm wide and 80cm deep ( Maximum 1 cable 33kv) [232.66]; Excavation for Trench size 60cm wide and 80cm deep ( for Max two cables 33 kv) [13.24]; Excavation for Trench size 90cm wide and 80cm deep ( Maximum 3 cable 33kv) [58.96]; Excavation for Trench size 120cm wide and 80cm deep ( Maximum 4cable 33kv) [20.06]; Excavation for Trench size 150cm wide and 80cm deep ( Maximum 4cable 33kv) [74.22]; Duct bank for (2) 33 kv cables [8.01]; Duct bank for (4) 33 kv cables [53.48]; Duct bank for (6) 33 kv cables [24.03]; 33kv 3Cx400 mm² Al XLPE / LLDPE /PVC Cable [1564.48]; 33kv 3Cx400 mm² Al XLPE /LLDPE/PVC [6] → Excavation for Trench size 40cm wide and 80cm deep ( Maximum 1 cable 33kv) [232.66]; Excavation for Trench size 60cm wide and 80cm deep ( for Max two cables 33 kv) [13.24]; Excavation for Trench size 90cm wide and 80cm deep ( Maximum 3 cable 33kv) [58.96]; Excavation for Trench size 120cm wide and 80cm deep ( Maximum 4cable 33kv) [20.06]; Excavation for Trench size 150cm wide and 80cm deep ( Maximum 4cable 33kv) [74.22]; Duct bank for (2) 33 kv cables [8.01]; Duct bank for (4) 33 kv cables [53.48]; Duct bank for (6) 33 kv cables [24.03]; 33kv 3Cx400 mmï¿½ Al XLPE / LLDPE /PVC Cable [1564.48]; 33kv 3Cx400 mmï¿½ Al XLPE /LLDPE/PVC [6] |
| PRO-R11-MV-DL-110 | Material Delivery & Site Inspection of Termination and Joints Kits for Medium Voltage Network |  |  |  |  | resources 33kv 3Cx400 mm² Al XLPE/LLDPE Cable Termination [2] → 33kv 3Cx400 mmï¿½ Al XLPE/LLDPE Cable Termination [2] |
| SL | **Street Lighting Network** |  | 2026-12-29 → 2026-12-22 (-7d) |  |  |  |
| 1DL | **1st Material Delivery & Site Inspection** |  | 2026-11-05 → 2026-11-02 (-3d) |  |  |  |
| 2 | **Lighting Poles Works** |  | 2026-10-26 → 2026-11-02 (+7d) |  |  |  |
| PRO-SL-1DL-140 | 1ST Material Delivery for Lighting Fixtures of Street Lighting Network | 2026-10-20 → 2026-10-27 (+7d) | 2026-10-26 → 2026-11-02 (+7d) |  | -153d → -159d |  |
| 3 | **Distribution Panel Board** | 2026-10-20 → 2025-10-25 (-360d) | 2026-10-26 → 2025-10-31 (-360d) |  |  |  |
| PRO-SL-1DL-160 | 1ST Material Delivery for Distrubution Panel Boards of Street Lighting Network | 2026-10-20 → 2025-10-25 A (-360d) | 2026-10-26 → 2025-10-31 A (-360d) | 0% → 100% | -94d → none |  |
| 5 | **Termination and Testing Works** | 2026-10-20 → 2026-09-03 (-47d) | 2026-11-05 → 2026-09-21 (-45d) |  |  |  |
| PRO-SL-1DL-130 | 1ST Material Delivery for Fuse Boxes of Street Lighting Network | 2026-10-20 → 2026-09-03 A (-47d) | 2026-11-05 → 2026-09-21 A (-45d) | 0% → 100% | -156d → none |  |
| PRO-SL-1DL-170 | 1ST Material Delivery for Cable Lugs of Street Lighting Network | 2026-10-20 → 2026-09-03 A (-47d) | 2026-11-05 → 2026-09-21 A (-45d) | 0% → 100% | -119d → none |  |
| 4 | **Earthing System Works** | 2026-10-20 → 2026-10-27 (+7d) | 2026-10-26 → 2026-11-02 (+7d) |  |  |  |
| PRO-SL-1DL-150 | 1ST Material Delivery for Lighting Earthing of Street Lighting Network | 2026-10-20 → 2026-10-27 (+7d) | 2026-10-26 → 2026-11-02 (+7d) |  | -135d → -141d |  |
| DL | **Material Delivery & Site Inspection** |  | 2026-12-29 → 2026-12-22 (-7d) |  |  |  |
| 1 | **Road 18 Local 1 ( 479 LM )** |  | 2026-12-06 → 2026-11-25 (-11d) |  |  |  |
| PRO-R18-SL-DL-180 | Material Delivery & Site Inspection of Lighting Cables for Street Lighting Network |  |  |  |  | resources Supply, installation , test and operation of cables, Copper, (4Cx25mm²,Cu/XLPE/SWA/PVC +1x16mm² PVC/PVC) [1239] → Supply, installation , test and operation of cables, Copper, (4Cx25mmï¿½,Cu/XLPE/SWA/PVC +1x16mmï¿½ PVC/PVC) [1239] |
| 2 | **Lighting Poles Works** |  | 2026-11-18 → 2026-11-25 (+7d) |  |  |  |
| PRO-R18-SL-DL-220 | Material Delivery & Site Inspection of Lighting Fixtures for Street Lighting Network | 2026-10-20 → 2026-10-27 (+7d) | 2026-11-18 → 2026-11-25 (+7d) |  | -153d → -159d |  |
| 4 | **Termination and Testing Works** | 2026-11-07 → 2026-10-27 (-11d) | 2026-12-06 → 2026-11-25 (-11d) |  |  |  |
| PRO-R18-SL-DL-210 | Material Delivery & Site Inspection of Fuse Boxes for Street Lighting Network | 2026-11-07 → 2026-10-27 (-11d) | 2026-12-06 → 2026-11-25 (-11d) |  | -156d → -147d |  |
| PRO-R18-SL-DL-250 | Material Delivery & Site Inspection of Cable Lugs for Street Lighting Network | 2026-11-07 → 2026-10-27 (-11d) | 2026-12-06 → 2026-11-25 (-11d) |  | -119d → -113d |  |
| 9 | **Road 17 Local 1 ( 500 LM )** |  | 2026-12-06 → 2026-11-25 (-11d) |  |  |  |
| PRO-R17-SL-DL-100 | Material Delivery & Site Inspection of Lighting Cables for Street Lighting Network |  |  |  |  | resources Supply, installation , test and operation of cables, Copper, (4Cx25mm²,Cu/XLPE/SWA/PVC +1x16mm² PVC/PVC) [1281] → Supply, installation , test and operation of cables, Copper, (4Cx25mmï¿½,Cu/XLPE/SWA/PVC +1x16mmï¿½ PVC/PVC) [1281] |
| 2 | **Lighting Poles Works** |  | 2026-11-18 → 2026-11-25 (+7d) |  |  |  |
| PRO-R17-SL-DL-140 | Material Delivery & Site Inspection of Lighting Fixtures for Street Lighting Network | 2026-10-20 → 2026-10-27 (+7d) | 2026-11-18 → 2026-11-25 (+7d) |  | -153d → -159d |  |
| 4 | **Termination and Testing Works** | 2026-11-07 → 2026-10-27 (-11d) | 2026-12-06 → 2026-11-25 (-11d) |  |  |  |
| PRO-R17-SL-DL-130 | Material Delivery & Site Inspection of Fuse Boxes for Street Lighting Network | 2026-11-07 → 2026-10-27 (-11d) | 2026-12-06 → 2026-11-25 (-11d) |  | -156d → -147d |  |
| PRO-R17-SL-DL-170 | Material Delivery & Site Inspection of Cable Lugs for Street Lighting Network | 2026-11-07 → 2026-10-27 (-11d) | 2026-12-06 → 2026-11-25 (-11d) |  | -119d → -113d |  |
| 8 | **Road 16 Local 1 ( 527 LM )** |  | 2026-12-06 → 2026-11-25 (-11d) |  |  |  |
| PRO-R16-SL-DL-100 | Material Delivery & Site Inspection of Lighting Cables for Street Lighting Network |  |  |  |  | resources Supply, installation , test and operation of cables, Copper, (4Cx25mm²,Cu/XLPE/SWA/PVC +1x16mm² PVC/PVC) [1344] → Supply, installation , test and operation of cables, Copper, (4Cx25mmï¿½,Cu/XLPE/SWA/PVC +1x16mmï¿½ PVC/PVC) [1344] |
| 2 | **Lighting Poles Works** |  | 2026-11-18 → 2026-11-25 (+7d) |  |  |  |
| PRO-R16-SL-DL-140 | Material Delivery & Site Inspection of Lighting Fixtures for Street Lighting Network | 2026-10-20 → 2026-10-27 (+7d) | 2026-11-18 → 2026-11-25 (+7d) |  | -153d → -159d |  |
| 4 | **Termination and Testing Works** | 2026-11-07 → 2026-10-27 (-11d) | 2026-12-06 → 2026-11-25 (-11d) |  |  |  |
| PRO-R16-SL-DL-130 | Material Delivery & Site Inspection of Fuse Boxes for Street Lighting Network | 2026-11-07 → 2026-10-27 (-11d) | 2026-12-06 → 2026-11-25 (-11d) |  | -156d → -147d |  |
| PRO-R16-SL-DL-170 | Material Delivery & Site Inspection of Cable Lugs for Street Lighting Network | 2026-11-07 → 2026-10-27 (-11d) | 2026-12-06 → 2026-11-25 (-11d) |  | -119d → -113d |  |
| 7 | **Road 15 Local 1 ( 556 LM )** |  | 2026-12-06 → 2026-11-25 (-11d) |  |  |  |
| PRO-R15-SL-DL-100 | Material Delivery & Site Inspection of Lighting Cables for Street Lighting Network |  |  |  |  | resources Supply, installation , test and operation of cables, Copper, (4Cx25mm²,Cu/XLPE/SWA/PVC +1x16mm² PVC/PVC) [1428] → Supply, installation , test and operation of cables, Copper, (4Cx25mmï¿½,Cu/XLPE/SWA/PVC +1x16mmï¿½ PVC/PVC) [1428] |
| 2 | **Lighting Poles Works** |  | 2026-11-18 → 2026-11-25 (+7d) |  |  |  |
| PRO-R15-SL-DL-140 | Material Delivery & Site Inspection of Lighting Fixtures for Street Lighting Network | 2026-10-20 → 2026-10-27 (+7d) | 2026-11-18 → 2026-11-25 (+7d) |  | -153d → -159d |  |

| ID | Task | Start | Finish | Complete | Total float | Other |
| --- | --- | --- | --- | --- | --- | --- |
| 4 | **Termination and Testing Works** | 2026-11-07 → 2026-10-27 (-11d) | 2026-12-06 → 2026-11-25 (-11d) |  |  |  |
| PRO-R15-SL-DL-130 | Material Delivery & Site Inspection of Fuse Boxes for Street Lighting Network | 2026-11-07 → 2026-10-27 (-11d) | 2026-12-06 → 2026-11-25 (-11d) |  | -156d → -147d |  |
| PRO-R15-SL-DL-170 | Material Delivery & Site Inspection of Cable Lugs for Street Lighting Network | 2026-11-07 → 2026-10-27 (-11d) | 2026-12-06 → 2026-11-25 (-11d) |  | -119d → -113d |  |
| 4 | **Road 10 Local 2 ( 2352 LM )** |  | 2026-12-06 → 2026-12-02 (-4d) |  |  |  |
| PRO-R10-SL-DL-100 | Material Delivery & Site Inspection of Lighting Cables for Street Lighting Network |  |  |  |  | resources Supply, installation , test and operation of cables, Copper, (4Cx25mm²,Cu/XLPE/SWA/PVC +1x16mm² PVC/PVC) [5775] → Supply, installation , test and operation of cables, Copper, (4Cx25mmï¿½,Cu/XLPE/SWA/PVC +1x16mmï¿½ PVC/PVC) [5775] |
| 2 | **Lighting Poles Works** |  | 2026-11-18 → 2026-11-25 (+7d) |  |  |  |
| PRO-R10-SL-DL-140 | Material Delivery & Site Inspection of Lighting Fixtures for Street Lighting Network | 2026-10-20 → 2026-10-27 (+7d) | 2026-11-18 → 2026-11-25 (+7d) |  | -128.5d → -134.5d |  |
| 3 | **Distribution Panel Board** |  | 2026-10-26 → 2026-10-29 (+3d) |  |  |  |
| PRO-R10-SL-DL-160 | Material Delivery & Site Inspection of Distrubution Panel Boards for Street Lighting Network |  | 2026-10-26 → 2026-10-29 (+3d) |  | -94d → -97d |  |
| 4 | **Termination and Testing Works** |  | 2026-12-06 → 2026-11-25 (-11d) |  |  |  |
| PRO-R10-SL-DL-130 | Material Delivery & Site Inspection of Fuse Boxes for Street Lighting Network |  | 2026-12-06 → 2026-11-25 (-11d) |  | -156d → -147d |  |
| PRO-R10-SL-DL-170 | Material Delivery & Site Inspection of Cable Lugs for Street Lighting Network |  | 2026-12-06 → 2026-11-25 (-11d) |  | -119d → -113d |  |
| 5 | **Earthing System Works** | 2026-10-27 → 2026-11-03 (+7d) | 2026-11-25 → 2026-12-02 (+7d) |  |  |  |
| PRO-R10-SL-DL-150 | Material Delivery & Site Inspection of Lighting Earthing for Street Lighting Network | 2026-10-27 → 2026-11-03 (+7d) | 2026-11-25 → 2026-12-02 (+7d) |  | -135d → -141d |  |
| 6 | **Road 14 Local 1 ( 584 LM )** |  | 2026-12-29 → 2026-12-22 (-7d) |  |  |  |
| PRO-R14-SL-DL-100 | Material Delivery & Site Inspection of Lighting Cables for Street Lighting Network |  |  |  |  | resources Supply, installation , test and operation of cables, Copper, (4Cx25mm²,Cu/XLPE/SWA/PVC +1x16mm² PVC/PVC) [2478] → Supply, installation , test and operation of cables, Copper, (4Cx25mmï¿½,Cu/XLPE/SWA/PVC +1x16mmï¿½ PVC/PVC) [2478] |
| 2 | **Lighting Poles Works** |  | 2026-11-18 → 2026-11-25 (+7d) |  |  |  |
| PRO-R14-SL-DL-140 | Material Delivery & Site Inspection of Lighting Fixtures for Street Lighting Network | 2026-10-20 → 2026-10-27 (+7d) | 2026-11-18 → 2026-11-25 (+7d) |  | -128.5d → -134.5d |  |
| 4 | **Termination and Testing Works** | 2026-11-30 → 2026-11-23 (-7d) | 2026-12-29 → 2026-12-22 (-7d) |  |  |  |
| PRO-R14-SL-DL-130 | Material Delivery & Site Inspection of Fuse Boxes for Street Lighting Network | 2026-11-30 → 2026-11-23 (-7d) | 2026-12-29 → 2026-12-22 (-7d) |  | -151.5d → -145.5d |  |
| PRO-R14-SL-DL-170 | Material Delivery & Site Inspection of Cable Lugs for Street Lighting Network | 2026-11-30 → 2026-11-23 (-7d) | 2026-12-29 → 2026-12-22 (-7d) |  | -119d → -113d |  |
| 2 | **Road 09 Local 2 ( 2278 LM )** |  | 2026-12-29 → 2026-12-22 (-7d) |  |  |  |
| PRO-R09-SL-DL-100 | Material Delivery & Site Inspection of Lighting Cables for Street Lighting Network |  |  |  |  | resources Supply, installation , test and operation of cables, Copper, (4Cx25mm²,Cu/XLPE/SWA/PVC +1x16mm² PVC/PVC) [5754] → Supply, installation , test and operation of cables, Copper, (4Cx25mmï¿½,Cu/XLPE/SWA/PVC +1x16mmï¿½ PVC/PVC) [5754] |
| 2 | **Lighting Poles Works** |  | 2026-11-18 → 2026-11-25 (+7d) |  |  |  |
| PRO-R09-SL-DL-140 | Material Delivery & Site Inspection of Lighting Fixtures for Street Lighting Network | 2026-10-20 → 2026-10-27 (+7d) | 2026-11-18 → 2026-11-25 (+7d) |  | -128.5d → -134.5d |  |
| 4 | **Termination and Testing Works** | 2026-11-30 → 2026-11-23 (-7d) | 2026-12-29 → 2026-12-22 (-7d) |  |  |  |
| PRO-R09-SL-DL-130 | Material Delivery & Site Inspection of Fuse Boxes for Street Lighting Network | 2026-11-30 → 2026-11-23 (-7d) | 2026-12-29 → 2026-12-22 (-7d) |  | -151.5d → -145.5d |  |
| PRO-R09-SL-DL-170 | Material Delivery & Site Inspection of Cable Lugs for Street Lighting Network | 2026-11-30 → 2026-11-23 (-7d) | 2026-12-29 → 2026-12-22 (-7d) |  | -119d → -113d |  |
| 5 | **Earthing System Works** | 2026-10-27 → 2026-11-03 (+7d) | 2026-11-25 → 2026-12-02 (+7d) |  |  |  |
| PRO-R09-SL-DL-150 | Material Delivery & Site Inspection of Lighting Earthing for Street Lighting Network | 2026-10-27 → 2026-11-03 (+7d) | 2026-11-25 → 2026-12-02 (+7d) |  | -110.5d → -116.5d |  |
| 5 | **Road 11 Local 1 ( 670 LM )** | 2026-07-23 → 2026-07-07 (-16d) | 2026-12-29 → 2026-12-22 (-7d) |  |  |  |
| 1 | **Cabling Works** | 2026-07-23 → 2026-07-09 (-14d) |  |  |  |  |
| PRO-R11-SL-DL-100 | Material Delivery & Site Inspection of Lighting Cables for Street Lighting Network | 2026-07-23 A → 2026-07-09 A (-14d) |  |  |  | resources Supply, installation , test and operation of cables, Copper, (4Cx25mm²,Cu/XLPE/SWA/PVC +1x16mm² PVC/PVC) [1701] → Supply, installation , test and operation of cables, Copper, (4Cx25mmï¿½,Cu/XLPE/SWA/PVC +1x16mmï¿½ PVC/PVC) [1701] |
| 2 | **Lighting Poles Works** | 2026-08-19 → 2026-07-07 (-43d) | 2026-11-18 → 2026-11-25 (+7d) |  |  |  |
| PRO-R11-SL-DL-110 | Material Delivery & Site Inspection of Lighting Poles Foundations for Street Lighting Network | 2026-08-19 A → 2026-07-07 A (-43d) |  |  |  |  |
| PRO-R11-SL-DL-120 | Material Delivery & Site Inspection of Lighting Poles for Street Lighting Network | 2026-08-19 A → 2026-07-07 A (-43d) |  |  |  |  |
| PRO-R11-SL-DL-140 | Material Delivery & Site Inspection of Lighting Fixtures for Street Lighting Network | 2026-10-20 → 2026-10-27 (+7d) | 2026-11-18 → 2026-11-25 (+7d) |  | -49.5d → -55.5d |  |
| 4 | **Termination and Testing Works** | 2026-11-30 → 2026-11-23 (-7d) | 2026-12-29 → 2026-12-22 (-7d) |  |  |  |
| PRO-R11-SL-DL-130 | Material Delivery & Site Inspection of Fuse Boxes for Street Lighting Network | 2026-11-30 → 2026-11-23 (-7d) | 2026-12-29 → 2026-12-22 (-7d) |  | -115d → -109d |  |
| PRO-R11-SL-DL-170 | Material Delivery & Site Inspection of Cable Lugs for Street Lighting Network | 2026-11-30 → 2026-11-23 (-7d) | 2026-12-29 → 2026-12-22 (-7d) |  | -119d → -113d |  |
| 5 | **Road 11 Local 1 ( 670 LM )** | 2026-08-01 → 2026-07-09 (-23d) |  |  |  |  |
| 1 | **Ducts Works** | 2026-08-01 → 2026-07-09 (-23d) |  |  |  |  |
| PRO-R11-TE-DL-100 | Material Delivery & Site Inspection for Ducts of Telecom Network | 2026-08-01 A → 2026-07-09 A (-23d) |  |  |  |  |
| 1 | **Superstructure Works** |  | 2026-12-05 → 2026-11-02 (-33d) |  |  |  |
| 3 | **1st Material Delivery & Site Inspection** | 2025-10-04 → 2025-05-19 (-138d) | 2026-12-05 → 2026-09-08 (-88d) |  |  |  |
| SL | **Sewage Pump Stations ( PS 06 )** | 2026-10-20 → 2025-10-13 (-372d) | 2026-12-05 → 2025-11-29 (-371d) |  |  |  |
| PRO-SPS-CV-1DL-10 | 1ST Material Delivery for Civil Works for Sewage Pump Stations ( PS 06 ) | 2026-10-20 → 2025-10-13 A (-372d) | 2026-12-05 → 2025-11-29 A (-371d) | 0% → 100% | -14d → none |  |
| TE | **Storm Drainage Ponds ( PO-J1 , PO-J2 )** | 2025-10-04 → 2025-05-19 (-138d) |  |  |  |  |
| PRO-DPO-CV-1DL-10 | 1ST Material Delivery for Civil Works for Storm Drainage Ponds ( PO-J1 ) | 2025-10-04 A → 2025-05-19 A (-138d) |  |  |  |  |
| 4 | **Material Delivery & Site Inspection** |  | 2026-11-01 → 2026-11-02 (+1d) |  |  |  |
| TE | **Storm Drainage Ponds ( PO-J1 , PO-J2 )** |  | 2026-11-01 → 2026-11-02 (+1d) |  |  |  |
| PRO-DPO-CV-DL-10 | Material Delivery & Site Inspection for Civil Works for Storm Drainage Ponds ( PO-J1 ) |  | 2026-10-22 → 2026-10-28 (+6d) |  | -23d → -28d |  |
| PRO-DPO-CV-DL-20 | Material Delivery & Site Inspection for Civil Works for Storm Drainage Ponds ( PO-J2 ) |  | 2026-11-01 → 2026-11-02 (+1d) |  | -115d → -116d |  |
| LL | **Long Lead Time Items** |  | 2026-11-23 → 2026-11-12 (-11d) |  |  |  |
| 1 | **Superstructure Works** |  | 2026-11-23 → 2026-11-12 (-11d) |  |  |  |
| SL | **Sewage Pump Stations ( PS 06 )** |  | 2026-11-23 → 2026-11-12 (-11d) |  |  |  |
| 4 | **Material Site Inspection** |  | 2026-11-23 → 2026-11-12 (-11d) |  |  |  |
| PRO-SPS7-LL-MSI-10 | Material Site Inspection for Electromechanical Works for Sewage Pump Stations ( PS06 ) |  | 2026-11-23 → 2026-11-12 (-11d) |  | -34d → -25d | resources Constant speed drive, sewage pumps, centrifugal submersible type; 2 duty / 1 standby capable of delivering a flow rate of flow 424 l/s against a total head of 22m, rate includes provision of MCC [1]; Odour control system [1]; Gate valves for the pump station [3]; Non return valves for the pump station [3]; Penstok for the pump station [1]; Standby Diesel Generator Set 400/230KVA, 3P, 60Hz in Sound Attenuated Enclosure KVA rating by contractor as per total load onsite after pumps selection [1]; Supply, install, test and commission of manually operated fuel pump, The pump should be supplied with all accessories as specified. [1]; Supply, install, test and commission of Fuel pump with capacity of not less than 1 hour to fill the daily tank of generator at required head. [1]; supply, install, test & commission Automatic Transfer Switch ATS panel including all accessories & works required. [1]; Supply, install, test and commission under ground fuel tank for 3 days of continuous operation of the standby generator at full load. The tank should be supplied with all accessories such as black steel pipes, float switches with two contactors …etc. as s [1]; 4Cx 185mm2 Cu/XLPE//PVC from nearest power supply (SEC) and generator to the ATS and from ATS to MCC-SPS [600]; 4Cx 95mm2 Cu/XLPE//PVC from nearest power supply (SEC) and generator to the ATS and from ATS to MCC-SPS [400]; 4Cx 10mm2 Cu/XLPE/SWA/PVC from MCC-SPS to ELP [50]; 4Cx 150mm2 + 1Cx25mm2 SUBMERGED RUBBER INSULATED FLEXIBLE CABLE from MCC to PUMP1& PUMP2. [210]; 4Cx 10mm2 + 1Cx10mm2 Cu/XLPE/PVC FROM MCC-SPS to DB-SPS [50]; 4Cx 10mm2 + 1Cx10mm2 Cu/XLPE/PVC FROM MCC-SPS to Penstok [100]; 4Cx 10mm2 + 1Cx10mm2 Cu/XLPE/PVC FROM MCC-SPS to Odor Control Unit [100]; 4Cx 6mm2 + 1Cx6mm2 Cu/XLPE/PVC FROM MCC-SPS to the mechanical bar screen [80]; 3Cx 6mm2 Cu/XLPE/PVC FROM MCC-SPS to the two fuel pumps. [100]; 3Cx 4mm2 Cu/XLPE/PVC to the AC. [80]; MCC [1]; Surge protection system study [1]; Surge protection system [1]; Local Control Panel, IP 65 [4]; Isolator/disconnect switches IP65 [16]; DB-SPS Panel [4]; ELP Panel: phtocell , timer,40 Ampere, 3P, IP66,60Hz incomer MCCB & 5ways outgoing MCCB [4]; Electrical Hand Hole 600mm x 600mm x 800mm concrete hand hole with hot dip galvanized heavy duty steel cover [10]; Electrical Hand Hole 400mm x 400mm x 600mm concrete hand hole with hot dip galvanized heavy duty steel cover [10]; Surfaced Mounted Light [8]; 13A DOUBLE SWITCH SOCKET OUTLET (WEATHER PROOF) [8]; 20A SWITCH SOCKET OUTLET (FOR SPLIT UNIT), (WEATHER PROOF) [8]; Supply, install and test the following grounding and lightning system including ground wires, ground rods, inspection pits, terminations, bonding/clamping, civil works and all materials and accessories required to complete the work according to specificat [2]; Supply and install telephone and fire alarm system including smoke detector, cabinet, control panel, cables, conduits, switches, and other accessories to complete as per drawings and specifications. [1]; Supply, installation, testing and commissioning of all control, instrumentation( as shown on the P & ID drawings cable schedule) including all installation accessories such as termination kits, lugs, glands, cable containments, junction boxes , conduits, [2]; Supply, installation, testing and commissioning of all field instruments such as hydrostatic level meter, level switches, flow switch, and all necessary instruments including all installation accessories, etc. all as per specifications and design drawings [2]; DX wall mounted Split/AC [2]; CO2 fire extinguishers [2]; Powder fire extinguishers [2]; Flood lights shall be high pole with 250 watt HPS luminaire [4]; 1 - way duct - not exceeding 1.5m deep [1]; 2 - way duct - not exceeding 1.5m deep [1]; 8 - way duct - not exceeding 1.5m deep [1]; Earth pits [1]; Cable draw pit, 600x600mm [1]; Supply, installation, testing and commissioning of PLC system [2] → Constant speed drive, sewage pumps, centrifugal submersible type; 2 duty / 1 standby capable of delivering a flow rate of flow 424 l/s against a total head of 22m, rate includes provision of MCC [1]; Odour control system [1]; Gate valves for the pump station [3]; Non return valves for the pump station [3]; Penstok for the pump station [1]; Standby Diesel Generator Set 400/230KVA, 3P, 60Hz in Sound Attenuated Enclosure KVA rating by contractor as per total load onsite after pumps selection [1]; Supply, install, test and commission of manually operated fuel pump, The pump should be supplied with all accessories as specified. [1]; Supply, install, test and commission of Fuel pump with capacity of not less than 1 hour to fill the daily tank of generator at required head. [1]; supply, install, test & commission Automatic Transfer Switch ATS panel including all accessories & works required. [1]; Supply, install, test and commission under ground fuel tank for 3 days of continuous operation of the standby generator at full load. The tank should be supplied with all accessories such as black steel pipes, float switches with two contactors ï¿½etc. as [1]; 4Cx 185mm2 Cu/XLPE//PVC from nearest power supply (SEC) and generator to the ATS and from ATS to MCC-SPS [600]; 4Cx 95mm2 Cu/XLPE//PVC from nearest power supply (SEC) and generator to the ATS and from ATS to MCC-SPS [400]; 4Cx 10mm2 Cu/XLPE/SWA/PVC from MCC-SPS to ELP [50]; 4Cx 150mm2 + 1Cx25mm2 SUBMERGED RUBBER INSULATED FLEXIBLE CABLE from MCC to PUMP1& PUMP2. [210]; 4Cx 10mm2 + 1Cx10mm2 Cu/XLPE/PVC FROM MCC-SPS to DB-SPS [50]; 4Cx 10mm2 + 1Cx10mm2 Cu/XLPE/PVC FROM MCC-SPS to Penstok [100]; 4Cx 10mm2 + 1Cx10mm2 Cu/XLPE/PVC FROM MCC-SPS to Odor Control Unit [100]; 4Cx 6mm2 + 1Cx6mm2 Cu/XLPE/PVC FROM MCC-SPS to the mechanical bar screen [80]; 3Cx 6mm2 Cu/XLPE/PVC FROM MCC-SPS to the two fuel pumps. [100]; 3Cx 4mm2 Cu/XLPE/PVC to the AC. [80]; MCC [1]; Surge protection system study [1]; Surge protection system [1]; Local Control Panel, IP 65 [4]; Isolator/disconnect switches IP65 [16]; DB-SPS Panel [4]; ELP Panel: phtocell , timer,40 Ampere, 3P, IP66,60Hz incomer MCCB & 5ways outgoing MCCB [4]; Electrical Hand Hole 600mm x 600mm x 800mm concrete hand hole with hot dip galvanized heavy duty steel cover [10]; Electrical Hand Hole 400mm x 400mm x 600mm concrete hand hole with hot dip galvanized heavy duty steel cover [10]; Surfaced Mounted Light [8]; 13A DOUBLE SWITCH SOCKET OUTLET (WEATHER PROOF) [8]; 20A SWITCH SOCKET OUTLET (FOR SPLIT UNIT), (WEATHER PROOF) [8]; Supply, install and test the following grounding and lightning system including ground wires, ground rods, inspection pits, terminations, bonding/clamping, civil works and all materials and accessories required to complete the work according to specificat [2]; Supply and install telephone and fire alarm system including smoke detector, cabinet, control panel, cables, conduits, switches, and other accessories to complete as per drawings and specifications. [1]; Supply, installation, testing and commissioning of all control, instrumentation( as shown on the P & ID drawings cable schedule) including all installation accessories such as termination kits, lugs, glands, cable containments, junction boxes , conduits, [2]; Supply, installation, testing and commissioning of all field instruments such as hydrostatic level meter, level switches, flow switch, and all necessary instruments including all installation accessories, etc. all as per specifications and design drawings [2]; DX wall mounted Split/AC [2]; CO2 fire extinguishers [2]; Powder fire extinguishers [2]; Flood lights shall be high pole with 250 watt HPS luminaire [4]; 1 - way duct - not exceeding 1.5m deep [1]; 2 - way duct - not exceeding 1.5m deep [1]; 8 - way duct - not exceeding 1.5m deep [1]; Earth pits [1]; Cable draw pit, 600x600mm [1]; Supply, installation, testing and commissioning of PLC system [2] |
| CON | **Construction Works** |  | 2027-08-17 → 2027-08-24 (+7d) |  |  |  |
| INF | **Infrastructure Networks** |  | 2027-08-17 → 2027-08-24 (+7d) |  |  |  |
| 1 | **Phase 2 Block "J"** |  | 2027-06-01 → 2027-06-08 (+7d) |  |  |  |
| SW | **Rising Main Network** |  | 2026-11-08 → 2026-11-15 (+7d) |  |  |  |
| ML | **Main Line Sections** |  | 2026-11-08 → 2026-11-15 (+7d) |  |  |  |
| CO-RM-SW-310 | Trench Backfilling and Compaction Works for Main Lines of Rising Main Network |  | 2026-11-08 → 2026-11-15 (+7d) |  | 55d → 49d |  |
| MH | **Manholes** |  | 2026-10-20 → 2026-11-07 (+18d) |  |  |  |
| CO-RM-SW-330 | Installation RC Footing Works for Main Line Manholes of Rising Main Network |  | 2026-10-20 → 2026-10-27 (+7d) |  | 71d → 56d |  |
| CO-RM-SW-340 | Install Grp Liner Wall Works for Main Line Manholes of Rising Main Network |  | 2026-10-20 → 2026-10-27 (+7d) |  | 71d → 56d |  |
| CO-RM-SW-350 | Pouring Grp Liner Wall Works for Main Line Manholes of Rising Main Network |  | 2026-10-20 → 2026-10-28 (+8d) |  | 71d → 56d |  |
| CO-RM-SW-360 | Backfilling Works for Main Line Manholes of Rising Main Network |  | 2026-10-20 → 2026-10-28 (+8d) |  | 71d → 56d |  |
| CO-RM-SW-370 | Testing Works for Main Line Manholes of Rising Main Network |  | 2026-10-20 → 2026-11-07 (+18d) |  | 71d → 56d |  |

| ID | Task | Start | Finish | Complete | Total float | Other |
| --- | --- | --- | --- | --- | --- | --- |
| VC | **Valves Chamber** |  | 2026-11-08 → 2026-11-15 (+7d) |  |  |  |
| CO-RM-SW-400 | RC Wall Works for Valve Chambers and Washout chamber of Rising Main Network |  | 2026-10-20 → 2026-10-27 (+7d) |  | 55d → 49d |  |
| CO-RM-SW-410 | RC Slab Works for Valve Chambers and Washout chamber of Rising Main Network | 2026-10-20 → 2026-10-27 (+7d) | 2026-10-27 → 2026-11-03 (+7d) |  | 55d → 49d |  |
| CO-RM-SW-420 | Insulation Works for Valve Chambers and Washout chamber of Rising Main Network | 2026-10-28 → 2026-11-04 (+7d) | 2026-10-29 → 2026-11-05 (+7d) |  | 55d → 49d |  |
| CO-RM-SW-430 | Backfilling Works for Valve Chambers and Washout chamber of Rising Main Network | 2026-10-31 → 2026-11-07 (+7d) | 2026-11-04 → 2026-11-11 (+7d) |  | 55d → 49d |  |
| CO-RM-SW-440 | Testing and Covering Works for Valve Chambers and Washout chamber of Rising Main Network | 2026-11-05 → 2026-11-12 (+7d) | 2026-11-08 → 2026-11-15 (+7d) |  | 55d → 49d |  |
| 2 | **Road 09 Local 2 ( 2278 LM )** |  | 2027-06-01 → 2027-06-08 (+7d) |  |  |  |
| SW_1 | **SW_1** |  | 2027-05-23 → 2027-05-30 (+7d) |  |  |  |
| SD | **Storm Drainage Network** |  | 2026-10-27 → 2026-11-15 (+19d) |  |  |  |
| MH | **Manholes** |  | 2026-10-21 → 2026-11-15 (+25d) |  |  |  |
| CO-R09.S01-SD-210 | Testing Works for Manholes of Storm Drainage Network-[Road 09] -[SW-1] |  | 2026-10-21 → 2026-11-15 (+25d) | 40% → 60% | 44d → 23d |  |
| CB | **Catch Basin Sections** |  | 2026-10-27 → 2026-10-31 (+4d) |  |  |  |
| CO-R09.S01-SD-160 | Testing Works for Catch Basins of Storm Drainage Network-[Road 09] -[SW-1] |  | 2026-10-27 → 2026-10-31 (+4d) |  | -122d → -138d |  |
| CO-R09.S01-SD-140 | Trench Excavation and Bedding Works for Catch Basins of Storm Drainage Network-[Road 09] -[SW-1] |  | 2026-10-22 → 2026-10-29 (+7d) |  | -119d → -138d |  |
| CO-R09.S01-SD-150 | Installation and Pipes Laying Connection Works for Catch Basins of Storm Drainage Network-[Road 09] -[SW-1] |  | 2026-10-22 → 2026-10-29 (+7d) |  | -119d → -138d |  |
| CO-R09.S01-SD-170 | Trench Backfilling and Compaction Works for Catch Basins of Storm Drainage Network-[Road 09] -[SW-1] |  | 2026-10-27 → 2026-10-31 (+4d) |  | -122d → -138d |  |
| IR | **Irrigation Network** |  | 2026-10-27 → 2026-11-03 (+7d) |  |  |  |
| ML | **Main Line Pipes** |  | 2026-10-27 → 2026-11-03 (+7d) |  |  |  |
| CO-R09.S01-IR-120 | Installation Works for Main Line Valves of Irrigation Network-[Road 09] -[SW-1] | 2026-10-20 → 2026-10-27 (+7d) | 2026-10-27 → 2026-11-03 (+7d) |  | -189.5d → -195.5d |  |
| SL | **Street Lighting Network** | 2026-10-28 → 2026-11-04 (+7d) | 2027-04-20 → 2027-04-27 (+7d) |  |  |  |
| LP | **Lighting Poles Works** | 2026-10-28 → 2026-11-04 (+7d) | 2027-01-17 → 2027-01-24 (+7d) |  |  |  |
| CO-R09.S01-SL-100 | Foundation Excavation Works for Lighting Poles of Street Lighting Network-[Road 09] -[SW-1] | 2026-10-28 → 2026-11-04 (+7d) | 2026-11-08 → 2026-11-15 (+7d) |  | -189.5d → -195.5d |  |
| CO-R09.S01-SL-110 | Installation Works for Lighting Poles Foundation of Street Lighting Network-[Road 09] -[SW-1] | 2026-11-09 → 2026-11-16 (+7d) | 2026-11-22 → 2026-11-29 (+7d) |  | -189.5d → -195.5d |  |
| CO-R09.S01-SL-120 | Installation Works for Lighting Poles of Street Lighting Network-[Road 09] -[SW-1] | 2026-12-16 → 2026-12-23 (+7d) | 2026-12-28 → 2027-01-04 (+7d) |  | -189.5d → -195.5d |  |
| CO-R09.S01-SL-210 | Backfilling Works for Lighting Poles of Street Lighting Network-[Road 09] -[SW-1] | 2026-12-29 → 2027-01-05 (+7d) | 2027-01-11 → 2027-01-18 (+7d) |  | -189.5d → -195.5d |  |
| CO-R09.S01-SL-130 | Installation Works for Lighting Fixtures With Drop Wire of Street Lighting Network-[Road 09] -[SW-1] | 2027-01-04 → 2027-01-11 (+7d) | 2027-01-17 → 2027-01-24 (+7d) |  | -183.5d → -189.5d |  |
| CO-R09.S01-SL-200 | Testing Works for Lighting Poles of Street Lighting Network-[Road 09] -[SW-1] | 2027-01-12 → 2027-01-19 (+7d) | 2027-01-17 → 2027-01-24 (+7d) |  | -183.5d → -189.5d |  |
| CW | **Cabling Works** | 2026-11-11 → 2026-11-18 (+7d) | 2026-12-15 → 2026-12-22 (+7d) |  |  |  |
| CO-R09.S01-SL-140 | Trench Excavation and Bedding Works for Street Lighting Network-[Road 09] -[SW-1] | 2026-11-11 → 2026-11-18 (+7d) | 2026-11-22 → 2026-11-29 (+7d) |  | -189.5d → -195.5d |  |
| CO-R09.S01-SL-150 | Cable Laying Works for Street Lighting Network-[Road 09] -[SW-1] | 2026-11-23 → 2026-11-30 (+7d) | 2026-12-03 → 2026-12-10 (+7d) |  | -189.5d → -195.5d | resources Labor/Helper [80 h]; Electrician [80 h]; Low Current Technician [80 h]; Supply, installation , test and operation of cables, Copper, (4Cx25mm²,Cu/XLPE/SWA/PVC +1x16mm² PVC/PVC) [1870.05] → Labor/Helper [80 h]; Electrician [80 h]; Low Current Technician [80 h]; Supply, installation , test and operation of cables, Copper, (4Cx25mmï¿½,Cu/XLPE/SWA/PVC +1x16mmï¿½ PVC/PVC) [1870.05] |
| CO-R09.S01-SL-160 | Trench Backfilling and Compaction Works for Street Lighting Network-[Road 09] -[SW-1] | 2026-12-05 → 2026-12-12 (+7d) | 2026-12-15 → 2026-12-22 (+7d) |  | -189.5d → -195.5d | resources Skilled Labor/Surveyor [8 h]; Foreman [8 h]; Excavator [80 h]; Water Tank [20 h]; Supply, installation , test and operation of cables, Copper, (4Cx25mm²,Cu/XLPE/SWA/PVC +1x16mm² PVC/PVC) [143.85] → Skilled Labor/Surveyor [8 h]; Foreman [8 h]; Excavator [80 h]; Water Tank [20 h]; Supply, installation , test and operation of cables, Copper, (4Cx25mmï¿½,Cu/XLPE/SWA/PVC +1x16mmï¿½ PVC/PVC) [143.85] |
| DPB | **Distrubution Panel Boards** | 2027-03-03 → 2027-03-14 (+11d) | 2027-04-20 → 2027-04-27 (+7d) |  |  |  |
| CO-R09.S01-SL-170 | Foundation Excavation Works For Panel Boards of Street Lighting Network-[Road 09] -[SW-1] | 2027-03-03 → 2027-03-14 (+11d) | 2027-03-23 → 2027-03-30 (+7d) |  | -189.5d → -195.5d |  |
| CO-R09.S01-SL-180 | Installation Works for Panel Board Concrete Foundations of Street Lighting Network-[Road 09] -[SW-1] | 2027-03-24 → 2027-03-31 (+7d) | 2027-04-06 → 2027-04-13 (+7d) |  | -189.5d → -195.5d |  |
| CO-R09.S01-SL-190 | Installation Works for Lighting Panel Boards of Street Lighting Network-[Road 09] -[SW-1] | 2027-04-07 → 2027-04-14 (+7d) | 2027-04-20 → 2027-04-27 (+7d) |  | -189.5d → -195.5d |  |
| CO-R09.S01-SL-220 | A wall of concrete blocks to install the KWH meter of Street Lighting Network-[Road 09] -[SW-1] | 2027-04-07 → 2027-04-14 (+7d) | 2027-04-20 → 2027-04-27 (+7d) |  | -189.5d → -195.5d |  |
| MV | **Medium Voltage Network** |  | 2026-12-16 → 2027-01-11 (+26d) |  |  |  |
| CW | **Cabling Works** |  | 2026-12-16 → 2027-01-11 (+26d) |  |  |  |
| CO-R09.S01-MV-100 | Trench Excavation and Bedding Works for Medium Voltage Network-[Road 09] -[SW-1] |  | 2026-12-15 → 2026-12-22 (+7d) | 80% → 85% | -161d → -180d |  |
| CO-R09.S01-MV-110 | Cable Laying Works for Medium Voltage Network-[Road 09] -[SW-1] |  | 2026-12-15 → 2027-01-10 (+26d) | 80% → 85% | -161d → -180d | resources Labor/Helper [40 h]; Electrician [40 h]; Low Current Technician [40 h]; 33kv 3Cx400 mm² Al XLPE / LLDPE /PVC Cable [5619.13]; 33kv 3Cx400 mm² Al XLPE /LLDPE/PVC [16.1] → Labor/Helper [40 h]; Electrician [40 h]; Low Current Technician [40 h]; 33kv 3Cx400 mmï¿½ Al XLPE / LLDPE /PVC Cable [5619.13]; 33kv 3Cx400 mmï¿½ Al XLPE /LLDPE/PVC [16.1] |
| CO-R09.S01-MV-120 | Trench Backfilling and Compaction Works for Medium Voltage Network-[Road 09] -[SW-1] |  | 2026-12-16 → 2027-01-11 (+26d) | 80% → 85% | -161d → -180d | resources Skilled Labor/Surveyor [6 h]; Foreman [6 h]; Excavator [56 h]; Water Tank [14 h]; 33kv 3Cx400 mm² Al XLPE / LLDPE /PVC Cable [2408.2]; 33kv 3Cx400 mm² Al XLPE /LLDPE/PVC [6.9] → Skilled Labor/Surveyor [6 h]; Foreman [6 h]; Excavator [56 h]; Water Tank [14 h]; 33kv 3Cx400 mmï¿½ Al XLPE / LLDPE /PVC Cable [2408.2]; 33kv 3Cx400 mmï¿½ Al XLPE /LLDPE/PVC [6.9] |
| TE | **Telecom Network** | 2026-12-31 → 2027-01-12 (+12d) | 2027-02-13 → 2027-02-25 (+12d) |  |  |  |
| PD | **Ducts Works** | 2026-12-31 → 2027-01-12 (+12d) | 2027-01-13 → 2027-01-25 (+12d) |  |  |  |
| CO-R09.S01-TE-100 | Trench Excavation and Bedding Works for Ducts of Telecom Network-[Road 09] -[SW-1] | 2026-12-31 → 2027-01-12 (+12d) | 2027-01-02 → 2027-01-13 (+11d) |  | -173d → -180d |  |
| CO-R09.S01-TE-110 | Pipes Laying Works for Ducts of Telecom Network-[Road 09] -[SW-1] | 2027-01-03 → 2027-01-14 (+11d) | 2027-01-06 → 2027-01-18 (+12d) |  | -159d → -167d |  |
| CO-R09.S01-TE-120 | Pouring Plain Concrete Above Ducts of Telecom Network-[Road 09] -[SW-1] | 2027-01-07 → 2027-01-19 (+12d) | 2027-01-09 → 2027-01-20 (+11d) |  | -159d → -166d |  |
| CO-R09.S01-TE-130 | Trench Backfilling and Compaction Works for Ducts of Telecom Network-[Road 09] -[SW-1] | 2027-01-10 → 2027-01-21 (+11d) | 2027-01-13 → 2027-01-25 (+12d) |  | -159d → -166d |  |
| MH | **Manholes Works** | 2027-01-03 → 2027-01-14 (+11d) | 2027-02-13 → 2027-02-25 (+12d) |  |  |  |
| CO-R09.S01-TE-140 | Excavation Works for Manholes of Telecom Network-[Road 09] -[SW-1] | 2027-01-03 → 2027-01-14 (+11d) | 2027-01-16 → 2027-01-27 (+11d) |  | -173d → -180d |  |
| CO-R09.S01-TE-150 | Installation Works for Manholes of Telecom Network-[Road 09] -[SW-1] | 2027-01-17 → 2027-01-28 (+11d) | 2027-01-30 → 2027-02-10 (+11d) |  | -173d → -180d |  |
| CO-R09.S01-TE-160 | Backfilling Works for Manholes of Telecom Network-[Road 09] -[SW-1] | 2027-01-31 → 2027-02-11 (+11d) | 2027-02-13 → 2027-02-25 (+12d) |  | -173d → -180d |  |
| RD | **Road Works** |  | 2027-05-23 → 2027-05-30 (+7d) |  |  |  |
| RD | **Pre-Bituminous Construction** |  | 2027-02-28 → 2027-03-02 (+2d) |  |  |  |
| CO-R09.S01-RD-P-100 | Capping and Subgrade Layer for Road Works-[Road 09] -[SW-1] |  | 2027-02-13 → 2027-02-25 (+12d) |  | -173d → -180d |  |
| CO-R09.S01-RD-P-110 | Aggregate Base Course Layer for Road Works-[Road 09] -[SW-1] | 2027-02-03 → 2027-02-06 (+3d) | 2027-02-28 → 2027-03-02 (+2d) |  | -98d → -100d |  |
| LS | **Pavement Works** |  | 2027-05-23 → 2027-05-30 (+7d) |  |  |  |
| CO-R09.S01-RD-P-130 | Fixing of Interlock Tiles for Sidewalks Pavement-[Road 09] -[SW-1] | 2027-05-03 → 2027-05-10 (+7d) | 2027-05-23 → 2027-05-30 (+7d) |  | -189.5d → -195.5d |  |
| SW_2 | **SW_2** |  | 2027-06-01 → 2027-06-08 (+7d) |  |  |  |
| SW | **Sewage Network** |  | 2026-10-21 → 2026-10-27 (+6d) |  |  |  |
| ML | **Main Line Sections** |  | 2026-10-21 → 2026-10-27 (+6d) |  |  |  |
| CO-R09.S02-SW-100 | Trench Excavation and Bedding Works for Main Lines of Sewage Network-[Road 09]-[SW-2] |  | 2026-10-20 → 2026-10-27 (+7d) |  | -82d → -93d |  |
| CO-R09.S02-SW-120 | Pipes Laying Works for Main Lines of Sewage Network-[Road 09]-[SW-2] |  | 2026-10-20 → 2026-10-27 (+7d) |  | -82d → -93d |  |
| CO-R09.S02-SW-130 | Trench Backfilling and Compaction Works for Main Lines of Sewage Network-[Road 09]-[SW-2] |  | 2026-10-21 → 2026-10-27 (+6d) |  | -82d → -93d |  |
| MH | **Manholes** |  | 2026-10-20 → 2026-10-27 (+7d) |  |  |  |
| CO-R09.S02-SW-210 | Testing Works for Main Line Manholes of Sewage Network-[Road 09]-[SW-2] | 2026-10-20 → 2026-10-27 (+7d) | 2026-10-20 → 2026-10-27 (+7d) |  | -81d → -93d |  |
| SD | **Storm Drainage Network** |  | 2026-10-24 → 2026-11-15 (+22d) |  |  |  |
| MH | **Manholes** |  | 2026-10-21 → 2026-11-15 (+25d) |  |  |  |
| CO-R09.S02-SD-220 | Backfilling Works for Manholes of Storm Drainage Network-[Road 09]-[SW-2] |  | 2026-10-20 → 2026-10-27 (+7d) |  | -119d → -138d |  |
| CO-R09.S02-SD-210 | Testing Works for Manholes of Storm Drainage Network-[Road 09]-[SW-2] |  | 2026-10-21 → 2026-11-15 (+25d) |  | -73d → -94d |  |
| CB | **Catch Basin Sections** |  | 2026-10-24 → 2026-10-28 (+4d) |  |  |  |

| ID | Task | Start | Finish | Total float | Other |
| --- | --- | --- | --- | --- | --- |
| CO-R09.S02-SD-140 | Trench Excavation and Bedding Works for Catch Basins of Storm Drainage Network-[Road 09]-[SW-2] |  | 2026-10-20 → 2026-10-27 (+7d) | -119d → -138d |  |
| CO-R09.S02-SD-150 | Installation and Pipes Laying Connection Works for Catch Basins of Storm Drainage Network-[Road 09]-[SW-2] |  | 2026-10-20 → 2026-10-27 (+7d) | -119d → -136d |  |
| CO-R09.S02-SD-170 | Trench Backfilling and Compaction Works for Catch Basins of Storm Drainage Network-[Road 09]-[SW-2] |  | 2026-10-24 → 2026-10-28 (+4d) | -119d → -136d |  |
| CO-R09.S02-SD-160 | Testing Works for Catch Basins of Storm Drainage Network-[Road 09]-[SW-2] |  | 2026-10-24 → 2026-10-28 (+4d) | -119d → -136d |  |
| PW | **Potable Water Network** |  | 2026-11-08 → 2026-11-15 (+7d) |  |  |
| ML | **Main Line Sections** |  | 2026-11-08 → 2026-11-15 (+7d) |  |  |
| CO-R09.S02-PW-100 | Trench Excavation and Bedding Works for Main Lines of Potable Water Network-[Road 09]-[SW-2] |  | 2026-10-20 → 2026-10-27 (+7d) | -171.5d → -177.5d |  |
| CO-R09.S02-PW-110 | Pipes Laying and accessories for Main Lines of Potable Water Network-[Road 09]-[SW-2] |  | 2026-10-20 → 2026-11-02 (+13d) | -155.5d → -166.5d |  |
| CO-R09.S02-PW-130 | Trench Backfilling and Compaction Works for Main Lines of Potable Water Network-[Road 09]-[SW-2] |  | 2026-11-08 → 2026-11-15 (+7d) | -171.5d → -177.5d |  |
| VC | **Valve Chamber** | 2026-10-21 → 2026-10-28 (+7d) | 2026-10-27 → 2026-11-03 (+7d) |  |  |
| CO-R09.S02-PW-210 | Installation Works for Main Line Valves and Valve Chambers of Potable Water Network-[Road 09]-[SW-2] | 2026-10-21 → 2026-10-28 (+7d) | 2026-10-27 → 2026-11-03 (+7d) | -161.5d → -167.5d |  |
| FH | **Fire Hydrant** | 2026-10-21 → 2026-10-28 (+7d) | 2026-11-08 → 2026-11-15 (+7d) |  |  |
| CO-R09.S02-PW-140 | Excavation Works for Fire Hydrants of Potable Water Network-[Road 09]-[SW-2] | 2026-10-21 → 2026-10-28 (+7d) | 2026-10-26 → 2026-11-02 (+7d) | -171.5d → -177.5d |  |
| CO-R09.S02-PW-150 | Installation Works for Fire Hydrant of Potable Water Network-[Road 09]-[SW-2] | 2026-10-27 → 2026-11-03 (+7d) | 2026-11-02 → 2026-11-09 (+7d) | -171.5d → -177.5d |  |
| CO-R09.S02-PW-160 | Trench Backfilling and Compaction Works for Fire Hydrants of Potable Water Network-[Road 09]-[SW-2] | 2026-11-03 → 2026-11-10 (+7d) | 2026-11-08 → 2026-11-15 (+7d) | -171.5d → -177.5d |  |
| SL | **Street Lighting Network** | 2026-11-09 → 2026-11-16 (+7d) | 2027-05-12 → 2027-05-25 (+13d) |  |  |
| LP | **Lighting Poles Works** | 2026-11-09 → 2026-11-16 (+7d) | 2027-02-01 → 2027-02-08 (+7d) |  |  |
| CO-R09.S02-SL-100 | Foundation Excavation Works for Lighting Poles of Street Lighting Network-[Road 09]-[SW-2] | 2026-11-09 → 2026-11-16 (+7d) | 2026-11-18 → 2026-11-25 (+7d) | -171.5d → -177.5d |  |
| CO-R09.S02-SL-110 | Installation Works for Lighting Poles Foundation of Street Lighting Network-[Road 09]-[SW-2] | 2026-11-19 → 2026-11-26 (+7d) | 2026-11-29 → 2026-12-06 (+7d) | -171.5d → -177.5d |  |
| CO-R09.S02-SL-120 | Installation Works for Lighting Poles of Street Lighting Network-[Road 09]-[SW-2] | 2026-12-19 → 2026-12-26 (+7d) | 2026-12-28 → 2027-01-04 (+7d) | -187.5d → -193.5d |  |
| CO-R09.S02-SL-210 | Backfilling Works for Lighting Poles of Street Lighting Network-[Road 09]-[SW-2] | 2026-12-31 → 2027-01-07 (+7d) | 2027-01-23 → 2027-01-30 (+7d) | -189.5d → -195.5d |  |
| CO-R09.S02-SL-130 | Installation Works for Lighting Fixtures With Drop Wire of Street Lighting Network-[Road 09]-[SW-2] | 2027-01-13 → 2027-01-20 (+7d) | 2027-02-01 → 2027-02-08 (+7d) | -189.5d → -195.5d |  |
| CO-R09.S02-SL-200 | Testing Works for Lighting Poles of Street Lighting Network-[Road 09]-[SW-2] | 2027-01-24 → 2027-01-31 (+7d) | 2027-02-01 → 2027-02-08 (+7d) | -189.5d → -195.5d |  |
| CW | **Cabling Works** | 2026-12-29 → 2027-01-05 (+7d) | 2027-02-01 → 2027-02-08 (+7d) |  |  |
| CO-R09.S02-SL-140 | Trench Excavation and Bedding Works for Street Lighting Network-[Road 09]-[SW-2] | 2026-12-29 → 2027-01-05 (+7d) | 2027-01-09 → 2027-01-16 (+7d) | -163d → -169d |  |
| CO-R09.S02-SL-150 | Cable Laying Works for Street Lighting Network-[Road 09]-[SW-2] | 2027-01-10 → 2027-01-17 (+7d) | 2027-01-20 → 2027-01-27 (+7d) | -163d → -169d | resources Labor/Helper [80 h]; Electrician [80 h]; Low Current Technician [80 h]; Supply, installation , test and operation of cables, Copper, (4Cx25mm²,Cu/XLPE/SWA/PVC +1x16mm² PVC/PVC) [1870.05] → Labor/Helper [80 h]; Electrician [80 h]; Low Current Technician [80 h]; Supply, installation , test and operation of cables, Copper, (4Cx25mmï¿½,Cu/XLPE/SWA/PVC +1x16mmï¿½ PVC/PVC) [1870.05] |
| CO-R09.S02-SL-160 | Trench Backfilling and Compaction Works for Street Lighting Network-[Road 09]-[SW-2] | 2027-01-21 → 2027-01-28 (+7d) | 2027-02-01 → 2027-02-08 (+7d) | -163d → -169d | resources Skilled Labor/Surveyor [8 h]; Foreman [8 h]; Excavator [80 h]; Water Tank [20 h]; Supply, installation , test and operation of cables, Copper, (4Cx25mm²,Cu/XLPE/SWA/PVC +1x16mm² PVC/PVC) [143.85] → Skilled Labor/Surveyor [8 h]; Foreman [8 h]; Excavator [80 h]; Water Tank [20 h]; Supply, installation , test and operation of cables, Copper, (4Cx25mmï¿½,Cu/XLPE/SWA/PVC +1x16mmï¿½ PVC/PVC) [143.85] |
| DPB | **Distrubution Panel Boards** | 2027-03-06 → 2027-03-16 (+10d) | 2027-05-12 → 2027-05-25 (+13d) |  |  |
| CO-R09.S02-SL-170 | Foundation Excavation Works For Panel Boards of Street Lighting Network-[Road 09]-[SW-2] | 2027-03-06 → 2027-03-16 (+10d) | 2027-03-20 → 2027-03-27 (+7d) | -181.25d → -187.25d |  |
| CO-R09.S02-SL-180 | Installation Works for Panel Board Concrete Foundations of Street Lighting Network-[Road 09]-[SW-2] | 2027-03-27 → 2027-04-03 (+7d) | 2027-04-06 → 2027-04-13 (+7d) | -186.25d → -192.25d |  |
| CO-R09.S02-SL-190 | Installation Works for Lighting Panel Boards of Street Lighting Network-[Road 09]-[SW-2] | 2027-04-10 → 2027-04-17 (+7d) | 2027-04-20 → 2027-04-27 (+7d) | -188.25d → -194.25d |  |
| CO-R09.S02-SL-220 | A wall of concrete blocks to install the KWH meter of Street Lighting Network-[Road 09]-[SW-2] | 2027-04-21 → 2027-04-28 (+7d) | 2027-05-12 → 2027-05-25 (+13d) | -188.25d → -194.25d |  |
| TE | **Telecom Network** | 2027-01-03 → 2027-01-14 (+11d) | 2027-02-09 → 2027-02-21 (+12d) |  |  |
| PD | **Ducts Works** | 2027-01-03 → 2027-01-14 (+11d) | 2027-01-30 → 2027-02-10 (+11d) |  |  |
| CO-R09.S02-TE-100 | Trench Excavation and Bedding Works for Ducts of Telecom Network-[Road 09]-[SW-2] | 2027-01-03 → 2027-01-14 (+11d) | 2027-01-05 → 2027-01-17 (+12d) | -158d → -168d |  |
| CO-R09.S02-TE-110 | Pipes Laying Works for Ducts of Telecom Network-[Road 09]-[SW-2] | 2027-01-06 → 2027-01-18 (+12d) | 2027-01-13 → 2027-01-25 (+12d) | -158d → -168d |  |
| CO-R09.S02-TE-120 | Pouring Plain Concrete Above Ducts of Telecom Network-[Road 09]-[SW-2] | 2027-01-14 → 2027-01-26 (+12d) | 2027-01-21 → 2027-02-02 (+12d) | -158d → -168d |  |
| CO-R09.S02-TE-130 | Trench Backfilling and Compaction Works for Ducts of Telecom Network-[Road 09]-[SW-2] | 2027-01-23 → 2027-02-03 (+11d) | 2027-01-30 → 2027-02-10 (+11d) | -158d → -168d |  |
| MH | **Manholes Works** | 2027-01-06 → 2027-01-18 (+12d) | 2027-02-09 → 2027-02-21 (+12d) |  |  |
| CO-R09.S02-TE-140 | Excavation Works for Manholes of Telecom Network-[Road 09]-[SW-2] | 2027-01-06 → 2027-01-18 (+12d) | 2027-01-13 → 2027-01-25 (+12d) | -158d → -168d |  |
| CO-R09.S02-TE-150 | Installation Works for Manholes of Telecom Network-[Road 09]-[SW-2] | 2027-01-19 → 2027-01-31 (+12d) | 2027-01-26 → 2027-02-07 (+12d) | -162d → -172d |  |
| CO-R09.S02-TE-160 | Backfilling Works for Manholes of Telecom Network-[Road 09]-[SW-2] | 2027-02-02 → 2027-02-14 (+12d) | 2027-02-09 → 2027-02-21 (+12d) | -167d → -177d |  |
| RD | **Road Works** |  | 2027-06-01 → 2027-06-08 (+7d) |  |  |
| RD | **Pre-Bituminous Construction** |  | 2027-03-07 → 2027-03-22 (+15d) |  |  |
| CO-R09.S02-RD-P-100 | Capping and Subgrade Layer for Road Works-[Road 09]-[SW-2] |  | 2027-02-16 → 2027-02-25 (+9d) | -173d → -180d |  |
| CO-R09.S02-RD-P-110 | Aggregate Base Course Layer for Road Works-[Road 09]-[SW-2] | 2027-02-14 → 2027-02-27 (+13d) | 2027-03-07 → 2027-03-22 (+15d) | -88d → -98d |  |
| LS | **Pavement Works** |  | 2027-06-01 → 2027-06-08 (+7d) |  |  |
| CO-R09.S02-RD-P-130 | Fixing of Interlock Tiles for Sidewalks Pavement-[Road 09]-[SW-2] | 2027-05-05 → 2027-05-12 (+7d) | 2027-06-01 → 2027-06-08 (+7d) | -189.5d → -195.5d |  |
| 4 | **Road 10 Local 2 ( 2352 LM )** |  | 2027-04-08 → 2027-04-15 (+7d) |  |  |
| 1 | **SW-3** |  | 2027-03-31 → 2027-04-06 (+6d) |  |  |
| SW_3 | **SW_3-East** |  | 2027-03-31 → 2027-04-06 (+6d) |  |  |
| PW | **Potable Water Network** |  | 2026-11-05 → 2026-11-12 (+7d) |  |  |
| FH | **Fire Hydrant** | 2026-10-20 → 2026-10-27 (+7d) | 2026-11-05 → 2026-11-12 (+7d) |  |  |
| CO-R10.S03-ES-PW-140 | Excavation Works for Fire Hydrants of Potable Water Network-[Road 10]-[SW-3] | 2026-10-20 → 2026-10-27 (+7d) | 2026-10-26 → 2026-11-02 (+7d) | -88d → -94d |  |
| CO-R10.S03-ES-PW-150 | Installation Works for Fire Hydrant of Potable Water Network-[Road 10]-[SW-3] | 2026-10-27 → 2026-11-03 (+7d) | 2026-11-02 → 2026-11-09 (+7d) | -88d → -94d |  |
| CO-R10.S03-ES-PW-160 | Trench Backfilling and Compaction Works for Fire Hydrants of Potable Water Network-[Road 10]-[SW-3] | 2026-10-31 → 2026-11-07 (+7d) | 2026-11-05 → 2026-11-12 (+7d) | -88d → -94d |  |
| IR | **Irrigation Network** |  | 2026-10-21 → 2026-10-28 (+7d) |  |  |
| ML | **Main Line Pipes** |  | 2026-10-21 → 2026-10-28 (+7d) |  |  |
| CO-R10.S03-ES-IR-120 | Installation Works for Main Line Valves of Irrigation Network-[Road 10]-[SW-3] | 2026-10-20 → 2026-10-27 (+7d) | 2026-10-21 → 2026-10-28 (+7d) | 6d → 0d |  |
| SL | **Street Lighting Network** | 2026-10-20 → 2026-10-27 (+7d) | 2027-02-16 → 2027-02-24 (+8d) |  |  |
| LP | **Lighting Poles Works** | 2026-10-20 → 2026-10-27 (+7d) | 2026-11-26 → 2026-12-03 (+7d) |  |  |
| CO-R10.S03-ES-SL-100 | Foundation Excavation Works for Lighting Poles of Street Lighting Network-[Road 10]-[SW-3] | 2026-10-20 → 2026-10-27 (+7d) | 2026-11-02 → 2026-11-09 (+7d) | -182d → -188d |  |
| CO-R10.S03-ES-SL-110 | Installation Works for Lighting Poles Foundation of Street Lighting Network-[Road 10]-[SW-3] | 2026-10-26 → 2026-11-02 (+7d) | 2026-11-08 → 2026-11-15 (+7d) | -182d → -188d |  |
| CO-R10.S03-ES-SL-120 | Installation Works for Lighting Poles of Street Lighting Network-[Road 10]-[SW-3] | 2026-11-01 → 2026-11-08 (+7d) | 2026-11-21 → 2026-11-28 (+7d) | -182d → -188d |  |
| CO-R10.S03-ES-SL-130 | Installation Works for Lighting Fixtures With Drop Wire of Street Lighting Network-[Road 10]-[SW-3] | 2026-11-07 → 2026-11-14 (+7d) | 2026-11-26 → 2026-12-03 (+7d) | -157d → -163d |  |
| CO-R10.S03-ES-SL-210 | Backfilling Works for Lighting Poles of Street Lighting Network-[Road 10]-[SW-3] | 2026-11-08 → 2026-11-15 (+7d) | 2026-11-21 → 2026-11-28 (+7d) | -172.5d → -178.5d |  |
| CO-R10.S03-ES-SL-200 | Testing Works for Lighting Poles of Street Lighting Network-[Road 10]-[SW-3] | 2026-11-22 → 2026-11-29 (+7d) | 2026-11-26 → 2026-12-03 (+7d) | -157d → -163d |  |
| CW | **Cabling Works** | 2026-11-22 → 2026-11-29 (+7d) | 2026-12-26 → 2027-01-02 (+7d) |  |  |
| CO-R10.S03-ES-SL-140 | Trench Excavation and Bedding Works for Street Lighting Network-[Road 10]-[SW-3] | 2026-11-22 → 2026-11-29 (+7d) | 2026-12-02 → 2026-12-09 (+7d) | -182d → -188d |  |
| CO-R10.S03-ES-SL-150 | Cable Laying Works for Street Lighting Network-[Road 10]-[SW-3] | 2026-12-03 → 2026-12-10 (+7d) | 2026-12-14 → 2026-12-21 (+7d) | -182d → -188d | resources Labor/Helper [80 h]; Electrician [80 h]; Low Current Technician [80 h]; Supply, installation , test and operation of cables, Copper, (4Cx25mm²,Cu/XLPE/SWA/PVC +1x16mm² PVC/PVC) [938.44] → Labor/Helper [80 h]; Electrician [80 h]; Low Current Technician [80 h]; Supply, installation , test and operation of cables, Copper, (4Cx25mmï¿½,Cu/XLPE/SWA/PVC +1x16mmï¿½ PVC/PVC) [938.44] |

| ID | Task | Start | Finish | Complete | Total float | Other |
| --- | --- | --- | --- | --- | --- | --- |
| CO-R10.S03-ES-SL-160 | Trench Backfilling and Compaction Works for Street Lighting Network-[Road 10]-[SW-3] | 2026-12-15 → 2026-12-22 (+7d) | 2026-12-26 → 2027-01-02 (+7d) |  | -182d → -188d | resources Skilled Labor/Surveyor [8 h]; Foreman [8 h]; Excavator [80 h]; Water Tank [20 h]; Supply, installation , test and operation of cables, Copper, (4Cx25mm²,Cu/XLPE/SWA/PVC +1x16mm² PVC/PVC) [72.19] → Skilled Labor/Surveyor [8 h]; Foreman [8 h]; Excavator [80 h]; Water Tank [20 h]; Supply, installation , test and operation of cables, Copper, (4Cx25mmï¿½,Cu/XLPE/SWA/PVC +1x16mmï¿½ PVC/PVC) [72.19] |
| DPB | **Distrubution Panel Boards** | 2027-01-24 → 2027-01-31 (+7d) | 2027-02-16 → 2027-02-24 (+8d) |  |  |  |
| CO-R10.S03-ES-SL-170 | Foundation Excavation Works For Panel Boards of Street Lighting Network-[Road 10]-[SW-3] | 2027-01-24 → 2027-01-31 (+7d) | 2027-02-06 → 2027-02-13 (+7d) |  | -182d → -188d |  |
| CO-R10.S03-ES-SL-180 | Installation Works for Panel Board Concrete Foundations of Street Lighting Network-[Road 10]-[SW-3] | 2027-01-31 → 2027-02-07 (+7d) | 2027-02-13 → 2027-02-20 (+7d) |  | -182d → -188d |  |
| CO-R10.S03-ES-SL-220 | A wall of concrete blocks to install the KWH meter of Street Lighting Network-[Road 10]-[SW-3] | 2027-01-31 → 2027-02-07 (+7d) | 2027-02-13 → 2027-02-20 (+7d) |  | -179d → -185d |  |
| CO-R10.S03-ES-SL-190 | Installation Works for Lighting Panel Boards of Street Lighting Network-[Road 10]-[SW-3] | 2027-02-03 → 2027-02-10 (+7d) | 2027-02-16 → 2027-02-24 (+8d) |  | -182d → -188d |  |
| TE | **Telecom Network** | 2026-12-15 → 2026-12-22 (+7d) | 2027-01-16 → 2027-01-23 (+7d) |  |  |  |
| PD | **Ducts Works** | 2026-12-15 → 2026-12-22 (+7d) | 2027-01-16 → 2027-01-23 (+7d) |  |  |  |
| CO-R10.S03-ES-TE-100 | Trench Excavation and Bedding Works for Ducts of Telecom Network-[Road 10]-[SW-3] | 2026-12-15 → 2026-12-22 (+7d) | 2026-12-22 → 2026-12-29 (+7d) |  | -173d → -176d |  |
| CO-R10.S03-ES-TE-110 | Pipes Laying Works for Ducts of Telecom Network-[Road 10]-[SW-3] | 2026-12-23 → 2026-12-30 (+7d) | 2026-12-30 → 2027-01-06 (+7d) |  | -149d → -155d |  |
| CO-R10.S03-ES-TE-120 | Pouring Plain Concrete Above Ducts of Telecom Network-[Road 10]-[SW-3] | 2026-12-31 → 2027-01-07 (+7d) | 2027-01-07 → 2027-01-14 (+7d) |  | -149d → -155d |  |
| CO-R10.S03-ES-TE-130 | Trench Backfilling and Compaction Works for Ducts of Telecom Network-[Road 10]-[SW-3] | 2027-01-09 → 2027-01-16 (+7d) | 2027-01-16 → 2027-01-23 (+7d) |  | -149d → -155d |  |
| MH | **Manholes Works** | 2026-12-23 → 2026-12-30 (+7d) | 2027-01-16 → 2027-01-23 (+7d) |  |  |  |
| CO-R10.S03-ES-TE-140 | Excavation Works for Manholes of Telecom Network-[Road 10]-[SW-3] | 2026-12-23 → 2026-12-30 (+7d) | 2026-12-30 → 2027-01-06 (+7d) |  | -156d → -162d |  |
| CO-R10.S03-ES-TE-150 | Installation Works for Manholes of Telecom Network-[Road 10]-[SW-3] | 2026-12-31 → 2027-01-07 (+7d) | 2027-01-07 → 2027-01-14 (+7d) |  | -149d → -155d |  |
| CO-R10.S03-ES-TE-160 | Backfilling Works for Manholes of Telecom Network-[Road 10]-[SW-3] | 2027-01-09 → 2027-01-16 (+7d) | 2027-01-16 → 2027-01-23 (+7d) |  | -149d → -155d |  |
| CO-R10.S03-ES-MV-110 | Cable Laying Works for Medium Voltage Network-[Road 10]-[SW-3] |  |  |  |  | resources Labor/Helper [288 h]; Electrician [288 h]; Low Current Technician [288 h]; 33kv 3Cx400 mm² Al XLPE / LLDPE /PVC Cable [938.25]; 33kv 3Cx400 mm² Al XLPE /LLDPE/PVC [2.8] → Labor/Helper [288 h]; Electrician [288 h]; Low Current Technician [288 h]; 33kv 3Cx400 mmï¿½ Al XLPE / LLDPE /PVC Cable [938.25]; 33kv 3Cx400 mmï¿½ Al XLPE /LLDPE/PVC [2.8] |
| CO-R10.S03-ES-MV-120 | Trench Backfilling and Compaction Works for Medium Voltage Network-[Road 10]-[SW-3] |  |  |  |  | resources Skilled Labor/Surveyor [15 h]; Foreman [15 h]; Excavator [144 h]; Water Tank [36 h]; 33kv 3Cx400 mm² Al XLPE / LLDPE /PVC Cable [402.11]; 33kv 3Cx400 mm² Al XLPE /LLDPE/PVC [1.2] → Skilled Labor/Surveyor [15 h]; Foreman [15 h]; Excavator [144 h]; Water Tank [36 h]; 33kv 3Cx400 mmï¿½ Al XLPE / LLDPE /PVC Cable [402.11]; 33kv 3Cx400 mmï¿½ Al XLPE /LLDPE/PVC [1.2] |
| RD | **Road Works** |  | 2027-03-31 → 2027-04-06 (+6d) |  |  |  |
| RD | **Pre-Bituminous Construction** |  | 2027-02-09 → 2027-02-16 (+7d) |  |  |  |
| CO-R10.S03-ES-RD-100 | Capping and Subgrade Layer for Road Works-[Road 10]-[SW-3] |  | 2026-12-29 → 2027-01-05 (+7d) | 50% → 70% | -122d → -128d |  |
| CO-R10.S03-ES-RD-110 | Aggregate Base Course Layer for Road Works-[Road 10]-[SW-3] | 2027-01-20 → 2027-01-27 (+7d) | 2027-02-09 → 2027-02-16 (+7d) |  | -79d → -85d |  |
| LS | **Pavement Works** |  | 2027-03-31 → 2027-04-06 (+6d) |  |  |  |
| CO-R10.S03-ES-RD-130 | Fixing of Interlock Tiles for Sidewalks Pavement-[Road 10]-[SW-3] | 2027-03-21 → 2027-03-27 (+6d) | 2027-03-31 → 2027-04-06 (+6d) |  | -153d → -158d |  |
| SW_31 | **SW_3-West** |  | 2027-03-31 → 2027-04-06 (+6d) |  |  |  |
| PW | **Potable Water Network** |  | 2026-11-05 → 2026-11-12 (+7d) |  |  |  |
| FH | **Fire Hydrant** | 2026-10-20 → 2026-10-27 (+7d) | 2026-11-05 → 2026-11-12 (+7d) |  |  |  |
| CO-R10.S03-WE-PW-140 | Excavation Works for Fire Hydrants of Potable Water Network-[Road 10]-[SW-3] | 2026-10-20 → 2026-10-27 (+7d) | 2026-10-26 → 2026-11-02 (+7d) |  | -88d → -94d |  |
| CO-R10.S03-WE-PW-150 | Installation Works for Fire Hydrant of Potable Water Network-[Road 10]-[SW-3] | 2026-10-27 → 2026-11-03 (+7d) | 2026-11-02 → 2026-11-09 (+7d) |  | -88d → -94d |  |
| CO-R10.S03-WE-PW-160 | Trench Backfilling and Compaction Works for Fire Hydrants of Potable Water Network-[Road 10]-[SW-3] | 2026-10-31 → 2026-11-07 (+7d) | 2026-11-05 → 2026-11-12 (+7d) |  | -88d → -94d |  |
| IR | **Irrigation Network** |  | 2026-10-21 → 2026-10-28 (+7d) |  |  |  |
| ML | **Main Line Pipes** |  | 2026-10-21 → 2026-10-28 (+7d) |  |  |  |
| CO-R10.S03-WE-IR-120 | Installation Works for Main Line Valves of Irrigation Network-[Road 10]-[SW-3] | 2026-10-20 → 2026-10-27 (+7d) | 2026-10-21 → 2026-10-28 (+7d) |  | 6d → 0d |  |
| SL | **Street Lighting Network** | 2026-10-20 → 2026-10-27 (+7d) | 2027-02-16 → 2027-02-24 (+8d) |  |  |  |
| LP | **Lighting Poles Works** | 2026-10-20 → 2026-10-27 (+7d) | 2026-11-26 → 2026-12-03 (+7d) |  |  |  |
| CO-R10.S03-WE-SL-100 | Foundation Excavation Works for Lighting Poles of Street Lighting Network-[Road 10]-[SW-3] | 2026-10-20 → 2026-10-27 (+7d) | 2026-11-02 → 2026-11-09 (+7d) |  | -182d → -188d |  |
| CO-R10.S03-WE-SL-110 | Installation Works for Lighting Poles Foundation of Street Lighting Network-[Road 10]-[SW-3] | 2026-10-26 → 2026-11-02 (+7d) | 2026-11-08 → 2026-11-15 (+7d) |  | -182d → -188d |  |
| CO-R10.S03-WE-SL-120 | Installation Works for Lighting Poles of Street Lighting Network-[Road 10]-[SW-3] | 2026-11-01 → 2026-11-08 (+7d) | 2026-11-21 → 2026-11-28 (+7d) |  | -182d → -188d |  |
| CO-R10.S03-WE-SL-130 | Installation Works for Lighting Fixtures With Drop Wire of Street Lighting Network-[Road 10]-[SW-3] | 2026-11-07 → 2026-11-14 (+7d) | 2026-11-26 → 2026-12-03 (+7d) |  | -157d → -163d |  |
| CO-R10.S03-WE-SL-210 | Backfilling Works for Lighting Poles of Street Lighting Network-[Road 10]-[SW-3] | 2026-11-08 → 2026-11-15 (+7d) | 2026-11-21 → 2026-11-28 (+7d) |  | -157d → -163d |  |
| CO-R10.S03-WE-SL-200 | Testing Works for Lighting Poles of Street Lighting Network-[Road 10]-[SW-3] | 2026-11-22 → 2026-11-29 (+7d) | 2026-11-26 → 2026-12-03 (+7d) |  | -157d → -163d |  |
| CW | **Cabling Works** | 2026-11-22 → 2026-11-29 (+7d) | 2026-12-26 → 2027-01-02 (+7d) |  |  |  |
| CO-R10.S03-WE-SL-140 | Trench Excavation and Bedding Works for Street Lighting Network-[Road 10]-[SW-3] | 2026-11-22 → 2026-11-29 (+7d) | 2026-12-02 → 2026-12-09 (+7d) |  | -182d → -188d |  |
| CO-R10.S03-WE-SL-150 | Cable Laying Works for Street Lighting Network-[Road 10]-[SW-3] | 2026-12-03 → 2026-12-10 (+7d) | 2026-12-14 → 2026-12-21 (+7d) |  | -182d → -188d | resources Labor/Helper [80 h]; Electrician [80 h]; Low Current Technician [80 h]; Supply, installation , test and operation of cables, Copper, (4Cx25mm²,Cu/XLPE/SWA/PVC +1x16mm² PVC/PVC) [938.44] → Labor/Helper [80 h]; Electrician [80 h]; Low Current Technician [80 h]; Supply, installation , test and operation of cables, Copper, (4Cx25mmï¿½,Cu/XLPE/SWA/PVC +1x16mmï¿½ PVC/PVC) [938.44] |
| CO-R10.S03-WE-SL-160 | Trench Backfilling and Compaction Works for Street Lighting Network-[Road 10]-[SW-3] | 2026-12-15 → 2026-12-22 (+7d) | 2026-12-26 → 2027-01-02 (+7d) |  | -182d → -188d | resources Skilled Labor/Surveyor [8 h]; Foreman [8 h]; Excavator [80 h]; Water Tank [20 h]; Supply, installation , test and operation of cables, Copper, (4Cx25mm²,Cu/XLPE/SWA/PVC +1x16mm² PVC/PVC) [72.19] → Skilled Labor/Surveyor [8 h]; Foreman [8 h]; Excavator [80 h]; Water Tank [20 h]; Supply, installation , test and operation of cables, Copper, (4Cx25mmï¿½,Cu/XLPE/SWA/PVC +1x16mmï¿½ PVC/PVC) [72.19] |
| DPB | **Distrubution Panel Boards** | 2027-01-24 → 2027-01-31 (+7d) | 2027-02-16 → 2027-02-24 (+8d) |  |  |  |
| CO-R10.S03-WE-SL-170 | Foundation Excavation Works For Panel Boards of Street Lighting Network-[Road 10]-[SW-3] | 2027-01-24 → 2027-01-31 (+7d) | 2027-02-06 → 2027-02-13 (+7d) |  | -182d → -188d |  |
| CO-R10.S03-WE-SL-180 | Installation Works for Panel Board Concrete Foundations of Street Lighting Network-[Road 10]-[SW-3] | 2027-01-31 → 2027-02-07 (+7d) | 2027-02-13 → 2027-02-20 (+7d) |  | -182d → -188d |  |
| CO-R10.S03-WE-SL-220 | A wall of concrete blocks to install the KWH meter of Street Lighting Network-[Road 10]-[SW-3] | 2027-01-31 → 2027-02-07 (+7d) | 2027-02-13 → 2027-02-20 (+7d) |  | -179d → -185d |  |
| CO-R10.S03-WE-SL-190 | Installation Works for Lighting Panel Boards of Street Lighting Network-[Road 10]-[SW-3] | 2027-02-03 → 2027-02-10 (+7d) | 2027-02-16 → 2027-02-24 (+8d) |  | -182d → -188d |  |
| TE | **Telecom Network** | 2026-12-15 → 2026-12-22 (+7d) | 2027-01-11 → 2027-01-18 (+7d) |  |  |  |
| PD | **Ducts Works** | 2026-12-15 → 2026-12-22 (+7d) | 2027-01-11 → 2027-01-18 (+7d) |  |  |  |
| CO-R10.S03-WE-TE-100 | Trench Excavation and Bedding Works for Ducts of Telecom Network-[Road 10]-[SW-3] | 2026-12-15 → 2026-12-22 (+7d) | 2026-12-17 → 2026-12-24 (+7d) |  | -152d → -158d |  |
| CO-R10.S03-WE-TE-110 | Pipes Laying Works for Ducts of Telecom Network-[Road 10]-[SW-3] | 2026-12-19 → 2026-12-26 (+7d) | 2026-12-26 → 2027-01-02 (+7d) |  | -145d → -151d |  |
| CO-R10.S03-WE-TE-120 | Pouring Plain Concrete Above Ducts of Telecom Network-[Road 10]-[SW-3] | 2026-12-27 → 2027-01-03 (+7d) | 2027-01-03 → 2027-01-10 (+7d) |  | -145d → -151d |  |
| CO-R10.S03-WE-TE-130 | Trench Backfilling and Compaction Works for Ducts of Telecom Network-[Road 10]-[SW-3] | 2027-01-04 → 2027-01-11 (+7d) | 2027-01-11 → 2027-01-18 (+7d) |  | -145d → -151d |  |
| MH | **Manholes Works** | 2026-12-19 → 2026-12-26 (+7d) | 2027-01-11 → 2027-01-18 (+7d) |  |  |  |
| CO-R10.S03-WE-TE-140 | Excavation Works for Manholes of Telecom Network-[Road 10]-[SW-3] | 2026-12-19 → 2026-12-26 (+7d) | 2026-12-26 → 2027-01-02 (+7d) |  | -152d → -158d |  |
| CO-R10.S03-WE-TE-150 | Installation Works for Manholes of Telecom Network-[Road 10]-[SW-3] | 2026-12-27 → 2027-01-03 (+7d) | 2027-01-03 → 2027-01-10 (+7d) |  | -145d → -151d |  |
| CO-R10.S03-WE-TE-160 | Backfilling Works for Manholes of Telecom Network-[Road 10]-[SW-3] | 2027-01-04 → 2027-01-11 (+7d) | 2027-01-11 → 2027-01-18 (+7d) |  | -145d → -151d |  |
| CO-R10.S03-WE-MV-110 | Cable Laying Works for Medium Voltage Network-[Road 10]-[SW-3] |  |  |  |  | resources Labor/Helper [80 h]; Electrician [80 h]; Low Current Technician [80 h]; 33kv 3Cx400 mm² Al XLPE / LLDPE /PVC Cable [938.25]; 33kv 3Cx400 mm² Al XLPE /LLDPE/PVC [2.8] → Labor/Helper [80 h]; Electrician [80 h]; Low Current Technician [80 h]; 33kv 3Cx400 mmï¿½ Al XLPE / LLDPE /PVC Cable [938.25]; 33kv 3Cx400 mmï¿½ Al XLPE /LLDPE/PVC [2.8] |
| CO-R10.S03-WE-MV-120 | Trench Backfilling and Compaction Works for Medium Voltage Network-[Road 10]-[SW-3] |  |  |  |  | resources Skilled Labor/Surveyor [15 h]; Foreman [15 h]; Excavator [144 h]; Water Tank [36 h]; 33kv 3Cx400 mm² Al XLPE / LLDPE /PVC Cable [402.11]; 33kv 3Cx400 mm² Al XLPE /LLDPE/PVC [1.2] → Skilled Labor/Surveyor [15 h]; Foreman [15 h]; Excavator [144 h]; Water Tank [36 h]; 33kv 3Cx400 mmï¿½ Al XLPE / LLDPE /PVC Cable [402.11]; 33kv 3Cx400 mmï¿½ Al XLPE /LLDPE/PVC [1.2] |
| RD | **Road Works** |  | 2027-03-31 → 2027-04-06 (+6d) |  |  |  |
| RD | **Pre-Bituminous Construction** |  | 2027-02-04 → 2027-02-11 (+7d) |  |  |  |
| CO-R10.S03-WE-RD-100 | Capping and Subgrade Layer for Road Works-[Road 10]-[SW-3] |  | 2026-12-29 → 2027-01-05 (+7d) | 10% → 70% | -122d → -128d |  |
| CO-R10.S03-WE-RD-110 | Aggregate Base Course Layer for Road Works-[Road 10]-[SW-3] | 2027-01-16 → 2027-01-23 (+7d) | 2027-02-04 → 2027-02-11 (+7d) |  | -75d → -81d |  |
| LS | **Pavement Works** |  | 2027-03-31 → 2027-04-06 (+6d) |  |  |  |
| CO-R10.S03-WE-RD-130 | Fixing of Interlock Tiles for Sidewalks Pavement-[Road 10]-[SW-3] | 2027-03-21 → 2027-03-27 (+6d) | 2027-03-31 → 2027-04-06 (+6d) |  | -153d → -158d |  |
| 2 | **SW-4** |  | 2027-04-08 → 2027-04-15 (+7d) |  |  |  |
| SW_4 | **SW_4-East** |  | 2027-04-06 → 2027-04-13 (+7d) |  |  |  |

| ID | Task | Start | Finish | Complete | Total float | Other |
| --- | --- | --- | --- | --- | --- | --- |
| PW | **Potable Water Network** |  | 2026-11-12 → 2026-11-19 (+7d) |  |  |  |
| FH | **Fire Hydrant** | 2026-10-20 → 2026-10-27 (+7d) | 2026-11-12 → 2026-11-19 (+7d) |  |  |  |
| CO-R10.S04-ES-PW-140 | Excavation Works for Fire Hydrants of Potable Water Network-[Road 10]-[SW-4] | 2026-10-20 → 2026-10-27 (+7d) | 2026-10-27 → 2026-11-03 (+7d) |  | -94d → -100d |  |
| CO-R10.S04-ES-PW-150 | Installation Works for Fire Hydrant of Potable Water Network-[Road 10]-[SW-4] | 2026-10-28 → 2026-11-04 (+7d) | 2026-11-04 → 2026-11-11 (+7d) |  | -94d → -100d |  |
| CO-R10.S04-ES-PW-160 | Trench Backfilling and Compaction Works for Fire Hydrants of Potable Water Network-[Road 10]-[SW-4] | 2026-11-05 → 2026-11-12 (+7d) | 2026-11-12 → 2026-11-19 (+7d) |  | -94d → -100d |  |
| IR | **Irrigation Network** |  | 2026-10-24 → 2026-10-31 (+7d) |  |  |  |
| ML | **Main Line Pipes** |  | 2026-10-24 → 2026-10-31 (+7d) |  |  |  |
| CO-R10.S04-ES-IR-120 | Installation Works for Main Line Valves of Irrigation Network-[Road 10]-[SW-4] | 2026-10-20 → 2026-10-27 (+7d) | 2026-10-24 → 2026-10-31 (+7d) |  | 4d → -2d |  |
| SL | **Street Lighting Network** | 2026-10-20 → 2026-10-27 (+7d) | 2027-01-17 → 2027-01-24 (+7d) |  |  |  |
| LP | **Lighting Poles Works** | 2026-10-20 → 2026-10-27 (+7d) | 2026-12-16 → 2026-12-23 (+7d) |  |  |  |
| CO-R10.S04-ES-SL-100 | Foundation Excavation Works for Lighting Poles of Street Lighting Network-[Road 10]-[SW-4] | 2026-10-20 → 2026-10-27 (+7d) | 2026-10-27 → 2026-11-03 (+7d) |  | -165d → -171d |  |
| CO-R10.S04-ES-SL-110 | Installation Works for Lighting Poles Foundation of Street Lighting Network-[Road 10]-[SW-4] | 2026-10-26 → 2026-11-02 (+7d) | 2026-11-02 → 2026-11-09 (+7d) |  | -165d → -171d |  |
| CO-R10.S04-ES-SL-120 | Installation Works for Lighting Poles of Street Lighting Network-[Road 10]-[SW-4] | 2026-11-01 → 2026-11-08 (+7d) | 2026-11-08 → 2026-11-15 (+7d) |  | -165d → -171d |  |
| CO-R10.S04-ES-SL-210 | Backfilling Works for Lighting Poles of Street Lighting Network-[Road 10]-[SW-4] | 2026-11-22 → 2026-11-29 (+7d) | 2026-12-08 → 2026-12-15 (+7d) |  | -172.5d → -178.5d |  |
| CO-R10.S04-ES-SL-130 | Installation Works for Lighting Fixtures With Drop Wire of Street Lighting Network-[Road 10]-[SW-4] | 2026-11-26 → 2026-12-03 (+7d) | 2026-12-16 → 2026-12-23 (+7d) |  | -88.5d → -94.5d |  |
| CO-R10.S04-ES-SL-200 | Testing Works for Lighting Poles of Street Lighting Network-[Road 10]-[SW-4] | 2026-12-09 → 2026-12-16 (+7d) | 2026-12-16 → 2026-12-23 (+7d) |  | -88.5d → -94.5d |  |
| CW | **Cabling Works** | 2026-11-09 → 2026-11-16 (+7d) | 2026-12-02 → 2026-12-09 (+7d) |  |  |  |
| CO-R10.S04-ES-SL-140 | Trench Excavation and Bedding Works for Street Lighting Network-[Road 10]-[SW-4] | 2026-11-09 → 2026-11-16 (+7d) | 2026-11-16 → 2026-11-23 (+7d) |  | -165d → -171d |  |
| CO-R10.S04-ES-SL-150 | Cable Laying Works for Street Lighting Network-[Road 10]-[SW-4] | 2026-11-17 → 2026-11-24 (+7d) | 2026-11-24 → 2026-12-01 (+7d) |  | -165d → -171d | resources Labor/Helper [80 h]; Electrician [80 h]; Low Current Technician [80 h]; Supply, installation , test and operation of cables, Copper, (4Cx25mm²,Cu/XLPE/SWA/PVC +1x16mm² PVC/PVC) [938.44] → Labor/Helper [80 h]; Electrician [80 h]; Low Current Technician [80 h]; Supply, installation , test and operation of cables, Copper, (4Cx25mmï¿½,Cu/XLPE/SWA/PVC +1x16mmï¿½ PVC/PVC) [938.44] |
| CO-R10.S04-ES-SL-160 | Trench Backfilling and Compaction Works for Street Lighting Network-[Road 10]-[SW-4] | 2026-11-25 → 2026-12-02 (+7d) | 2026-12-02 → 2026-12-09 (+7d) |  | -165d → -171d | resources Skilled Labor/Surveyor [8 h]; Foreman [8 h]; Excavator [80 h]; Water Tank [20 h]; Supply, installation , test and operation of cables, Copper, (4Cx25mm²,Cu/XLPE/SWA/PVC +1x16mm² PVC/PVC) [72.19] → Skilled Labor/Surveyor [8 h]; Foreman [8 h]; Excavator [80 h]; Water Tank [20 h]; Supply, installation , test and operation of cables, Copper, (4Cx25mmï¿½,Cu/XLPE/SWA/PVC +1x16mmï¿½ PVC/PVC) [72.19] |
| DPB | **Distrubution Panel Boards** | 2026-12-03 → 2026-12-10 (+7d) | 2027-01-17 → 2027-01-24 (+7d) |  |  |  |
| CO-R10.S04-ES-SL-170 | Foundation Excavation Works For Panel Boards of Street Lighting Network-[Road 10]-[SW-4] | 2026-12-03 → 2026-12-10 (+7d) | 2026-12-23 → 2026-12-30 (+7d) |  | -165d → -171d |  |
| CO-R10.S04-ES-SL-180 | Installation Works for Panel Board Concrete Foundations of Street Lighting Network-[Road 10]-[SW-4] | 2026-12-14 → 2026-12-21 (+7d) | 2026-12-27 → 2027-01-03 (+7d) |  | -156d → -162d |  |
| CO-R10.S04-ES-SL-190 | Installation Works for Lighting Panel Boards of Street Lighting Network-[Road 10]-[SW-4] | 2026-12-28 → 2027-01-04 (+7d) | 2027-01-10 → 2027-01-17 (+7d) |  | -156d → -162d |  |
| CO-R10.S04-ES-SL-220 | A wall of concrete blocks to install the KWH meter of Street Lighting Network-[Road 10]-[SW-4] | 2026-12-28 → 2027-01-04 (+7d) | 2027-01-17 → 2027-01-24 (+7d) |  | -156d → -162d |  |
| TE | **Telecom Network** | 2026-12-23 → 2026-12-30 (+7d) | 2027-01-24 → 2027-01-31 (+7d) |  |  |  |
| PD | **Ducts Works** | 2026-12-23 → 2026-12-30 (+7d) | 2027-01-24 → 2027-01-31 (+7d) |  |  |  |
| CO-R10.S04-ES-TE-100 | Trench Excavation and Bedding Works for Ducts of Telecom Network-[Road 10]-[SW-4] | 2026-12-23 → 2026-12-30 (+7d) | 2026-12-30 → 2027-01-06 (+7d) |  | -173d → -176d |  |
| CO-R10.S04-ES-TE-110 | Pipes Laying Works for Ducts of Telecom Network-[Road 10]-[SW-4] | 2026-12-31 → 2027-01-07 (+7d) | 2027-01-07 → 2027-01-14 (+7d) |  | -156d → -162d |  |
| CO-R10.S04-ES-TE-120 | Pouring Plain Concrete Above Ducts of Telecom Network-[Road 10]-[SW-4] | 2027-01-09 → 2027-01-16 (+7d) | 2027-01-16 → 2027-01-23 (+7d) |  | -156d → -162d |  |
| CO-R10.S04-ES-TE-130 | Trench Backfilling and Compaction Works for Ducts of Telecom Network-[Road 10]-[SW-4] | 2027-01-17 → 2027-01-24 (+7d) | 2027-01-24 → 2027-01-31 (+7d) |  | -156d → -162d |  |
| MH | **Manholes Works** | 2026-12-31 → 2027-01-07 (+7d) | 2027-01-24 → 2027-01-31 (+7d) |  |  |  |
| CO-R10.S04-ES-TE-140 | Excavation Works for Manholes of Telecom Network-[Road 10]-[SW-4] | 2026-12-31 → 2027-01-07 (+7d) | 2027-01-07 → 2027-01-14 (+7d) |  | -156d → -162d |  |
| CO-R10.S04-ES-TE-150 | Installation Works for Manholes of Telecom Network-[Road 10]-[SW-4] | 2027-01-09 → 2027-01-16 (+7d) | 2027-01-16 → 2027-01-23 (+7d) |  | -156d → -162d |  |
| CO-R10.S04-ES-TE-160 | Backfilling Works for Manholes of Telecom Network-[Road 10]-[SW-4] | 2027-01-17 → 2027-01-24 (+7d) | 2027-01-24 → 2027-01-31 (+7d) |  | -156d → -162d |  |
| RD | **Road Works** |  | 2027-04-06 → 2027-04-13 (+7d) |  |  |  |
| RD | **Pre-Bituminous Construction** |  | 2027-02-10 → 2027-02-17 (+7d) |  |  |  |
| CO-R10.S04-ES-RD-100 | Capping and Subgrade Layer for Road Works-[Road 10]-[SW-4] |  | 2026-12-06 → 2026-12-13 (+7d) | 70% → 85% | -102d → -108d |  |
| CO-R10.S04-ES-RD-110 | Aggregate Base Course Layer for Road Works-[Road 10]-[SW-4] | 2027-01-28 → 2027-02-04 (+7d) | 2027-02-10 → 2027-02-17 (+7d) |  | -77d → -83d |  |
| LS | **Pavement Works** |  | 2027-04-06 → 2027-04-13 (+7d) |  |  |  |
| CO-R10.S04-ES-RD-130 | Fixing of Interlock Tiles for Sidewalks Pavement-[Road 10]-[SW-4] | 2027-03-27 → 2027-04-03 (+7d) | 2027-04-06 → 2027-04-13 (+7d) |  | -156d → -162d |  |
| SW_41 | **SW_4-West** |  | 2027-04-08 → 2027-04-15 (+7d) |  |  |  |
| PW | **Potable Water Network** |  | 2026-11-14 → 2026-11-21 (+7d) |  |  |  |
| VC | **Valve Chamber** |  | 2026-11-05 → 2026-11-12 (+7d) |  |  |  |
| CO-R10.S04-WE-PW-210 | Insulation Works for Main Line Valves and Valve Chambers of Potable Water Network-[Road 10]-[SW-4] |  | 2026-11-02 → 2026-11-09 (+7d) |  | -88d → -94d |  |
| CO-R10.S04-WE-PW-170 | Excavation Works for Main Line Valves and Valve Chambers of Potable Water Network-[Road 10]-[SW-4] | 2026-10-20 → 2026-10-27 (+7d) | 2026-10-20 → 2026-10-27 (+7d) |  | -95d → -101d |  |
| CO-R10.S04-WE-PW-180 | RC Footing Works for Main Line Valves and Valve Chambers of Potable Water Network-[Road 10]-[SW-4] | 2026-10-21 → 2026-10-28 (+7d) | 2026-10-24 → 2026-10-31 (+7d) |  | -88d → -94d |  |
| CO-R10.S04-WE-PW-190 | RC Wall Works for Main Line Valves and Valve Chambers of Potable Water Network-[Road 10]-[SW-4] | 2026-10-25 → 2026-11-01 (+7d) | 2026-10-31 → 2026-11-07 (+7d) |  | -88d → -94d |  |
| CO-R10.S04-WE-PW-200 | RC Slab Works for Main Line Valves and Valve Chambers of Potable Water Network-[Road 10]-[SW-4] | 2026-11-01 → 2026-11-08 (+7d) | 2026-11-02 → 2026-11-09 (+7d) |  | -88d → -94d |  |
| CO-R10.S04-WE-PW-220 | Backfilling Works for Main Line Valves and Valve Chambers of Potable Water Network-[Road 10]-[SW-4] | 2026-11-03 → 2026-11-10 (+7d) | 2026-11-05 → 2026-11-12 (+7d) |  | -88d → -94d |  |
| FH | **Fire Hydrant** | 2026-10-21 → 2026-10-28 (+7d) | 2026-11-14 → 2026-11-21 (+7d) |  |  |  |
| CO-R10.S04-WE-PW-140 | Excavation Works for Fire Hydrants of Potable Water Network-[Road 10]-[SW-4] | 2026-10-21 → 2026-10-28 (+7d) | 2026-10-28 → 2026-11-04 (+7d) |  | -95d → -101d |  |
| CO-R10.S04-WE-PW-150 | Installation Works for Fire Hydrant of Potable Water Network-[Road 10]-[SW-4] | 2026-10-29 → 2026-11-05 (+7d) | 2026-11-05 → 2026-11-12 (+7d) |  | -95d → -101d |  |
| CO-R10.S04-WE-PW-160 | Trench Backfilling and Compaction Works for Fire Hydrants of Potable Water Network-[Road 10]-[SW-4] | 2026-11-07 → 2026-11-14 (+7d) | 2026-11-14 → 2026-11-21 (+7d) |  | -95d → -101d |  |
| IR | **Irrigation Network** |  | 2026-11-14 → 2026-11-19 (+5d) |  |  |  |
| ML | **Main Line Pipes** |  | 2026-11-14 → 2026-11-19 (+5d) |  |  |  |
| CO-R10.S04-WE-IR-100 | Trench Excavation and Bedding Works for Main Lines of Irrigation Network-[Road 10]-[SW-4] |  | 2026-10-26 → 2026-10-29 (+3d) |  | -195d → -198d |  |
| CO-R10.S04-WE-IR-110 | Pipes Laying Works for Main Lines of Irrigation Network-[Road 10]-[SW-4] |  | 2026-10-27 → 2026-10-31 (+4d) |  | -195d → -198d |  |
| CO-R10.S04-WE-IR-130 | Trench Backfilling and Compaction Works for Main Lines of Irrigation Network-[Road 10]-[SW-4] |  | 2026-10-28 → 2026-11-01 (+4d) |  | -193d → -196d |  |
| CO-R10.S04-WE-IR-120 | Installation Works for Main Line Valves of Irrigation Network-[Road 10]-[SW-4] | 2026-11-11 → 2026-11-17 (+6d) | 2026-11-14 → 2026-11-19 (+5d) |  | -207d → -212d |  |
| SL | **Street Lighting Network** | 2026-11-15 → 2026-11-21 (+6d) | 2027-03-08 → 2027-03-17 (+9d) |  |  |  |
| LP | **Lighting Poles Works** | 2026-11-15 → 2026-11-21 (+6d) | 2026-12-24 → 2026-12-30 (+6d) |  |  |  |
| CO-R10.S04-WE-SL-100 | Foundation Excavation Works for Lighting Poles of Street Lighting Network-[Road 10]-[SW-4] | 2026-11-15 → 2026-11-21 (+6d) | 2026-11-25 → 2026-12-01 (+6d) |  | -207d → -212d |  |
| CO-R10.S04-WE-SL-110 | Installation Works for Lighting Poles Foundation of Street Lighting Network-[Road 10]-[SW-4] | 2026-11-21 → 2026-11-26 (+5d) | 2026-12-01 → 2026-12-07 (+6d) |  | -207d → -212d |  |
| CO-R10.S04-WE-SL-120 | Installation Works for Lighting Poles of Street Lighting Network-[Road 10]-[SW-4] | 2026-11-26 → 2026-12-02 (+6d) | 2026-12-16 → 2026-12-22 (+6d) |  | -207d → -212d |  |
| CO-R10.S04-WE-SL-210 | Backfilling Works for Lighting Poles of Street Lighting Network-[Road 10]-[SW-4] | 2026-11-30 → 2026-12-06 (+6d) | 2026-12-16 → 2026-12-22 (+6d) |  | -95.5d → -100.5d |  |
| CO-R10.S04-WE-SL-130 | Installation Works for Lighting Fixtures With Drop Wire of Street Lighting Network-[Road 10]-[SW-4] | 2026-12-05 → 2026-12-10 (+5d) | 2026-12-24 → 2026-12-30 (+6d) |  | -95.5d → -100.5d |  |
| CO-R10.S04-WE-SL-200 | Testing Works for Lighting Poles of Street Lighting Network-[Road 10]-[SW-4] | 2026-12-17 → 2026-12-23 (+6d) | 2026-12-24 → 2026-12-30 (+6d) |  | -95.5d → -100.5d |  |
| CW | **Cabling Works** | 2026-12-17 → 2026-12-23 (+6d) | 2027-01-20 → 2027-01-26 (+6d) |  |  |  |
| CO-R10.S04-WE-SL-140 | Trench Excavation and Bedding Works for Street Lighting Network-[Road 10]-[SW-4] | 2026-12-17 → 2026-12-23 (+6d) | 2026-12-28 → 2027-01-03 (+6d) |  | -207d → -212d |  |

| ID | Task | Start | Finish | Complete | Total float | Other |
| --- | --- | --- | --- | --- | --- | --- |
| CO-R10.S04-WE-SL-150 | Cable Laying Works for Street Lighting Network-[Road 10]-[SW-4] | 2026-12-29 → 2027-01-04 (+6d) | 2027-01-09 → 2027-01-14 (+5d) |  | -207d → -212d | resources Labor/Helper [80 h]; Electrician [80 h]; Low Current Technician [80 h]; Supply, installation , test and operation of cables, Copper, (4Cx25mm²,Cu/XLPE/SWA/PVC +1x16mm² PVC/PVC) [938.44] → Labor/Helper [80 h]; Electrician [80 h]; Low Current Technician [80 h]; Supply, installation , test and operation of cables, Copper, (4Cx25mmï¿½,Cu/XLPE/SWA/PVC +1x16mmï¿½ PVC/PVC) [938.44] |
| CO-R10.S04-WE-SL-160 | Trench Backfilling and Compaction Works for Street Lighting Network-[Road 10]-[SW-4] | 2027-01-10 → 2027-01-16 (+6d) | 2027-01-20 → 2027-01-26 (+6d) |  | -207d → -212d | resources Skilled Labor/Surveyor [8 h]; Foreman [8 h]; Excavator [80 h]; Water Tank [20 h]; Supply, installation , test and operation of cables, Copper, (4Cx25mm²,Cu/XLPE/SWA/PVC +1x16mm² PVC/PVC) [72.19] → Skilled Labor/Surveyor [8 h]; Foreman [8 h]; Excavator [80 h]; Water Tank [20 h]; Supply, installation , test and operation of cables, Copper, (4Cx25mmï¿½,Cu/XLPE/SWA/PVC +1x16mmï¿½ PVC/PVC) [72.19] |
| DPB | **Distrubution Panel Boards** | 2027-01-21 → 2027-01-27 (+6d) | 2027-03-08 → 2027-03-17 (+9d) |  |  |  |
| CO-R10.S04-WE-SL-170 | Foundation Excavation Works For Panel Boards of Street Lighting Network-[Road 10]-[SW-4] | 2027-01-21 → 2027-01-27 (+6d) | 2027-02-10 → 2027-02-16 (+6d) |  | -207d → -212d |  |
| CO-R10.S04-WE-SL-180 | Installation Works for Panel Board Concrete Foundations of Street Lighting Network-[Road 10]-[SW-4] | 2027-02-01 → 2027-02-07 (+6d) | 2027-02-14 → 2027-02-20 (+6d) |  | -198d → -203d |  |
| CO-R10.S04-WE-SL-190 | Installation Works for Lighting Panel Boards of Street Lighting Network-[Road 10]-[SW-4] | 2027-02-15 → 2027-02-21 (+6d) | 2027-03-01 → 2027-03-07 (+6d) |  | -198d → -203d |  |
| CO-R10.S04-WE-SL-220 | A wall of concrete blocks to install the KWH meter of Street Lighting Network-[Road 10]-[SW-4] | 2027-02-15 → 2027-02-21 (+6d) | 2027-03-08 → 2027-03-17 (+9d) |  | -198d → -203d |  |
| TE | **Telecom Network** | 2027-01-19 → 2027-01-25 (+6d) | 2027-02-20 → 2027-02-27 (+7d) |  |  |  |
| PD | **Ducts Works** | 2027-01-19 → 2027-01-25 (+6d) | 2027-02-20 → 2027-02-27 (+7d) |  |  |  |
| CO-R10.S04-WE-TE-100 | Trench Excavation and Bedding Works for Ducts of Telecom Network-[Road 10]-[SW-4] | 2027-01-19 → 2027-01-25 (+6d) | 2027-01-26 → 2027-02-01 (+6d) |  | -179d → -184d |  |
| CO-R10.S04-WE-TE-110 | Pipes Laying Works for Ducts of Telecom Network-[Road 10]-[SW-4] | 2027-01-27 → 2027-02-02 (+6d) | 2027-02-03 → 2027-02-09 (+6d) |  | -179d → -184d |  |
| CO-R10.S04-WE-TE-120 | Pouring Plain Concrete Above Ducts of Telecom Network-[Road 10]-[SW-4] | 2027-02-04 → 2027-02-10 (+6d) | 2027-02-11 → 2027-02-17 (+6d) |  | -179d → -184d |  |
| CO-R10.S04-WE-TE-130 | Trench Backfilling and Compaction Works for Ducts of Telecom Network-[Road 10]-[SW-4] | 2027-02-13 → 2027-02-18 (+5d) | 2027-02-20 → 2027-02-27 (+7d) |  | -179d → -184d |  |
| MH | **Manholes Works** | 2027-01-27 → 2027-02-02 (+6d) | 2027-02-20 → 2027-02-27 (+7d) |  |  |  |
| CO-R10.S04-WE-TE-140 | Excavation Works for Manholes of Telecom Network-[Road 10]-[SW-4] | 2027-01-27 → 2027-02-02 (+6d) | 2027-02-03 → 2027-02-09 (+6d) |  | -179d → -184d |  |
| CO-R10.S04-WE-TE-150 | Installation Works for Manholes of Telecom Network-[Road 10]-[SW-4] | 2027-02-04 → 2027-02-10 (+6d) | 2027-02-11 → 2027-02-17 (+6d) |  | -179d → -184d |  |
| CO-R10.S04-WE-TE-160 | Backfilling Works for Manholes of Telecom Network-[Road 10]-[SW-4] | 2027-02-13 → 2027-02-18 (+5d) | 2027-02-20 → 2027-02-27 (+7d) |  | -179d → -184d |  |
| RD | **Road Works** |  | 2027-04-08 → 2027-04-15 (+7d) |  |  |  |
| RD | **Pre-Bituminous Construction** |  | 2027-03-14 → 2027-03-20 (+6d) |  |  |  |
| CO-R10.S04-WE-RD-100 | Capping and Subgrade Layer for Road Works-[Road 10]-[SW-4] |  | 2027-01-24 → 2027-01-30 (+6d) | 60% → 70% | -144d → -152d |  |
| CO-R10.S04-WE-RD-110 | Aggregate Base Course Layer for Road Works-[Road 10]-[SW-4] | 2027-02-25 → 2027-03-03 (+6d) | 2027-03-14 → 2027-03-20 (+6d) |  | -100d → -105d |  |
| LS | **Pavement Works** |  | 2027-04-08 → 2027-04-15 (+7d) |  |  |  |
| CO-R10.S04-WE-RD-130 | Fixing of Interlock Tiles for Sidewalks Pavement-[Road 10]-[SW-4] | 2027-03-27 → 2027-04-03 (+7d) | 2027-04-08 → 2027-04-15 (+7d) |  | -158d → -164d |  |
| 5 | **Road 11 Local 1 ( 670 LM )** |  | 2027-03-29 → 2027-04-04 (+6d) |  |  |  |
| SW_5 | **SW_5** |  | 2027-01-24 → 2027-01-31 (+7d) |  |  |  |
| IR | **Irrigation Network** |  | 2026-11-03 → 2026-11-09 (+6d) |  |  |  |
| ML | **Main Line Pipes** |  | 2026-11-03 → 2026-11-09 (+6d) |  |  |  |
| CO-R11.S05-IR-110 | Pipes Laying Works for Main Lines of Irrigation Network-[Road 11]-[SW-5] |  | 2026-10-22 → 2026-10-28 (+6d) |  | -55d → -60d |  |
| CO-R11.S05-IR-120 | Installation Works for Main Line Valves of Irrigation Network-[Road 11]-[SW-5] | 2026-10-24 → 2026-10-29 (+5d) | 2026-10-26 → 2026-11-01 (+6d) |  | -55d → -60d |  |
| CO-R11.S05-IR-130 | Trench Backfilling and Compaction Works for Main Lines of Irrigation Network-[Road 11]-[SW-5] | 2026-10-27 → 2026-11-02 (+6d) | 2026-11-03 → 2026-11-09 (+6d) |  | -55d → -60d |  |
| TE | **Telecom Network** |  | 2027-01-24 → 2027-01-31 (+7d) |  |  |  |
| MH | **Manholes Works** | 2026-12-31 → 2027-01-07 (+7d) | 2027-01-24 → 2027-01-31 (+7d) |  |  |  |
| CO-R11.S05-TE-140 | Excavation Works for Manholes of Telecom Network-[Road 11]-[SW-5] | 2026-12-31 → 2027-01-07 (+7d) | 2027-01-07 → 2027-01-14 (+7d) |  | -137d → -143d |  |
| CO-R11.S05-TE-150 | Installation Works for Manholes of Telecom Network-[Road 11]-[SW-5] | 2027-01-09 → 2027-01-16 (+7d) | 2027-01-16 → 2027-01-23 (+7d) |  | -130d → -136d |  |
| CO-R11.S05-TE-160 | Backfilling Works for Manholes of Telecom Network-[Road 11]-[SW-5] | 2027-01-17 → 2027-01-24 (+7d) | 2027-01-24 → 2027-01-31 (+7d) |  | -130d → -136d |  |
| CO-R11.S05-MV-110 | Cable Laying Works for Medium Voltage Network-[Road 11]-[SW-5] |  |  |  |  | resources Labor/Helper [288 h]; Electrician [288 h]; Low Current Technician [288 h]; 33kv 3Cx400 mm² Al XLPE / LLDPE /PVC Cable [547.57]; 33kv 3Cx400 mm² Al XLPE /LLDPE/PVC [2.1] → Labor/Helper [288 h]; Electrician [288 h]; Low Current Technician [288 h]; 33kv 3Cx400 mmï¿½ Al XLPE / LLDPE /PVC Cable [547.57]; 33kv 3Cx400 mmï¿½ Al XLPE /LLDPE/PVC [2.1] |
| CO-R11.S05-MV-120 | Trench Backfilling and Compaction Works for Medium Voltage Network-[Road 11]-[SW-5] |  |  |  |  | resources Skilled Labor/Surveyor [15 h]; Foreman [15 h]; Excavator [144 h]; Water Tank [36 h]; 33kv 3Cx400 mm² Al XLPE / LLDPE /PVC Cable [234.67]; 33kv 3Cx400 mm² Al XLPE /LLDPE/PVC [0.9] → Skilled Labor/Surveyor [15 h]; Foreman [15 h]; Excavator [144 h]; Water Tank [36 h]; 33kv 3Cx400 mmï¿½ Al XLPE / LLDPE /PVC Cable [234.67]; 33kv 3Cx400 mmï¿½ Al XLPE /LLDPE/PVC [0.9] |
| SW_6 | **SW_6** |  | 2027-03-29 → 2027-04-04 (+6d) |  |  |  |
| PW | **Potable Water Network** |  | 2027-01-12 → 2027-01-19 (+7d) |  |  |  |
| VC | **Valve Chamber** | 2026-10-20 → 2026-10-27 (+7d) | 2026-10-26 → 2026-11-02 (+7d) |  |  |  |
| CO-R11.S06-PW-210 | Installation Works for Main Line Valves and Valve Chambers of Potable Water Network-[Road 11]-[SW-6] | 2026-10-20 → 2026-10-27 (+7d) | 2026-10-26 → 2026-11-02 (+7d) |  | -48d → -54d |  |
| FH | **Fire Hydrant** | 2026-12-20 → 2026-12-27 (+7d) | 2027-01-12 → 2027-01-19 (+7d) |  |  |  |
| CO-R11.S06-PW-140 | Excavation Works for Fire Hydrants of Potable Water Network-[Road 11]-[SW-6] | 2026-12-20 → 2026-12-27 (+7d) | 2026-12-27 → 2027-01-03 (+7d) |  | -115d → -121d |  |
| CO-R11.S06-PW-150 | Installation Works for Fire Hydrant of Potable Water Network-[Road 11]-[SW-6] | 2026-12-28 → 2027-01-04 (+7d) | 2027-01-04 → 2027-01-11 (+7d) |  | -115d → -121d |  |
| CO-R11.S06-PW-160 | Trench Backfilling and Compaction Works for Fire Hydrants of Potable Water Network-[Road 11]-[SW-6] | 2027-01-05 → 2027-01-12 (+7d) | 2027-01-12 → 2027-01-19 (+7d) |  | -115d → -121d |  |
| SL | **Street Lighting Network** |  | 2027-03-29 → 2027-04-04 (+6d) |  |  |  |
| LP | **Lighting Poles Works** |  | 2027-01-14 → 2027-01-20 (+6d) |  |  |  |
| CO-R11.S06-SL-210 | Backfilling Works for Lighting Poles of Street Lighting Network-[Road 11]-[SW-6] | 2026-10-20 → 2026-10-27 (+7d) | 2026-11-05 → 2026-11-12 (+7d) |  | -42.5d → -48.5d |  |
| CO-R11.S06-SL-200 | Testing Works for Lighting Poles of Street Lighting Network-[Road 11]-[SW-6] | 2026-11-07 → 2026-11-14 (+7d) | 2026-11-14 → 2026-11-21 (+7d) |  | -42.5d → -48.5d |  |
| CO-R11.S06-SL-130 | Installation Works for Lighting Fixtures With Drop Wire of Street Lighting Network-[Road 11]-[SW-6] | 2026-12-26 → 2026-12-31 (+5d) | 2027-01-14 → 2027-01-20 (+6d) |  | -95.5d → -100.5d |  |
| CW | **Cabling Works** |  | 2026-10-31 → 2026-11-07 (+7d) |  |  |  |
| CO-R11.S06-SL-150 | Cable Laying Works for Street Lighting Network-[Road 11]-[SW-6] |  |  |  |  | resources Labor/Helper [80 h]; Electrician [80 h]; Low Current Technician [80 h]; Supply, installation , test and operation of cables, Copper, (4Cx25mm²,Cu/XLPE/SWA/PVC +1x16mm² PVC/PVC) [1105.65] → Labor/Helper [80 h]; Electrician [80 h]; Low Current Technician [80 h]; Supply, installation , test and operation of cables, Copper, (4Cx25mmï¿½,Cu/XLPE/SWA/PVC +1x16mmï¿½ PVC/PVC) [1105.65] |
| CO-R11.S06-SL-160 | Trench Backfilling and Compaction Works for Street Lighting Network-[Road 11]-[SW-6] | 2026-10-20 → 2026-10-27 (+7d) | 2026-10-31 → 2026-11-07 (+7d) |  | -78d → -84d | resources Skilled Labor/Surveyor [8 h]; Foreman [8 h]; Excavator [80 h]; Water Tank [20 h]; Supply, installation , test and operation of cables, Copper, (4Cx25mm²,Cu/XLPE/SWA/PVC +1x16mm² PVC/PVC) [85.05] → Skilled Labor/Surveyor [8 h]; Foreman [8 h]; Excavator [80 h]; Water Tank [20 h]; Supply, installation , test and operation of cables, Copper, (4Cx25mmï¿½,Cu/XLPE/SWA/PVC +1x16mmï¿½ PVC/PVC) [85.05] |
| DPB | **Distrubution Panel Boards** | 2027-02-11 → 2027-02-17 (+6d) | 2027-03-29 → 2027-04-04 (+6d) |  |  |  |
| CO-R11.S06-SL-170 | Foundation Excavation Works For Panel Boards of Street Lighting Network-[Road 11]-[SW-6] | 2027-02-11 → 2027-02-17 (+6d) | 2027-02-25 → 2027-03-03 (+6d) |  | -207d → -212d |  |
| CO-R11.S06-SL-180 | Installation Works for Panel Board Concrete Foundations of Street Lighting Network-[Road 11]-[SW-6] | 2027-02-27 → 2027-03-04 (+5d) | 2027-03-15 → 2027-03-21 (+6d) |  | -207d → -212d |  |
| CO-R11.S06-SL-190 | Installation Works for Lighting Panel Boards of Street Lighting Network-[Road 11]-[SW-6] | 2027-03-16 → 2027-03-22 (+6d) | 2027-03-29 → 2027-04-04 (+6d) |  | -207d → -212d |  |
| CO-R11.S06-SL-220 | A wall of concrete blocks to install the KWH meter of Street Lighting Network-[Road 11]-[SW-6] | 2027-03-16 → 2027-03-22 (+6d) | 2027-03-29 → 2027-04-04 (+6d) |  | -201d → -206d |  |
| TE | **Telecom Network** |  | 2027-03-01 → 2027-03-07 (+6d) |  |  |  |
| MH | **Manholes Works** | 2027-02-04 → 2027-02-10 (+6d) | 2027-03-01 → 2027-03-07 (+6d) |  |  |  |
| CO-R11.S06-TE-140 | Excavation Works for Manholes of Telecom Network-[Road 11]-[SW-6] | 2027-02-04 → 2027-02-10 (+6d) | 2027-02-11 → 2027-02-17 (+6d) |  | -160d → -165d |  |
| CO-R11.S06-TE-150 | Installation Works for Manholes of Telecom Network-[Road 11]-[SW-6] | 2027-02-13 → 2027-02-18 (+5d) | 2027-02-20 → 2027-02-27 (+7d) |  | -160d → -165d |  |
| CO-R11.S06-TE-160 | Backfilling Works for Manholes of Telecom Network-[Road 11]-[SW-6] | 2027-02-21 → 2027-02-28 (+7d) | 2027-03-01 → 2027-03-07 (+6d) |  | -160d → -165d |  |
| CO-R11.S06-MV-110 | Cable Laying Works for Medium Voltage Network-[Road 11]-[SW-6] |  |  |  |  | resources Labor/Helper [288 h]; Electrician [288 h]; Low Current Technician [288 h]; 33kv 3Cx400 mm² Al XLPE / LLDPE /PVC Cable [547.57]; 33kv 3Cx400 mm² Al XLPE /LLDPE/PVC [2.1] → Labor/Helper [288 h]; Electrician [288 h]; Low Current Technician [288 h]; 33kv 3Cx400 mmï¿½ Al XLPE / LLDPE /PVC Cable [547.57]; 33kv 3Cx400 mmï¿½ Al XLPE /LLDPE/PVC [2.1] |
| CO-R11.S06-MV-120 | Trench Backfilling and Compaction Works for Medium Voltage Network-[Road 11]-[SW-6] |  |  |  |  | resources Skilled Labor/Surveyor [15 h]; Foreman [15 h]; Excavator [144 h]; Water Tank [36 h]; 33kv 3Cx400 mm² Al XLPE / LLDPE /PVC Cable [234.67]; 33kv 3Cx400 mm² Al XLPE /LLDPE/PVC [0.9] → Skilled Labor/Surveyor [15 h]; Foreman [15 h]; Excavator [144 h]; Water Tank [36 h]; 33kv 3Cx400 mmï¿½ Al XLPE / LLDPE /PVC Cable [234.67]; 33kv 3Cx400 mmï¿½ Al XLPE /LLDPE/PVC [0.9] |
| 6 | **Road 14 Local 1 ( 584 LM )** |  | 2027-05-03 → 2027-05-09 (+6d) |  |  |  |
| SW_7 | **SW_7** |  | 2027-05-03 → 2027-05-09 (+6d) |  |  |  |
| SW | **Sewage Network** |  | 2026-10-20 → 2026-10-27 (+7d) |  |  |  |
| 1 | **Manholes** |  | 2026-10-20 → 2026-10-27 (+7d) |  |  |  |
| CO-R14.S07-SW-210 | Testing Works for Main Line Manholes of Sewage Network-[Road 14]-[SW-7] | 2026-10-20 → 2026-10-27 (+7d) | 2026-10-20 → 2026-10-27 (+7d) |  | -35d → -41d |  |

| ID | Task | Start | Finish | Total float | Other |
| --- | --- | --- | --- | --- | --- |
| IR | **Irrigation Network** |  | 2026-10-27 → 2026-11-03 (+7d) |  |  |
| ML | **Main Line Pipes** |  | 2026-10-27 → 2026-11-03 (+7d) |  |  |
| CO-R14.S07-IR-120 | Installation Works for Main Line Valves of Irrigation Network-[Road 14]-[SW-7] | 2026-10-20 → 2026-10-27 (+7d) | 2026-10-27 → 2026-11-03 (+7d) | 1d → -5d |  |
| SL | **Street Lighting Network** |  | 2026-11-16 → 2026-11-23 (+7d) |  |  |
| LP | **Lighting Poles Works** |  | 2026-11-09 → 2026-11-16 (+7d) |  |  |
| CO-R14.S07-SL-130 | Installation Works for Lighting Fixtures With Drop Wire of Street Lighting Network-[Road 14]-[SW-7] | 2026-10-20 → 2026-10-27 (+7d) | 2026-11-09 → 2026-11-16 (+7d) | -69d → -75d |  |
| CO-R14.S07-SL-200 | Testing Works for Lighting Poles of Street Lighting Network-[Road 14]-[SW-7] | 2026-10-20 → 2026-10-27 (+7d) | 2026-10-25 → 2026-11-01 (+7d) | -56d → -62d |  |
| DPB | **Distrubution Panel Boards** | 2026-10-20 → 2026-10-27 (+7d) | 2026-11-16 → 2026-11-23 (+7d) |  |  |
| CO-R14.S07-SL-170 | Foundation Excavation Works For Panel Boards of Street Lighting Network-[Road 14]-[SW-7] | 2026-10-20 → 2026-10-27 (+7d) | 2026-11-09 → 2026-11-16 (+7d) | -79d → -85d |  |
| CO-R14.S07-SL-180 | Installation Works for Panel Board Concrete Foundations of Street Lighting Network-[Road 14]-[SW-7] | 2026-10-24 → 2026-10-31 (+7d) | 2026-11-12 → 2026-11-19 (+7d) | -79d → -85d |  |
| CO-R14.S07-SL-220 | A wall of concrete blocks to install the KWH meter of Street Lighting Network-[Road 14]-[SW-7] | 2026-10-24 → 2026-10-31 (+7d) | 2026-11-12 → 2026-11-19 (+7d) | -76d → -82d |  |
| CO-R14.S07-SL-190 | Installation Works for Lighting Panel Boards of Street Lighting Network-[Road 14]-[SW-7] | 2026-10-27 → 2026-11-03 (+7d) | 2026-11-16 → 2026-11-23 (+7d) | -79d → -85d |  |
| TE | **Telecom Network** | 2027-01-06 → 2027-01-18 (+12d) | 2027-02-02 → 2027-02-14 (+12d) |  |  |
| PD | **Ducts Works** | 2027-01-06 → 2027-01-18 (+12d) | 2027-02-02 → 2027-02-14 (+12d) |  |  |
| CO-R14.S07-TE-100 | Trench Excavation and Bedding Works for Ducts of Telecom Network-[Road 14]-[SW-7] | 2027-01-06 → 2027-01-18 (+12d) | 2027-01-09 → 2027-01-20 (+11d) | -138d → -148d |  |
| CO-R14.S07-TE-110 | Pipes Laying Works for Ducts of Telecom Network-[Road 14]-[SW-7] | 2027-01-10 → 2027-01-21 (+11d) | 2027-01-17 → 2027-01-28 (+11d) | -131d → -141d |  |
| CO-R14.S07-TE-120 | Pouring Plain Concrete Above Ducts of Telecom Network-[Road 14]-[SW-7] | 2027-01-18 → 2027-01-30 (+12d) | 2027-01-25 → 2027-02-06 (+12d) | -131d → -141d |  |
| CO-R14.S07-TE-130 | Trench Backfilling and Compaction Works for Ducts of Telecom Network-[Road 14]-[SW-7] | 2027-01-26 → 2027-02-07 (+12d) | 2027-02-02 → 2027-02-14 (+12d) | -131d → -141d |  |
| MH | **Manholes Works** | 2027-01-10 → 2027-01-21 (+11d) | 2027-02-02 → 2027-02-14 (+12d) |  |  |
| CO-R14.S07-TE-140 | Excavation Works for Manholes of Telecom Network-[Road 14]-[SW-7] | 2027-01-10 → 2027-01-21 (+11d) | 2027-01-17 → 2027-01-28 (+11d) | -138d → -148d |  |
| CO-R14.S07-TE-150 | Installation Works for Manholes of Telecom Network-[Road 14]-[SW-7] | 2027-01-18 → 2027-01-30 (+12d) | 2027-01-25 → 2027-02-06 (+12d) | -131d → -141d |  |
| CO-R14.S07-TE-160 | Backfilling Works for Manholes of Telecom Network-[Road 14]-[SW-7] | 2027-01-26 → 2027-02-07 (+12d) | 2027-02-02 → 2027-02-14 (+12d) | -131d → -141d |  |
| RD | **Road Works** |  | 2027-05-03 → 2027-05-09 (+6d) |  |  |
| LS | **Pavement Works** |  | 2027-05-03 → 2027-05-09 (+6d) |  |  |
| CO-R14.S07-RD-P-130 | Fixing of Interlock Tiles for Sidewalks Pavement-[Road 14]-[SW-7] | 2027-04-20 → 2027-04-26 (+6d) | 2027-05-03 → 2027-05-09 (+6d) | -159d → -164d |  |
| SW_8 | **SW_8** |  | 2027-05-03 → 2027-05-09 (+6d) |  |  |
| SW | **Sewage Network** |  | 2026-10-20 → 2026-10-27 (+7d) |  |  |
| 1 | **Manholes** |  | 2026-10-20 → 2026-10-27 (+7d) |  |  |
| CO-R14.S08-SW-210 | Testing Works for Main Line Manholes of Sewage Network-[Road 14]-[SW-8] | 2026-10-20 → 2026-10-27 (+7d) | 2026-10-20 → 2026-10-27 (+7d) | -35d → -41d |  |
| PW | **Potable Water Network** |  | 2026-11-12 → 2026-11-19 (+7d) |  |  |
| FH | **Fire Hydrant** | 2026-10-20 → 2026-10-27 (+7d) | 2026-11-12 → 2026-11-19 (+7d) |  |  |
| CO-R14.S08-PW-140 | Excavation Works for Fire Hydrants of Potable Water Network-[Road 14]-[SW-8] | 2026-10-20 → 2026-10-27 (+7d) | 2026-10-27 → 2026-11-03 (+7d) | 5d → -1d |  |
| CO-R14.S08-PW-150 | Installation Works for Fire Hydrant of Potable Water Network-[Road 14]-[SW-8] | 2026-10-28 → 2026-11-04 (+7d) | 2026-11-04 → 2026-11-11 (+7d) | 5d → -1d |  |
| CO-R14.S08-PW-160 | Trench Backfilling and Compaction Works for Fire Hydrants of Potable Water Network-[Road 14]-[SW-8] | 2026-11-05 → 2026-11-12 (+7d) | 2026-11-12 → 2026-11-19 (+7d) | 5d → -1d |  |
| SL | **Street Lighting Network** |  | 2027-04-19 → 2027-04-25 (+6d) |  |  |
| LP | **Lighting Poles Works** |  | 2027-02-04 → 2027-02-10 (+6d) |  |  |
| CO-R14.S08-SL-200 | Testing Works for Lighting Poles of Street Lighting Network-[Road 14]-[SW-8] | 2026-10-20 → 2026-10-27 (+7d) | 2026-10-27 → 2026-11-03 (+7d) | -10d → -16d |  |
| CO-R14.S08-SL-850 | Installation Works for Lighting Fixtures With Drop Wire of Street Lighting Network-[Road 14]-[SW-8] | 2027-01-16 → 2027-01-21 (+5d) | 2027-02-04 → 2027-02-10 (+6d) | -95.5d → -100.5d |  |
| CO-R14.S08-SL-650 | Cable Laying Works for Street Lighting Network-[Road 14]-[SW-8] |  |  |  | resources Supply, installation , test and operation of cables, Copper, (4Cx25mm²,Cu/XLPE/SWA/PVC +1x16mm² PVC/PVC) [1610.7] → Supply, installation , test and operation of cables, Copper, (4Cx25mmï¿½,Cu/XLPE/SWA/PVC +1x16mmï¿½ PVC/PVC) [1610.7] |
| CO-R14.S08-SL-660 | Trench Backfilling and Compaction Works for Street Lighting Network-[Road 14]-[SW-8] |  |  |  | resources Supply, installation , test and operation of cables, Copper, (4Cx25mm²,Cu/XLPE/SWA/PVC +1x16mm² PVC/PVC) [123.9] → Supply, installation , test and operation of cables, Copper, (4Cx25mmï¿½,Cu/XLPE/SWA/PVC +1x16mmï¿½ PVC/PVC) [123.9] |
| DPB | **Distrubution Panel Boards** | 2027-02-27 → 2027-03-04 (+5d) | 2027-04-19 → 2027-04-25 (+6d) |  |  |
| CO-R14.S08-SL-DB-640 | Foundation Excavation Works For Panel Boards of Street Lighting Network-[Road 14]-[SW-8] | 2027-02-27 → 2027-03-04 (+5d) | 2027-03-22 → 2027-03-28 (+6d) | -193d → -198d |  |
| CO-R14.S08-SL-220 | A wall of concrete blocks to install the KWH meter of Street Lighting Network-[Road 14]-[SW-8] | 2027-03-16 → 2027-03-22 (+6d) | 2027-04-13 → 2027-04-19 (+6d) | -202d → -207d |  |
| CO-R14.S08-SL-DB-650 | Installation Works for Panel Board Concrete Foundations of Street Lighting Network-[Road 14]-[SW-8] | 2027-03-16 → 2027-03-22 (+6d) | 2027-04-05 → 2027-04-11 (+6d) | -202d → -207d |  |
| CO-R14.S08-SL-DB-660 | Installation Works for Lighting Panel Boards of Street Lighting Network-[Road 14]-[SW-8] | 2027-03-30 → 2027-04-05 (+6d) | 2027-04-19 → 2027-04-25 (+6d) | -207d → -212d |  |
| TE | **Telecom Network** | 2027-01-10 → 2027-01-21 (+11d) | 2027-03-13 → 2027-03-18 (+5d) |  |  |
| PD | **Ducts Works** | 2027-01-10 → 2027-01-21 (+11d) | 2027-02-06 → 2027-02-17 (+11d) |  |  |
| CO-R14.S08-TE-100 | Trench Excavation and Bedding Works for Ducts of Telecom Network-[Road 14]-[SW-8] | 2027-01-10 → 2027-01-21 (+11d) | 2027-01-12 → 2027-01-24 (+12d) | -134d → -144d |  |
| CO-R14.S08-TE-110 | Pipes Laying Works for Ducts of Telecom Network-[Road 14]-[SW-8] | 2027-01-13 → 2027-01-25 (+12d) | 2027-01-20 → 2027-02-01 (+12d) | -134d → -144d |  |
| CO-R14.S08-TE-120 | Pouring Plain Concrete Above Ducts of Telecom Network-[Road 14]-[SW-8] | 2027-01-21 → 2027-02-02 (+12d) | 2027-01-28 → 2027-02-09 (+12d) | -134d → -144d |  |
| CO-R14.S08-TE-130 | Trench Backfilling and Compaction Works for Ducts of Telecom Network-[Road 14]-[SW-8] | 2027-01-30 → 2027-02-10 (+11d) | 2027-02-06 → 2027-02-17 (+11d) | -134d → -144d |  |
| MH | **Manholes Works** | 2027-02-13 → 2027-02-18 (+5d) | 2027-03-13 → 2027-03-18 (+5d) |  |  |
| CO-R14.S08-TE-140 | Excavation Works for Manholes of Telecom Network-[Road 14]-[SW-8] | 2027-02-13 → 2027-02-18 (+5d) | 2027-02-20 → 2027-02-27 (+7d) | -160d → -165d |  |
| CO-R14.S08-TE-150 | Installation Works for Manholes of Telecom Network-[Road 14]-[SW-8] | 2027-02-21 → 2027-02-28 (+7d) | 2027-03-01 → 2027-03-07 (+6d) | -160d → -165d |  |
| CO-R14.S08-TE-160 | Backfilling Works for Manholes of Telecom Network-[Road 14]-[SW-8] | 2027-03-02 → 2027-03-08 (+6d) | 2027-03-13 → 2027-03-18 (+5d) | -160d → -165d |  |
| CO-R14.S08-MV-ML-650 | Cable Laying Works for Medium Voltage Network-[Road 14]-[SW-8] |  |  |  | resources 33kv 3Cx400 mm² Al XLPE / LLDPE /PVC Cable [1616.12]; 33kv 3Cx400 mm² Al XLPE /LLDPE/PVC [4.9] → 33kv 3Cx400 mmï¿½ Al XLPE / LLDPE /PVC Cable [1616.12]; 33kv 3Cx400 mmï¿½ Al XLPE /LLDPE/PVC [4.9] |
| CO-R14.S08-MV-ML-660 | Trench Backfilling and Compaction Works for Medium Voltage Network-[Road 14]-[SW-8] |  |  |  | resources 33kv 3Cx400 mm² Al XLPE / LLDPE /PVC Cable [692.62]; 33kv 3Cx400 mm² Al XLPE /LLDPE/PVC [2.1] → 33kv 3Cx400 mmï¿½ Al XLPE / LLDPE /PVC Cable [692.62]; 33kv 3Cx400 mmï¿½ Al XLPE /LLDPE/PVC [2.1] |
| RD | **Road Works** |  | 2027-05-03 → 2027-05-09 (+6d) |  |  |
| LS | **Pavement Works** |  | 2027-05-03 → 2027-05-09 (+6d) |  |  |
| CO-R14.S08-RD-P-130 | Fixing of Interlock Tiles for Sidewalks Pavement-[Road 14]-[SW-8] | 2027-04-20 → 2027-04-26 (+6d) | 2027-05-03 → 2027-05-09 (+6d) | -157d → -162d |  |
| 7 | **Road 15 Local 1 ( 556 LM )** |  | 2026-11-22 → 2026-11-29 (+7d) |  |  |
| SW_9 | **SW_9** |  | 2026-10-27 → 2026-11-03 (+7d) |  |  |
| IR | **Irrigation Network** |  | 2026-10-27 → 2026-11-03 (+7d) |  |  |
| ML | **Main Line Pipes** |  | 2026-10-27 → 2026-11-03 (+7d) |  |  |
| CO-R15.S09-IR-120 | Installation Works for Main Line Valves of Irrigation Network-[Road 15]-[SW-9] | 2026-10-20 → 2026-10-27 (+7d) | 2026-10-27 → 2026-11-03 (+7d) | 1d → -5d |  |
| CO-R15.S09-MV-ML-260 | Cable Laying Works for Medium Voltage Network-[Road 15]-[SW-9] |  |  |  | resources Labor/Helper [144 h]; Electrician [144 h]; Low Current Technician [144 h]; 33kv 3Cx400 mm² Al XLPE / LLDPE /PVC Cable [921.76]; 33kv 3Cx400 mm² Al XLPE /LLDPE/PVC [2.8] → Labor/Helper [144 h]; Electrician [144 h]; Low Current Technician [144 h]; 33kv 3Cx400 mmï¿½ Al XLPE / LLDPE /PVC Cable [921.76]; 33kv 3Cx400 mmï¿½ Al XLPE /LLDPE/PVC [2.8] |
| CO-R15.S09-MV-ML-270 | Trench Backfilling and Compaction Works for Medium Voltage Network-[Road 15]-[SW-9] |  |  |  | resources Skilled Labor/Surveyor [15 h]; Foreman [15 h]; Excavator [144 h]; Water Tank [36 h]; 33kv 3Cx400 mm² Al XLPE / LLDPE /PVC Cable [395.04]; 33kv 3Cx400 mm² Al XLPE /LLDPE/PVC [1.2] → Skilled Labor/Surveyor [15 h]; Foreman [15 h]; Excavator [144 h]; Water Tank [36 h]; 33kv 3Cx400 mmï¿½ Al XLPE / LLDPE /PVC Cable [395.04]; 33kv 3Cx400 mmï¿½ Al XLPE /LLDPE/PVC [1.2] |
| SW_10 | **SW_10** |  | 2026-11-22 → 2026-11-29 (+7d) |  |  |
| SL | **Street Lighting Network** |  | 2026-11-22 → 2026-11-29 (+7d) |  |  |
| LP | **Lighting Poles Works** |  | 2026-11-22 → 2026-11-29 (+7d) |  |  |

| ID | Task | Start | Finish | Total float | Other |
| --- | --- | --- | --- | --- | --- |
| CO-R15.S10-SL-200 | Testing Works for Lighting Poles of Street Lighting Network-[Road 15]-[SW-10] | 2026-10-20 → 2026-10-27 (+7d) | 2026-10-25 → 2026-11-01 (+7d) | -129d → -135d |  |
| CO-R15.S10-SL-130 | Installation Works for Lighting Fixtures With Drop Wire of Street Lighting Network-[Road 15]-[SW-10] | 2026-11-02 → 2026-11-09 (+7d) | 2026-11-22 → 2026-11-29 (+7d) | -153d → -159d |  |
| CO-R15.S10-SL-150 | Cable Laying Works for Street Lighting Network-[Road 15]-[SW-10] |  |  |  | resources Supply, installation , test and operation of cables, Copper, (4Cx25mm²,Cu/XLPE/SWA/PVC +1x16mm² PVC/PVC) [928.2] → Supply, installation , test and operation of cables, Copper, (4Cx25mmï¿½,Cu/XLPE/SWA/PVC +1x16mmï¿½ PVC/PVC) [928.2] |
| CO-R15.S10-SL-160 | Trench Backfilling and Compaction Works for Street Lighting Network-[Road 15]-[SW-10] |  |  |  | resources Supply, installation , test and operation of cables, Copper, (4Cx25mm²,Cu/XLPE/SWA/PVC +1x16mm² PVC/PVC) [71.4] → Supply, installation , test and operation of cables, Copper, (4Cx25mmï¿½,Cu/XLPE/SWA/PVC +1x16mmï¿½ PVC/PVC) [71.4] |
| DPB | **Distrubution Panel Boards** | 2026-10-20 → 2026-10-27 (+7d) | 2026-11-16 → 2026-11-23 (+7d) |  |  |
| CO-R15.S10-SL-170 | Foundation Excavation Works For Panel Boards of Street Lighting Network-[Road 15]-[SW-10] | 2026-10-20 → 2026-10-27 (+7d) | 2026-11-09 → 2026-11-16 (+7d) | -65d → -71d |  |
| CO-R15.S10-SL-180 | Installation Works for Panel Board Concrete Foundations of Street Lighting Network-[Road 15]-[SW-10] | 2026-10-24 → 2026-10-31 (+7d) | 2026-11-12 → 2026-11-19 (+7d) | -65d → -71d |  |
| CO-R15.S10-SL-220 | A wall of concrete blocks to install the KWH meter of Street Lighting Network-[Road 15]-[SW-10] | 2026-10-24 → 2026-10-31 (+7d) | 2026-11-12 → 2026-11-19 (+7d) | -62d → -68d |  |
| CO-R15.S10-SL-190 | Installation Works for Lighting Panel Boards of Street Lighting Network-[Road 15]-[SW-10] | 2026-10-27 → 2026-11-03 (+7d) | 2026-11-16 → 2026-11-23 (+7d) | -65d → -71d |  |
| PW | **Potable Water Network** |  | 2026-11-09 → 2026-11-16 (+7d) |  |  |
| VC | **Valve Chamber** | 2026-10-20 → 2026-10-27 (+7d) | 2026-10-26 → 2026-11-02 (+7d) |  |  |
| CO-R15.S10-PW-210 | Installation Works for Main Line Valves and Valve Chambers of Potable Water Network-[Road 15]-[SW-10] | 2026-10-20 → 2026-10-27 (+7d) | 2026-10-26 → 2026-11-02 (+7d) | 20d → 14d |  |
| FH | **Fire Hydrant** | 2026-10-20 → 2026-10-27 (+7d) | 2026-11-09 → 2026-11-16 (+7d) |  |  |
| CO-R15.S10-PW-140 | Excavation Works for Fire Hydrants of Potable Water Network-[Road 15]-[SW-10] | 2026-10-20 → 2026-10-27 (+7d) | 2026-10-26 → 2026-11-02 (+7d) | -32d → -38d |  |
| CO-R15.S10-PW-150 | Installation Works for Fire Hydrant of Potable Water Network-[Road 15]-[SW-10] | 2026-10-27 → 2026-11-03 (+7d) | 2026-11-02 → 2026-11-09 (+7d) | -32d → -38d |  |
| CO-R15.S10-PW-160 | Trench Backfilling and Compaction Works for Fire Hydrants of Potable Water Network-[Road 15]-[SW-10] | 2026-11-03 → 2026-11-10 (+7d) | 2026-11-09 → 2026-11-16 (+7d) | -32d → -38d |  |
| 8 | **Road 16 Local 1 ( 527 LM )** |  | 2026-11-16 → 2026-11-23 (+7d) |  |  |
| SW_13 | **SW_11** |  | 2026-10-27 → 2026-11-03 (+7d) |  |  |
| IR | **Irrigation Network** |  | 2026-10-27 → 2026-11-03 (+7d) |  |  |
| ML | **Main Line Pipes** |  | 2026-10-27 → 2026-11-03 (+7d) |  |  |
| CO-R16.S11-IR-120 | Installation Works for Main Line Valves of Irrigation Network-[Road 16]-[SW-11] | 2026-10-20 → 2026-10-27 (+7d) | 2026-10-27 → 2026-11-03 (+7d) | 1d → -5d |  |
| CO-R16.S11-MV-ML-290 | Cable Laying Works for Medium Voltage Network-[Road 16]-[SW-11] |  |  |  | resources Labor/Helper [144 h]; Electrician [144 h]; Low Current Technician [144 h]; 33kv 3Cx400 mm² Al XLPE / LLDPE /PVC Cable [878.53]; 33kv 3Cx400 mm² Al XLPE /LLDPE/PVC [2.8] → Labor/Helper [144 h]; Electrician [144 h]; Low Current Technician [144 h]; 33kv 3Cx400 mmï¿½ Al XLPE / LLDPE /PVC Cable [878.53]; 33kv 3Cx400 mmï¿½ Al XLPE /LLDPE/PVC [2.8] |
| CO-R16.S11-MV-ML-300 | Trench Backfilling and Compaction Works for Medium Voltage Network-[Road 16]-[SW-11] |  |  |  | resources Skilled Labor/Surveyor [15 h]; Foreman [15 h]; Excavator [144 h]; Water Tank [36 h]; 33kv 3Cx400 mm² Al XLPE / LLDPE /PVC Cable [376.51]; 33kv 3Cx400 mm² Al XLPE /LLDPE/PVC [1.2] → Skilled Labor/Surveyor [15 h]; Foreman [15 h]; Excavator [144 h]; Water Tank [36 h]; 33kv 3Cx400 mmï¿½ Al XLPE / LLDPE /PVC Cable [376.51]; 33kv 3Cx400 mmï¿½ Al XLPE /LLDPE/PVC [1.2] |
| SW_14 | **SW_12** |  | 2026-11-16 → 2026-11-23 (+7d) |  |  |
| PW | **Potable Water Network** |  | 2026-11-16 → 2026-11-23 (+7d) |  |  |
| VC | **Valve Chamber** | 2026-10-20 → 2026-10-27 (+7d) | 2026-10-26 → 2026-11-02 (+7d) |  |  |
| CO-R16.S12-PW-210 | Installation Works for Main Line Valves and Valve Chambers of Potable Water Network-[Road 16]-[SW-12] | 2026-10-20 → 2026-10-27 (+7d) | 2026-10-26 → 2026-11-02 (+7d) | 20d → 14d |  |
| FH | **Fire Hydrant** | 2026-10-20 → 2026-10-27 (+7d) | 2026-11-16 → 2026-11-23 (+7d) |  |  |
| CO-R16.S12-PW-140 | Excavation Works for Fire Hydrants of Potable Water Network-[Road 16]-[SW-12] | 2026-10-20 → 2026-10-27 (+7d) | 2026-10-26 → 2026-11-02 (+7d) | -26d → -32d |  |
| CO-R16.S12-PW-150 | Installation Works for Fire Hydrant of Potable Water Network-[Road 16]-[SW-12] | 2026-11-03 → 2026-11-10 (+7d) | 2026-11-09 → 2026-11-16 (+7d) | -32d → -38d |  |
| CO-R16.S12-PW-160 | Trench Backfilling and Compaction Works for Fire Hydrants of Potable Water Network-[Road 16]-[SW-12] | 2026-11-10 → 2026-11-17 (+7d) | 2026-11-16 → 2026-11-23 (+7d) | -32d → -38d |  |
| 9 | **Road 17 Local 1 ( 500 LM )** |  | 2026-11-23 → 2026-11-30 (+7d) |  |  |
| SW_15 | **SW_13** |  | 2026-10-27 → 2026-11-03 (+7d) |  |  |
| IR | **Irrigation Network** |  | 2026-10-27 → 2026-11-03 (+7d) |  |  |
| ML | **Main Line Pipes** |  | 2026-10-27 → 2026-11-03 (+7d) |  |  |
| CO-R17.S13-IR-120 | Installation Works for Main Line Valves of Irrigation Network-[Road 17]-[SW-13] | 2026-10-20 → 2026-10-27 (+7d) | 2026-10-27 → 2026-11-03 (+7d) | 1d → -5d |  |
| CO-R17.S13-MV-ML-320 | Cable Laying Works for Medium Voltage Network-[Road 17]-[SW-13] |  |  |  | resources Labor/Helper [576 h]; Electrician [576 h]; Low Current Technician [576 h]; 33kv 3Cx400 mm² Al XLPE / LLDPE /PVC Cable [835.3]; 33kv 3Cx400 mm² Al XLPE /LLDPE/PVC [2.8] → Labor/Helper [576 h]; Electrician [576 h]; Low Current Technician [576 h]; 33kv 3Cx400 mmï¿½ Al XLPE / LLDPE /PVC Cable [835.3]; 33kv 3Cx400 mmï¿½ Al XLPE /LLDPE/PVC [2.8] |
| CO-R17.S13-MV-ML-330 | Trench Backfilling and Compaction Works for Medium Voltage Network-[Road 17]-[SW-13] |  |  |  | resources Skilled Labor/Surveyor [15 h]; Foreman [15 h]; Excavator [144 h]; Water Tank [36 h]; 33kv 3Cx400 mm² Al XLPE / LLDPE /PVC Cable [357.99]; 33kv 3Cx400 mm² Al XLPE /LLDPE/PVC [1.2] → Skilled Labor/Surveyor [15 h]; Foreman [15 h]; Excavator [144 h]; Water Tank [36 h]; 33kv 3Cx400 mmï¿½ Al XLPE / LLDPE /PVC Cable [357.99]; 33kv 3Cx400 mmï¿½ Al XLPE /LLDPE/PVC [1.2] |
| SW_16 | **SW_14** |  | 2026-11-23 → 2026-11-30 (+7d) |  |  |
| SL | **Street Lighting Network** |  | 2026-11-22 → 2026-11-29 (+7d) |  |  |
| LP | **Lighting Poles Works** |  | 2026-11-22 → 2026-11-29 (+7d) |  |  |
| CO-R17.S14-SL-200 | Testing Works for Lighting Poles of Street Lighting Network-[Road 17]-[SW-14] | 2026-10-20 → 2026-10-27 (+7d) | 2026-10-25 → 2026-11-01 (+7d) | -44d → -50d |  |
| CO-R17.S14-SL-130 | Installation Works for Lighting Fixtures With Drop Wire of Street Lighting Network-[Road 17]-[SW-14] | 2026-11-02 → 2026-11-09 (+7d) | 2026-11-22 → 2026-11-29 (+7d) | -68d → -74d |  |
| CO-R17.S14-SL-150 | Cable Laying Works for Street Lighting Network-[Road 17]-[SW-14] |  |  |  | resources Supply, installation , test and operation of cables, Copper, (4Cx25mm²,Cu/XLPE/SWA/PVC +1x16mm² PVC/PVC) [1706.25] → Supply, installation , test and operation of cables, Copper, (4Cx25mmï¿½,Cu/XLPE/SWA/PVC +1x16mmï¿½ PVC/PVC) [1706.25] |
| CO-R17.S14-SL-160 | Trench Backfilling and Compaction Works for Street Lighting Network-[Road 17]-[SW-14] |  |  |  | resources Supply, installation , test and operation of cables, Copper, (4Cx25mm²,Cu/XLPE/SWA/PVC +1x16mm² PVC/PVC) [131.25] → Supply, installation , test and operation of cables, Copper, (4Cx25mmï¿½,Cu/XLPE/SWA/PVC +1x16mmï¿½ PVC/PVC) [131.25] |
| DPB | **Distrubution Panel Boards** | 2026-10-20 → 2026-10-27 (+7d) | 2026-11-16 → 2026-11-23 (+7d) |  |  |
| CO-R17.S14-SL-170 | Foundation Excavation Works For Panel Boards of Street Lighting Network-[Road 17]-[SW-14] | 2026-10-20 → 2026-10-27 (+7d) | 2026-11-09 → 2026-11-16 (+7d) | -41d → -47d |  |
| CO-R17.S14-SL-180 | Installation Works for Panel Board Concrete Foundations of Street Lighting Network-[Road 17]-[SW-14] | 2026-10-24 → 2026-10-31 (+7d) | 2026-11-12 → 2026-11-19 (+7d) | -41d → -47d |  |
| CO-R17.S14-SL-220 | A wall of concrete blocks to install the KWH meter of Street Lighting Network-[Road 17]-[SW-14] | 2026-10-24 → 2026-10-31 (+7d) | 2026-11-12 → 2026-11-19 (+7d) | -38d → -44d |  |
| CO-R17.S14-SL-190 | Installation Works for Lighting Panel Boards of Street Lighting Network-[Road 17]-[SW-14] | 2026-10-27 → 2026-11-03 (+7d) | 2026-11-16 → 2026-11-23 (+7d) | -41d → -47d |  |
| PW | **Potable Water Network** |  | 2026-11-23 → 2026-11-30 (+7d) |  |  |
| VC | **Valve Chamber** | 2026-10-20 → 2026-10-27 (+7d) | 2026-10-26 → 2026-11-02 (+7d) |  |  |
| CO-R17.S14-PW-210 | Installation Works for Main Line Valves and Valve Chambers of Potable Water Network-[Road 17]-[SW-14] | 2026-10-20 → 2026-10-27 (+7d) | 2026-10-26 → 2026-11-02 (+7d) | 20d → 14d |  |
| FH | **Fire Hydrant** | 2026-10-20 → 2026-10-27 (+7d) | 2026-11-23 → 2026-11-30 (+7d) |  |  |
| CO-R17.S14-PW-140 | Excavation Works for Fire Hydrants of Potable Water Network-[Road 17]-[SW-14] | 2026-10-20 → 2026-10-27 (+7d) | 2026-10-26 → 2026-11-02 (+7d) | -20d → -26d |  |
| CO-R17.S14-PW-150 | Installation Works for Fire Hydrant of Potable Water Network-[Road 17]-[SW-14] | 2026-11-10 → 2026-11-17 (+7d) | 2026-11-16 → 2026-11-23 (+7d) | -32d → -38d |  |
| CO-R17.S14-PW-160 | Trench Backfilling and Compaction Works for Fire Hydrants of Potable Water Network-[Road 17]-[SW-14] | 2026-11-17 → 2026-11-24 (+7d) | 2026-11-23 → 2026-11-30 (+7d) | -32d → -38d |  |
| TE | **Telecom Network** |  | 2026-11-12 → 2026-11-19 (+7d) |  |  |
| MH | **Manholes Works** | 2026-10-20 → 2026-10-27 (+7d) | 2026-11-12 → 2026-11-19 (+7d) |  |  |
| CO-R17.S14-TE-140 | Excavation Works for Manholes of Telecom Network-[Road 17]-[SW-14] | 2026-10-20 → 2026-10-27 (+7d) | 2026-10-27 → 2026-11-03 (+7d) | -61d → -67d |  |
| CO-R17.S14-TE-150 | Installation Works for Manholes of Telecom Network-[Road 17]-[SW-14] | 2026-10-28 → 2026-11-04 (+7d) | 2026-11-04 → 2026-11-11 (+7d) | -61d → -67d |  |
| CO-R17.S14-TE-160 | Backfilling Works for Manholes of Telecom Network-[Road 17]-[SW-14] | 2026-11-05 → 2026-11-12 (+7d) | 2026-11-12 → 2026-11-19 (+7d) | -61d → -67d |  |
| 1 | **Road 18 Local 1 ( 479 LM )** |  | 2026-11-22 → 2026-11-29 (+7d) |  |  |
| SW_15 | **SW_15** |  | 2026-10-27 → 2026-11-03 (+7d) |  |  |
| IR | **Irrigation Network** |  | 2026-10-27 → 2026-11-03 (+7d) |  |  |
| ML | **Main Line Pipes** |  | 2026-10-27 → 2026-11-03 (+7d) |  |  |
| CO-R18.S15-IR-160 | Installation Works for Main Line Valves of Irrigation Network-[Road 18]-[SW-15] | 2026-10-20 → 2026-10-27 (+7d) | 2026-10-27 → 2026-11-03 (+7d) | 1d → -5d |  |
| CO-R18.S15-MV-ML-350 | Cable Laying Works for Medium Voltage Network-[Road 18]-[SW-15] |  |  |  | resources Labor/Helper [144 h]; Electrician [144 h]; Low Current Technician [144 h]; 33kv 3Cx400 mm² Al XLPE / LLDPE /PVC Cable [807.76]; 33kv 3Cx400 mm² Al XLPE /LLDPE/PVC [2.8] → Labor/Helper [144 h]; Electrician [144 h]; Low Current Technician [144 h]; 33kv 3Cx400 mmï¿½ Al XLPE / LLDPE /PVC Cable [807.76]; 33kv 3Cx400 mmï¿½ Al XLPE /LLDPE/PVC [2.8] |
| CO-R18.S15-MV-ML-360 | Trench Backfilling and Compaction Works for Medium Voltage Network-[Road 18]-[SW-15] |  |  |  | resources Skilled Labor/Surveyor [15 h]; Foreman [15 h]; Excavator [144 h]; Water Tank [36 h]; 33kv 3Cx400 mm² Al XLPE / LLDPE /PVC Cable [346.18]; 33kv 3Cx400 mm² Al XLPE /LLDPE/PVC [1.2] → Skilled Labor/Surveyor [15 h]; Foreman [15 h]; Excavator [144 h]; Water Tank [36 h]; 33kv 3Cx400 mmï¿½ Al XLPE / LLDPE /PVC Cable [346.18]; 33kv 3Cx400 mmï¿½ Al XLPE /LLDPE/PVC [1.2] |
| SW_16 | **SW_16** |  | 2026-11-22 → 2026-11-29 (+7d) |  |  |

| ID | Task | Start | Finish | Total float | Other |
| --- | --- | --- | --- | --- | --- |
| SL | **Street Lighting Network** |  | 2026-11-22 → 2026-11-29 (+7d) |  |  |
| LP | **Lighting Poles Works** |  | 2026-11-22 → 2026-11-29 (+7d) |  |  |
| CO-R18.S16-SL-200 | Testing Works for Lighting Poles of Street Lighting Network-[Road 18]-[SW-16] | 2026-10-20 → 2026-10-27 (+7d) | 2026-10-25 → 2026-11-01 (+7d) | -20.25d → -26.25d |  |
| CO-R18.S16-SL-130 | Installation Works for Lighting Fixtures With Drop Wire of Street Lighting Network-[Road 18]-[SW-16] | 2026-11-02 → 2026-11-09 (+7d) | 2026-11-22 → 2026-11-29 (+7d) | -44.25d → -50.25d |  |
| CO-R18.S16-SL-150 | Cable Laying Works for Street Lighting Network-[Road 18]-[SW-16] |  |  |  | resources Supply, installation , test and operation of cables, Copper, (4Cx25mm²,Cu/XLPE/SWA/PVC +1x16mm² PVC/PVC) [805.35] → Supply, installation , test and operation of cables, Copper, (4Cx25mmï¿½,Cu/XLPE/SWA/PVC +1x16mmï¿½ PVC/PVC) [805.35] |
| CO-R18.S16-SL-160 | Trench Backfilling and Compaction Works for Street Lighting Network-[Road 18]-[SW-16] |  |  |  | resources Supply, installation , test and operation of cables, Copper, (4Cx25mm²,Cu/XLPE/SWA/PVC +1x16mm² PVC/PVC) [61.95] → Supply, installation , test and operation of cables, Copper, (4Cx25mmï¿½,Cu/XLPE/SWA/PVC +1x16mmï¿½ PVC/PVC) [61.95] |
| DPB | **Distrubution Panel Boards** | 2026-10-20 → 2026-10-27 (+7d) | 2026-11-16 → 2026-11-23 (+7d) |  |  |
| CO-R18.S16-SL-170 | Foundation Excavation Works For Panel Boards of Street Lighting Network-[Road 18]-[SW-16] | 2026-10-20 → 2026-10-27 (+7d) | 2026-11-09 → 2026-11-16 (+7d) | -41d → -47d |  |
| CO-R18.S16-SL-180 | Installation Works for Panel Board Concrete Foundations of Street Lighting Network-[Road 18]-[SW-16] | 2026-10-24 → 2026-10-31 (+7d) | 2026-11-12 → 2026-11-19 (+7d) | -41d → -47d |  |
| CO-R18.S16-SL-220 | A wall of concrete blocks to install the KWH meter of Street Lighting Network-[Road 18]-[SW-16] | 2026-10-24 → 2026-10-31 (+7d) | 2026-11-12 → 2026-11-19 (+7d) | -38d → -44d |  |
| CO-R18.S16-SL-190 | Installation Works for Lighting Panel Boards of Street Lighting Network-[Road 18]-[SW-16] | 2026-10-27 → 2026-11-03 (+7d) | 2026-11-16 → 2026-11-23 (+7d) | -41d → -47d |  |
| PW | **Potable Water Network** |  | 2026-11-09 → 2026-11-16 (+7d) |  |  |
| VC | **Valve Chamber** | 2026-10-20 → 2026-10-27 (+7d) | 2026-10-26 → 2026-11-02 (+7d) |  |  |
| CO-R18.S16-PW-330 | Installation Works for Main Line Valves and Valve Chambers of Potable Water Network-[Road 18]-[SW-16] | 2026-10-20 → 2026-10-27 (+7d) | 2026-10-26 → 2026-11-02 (+7d) | 20d → 14d |  |
| FH | **Fire Hydrant** | 2026-10-20 → 2026-10-27 (+7d) | 2026-11-09 → 2026-11-16 (+7d) |  |  |
| CO-R18.S16-PW-250 | Excavation Works for Fire Hydrants of Potable Water Network-[Road 18]-[SW-16] | 2026-10-20 → 2026-10-27 (+7d) | 2026-10-26 → 2026-11-02 (+7d) | 42d → 36d |  |
| CO-R18.S16-PW-260 | Installation Works for Fire Hydrant of Potable Water Network-[Road 18]-[SW-16] | 2026-10-27 → 2026-11-03 (+7d) | 2026-11-02 → 2026-11-09 (+7d) | 42d → 36d |  |
| CO-R18.S16-PW-270 | Trench Backfilling and Compaction Works for Fire Hydrants of Potable Water Network-[Road 18]-[SW-16] | 2026-11-03 → 2026-11-10 (+7d) | 2026-11-09 → 2026-11-16 (+7d) | 42d → 36d |  |
| 3 | **Finishes for Infrastructure Networks** |  | 2027-08-17 → 2027-08-24 (+7d) |  |  |
| 1 | **Phase 2 Block "J"** |  | 2027-08-17 → 2027-08-24 (+7d) |  |  |
| 2 | **Road 09 Local 2 ( 2278 LM )** |  | 2027-07-31 → 2027-08-07 (+7d) |  |  |
| 10 | **Sewage Network** |  | 2027-03-14 → 2027-03-22 (+8d) |  |  |
| TF | **Testing and Finishes** |  | 2027-03-14 → 2027-03-22 (+8d) |  |  |
| CO-R09-SW-TF-100 | Final Testing For Main Line of Sewage Network-[Road 09] |  | 2027-02-20 → 2027-03-01 (+9d) | -173d → -180d |  |
| CO-R09-SW-TF-110 | Install Manhole Cover Works for External Finishes of Sewage Network-[Road 09] | 2027-02-21 → 2027-03-02 (+9d) | 2027-03-07 → 2027-03-18 (+11d) | -135d → -142d |  |
| CO-R09-SW-TF-120 | Main Manhole Internal Finishes (Benching + Insulation) of Sewage Network-[Road 09] | 2027-02-25 → 2027-03-06 (+9d) | 2027-03-14 → 2027-03-22 (+8d) | -135d → -142d |  |
| 11 | **Storm Drainage Network** | 2027-02-03 → 2027-02-10 (+7d) | 2027-03-07 → 2027-03-18 (+11d) |  |  |
| TF | **Testing and Finishes** | 2027-02-03 → 2027-02-10 (+7d) | 2027-03-07 → 2027-03-18 (+11d) |  |  |
| CO-R09-SD-TF-110 | Install Catch Basin Cover Works for External Finishes of Storm Drainage Network-[Road 09] | 2027-02-03 → 2027-02-10 (+7d) | 2027-02-21 → 2027-03-01 (+8d) | -93d → -99d |  |
| CO-R09-SD-TF-100 | Testing Work for Pipes of Storm Drainage Network-[Road 09] | 2027-02-07 → 2027-02-15 (+8d) | 2027-02-20 → 2027-03-01 (+9d) | -173d → -180d |  |
| CO-R09-SD-TF-120 | Main Manhole Internal Finishes (Benching + Insulation ) for Storm Drainage Network-[Road 09] | 2027-02-16 → 2027-02-25 (+9d) | 2027-03-07 → 2027-03-18 (+11d) | -72d → -79d |  |
| CO-R09-SD-TF-130 | Catch Basin Internal Finishes (Benching + Insulation ) for Storm Drainage Network-[Road 09] | 2027-02-16 → 2027-02-25 (+9d) | 2027-03-07 → 2027-03-18 (+11d) | -88d → -95d |  |
| 9 | **Potable Water Network** | 2027-02-21 → 2027-03-02 (+9d) | 2027-04-04 → 2027-04-12 (+8d) |  |  |
| TF | **Testing and Finishes** | 2027-02-21 → 2027-03-02 (+9d) | 2027-04-04 → 2027-04-12 (+8d) |  |  |
| CO-R09-PW-TF-110 | Testing Work for Main Line of Potable Water Network-[Road 09] | 2027-02-21 → 2027-03-02 (+9d) | 2027-03-03 → 2027-03-15 (+12d) | -173d → -180d |  |
| CO-R09-PW-TF-100 | Final Finishes works and Covers for Valves and Valve Chambers of Potable Water Network-[Road 09] | 2027-03-04 → 2027-03-16 (+12d) | 2027-03-21 → 2027-03-29 (+8d) | -153d → -160d |  |
| CO-R09-PW-TF-120 | Fire Hydrant Finishies (S.Box + Safety + Marker Post ) of Potable Water Network-[Road 09] | 2027-03-22 → 2027-03-30 (+8d) | 2027-04-04 → 2027-04-12 (+8d) | -153d → -160d |  |
| 13 | **Irrigation Network** | 2027-02-17 → 2027-02-27 (+10d) | 2027-03-08 → 2027-03-20 (+12d) |  |  |
| TF | **Testing and Finishes** | 2027-02-17 → 2027-02-27 (+10d) | 2027-03-08 → 2027-03-20 (+12d) |  |  |
| CO-R09-IR-TF-100 | Final Testing (pressure tests) of Irrigation Network-[Road 09] | 2027-02-17 → 2027-02-27 (+10d) | 2027-03-08 → 2027-03-20 (+12d) | -133d → -140d |  |
| 12 | **Street Lighting Network** | 2027-02-02 → 2027-02-09 (+7d) | 2027-05-23 → 2027-05-30 (+7d) |  |  |
| TR | **Termination and Testing Works** | 2027-02-02 → 2027-02-09 (+7d) | 2027-05-20 → 2027-05-27 (+7d) |  |  |
| CO-R09-SL-TF-100 | Termination Works For Lighting Poles Cables of Street Lighting Network-[Road 09] | 2027-02-02 → 2027-02-09 (+7d) | 2027-02-15 → 2027-02-23 (+8d) | -189.5d → -195.5d | resources Labor/Helper [96 h]; Electrician [96 h]; Low Current Technician [96 h]; Supply, installation , test and operation of cables, Copper, (4Cx25mm²,Cu/XLPE/SWA/PVC +1x16mm² PVC/PVC) [1726.2] → Labor/Helper [96 h]; Electrician [96 h]; Low Current Technician [96 h]; Supply, installation , test and operation of cables, Copper, (4Cx25mmï¿½,Cu/XLPE/SWA/PVC +1x16mmï¿½ PVC/PVC) [1726.2] |
| CO-R09-SL-TF-110 | Termination Works For Panel Board Cables of Street Lighting Network-[Road 09] | 2027-04-21 → 2027-04-28 (+7d) | 2027-05-03 → 2027-05-10 (+7d) | -189.5d → -195.5d |  |
| CO-R09-SL-TF-380 | Testing Works For Panel Board Cables of Street Lighting Network-[Road 09] | 2027-05-03 → 2027-05-10 (+7d) | 2027-05-20 → 2027-05-27 (+7d) | -178.5d → -184.5d |  |
| ES | **Earthing System Works** | 2027-02-16 → 2027-02-24 (+8d) | 2027-05-23 → 2027-05-30 (+7d) |  |  |
| CO-R09-SL-ES-100 | Install Earthing System Works for Lighting Poles of Street Lighting Network-[Road 09] | 2027-02-16 → 2027-02-24 (+8d) | 2027-03-02 → 2027-03-13 (+11d) | -189.5d → -195.5d |  |
| CO-R09-SL-ES-110 | Install Earthing System Works for Lighting Panel Boards of Street Lighting Network-[Road 09] | 2027-05-03 → 2027-05-10 (+7d) | 2027-05-23 → 2027-05-30 (+7d) | -189.5d → -195.5d |  |
| 14 | **Medium Voltage Network** | 2027-02-14 → 2027-02-27 (+13d) | 2027-03-04 → 2027-03-20 (+16d) |  |  |
| TT | **Termination and Testing Works** | 2027-02-14 → 2027-02-27 (+13d) | 2027-03-04 → 2027-03-20 (+16d) |  |  |
| CO-R09-MV-TF-100 | Termination Works of Medium Voltage Network-[Road 09] | 2027-02-14 → 2027-02-27 (+13d) | 2027-03-04 → 2027-03-20 (+16d) | -130d → -140d |  |
| 1 | **Road Works** | 2027-05-23 → 2027-05-30 (+7d) | 2027-07-31 → 2027-08-07 (+7d) |  |  |
| 1 | **Bituminous Construction** | 2027-05-23 → 2027-05-30 (+7d) | 2027-06-26 → 2027-07-03 (+7d) |  |  |
| CO-R09-S1-RD-F-100 | Application of Prime Coat Layer for Road Works - S.W 01-[Road 09] | 2027-05-23 → 2027-05-30 (+7d) | 2027-06-06 → 2027-06-13 (+7d) | -188.5d → -194.5d |  |
| CO-R09-S1-RD-F-120 | Bituminous Base & Wearing Courses Layers for Road Works- S.W 01-[Road 09] | 2027-05-26 → 2027-06-02 (+7d) | 2027-06-09 → 2027-06-16 (+7d) | -188.5d → -194.5d |  |
| CO-R09-S2-RD-F-110 | Application of Prime Coat Layer for Road Works- S.W 02-[Road 09] | 2027-06-01 → 2027-06-08 (+7d) | 2027-06-22 → 2027-06-29 (+7d) | -189.5d → -195.5d |  |
| CO-R09-S2-RD-F-130 | Bituminous Base & Wearing Courses Layers for Road Works- S.W 02-[Road 09] | 2027-06-05 → 2027-06-12 (+7d) | 2027-06-26 → 2027-07-03 (+7d) | -189.5d → -195.5d |  |
| TS | **Traffic Signs Boards and Roads Marking** | 2027-06-09 → 2027-06-16 (+7d) | 2027-07-31 → 2027-08-07 (+7d) |  |  |
| CO-R09-S1-RD-F-140 | Application of Road Marking Works For Road Works- S.W 01-[Road 09] | 2027-06-09 → 2027-06-16 (+7d) | 2027-06-23 → 2027-06-30 (+7d) | -188.5d → -194.5d |  |
| CO-R09-S1-RD-F-150 | Installation Works of Traffic Signs Boards For Road Works- S.W 01-[Road 09] | 2027-06-23 → 2027-06-30 (+7d) | 2027-07-07 → 2027-07-14 (+7d) | -188.5d → -194.5d |  |
| CO-R09-S2-RD-F-160 | Application of Road Marking Works For Road Works- S.W 02-[Road 09] | 2027-06-26 → 2027-07-03 (+7d) | 2027-07-13 → 2027-07-20 (+7d) | -189.5d → -195.5d |  |
| CO-R09-S2-RD-F-170 | Installation Works of Traffic Signs Boards For Road Works- S.W 02-[Road 09] | 2027-07-13 → 2027-07-20 (+7d) | 2027-07-31 → 2027-08-07 (+7d) | -189.5d → -195.5d |  |
| 4 | **Road 10 Local 2 ( 2352 LM )** |  | 2027-05-08 → 2027-05-20 (+12d) |  |  |
| 10 | **Sewage Network** | 2027-02-25 → 2027-03-03 (+6d) | 2027-03-31 → 2027-04-06 (+6d) |  |  |
| TF | **Testing and Finishes** | 2027-02-25 → 2027-03-03 (+6d) | 2027-03-31 → 2027-04-06 (+6d) |  |  |
| CO-R10-SW-TF-100 | Final Testing For Main Line of Sewage Network-[Road 10] | 2027-02-25 → 2027-03-03 (+6d) | 2027-03-14 → 2027-03-20 (+6d) | -179d → -184d |  |
| CO-R10-SW-TF-110 | Install Manhole Cover Works for External Finishes of Sewage Network-[Road 10] | 2027-03-15 → 2027-03-21 (+6d) | 2027-03-28 → 2027-04-03 (+6d) | -179d → -184d |  |
| CO-R10-SW-TF-130 | Main Manhole Internal Finishes (Benching + Insulation) of Sewage Network-[Road 10] | 2027-03-18 → 2027-03-24 (+6d) | 2027-03-31 → 2027-04-06 (+6d) | -179d → -184d |  |
| 11 | **Storm Drainage Network** |  | 2027-03-28 → 2027-04-03 (+6d) |  |  |
| TF | **Testing and Finishes** |  | 2027-03-28 → 2027-04-03 (+6d) |  |  |

| ID | Task | Start | Finish | Total float | Other |
| --- | --- | --- | --- | --- | --- |
| CO-R10-SD-TF-110 | Install Catch Basin Cover Works for External Finishes of Storm Drainage Network-[Road 10] |  | 2027-02-24 → 2027-03-02 (+6d) | -134d → -140d |  |
| CO-R10-SD-TF-120 | Main Manhole Internal Finishes (Benching + Insulation ) for Storm Drainage Network-[Road 10] |  | 2027-03-28 → 2027-04-03 (+6d) | -158d → -164d |  |
| CO-R10-SD-TF-130 | Catch Basin Internal Finishes (Benching + Insulation ) for Storm Drainage Network-[Road 10] |  | 2027-03-28 → 2027-04-03 (+6d) | -89d → -92d |  |
| 9 | **Potable Water Network** | 2027-01-20 → 2027-01-27 (+7d) | 2027-03-21 → 2027-03-29 (+8d) |  |  |
| TF | **Testing and Finishes** | 2027-01-20 → 2027-01-27 (+7d) | 2027-03-21 → 2027-03-29 (+8d) |  |  |
| CO-R10-PW-TF-100 | Final Finishes works and Covers for Valves and Valve Chambers of Potable Water Network-[Road 10] | 2027-01-20 → 2027-01-27 (+7d) | 2027-02-02 → 2027-02-09 (+7d) | -137d → -143d |  |
| CO-R10-PW-TF-120 | Fire Hydrant Finishies (S.Box + Safety + Marker Post ) of Potable Water Network-[Road 10] | 2027-02-03 → 2027-02-10 (+7d) | 2027-02-16 → 2027-02-24 (+8d) | -137d → -143d |  |
| CO-R10-PW-TF-110 | Testing Work for Main Line of Potable Water Network-[Road 10] | 2027-03-04 → 2027-03-16 (+12d) | 2027-03-21 → 2027-03-29 (+8d) | -173d → -180d |  |
| 13 | **Irrigation Network** | 2027-02-21 → 2027-02-28 (+7d) | 2027-03-04 → 2027-03-14 (+10d) |  |  |
| TF | **Testing and Finishes** | 2027-02-21 → 2027-02-28 (+7d) | 2027-03-04 → 2027-03-14 (+10d) |  |  |
| CO-R10-IR-TF-120 | Final Testing (pressure tests) of Irrigation Network-[Road 10] | 2027-02-21 → 2027-02-28 (+7d) | 2027-03-04 → 2027-03-14 (+10d) | -158d → -163d |  |
| 12 | **Street Lighting Network** | 2026-12-27 → 2027-01-03 (+7d) | 2027-03-28 → 2027-04-03 (+6d) |  |  |
| TR | **Termination and Testing Works** | 2026-12-27 → 2027-01-03 (+7d) | 2027-03-28 → 2027-04-03 (+6d) |  |  |
| CO-R10-SL-TF-140 | Termination Works For Lighting Poles Cables of Street Lighting Network-[Road 10] | 2026-12-27 → 2027-01-03 (+7d) | 2027-01-09 → 2027-01-16 (+7d) | -182d → -188d | resources Labor/Helper [96 h]; Electrician [96 h]; Low Current Technician [96 h]; Supply, installation , test and operation of cables, Copper, (4Cx25mm²,Cu/XLPE/SWA/PVC +1x16mm² PVC/PVC) [1732.5] → Labor/Helper [96 h]; Electrician [96 h]; Low Current Technician [96 h]; Supply, installation , test and operation of cables, Copper, (4Cx25mmï¿½,Cu/XLPE/SWA/PVC +1x16mmï¿½ PVC/PVC) [1732.5] |
| CO-R10-SL-TF-150 | Termination Works For Panel Board Cables of Street Lighting Network-[Road 10] | 2027-03-13 → 2027-03-18 (+5d) | 2027-03-25 → 2027-03-31 (+6d) | -198d → -203d |  |
| CO-R10-SL-TF-380 | Testing Works For Panel Board Cables of Street Lighting Network-[Road 10] | 2027-03-27 → 2027-04-01 (+5d) | 2027-03-28 → 2027-04-03 (+6d) | -178d → -183d |  |
| ES | **Earthing System Works** | 2027-01-10 → 2027-01-17 (+7d) | 2027-02-09 → 2027-02-16 (+7d) |  |  |
| CO-R10-SL-ES-140 | Install Earthing System Works for Lighting Poles of Street Lighting Network-[Road 10] | 2027-01-10 → 2027-01-17 (+7d) | 2027-01-23 → 2027-01-30 (+7d) | -182d → -188d |  |
| CO-R10-SL-ES-150 | Install Earthing System Works for Lighting Panel Boards of Street Lighting Network-[Road 10] | 2027-01-27 → 2027-02-03 (+7d) | 2027-02-09 → 2027-02-16 (+7d) | -182d → -188d |  |
| 14 | **Medium Voltage Network** | 2026-10-20 → 2026-10-27 (+7d) | 2026-10-27 → 2026-11-03 (+7d) |  |  |
| TT | **Termination and Testing Works** | 2026-10-20 → 2026-10-27 (+7d) | 2026-10-27 → 2026-11-03 (+7d) |  |  |
| CO-R10-MV-TF-140 | Termination Works of Medium Voltage Network-[Road 10] | 2026-10-20 → 2026-10-27 (+7d) | 2026-10-27 → 2026-11-03 (+7d) | -34d → -40d |  |
| 1 | **Road Works** | 2027-04-01 → 2027-04-08 (+7d) | 2027-05-08 → 2027-05-20 (+12d) |  |  |
| 1 | **Bituminous Construction** | 2027-04-01 → 2027-04-08 (+7d) | 2027-04-24 → 2027-05-01 (+7d) |  |  |
| CO-R10-S03-RD-F-110 | Application of Prime Coat Layer for Road Works- S.W 05-[Road 10] | 2027-04-01 → 2027-04-08 (+7d) | 2027-04-12 → 2027-04-19 (+7d) | -153d → -159d |  |
| CO-R10-S03-RD-F-120 | Bituminous Base & Wearing Courses Layers for Road Works- S.W 05-[Road 10] | 2027-04-05 → 2027-04-12 (+7d) | 2027-04-15 → 2027-04-22 (+7d) | -153d → -159d |  |
| CO-R10-S04-RD-F-140 | Application of Prime Coat Layer for Road Works- S.W 06-[Road 10] | 2027-04-10 → 2027-04-17 (+7d) | 2027-04-20 → 2027-04-27 (+7d) | -158d → -164d |  |
| CO-R10-S04-RD-F-150 | Bituminous Base & Wearing Courses Layers for Road Works- S.W 06-[Road 10] | 2027-04-13 → 2027-04-20 (+7d) | 2027-04-24 → 2027-05-01 (+7d) | -158d → -164d |  |
| TS | **Traffic Signs Boards and Roads Marking** | 2027-04-17 → 2027-04-24 (+7d) | 2027-05-08 → 2027-05-20 (+12d) |  |  |
| CO-R10-S03-RD-F-100 | Installation Works of Traffic Signs Boards For Road Works- S.W 05-[Road 10] | 2027-04-17 → 2027-04-24 (+7d) | 2027-04-29 → 2027-05-06 (+7d) | -153d → -159d |  |
| CO-R10-S03-RD-F-160 | Application of Road Marking Works For Road Works- S.W 05-[Road 10] | 2027-04-17 → 2027-04-24 (+7d) | 2027-04-29 → 2027-05-06 (+7d) | -153d → -159d |  |
| CO-R10-S04-RD-F-170 | Application of Road Marking Works For Road Works- S.W 06-[Road 10] | 2027-04-25 → 2027-05-02 (+7d) | 2027-05-08 → 2027-05-20 (+12d) | -158d → -164d |  |
| CO-R10-S04-RD-F-130 | Installation Works of Traffic Signs Boards For Road Works- S.W 06-[Road 10] | 2027-04-27 → 2027-05-04 (+7d) | 2027-05-08 → 2027-05-20 (+12d) | -157d → -163d |  |
| 5 | **Road 11 Local 1 ( 670 LM )** |  | 2027-05-25 → 2027-06-01 (+7d) |  |  |
| 10 | **Sewage Network** | 2027-03-15 → 2027-03-21 (+6d) | 2027-04-14 → 2027-04-20 (+6d) |  |  |
| TF | **Testing and Finishes** | 2027-03-15 → 2027-03-21 (+6d) | 2027-04-14 → 2027-04-20 (+6d) |  |  |
| CO-R11-SW-TF-100 | Final Testing For Main Line of Sewage Network-[Road 11] | 2027-03-15 → 2027-03-21 (+6d) | 2027-03-28 → 2027-04-03 (+6d) | -179d → -184d |  |
| CO-R11-SW-TF-110 | Install Manhole Cover Works for External Finishes of Sewage Network-[Road 11] | 2027-03-29 → 2027-04-04 (+6d) | 2027-04-11 → 2027-04-17 (+6d) | -179d → -184d |  |
| CO-R11-SW-TF-130 | Main Manhole Internal Finishes (Benching + Insulation) of Sewage Network-[Road 11] | 2027-04-01 → 2027-04-07 (+6d) | 2027-04-14 → 2027-04-20 (+6d) | -179d → -184d |  |
| 11 | **Storm Drainage Network** |  | 2027-04-11 → 2027-04-17 (+6d) |  |  |
| TF | **Testing and Finishes** |  | 2027-04-11 → 2027-04-17 (+6d) |  |  |
| CO-R11-SD-TF-130 | Catch Basin Internal Finishes (Benching + Insulation ) for Storm Drainage Network-[Road 11] |  | 2027-04-11 → 2027-04-17 (+6d) | -99d → -104d |  |
| CO-R11-SD-TF-120 | Main Manhole Internal Finishes (Benching + Insulation ) for Storm Drainage Network-[Road 11] |  | 2027-04-11 → 2027-04-17 (+6d) | -148d → -154d |  |
| CO-R11-SD-TF-110 | Install Catch Basin Cover Works for External Finishes of Storm Drainage Network-[Road 11] |  | 2027-02-20 → 2027-03-04 (+12d) | -109d → -120d |  |
| 9 | **Potable Water Network** | 2027-02-03 → 2027-02-10 (+7d) | 2027-04-04 → 2027-04-12 (+8d) |  |  |
| TF | **Testing and Finishes** | 2027-02-03 → 2027-02-10 (+7d) | 2027-04-04 → 2027-04-12 (+8d) |  |  |
| CO-R11-PW-TF-100 | Final Finishes works and Covers for Valves and Valve Chambers of Potable Water Network-[Road 11] | 2027-02-03 → 2027-02-10 (+7d) | 2027-02-16 → 2027-02-24 (+8d) | -137d → -143d |  |
| CO-R11-PW-TF-120 | Fire Hydrant Finishies (S.Box + Safety + Marker Post ) of Potable Water Network-[Road 11] | 2027-02-17 → 2027-02-25 (+8d) | 2027-03-03 → 2027-03-14 (+11d) | -137d → -143d |  |
| CO-R11-PW-TF-110 | Testing Work for Main Line of Potable Water Network-[Road 11] | 2027-03-22 → 2027-03-30 (+8d) | 2027-04-04 → 2027-04-12 (+8d) | -173d → -180d |  |
| 13 | **Irrigation Network** | 2027-03-06 → 2027-03-15 (+9d) | 2027-03-20 → 2027-03-25 (+5d) |  |  |
| TF | **Testing and Finishes** | 2027-03-06 → 2027-03-15 (+9d) | 2027-03-20 → 2027-03-25 (+5d) |  |  |
| CO-R11-IR-TF-130 | Final Testing (pressure tests) of Irrigation Network-[Road 11] | 2027-03-06 → 2027-03-15 (+9d) | 2027-03-20 → 2027-03-25 (+5d) | -158d → -163d |  |
| 12 | **Street Lighting Network** | 2027-01-10 → 2027-01-17 (+7d) | 2027-04-14 → 2027-04-20 (+6d) |  |  |
| TR | **Termination and Testing Works** | 2027-01-10 → 2027-01-17 (+7d) | 2027-04-14 → 2027-04-20 (+6d) |  |  |
| CO-R11-SL-TF-160 | Termination Works For Lighting Poles Cables of Street Lighting Network-[Road 11] | 2027-01-10 → 2027-01-17 (+7d) | 2027-01-23 → 2027-01-30 (+7d) | -133d → -139d | resources Labor/Helper [96 h]; Electrician [96 h]; Low Current Technician [96 h]; Supply, installation , test and operation of cables, Copper, (4Cx25mm²,Cu/XLPE/SWA/PVC +1x16mm² PVC/PVC) [510.3] → Labor/Helper [96 h]; Electrician [96 h]; Low Current Technician [96 h]; Supply, installation , test and operation of cables, Copper, (4Cx25mmï¿½,Cu/XLPE/SWA/PVC +1x16mmï¿½ PVC/PVC) [510.3] |
| CO-R11-SL-TF-170 | Termination Works For Panel Board Cables of Street Lighting Network-[Road 11] | 2027-03-30 → 2027-04-05 (+6d) | 2027-04-12 → 2027-04-18 (+6d) | -201d → -206d |  |
| CO-R11-SL-TF-380 | Testing Works For Panel Board Cables of Street Lighting Network-[Road 11] | 2027-04-13 → 2027-04-19 (+6d) | 2027-04-14 → 2027-04-20 (+6d) | -191d → -196d |  |
| 14 | **Medium Voltage Network** | 2026-10-28 → 2026-11-04 (+7d) | 2026-11-04 → 2026-11-11 (+7d) |  |  |
| TT | **Termination and Testing Works** | 2026-10-28 → 2026-11-04 (+7d) | 2026-11-04 → 2026-11-11 (+7d) |  |  |
| CO-R11-MV-TF-160 | Termination Works of Medium Voltage Network-[Road 11] | 2026-10-28 → 2026-11-04 (+7d) | 2026-11-04 → 2026-11-11 (+7d) | -34d → -40d |  |
| 1 | **Road Works** |  | 2027-05-25 → 2027-06-01 (+7d) |  |  |
| 1 | **Bituminous Construction** |  | 2027-05-08 → 2027-05-20 (+12d) |  |  |
| CO-R11-S05-RD-F-120 | Bituminous Base & Wearing Courses Layers for Road Works- S.W 07-[Road 11] | 2027-04-17 → 2027-04-24 (+7d) | 2027-04-29 → 2027-05-06 (+7d) | -153d → -159d |  |
| CO-R11-S06-RD-F-150 | Bituminous Base & Wearing Courses Layers for Road Works- S.W 08-[Road 11] | 2027-04-25 → 2027-05-02 (+7d) | 2027-05-08 → 2027-05-20 (+12d) | -158d → -164d |  |
| TS | **Traffic Signs Boards and Roads Marking** | 2027-05-01 → 2027-05-08 (+7d) | 2027-05-25 → 2027-06-01 (+7d) |  |  |
| CO-R11-S05-RD-F-100 | Installation Works of Traffic Signs Boards For Road Works- S.W 07-[Road 11] | 2027-05-01 → 2027-05-08 (+7d) | 2027-05-11 → 2027-05-24 (+13d) | -153d → -159d |  |
| CO-R11-S05-RD-F-160 | Application of Road Marking Works For Road Works- S.W 07-[Road 11] | 2027-05-01 → 2027-05-08 (+7d) | 2027-05-11 → 2027-05-24 (+13d) | -153d → -159d |  |
| CO-R11-S06-RD-F-130 | Installation Works of Traffic Signs Boards For Road Works- S.W 08-[Road 11] | 2027-05-09 → 2027-05-22 (+13d) | 2027-05-25 → 2027-06-01 (+7d) | -157d → -163d |  |
| CO-R11-S06-RD-F-170 | Application of Road Marking Works For Road Works- S.W 08-[Road 11] | 2027-05-09 → 2027-05-22 (+13d) | 2027-05-25 → 2027-06-01 (+7d) | -158d → -164d |  |
| 6 | **Road 14 Local 1 ( 584 LM )** |  | 2027-06-07 → 2027-06-13 (+6d) |  |  |

| ID | Task | Start | Finish | Total float | Other |
| --- | --- | --- | --- | --- | --- |
| 10 | **Sewage Network** |  | 2027-04-28 → 2027-05-04 (+6d) |  |  |
| TF | **Testing and Finishes** |  | 2027-04-28 → 2027-05-04 (+6d) |  |  |
| CO-R14-SW-TF-110 | Install Manhole Cover Works for External Finishes of Sewage Network-[Road 14] | 2027-04-12 → 2027-04-18 (+6d) | 2027-04-25 → 2027-05-01 (+6d) | -179d → -184d |  |
| CO-R14-SW-TF-130 | Main Manhole Internal Finishes (Benching + Insulation) of Sewage Network-[Road 14] | 2027-04-15 → 2027-04-21 (+6d) | 2027-04-28 → 2027-05-04 (+6d) | -179d → -184d |  |
| 9 | **Potable Water Network** | 2027-02-17 → 2027-02-25 (+8d) | 2027-04-18 → 2027-04-26 (+8d) |  |  |
| TF | **Testing and Finishes** | 2027-02-17 → 2027-02-25 (+8d) | 2027-04-18 → 2027-04-26 (+8d) |  |  |
| CO-R14-PW-TF-100 | Final Finishes works and Covers for Valves and Valve Chambers of Potable Water Network-[Road 14] | 2027-02-17 → 2027-02-25 (+8d) | 2027-03-03 → 2027-03-14 (+11d) | -137d → -143d |  |
| CO-R14-PW-TF-120 | Fire Hydrant Finishies (S.Box + Safety + Marker Post ) of Potable Water Network-[Road 14] | 2027-03-04 → 2027-03-15 (+11d) | 2027-03-21 → 2027-03-28 (+7d) | -137d → -143d |  |
| CO-R14-PW-TF-110 | Testing Work for Main Line of Potable Water Network-[Road 14] | 2027-04-05 → 2027-04-13 (+8d) | 2027-04-18 → 2027-04-26 (+8d) | -173d → -180d |  |
| 13 | **Irrigation Network** | 2027-03-21 → 2027-03-27 (+6d) | 2027-03-31 → 2027-04-06 (+6d) |  |  |
| TF | **Testing and Finishes** | 2027-03-21 → 2027-03-27 (+6d) | 2027-03-31 → 2027-04-06 (+6d) |  |  |
| CO-R11-IR-TF-140 | Final Testing (pressure tests) of Irrigation Network-[Road 14] | 2027-03-21 → 2027-03-27 (+6d) | 2027-03-31 → 2027-04-06 (+6d) | -158d → -163d |  |
| 12 | **Street Lighting Network** | 2027-01-24 → 2027-01-31 (+7d) | 2027-05-05 → 2027-05-11 (+6d) |  |  |
| TR | **Termination and Testing Works** | 2027-01-24 → 2027-01-31 (+7d) | 2027-05-05 → 2027-05-11 (+6d) |  |  |
| CO-R11-SL-TF-180 | Termination Works For Lighting Poles Cables of Street Lighting Network-[Road 14] | 2027-01-24 → 2027-01-31 (+7d) | 2027-02-06 → 2027-02-13 (+7d) | -133d → -139d | resources Labor/Helper [96 h]; Electrician [96 h]; Low Current Technician [96 h]; Supply, installation , test and operation of cables, Copper, (4Cx25mm²,Cu/XLPE/SWA/PVC +1x16mm² PVC/PVC) [743.4] → Labor/Helper [96 h]; Electrician [96 h]; Low Current Technician [96 h]; Supply, installation , test and operation of cables, Copper, (4Cx25mmï¿½,Cu/XLPE/SWA/PVC +1x16mmï¿½ PVC/PVC) [743.4] |
| CO-R11-SL-TF-190 | Termination Works For Panel Board Cables of Street Lighting Network-[Road 14] | 2027-04-20 → 2027-04-26 (+6d) | 2027-05-03 → 2027-05-09 (+6d) | -207d → -212d |  |
| CO-R14-SL-TF-380 | Testing Works For Panel Board Cables of Street Lighting Network-[Road 14] | 2027-05-04 → 2027-05-10 (+6d) | 2027-05-05 → 2027-05-11 (+6d) | -207d → -212d |  |
| 14 | **Medium Voltage Network** | 2026-11-05 → 2026-11-12 (+7d) | 2026-11-12 → 2026-11-19 (+7d) |  |  |
| TT | **Termination and Testing Works** | 2026-11-05 → 2026-11-12 (+7d) | 2026-11-12 → 2026-11-19 (+7d) |  |  |
| CO-R11-MV-TF-180 | Termination Works of Medium Voltage Network-[Road 14] | 2026-11-05 → 2026-11-12 (+7d) | 2026-11-12 → 2026-11-19 (+7d) | -34d → -40d |  |
| 1 | **Road Works** | 2027-05-04 → 2027-05-10 (+6d) | 2027-06-07 → 2027-06-13 (+6d) |  |  |
| 1 | **Bituminous Construction** | 2027-05-04 → 2027-05-10 (+6d) | 2027-05-26 → 2027-06-01 (+6d) |  |  |
| CO-R11-S07-RD-F-110 | Application of Prime Coat Layer for Road Works- S.W 09-[Road 14] | 2027-05-04 → 2027-05-10 (+6d) | 2027-05-23 → 2027-05-29 (+6d) | -159d → -164d |  |
| CO-R11-S08-RD-F-140 | Application of Prime Coat Layer for Road Works- S.W 10-[Road 14] | 2027-05-04 → 2027-05-10 (+6d) | 2027-05-20 → 2027-05-26 (+6d) | -157d → -162d |  |
| CO-R11-S07-RD-F-120 | Bituminous Base & Wearing Courses Layers for Road Works- S.W 09-[Road 14] | 2027-05-10 → 2027-05-22 (+12d) | 2027-05-26 → 2027-06-01 (+6d) | -159d → -164d |  |
| CO-R11-S08-RD-F-150 | Bituminous Base & Wearing Courses Layers for Road Works- S.W 10-[Road 14] | 2027-05-10 → 2027-05-22 (+12d) | 2027-05-26 → 2027-06-01 (+6d) | -159d → -164d |  |
| TS | **Traffic Signs Boards and Roads Marking** | 2027-05-25 → 2027-05-31 (+6d) | 2027-06-07 → 2027-06-13 (+6d) |  |  |
| CO-R11-S07-RD-F-100 | Installation Works of Traffic Signs Boards For Road Works- S.W 09-[Road 14] | 2027-05-25 → 2027-05-31 (+6d) | 2027-06-07 → 2027-06-13 (+6d) | -159d → -164d |  |
| CO-R11-S07-RD-F-160 | Application of Road Marking Works For Road Works- S.W 09-[Road 14] | 2027-05-27 → 2027-06-02 (+6d) | 2027-06-07 → 2027-06-13 (+6d) | -159d → -164d |  |
| CO-R11-S08-RD-F-130 | Installation Works of Traffic Signs Boards For Road Works- S.W 10-[Road 14] | 2027-05-27 → 2027-06-02 (+6d) | 2027-06-07 → 2027-06-13 (+6d) | -158d → -163d |  |
| CO-R11-S08-RD-F-170 | Application of Road Marking Works For Road Works- S.W 10-[Road 14] | 2027-05-27 → 2027-06-02 (+6d) | 2027-06-07 → 2027-06-13 (+6d) | -159d → -164d |  |
| 7 | **Road 15 Local 1 ( 556 LM )** |  | 2027-06-21 → 2027-06-27 (+6d) |  |  |
| 10 | **Sewage Network** |  | 2027-05-12 → 2027-05-24 (+12d) |  |  |
| TF | **Testing and Finishes** |  | 2027-05-12 → 2027-05-24 (+12d) |  |  |
| CO-R15-SW-TF-110 | Install Manhole Cover Works for External Finishes of Sewage Network-[Road 15] | 2027-04-26 → 2027-05-02 (+6d) | 2027-05-09 → 2027-05-20 (+11d) | -179d → -184d |  |
| CO-R15-SW-TF-130 | Main Manhole Internal Finishes (Benching + Insulation) of Sewage Network-[Road 15] | 2027-04-29 → 2027-05-05 (+6d) | 2027-05-12 → 2027-05-24 (+12d) | -179d → -184d |  |
| 11 | **Storm Drainage Network** |  | 2027-06-02 → 2027-06-08 (+6d) |  |  |
| TF | **Testing and Finishes** |  | 2027-06-02 → 2027-06-08 (+6d) |  |  |
| CO-R15-SD-TF-110 | Install Catch Basin Cover Works for External Finishes of Storm Drainage Network-[Road 15] | 2026-11-09 → 2026-11-16 (+7d) | 2026-11-22 → 2026-11-29 (+7d) | -27d → -33d |  |
| CO-R15-SD-TF-130 | Catch Basin Internal Finishes (Benching + Insulation ) for Storm Drainage Network-[Road 15] | 2027-05-10 → 2027-05-22 (+12d) | 2027-06-02 → 2027-06-08 (+6d) | -167d → -172d |  |
| 9 | **Potable Water Network** | 2027-03-04 → 2027-03-15 (+11d) | 2027-05-02 → 2027-05-10 (+8d) |  |  |
| TF | **Testing and Finishes** | 2027-03-04 → 2027-03-15 (+11d) | 2027-05-02 → 2027-05-10 (+8d) |  |  |
| CO-R15-PW-TF-100 | Final Finishes works and Covers for Valves and Valve Chambers of Potable Water Network-[Road 15] | 2027-03-04 → 2027-03-15 (+11d) | 2027-03-21 → 2027-03-28 (+7d) | -137d → -143d |  |
| CO-R15-PW-TF-120 | Fire Hydrant Finishies (S.Box + Safety + Marker Post ) of Potable Water Network-[Road 15] | 2027-03-22 → 2027-03-29 (+7d) | 2027-04-04 → 2027-04-11 (+7d) | -137d → -143d |  |
| CO-R15-PW-TF-110 | Testing Work for Main Line of Potable Water Network-[Road 15] | 2027-04-19 → 2027-04-27 (+8d) | 2027-05-02 → 2027-05-10 (+8d) | -173d → -180d |  |
| 13 | **Irrigation Network** | 2027-04-01 → 2027-04-07 (+6d) | 2027-04-12 → 2027-04-18 (+6d) |  |  |
| TF | **Testing and Finishes** | 2027-04-01 → 2027-04-07 (+6d) | 2027-04-12 → 2027-04-18 (+6d) |  |  |
| CO-R15-IR-TF-150 | Final Testing (pressure tests) of Irrigation Network-[Road 15] | 2027-04-01 → 2027-04-07 (+6d) | 2027-04-12 → 2027-04-18 (+6d) | -158d → -163d |  |
| 12 | **Street Lighting Network** | 2027-02-07 → 2027-02-14 (+7d) | 2027-06-13 → 2027-06-19 (+6d) |  |  |
| TR | **Termination and Testing Works** | 2027-02-07 → 2027-02-14 (+7d) | 2027-06-13 → 2027-06-19 (+6d) |  |  |
| CO-R15-SL-TF-200 | Termination Works For Lighting Poles Cables of Street Lighting Network-[Road 15] | 2027-02-07 → 2027-02-14 (+7d) | 2027-02-20 → 2027-02-28 (+8d) | -133d → -139d | resources Labor/Helper [96 h]; Electrician [96 h]; Low Current Technician [96 h]; Supply, installation , test and operation of cables, Copper, (4Cx25mm²,Cu/XLPE/SWA/PVC +1x16mm² PVC/PVC) [428.4] → Labor/Helper [96 h]; Electrician [96 h]; Low Current Technician [96 h]; Supply, installation , test and operation of cables, Copper, (4Cx25mmï¿½,Cu/XLPE/SWA/PVC +1x16mmï¿½ PVC/PVC) [428.4] |
| CO-R15-SL-TF-210 | Termination Works For Panel Board Cables of Street Lighting Network-[Road 15] | 2027-05-06 → 2027-05-12 (+6d) | 2027-05-25 → 2027-05-31 (+6d) | -207d → -212d |  |
| CO-R15-SL-TF-380 | Testing Works For Panel Board Cables of Street Lighting Network-[Road 15] | 2027-05-26 → 2027-06-01 (+6d) | 2027-06-13 → 2027-06-19 (+6d) | -201d → -206d |  |
| 14 | **Medium Voltage Network** | 2026-11-14 → 2026-11-21 (+7d) | 2026-11-21 → 2026-11-28 (+7d) |  |  |
| TT | **Termination and Testing Works** | 2026-11-14 → 2026-11-21 (+7d) | 2026-11-21 → 2026-11-28 (+7d) |  |  |
| CO-R15-MV-TF-200 | Termination Works of Medium Voltage Network-[Road 15] | 2026-11-14 → 2026-11-21 (+7d) | 2026-11-21 → 2026-11-28 (+7d) | -34d → -40d |  |
| 1 | **Road Works** |  | 2027-06-21 → 2027-06-27 (+6d) |  |  |
| TS | **Traffic Signs Boards and Roads Marking** | 2027-06-08 → 2027-06-14 (+6d) | 2027-06-21 → 2027-06-27 (+6d) |  |  |
| CO-R15-S09-RD-F-100 | Installation Works of Traffic Signs Boards For Road Works- S.W 11-[Road 15] | 2027-06-08 → 2027-06-14 (+6d) | 2027-06-19 → 2027-06-24 (+5d) | -159d → -164d |  |
| CO-R15-S09-RD-F-160 | Application of Road Marking Works For Road Works- S.W 11-[Road 15] | 2027-06-08 → 2027-06-14 (+6d) | 2027-06-19 → 2027-06-24 (+5d) | -159d → -164d |  |
| CO-R15-S10-RD-F-130 | Installation Works of Traffic Signs Boards For Road Works- S.W 12-[Road 15] | 2027-06-08 → 2027-06-14 (+6d) | 2027-06-21 → 2027-06-27 (+6d) | -158d → -163d |  |
| CO-R15-S10-RD-F-170 | Application of Road Marking Works For Road Works- S.W 12-[Road 15] | 2027-06-08 → 2027-06-14 (+6d) | 2027-06-19 → 2027-06-24 (+5d) | -159d → -164d |  |
| 8 | **Road 16 Local 1 ( 527 LM )** |  | 2027-07-03 → 2027-07-08 (+5d) |  |  |
| 10 | **Sewage Network** |  | 2027-06-01 → 2027-06-07 (+6d) |  |  |
| TF | **Testing and Finishes** |  | 2027-06-01 → 2027-06-07 (+6d) |  |  |
| CO-R16-SW-TF-110 | Install Manhole Cover Works for External Finishes of Sewage Network-[Road 16] | 2027-05-10 → 2027-05-22 (+12d) | 2027-05-29 → 2027-06-03 (+5d) | -179d → -184d |  |
| CO-R16-SW-TF-130 | Main Manhole Internal Finishes (Benching + Insulation) of Sewage Network-[Road 16] | 2027-05-13 → 2027-05-25 (+12d) | 2027-06-01 → 2027-06-07 (+6d) | -179d → -184d |  |
| 11 | **Storm Drainage Network** |  | 2027-06-21 → 2027-06-27 (+6d) |  |  |
| TF | **Testing and Finishes** |  | 2027-06-21 → 2027-06-27 (+6d) |  |  |
| CO-R16-SD-TF-100 | Testing Work for Pipes of Storm Drainage Network-[Road 16] | 2026-11-04 → 2026-11-11 (+7d) | 2026-11-22 → 2026-11-29 (+7d) | -11d → -17d |  |

| ID | Task | Start | Finish | Total float | Other |
| --- | --- | --- | --- | --- | --- |
| CO-R16-SD-TF-110 | Install Catch Basin Cover Works for External Finishes of Storm Drainage Network-[Road 16] | 2026-11-23 → 2026-11-30 (+7d) | 2026-12-06 → 2026-12-13 (+7d) | -23d → -29d |  |
| CO-R16-SD-TF-130 | Catch Basin Internal Finishes (Benching + Insulation ) for Storm Drainage Network-[Road 16] | 2027-06-03 → 2027-06-09 (+6d) | 2027-06-21 → 2027-06-27 (+6d) | -167d → -172d |  |
| 9 | **Potable Water Network** | 2027-03-22 → 2027-03-29 (+7d) | 2027-05-22 → 2027-05-30 (+8d) |  |  |
| TF | **Testing and Finishes** | 2027-03-22 → 2027-03-29 (+7d) | 2027-05-22 → 2027-05-30 (+8d) |  |  |
| CO-R16-PW-TF-100 | Final Finishes works and Covers for Valves and Valve Chambers of Potable Water Network-[Road 16] | 2027-03-22 → 2027-03-29 (+7d) | 2027-04-04 → 2027-04-11 (+7d) | -137d → -143d |  |
| CO-R16-PW-TF-120 | Fire Hydrant Finishies (S.Box + Safety + Marker Post ) of Potable Water Network-[Road 16] | 2027-04-05 → 2027-04-12 (+7d) | 2027-04-18 → 2027-04-25 (+7d) | -137d → -143d |  |
| CO-R16-PW-TF-110 | Testing Work for Main Line of Potable Water Network-[Road 16] | 2027-05-03 → 2027-05-11 (+8d) | 2027-05-22 → 2027-05-30 (+8d) | -173d → -180d |  |
| 13 | **Irrigation Network** | 2027-04-13 → 2027-04-19 (+6d) | 2027-04-24 → 2027-04-29 (+5d) |  |  |
| TF | **Testing and Finishes** | 2027-04-13 → 2027-04-19 (+6d) | 2027-04-24 → 2027-04-29 (+5d) |  |  |
| CO-R16-IR-TF-160 | Final Testing (pressure tests) of Irrigation Network-[Road 16] | 2027-04-13 → 2027-04-19 (+6d) | 2027-04-24 → 2027-04-29 (+5d) | -158d → -163d |  |
| 12 | **Street Lighting Network** | 2027-02-21 → 2027-03-01 (+8d) | 2027-06-15 → 2027-06-21 (+6d) |  |  |
| TR | **Termination and Testing Works** | 2027-02-21 → 2027-03-01 (+8d) | 2027-06-15 → 2027-06-21 (+6d) |  |  |
| CO-R16-SL-TF-220 | Termination Works For Lighting Poles Cables of Street Lighting Network-[Road 16] | 2027-02-21 → 2027-03-01 (+8d) | 2027-03-07 → 2027-03-17 (+10d) | -133d → -139d | resources Labor/Helper [96 h]; Electrician [96 h]; Low Current Technician [96 h]; Supply, installation , test and operation of cables, Copper, (4Cx25mm²,Cu/XLPE/SWA/PVC +1x16mm² PVC/PVC) [403.2] → Labor/Helper [96 h]; Electrician [96 h]; Low Current Technician [96 h]; Supply, installation , test and operation of cables, Copper, (4Cx25mmï¿½,Cu/XLPE/SWA/PVC +1x16mmï¿½ PVC/PVC) [403.2] |
| CO-R16-SL-TF-230 | Termination Works For Panel Board Cables of Street Lighting Network-[Road 16] | 2027-05-26 → 2027-06-01 (+6d) | 2027-06-08 → 2027-06-14 (+6d) | -207d → -212d |  |
| CO-R16-SL-TF-380 | Testing Works For Panel Board Cables of Street Lighting Network-[Road 16] | 2027-06-14 → 2027-06-20 (+6d) | 2027-06-15 → 2027-06-21 (+6d) | -201d → -206d |  |
| 14 | **Medium Voltage Network** | 2026-11-22 → 2026-11-29 (+7d) | 2026-11-29 → 2026-12-06 (+7d) |  |  |
| TT | **Termination and Testing Works** | 2026-11-22 → 2026-11-29 (+7d) | 2026-11-29 → 2026-12-06 (+7d) |  |  |
| CO-R16-MV-TF-220 | Termination Works of Medium Voltage Network-[Road 16] | 2026-11-22 → 2026-11-29 (+7d) | 2026-11-29 → 2026-12-06 (+7d) | -34d → -40d |  |
| 1 | **Road Works** |  | 2027-07-03 → 2027-07-08 (+5d) |  |  |
| TS | **Traffic Signs Boards and Roads Marking** | 2027-06-20 → 2027-06-26 (+6d) | 2027-07-03 → 2027-07-08 (+5d) |  |  |
| CO-R16-S11-RD-F-100 | Installation Works of Traffic Signs Boards For Road Works- S.W 13-[Road 16] | 2027-06-20 → 2027-06-26 (+6d) | 2027-06-30 → 2027-07-06 (+6d) | -159d → -164d |  |
| CO-R16-S11-RD-F-160 | Application of Road Marking Works For Road Works- S.W 13-[Road 16] | 2027-06-20 → 2027-06-26 (+6d) | 2027-06-30 → 2027-07-06 (+6d) | -159d → -164d |  |
| CO-R16-S12-RD-F-170 | Application of Road Marking Works For Road Works- S.W 14-[Road 16] | 2027-06-20 → 2027-06-26 (+6d) | 2027-06-30 → 2027-07-06 (+6d) | -159d → -164d |  |
| CO-R16-S12-RD-F-130 | Installation Works of Traffic Signs Boards For Road Works- S.W 14-[Road 16] | 2027-06-22 → 2027-06-28 (+6d) | 2027-07-03 → 2027-07-08 (+5d) | -158d → -163d |  |
| 9 | **Road 17 Local 1 ( 500 LM )** |  | 2027-07-12 → 2027-07-18 (+6d) |  |  |
| 10 | **Sewage Network** |  | 2027-06-15 → 2027-06-21 (+6d) |  |  |
| TF | **Testing and Finishes** |  | 2027-06-15 → 2027-06-21 (+6d) |  |  |
| CO-R17-SW-TF-110 | Install Manhole Cover Works for External Finishes of Sewage Network-[Road 17] | 2027-05-30 → 2027-06-05 (+6d) | 2027-06-12 → 2027-06-17 (+5d) | -179d → -184d |  |
| CO-R17-SW-TF-130 | Main Manhole Internal Finishes (Benching + Insulation) of Sewage Network-[Road 17] | 2027-06-02 → 2027-06-08 (+6d) | 2027-06-15 → 2027-06-21 (+6d) | -179d → -184d |  |
| 11 | **Storm Drainage Network** |  | 2027-07-05 → 2027-07-11 (+6d) |  |  |
| TF | **Testing and Finishes** |  | 2027-07-05 → 2027-07-11 (+6d) |  |  |
| CO-R17-SD-TF-100 | Testing Work for Pipes of Storm Drainage Network-[Road 17] | 2026-11-23 → 2026-11-30 (+7d) | 2026-12-10 → 2026-12-17 (+7d) | -11d → -17d |  |
| CO-R17-SD-TF-110 | Install Catch Basin Cover Works for External Finishes of Storm Drainage Network-[Road 17] | 2026-12-07 → 2026-12-14 (+7d) | 2026-12-20 → 2026-12-27 (+7d) | -19d → -25d |  |
| CO-R17-SD-TF-130 | Catch Basin Internal Finishes (Benching + Insulation ) for Storm Drainage Network-[Road 17] | 2027-06-22 → 2027-06-28 (+6d) | 2027-07-05 → 2027-07-11 (+6d) | -167d → -172d |  |
| 9 | **Potable Water Network** | 2027-04-05 → 2027-04-12 (+7d) | 2027-06-05 → 2027-06-13 (+8d) |  |  |
| TF | **Testing and Finishes** | 2027-04-05 → 2027-04-12 (+7d) | 2027-06-05 → 2027-06-13 (+8d) |  |  |
| CO-R17-PW-TF-100 | Final Finishes works and Covers for Valves and Valve Chambers of Potable Water Network-[Road 17] | 2027-04-05 → 2027-04-12 (+7d) | 2027-04-18 → 2027-04-25 (+7d) | -137d → -143d |  |
| CO-R17-PW-TF-120 | Fire Hydrant Finishies (S.Box + Safety + Marker Post ) of Potable Water Network-[Road 17] | 2027-04-19 → 2027-04-26 (+7d) | 2027-05-02 → 2027-05-09 (+7d) | -137d → -143d |  |
| CO-R17-PW-TF-110 | Testing Work for Main Line of Potable Water Network-[Road 17] | 2027-05-23 → 2027-05-31 (+8d) | 2027-06-05 → 2027-06-13 (+8d) | -173d → -180d |  |
| 13 | **Irrigation Network** | 2027-04-25 → 2027-05-01 (+6d) | 2027-05-05 → 2027-05-11 (+6d) |  |  |
| TF | **Testing and Finishes** | 2027-04-25 → 2027-05-01 (+6d) | 2027-05-05 → 2027-05-11 (+6d) |  |  |
| CO-R17-IR-TF-170 | Final Testing (pressure tests) of Irrigation Network-[Road 17] | 2027-04-25 → 2027-05-01 (+6d) | 2027-05-05 → 2027-05-11 (+6d) | -158d → -163d |  |
| 12 | **Street Lighting Network** | 2027-03-08 → 2027-03-18 (+10d) | 2027-06-24 → 2027-06-30 (+6d) |  |  |
| TR | **Termination and Testing Works** | 2027-03-08 → 2027-03-18 (+10d) | 2027-06-24 → 2027-06-30 (+6d) |  |  |
| CO-R17-SL-TF-240 | Termination Works For Lighting Poles Cables of Street Lighting Network-[Road 17] | 2027-03-08 → 2027-03-18 (+10d) | 2027-03-24 → 2027-03-31 (+7d) | -133d → -139d | resources Labor/Helper [96 h]; Electrician [96 h]; Low Current Technician [96 h]; Supply, installation , test and operation of cables, Copper, (4Cx25mm²,Cu/XLPE/SWA/PVC +1x16mm² PVC/PVC) [384.3] → Labor/Helper [96 h]; Electrician [96 h]; Low Current Technician [96 h]; Supply, installation , test and operation of cables, Copper, (4Cx25mmï¿½,Cu/XLPE/SWA/PVC +1x16mmï¿½ PVC/PVC) [384.3] |
| CO-R17-SL-TF-250 | Termination Works For Panel Board Cables of Street Lighting Network-[Road 17] | 2027-06-09 → 2027-06-15 (+6d) | 2027-06-22 → 2027-06-28 (+6d) | -207d → -212d |  |
| CO-R17-SL-TF-380 | Testing Works For Panel Board Cables of Street Lighting Network-[Road 17] | 2027-06-23 → 2027-06-29 (+6d) | 2027-06-24 → 2027-06-30 (+6d) | -207d → -212d |  |
| 14 | **Medium Voltage Network** | 2026-11-30 → 2026-12-07 (+7d) | 2026-12-07 → 2026-12-14 (+7d) |  |  |
| TT | **Termination and Testing Works** | 2026-11-30 → 2026-12-07 (+7d) | 2026-12-07 → 2026-12-14 (+7d) |  |  |
| CO-R17-MV-TF-240 | Termination Works of Medium Voltage Network-[Road 17] | 2026-11-30 → 2026-12-07 (+7d) | 2026-12-07 → 2026-12-14 (+7d) | -34d → -40d |  |
| 1 | **Road Works** |  | 2027-07-12 → 2027-07-18 (+6d) |  |  |
| TS | **Traffic Signs Boards and Roads Marking** | 2027-07-01 → 2027-07-07 (+6d) | 2027-07-12 → 2027-07-18 (+6d) |  |  |
| CO-R17-S13-RD-F-100 | Installation Works of Traffic Signs Boards For Road Works- S.W 15-[Road 17] | 2027-07-01 → 2027-07-07 (+6d) | 2027-07-12 → 2027-07-18 (+6d) | -159d → -164d |  |
| CO-R17-S13-RD-F-160 | Application of Road Marking Works For Road Works- S.W 15-[Road 17] | 2027-07-01 → 2027-07-07 (+6d) | 2027-07-12 → 2027-07-18 (+6d) | -159d → -164d |  |
| CO-R17-S14-RD-F-170 | Application of Road Marking Works For Road Works- S.W 16-[Road 17] | 2027-07-01 → 2027-07-07 (+6d) | 2027-07-12 → 2027-07-18 (+6d) | -159d → -164d |  |
| CO-R17-S14-RD-F-130 | Installation Works of Traffic Signs Boards For Road Works- S.W 16-[Road 17] | 2027-07-05 → 2027-07-11 (+6d) | 2027-07-12 → 2027-07-18 (+6d) | -159d → -164d |  |
| 3 | **Road 18 Local 1 ( 479 LM )** |  | 2027-08-17 → 2027-08-24 (+7d) |  |  |
| 10 | **Sewage Network** |  | 2027-03-28 → 2027-04-05 (+8d) |  |  |
| TF | **Testing and Finishes** |  | 2027-03-28 → 2027-04-05 (+8d) |  |  |
| CO-R18-SW-TF-110 | Install Manhole Cover Works for External Finishes of Sewage Network-[Road 18] | 2027-03-08 → 2027-03-20 (+12d) | 2027-03-24 → 2027-04-01 (+8d) | -113d → -120d |  |
| CO-R18-SW-TF-130 | Main Manhole Internal Finishes (Benching + Insulation) of Sewage Network-[Road 18] | 2027-03-15 → 2027-03-23 (+8d) | 2027-03-28 → 2027-04-05 (+8d) | -116d → -123d |  |
| 11 | **Storm Drainage Network** |  | 2027-04-04 → 2027-04-11 (+7d) |  |  |
| TF | **Testing and Finishes** |  | 2027-04-04 → 2027-04-11 (+7d) |  |  |
| CO-R18-SD-TF-100 | Testing Work for Pipes of Storm Drainage Network-[Road 18] | 2027-02-21 → 2027-03-02 (+9d) | 2027-03-15 → 2027-03-23 (+8d) | -92d → -99d |  |
| CO-R18-SD-TF-110 | Install Catch Basin Cover Works for External Finishes of Storm Drainage Network-[Road 18] | 2027-02-23 → 2027-03-02 (+7d) | 2027-03-16 → 2027-03-23 (+7d) | -93d → -99d |  |
| CO-R18-SD-TF-130 | Catch Basin Internal Finishes (Benching + Insulation ) for Storm Drainage Network-[Road 18] | 2027-03-17 → 2027-03-24 (+7d) | 2027-04-04 → 2027-04-11 (+7d) | -93d → -99d |  |
| 9 | **Potable Water Network** | 2027-03-22 → 2027-03-30 (+8d) | 2027-06-19 → 2027-06-27 (+8d) |  |  |
| TF | **Testing and Finishes** | 2027-03-22 → 2027-03-30 (+8d) | 2027-06-19 → 2027-06-27 (+8d) |  |  |
| CO-R18-PW-TF-100 | Final Finishes works and Covers for Valves and Valve Chambers of Potable Water Network-[Road 18] | 2027-03-22 → 2027-03-30 (+8d) | 2027-04-04 → 2027-04-12 (+8d) | -125d → -132d |  |
| CO-R18-PW-TF-120 | Fire Hydrant Finishies (S.Box + Safety + Marker Post ) of Potable Water Network-[Road 18] | 2027-04-05 → 2027-04-13 (+8d) | 2027-04-18 → 2027-04-26 (+8d) | -125d → -132d |  |

| ID | Task | Start | Finish | Total float | Other |
| --- | --- | --- | --- | --- | --- |
| CO-R18-PW-TF-110 | Testing Work for Main Line of Potable Water Network-[Road 18] | 2027-06-06 → 2027-06-14 (+8d) | 2027-06-19 → 2027-06-27 (+8d) | -173d → -180d |  |
| 13 | **Irrigation Network** | 2027-03-13 → 2027-03-21 (+8d) | 2027-03-30 → 2027-04-07 (+8d) |  |  |
| TF | **Testing and Finishes** | 2027-03-13 → 2027-03-21 (+8d) | 2027-03-30 → 2027-04-07 (+8d) |  |  |
| CO-R18-IR-TF-110 | Final Testing (pressure tests) of Irrigation Network-[Road 18] | 2027-03-13 → 2027-03-21 (+8d) | 2027-03-30 → 2027-04-07 (+8d) | -127d → -134d |  |
| 12 | **Street Lighting Network** | 2027-02-16 → 2027-02-24 (+8d) | 2027-06-03 → 2027-06-10 (+7d) |  |  |
| TR | **Termination and Testing Works** | 2027-02-16 → 2027-02-24 (+8d) | 2027-06-03 → 2027-06-10 (+7d) |  |  |
| CO-R18-SL-TF-120 | Termination Works For Lighting Poles Cables of Street Lighting Network-[Road 18] | 2027-02-16 → 2027-02-24 (+8d) | 2027-03-03 → 2027-03-14 (+11d) | -117.25d → -123.25d | resources Labor/Helper [196 h]; Electrician [196 h]; Low Current Technician [196 h]; Supply, installation , test and operation of cables, Copper, (4Cx25mm²,Cu/XLPE/SWA/PVC +1x16mm² PVC/PVC) [371.7] → Labor/Helper [196 h]; Electrician [196 h]; Low Current Technician [196 h]; Supply, installation , test and operation of cables, Copper, (4Cx25mmï¿½,Cu/XLPE/SWA/PVC +1x16mmï¿½ PVC/PVC) [371.7] |
| CO-R18-SL-TF-130 | Termination Works For Panel Board Cables of Street Lighting Network-[Road 18] | 2027-05-12 → 2027-05-25 (+13d) | 2027-06-01 → 2027-06-08 (+7d) | -188.25d → -194.25d |  |
| CO-R18-SL-TF-380 | Testing Works For Panel Board Cables of Street Lighting Network-[Road 18] | 2027-06-01 → 2027-06-08 (+7d) | 2027-06-03 → 2027-06-10 (+7d) | -188.25d → -194.25d |  |
| 14 | **Medium Voltage Network** | 2027-03-06 → 2027-03-21 (+15d) | 2027-03-27 → 2027-04-07 (+11d) |  |  |
| TT | **Termination and Testing Works** | 2027-03-06 → 2027-03-21 (+15d) | 2027-03-27 → 2027-04-07 (+11d) |  |  |
| CO-R18-MV-TF-120 | Termination Works of Medium Voltage Network-[Road 18] | 2027-03-06 → 2027-03-21 (+15d) | 2027-03-27 → 2027-04-07 (+11d) | -124d → -134d |  |
| 1 | **Road Works** |  | 2027-08-17 → 2027-08-24 (+7d) |  |  |
| TS | **Traffic Signs Boards and Roads Marking** | 2027-07-07 → 2027-07-14 (+7d) | 2027-08-17 → 2027-08-24 (+7d) |  |  |
| CO-R18-S15-RD-F-120 | Application of Road Marking Works For Road Works- S.W 03-[Road 18] | 2027-07-07 → 2027-07-14 (+7d) | 2027-07-21 → 2027-07-28 (+7d) | -188.5d → -194.5d |  |
| CO-R18-S15-RD-F-130 | Installation Works of Traffic Signs Boards For Road Works- S.W 03-[Road 18] | 2027-07-21 → 2027-07-28 (+7d) | 2027-08-04 → 2027-08-11 (+7d) | -188.5d → -194.5d |  |
| CO-R18-S16-RD-F-140 | Application of Road Marking Works For Road Works- S.W 04-[Road 18] | 2027-07-31 → 2027-08-07 (+7d) | 2027-08-17 → 2027-08-24 (+7d) | -189.5d → -195.5d |  |
| CO-R18-S16-RD-F-160 | Installation Works of Traffic Signs Boards For Road Works- S.W 04-[Road 18] | 2027-08-05 → 2027-08-12 (+7d) | 2027-08-17 → 2027-08-24 (+7d) | -189.5d → -195.5d |  |
| GEN | **Independent Works** |  | 2027-08-17 → 2027-08-24 (+7d) |  |  |
| CON | **Tie In To Existing Networks** | 2027-03-14 → 2027-03-20 (+6d) | 2027-08-17 → 2027-08-24 (+7d) |  |  |
| 1 | **Phase 2 Block "J"** | 2027-03-14 → 2027-03-20 (+6d) | 2027-08-17 → 2027-08-24 (+7d) |  |  |
| 2 | **Road 09 Local 2 ( 2278 LM )** | 2027-03-28 → 2027-04-08 (+11d) | 2027-07-15 → 2027-07-21 (+6d) |  |  |
| 15 | **Storm Drainage Network** | 2027-07-06 → 2027-07-12 (+6d) | 2027-07-13 → 2027-07-19 (+6d) |  |  |
| TIE-SD-R09 | TIE IN Existing Network For Storm Drainage Network | 2027-07-06 → 2027-07-12 (+6d) | 2027-07-13 → 2027-07-19 (+6d) | -157d → -162d |  |
| 16 | **Sewage Network** | 2027-06-16 → 2027-06-22 (+6d) | 2027-06-29 → 2027-07-05 (+6d) |  |  |
| TIE-SW-R09 | TIE IN Existing Network For Sewage Network | 2027-06-16 → 2027-06-22 (+6d) | 2027-06-29 → 2027-07-05 (+6d) | -145d → -150d |  |
| 17 | **Potable Water Network** | 2027-06-20 → 2027-06-28 (+8d) | 2027-07-03 → 2027-07-11 (+8d) |  |  |
| TIE-PW-R09 | TIE IN Existing Network For Potable Water Network | 2027-06-20 → 2027-06-28 (+8d) | 2027-07-03 → 2027-07-11 (+8d) | -148d → -155d |  |
| 1 | **Irrigation Network** | 2027-05-06 → 2027-05-12 (+6d) | 2027-05-25 → 2027-05-31 (+6d) |  |  |
| TIE-IR-R09 | TIE IN Existing Network For Irrigation Network | 2027-05-06 → 2027-05-12 (+6d) | 2027-05-25 → 2027-05-31 (+6d) | -115d → -120d |  |
| 18 | **Meduim Voltage Network** | 2027-03-28 → 2027-04-08 (+11d) | 2027-04-17 → 2027-04-28 (+11d) |  |  |
| TIE-R09-MV | TIE IN Existing Network For Medium Voltage Network | 2027-03-28 → 2027-04-08 (+11d) | 2027-04-17 → 2027-04-28 (+11d) | -87d → -97d |  |
| 2 | **Street Lighting Network** | 2027-06-26 → 2027-07-01 (+5d) | 2027-07-15 → 2027-07-21 (+6d) |  |  |
| TIE-R09-SL | TIE IN Existing Network For Street Lighting Network | 2027-06-26 → 2027-07-01 (+5d) | 2027-07-15 → 2027-07-21 (+6d) | -159d → -164d |  |
| 3 | **Telecom Network** | 2027-03-28 → 2027-04-08 (+11d) | 2027-04-07 → 2027-04-19 (+12d) |  |  |
| TIE-R09-TE | TIE IN Existing Network For Telecom Network | 2027-03-28 → 2027-04-08 (+11d) | 2027-04-07 → 2027-04-19 (+12d) | -79d → -89d |  |
| 4 | **Road 10 Local 2 ( 2352 LM )** | 2027-03-28 → 2027-04-08 (+11d) | 2027-08-17 → 2027-08-24 (+7d) |  |  |
| 15 | **Storm Drainage Network** | 2027-07-06 → 2027-07-12 (+6d) | 2027-07-13 → 2027-07-19 (+6d) |  |  |
| TIE-SD-R10 | TIE IN Existing Network For Storm Drainage Network | 2027-07-06 → 2027-07-12 (+6d) | 2027-07-13 → 2027-07-19 (+6d) | -157d → -162d |  |
| 16 | **Sewage Network** | 2027-06-16 → 2027-06-22 (+6d) | 2027-06-29 → 2027-07-05 (+6d) |  |  |
| TIE-SW-R10 | TIE IN Existing Network For Sewage Network | 2027-06-16 → 2027-06-22 (+6d) | 2027-06-29 → 2027-07-05 (+6d) | -145d → -150d |  |
| 17 | **Potable Water Network** | 2027-06-20 → 2027-06-28 (+8d) | 2027-07-03 → 2027-07-11 (+8d) |  |  |
| TIE-PW-R10 | TIE IN Existing Network For Potable Water Network | 2027-06-20 → 2027-06-28 (+8d) | 2027-07-03 → 2027-07-11 (+8d) | -148d → -155d |  |
| 1 | **Irrigation Network** | 2027-05-06 → 2027-05-12 (+6d) | 2027-05-25 → 2027-05-31 (+6d) |  |  |
| TIE-IR-R10 | TIE IN Existing Network For Irrigation Network | 2027-05-06 → 2027-05-12 (+6d) | 2027-05-25 → 2027-05-31 (+6d) | -115d → -120d |  |
| 18 | **Meduim Voltage Network** | 2027-03-28 → 2027-04-08 (+11d) | 2027-04-17 → 2027-04-28 (+11d) |  |  |
| TIE-R10-MV | TIE IN Existing Network For Medium Voltage Network | 2027-03-28 → 2027-04-08 (+11d) | 2027-04-17 → 2027-04-28 (+11d) | -87d → -97d |  |
| 2 | **Street Lighting Network** | 2027-06-26 → 2027-07-01 (+5d) | 2027-07-15 → 2027-07-21 (+6d) |  |  |
| TIE-R10-SL | TIE IN Existing Network For Street Lighting Network | 2027-06-26 → 2027-07-01 (+5d) | 2027-07-15 → 2027-07-21 (+6d) | -159d → -164d |  |
| 4 | **Telecom Network** | 2027-03-28 → 2027-04-08 (+11d) | 2027-04-07 → 2027-04-19 (+12d) |  |  |
| TIE-R10-TE | TIE IN Existing Network For Telecom Network | 2027-03-28 → 2027-04-08 (+11d) | 2027-04-07 → 2027-04-19 (+12d) | -84d → -94d |  |
| 3 | **Road Works** | 2027-08-11 → 2027-08-18 (+7d) | 2027-08-17 → 2027-08-24 (+7d) |  |  |
| TIE-R10-RD | TIE IN Existing Network For Road Works | 2027-08-11 → 2027-08-18 (+7d) | 2027-08-17 → 2027-08-24 (+7d) | -186.5d → -192.5d |  |
| 5 | **Road 11 Local 1 ( 670 LM )** | 2027-03-28 → 2027-04-08 (+11d) | 2027-08-17 → 2027-08-24 (+7d) |  |  |
| 15 | **Storm Drainage Network** | 2027-07-06 → 2027-07-12 (+6d) | 2027-07-13 → 2027-07-19 (+6d) |  |  |
| TIE-SD-R11 | TIE IN Existing Network For Storm Drainage Network | 2027-07-06 → 2027-07-12 (+6d) | 2027-07-13 → 2027-07-19 (+6d) | -157d → -162d |  |
| 16 | **Sewage Network** | 2027-06-16 → 2027-06-22 (+6d) | 2027-06-29 → 2027-07-05 (+6d) |  |  |
| TIE-SW-R11 | TIE IN Existing Network For Sewage Network | 2027-06-16 → 2027-06-22 (+6d) | 2027-06-29 → 2027-07-05 (+6d) | -145d → -150d |  |
| 17 | **Potable Water Network** | 2027-06-20 → 2027-06-28 (+8d) | 2027-07-03 → 2027-07-11 (+8d) |  |  |
| TIE-PW-R11 | TIE IN Existing Network For Potable Water Network | 2027-06-20 → 2027-06-28 (+8d) | 2027-07-03 → 2027-07-11 (+8d) | -148d → -155d |  |
| 1 | **Irrigation Network** | 2027-05-06 → 2027-05-12 (+6d) | 2027-05-25 → 2027-05-31 (+6d) |  |  |
| TIE-IR-R11 | TIE IN Existing Network For Irrigation Network | 2027-05-06 → 2027-05-12 (+6d) | 2027-05-25 → 2027-05-31 (+6d) | -115d → -120d |  |
| 18 | **Meduim Voltage Network** | 2027-03-28 → 2027-04-08 (+11d) | 2027-04-17 → 2027-04-28 (+11d) |  |  |
| TIE-R11-MV | TIE IN Existing Network For Medium Voltage Network | 2027-03-28 → 2027-04-08 (+11d) | 2027-04-17 → 2027-04-28 (+11d) | -87d → -97d |  |
| 2 | **Street Lighting Network** | 2027-06-26 → 2027-07-01 (+5d) | 2027-07-15 → 2027-07-21 (+6d) |  |  |
| TIE-R11-SL | TIE IN Existing Network For Street Lighting Network | 2027-06-26 → 2027-07-01 (+5d) | 2027-07-15 → 2027-07-21 (+6d) | -159d → -164d |  |
| 4 | **Telecom Network** | 2027-03-28 → 2027-04-08 (+11d) | 2027-04-07 → 2027-04-19 (+12d) |  |  |
| TIE-R11-TE | TIE IN Existing Network For Telecom Network | 2027-03-28 → 2027-04-08 (+11d) | 2027-04-07 → 2027-04-19 (+12d) | -80d → -90d |  |
| 3 | **Road Works** | 2027-08-11 → 2027-08-18 (+7d) | 2027-08-17 → 2027-08-24 (+7d) |  |  |
| TIE-R11-RD | TIE IN Existing Network For Road Works | 2027-08-11 → 2027-08-18 (+7d) | 2027-08-17 → 2027-08-24 (+7d) | -182.5d → -188.5d |  |

| ID | Task | Start | Finish | Total float |
| --- | --- | --- | --- | --- |
| 6 | **Road 14 Local 1 ( 584 LM )** | 2027-03-28 → 2027-04-08 (+11d) | 2027-08-17 → 2027-08-24 (+7d) |  |
| 15 | **Storm Drainage Network** | 2027-07-06 → 2027-07-12 (+6d) | 2027-07-13 → 2027-07-19 (+6d) |  |
| TIE-SD-R14 | TIE IN Existing Network For Storm Drainage Network | 2027-07-06 → 2027-07-12 (+6d) | 2027-07-13 → 2027-07-19 (+6d) | -157d → -162d |
| 16 | **Sewage Network** | 2027-06-16 → 2027-06-22 (+6d) | 2027-06-29 → 2027-07-05 (+6d) |  |
| TIE-SW-R14 | TIE IN Existing Network For Sewage Network | 2027-06-16 → 2027-06-22 (+6d) | 2027-06-29 → 2027-07-05 (+6d) | -145d → -150d |
| 17 | **Potable Water Network** | 2027-06-20 → 2027-06-28 (+8d) | 2027-07-03 → 2027-07-11 (+8d) |  |
| TIE-PW-R14 | TIE IN Existing Network For Potable Water Network | 2027-06-20 → 2027-06-28 (+8d) | 2027-07-03 → 2027-07-11 (+8d) | -148d → -155d |
| 1 | **Irrigation Network** | 2027-05-06 → 2027-05-12 (+6d) | 2027-05-25 → 2027-05-31 (+6d) |  |
| TIE-IR-R14 | TIE IN Existing Network For Irrigation Network | 2027-05-06 → 2027-05-12 (+6d) | 2027-05-25 → 2027-05-31 (+6d) | -115d → -120d |
| 18 | **Meduim Voltage Network** | 2027-03-28 → 2027-04-08 (+11d) | 2027-04-17 → 2027-04-28 (+11d) |  |
| TIE-R14-MV | TIE IN Existing Network For Medium Voltage Network | 2027-03-28 → 2027-04-08 (+11d) | 2027-04-17 → 2027-04-28 (+11d) | -87d → -97d |
| 2 | **Street Lighting Network** | 2027-06-26 → 2027-07-01 (+5d) | 2027-07-15 → 2027-07-21 (+6d) |  |
| TIE-R14-SL | TIE IN Existing Network For Street Lighting Network | 2027-06-26 → 2027-07-01 (+5d) | 2027-07-15 → 2027-07-21 (+6d) | -159d → -164d |
| 4 | **Telecom Network** | 2027-03-28 → 2027-04-08 (+11d) | 2027-04-07 → 2027-04-19 (+12d) |  |
| TIE-R14-TE | TIE IN Existing Network For Telecom Network | 2027-03-28 → 2027-04-08 (+11d) | 2027-04-07 → 2027-04-19 (+12d) | -79d → -89d |
| 3 | **Road Works** | 2027-08-11 → 2027-08-18 (+7d) | 2027-08-17 → 2027-08-24 (+7d) |  |
| TIE-R14-RD | TIE IN Existing Network For Road Works | 2027-08-11 → 2027-08-18 (+7d) | 2027-08-17 → 2027-08-24 (+7d) | -186.5d → -192.5d |
| 7 | **Road 15 Local 1 ( 556 LM )** | 2027-03-28 → 2027-04-08 (+11d) | 2027-07-15 → 2027-07-21 (+6d) |  |
| 15 | **Storm Drainage Network** | 2027-07-06 → 2027-07-12 (+6d) | 2027-07-13 → 2027-07-19 (+6d) |  |
| TIE-SD-R15 | TIE IN Existing Network For Storm Drainage Network | 2027-07-06 → 2027-07-12 (+6d) | 2027-07-13 → 2027-07-19 (+6d) | -157d → -162d |
| 16 | **Sewage Network** | 2027-06-16 → 2027-06-22 (+6d) | 2027-06-29 → 2027-07-05 (+6d) |  |
| TIE-SW-R15 | TIE IN Existing Network For Sewage Network | 2027-06-16 → 2027-06-22 (+6d) | 2027-06-29 → 2027-07-05 (+6d) | -145d → -150d |
| 17 | **Potable Water Network** | 2027-06-20 → 2027-06-28 (+8d) | 2027-07-03 → 2027-07-11 (+8d) |  |
| TIE-PW-R15 | TIE IN Existing Network For Potable Water Network | 2027-06-20 → 2027-06-28 (+8d) | 2027-07-03 → 2027-07-11 (+8d) | -148d → -155d |
| 1 | **Irrigation Network** | 2027-05-06 → 2027-05-12 (+6d) | 2027-05-25 → 2027-05-31 (+6d) |  |
| TIE-IR-R15 | TIE IN Existing Network For Irrigation Network | 2027-05-06 → 2027-05-12 (+6d) | 2027-05-25 → 2027-05-31 (+6d) | -115d → -120d |
| 18 | **Meduim Voltage Network** | 2027-03-28 → 2027-04-08 (+11d) | 2027-04-17 → 2027-04-28 (+11d) |  |
| TIE-R15-MV | TIE IN Existing Network For Medium Voltage Network | 2027-03-28 → 2027-04-08 (+11d) | 2027-04-17 → 2027-04-28 (+11d) | -87d → -97d |
| 2 | **Street Lighting Network** | 2027-06-26 → 2027-07-01 (+5d) | 2027-07-15 → 2027-07-21 (+6d) |  |
| TIE-R15-SL | TIE IN Existing Network For Street Lighting Network | 2027-06-26 → 2027-07-01 (+5d) | 2027-07-15 → 2027-07-21 (+6d) | -159d → -164d |
| 3 | **Telecom Network** | 2027-03-28 → 2027-04-08 (+11d) | 2027-04-07 → 2027-04-19 (+12d) |  |
| TIE-R15-TE | TIE IN Existing Network For Telecom Network | 2027-03-28 → 2027-04-08 (+11d) | 2027-04-07 → 2027-04-19 (+12d) | -79d → -89d |
| 8 | **Road 16 Local 1 ( 527 LM )** | 2027-03-28 → 2027-04-08 (+11d) | 2027-07-15 → 2027-07-21 (+6d) |  |
| 15 | **Storm Drainage Network** | 2027-07-06 → 2027-07-12 (+6d) | 2027-07-13 → 2027-07-19 (+6d) |  |
| TIE-SD-R16 | TIE IN Existing Network For Storm Drainage Network | 2027-07-06 → 2027-07-12 (+6d) | 2027-07-13 → 2027-07-19 (+6d) | -157d → -162d |
| 16 | **Sewage Network** | 2027-06-16 → 2027-06-22 (+6d) | 2027-06-29 → 2027-07-05 (+6d) |  |
| TIE-SW-R16 | TIE IN Existing Network For Sewage Network | 2027-06-16 → 2027-06-22 (+6d) | 2027-06-29 → 2027-07-05 (+6d) | -145d → -150d |
| 17 | **Potable Water Network** | 2027-06-20 → 2027-06-28 (+8d) | 2027-07-03 → 2027-07-11 (+8d) |  |
| TIE-PW-R16 | TIE IN Existing Network For Potable Water Network | 2027-06-20 → 2027-06-28 (+8d) | 2027-07-03 → 2027-07-11 (+8d) | -148d → -155d |
| 1 | **Irrigation Network** | 2027-05-06 → 2027-05-12 (+6d) | 2027-05-25 → 2027-05-31 (+6d) |  |
| TIE-IR-R16 | TIE IN Existing Network For Irrigation Network | 2027-05-06 → 2027-05-12 (+6d) | 2027-05-25 → 2027-05-31 (+6d) | -115d → -120d |
| 18 | **Meduim Voltage Network** | 2027-03-28 → 2027-04-08 (+11d) | 2027-04-17 → 2027-04-28 (+11d) |  |
| TIE-R16-MV | TIE IN Existing Network For Medium Voltage Network | 2027-03-28 → 2027-04-08 (+11d) | 2027-04-17 → 2027-04-28 (+11d) | -87d → -97d |
| 2 | **Street Lighting Network** | 2027-06-26 → 2027-07-01 (+5d) | 2027-07-15 → 2027-07-21 (+6d) |  |
| TIE-R16-SL | TIE IN Existing Network For Street Lighting Network | 2027-06-26 → 2027-07-01 (+5d) | 2027-07-15 → 2027-07-21 (+6d) | -159d → -164d |
| 3 | **Telecom Network** | 2027-03-28 → 2027-04-08 (+11d) | 2027-04-07 → 2027-04-19 (+12d) |  |
| TIE-R16-TE | TIE IN Existing Network For Telecom Network | 2027-03-28 → 2027-04-08 (+11d) | 2027-04-07 → 2027-04-19 (+12d) | -79d → -89d |
| 9 | **Road 17 Local 1 ( 500 LM )** | 2027-03-28 → 2027-04-08 (+11d) | 2027-07-15 → 2027-07-21 (+6d) |  |
| 15 | **Storm Drainage Network** | 2027-07-06 → 2027-07-12 (+6d) | 2027-07-13 → 2027-07-19 (+6d) |  |
| TIE-SD-R17 | TIE IN Existing Network For Storm Drainage Network | 2027-07-06 → 2027-07-12 (+6d) | 2027-07-13 → 2027-07-19 (+6d) | -157d → -162d |
| 16 | **Sewage Network** | 2027-06-16 → 2027-06-22 (+6d) | 2027-06-29 → 2027-07-05 (+6d) |  |
| TIE-SW-R17 | TIE IN Existing Network For Sewage Network | 2027-06-16 → 2027-06-22 (+6d) | 2027-06-29 → 2027-07-05 (+6d) | -145d → -150d |
| 17 | **Potable Water Network** | 2027-06-20 → 2027-06-28 (+8d) | 2027-07-03 → 2027-07-11 (+8d) |  |
| TIE-PW-R17 | TIE IN Existing Network For Potable Water Network | 2027-06-20 → 2027-06-28 (+8d) | 2027-07-03 → 2027-07-11 (+8d) | -148d → -155d |
| 1 | **Irrigation Network** | 2027-05-06 → 2027-05-12 (+6d) | 2027-05-25 → 2027-05-31 (+6d) |  |
| TIE-IR-R17 | TIE IN Existing Network For Irrigation Network | 2027-05-06 → 2027-05-12 (+6d) | 2027-05-25 → 2027-05-31 (+6d) | -115d → -120d |
| 18 | **Meduim Voltage Network** | 2027-03-28 → 2027-04-08 (+11d) | 2027-04-17 → 2027-04-28 (+11d) |  |
| TIE-R17-MV | TIE IN Existing Network For Medium Voltage Network | 2027-03-28 → 2027-04-08 (+11d) | 2027-04-17 → 2027-04-28 (+11d) | -87d → -97d |
| 2 | **Street Lighting Network** | 2027-06-26 → 2027-07-01 (+5d) | 2027-07-15 → 2027-07-21 (+6d) |  |
| TIE-R17-SL | TIE IN Existing Network For Street Lighting Network | 2027-06-26 → 2027-07-01 (+5d) | 2027-07-15 → 2027-07-21 (+6d) | -159d → -164d |
| 3 | **Telecom Network** | 2027-03-28 → 2027-04-08 (+11d) | 2027-04-07 → 2027-04-19 (+12d) |  |
| TIE-R17-TE | TIE IN Existing Network For Telecom Network | 2027-03-28 → 2027-04-08 (+11d) | 2027-04-07 → 2027-04-19 (+12d) | -79d → -89d |
| 1 | **Road 18 Local 1 ( 479 LM )** | 2027-03-14 → 2027-03-20 (+6d) | 2027-07-15 → 2027-07-21 (+6d) |  |
| 15 | **Storm Drainage Network** | 2027-07-06 → 2027-07-12 (+6d) | 2027-07-13 → 2027-07-19 (+6d) |  |
| TIE-SD-R18 | TIE IN Existing Network For Storm Drainage Network | 2027-07-06 → 2027-07-12 (+6d) | 2027-07-13 → 2027-07-19 (+6d) | -153d → -158d |
| 16 | **Sewage Network** | 2027-06-16 → 2027-06-22 (+6d) | 2027-06-29 → 2027-07-05 (+6d) |  |
| TIE-SW-R18 | TIE IN Existing Network For Sewage Network | 2027-06-16 → 2027-06-22 (+6d) | 2027-06-29 → 2027-07-05 (+6d) | -141d → -146d |
| 17 | **Potable Water Network** | 2027-06-20 → 2027-06-28 (+8d) | 2027-07-03 → 2027-07-11 (+8d) |  |
| TIE-PW-R18 | TIE IN Existing Network For Potable Water Network | 2027-06-20 → 2027-06-28 (+8d) | 2027-07-03 → 2027-07-11 (+8d) | -144d → -151d |
| 1 | **Irrigation Network** | 2027-05-06 → 2027-05-12 (+6d) | 2027-05-25 → 2027-05-31 (+6d) |  |

| ID | Task | Start | Finish | Total float | Other |
| --- | --- | --- | --- | --- | --- |
| TIE-IR-R18 | TIE IN Existing Network For Irrigation Network | 2027-05-06 → 2027-05-12 (+6d) | 2027-05-25 → 2027-05-31 (+6d) | -111d → -116d |  |
| 18 | **Meduim Voltage Network** | 2027-03-28 → 2027-04-08 (+11d) | 2027-04-17 → 2027-04-28 (+11d) |  |  |
| TIE-R18-MV10 | TIE IN Existing Network For Medium Voltage Network | 2027-03-28 → 2027-04-08 (+11d) | 2027-04-17 → 2027-04-28 (+11d) | -83d → -93d |  |
| 2 | **Street Lighting Network** | 2027-06-26 → 2027-07-01 (+5d) | 2027-07-15 → 2027-07-21 (+6d) |  |  |
| TIE-R18-SL10 | TIE IN Existing Network For Street Lighting Network | 2027-06-26 → 2027-07-01 (+5d) | 2027-07-15 → 2027-07-21 (+6d) | -155d → -160d |  |
| 3 | **Telecom Network** | 2027-03-14 → 2027-03-20 (+6d) | 2027-03-27 → 2027-04-01 (+5d) |  |  |
| TIE-R18-TE10 | TIE IN Existing Network For Telecom Network | 2027-03-14 → 2027-03-20 (+6d) | 2027-03-27 → 2027-04-01 (+5d) | -65d → -70d |  |
| CO-SW-PS7-GN-100 | Concrete Works of Base |  |  |  | resources Standby Diesel Generator Set 400/230KVA, 3P, 60Hz in Sound Attenuated Enclosure KVA rating by contractor as per total load onsite after pumps selection [0.2]; Supply, install, test and commission of manually operated fuel pump, The pump should be supplied with all accessories as specified. [0.2]; Supply, install, test and commission of Fuel pump with capacity of not less than 1 hour to fill the daily tank of generator at required head. [0.2]; supply, install, test & commission Automatic Transfer Switch ATS panel including all accessories & works required. [0.2]; Supply, install, test and commission under ground fuel tank for 3 days of continuous operation of the standby generator at full load. The tank should be supplied with all accessories such as black steel pipes, float switches with two contactors …etc. as s [0.2] → Standby Diesel Generator Set 400/230KVA, 3P, 60Hz in Sound Attenuated Enclosure KVA rating by contractor as per total load onsite after pumps selection [0.2]; Supply, install, test and commission of manually operated fuel pump, The pump should be supplied with all accessories as specified. [0.2]; Supply, install, test and commission of Fuel pump with capacity of not less than 1 hour to fill the daily tank of generator at required head. [0.2]; supply, install, test & commission Automatic Transfer Switch ATS panel including all accessories & works required. [0.2]; Supply, install, test and commission under ground fuel tank for 3 days of continuous operation of the standby generator at full load. The tank should be supplied with all accessories such as black steel pipes, float switches with two contactors ï¿½etc. as [0.2] |
| CO-SW-PS7-GN-110 | Install Manually Operated Fuel Pump |  |  |  | resources Standby Diesel Generator Set 400/230KVA, 3P, 60Hz in Sound Attenuated Enclosure KVA rating by contractor as per total load onsite after pumps selection [0.5]; Supply, install, test and commission of manually operated fuel pump, The pump should be supplied with all accessories as specified. [0.5]; Supply, install, test and commission of Fuel pump with capacity of not less than 1 hour to fill the daily tank of generator at required head. [0.5]; supply, install, test & commission Automatic Transfer Switch ATS panel including all accessories & works required. [0.5]; Supply, install, test and commission under ground fuel tank for 3 days of continuous operation of the standby generator at full load. The tank should be supplied with all accessories such as black steel pipes, float switches with two contactors …etc. as s [0.5] → Standby Diesel Generator Set 400/230KVA, 3P, 60Hz in Sound Attenuated Enclosure KVA rating by contractor as per total load onsite after pumps selection [0.5]; Supply, install, test and commission of manually operated fuel pump, The pump should be supplied with all accessories as specified. [0.5]; Supply, install, test and commission of Fuel pump with capacity of not less than 1 hour to fill the daily tank of generator at required head. [0.5]; supply, install, test & commission Automatic Transfer Switch ATS panel including all accessories & works required. [0.5]; Supply, install, test and commission under ground fuel tank for 3 days of continuous operation of the standby generator at full load. The tank should be supplied with all accessories such as black steel pipes, float switches with two contactors ï¿½etc. as [0.5] |
| CO-SW-PS7-GN-120 | Install Ground Fuel Tank |  |  |  | resources Standby Diesel Generator Set 400/230KVA, 3P, 60Hz in Sound Attenuated Enclosure KVA rating by contractor as per total load onsite after pumps selection [0.2]; Supply, install, test and commission of manually operated fuel pump, The pump should be supplied with all accessories as specified. [0.2]; Supply, install, test and commission of Fuel pump with capacity of not less than 1 hour to fill the daily tank of generator at required head. [0.2]; supply, install, test & commission Automatic Transfer Switch ATS panel including all accessories & works required. [0.2]; Supply, install, test and commission under ground fuel tank for 3 days of continuous operation of the standby generator at full load. The tank should be supplied with all accessories such as black steel pipes, float switches with two contactors …etc. as s [0.2] → Standby Diesel Generator Set 400/230KVA, 3P, 60Hz in Sound Attenuated Enclosure KVA rating by contractor as per total load onsite after pumps selection [0.2]; Supply, install, test and commission of manually operated fuel pump, The pump should be supplied with all accessories as specified. [0.2]; Supply, install, test and commission of Fuel pump with capacity of not less than 1 hour to fill the daily tank of generator at required head. [0.2]; supply, install, test & commission Automatic Transfer Switch ATS panel including all accessories & works required. [0.2]; Supply, install, test and commission under ground fuel tank for 3 days of continuous operation of the standby generator at full load. The tank should be supplied with all accessories such as black steel pipes, float switches with two contactors ï¿½etc. as [0.2] |
| CO-SW-PS7-GN-130 | Fix Steel Structure for Umbrella |  |  |  | resources Standby Diesel Generator Set 400/230KVA, 3P, 60Hz in Sound Attenuated Enclosure KVA rating by contractor as per total load onsite after pumps selection [0.1]; Supply, install, test and commission of manually operated fuel pump, The pump should be supplied with all accessories as specified. [0.1]; Supply, install, test and commission of Fuel pump with capacity of not less than 1 hour to fill the daily tank of generator at required head. [0.1]; supply, install, test & commission Automatic Transfer Switch ATS panel including all accessories & works required. [0.1]; Supply, install, test and commission under ground fuel tank for 3 days of continuous operation of the standby generator at full load. The tank should be supplied with all accessories such as black steel pipes, float switches with two contactors …etc. as s [0.1] → Standby Diesel Generator Set 400/230KVA, 3P, 60Hz in Sound Attenuated Enclosure KVA rating by contractor as per total load onsite after pumps selection [0.1]; Supply, install, test and commission of manually operated fuel pump, The pump should be supplied with all accessories as specified. [0.1]; Supply, install, test and commission of Fuel pump with capacity of not less than 1 hour to fill the daily tank of generator at required head. [0.1]; supply, install, test & commission Automatic Transfer Switch ATS panel including all accessories & works required. [0.1]; Supply, install, test and commission under ground fuel tank for 3 days of continuous operation of the standby generator at full load. The tank should be supplied with all accessories such as black steel pipes, float switches with two contactors ï¿½etc. as [0.1] |
| 1 | **Storm Drainage Ponds** |  | 2027-04-25 → 2027-05-02 (+7d) |  |  |
| 1 | **Storm Drainage Pond ( PO-J1)** |  | 2027-03-31 → 2027-04-07 (+7d) |  |  |
| CO-SD-PO-K1-110-P1 | Finished Grouted Riprap - PART 1 | 2026-10-20 → 2026-10-27 (+7d) | 2026-11-12 → 2026-11-19 (+7d) | -153d → -159d |  |
| CO-SD-PO-K1-110-P2 | Finished Grouted Riprap - PART 2 | 2026-11-14 → 2026-11-21 (+7d) | 2026-12-07 → 2026-12-14 (+7d) | -153d → -159d |  |
| CO-SD-PO-K1-110-P3 | Finished Grouted Riprap - PART 3 | 2026-12-08 → 2026-12-15 (+7d) | 2026-12-31 → 2027-01-07 (+7d) | -153d → -159d |  |
| CO-SD-PO-K1-110-P4 | Finished Grouted Riprap - PART 4 | 2027-01-02 → 2027-01-09 (+7d) | 2027-01-25 → 2027-02-01 (+7d) | -153d → -159d |  |
| CO-SD-PO-K1-120 | Outfall structure | 2027-01-26 → 2027-02-02 (+7d) | 2027-02-25 → 2027-03-04 (+7d) | -153d → -159d |  |
| CO-SD-PO-K1-130 | Acess Entrace Ramp | 2027-02-27 → 2027-03-06 (+7d) | 2027-03-31 → 2027-04-07 (+7d) | -153d → -159d |  |
| 2 | **Storm Drainage Pond ( PO-J2)** | 2026-10-20 → 2026-10-27 (+7d) | 2027-04-25 → 2027-05-02 (+7d) |  |  |
| CO-SD-PO-K2-100-P1 | Excavation & Filling Works - PART 1 | 2026-10-20 → 2026-10-27 (+7d) | 2026-11-12 → 2026-11-19 (+7d) | -146d → -152d |  |
| CO-SD-PO-K2-100-P2 | Excavation & Filling Works - PART 2 | 2026-11-14 → 2026-11-21 (+7d) | 2026-12-07 → 2026-12-14 (+7d) | -146d → -152d |  |
| CO-SD-PO-K2-110-P1 | Finished Grouted Riprap - PART 1 | 2026-11-14 → 2026-11-21 (+7d) | 2026-12-07 → 2026-12-14 (+7d) | -146d → -152d |  |
| CO-SD-PO-K2-100-P3 | Excavation & Filling Works - PART 3 | 2026-12-08 → 2026-12-15 (+7d) | 2026-12-31 → 2027-01-07 (+7d) | -146d → -152d |  |
| CO-SD-PO-K2-110-P2 | Finished Grouted Riprap - PART 2 | 2026-12-08 → 2026-12-15 (+7d) | 2026-12-31 → 2027-01-07 (+7d) | -146d → -152d |  |
| CO-SD-PO-K2-100-P4 | Excavation & Filling Works - PART 4 | 2027-01-02 → 2027-01-09 (+7d) | 2027-01-25 → 2027-02-01 (+7d) | -146d → -152d |  |
| CO-SD-PO-K2-110-P3 | Finished Grouted Riprap - PART 3 | 2027-01-02 → 2027-01-09 (+7d) | 2027-01-25 → 2027-02-01 (+7d) | -146d → -152d |  |
| CO-SD-PO-K2-110-P4 | Finished Grouted Riprap - PART 4 | 2027-01-26 → 2027-02-02 (+7d) | 2027-02-18 → 2027-02-27 (+9d) | -146d → -152d |  |
| CO-SD-PO-K2-120 | Outfall structure | 2027-02-20 → 2027-02-28 (+8d) | 2027-03-25 → 2027-04-01 (+7d) | -146d → -152d |  |
| CO-SD-PO-K2-130 | Acess Entrace Ramp | 2027-03-27 → 2027-04-03 (+7d) | 2027-04-25 → 2027-05-02 (+7d) | -146d → -152d |  |
| TC | **Testing and Comissioning** |  | 2027-08-17 → 2027-08-24 (+7d) |  |  |
| INF | **Infrastructure Networks** |  | 2027-08-17 → 2027-08-24 (+7d) |  |  |
| PW1 | **Irrigation Network** |  | 2027-05-25 → 2027-05-31 (+6d) |  |  |
| T/C-IR | Testing and Commissioning of Irrigation Network |  | 2027-05-25 → 2027-05-31 (+6d) | -111d → -116d |  |
| PW | **Potable Water Network** |  | 2027-07-03 → 2027-07-11 (+8d) |  |  |
| T/C-PW | Testing and Commissioning of Potable Water Network |  | 2027-07-03 → 2027-07-11 (+8d) | -144d → -151d |  |
| SW | **Sewage Network** |  | 2027-07-05 → 2027-07-12 (+7d) |  |  |
| T/C-SW | Testing and Commissioning of Sewage Network |  | 2027-07-05 → 2027-07-12 (+7d) | -146d → -152d | resources Nominal bore : 160mm; Depth : 0.0m - 1.5m [250]; Nominal bore : 160mm; Depth : 1.5m - 2.5m [650]; Nominal bore : 200mm; Depth : 0.0m - 1.5m [400]; Nominal bore : 200mm; Depth : 1.5m - 2.5m [750]; Nominal bore : 200mm; Depth : 2.5m - 3.5m [1200]; Nominal bore : 200mm; Depth : 3.5m - 4.5m [1350]; Nominal bore : 200mm; Depth : 4.5m -5.5m [700]; Nominal bore : 200mm; Depth : 5.5m - 6.5m [900]; Nominal bore : 250mm; Depth : 4.5m -5.5m [220]; Nominal bore : 250mm; Depth : 5.5m - 6.5m [180]; Nominal bore : 315mm; Depth : 4.5m -5.5m [180]; Nominal bore : 315mm; Depth : 6.5m - 7.5m [200]; Depth : 1.5 - 2.5m [200]; Depth : 2.5 - 3.5m [150]; Depth : 3.5 - 4.5m [150]; Depth : 4.5 - 5.5m [100]; Depth : 5.5 - 6.5m [600]; Depth : 6.5 -7.5m [700]; Depth : 6.5 -7.5m [500]; Depth :more than 7.5m [800]; Depth : 6.5 -7.5m [250]; Depth :more than 7.5m [600]; HDPE force main DN 800mm diameter, in trenches depth: 0- 1.5m [100]; HDPE force main DN 800mm diameter, in trenches depth: 1.51- 2.5m [2237]; Washout valve 200mm, on 800mm dia. pipe [2]; Air release valve 110 mm dia, on 800mm dia. pipe [3]; Washout valve chamber [2]; Air release valve chamber [3]; Depth: not exceeding 1.5m [13]; Depth: 1.5 - 2.5m [45]; Depth: 2.5 - 3.5m [10]; Depth: 3.5 - 4.5m [4]; Depth: 4.5 - 5.5m [5]; Depth: 5.5 - 6.5m [10]; Depth:6.5 - 7.5m [15]; Depth: more than 7.5m [1]; Depth: 2.5 - 3.5m [5]; Depth: 3.5 - 4.5m [3]; Depth: 4.5 - 5.5m [2]; Depth: 5.5 - 6.5m [2]; Depth:6.5 - 7.5m [7]; Constant speed drive, sewage pumps, centrifugal submersible type; 2 duty / 1 standby capable of delivering a flow rate of flow 424 l/s against a total head of 22m, rate includes provision of MCC [1]; Odour control system [1]; Gate valves for the pump station [3]; Non return valves for the pump station [3]; Penstok for the pump station [1]; Wet well structure internal size (5.5*4.0m) at 11.0m depth [1]; Valve chamber [1]; for the pump station [1]; basket screen [1]; Standby Diesel Generator Set 400/230KVA, 3P, 60Hz in Sound Attenuated Enclosure KVA rating by contractor as per total load onsite after pumps selection [1]; Supply, install, test and commission of manually operated fuel pump, The pump should be supplied with all accessories as specified. [1]; Supply, install, test and commission of Fuel pump with capacity of not less than 1 hour to fill the daily tank of generator at required head. [1]; supply, install, test & commission Automatic Transfer Switch ATS panel including all accessories & works required. [1]; Supply, install, test and commission under ground fuel tank for 3 days of continuous operation of the standby generator at full load. The tank should be supplied with all accessories such as black steel pipes, float switches with two contactors …etc. as s [1]; Plain concrete foundation [1]; Reinfirced concrete foundation [8]; Reinforced concrete columns [5]; Reinfirced concrete SOG [7]; Reinfirced concrete slab [9]; CMU walls with thickness 200mm [150]; Waterproofing for foundation [60]; Roof Insulation [45]; Acrylic paint on elevations including plastering [150]; Acrylic paint on internal wallsand ceiling including plastering [190]; Epoxy paint on floors [40]; Supply and install 2000*3000 mm double leaf manufacturer label shall pass the test requirements complete with accessories as per door schedule and material as approved by the Client. [1]; Plinth for odour control system [20]; 4Cx 185mm2 Cu/XLPE//PVC from nearest power supply (SEC) and generator to the ATS and from ATS to MCC-SPS [600]; 4Cx 95mm2 Cu/XLPE//PVC from nearest power supply (SEC) and generator to the ATS and from ATS to MCC-SPS [400]; 4Cx 10mm2 Cu/XLPE/SWA/PVC from MCC-SPS to ELP [50]; 4Cx 150mm2 + 1Cx25mm2 SUBMERGED RUBBER INSULATED FLEXIBLE CABLE from MCC to PUMP1& PUMP2. [210]; 4Cx 10mm2 + 1Cx10mm2 Cu/XLPE/PVC FROM MCC-SPS to DB-SPS [50]; 4Cx 10mm2 + 1Cx10mm2 Cu/XLPE/PVC FROM MCC-SPS to Penstok [100]; 4Cx 10mm2 + 1Cx10mm2 Cu/XLPE/PVC FROM MCC-SPS to Odor Control Unit [100]; 4Cx 6mm2 + 1Cx6mm2 Cu/XLPE/PVC FROM MCC-SPS to the mechanical bar screen [80]; 3Cx 6mm2 Cu/XLPE/PVC FROM MCC-SPS to the two fuel pumps. [100]; 3Cx 4mm2 Cu/XLPE/PVC to the AC. [80]; MCC [1]; Pump lifting arrangement with davit sockets, gantry and hoist, to be determined by the contractor to suit actual weight of pumps and as per drawings and specification. [2]; Surge protection system study [1]; Surge protection system [1]; Local Control Panel, IP 65 [4]; Isolator/disconnect switches IP65 [16]; DB-SPS Panel [4]; ELP Panel: phtocell , timer,40 Ampere, 3P, IP66,60Hz incomer MCCB & 5ways outgoing MCCB [4]; Electrical Hand Hole 600mm x 600mm x 800mm concrete hand hole with hot dip galvanized heavy duty steel cover [10]; Electrical Hand Hole 400mm x 400mm x 600mm concrete hand hole with hot dip galvanized heavy duty steel cover [10]; Surfaced Mounted Light [8]; 13A DOUBLE SWITCH SOCKET OUTLET (WEATHER PROOF) [8]; 20A SWITCH SOCKET OUTLET (FOR SPLIT UNIT), (WEATHER PROOF) [8]; Supply, install and test the following grounding and lightning system including ground wires, ground rods, inspection pits, terminations, bonding/clamping, civil works and all materials and accessories required to complete the work according to specificat [2]; Supply and install telephone and fire alarm system including smoke detector, cabinet, control panel, cables, conduits, switches, and other accessories to complete as per drawings and specifications. [1]; Supply, installation, testing and commissioning of all control, instrumentation( as shown on the P & ID drawings cable schedule) including all installation accessories such as termination kits, lugs, glands, cable containments, junction boxes , conduits, [2]; Supply, installation, testing and commissioning of all field instruments such as hydrostatic level meter, level switches, flow switch, and all necessary instruments including all installation accessories, etc. all as per specifications and design drawings [2]; DX wall mounted Split/AC [2]; CO2 fire extinguishers [2]; Powder fire extinguishers [2]; Double leaf swing or sliding main entrance gate [1]; 1.8m high Chainlink Fence (mesh opening size 60mm x 60mm) [254]; Single leaf personal access gate [1]; Flood lights shall be high pole with 250 watt HPS luminaire [4]; 1 - way duct - not exceeding 1.5m deep [1]; 2 - way duct - not exceeding 1.5m deep [1]; 8 - way duct - not exceeding 1.5m deep [1]; Earth pits [1]; Cable draw pit, 600x600mm [1]; Supply, installation, testing and commissioning of PLC system [2] → Nominal bore : 160mm; Depth : 0.0m - 1.5m [250]; Nominal bore : 160mm; Depth : 1.5m - 2.5m [650]; Nominal bore : 200mm; Depth : 0.0m - 1.5m [400]; Nominal bore : 200mm; Depth : 1.5m - 2.5m [750]; Nominal bore : 200mm; Depth : 2.5m - 3.5m [1200]; Nominal bore : 200mm; Depth : 3.5m - 4.5m [1350]; Nominal bore : 200mm; Depth : 4.5m -5.5m [700]; Nominal bore : 200mm; Depth : 5.5m - 6.5m [900]; Nominal bore : 250mm; Depth : 4.5m -5.5m [220]; Nominal bore : 250mm; Depth : 5.5m - 6.5m [180]; Nominal bore : 315mm; Depth : 4.5m -5.5m [180]; Nominal bore : 315mm; Depth : 6.5m - 7.5m [200]; Depth : 1.5 - 2.5m [200]; Depth : 2.5 - 3.5m [150]; Depth : 3.5 - 4.5m [150]; Depth : 4.5 - 5.5m [100]; Depth : 5.5 - 6.5m [600]; Depth : 6.5 -7.5m [700]; Depth : 6.5 -7.5m [500]; Depth :more than 7.5m [800]; Depth : 6.5 -7.5m [250]; Depth :more than 7.5m [600]; HDPE force main DN 800mm diameter, in trenches depth: 0- 1.5m [100]; HDPE force main DN 800mm diameter, in trenches depth: 1.51- 2.5m [2237]; Washout valve 200mm, on 800mm dia. pipe [2]; Air release valve 110 mm dia, on 800mm dia. pipe [3]; Washout valve chamber [2]; Air release valve chamber [3]; Depth: not exceeding 1.5m [13]; Depth: 1.5 - 2.5m [45]; Depth: 2.5 - 3.5m [10]; Depth: 3.5 - 4.5m [4]; Depth: 4.5 - 5.5m [5]; Depth: 5.5 - 6.5m [10]; Depth:6.5 - 7.5m [15]; Depth: more than 7.5m [1]; Depth: 2.5 - 3.5m [5]; Depth: 3.5 - 4.5m [3]; Depth: 4.5 - 5.5m [2]; Depth: 5.5 - 6.5m [2]; Depth:6.5 - 7.5m [7]; Constant speed drive, sewage pumps, centrifugal submersible type; 2 duty / 1 standby capable of delivering a flow rate of flow 424 l/s against a total head of 22m, rate includes provision of MCC [1]; Odour control system [1]; Gate valves for the pump station [3]; Non return valves for the pump station [3]; Penstok for the pump station [1]; Wet well structure internal size (5.5*4.0m) at 11.0m depth [1]; Valve chamber [1]; for the pump station [1]; basket screen [1]; Standby Diesel Generator Set 400/230KVA, 3P, 60Hz in Sound Attenuated Enclosure KVA rating by contractor as per total load onsite after pumps selection [1]; Supply, install, test and commission of manually operated fuel pump, The pump should be supplied with all accessories as specified. [1]; Supply, install, test and commission of Fuel pump with capacity of not less than 1 hour to fill the daily tank of generator at required head. [1]; supply, install, test & commission Automatic Transfer Switch ATS panel including all accessories & works required. [1]; Supply, install, test and commission under ground fuel tank for 3 days of continuous operation of the standby generator at full load. The tank should be supplied with all accessories such as black steel pipes, float switches with two contactors ï¿½etc. as [1]; Plain concrete foundation [1]; Reinfirced concrete foundation [8]; Reinforced concrete columns [5]; Reinfirced concrete SOG [7]; Reinfirced concrete slab [9]; CMU walls with thickness 200mm [150]; Waterproofing for foundation [60]; Roof Insulation [45]; Acrylic paint on elevations including plastering [150]; Acrylic paint on internal wallsand ceiling including plastering [190]; Epoxy paint on floors [40]; Supply and install 2000*3000 mm double leaf manufacturer label shall pass the test requirements complete with accessories as per door schedule and material as approved by the Client. [1]; Plinth for odour control system [20]; 4Cx 185mm2 Cu/XLPE//PVC from nearest power supply (SEC) and generator to the ATS and from ATS to MCC-SPS [600]; 4Cx 95mm2 Cu/XLPE//PVC from nearest power supply (SEC) and generator to the ATS and from ATS to MCC-SPS [400]; 4Cx 10mm2 Cu/XLPE/SWA/PVC from MCC-SPS to ELP [50]; 4Cx 150mm2 + 1Cx25mm2 SUBMERGED RUBBER INSULATED FLEXIBLE CABLE from MCC to PUMP1& PUMP2. [210]; 4Cx 10mm2 + 1Cx10mm2 Cu/XLPE/PVC FROM MCC-SPS to DB-SPS [50]; 4Cx 10mm2 + 1Cx10mm2 Cu/XLPE/PVC FROM MCC-SPS to Penstok [100]; 4Cx 10mm2 + 1Cx10mm2 Cu/XLPE/PVC FROM MCC-SPS to Odor Control Unit [100]; 4Cx 6mm2 + 1Cx6mm2 Cu/XLPE/PVC FROM MCC-SPS to the mechanical bar screen [80]; 3Cx 6mm2 Cu/XLPE/PVC FROM MCC-SPS to the two fuel pumps. [100]; 3Cx 4mm2 Cu/XLPE/PVC to the AC. [80]; MCC [1]; Pump lifting arrangement with davit sockets, gantry and hoist, to be determined by the contractor to suit actual weight of pumps and as per drawings and specification. [2]; Surge protection system study [1]; Surge protection system [1]; Local Control Panel, IP 65 [4]; Isolator/disconnect switches IP65 [16]; DB-SPS Panel [4]; ELP Panel: phtocell , timer,40 Ampere, 3P, IP66,60Hz incomer MCCB & 5ways outgoing MCCB [4]; Electrical Hand Hole 600mm x 600mm x 800mm concrete hand hole with hot dip galvanized heavy duty steel cover [10]; Electrical Hand Hole 400mm x 400mm x 600mm concrete hand hole with hot dip galvanized heavy duty steel cover [10]; Surfaced Mounted Light [8]; 13A DOUBLE SWITCH SOCKET OUTLET (WEATHER PROOF) [8]; 20A SWITCH SOCKET OUTLET (FOR SPLIT UNIT), (WEATHER PROOF) [8]; Supply, install and test the following grounding and lightning system including ground wires, ground rods, inspection pits, terminations, bonding/clamping, civil works and all materials and accessories required to complete the work according to specificat [2]; Supply and install telephone and fire alarm system including smoke detector, cabinet, control panel, cables, conduits, switches, and other accessories to complete as per drawings and specifications. [1]; Supply, installation, testing and commissioning of all control, instrumentation( as shown on the P & ID drawings cable schedule) including all installation accessories such as termination kits, lugs, glands, cable containments, junction boxes , conduits, [2]; Supply, installation, testing and commissioning of all field instruments such as hydrostatic level meter, level switches, flow switch, and all necessary instruments including all installation accessories, etc. all as per specifications and design drawings [2]; DX wall mounted Split/AC [2]; CO2 fire extinguishers [2]; Powder fire extinguishers [2]; Double leaf swing or sliding main entrance gate [1]; 1.8m high Chainlink Fence (mesh opening size 60mm x 60mm) [254]; Single leaf personal access gate [1]; Flood lights shall be high pole with 250 watt HPS luminaire [4]; 1 - way duct - not exceeding 1.5m deep [1]; 2 - way duct - not exceeding 1.5m deep [1]; 8 - way duct - not exceeding 1.5m deep [1]; Earth pits [1]; Cable draw pit, 600x600mm [1]; Supply, installation, testing and commissioning of PLC system [2] |
| SD | **Storm Drainage Network** |  | 2027-07-13 → 2027-07-19 (+6d) |  |  |
| T/C-SD | Testing and Commissioning of Storm Drainage Network |  | 2027-07-13 → 2027-07-19 (+6d) | -153d → -158d |  |
| SL | **Street Lighting Network** |  | 2027-07-15 → 2027-07-21 (+6d) |  |  |
| T/C-SL | Testing and Commissioning of Street Lighting Network |  | 2027-07-15 → 2027-07-21 (+6d) | -155d → -160d | resources Package Substation 33000/400V, 500kVA with RMU [6]; Supply, installation , test and operation of cables, Copper, (4Cx25mm²,Cu/XLPE/SWA/PVC +1x16mm² PVC/PVC) [21000]; Lighting poles with one arm, including the power distribution box, screws, cables, 12 meters in height. [355]; Lighting poles complete with two arms, including the power distribution box, screws, cables, 12 meters in height. [4]; Street Lighting( LED) Luminaire,(Type C) complete with control gear and lamp, ?.17000 Lumen [355]; Street Lighting( LED) Luminaire,(Type B) complete with control gear and lamp, ?.40600 Lumen [8]; Reinforced concrete foundation, for 12m high lighting columns With Drawpits [359]; Reinforced concrete base With fence for Distribution substation in accordance with SEC Specifications [6]; Earthing installation, lighting plants. [6]; Earthing installation, for Street lighting circuits, including earth rod in plastic chamber [50]; Earthing installation Lighting Panales [6]; Road crossing ducts, 4 way (4 x 100mm PVC) [780]; Drawpit with medium duty steel cover, size 600x600x1000mm, Type 18 [6]; Drawpit with medium duty steel cover, size 900x900x1200mm, Type 4 [64]; Street Lighting Feeder pillars , Includes foundation and draw pits [6] → Package Substation 33000/400V, 500kVA with RMU [6]; Supply, installation , test and operation of cables, Copper, (4Cx25mmï¿½,Cu/XLPE/SWA/PVC +1x16mmï¿½ PVC/PVC) [21000]; Lighting poles with one arm, including the power distribution box, screws, cables, 12 meters in height. [355]; Lighting poles complete with two arms, including the power distribution box, screws, cables, 12 meters in height. [4]; Street Lighting( LED) Luminaire,(Type C) complete with control gear and lamp, ?.17000 Lumen [355]; Street Lighting( LED) Luminaire,(Type B) complete with control gear and lamp, ?.40600 Lumen [8]; Reinforced concrete foundation, for 12m high lighting columns With Drawpits [359]; Reinforced concrete base With fence for Distribution substation in accordance with SEC Specifications [6]; Earthing installation, lighting plants. [6]; Earthing installation, for Street lighting circuits, including earth rod in plastic chamber [50]; Earthing installation Lighting Panales [6]; Road crossing ducts, 4 way (4 x 100mm PVC) [780]; Drawpit with medium duty steel cover, size 600x600x1000mm, Type 18 [6]; Drawpit with medium duty steel cover, size 900x900x1200mm, Type 4 [64]; Street Lighting Feeder pillars , Includes foundation and draw pits [6] |
| TE | **Telecom Network** |  | 2027-06-05 → 2027-06-12 (+7d) |  |  |
| T/C-TE | Testing and Commissioning of Telecom Network |  | 2027-06-05 → 2027-06-12 (+7d) | -120d → -126d |  |
| MV | **Medium Voltage Network** |  | 2027-06-02 → 2027-06-12 (+10d) |  |  |
| T/C-MV | Testing and Commissioning of Medium Voltage Network |  | 2027-06-02 → 2027-06-12 (+10d) | -118d → -126d | resources Excavation for Trench size 40cm wide and 80cm deep ( Maximum 1 cable 33kv) [2900]; Excavation for Trench size 60cm wide and 80cm deep ( for Max two cables 33 kv) [165]; Excavation for Trench size 90cm wide and 80cm deep ( Maximum 3 cable 33kv) [735]; Excavation for Trench size 120cm wide and 80cm deep ( Maximum 4cable 33kv) [250]; Excavation for Trench size 150cm wide and 80cm deep ( Maximum 4cable 33kv) [925]; Duct bank for (2) 33 kv cables [100]; Duct bank for (4) 33 kv cables [660]; Duct bank for (6) 33 kv cables [300]; 33kv 3Cx400 mm² Al XLPE / LLDPE /PVC Cable [19500]; 33kv 3Cx400 mm² Al XLPE /LLDPE/PVC [60]; 33kv 3Cx400 mm² Al XLPE/LLDPE Cable Termination [20]; Supply & installation of (33) kv MV Switch (RMU) for Normally-open Points (NOP) according to the Saudi Electric Company specification [3] → Excavation for Trench size 40cm wide and 80cm deep ( Maximum 1 cable 33kv) [2900]; Excavation for Trench size 60cm wide and 80cm deep ( for Max two cables 33 kv) [165]; Excavation for Trench size 90cm wide and 80cm deep ( Maximum 3 cable 33kv) [735]; Excavation for Trench size 120cm wide and 80cm deep ( Maximum 4cable 33kv) [250]; Excavation for Trench size 150cm wide and 80cm deep ( Maximum 4cable 33kv) [925]; Duct bank for (2) 33 kv cables [100]; Duct bank for (4) 33 kv cables [660]; Duct bank for (6) 33 kv cables [300]; 33kv 3Cx400 mmï¿½ Al XLPE / LLDPE /PVC Cable [19500]; 33kv 3Cx400 mmï¿½ Al XLPE /LLDPE/PVC [60]; 33kv 3Cx400 mmï¿½ Al XLPE/LLDPE Cable Termination [20]; Supply & installation of (33) kv MV Switch (RMU) for Normally-open Points (NOP) according to the Saudi Electric Company specification [3] |
| RD | **Road Works** |  | 2027-08-17 → 2027-08-24 (+7d) |  |  |
| T/C-RD | Testing and Commissioning of Road Works |  | 2027-08-17 → 2027-08-24 (+7d) | -182.5d → -188.5d |  |
| 1 | **Independent Works** | 2027-04-26 → 2027-05-03 (+7d) | 2027-07-05 → 2027-07-12 (+7d) |  |  |
| T/C-DPO | Testing and Commissioning of Storm Drainage Ponds | 2027-04-26 → 2027-05-03 (+7d) | 2027-06-05 → 2027-06-12 (+7d) | -146d → -152d |  |
| T/C-SPS | Testing and Commissioning of Sewage Pump Stations | 2027-06-06 → 2027-06-13 (+7d) | 2027-07-05 → 2027-07-12 (+7d) | -146d → -152d |  |
| 1 | **Handing over and close out** | 2027-05-06 → 2027-05-12 (+6d) | 2027-08-31 → 2027-09-07 (+7d) |  |  |
| 2 | **As-Built** | 2027-05-06 → 2027-05-12 (+6d) | 2027-08-25 → 2027-09-01 (+7d) |  |  |
| HO-180 | Submission As-Built Drawing For Irrigation Network | 2027-05-06 → 2027-05-12 (+6d) | 2027-05-25 → 2027-05-31 (+6d) | -125d → -130d |  |
| HO-130 | Submission As-Built Drawing For Pond | 2027-05-26 → 2027-06-01 (+6d) | 2027-06-08 → 2027-06-14 (+6d) | -125d → -130d |  |
| HO-160 | Submission As-Built Drawing For Telecom Network | 2027-05-26 → 2027-06-01 (+6d) | 2027-06-08 → 2027-06-14 (+6d) | -125d → -130d |  |
| HO-170 | Submission As-Built Drawing For Medium Voltage Network | 2027-05-26 → 2027-06-01 (+6d) | 2027-06-08 → 2027-06-14 (+6d) | -125d → -130d |  |
| HO-190 | As-Built Drawing For Potable Water Network | 2027-06-20 → 2027-06-28 (+8d) | 2027-07-03 → 2027-07-11 (+8d) | -146d → -153d |  |
| HO-150 | Submission As-Built Drawing For Street Lighting Network | 2027-06-26 → 2027-07-01 (+5d) | 2027-07-08 → 2027-07-14 (+6d) | -151d → -156d |  |
| HO-200 | Submission As-Built Drawing For Storm Network | 2027-07-06 → 2027-07-12 (+6d) | 2027-07-19 → 2027-07-25 (+6d) | -160d → -165d |  |
| HO-100 | Submission As-Built Drawing For Sewage Network | 2027-08-17 → 2027-08-24 (+7d) | 2027-08-25 → 2027-09-01 (+7d) | -186.5d → -192.5d |  |
| HO-140 | Submission As-Built Drawing For Roads Network | 2027-08-17 → 2027-08-24 (+7d) | 2027-08-23 → 2027-08-30 (+7d) | -189.5d → -195.5d |  |
| 1 | **De-Mobilization Works** | 2027-08-19 → 2027-08-26 (+7d) | 2027-08-25 → 2027-09-01 (+7d) |  |  |
| HO-120 | Remove material stock & Storage area | 2027-08-19 → 2027-08-26 (+7d) | 2027-08-25 → 2027-09-01 (+7d) | -184.5d → -190.5d |  |
| HO-220 | Removing Portable Caravan | 2027-08-19 → 2027-08-26 (+7d) | 2027-08-25 → 2027-09-01 (+7d) | -184.5d → -190.5d |  |
| HO-230 | Remove Temporary Car Shades | 2027-08-19 → 2027-08-26 (+7d) | 2027-08-25 → 2027-09-01 (+7d) | -184.5d → -190.5d |  |
| 3 | **Handing Over** | 2027-08-19 → 2027-08-26 (+7d) | 2027-08-31 → 2027-09-07 (+7d) |  |  |
| HO-110 | Final Testing Work | 2027-08-19 → 2027-08-26 (+7d) | 2027-08-25 → 2027-09-01 (+7d) | -184.5d → -190.5d |  |
| HO-250 | Review B.O.Q Qty. to ensure compliance with the actual status | 2027-08-23 → 2027-08-30 (+7d) | 2027-08-29 → 2027-09-05 (+7d) | -189.5d → -195.5d |  |
| HO-260 | Review FIR Approval to ensure compliance with the actual status | 2027-08-23 → 2027-08-30 (+7d) | 2027-08-29 → 2027-09-05 (+7d) | -189.5d → -195.5d |  |

| ID | Task | Start | Finish | Total float |
| --- | --- | --- | --- | --- |
| HO-270 | Review the sample drawing to ensure compliance with the actual status | 2027-08-23 → 2027-08-30 (+7d) | 2027-08-29 → 2027-09-05 (+7d) | -189.5d → -195.5d |
| HO-240 | Final Walkthrough and Inspection | 2027-08-29 → 2027-09-05 (+7d) | 2027-08-31 → 2027-09-07 (+7d) | -189.5d → -195.5d |
| HO-280 | Punch List Completion | 2027-08-29 → 2027-09-05 (+7d) | 2027-08-31 → 2027-09-07 (+7d) | -189.5d → -195.5d |
