# Development of Infrastructure for phase 1 of the Logistics area - Acceleration Plan BOQ 02

How a schedule from Primavera P6 changed from version to version. A marks actual dates.

## Version 2 (data date 2026-10-06, saved 2026-10-07, file 02. WPR UPD As Oct. 06, 2026.xer)

| ID | WBS | Task | Duration | Start | Finish | Predecessors | Complete | Total float |
| --- | --- | --- | --- | --- | --- | --- | --- | --- |
|  | Milstones | **Milestones** |  | 2025-07-30 | 2027-02-15 |  |  |  |
|  | Cont. Milstones | **Contractual Milestones** |  | 2025-07-30 | 2027-02-15 |  |  |  |
| DMM-Mil-1 |  | Project Commencement (Start) - Kickoff | 0d | 2025-07-30 A | 2025-07-30 A |  | 100% |  |
| DMM-Mil-38 |  | Mobilization - Finish | 0d | 2025-11-25 A | 2025-11-25 A | DMM2-Mob-010 FF, DMM2-Mob-025 FF, DMM2-Mob-026 FF, DMM2-Mob-04 FF, DMM2-Mob-05 FF, DMM2-Mob-06 FF, DMM2-Mob-07 FF, DMM2-Mob-08 FF, DMM2-Mob-09 FF, DMM2-Mob-34 FF, DMM2-Mob-012 FF, DMM2-Mob-019 FF, DMM2-Mob-020 FF, DMM2-Mob-021 FF, DMM2-Mob-022 FF, DMM2-Mob-023 FF, DMM2-Mob-024 FF | 100% |  |
| DMM-Mil-4 |  | Engineering - Finish | 0d | 2026-10-25 | 2026-10-25 | DMM2-Eng-SD-02 FF, DMM2-Eng-SD-04 FF, DMM2-Eng-SD-06 FF, DMM2-Eng-SD-38 FF, DMM2-Eng-SD-58 FF, DMM2-Eng-SD-08 FF, DMM2-Eng-SD-09 FF, DMM2-Eng-SD-012 FF, DMM2-Eng-SD-014 FF, DMM2-Eng-SD-016 FF, DMM2-Eng-SD-018 FF, DMM2-Eng-SD-020 FF, DMM2-Eng-SD-022 FF, DMM2-Eng-SD-024 FF, DMM2-Eng-SD-026 FF, DMM2-Eng-SD-028 FF, DMM2-Eng-PQ-148 FF, DMM2-Eng-PQ-158 FF, DMM2-Eng-PQ-168 FF, DMM2-Eng-PQ-178 FF, DMM2-Eng-PQ-188 FF, DMM2-Eng-PQ-1928 FF, DMM2-Eng-PQ-198 FF, DMM2-Eng-PQ-208 FF, DMM2-Eng-PQ-218 FF, DMM2-Eng-PQ-228 FF, DMM2-Eng-PQ-238 FF, DMM2-Eng-PQ-248 FF, DMM2-Eng-PQ-258 FF, DMM2-Eng-PQ-268 FF, DMM2-Eng-PQ-278 FF, DMM2-Eng-PQ-288 FF, DMM2-Eng-PQ-1628 FF, DMM2-Eng-PQ-1638 FF, DMM2-Eng-PQ-298 FF, DMM2-Eng-PQ-308 FF, DMM2-Eng-PQ-318 FF, DMM2-Eng-PQ-328 FF, DMM2-Eng-PQ-1758 FF, DMM2-Eng-PQ-338 FF, DMM2-Eng-PQ-348 FF, DMM2-Eng-PQ-358 FF, DMM2-Eng-PQ-368 FF, DMM2-Eng-PQ-1688 FF, DMM2-Eng-PQ-1698 FF, DMM2-Eng-PQ-1708 FF, DMM2-Eng-PQ-1718 FF, DMM2-Eng-PQ-378 FF, DMM2-Eng-PQ-388 FF, DMM2-Eng-PQ-398 FF, DMM2-Eng-PQ-1728 FF, DMM2-Eng-PQ-1738 FF, DMM2-Eng-PQ-1748 FF, DMM2-Eng-PQ-408 FF, DMM2-Eng-PQ-418 FF, DMM2-Eng-PQ-428 FF, DMM2-Eng-PQ-438 FF, DMM2-Eng-PQ-448 FF, DMM2-Eng-PQ-458 FF, DMM2-Eng-PQ-468 FF, DMM2-Eng-PQ-478 FF, DMM2-Eng-PQ-488 FF, DMM2-Eng-PQ-498 FF, DMM2-Eng-PQ-1768 FF, DMM2-Eng-PQ-1778 FF, DMM2-Eng-PQ-1788 FF, DMM2-Eng-PQ-1798 FF, DMM2-Eng-PQ-1808 FF, DMM2-Eng-PQ-1818 FF, DMM2-Eng-PQ-1828 FF, DMM2-Eng-PQ-1838 FF, DMM2-Eng-PQ-508 FF, DMM2-Eng-PQ-518 FF, DMM2-Eng-PQ-528 FF, DMM2-Eng-PQ-538 FF, DMM2-Eng-PQ-548 FF, DMM2-Eng-PQ-558 FF, DMM2-Eng-PQ-568 FF, DMM2-Eng-PQ-578 FF, DMM2-Eng-PQ-588 FF, DMM2-Eng-PQ-598 FF, DMM2-Eng-PQ-608 FF, DMM2-Eng-PQ-618 FF, DMM2-Eng-PQ-628 FF, DMM2-Eng-PQ-638 FF, DMM2-Eng-PQ-1848 FF, DMM2-Eng-PQ-1858 FF, DMM2-Eng-PQ-1868 FF, DMM2-Eng-PQ-1878 FF, DMM2-Eng-PQ-1888 FF, DMM2-Eng-PQ-1898 FF, DMM2-Eng-PQ-1908 FF, DMM2-Eng-PQ-1938 FF, DMM2-Eng-PQ-648 FF, DMM2-Eng-PQ-658 FF, DMM2-Eng-PQ-668 FF, DMM2-Eng-PQ-678 FF, DMM2-Eng-PQ-688 FF, DMM2-Eng-PQ-698 FF, DMM2-Eng-PQ-708 FF, DMM2-Eng-PQ-718 FF, DMM2-Eng-PQ-728 FF, DMM2-Eng-PQ-738 FF, DMM2-Eng-PQ-748 FF, DMM2-Eng-PQ-758 FF, DMM2-Eng-PQ-768 FF, DMM2-Eng-PQ-778 FF, DMM2-Eng-PQ-788 FF, DMM2-Eng-PQ-798 FF, DMM2-Eng-PQ-808 FF, DMM2-Eng-PQ-818 FF, DMM2-Eng-PQ-828 FF, DMM2-Eng-PQ-838 FF, DMM2-Eng-PQ-848 FF, DMM2-Eng-PQ-858 FF, DMM2-Eng-PQ-868 FF, DMM2-Eng-PQ-878 FF, DMM2-Eng-PQ-888 FF, DMM2-Eng-PQ-898 FF, DMM2-Eng-PQ-908 FF, DMM2-Eng-PQ-918 FF, DMM2-Eng-PQ-938 FF, DMM2-Eng-PQ-948 FF, DMM2-Eng-PQ-958 FF, DMM2-Eng-PQ-968 FF, DMM2-Eng-PQ-978 FF, DMM2-Eng-PQ-988 FF, DMM2-Eng-PQ-1008 FF, DMM2-Eng-PQ-998 FF, DMM2-Eng-PQ-1018 FF, DMM2-Eng-PQ-1028 FF, DMM2-Eng-PQ-1038 FF, DMM2-Eng-PQ-1048 FF, DMM2-Eng-PQ-1058 FF, DMM2-Eng-PQ-1068 FF, DMM2-Eng-PQ-1078 FF, DMM2-Eng-PQ-1088 FF, DMM2-Eng-PQ-1098 FF, DMM2-Eng-PQ-1108 FF, DMM2-Eng-PQ-1118 FF, DMM2-Eng-PQ-1128 FF, DMM2-Eng-PQ-1138 FF, DMM2-Eng-PQ-1148 FF, DMM2-Eng-PQ-1158 FF, DMM2-Eng-PQ-1168 FF, DMM2-Eng-PQ-1178 FF, DMM2-Eng-PQ-1188 FF, DMM2-Eng-PQ-1198 FF, DMM2-Eng-PQ-1208 FF, DMM2-Eng-PQ-1218 FF, DMM2-Eng-PQ-1228 FF, DMM2-Eng-PQ-1238 FF, DMM2-Eng-PQ-1248 FF, DMM2-Eng-PQ-1258 FF, DMM2-Eng-PQ-1268 FF, DMM2-Eng-PQ-1278 FF, DMM2-Eng-PQ-1288 FF, DMM2-Eng-PQ-1298 FF, DMM2-Eng-PQ-1308 FF, DMM2-Eng-PQ-1318 FF, DMM2-Eng-PQ-1328 FF, DMM2-Eng-PQ-1338 FF, DMM2-Eng-PQ-1348 FF, DMM2-Eng-PQ-1358 FF, DMM2-Eng-PQ-1368 FF, DMM2-Eng-PQ-1378 FF, DMM2-Eng-PQ-1388 FF, DMM2-Eng-PQ-1398 FF, DMM2-Eng-PQ-1408 FF, DMM2-Eng-PQ-1418 FF, DMM2-Eng-PQ-1428 FF, DMM2-Eng-PQ-1438 FF, DMM2-Eng-PQ-1448 FF, DMM2-Eng-PQ-1458 FF, DMM2-Eng-PQ-1468 FF, DMM2-Eng-PQ-1478 FF, DMM2-Eng-PQ-1488 FF, DMM2-Eng-PQ-1498 FF, DMM2-Eng-PQ-1508 FF, DMM2-Eng-PQ-1518 FF, DMM2-Eng-PQ-1528 FF, DMM2-Eng-PQ-1538 FF, DMM2-Eng-PQ-1548 FF, DMM2-Eng-PQ-1558 FF, DMM2-Eng-PQ-1568 FF, DMM2-Eng-PQ-1578 FF, DMM2-Eng-PQ-1588 FF, DMM2-Eng-PQ-1598 FF, DMM2-Eng-PQ-1608 FF, DMM2-Eng-PQ-1618 FF, DMM2-Eng-SD-010 FF, DMM2-Eng-MS-338 FF, DMM2-Eng-PQ-041, DMM2-Eng-PQ-1548, DMM2-Eng-PQ-1398, DMM2-Proc-PO-0141, DMM2-Eng-PQ-1558, DMM2-Eng-PQ-042, DMM2-Proc-PO-01 |  | 9.32d |
| DMM-Mil-2 |  | Medium Voltage Network - Finish | 0d | 2026-12-05 | 2026-12-05 | B2.33 71 00.297 FF, B2.33 71 00.295 FF, B2.33 71 00.293 FF, B2.33 71 00.289 FF, B2.33 71 00.291 FF, B2.33 71 00 02 45 FF, B2.33 71 00.287 FF, B2.33 71 00.285 FF, B2.33 71 00.213 FF, B2.33 71 00.021_R FF, B1.2.31 23 16.01.16, B2 33 73 00.01.19 |  | 62.91d |
| DMM-Mil-3 |  | Road Works & Asphalt - Finish | 0d | 2026-12-12 | 2026-12-12 | B1.2.32 11 26.01.1_R FF, B1.2.32 11 26.01.10_R FF, B1.2.32 11 26.01.11_R FF, B1.2.32 11 26.01.12_R FF, B1.2.32 11 26.01.13_R FF, B1.2.32 11 26.01.14_R FF, B1.2.32 11 26.01.15 FF, B1.2.32 11 26.01.16 FF, B1.2.32 11 26.01.17 FF, B1.2.32 11 26.01.2_R FF, B1.2.32 11 26.01.3 FF, B1.2.32 11 26.01.4 FF, B1.2.32 11 26.01.5 FF, B1.2.32 11 26.01.6 FF, B1.2.32 11 26.01.7_R FF, B1.2.32 11 26.01.8_R FF, B1.2.32 11 26.01.9 FF, DMM-Mil-48 FF |  | 23.32d |
| DMM-Mil-28 |  | Project Commencement Finish | 0d | 2027-02-15 | 2027-02-15 | Clsout.13.2.1.11 FF, DMM-Mil-5 FF, DMM-Mil-10 FF, DMM-Mil-7 FF, DMM-Mil-11 FF, DMM-Mil-8 FF, DMM-Mil-6 FF, DMM-Mil-12 FF, DMM-Mil-9 FF, DMM-Mil-17 FF, DMM-Mil-18 FF, DMM-Mil-15 FF, DMM-Mil-16 FF, DMM-Mil-13 FF, DMM-Mil-14 FF, DMM-Mil-2 FF |  | 0d |
|  | Control | **Control Milestones** |  | 2026-11-10 | 2026-12-19 |  |  |  |
|  | Networks Milstones | **Networks & Stations** |  | 2026-11-22 | 2026-12-16 |  |  |  |
| DMM-Mil-5 |  | Sewerage Network - Finish | 0d | 2026-11-22 | 2026-11-22 | B6.33 05 39.01.817_R FF, B6.33 05 39.01.1017 FF, B5.33 31 00.01.0248 FF, B3.33 14 19.01.33, B5.33 05 13.054_R, B6.33 05 39.01.1857_R |  | 74.1d |
| DMM-Mil-6 |  | Storm Water Network - Finish | 0d | 2026-12-01 | 2026-12-01 | B6.33 05 63.044 FF, B6.33 05 63.07.4 FF, B6.33 05 13.09.5 |  | 21.72d |
| DMM-Mil-7 |  | Potable Water Network - Finish | 0d | 2026-12-02 | 2026-12-02 | B3.33 14 19.01.fm18 FF, B3.33 05 63.02.34 FF, B3.33 14 13-10107_R FF, B3.33 14 13.02.013, B3.33 14 19.01.109 |  | 64.32d |
| DMM-Mil-10 |  | Low Voltage Network - Finish | 0d | 2026-12-05 | 2026-12-05 | B2.33 71 26 031 FF, B2.33 71 26 032 FF, B2.33 71 26 013, B2.33 71 26 26, B2.33 71 26 32, B2.33 71 26 023 FF, B2.33 71 26 29 FF, B2.33 71 00 02 114 |  | 62.32d |
| DMM-Mil-8 |  | TSE Network - Finish | 0d | 2026-12-09 | 2026-12-09 | B3.33 05 63.01.74 FF, B3.33 05 63.02.99 FF |  | 58.32d |
| DMM-Mil-9 |  | Telecommunication Network - Finish | 0d | 2026-12-10 | 2026-12-10 | B2.1.33 81 26.194 FF, B2.1.33 81 26.191 FF, B2.33 71 00.283 FF, B2.33 71 00.281 FF, B2.1.33 81 26.188 FF, B2.1.33 81 26.185 FF, B2.33 71 00.239, B2.1.33 81 26.119, B2.33 71 00.243 |  | 57.32d |
| DMM-Mil-18 |  | Sewage Lift Station - Finish | 0d | 2026-12-12 | 2026-12-12 | B5.1.31 23 16.01.149 FF |  | 31.32d |
| DMM-Mil-48 |  | Bituminous concrete Wearing Course - Finish | 0d | 2026-12-12 | 2026-12-12 | B1.2.32 12 16.01.9 FF, B1.2.32 12 16.01.17 FF, B1.2.32 12 16.01.2 FF, B1.2.32 12 16.01.13 FF, B1.2.32 12 16.01.6 FF, B1.2.32 12 16.01.1 FF, B1.2.32 12 16.01.4 FF, B1.2.32 12 16.01.11 FF, B1.2.32 12 16.01.10 FF, B1.2.32 12 16.01.12 FF, B1.2.32 12 16.01.8 FF, B1.2.32 12 16.01.7 FF, B1.2.32 12 16.01.14 FF, B1.2.32 12 16.01.5 FF, B1.2.32 12 16.01.15 FF, B1.2.32 12 16.01.3 FF, B1.2.32 12 16.01.16 FF, B1.2.10 14 53.328 FF, 32 16 13.011 |  | 1.32d |
| DMM-Mil-11 |  | Fire Fighting Network - Finish | 0d | 2026-12-15 | 2026-12-15 | B3.33 14 19.01.fm51 FF, B3.33 05 63.02.59, B3.33 14 19.01.fh21_R, B3.33 05 63.01.59_R FF, B3.33 14 19.01.fh30 FF, B3.33 05 63.02.49 FF, B3.33 14 19.01.fh39, B3.33 05 63.02.69 |  | 53.32d |
| DMM-Mil-12 |  | Street Lighting Network - Finish | 0d | 2026-12-16 | 2026-12-16 | B2.33 71 26 045 FF, B2.33 71 26 034 FF, B2.33 71 26 033 FF, B2.33 71 26 032 FF, B2.33 71 26 031 FF, B2.33 71 26 03 FF, B2.33 71 19 43, B2.33 71 26 044, B2.33 71 19 31, B2.33 71 16.58 FF, B2.33 71 19 172 FF |  | 52.91d |
| DMM-Mil-17 |  | Potable Water Pump Station - Finish | 0d | 2026-12-16 | 2026-12-16 | B3.2.32 11 23.01.249 FF, B3.2.32 11 23.01.250 |  | 1.32d |
|  | Zonewise | **Zonewise Milestones** |  | 2026-11-10 | 2026-12-19 |  |  |  |
| DMM-Mil-13 |  | Zone 01 - Finish | 0d | 2026-11-10 | 2026-11-10 | B1.2.32 17 23.01.1 FF, 32 16 134 FF, B1.2.32 12 16.01.1 FF, B1.2.32 12 16.01.2 FF |  | 50.32d |
| DMM-Mil-15 |  | Zone 03 - Finish | 0d | 2026-12-12 | 2026-12-12 | B5.1.31 23 16.01.149 FF |  | 56.32d |
| DMM-Mil-14 |  | Zone 02 - Finish | 0d | 2026-12-17 | 2026-12-17 | B1.2.10 14 14.025 FF |  | 35d |
| DMM-Mil-16 |  | Zone 04 - Finish | 0d | 2026-12-19 | 2026-12-19 | B1.2.32 17 23.01.17 FF, B1.2.32 17 23.01.16 FF, B1.2.32 17 23.02.17 FF, B1.2.32 12 16.01.15 FF, B1.2.32 12 16.01.16 FF, B1.2.32 12 16.01.17 FF |  | 50.91d |
|  | 2 | **Mobilization** |  | 2025-07-30 | 2026-09-15 |  |  |  |
|  | Site | **Site Facilities and Offices** |  | 2025-07-30 | 2026-09-15 |  |  |  |
| DMM2-Mob-34 |  | Site Delivery | 1d | 2025-07-30 A | 2025-07-30 A | DMM-Mil-1 SS | 100% |  |
| DMM2-Mob-44 |  | Level of Effort (Indirect Resources) (Completed) | 338d | 2025-07-30 A | 2026-09-15 A | DMM-Mil-1 SS | 100% |  |
| DMM2-Mob-010 |  | Equipment Mobilization | 27d | 2025-08-10 A | 2025-09-10 A | DMM2-Mob-34 | 100% |  |
| DMM2-Mob-08 |  | Site Access Roads Clearing & Grubbing | 7d | 2025-08-10 A | 2025-08-18 A | DMM2-Mob-34, DMM2-Mob-010 | 100% |  |
| DMM2-Mob-09 |  | Manpower Crews & Project Staff Mobilization | 50d | 2025-08-11 A | 2025-10-08 A | DMM2-Mob-34, DMM2-Mob-07 SS | 100% |  |
| DMM2-Mob-06 |  | Project Main Signboards Installation | 5d | 2025-08-17 A | 2025-08-23 A | DMM2-Mob-34 | 100% |  |
| DMM2-Mob-026 |  | Site Utilities, Cabins, Offices Electrical & Sanitary Wares | 14d | 2025-08-20 A | 2025-09-04 A | DMM2-Mob-34, DMM2-Mob-08, DMM2-Mob-07, DMM2-Mob-02, DMM2-Mob-03 | 100% |  |
| DMM2-Mob-025 |  | Nurse Room Installation & Equiping | 15d | 2025-09-10 A | 2025-09-28 A | DMM2-Mob-34, DMM2-Mob-08 | 100% |  |
| DMM2-Mob-04 |  | Store & Laydown Area | 21d | 2025-09-10 A | 2025-10-05 A | DMM2-Mob-34, DMM2-Mob-08 | 100% |  |
| DMM2-Mob-05 |  | Project Laboratory Installation & Equiping | 27d | 2025-09-17 A | 2025-10-19 A | DMM2-Mob-34, DMM2-Mob-08 | 100% |  |
| DMM2-Mob-07 |  | Offices, Parking Slots, Gates Installation | 39d | 2025-09-20 A | 2025-11-04 A | DMM2-Mob-34, DMM2-Mob-08 | 100% |  |
|  | Preliminaries | **Preliminary Works** |  | 2025-08-11 | 2025-11-19 |  |  |  |
|  | Soil | **Soil Investigation** |  | 2025-08-27 | 2025-09-22 |  |  |  |
| DMM2-Mob-011 |  | Prepare & Submit | 5d | 2025-08-27 A | 2025-09-01 A | DMM2-Mob-07, DMM2-Mob-09 | 100% |  |
| DMM2-Mob-012 |  | Review & Approval | 18d | 2025-09-02 A | 2025-09-22 A | DMM2-Mob-011 | 100% |  |
|  | Surveying | **Quality Plans** |  | 2025-08-26 | 2025-09-20 |  |  |  |
| DMM2-Mob-014 |  | Prepare & Submit | 7d | 2025-08-26 A | 2025-09-02 A | DMM2-Mob-07, DMM2-Mob-09 | 100% |  |
| DMM2-Mob-019 |  | Review & Approval | 15d | 2025-09-03 A | 2025-09-20 A | DMM2-Mob-014 | 100% |  |
|  | Baseline | **Baseline Schedule** |  | 2025-08-16 | 2025-11-19 |  |  |  |
| DMM2-Mob-015 |  | Prepare & Submit | 77d | 2025-08-16 A | 2025-11-13 A | DMM2-Mob-07 SS, DMM2-Mob-09 SS | 100% |  |
| DMM2-Mob-020 |  | Review & Approval | 4d | 2025-11-15 A | 2025-11-19 A | DMM2-Mob-015 | 100% |  |
|  | HSE | **HSE Plans** |  | 2025-08-11 | 2025-11-04 |  |  |  |
| DMM2-Mob-016 |  | Prepare & Submit | 12d | 2025-08-11 A | 2025-08-24 A | DMM2-Mob-07, DMM2-Mob-09 | 100% |  |
| DMM2-Mob-021 |  | Review & Approval | 24d | 2025-10-08 A | 2025-11-04 A | DMM2-Mob-016 | 100% |  |
|  | Mobilization | **Site Mobilization Plan** |  | 2025-08-11 | 2025-08-19 |  |  |  |
| DMM2-Mob-017 |  | Prepare & Submit | 2d | 2025-08-11 A | 2025-08-12 A | DMM2-Mob-07, DMM2-Mob-09 | 100% |  |
| DMM2-Mob-022 |  | Review & Approval | 6d | 2025-08-13 A | 2025-08-19 A | DMM2-Mob-017 | 100% |  |
|  | Organization Chart | **Organization Chart and Recruitment Plan** |  | 2025-08-13 | 2025-08-18 |  |  |  |
| DMM2-Mob-018 |  | Prepare & Submit | 2d | 2025-08-13 A | 2025-08-14 A | DMM2-Mob-07, DMM2-Mob-09 | 100% |  |
| DMM2-Mob-023 |  | Review & Approval | 3d | 2025-08-16 A | 2025-08-18 A | DMM2-Mob-018 | 100% |  |
|  | PMP | **Project Management Plans** |  | 2025-08-18 | 2025-09-20 |  |  |  |
| DMM2-Mob-013 |  | Prepare & Submit | 20d | 2025-08-18 A | 2025-09-09 A | DMM2-Mob-07, DMM2-Mob-09 | 100% |  |
| DMM2-Mob-024 |  | Review & Approval | 9d | 2025-09-10 A | 2025-09-20 A | DMM2-Mob-013 | 100% |  |
|  | Permits | **Authorities Permits & Approvals** |  | 2025-08-09 | 2025-11-06 |  |  |  |
| DMM2-Mob-02 |  | Electric Current Permission | 14d | 2025-08-09 A | 2025-08-24 A | DMM2-Mob-34 | 100% |  |
| DMM2-Mob-03 |  | Water & Sewer Permission | 6d | 2025-08-12 A | 2025-08-18 A | DMM2-Mob-34 | 100% |  |
| DMM2-Mob-01 |  | Dewatering Plan & Permission | 41d | 2025-09-20 A | 2025-11-06 A | DMM-Mil-38 | 100% |  |
|  | Eng | **Engineering** |  | 2025-08-11 | 2026-10-25 |  |  |  |
|  | SD | **Shop Drawing** |  | 2025-08-30 | 2026-01-14 |  |  |  |
|  | 2 | **Submittals & Approvals** |  | 2025-08-30 | 2026-01-14 |  |  |  |
|  | Site Grading | **Earth & Road Works** |  | 2025-09-24 | 2025-11-11 |  |  |  |
| DMM2-Eng-SD-01 |  | Prepare & Submit | 35d | 2025-09-24 A | 2025-11-03 A | DMM2-Mob-09, DMM2-Mob-07 | 100% |  |

| ID | WBS | Task | Duration | Start | Finish | Predecessors | Complete |
| --- | --- | --- | --- | --- | --- | --- | --- |
| DMM2-Eng-SD-02 |  | Review & Approval | 31d | 2025-10-07 A | 2025-11-11 A | DMM2-Eng-SD-01 | 100% |
|  | Landscape | **Landscape Works** |  | 2025-10-26 | 2026-01-03 |  |  |
| DMM2-Eng-SD-03 |  | Prepare & Submit | 40.01d | 2025-10-26 A | 2025-12-11 A | DMM2-Mob-09, DMM2-Mob-07, DMM2-Eng-SD-01 SS | 100% |
| DMM2-Eng-SD-04 |  | Review & Approval | 55.18d | 2025-10-30 A | 2026-01-03 A | DMM2-Eng-SD-03 | 100% |
|  | Guard Room | **Guard Rooms** |  | 2025-10-15 | 2025-12-25 |  |  |
|  | 1 | **Civil & Architecture** |  | 2025-10-15 | 2025-11-06 |  |  |
| DMM2-Eng-SD-05 |  | Prepare & Submit | 5d | 2025-10-15 A | 2025-10-20 A | DMM2-Mob-09, DMM2-Mob-07, DMM2-Eng-SD-03 | 100% |
| DMM2-Eng-SD-06 |  | Review & Approval | 15d | 2025-10-21 A | 2025-11-06 A | DMM2-Eng-SD-05 | 100% |
|  | 3 | **Mechanical** |  | 2025-10-25 | 2025-11-19 |  |  |
| DMM2-Eng-SD-28 |  | Prepare & Submit | 18d | 2025-10-25 A | 2025-11-13 A | DMM2-Mob-09, DMM2-Mob-07, DMM2-Eng-SD-05 SS | 100% |
| DMM2-Eng-SD-38 |  | Review & Approval | 6d | 2025-11-13 A | 2025-11-19 A | DMM2-Eng-SD-28 | 100% |
|  | 2 | **Electrical** |  | 2025-11-10 | 2025-12-25 |  |  |
| DMM2-Eng-SD-48 |  | Prepare & Submit | 26.96d | 2025-11-10 A | 2025-12-10 A | DMM2-Mob-09, DMM2-Mob-07, DMM2-Eng-SD-28 SS | 100% |
| DMM2-Eng-SD-58 |  | Review & Approval | 36.44d | 2025-11-13 A | 2025-12-25 A | DMM2-Eng-SD-48 | 100% |
|  | SDS | **Wet Networks & Stations** |  | 2025-08-30 | 2026-01-14 |  |  |
|  | Sewer | **Sewerage Network** |  | 2025-09-08 | 2025-10-22 |  |  |
| DMM2-Eng-SD-07 |  | Prepare & Submit | 35d | 2025-09-08 A | 2025-10-19 A | DMM2-Mob-09 SS, DMM2-Mob-07, DMM2-Eng-SD-48 | 100% |
| DMM2-Eng-SD-08 |  | Review & Approval | 3d | 2025-10-20 A | 2025-10-22 A | DMM2-Eng-SD-07 | 100% |
|  | Storm | **Storm Network** |  | 2025-08-30 | 2025-10-30 |  |  |
| DMM2-Eng-SD-09 |  | Prepare & Submit | 48d | 2025-08-30 A | 2025-10-25 A | DMM2-Mob-09, DMM2-Mob-07, DMM2-Eng-SD-07 | 100% |
| DMM2-Eng-SD-010 |  | Review & Approval | 5d | 2025-10-26 A | 2025-10-30 A | DMM2-Eng-SD-09 | 100% |
|  | Potable | **Potable Network** |  | 2025-09-16 | 2025-11-03 |  |  |
| DMM2-Eng-SD-011 |  | Prepare & Submit | 35d | 2025-09-16 A | 2025-10-27 A | DMM2-Mob-09, DMM2-Mob-07, DMM2-Eng-SD-09 | 100% |
| DMM2-Eng-SD-012 |  | Review & Approval | 6d | 2025-10-28 A | 2025-11-03 A | DMM2-Eng-SD-011 | 100% |
|  | TSE | **TSE Network** |  | 2025-10-29 | 2026-01-14 |  |  |
| DMM2-Eng-SD-013 |  | Prepare & Submit | 37.34d | 2025-10-29 A | 2025-12-11 A | DMM2-Mob-09, DMM2-Mob-07, DMM2-Eng-SD-011 SS | 100% |
| DMM2-Eng-SD-014 |  | Review & Approval | 63d | 2025-11-03 A | 2026-01-14 A | DMM2-Eng-SD-013 | 100% |
|  | Fire Fighting | **Fire Fighting Network** |  | 2025-10-11 | 2025-11-10 |  |  |
| DMM2-Eng-SD-015 |  | Prepare & Submit | 19d | 2025-10-11 A | 2025-11-01 A | DMM2-Mob-09, DMM2-Mob-07, DMM2-Eng-SD-013 SS | 100% |
| DMM2-Eng-SD-016 |  | Review & Approval | 8d | 2025-11-02 A | 2025-11-10 A | DMM2-Eng-SD-015 | 100% |
|  | Pot Pump St. | **Potable Water Pump Station** |  | 2025-10-16 | 2026-01-01 |  |  |
| DMM2-Eng-SD-017 |  | Prepare & Submit | 48d | 2025-10-16 A | 2025-12-10 A | DMM2-Mob-09, DMM2-Mob-07, DMM2-Eng-SD-015 | 100% |
| DMM2-Eng-SD-018 |  | Review & Approval | 63.47d | 2025-10-20 A | 2026-01-01 A | DMM2-Eng-SD-017 | 100% |
|  | Sewer Lift St. | **Sewer Lift Station** |  | 2025-11-25 | 2025-12-24 |  |  |
| DMM2-Eng-SD-019 |  | Prepare & Submit | 15d | 2025-11-25 A | 2025-12-11 A | DMM2-Mob-09, DMM2-Mob-07, DMM2-Eng-SD-017 SS | 100% |
| DMM2-Eng-SD-020 |  | Review & Approval | 21.64d | 2025-11-30 A | 2025-12-24 A | DMM2-Eng-SD-019 | 100% |
|  | 1 | **Dry Networks** |  | 2025-09-27 | 2025-10-20 |  |  |
|  | MV | **Medium Voltage Network** |  | 2025-09-27 | 2025-10-16 |  |  |
| DMM2-Eng-SD-021 |  | Prepare & Submit | 13d | 2025-09-27 A | 2025-10-11 A | DMM2-Mob-09, DMM2-Mob-07, DMM2-Eng-SD-019 | 100% |
| DMM2-Eng-SD-022 |  | Review & Approval | 5d | 2025-10-12 A | 2025-10-16 A | DMM2-Eng-SD-021 | 100% |
|  | LV | **Low Voltage Network** |  | 2025-10-04 | 2025-10-16 |  |  |
| DMM2-Eng-SD-023 |  | Prepare & Submit | 7d | 2025-10-04 A | 2025-10-11 A | DMM2-Mob-09, DMM2-Mob-07, DMM2-Eng-SD-021 | 100% |
| DMM2-Eng-SD-024 |  | Review & Approval | 5d | 2025-10-12 A | 2025-10-16 A | DMM2-Eng-SD-023 | 100% |
|  | Telecom | **Telecommunication Network** |  | 2025-10-02 | 2025-10-20 |  |  |
| DMM2-Eng-SD-025 |  | Prepare & Submit | 12d | 2025-10-02 A | 2025-10-15 A | DMM2-Mob-09, DMM2-Mob-07, DMM2-Eng-SD-023 SS | 100% |
| DMM2-Eng-SD-026 |  | Review & Approval | 4d | 2025-10-16 A | 2025-10-20 A | DMM2-Eng-SD-025 | 100% |
|  | SL | **Street Lighting** |  | 2025-10-01 | 2025-10-16 |  |  |
| DMM2-Eng-SD-027 |  | Prepare & Submit | 9d | 2025-10-01 A | 2025-10-11 A | DMM2-Mob-09, DMM2-Mob-07, DMM2-Eng-SD-025 | 100% |
| DMM2-Eng-SD-028 |  | Review & Approval | 5d | 2025-10-12 A | 2025-10-16 A | DMM2-Eng-SD-027 | 100% |
|  | Prequalification | **Prequalifications & Materials Submissions** |  | 2025-08-11 | 2026-10-25 |  |  |
|  | Prequal Submit | **Submittals** |  | 2025-08-31 | 2026-10-13 |  |  |
|  | Site Grading | **Earth & Road Works** |  | 2025-10-14 | 2026-01-18 |  |  |
| DMM2-Eng-PQ-02 |  | Prepare & Submit for Agg. Base Coarse | 2d | 2025-10-14 A | 2025-10-15 A | DMM2-Mob-09, DMM2-Eng-PQ-04 | 100% |
| DMM2-Eng-PQ-03 |  | Prepare & Submit for Asphalt Materials | 24.75d | 2025-10-14 A | 2025-11-11 A | DMM2-Mob-09, DMM2-Eng-PQ-02 | 100% |
| DMM2-Eng-PQ-04 |  | Prepare & Submit for Subgrade Materials | 29d | 2025-10-14 A | 2025-11-16 A | DMM2-Mob-09, DMM2-Eng-PQ-01 | 100% |
| DMM2-Eng-PQ-01 |  | Prepare & Submit for Embankment & Backfilling Materials | 1d | 2025-10-15 A | 2025-10-15 A | DMM2-Mob-09 SS, DMM2-Eng-PQ-1918 | 100% |
| DMM2-Eng-PQ-1918 |  | Prepare & Submit for Concrete Materials | 1d | 2025-10-20 A | 2025-10-20 A | DMM2-Mob-09 | 100% |
| DMM2-Eng-PQ-011 |  | Prepare & Submit for Interlock Materials | 2d | 2025-11-16 A | 2025-11-17 A | DMM2-Mob-09, DMM2-Eng-PQ-05 | 100% |
| DMM2-Eng-PQ-05 |  | Prepare & Submit for Curbstone Materials | 2d | 2025-12-17 A | 2025-12-18 A | DMM2-Mob-09, DMM2-Eng-PQ-03 | 100% |
| DMM2-Eng-PQ-014 |  | Prepare & Submit for Traffic Signs Materials | 2d | 2025-12-31 A | 2026-01-01 A | DMM2-Mob-09 SS, DMM2-Eng-PQ-011 | 100% |
| DMM2-Eng-PQ-012 |  | Prepare & Submit for Pavement Markings Materials | 2d | 2026-01-05 A | 2026-01-06 A | DMM2-Mob-09, DMM2-Eng-PQ-015 | 100% |
| DMM2-Eng-PQ-013 |  | Prepare & Submit for Wheels Stopper (precast concrete) Materials | 2d | 2026-01-14 A | 2026-01-15 A | DMM2-Mob-09 SS | 100% |
| DMM2-Eng-PQ-015 |  | Prepare & Submit for ground Mounted Information Signs Materials | 2d | 2026-01-17 A | 2026-01-18 A | DMM2-Mob-09, DMM2-Eng-PQ-014 | 100% |
|  | SDS | **Wet Networks & Stations** |  | 2025-08-31 | 2026-10-10 |  |  |
|  | Storm | **Storm Network** |  | 2025-10-01 | 2025-11-20 |  |  |
| DMM2-Eng-PQ-064 |  | Prepare & Submit for GRP Pipes Materials | 44d | 2025-10-01 A | 2025-11-20 A | DMM2-Mob-09, DMM2-Eng-PQ-065 | 100% |
| DMM2-Eng-PQ-065 |  | Prepare & Submit for Steel Reinforcement Materials | 2d | 2025-10-09 A | 2025-10-11 A | DMM2-Mob-09 | 100% |
| DMM2-Eng-PQ-068 |  | Prepare & Submit for uPVC Pipes Materials | 2d | 2025-10-29 A | 2025-10-30 A | DMM2-Mob-09, DMM2-Eng-PQ-064 | 100% |
| DMM2-Eng-PQ-066 |  | Prepare & Submit for Inlet Manholes Materials | 2d | 2025-11-02 A | 2025-11-03 A | DMM2-Mob-09 SS, DMM2-Eng-PQ-068 | 100% |
| DMM2-Eng-PQ-067 |  | Prepare & Submit for Concrete Chambers & Catch Basin Materials | 2d | 2025-11-02 A | 2025-11-03 A | DMM2-Mob-09, DMM2-Eng-PQ-065, DMM2-Eng-PQ-066 | 100% |

| ID | WBS | Task | Duration | Start | Finish | Predecessors | Complete | Total float |
| --- | --- | --- | --- | --- | --- | --- | --- | --- |
|  | Sewer | **Sewerage Network** |  | 2025-08-31 | 2025-11-03 |  |  |  |
| DMM2-Eng-PQ-071 |  | Prepare & Submit for Valves Materials | 2d | 2025-08-31 A | 2025-09-01 A | DMM2-Mob-09 SS, DMM2-Eng-PQ-069 | 100% |  |
| DMM2-Eng-PQ-069 |  | Prepare & Submit for HDPE Pipes Materials | 2d | 2025-10-06 A | 2025-10-07 A | DMM2-Mob-09 SS | 100% |  |
| DMM2-Eng-PQ-070 |  | Prepare & Submit for Valves Chambers Materials | 2d | 2025-11-02 A | 2025-11-03 A | DMM2-Mob-09, DMM2-Eng-PQ-071 | 100% |  |
| DMM2-Eng-PQ-072 |  | Prepare & Submit for Discharge Chamber Materials | 2d | 2025-11-02 A | 2025-11-03 A | DMM2-Mob-09, DMM2-Eng-PQ-070 | 100% |  |
|  | Potable | **Potable Network** |  | 2025-08-31 | 2025-12-13 |  |  |  |
| DMM2-Eng-PQ-077 |  | Prepare & Submit for Valves Materials | 2d | 2025-08-31 A | 2025-09-01 A | DMM2-Mob-09 SS, DMM2-Eng-PQ-076 | 100% |  |
| DMM2-Eng-PQ-076 |  | Prepare & Submit for HDPE Pipes Materials | 2d | 2025-10-06 A | 2025-10-07 A | DMM2-Mob-09 | 100% |  |
| DMM2-Eng-PQ-078 |  | Prepare & Submit for Valves & Flow Meter Chambers Materials | 2d | 2025-11-02 A | 2025-11-03 A | DMM2-Mob-09, DMM2-Eng-PQ-079 | 100% |  |
| DMM2-Eng-PQ-079 |  | Prepare & Submit for Flow Meter Materials | 3d | 2025-12-10 A | 2025-12-13 A | DMM2-Mob-09, DMM2-Eng-PQ-077 | 100% |  |
|  | TSE | **TSE Network** |  | 2025-08-31 | 2026-02-22 |  |  |  |
| DMM2-Eng-PQ-082 |  | Prepare & Submit for Valves Materials | 2d | 2025-08-31 A | 2025-09-01 A | DMM2-Mob-09, DMM2-Eng-PQ-080 | 100% |  |
| DMM2-Eng-PQ-080 |  | Prepare & Submit for HDPE Pipes Materials | 2d | 2025-10-06 A | 2025-10-07 A | DMM2-Mob-09 SS | 100% |  |
| DMM2-Eng-PQ-081 |  | Prepare & Submit for Solenoid Primary Control Valves Materials | 3d | 2026-02-18 A | 2026-02-22 A | DMM2-Mob-09, DMM2-Eng-PQ-082 | 100% |  |
| DMM2-Eng-PQ-1648 |  | Prepare & Submit for Dripper Materials | 3d | 2026-02-18 A | 2026-02-22 A | DMM2-Mob-09, DMM2-Eng-PQ-081 | 100% |  |
| DMM2-Eng-PQ-1658 |  | Prepare & Submit for Bubbler Materials | 3d | 2026-02-18 A | 2026-02-22 A | DMM2-Mob-09, DMM2-Eng-PQ-1648 | 100% |  |
| DMM2-Eng-PQ-1668 |  | Prepare & Submit for Pull Box Materials | 3d | 2026-02-18 A | 2026-02-22 A | DMM2-Mob-09, DMM2-Eng-PQ-1658, DMM2-Eng-PQ-1658 FF | 100% |  |
| DMM2-Eng-PQ-1678 |  | Prepare & Submit for Two wire decoder cable 12 awg Materials | 3d | 2026-02-18 A | 2026-02-22 A | DMM2-Mob-09, DMM2-Eng-PQ-1668, DMM2-Eng-PQ-1668 FF | 100% |  |
|  | Fire Fighting | **Fire Fighting Network** |  | 2025-08-31 | 2025-11-03 |  |  |  |
| DMM2-Eng-PQ-074 |  | Prepare & Submit for Valves Materials | 2d | 2025-08-31 A | 2025-09-01 A | DMM2-Mob-09 SS, DMM2-Eng-PQ-073 | 100% |  |
| DMM2-Eng-PQ-1948 |  | Prepare & Submit for Firehydrant Materials | 2d | 2025-08-31 A | 2025-09-01 A | DMM2-Mob-09, DMM2-Eng-PQ-075 | 100% |  |
| DMM2-Eng-PQ-073 |  | Prepare & Submit for HDPE Pipes Materials | 2d | 2025-10-06 A | 2025-10-07 A | DMM2-Mob-09 | 100% |  |
| DMM2-Eng-PQ-075 |  | Prepare & Submit for Valves Chambers Materials | 2d | 2025-11-02 A | 2025-11-03 A | DMM2-Mob-09, DMM2-Eng-PQ-074 | 100% |  |
|  | Pot Pump St. | **Potable Water Pump Station** |  | 2025-08-31 | 2026-10-10 |  |  |  |
|  | 1 | **Civil & Architecture** |  | 2025-11-10 | 2026-07-12 |  |  |  |
| DMM2-Eng-PQ-0114 |  | Prepare & Submit for CMU Walls Materials | 2d | 2025-11-10 A | 2025-11-11 A | DMM2-Mob-09 SS, DMM2-Eng-PQ-0113 | 100% |  |
| DMM2-Eng-PQ-0118 |  | Prepare & Submit for Gravel Materials | 2d | 2025-12-31 A | 2026-01-01 A | DMM2-Mob-09 | 100% |  |
| DMM2-Eng-PQ-0113 |  | Prepare & Submit for Stairs Materials | 3d | 2026-05-02 A | 2026-05-04 A | DMM2-Mob-09 | 100% |  |
| DMM2-Eng-PQ-0115 |  | Prepare & Submit for Stainless Steel Ladder Materials | 3d | 2026-05-02 A | 2026-05-04 A | DMM2-Mob-09, DMM2-Eng-PQ-0114 | 100% |  |
| DMM2-Eng-PQ-0116 |  | Prepare & Submit for Steel shutter Door Materials | 3d | 2026-05-02 A | 2026-05-04 A | DMM2-Mob-09, DMM2-Eng-PQ-0115 | 100% |  |
| DMM2-Eng-PQ-0119 |  | Prepare & Submit for Handrail Materials | 3d | 2026-05-02 A | 2026-05-04 A | DMM2-Mob-09 | 100% |  |
| DMM2-Eng-PQ-0117 |  | Prepare & Submit for Metal Railing Materials | 2d | 2026-07-11 A | 2026-07-12 A | DMM2-Mob-09 SS | 100% |  |
|  | 3 | **Mechanical** |  | 2025-08-31 | 2026-10-10 |  |  |  |
| DMM2-Eng-PQ-0122 |  | Prepare & Submit for Butterfly Valve Materials | 2d | 2025-08-31 A | 2025-09-01 A | DMM2-Mob-09, DMM2-Eng-PQ-1958 | 100% |  |
| DMM2-Eng-PQ-1958 |  | Prepare & Submit for Valves Materials | 13d | 2025-08-31 A | 2025-09-14 A | DMM2-Mob-09, DMM2-Eng-PQ-0129 SS | 100% |  |
| DMM2-Eng-PQ-0126 |  | Prepare & Submit for FM200 Supression System Materials | 2d | 2025-09-24 A | 2025-09-25 A | DMM2-Mob-09 SS, DMM2-Mob-09 | 100% |  |
| DMM2-Eng-PQ-0120 |  | Prepare & Submit for Water Pumps Materials | 2d | 2025-10-20 A | 2025-10-21 A | DMM2-Mob-09 SS | 100% |  |
| DMM2-Eng-PQ-0121 |  | Prepare & Submit for Fire Pumps Materials | 2d | 2025-10-20 A | 2025-10-21 A | DMM2-Mob-09, DMM2-Eng-PQ-0120 | 100% |  |
| DMM2-Eng-PQ-0123 |  | Prepare & Submit for OverHead Crane Materials | 1.25d | 2025-11-19 A | 2025-11-20 A | DMM2-Mob-09, DMM2-Eng-PQ-0121 SS | 100% |  |
| DMM2-Eng-PQ-1968 |  | Prepare & Submit for Electromagnetic Flow Meters | 8d | 2025-12-11 A | 2025-12-20 A | DMM2-Mob-09, DMM2-Eng-PQ-1988 SS | 100% |  |
| DMM2-Eng-PQ-0128 |  | Prepare & Submit for Exhaust Fans Materials | 4d | 2026-01-21 A | 2026-01-25 A | DMM2-Mob-09 SS, DMM2-Eng-PQ-0122 SS | 100% |  |
| DMM2-Eng-PQ-1978 |  | Prepare & Submit for Fans Materials | 3d | 2026-01-21 A | 2026-01-24 A | DMM2-Mob-09, DMM2-Eng-PQ-0128 SS | 100% |  |
| DMM2-Eng-PQ-0129 |  | Prepare & Submit for Chlorine Cylinder Racks Materials | 1d | 2026-02-07 A | 2026-02-08 A | DMM2-Mob-09, DMM2-Eng-PQ-0130 | 100% |  |
| DMM2-Eng-PQ-0130 |  | Prepare & Submit for Chlorinators Materials | 1.5d | 2026-02-07 A | 2026-02-08 A | DMM2-Mob-09, DMM2-Eng-PQ-0123 | 100% |  |
| DMM2-Eng-PQ-0131 |  | Prepare & Submit for Discharge Line Analyzer Materials | 1.5d | 2026-02-07 A | 2026-02-08 A | DMM2-Mob-09, DMM2-Eng-PQ-0130, DMM2-Eng-PQ-0124 | 100% |  |
| DMM2-Eng-PQ-0132 |  | Prepare & Submit for Emergency shower Materials | 1.5d | 2026-02-07 A | 2026-02-08 A | DMM2-Mob-09 SS, DMM2-Eng-PQ-0133 SS | 100% |  |
| DMM2-Eng-PQ-0124 |  | Prepare & Submit for Strainers Materials | 1.42d | 2026-02-07 A | 2026-02-08 A | DMM2-Mob-09, DMM2-Eng-PQ-0123, DMM2-Eng-PQ-1978 | 100% |  |
| DMM2-Eng-PQ-0133 |  | Prepare & Submit for Trench Drain Materials | 3d | 2026-07-02 A | 2026-07-05 A | DMM2-Mob-09, DMM2-Eng-PQ-1968 | 100% |  |
| DMM2-Eng-PQ-0125 |  | Prepare & Submit for Sand Trap Louver Materials | 3d | 2026-07-06 A | 2026-07-08 A | DMM2-Mob-09, DMM2-Eng-PQ-0124 SS, DMM2-Eng-PQ-0126 | 100% |  |
| DMM2-Eng-PQ-1988 |  | Prepare & Submit for Louvers Materials | 4d | 2026-07-07 A | 2026-07-11 A | DMM2-Mob-09, DMM2-Eng-PQ-0131 | 100% |  |
| DMM2-Eng-PQ-0127 |  | Prepare & Submit for Hose Bibb Materials | 3d | 2026-10-07 | 2026-10-10 | DMM2-Mob-09, DMM2-Eng-PQ-0132 |  | 15.32d |
|  | 2 | **Electrical** |  | 2025-09-24 | 2026-02-12 |  |  |  |
| DMM2-Eng-PQ-1998 |  | Prepare & Submit for Addressable Fire Alarm System Materials | 2d | 2025-09-24 A | 2025-09-25 A | DMM2-Mob-09 | 100% |  |
| DMM2-Eng-PQ-0134 |  | Prepare & Submit for Switches and Circuit Breakers Materials | 2d | 2026-02-11 A | 2026-02-12 A | DMM2-Mob-09 | 100% |  |
|  | Sewer Lift St. | **Sewer Lift Station** |  | 2025-08-31 | 2026-08-12 |  |  |  |
|  | 1 | **Civil & Architecture** |  | 2025-12-04 | 2026-08-12 |  |  |  |
| DMM2-Eng-PQ-090 |  | Prepare & Submit for Geotextile Membrane Materials | 2d | 2025-12-04 A | 2025-12-06 A | DMM2-Mob-09 SS | 100% |  |
| DMM2-Eng-PQ-084 |  | Prepare & Submit for Metal Covers Materials | 2d | 2026-01-07 A | 2026-01-08 A | DMM2-Mob-09 | 100% |  |
| DMM2-Eng-PQ-083 |  | Prepare & Submit for Metal Ladders Materials | 3d | 2026-05-02 A | 2026-05-04 A | DMM2-Mob-09 SS | 100% |  |
| DMM2-Eng-PQ-085 |  | Prepare & Submit for Internal Painting (Acrylic) Materials | 4d | 2026-08-03 A | 2026-08-06 A | DMM2-Mob-09 | 100% |  |
| DMM2-Eng-PQ-086 |  | Prepare & Submit for Signages Materials | 4d | 2026-08-09 A | 2026-08-12 A | DMM2-Mob-09 SS | 100% |  |
|  | 3 | **Mechanical** |  | 2025-08-31 | 2026-05-24 |  |  |  |
| DMM2-Eng-PQ-091 |  | Prepare & Submit for Non Return Valve (Flap) Materials | 18d | 2025-08-31 A | 2025-09-20 A | DMM2-Mob-09, DMM2-Eng-PQ-087 | 100% |  |
| DMM2-Eng-PQ-087 |  | Prepare & Submit for Submersible Pumps Materials | 2d | 2025-10-20 A | 2025-10-21 A | DMM2-Mob-09 | 100% |  |
| DMM2-Eng-PQ-088 |  | Prepare & Submit for Double Flanged DI Pipes Materials | 2d | 2025-10-29 A | 2025-10-30 A | DMM2-Mob-09 | 100% |  |
| DMM2-Eng-PQ-089 |  | Prepare & Submit for Buried Flanged DI Pipes Materials | 2d | 2025-10-29 A | 2025-10-30 A | DMM2-Mob-09 SS, DMM2-Eng-PQ-088 | 100% |  |
| DMM2-Eng-PQ-093 |  | Prepare & Submit for Odor Control Unit Materials | 2d | 2025-11-19 A | 2025-11-20 A | DMM2-Mob-09, DMM2-Eng-PQ-092 | 100% |  |
| DMM2-Eng-PQ-095 |  | Prepare & Submit for JIB Crane Materials | 2d | 2025-11-19 A | 2025-11-20 A | DMM2-Mob-09, DMM2-Eng-PQ-094 SS | 100% |  |
| DMM2-Eng-PQ-092 |  | Prepare & Submit for Basket Screens Materials | 31.4d | 2025-12-30 A | 2026-02-04 A | DMM2-Mob-09, DMM2-Eng-PQ-091 | 100% |  |
| DMM2-Eng-PQ-094 |  | Prepare & Submit for Surge Tank Materials | 113d | 2025-12-31 A | 2026-05-24 A | DMM2-Mob-09 SS, DMM2-Eng-PQ-093 SS | 100% |  |

| ID | WBS | Task | Duration | Start | Finish | Predecessors | Complete |
| --- | --- | --- | --- | --- | --- | --- | --- |
| DMM2-Eng-PQ-096 |  | Prepare & Submit for Penstock Materials | 31d | 2025-12-31 A | 2026-02-04 A | DMM2-Mob-09, DMM2-Eng-PQ-095 | 100% |
| DMM2-Eng-PQ-097 |  | Prepare & Submit for Screening Container Materials | 30.12d | 2025-12-31 A | 2026-02-04 A | DMM2-Mob-09, DMM2-Eng-PQ-096 SS | 100% |
| DMM2-Eng-PQ-098 |  | Prepare & Submit for Scupper Materials | 31d | 2025-12-31 A | 2026-02-04 A | DMM2-Mob-09 SS, DMM2-Eng-PQ-097 SS | 100% |
|  | 2 | **Electrical** |  | 2025-10-14 | 2026-03-18 |  |  |
| DMM2-Eng-PQ-0101 |  | Prepare & Submit for Low Voltage Cables Materials | 2d | 2025-10-14 A | 2025-10-15 A | DMM2-Mob-09 | 100% |
| DMM2-Eng-PQ-0103 |  | Prepare & Submit for Fuel Pump Materials | 2d | 2025-10-20 A | 2025-10-21 A | DMM2-Mob-09, DMM2-Eng-PQ-0102 | 100% |
| DMM2-Eng-PQ-0106 |  | Prepare & Submit for Displacement Rotary Type Pump Materials | 2d | 2025-10-20 A | 2025-10-21 A | DMM2-Mob-09 SS, DMM2-Eng-PQ-0105 | 100% |
| DMM2-Eng-PQ-0102 |  | Prepare & Submit for Standby Diesel Generator Materials | 2d | 2025-10-29 A | 2025-10-30 A | DMM2-Mob-09 SS | 100% |
| DMM2-Eng-PQ-0110 |  | Prepare & Submit for PLC System Materials | 2d | 2025-10-29 A | 2025-10-30 A | DMM2-Mob-09, DMM2-Eng-PQ-0106 | 100% |
| DMM2-Eng-PQ-0107 |  | Prepare & Submit for Electrical Hand Holes Materials | 2d | 2025-11-02 A | 2025-11-03 A | DMM2-Mob-09 | 100% |
| DMM2-Eng-PQ-0108 |  | Prepare & Submit for Galvanized Steel Pole Materials | 2d | 2025-12-13 A | 2025-12-14 A | DMM2-Mob-09 | 100% |
| DMM2-Eng-PQ-0100 |  | Prepare & Submit for Local Control Panel Materials | 1d | 2025-12-15 A | 2025-12-15 A | DMM2-Mob-09 | 100% |
| DMM2-Eng-PQ-0104 |  | Prepare & Submit for Automatic Transfer (Switch ATS) Materials | 1d | 2025-12-15 A | 2025-12-15 A | DMM2-Mob-09 SS, DMM2-Eng-PQ-0103 | 100% |
| DMM2-Eng-PQ-099 |  | Prepare & Submit for Motor Control Center (MCC) Materials | 1d | 2025-12-15 A | 2025-12-15 A | DMM2-Mob-09 | 100% |
| DMM2-Eng-PQ-0111 |  | Prepare & Submit for Process Control Wiring Materials | 2d | 2025-12-21 A | 2025-12-22 A | DMM2-Mob-09 | 100% |
| DMM2-Eng-PQ-0105 |  | Prepare & Submit for Under Ground Fuel Tank Materials | 4d | 2025-12-24 A | 2025-12-28 A | DMM2-Mob-09 SS, DMM2-Eng-PQ-0104 | 100% |
| DMM2-Eng-PQ-0112 |  | Prepare & Submit for Instrumentation for Process Systems Materials | 2d | 2026-01-18 A | 2026-01-19 A | DMM2-Mob-09 | 100% |
| DMM2-Eng-PQ-0109 |  | Prepare & Submit for Surfaced Mounted Light (LED) Materials | 24d | 2026-02-11 A | 2026-03-18 A | DMM2-Mob-09 | 100% |
|  | SDS1 | **Dry Networks** |  | 2025-10-06 | 2026-02-07 |  |  |
|  | MV | **Medium Voltage Network** |  | 2025-12-20 | 2026-01-05 |  |  |
| DMM2-Eng-PQ-0135 |  | Prepare & Submit for MV Cables Materials | 7d | 2025-12-20 A | 2025-12-27 A | DMM2-Mob-09 SS, DMM2-Eng-PQ-0112 | 100% |
| DMM2-Eng-PQ-0136 |  | Prepare & Submit for Straight Joints, Termination Materials | 3d | 2025-12-20 A | 2025-12-22 A | DMM2-Mob-09 | 100% |
| DMM2-Eng-PQ-0137 |  | Prepare & Submit for Unit Substation Materials | 1d | 2026-01-02 A | 2026-01-03 A | DMM2-Mob-09 SS | 100% |
| DMM2-Eng-PQ-0138 |  | Prepare & Submit for RMU Materials | 3d | 2026-01-03 A | 2026-01-05 A | DMM2-Mob-09 | 100% |
|  | LV | **Low Voltage Network** |  | 2025-10-14 | 2026-01-15 |  |  |
| DMM2-Eng-PQ-0139 |  | Prepare & Submit for LV Cables Materials | 2d | 2025-10-14 A | 2025-10-15 A | DMM2-Mob-09 | 100% |
| DMM2-Eng-PQ-0140 |  | Prepare & Submit for LV Pillars Materials | 1d | 2026-01-15 A | 2026-01-15 A | DMM2-Mob-09 | 100% |
| DMM2-Eng-PQ-1999 |  | Prepare & Submit for LV Panels Materials | 1d | 2026-01-15 A | 2026-01-15 A | DMM2-Eng-PQ-0139 | 100% |
|  | Telecom | **Telecommunication Network** |  | 2025-10-06 | 2025-11-03 |  |  |
| DMM2-Eng-PQ-0147 |  | Prepare & Submit for HDPE Ducts Materials | 2d | 2025-10-06 A | 2025-10-07 A | DMM2-Mob-09 | 100% |
| DMM2-Eng-PQ-0148 |  | Prepare & Submit for Manholes Type 1&2 Materials | 2d | 2025-11-02 A | 2025-11-03 A | DMM2-Mob-09 SS | 100% |
|  | SL | **Street Lighting** |  | 2025-11-02 | 2026-02-07 |  |  |
| DMM2-Eng-PQ-0146 |  | Prepare & Submit for SL Drawpits Materials | 2d | 2025-11-02 A | 2025-11-03 A | DMM2-Mob-09 SS, DMM2-Eng-PQ-0145 | 100% |
| DMM2-Eng-PQ-0142 |  | Prepare & Submit for SL Cables Materials | 3d | 2025-12-20 A | 2025-12-22 A | DMM2-Mob-09 SS, DMM2-Eng-PQ-0141 | 100% |
| DMM2-Eng-PQ-0143 |  | Prepare & Submit for SL Poles Materials | 2d | 2025-12-24 A | 2025-12-25 A | DMM2-Mob-09, DMM2-Eng-PQ-0142 | 100% |
| DMM2-Eng-PQ-0144 |  | Prepare & Submit for SL Luminares Materials | 2d | 2025-12-24 A | 2025-12-25 A | DMM2-Mob-09, DMM2-Eng-PQ-0143 SS | 100% |
| DMM2-Eng-PQ-0141 |  | Prepare & Submit for SL Pillars Materials | 1d | 2026-01-15 A | 2026-01-15 A | DMM2-Mob-09 | 100% |
| DMM2-Eng-PQ-0145 |  | Prepare & Submit for SL Earthing Materials | 4d | 2026-02-03 A | 2026-02-07 A | DMM2-Mob-09, DMM2-Eng-PQ-0144 | 100% |
|  | Landscape | **Landscape Works** |  | 2025-11-09 | 2026-05-19 |  |  |
| DMM2-Eng-PQ-018 |  | Prepare & Submit for Fences (ZATCA HCIS) Materials | 2d | 2025-11-09 A | 2025-11-10 A | DMM2-Mob-09, DMM2-Eng-PQ-017 | 100% |
| DMM2-Eng-PQ-08 |  | Prepare & Submit for Geotextile Layers Materials | 2d | 2025-12-04 A | 2025-12-06 A | DMM2-Mob-09, DMM2-Eng-PQ-07 | 100% |
| DMM2-Eng-PQ-019 |  | Prepare & Submit for Fences (MODON) Materials | 3d | 2025-12-10 A | 2025-12-13 A | DMM2-Mob-09 SS, DMM2-Eng-PQ-018 SS | 100% |
| DMM2-Eng-PQ-017 |  | Prepare & Submit for Gravel/Stone Mulch Materials | 4d | 2025-12-17 A | 2025-12-21 A | DMM2-Mob-09 SS, DMM2-Eng-PQ-016 | 100% |
| DMM2-Eng-PQ-06 |  | Prepare & Submit for Trees Materials | 35d | 2025-12-31 A | 2026-02-09 A | DMM2-Mob-09 | 100% |
| DMM2-Eng-PQ-07 |  | Prepare & Submit for Ornamental Grasses Materials | 34.25d | 2025-12-31 A | 2026-02-09 A | DMM2-Mob-09, DMM2-Eng-PQ-06 SS | 100% |
| DMM2-Eng-PQ-09 |  | Prepare & Submit for Plastic edge Materials | 34.88d | 2025-12-31 A | 2026-02-09 A | DMM2-Mob-09, DMM2-Eng-PQ-08 | 100% |
| DMM2-Eng-PQ-016 |  | Prepare & Submit for Plants Materials | 32.62d | 2026-01-03 A | 2026-02-09 A | DMM2-Mob-09, DMM2-Eng-PQ-010 SS | 100% |
| DMM2-Eng-PQ-010 |  | Prepare & Submit for Large Shrubs Materials | 31.88d | 2026-01-04 A | 2026-02-09 A | DMM2-Mob-09 SS, DMM2-Eng-PQ-09 | 100% |
| DMM2-Eng-PQ-020 |  | Prepare & Submit for Vehicle Steel Gate Materials | 7d | 2026-05-12 A | 2026-05-19 A | DMM2-Mob-09 SS, DMM2-Eng-PQ-019 | 100% |
| DMM2-Eng-PQ-021 |  | Prepare & Submit for Vehicle and Pedestrian Steel Gate Materials | 7d | 2026-05-12 A | 2026-05-19 A | DMM2-Mob-09, DMM2-Eng-PQ-020 | 100% |
|  | Guard Room | **Guard Rooms** |  | 2025-10-14 | 2026-10-13 |  |  |
|  | GR MAT Civil | **Civil & Architecture** |  | 2025-10-19 | 2026-08-13 |  |  |
| DMM2-Eng-PQ-022 |  | Prepare & Submit for Lean Concrete Materials | 2d | 2025-10-19 A | 2025-10-20 A | DMM2-Mob-09 | 100% |
| DMM2-Eng-PQ-024 |  | Prepare & Submit for Screed Concrete Materials | 2d | 2025-10-19 A | 2025-10-20 A | DMM2-Mob-09, DMM2-Eng-PQ-023 | 100% |
| DMM2-Eng-PQ-025 |  | Prepare & Submit for Foam Concrete Materials | 2d | 2025-10-19 A | 2025-10-20 A | DMM2-Mob-09, DMM2-Eng-PQ-024 | 100% |
| DMM2-Eng-PQ-026 |  | Prepare & Submit for Reinforced Concrete Materials | 2d | 2025-10-19 A | 2025-10-20 A | DMM2-Mob-09, DMM2-Eng-PQ-025 SS | 100% |
| DMM2-Eng-PQ-031 |  | Prepare & Submit for Concrete Masonry Materials | 3d | 2025-11-09 A | 2025-11-11 A | DMM2-Mob-09, DMM2-Eng-PQ-029 | 100% |
| DMM2-Eng-PQ-027 |  | Prepare & Submit for Vapor Retarders Materials | 4d | 2025-12-06 A | 2025-12-09 A | DMM2-Mob-09, DMM2-Eng-PQ-026 | 100% |
| DMM2-Eng-PQ-028 |  | Prepare & Submit for Board Insulation Materials | 4d | 2025-12-06 A | 2025-12-09 A | DMM2-Mob-09 SS | 100% |
| DMM2-Eng-PQ-023 |  | Prepare & Submit for Stone Coping Materials | 2d | 2025-12-17 A | 2025-12-18 A | DMM2-Mob-09, DMM2-Eng-PQ-022 | 100% |
| DMM2-Eng-PQ-030 |  | Prepare & Submit for Water proofing Membrane Materials | 2d | 2025-12-17 A | 2025-12-18 A | DMM2-Mob-09 SS | 100% |
| DMM2-Eng-PQ-029 |  | Prepare & Submit for Fluid-Applied Water Proofing Paint Materials | 2d | 2026-03-04 A | 2026-03-07 A | DMM2-Mob-09, DMM2-Eng-PQ-027 | 100% |
| DMM2-Eng-PQ-036 |  | Prepare & Submit for Steel Doors Materials | 1d | 2026-04-10 A | 2026-04-11 A | DMM2-Mob-09 SS | 100% |
| DMM2-Eng-PQ-032 |  | Prepare & Submit for Porcelain Flooring Tiles Materials | 2d | 2026-05-10 A | 2026-05-11 A | DMM2-Mob-09, DMM2-Eng-PQ-031 | 100% |
| DMM2-Eng-PQ-034 |  | Prepare & Submit for Painting Materials | 2d | 2026-05-13 A | 2026-05-14 A | DMM2-Mob-09, DMM2-Eng-PQ-033 SS | 100% |
| DMM2-Eng-PQ-037 |  | Prepare & Submit for Wood Doors Materials | 2d | 2026-05-17 A | 2026-05-18 A | DMM2-Mob-09, DMM2-Eng-PQ-035 | 100% |
| DMM2-Eng-PQ-038 |  | Prepare & Submit for Aluminum Windows Materials | 2d | 2026-05-20 A | 2026-05-21 A | DMM2-Mob-09, DMM2-Eng-PQ-037 | 100% |
| DMM2-Eng-PQ-035 |  | Prepare & Submit for Raised Floor System Materials | 3d | 2026-08-08 A | 2026-08-10 A | DMM2-Mob-09, DMM2-Eng-PQ-034 | 100% |
| DMM2-Eng-PQ-033 |  | Prepare & Submit for gypsum Board Suspended Ceiling Materials | 2d | 2026-08-12 A | 2026-08-13 A | DMM2-Mob-09, DMM2-Eng-PQ-032 | 100% |
|  | GR MAT Mech | **Mechanical** |  | 2025-10-25 | 2026-10-13 |  |  |

| ID | WBS | Task | Duration | Start | Finish | Predecessors | Complete | Total float |
| --- | --- | --- | --- | --- | --- | --- | --- | --- |
| DMM2-Eng-PQ-042 |  | Prepare & Submit for DX Wall Mounted Split/AC Materials | 6d | 2025-10-25 A | 2025-10-30 A | DMM2-Mob-09 | 100% |  |
| DMM2-Eng-PQ-040 |  | Prepare & Submit for uPVC Pipes Materials | 2d | 2025-10-29 A | 2025-10-30 A | DMM2-Mob-09 SS | 100% |  |
| DMM2-Eng-PQ-045 |  | Prepare & Submit for Floor Drain Materials | 2d | 2025-11-02 A | 2025-11-03 A | DMM2-Mob-09 | 100% |  |
| DMM2-Eng-PQ-047 |  | Prepare & Submit for Manhole Materials | 2d | 2025-11-02 A | 2025-11-03 A | DMM2-Mob-09, DMM2-Eng-PQ-043 | 100% |  |
| DMM2-Eng-PQ-051 |  | Prepare & Submit for Fire Extinguishers (CO2 & Powder) Materials | 2d | 2025-11-30 A | 2025-12-01 A | DMM2-Mob-09 | 100% |  |
| DMM2-Eng-PQ-039 |  | Prepare & Submit for Exhaust Axial Fans Materials | 4d | 2026-05-14 A | 2026-05-18 A | DMM2-Mob-09 | 100% |  |
| DMM2-Eng-PQ-043 |  | Prepare & Submit for Scupper Materials | 3d | 2026-07-28 A | 2026-07-30 A | DMM2-Mob-09, DMM2-Eng-PQ-042 | 100% |  |
| DMM2-Eng-PQ-041 |  | Prepare & Submit for PPR Pipes Materials | 2d | 2026-10-07 | 2026-10-08 | DMM2-Mob-09, DMM2-Eng-PQ-039 |  | 17.32d |
| DMM2-Eng-PQ-044 |  | Prepare & Submit for Clean out Materials | 2d | 2026-10-07 | 2026-10-08 | DMM2-Mob-09, DMM2-Eng-PQ-043 |  | 8.32d |
| DMM2-Eng-PQ-046 |  | Prepare & Submit for Electrical Water Heater Materials | 2d | 2026-10-07 | 2026-10-08 | DMM2-Mob-09, DMM2-Eng-PQ-045 |  | 16.32d |
| DMM2-Eng-PQ-048 |  | Prepare & Submit for Shower Materials | 2d | 2026-10-07 | 2026-10-08 | DMM2-Mob-09, DMM2-Eng-PQ-047 |  | 13.32d |
| DMM2-Eng-PQ-049 |  | Prepare & Submit for Toilet Materials | 2d | 2026-10-10 | 2026-10-11 | DMM2-Mob-09, DMM2-Eng-PQ-048 |  | 13.32d |
| DMM2-Eng-PQ-050 |  | Prepare & Submit for Semi Pedestal Sink Materials | 2d | 2026-10-12 | 2026-10-13 | DMM2-Mob-09, DMM2-Eng-PQ-049 |  | 13.32d |
|  | GR MAT Elec | **Electrical** |  | 2025-10-14 | 2026-10-08 |  |  |  |
| DMM2-Eng-PQ-053 |  | Prepare & Submit for Low Voltage Cable Materials | 2d | 2025-10-14 A | 2025-10-15 A | DMM2-Mob-09 | 100% |  |
| DMM2-Eng-PQ-056 |  | Prepare & Submit for Ground Wires, Rods, Pits, Clamping Materials | 2d | 2025-10-14 A | 2025-10-15 A | DMM2-Mob-09, DMM2-Eng-PQ-055 | 100% |  |
| DMM2-Eng-PQ-058 |  | Prepare & Submit for Fire Alarm System Materials | 10d | 2025-12-24 A | 2026-01-04 A | DMM2-Mob-09 | 100% |  |
| DMM2-Eng-PQ-054 |  | Prepare & Submit for Lighting Materials | 2d | 2026-01-07 A | 2026-01-08 A | DMM2-Mob-09 | 100% |  |
| DMM2-Eng-PQ-057 |  | Prepare & Submit for Enclosed Switches and Circuit Breakers Materials | 2d | 2026-01-07 A | 2026-01-08 A | DMM2-Mob-09, DMM2-Eng-PQ-056 | 100% |  |
| DMM2-Eng-PQ-052 |  | Prepare & Submit for Panelboards Materials | 4.26d | 2026-02-05 A | 2026-02-10 A | DMM2-Mob-09 | 100% |  |
| DMM2-Eng-PQ-055 |  | Prepare & Submit for Wiring Devices Materials | 2d | 2026-02-08 A | 2026-02-09 A | DMM2-Mob-09, DMM2-Eng-PQ-054 | 100% |  |
| DMM2-Eng-PQ-060 |  | Prepare & Submit for Data Cabinet Materials | 5d | 2026-05-03 A | 2026-05-07 A | DMM2-Mob-09 SS | 100% |  |
| DMM2-Eng-PQ-059 |  | Prepare & Submit for Data and Voice System Materials | 19d | 2026-05-17 A | 2026-06-11 A | DMM2-Mob-09 | 100% |  |
| DMM2-Eng-PQ-061 |  | Prepare & Submit for Data/ Voice RJ45 Outlet Materials | 3d | 2026-05-17 A | 2026-05-19 A | DMM2-Mob-09 | 100% |  |
| DMM2-Eng-PQ-062 |  | Prepare & Submit for PC Workstation Materials | 2d | 2026-10-07 | 2026-10-08 | DMM2-Mob-09 |  | 17.32d |
| DMM2-Eng-PQ-063 |  | Prepare & Submit for 50 inch Screen Materials | 2d | 2026-10-07 | 2026-10-08 | DMM2-Mob-09 |  | 17.32d |
|  | Approvals | **Approvals** |  | 2025-08-11 | 2026-10-25 |  |  |  |
|  | Site Grading | **Earth & Road Works** |  | 2025-10-15 | 2026-07-29 |  |  |  |
| DMM2-Eng-PQ-148 |  | Review & Approval for Embankment & Backfilling Materials | 2d | 2025-10-15 A | 2025-10-16 A | DMM2-Eng-PQ-01 | 100% |  |
| DMM2-Eng-PQ-158 |  | Review & Approval for Agg. Base Coarse | 2d | 2025-10-15 A | 2025-10-16 A | DMM2-Eng-PQ-02 | 100% |  |
| DMM2-Eng-PQ-168 |  | Review & Approval for Asphalt Materials | 2d | 2025-10-15 A | 2025-10-16 A | DMM2-Eng-PQ-03 | 100% |  |
| DMM2-Eng-PQ-178 |  | Review & Approval for Subgrade Materials | 2d | 2025-10-15 A | 2025-10-16 A | DMM2-Eng-PQ-04 | 100% |  |
| DMM2-Eng-PQ-1928 |  | Review & Approval for Concrete Materials | 2d | 2025-10-20 A | 2025-10-21 A | DMM2-Eng-PQ-1918 | 100% |  |
| DMM2-Eng-PQ-198 |  | Review & Approval for Interlock Materials | 2d | 2025-11-17 A | 2025-11-18 A | DMM2-Eng-PQ-011, DMM2-Eng-PQ-188 | 100% |  |
| DMM2-Eng-PQ-188 |  | Review & Approval for Curbstone Materials | 2d | 2026-01-07 A | 2026-01-08 A | DMM2-Eng-PQ-05 | 100% |  |
| DMM2-Eng-PQ-218 |  | Review & Approval for Wheels Stopper (precast concrete) Materials | 4.27d | 2026-01-31 A | 2026-02-04 A | DMM2-Eng-PQ-013 | 100% |  |
| DMM2-Eng-PQ-228 |  | Review & Approval for Traffic Signs Materials | 4d | 2026-07-15 A | 2026-07-19 A | DMM2-Eng-PQ-014 | 100% |  |
| DMM2-Eng-PQ-238 |  | Review & Approval for Ground Mounted Information Signs Materials | 5d | 2026-07-25 A | 2026-07-29 A | DMM2-Eng-PQ-015, DMM2-Eng-PQ-208 | 100% |  |
| DMM2-Eng-PQ-208 |  | Review & Approval for Pavement Markings Materials | 3d | 2026-07-26 A | 2026-07-28 A | DMM2-Eng-PQ-012, DMM2-Eng-PQ-198 | 100% |  |
|  | SDS | **Wet Networks & Stations** |  | 2025-08-11 | 2026-10-13 |  |  |  |
|  | Storm | **Storm Network** |  | 2025-10-05 | 2025-11-15 |  |  |  |
| DMM2-Eng-PQ-248 |  | Review & Approval for GRP Pipes Materials | 2d | 2025-10-05 A | 2025-10-06 A | DMM2-Eng-PQ-064 | 100% |  |
| DMM2-Eng-PQ-288 |  | Review & Approval for uPVC Pipes Materials | 2d | 2025-11-04 A | 2025-11-05 A | DMM2-Eng-PQ-068 | 100% |  |
| DMM2-Eng-PQ-268 |  | Review & Approval for Inlet Manholes Materials | 2d | 2025-11-11 A | 2025-11-12 A | DMM2-Eng-PQ-066 | 100% |  |
| DMM2-Eng-PQ-278 |  | Review & Approval for Concrete Chambers & Catch Basin Materials | 2d | 2025-11-11 A | 2025-11-12 A | DMM2-Eng-PQ-067 | 100% |  |
| DMM2-Eng-PQ-258 |  | Review & Approval for Steel Reinforcement Materials | 2d | 2025-11-13 A | 2025-11-15 A | DMM2-Eng-PQ-065 | 100% |  |
|  | Sewer | **Sewerage Network** |  | 2025-09-06 | 2025-11-12 |  |  |  |
| DMM2-Eng-PQ-318 |  | Review & Approval for Valves Materials | 2d | 2025-09-06 A | 2025-09-07 A | DMM2-Eng-PQ-071 | 100% |  |
| DMM2-Eng-PQ-1628 |  | Review & Approval for GRP Pipes Materials | 2d | 2025-10-05 A | 2025-10-06 A | DMM2-Eng-PQ-064, DMM2-Eng-PQ-328 | 100% |  |
| DMM2-Eng-PQ-298 |  | Review & Approval for HDPE Pipes Materials | 2d | 2025-10-11 A | 2025-10-12 A | DMM2-Eng-PQ-069 | 100% |  |
| DMM2-Eng-PQ-1638 |  | Review & Approval for Inlet Manholes Materials | 2d | 2025-11-11 A | 2025-11-12 A | DMM2-Eng-PQ-066, DMM2-Eng-PQ-318 | 100% |  |
| DMM2-Eng-PQ-308 |  | Review & Approval for Valves Chambers Materials | 2d | 2025-11-11 A | 2025-11-12 A | DMM2-Eng-PQ-070 | 100% |  |
| DMM2-Eng-PQ-328 |  | Review & Approval for Discharge Chamber Materials | 2d | 2025-11-11 A | 2025-11-12 A | DMM2-Eng-PQ-072, DMM2-Eng-PQ-1638 | 100% |  |
|  | Potable | **Potable Network** |  | 2025-09-06 | 2025-12-25 |  |  |  |
| DMM2-Eng-PQ-348 |  | Review & Approval for Valves Materials | 2d | 2025-09-06 A | 2025-09-07 A | DMM2-Eng-PQ-077 | 100% |  |
| DMM2-Eng-PQ-338 |  | Review & Approval for HDPE Pipes Materials | 2d | 2025-10-11 A | 2025-10-12 A | DMM2-Eng-PQ-076 | 100% |  |
| DMM2-Eng-PQ-1758 |  | Review & Approval for Flow Meter Chamber Materials | 2d | 2025-11-11 A | 2025-11-12 A | DMM2-Eng-PQ-078, DMM2-Eng-PQ-368 | 100% |  |
| DMM2-Eng-PQ-358 |  | Review & Approval for Valves Chambers Materials | 2d | 2025-11-11 A | 2025-11-12 A | DMM2-Eng-PQ-078, DMM2-Eng-PQ-338 | 100% |  |
| DMM2-Eng-PQ-368 |  | Review & Approval for Flow Meter Materials | 4d | 2025-12-22 A | 2025-12-25 A | DMM2-Eng-PQ-079, DMM2-Eng-PQ-358 | 100% |  |
|  | TSE | **TSE Network** |  | 2025-09-06 | 2026-01-14 |  |  |  |
| DMM2-Eng-PQ-398 |  | Review & Approval for Valves Materials | 2d | 2025-09-06 A | 2025-09-07 A | DMM2-Eng-PQ-082, DMM2-Eng-PQ-388 | 100% |  |
| DMM2-Eng-PQ-378 |  | Review & Approval for HDPE Pipes Materials | 2d | 2025-10-11 A | 2025-10-12 A | DMM2-Eng-PQ-080 | 100% |  |
| DMM2-Eng-PQ-1688 |  | Review & Approval for Dripper Materials | 2d | 2026-01-13 A | 2026-01-14 A | DMM2-Eng-PQ-1648 | 100% |  |
| DMM2-Eng-PQ-1698 |  | Review & Approval for Bubbler Materials | 2d | 2026-01-13 A | 2026-01-14 A | DMM2-Eng-PQ-1658, DMM2-Eng-PQ-1688 | 100% |  |
| DMM2-Eng-PQ-1708 |  | Review & Approval for Pull Box Materials | 2d | 2026-01-13 A | 2026-01-14 A | DMM2-Eng-PQ-1668 | 100% |  |
| DMM2-Eng-PQ-1718 |  | Review & Approval for Two Wire Decoder Cable 12 awg Materials | 2d | 2026-01-13 A | 2026-01-14 A | DMM2-Eng-PQ-1678 | 100% |  |
| DMM2-Eng-PQ-388 |  | Review & Approval for Solenoid Primary Control Valves Materials | 2d | 2026-01-13 A | 2026-01-14 A | DMM2-Eng-PQ-081, DMM2-Eng-PQ-1698 | 100% |  |
|  | Fire Fighting | **Fire Fighting Network** |  | 2025-09-06 | 2025-12-13 |  |  |  |
| DMM2-Eng-PQ-418 |  | Review & Approval for Valves Materials | 2d | 2025-09-06 A | 2025-09-07 A | DMM2-Eng-PQ-074 | 100% |  |
| DMM2-Eng-PQ-1728 |  | Review & Approval for Fire Hydrant Materials | 2d | 2025-09-09 A | 2025-09-10 A | DMM2-Eng-PQ-1948 | 100% |  |

| ID | WBS | Task | Duration | Start | Finish | Predecessors | Complete | Total float |
| --- | --- | --- | --- | --- | --- | --- | --- | --- |
| DMM2-Eng-PQ-408 |  | Review & Approval for HDPE Pipes Materials | 2d | 2025-10-11 A | 2025-10-12 A | DMM2-Eng-PQ-073 | 100% |  |
| DMM2-Eng-PQ-1748 |  | Review & Approval for Flow Meter Chamber Materials | 2d | 2025-11-11 A | 2025-11-12 A | DMM2-Eng-PQ-075 | 100% |  |
| DMM2-Eng-PQ-428 |  | Review & Approval for Valves Chambers Materials | 2d | 2025-11-11 A | 2025-11-12 A | DMM2-Eng-PQ-075 | 100% |  |
| DMM2-Eng-PQ-1738 |  | Review & Approval for Flow Meter Materials | 1d | 2025-12-13 A | 2025-12-13 A | DMM2-Eng-PQ-079 | 100% |  |
|  | Pot Pump St. | **Potable Water Pump Station** |  | 2025-08-11 | 2026-10-13 |  |  |  |
|  | 1 | **Civil & Architecture** |  | 2025-08-11 | 2026-07-12 |  |  |  |
| DMM2-Eng-PQ-448 |  | Review & Approval for CMU Walls Materials | 6d | 2025-08-11 A | 2025-08-17 A | DMM2-Eng-PQ-0114 | 100% |  |
| DMM2-Eng-PQ-488 |  | Review & Approval for Gravel Materials | 7d | 2025-11-18 A | 2025-11-25 A | DMM2-Eng-PQ-0118 | 100% |  |
| DMM2-Eng-PQ-438 |  | Review & Approval for Stairs Materials | 3d | 2026-05-02 A | 2026-05-04 A | DMM2-Eng-PQ-0113 | 100% |  |
| DMM2-Eng-PQ-458 |  | Review & Approval for Stainless Steel Ladder Materials | 3d | 2026-05-02 A | 2026-05-04 A | DMM2-Eng-PQ-0115 | 100% |  |
| DMM2-Eng-PQ-468 |  | Review & Approval for Steel shutter Door Materials | 6d | 2026-05-02 A | 2026-05-07 A | DMM2-Eng-PQ-0116 | 100% |  |
| DMM2-Eng-PQ-498 |  | Review & Approval for Handrail Materials | 6d | 2026-05-02 A | 2026-05-07 A | DMM2-Eng-PQ-0119 | 100% |  |
| DMM2-Eng-PQ-478 |  | Review & Approval for Metal Railing Materials | 2d | 2026-07-11 A | 2026-07-12 A | DMM2-Eng-PQ-0117 | 100% |  |
|  | 3 | **Mechanical** |  | 2025-09-06 | 2026-10-13 |  |  |  |
| DMM2-Eng-PQ-1788 |  | Review & Approval for Gate Valves Materials | 2d | 2025-09-06 A | 2025-09-07 A | DMM2-Eng-PQ-1958 | 100% |  |
| DMM2-Eng-PQ-1798 |  | Review & Approval for Non Return (Flap) Valves Materials | 2d | 2025-09-06 A | 2025-09-07 A | DMM2-Eng-PQ-091 | 100% |  |
| DMM2-Eng-PQ-528 |  | Review & Approval for Butterfly Valve Materials | 2d | 2025-09-06 A | 2025-09-07 A | DMM2-Eng-PQ-0122 | 100% |  |
| DMM2-Eng-PQ-568 |  | Review & Approval for FM200 Supression System Materials | 2d | 2025-10-06 A | 2025-10-07 A | DMM2-Eng-PQ-0126 | 100% |  |
| DMM2-Eng-PQ-1768 |  | Review & Approval for Submersible Pumps Materials | 2d | 2025-10-28 A | 2025-10-29 A | DMM2-Eng-PQ-087 | 100% |  |
| DMM2-Eng-PQ-508 |  | Review & Approval for Water Pumps Materials | 2d | 2025-10-28 A | 2025-10-29 A | DMM2-Eng-PQ-0120 | 100% |  |
| DMM2-Eng-PQ-518 |  | Review & Approval for Fire Pumps Materials | 2d | 2025-10-28 A | 2025-10-29 A | DMM2-Eng-PQ-0121 | 100% |  |
| DMM2-Eng-PQ-1778 |  | Review & Approval for DI Pipes Materials | 2d | 2025-11-10 A | 2025-11-11 A | DMM2-Eng-PQ-088, DMM2-Eng-PQ-089 | 100% |  |
| DMM2-Eng-PQ-538 |  | Review & Approval for OverHead Crane Materials | 2d | 2025-11-22 A | 2025-11-23 A | DMM2-Eng-PQ-0123 | 100% |  |
| DMM2-Eng-PQ-1808 |  | Review & Approval for Electromagnetic Flow Meters Materials | 5d | 2025-12-21 A | 2025-12-25 A | DMM2-Eng-PQ-1968 | 100% |  |
| DMM2-Eng-PQ-608 |  | Review & Approval for Chlorinators Materials | 1d | 2026-01-12 A | 2026-01-12 A | DMM2-Eng-PQ-0130 | 100% |  |
| DMM2-Eng-PQ-1818 |  | Review & Approval for Surge Tank Materials | 1d | 2026-01-14 A | 2026-01-14 A | DMM2-Eng-PQ-094 | 100% |  |
| DMM2-Eng-PQ-1828 |  | Review & Approval for Fans Materials | 2d | 2026-01-25 A | 2026-01-26 A | DMM2-Eng-PQ-1978 | 100% |  |
| DMM2-Eng-PQ-588 |  | Review & Approval for Exhaust Fans Materials | 1d | 2026-01-25 A | 2026-01-25 A | DMM2-Eng-PQ-0128 | 100% |  |
| DMM2-Eng-PQ-548 |  | Review & Approval for Strainers Materials | 3.83d | 2026-01-31 A | 2026-02-03 A | DMM2-Eng-PQ-0124 | 100% |  |
| DMM2-Eng-PQ-598 |  | Review & Approval for Chlorine Cylinder Racks Materials | 3.83d | 2026-01-31 A | 2026-02-03 A | DMM2-Eng-PQ-0129 | 100% |  |
| DMM2-Eng-PQ-618 |  | Review & Approval for Discharge Line Analyzer Materials | 3.83d | 2026-01-31 A | 2026-02-03 A | DMM2-Eng-PQ-0131 | 100% |  |
| DMM2-Eng-PQ-628 |  | Review & Approval for Emergency shower Materials | 3.83d | 2026-01-31 A | 2026-02-03 A | DMM2-Eng-PQ-0132 | 100% |  |
| DMM2-Eng-PQ-638 |  | Review & Approval for Trench Drain Materials | 6d | 2026-08-09 A | 2026-08-15 A | DMM2-Eng-PQ-0133 | 100% |  |
| DMM2-Eng-PQ-558 |  | Review & Approval for Sand Trap Louver Materials | 5d | 2026-08-10 A | 2026-08-15 A | DMM2-Eng-PQ-0125 | 100% |  |
| DMM2-Eng-PQ-1838 |  | Review & Approval for Louvers Materials | 2d | 2026-08-16 A | 2026-08-17 A | DMM2-Eng-PQ-1988 | 100% |  |
| DMM2-Eng-PQ-578 |  | Review & Approval for Hose Bibb Materials | 3d | 2026-10-11 | 2026-10-13 | DMM2-Eng-PQ-0127, DMM2-Eng-PQ-0126 |  | 15.32d |
|  | 2 | **Electrical** |  | 2025-10-08 | 2026-01-22 |  |  |  |
| DMM2-Eng-PQ-1898 |  | Review & Approval for Addressable Fire Alarm System Materials | 2d | 2025-10-08 A | 2025-10-09 A | DMM2-Eng-PQ-1998 | 100% |  |
| DMM2-Eng-PQ-648 |  | Review & Approval for LV Cables Materials | 2d | 2025-10-20 A | 2025-10-21 A | DMM2-Eng-PQ-0101 | 100% |  |
| DMM2-Eng-PQ-1888 |  | Review & Approval for Generators Materials | 2d | 2025-11-11 A | 2025-11-12 A | DMM2-Eng-PQ-0102 | 100% |  |
| DMM2-Eng-PQ-1858 |  | Review & Approval for Motor Control Center (MCC) Materials | 5d | 2025-12-17 A | 2025-12-22 A | DMM2-Eng-PQ-099 | 100% |  |
| DMM2-Eng-PQ-1868 |  | Review & Approval for Local Control Panel Materials - Pump | 4d | 2025-12-17 A | 2025-12-21 A | DMM2-Eng-PQ-0100, DMM2-Eng-PQ-1858 | 100% |  |
| DMM2-Eng-PQ-1878 |  | Review & Approval for Panelboards Materials | 4d | 2025-12-17 A | 2025-12-21 A | DMM2-Eng-PQ-0100 | 100% |  |
| DMM2-Eng-PQ-1938 |  | Review & Approval for Automatic Transfer Switch ATS panel Materials | 2d | 2025-12-17 A | 2025-12-18 A | DMM2-Eng-PQ-0104, DMM2-Eng-PQ-1868 | 100% |  |
| DMM2-Eng-PQ-1848 |  | Review & Approval for Switches and Circuit Breakers Materials | 4d | 2026-01-10 A | 2026-01-13 A | DMM2-Eng-PQ-0134 | 100% |  |
| DMM2-Eng-PQ-1908 |  | Review & Approval for PLC System Materials | 2d | 2026-01-21 A | 2026-01-22 A | DMM2-Eng-PQ-0110 | 100% |  |
|  | Sewer Lift St. | **Sewer Lift Station** |  | 2025-09-06 | 2026-09-22 |  |  |  |
|  | 1 | **Civil & Architecture** |  | 2025-12-14 | 2026-09-22 |  |  |  |
| DMM2-Eng-PQ-668 |  | Review & Approval for Metal Covers Materials | 5d | 2025-12-14 A | 2025-12-18 A | DMM2-Eng-PQ-084 | 100% |  |
| DMM2-Eng-PQ-658 |  | Review & Approval for Metal Ladders Materials | 6d | 2026-05-02 A | 2026-05-07 A | DMM2-Eng-PQ-083 | 100% |  |
| DMM2-Eng-PQ-678 |  | Review & Approval for Internal painting (Acrylic) Materials | 5d | 2026-05-13 A | 2026-05-18 A | DMM2-Eng-PQ-085 | 100% |  |
| DMM2-Eng-PQ-688 |  | Review & Approval for Signages Materials | 6d | 2026-09-17 A | 2026-09-22 A | DMM2-Eng-PQ-086 | 100% |  |
|  | 3 | **Mechanical** |  | 2025-09-06 | 2026-08-10 |  |  |  |
| DMM2-Eng-PQ-738 |  | Review & Approval for Non Return Valve (Flap) Materials | 2d | 2025-09-06 A | 2025-09-07 A | DMM2-Eng-PQ-091 | 100% |  |
| DMM2-Eng-PQ-698 |  | Review & Approval for Submersible Pumps Materials | 2d | 2025-10-28 A | 2025-10-29 A | DMM2-Eng-PQ-087 | 100% |  |
| DMM2-Eng-PQ-708 |  | Review & Approval for Double Flanged DI Pipes Materials | 2d | 2025-11-10 A | 2025-11-11 A | DMM2-Eng-PQ-088 | 100% |  |
| DMM2-Eng-PQ-718 |  | Review & Approval for Buried Flanged DI Pipes Materials | 2d | 2025-11-10 A | 2025-11-11 A | DMM2-Eng-PQ-089 | 100% |  |
| DMM2-Eng-PQ-778 |  | Review & Approval for JIB Crane Materials | 2d | 2025-11-22 A | 2025-11-23 A | DMM2-Eng-PQ-095, DMM2-Eng-PQ-768 | 100% |  |
| DMM2-Eng-PQ-758 |  | Review & Approval for Odor Control Unit Materials | 3d | 2025-12-03 A | 2025-12-06 A | DMM2-Eng-PQ-093 | 100% |  |
| DMM2-Eng-PQ-728 |  | Review & Approval for Geotextile Membrane Materials | 3d | 2025-12-04 A | 2025-12-07 A | DMM2-Eng-PQ-090 | 100% |  |
| DMM2-Eng-PQ-748 |  | Review & Approval for Basket Screens Materials | 5.75d | 2026-02-07 A | 2026-02-12 A | DMM2-Eng-PQ-092 | 100% |  |
| DMM2-Eng-PQ-788 |  | Review & Approval for Penstock Materials | 5.75d | 2026-02-07 A | 2026-02-12 A | DMM2-Eng-PQ-096 | 100% |  |
| DMM2-Eng-PQ-798 |  | Review & Approval for Screening Container Materials | 5.75d | 2026-02-07 A | 2026-02-12 A | DMM2-Eng-PQ-097, DMM2-Eng-PQ-788 | 100% |  |
| DMM2-Eng-PQ-808 |  | Review & Approval for Scupper Materials | 5.75d | 2026-02-07 A | 2026-02-12 A | DMM2-Eng-PQ-098, DMM2-Eng-PQ-798 | 100% |  |
| DMM2-Eng-PQ-768 |  | Review & Approval for Surge Tank Materials | 90d | 2026-04-23 A | 2026-08-10 A | DMM2-Eng-PQ-094, DMM2-Eng-PQ-758 | 100% |  |
|  | 2 | **Electrical** |  | 2025-10-20 | 2026-05-12 |  |  |  |
| DMM2-Eng-PQ-838 |  | Review & Approval for Low Voltage Cables Materials | 2d | 2025-10-20 A | 2025-10-21 A | DMM2-Eng-PQ-0101 | 100% |  |
| DMM2-Eng-PQ-858 |  | Review & Approval for Fuel Pump Materials | 2d | 2025-10-28 A | 2025-10-29 A | DMM2-Eng-PQ-0103 | 100% |  |
| DMM2-Eng-PQ-888 |  | Review & Approval for Displacement Rotary Type Pump Materials | 2d | 2025-10-28 A | 2025-10-29 A | DMM2-Eng-PQ-0106 | 100% |  |
| DMM2-Eng-PQ-848 |  | Review & Approval for Standby Diesel Generator Materials | 2d | 2025-11-11 A | 2025-11-12 A | DMM2-Eng-PQ-0102 | 100% |  |

| ID | WBS | Task | Duration | Start | Finish | Predecessors | Complete | Total float |
| --- | --- | --- | --- | --- | --- | --- | --- | --- |
| DMM2-Eng-PQ-898 |  | Review & Approval for Electrical Hand Holes Materials | 2d | 2025-11-11 A | 2025-11-12 A | DMM2-Eng-PQ-0107 | 100% |  |
| DMM2-Eng-PQ-818 |  | Review & Approval for Motor Control Center (MCC) Materials | 4d | 2025-12-17 A | 2025-12-21 A | DMM2-Eng-PQ-099 | 100% |  |
| DMM2-Eng-PQ-828 |  | Review & Approval for Local Control Panel Materials - Lift | 4d | 2025-12-17 A | 2025-12-21 A | DMM2-Eng-PQ-0100 | 100% |  |
| DMM2-Eng-PQ-868 |  | Review & Approval for Automatic Transfer (Switch ATS) Materials | 4d | 2025-12-17 A | 2025-12-21 A | DMM2-Eng-PQ-0104, DMM2-Eng-PQ-818 | 100% |  |
| DMM2-Eng-PQ-908 |  | Review & Approval for Galvanized Steel Pole Materials | 5d | 2025-12-24 A | 2025-12-29 A | DMM2-Eng-PQ-0108 | 100% |  |
| DMM2-Eng-PQ-938 |  | Review & Approval for Process Control Wiring Materials | 5d | 2025-12-24 A | 2025-12-29 A | DMM2-Eng-PQ-0111 | 100% |  |
| DMM2-Eng-PQ-2002 |  | Review & Approval for PLC Materials - Lift | 2d | 2026-01-21 A | 2026-01-22 A | DMM2-Eng-PQ-0110 | 100% |  |
| DMM2-Eng-PQ-948 |  | Review & Approval for Instrumentation for Process Systems Materials | 1d | 2026-01-21 A | 2026-01-21 A | DMM2-Eng-PQ-0112, DMM2-Eng-PQ-868 | 100% |  |
| DMM2-Eng-PQ-918 |  | Review & Approval for Surfaced Mounted Light (LED) Materials | 8d | 2026-02-05 A | 2026-02-15 A | DMM2-Eng-PQ-0109 | 100% |  |
| DMM2-Eng-PQ-878 |  | Review & Approval for Under Ground Fuel Tank Materials | 4d | 2026-05-09 A | 2026-05-12 A | DMM2-Eng-PQ-0105 | 100% |  |
|  | SDS1 | **Dry Networks** |  | 2025-10-28 | 2026-02-09 |  |  |  |
|  | MV | **Medium Voltage Network** |  | 2025-12-22 | 2026-01-17 |  |  |  |
| DMM2-Eng-PQ-968 |  | Review & Approval for Straight Joints, Termination Materials | 4d | 2025-12-22 A | 2025-12-25 A | DMM2-Eng-PQ-0136 | 100% |  |
| DMM2-Eng-PQ-958 |  | Review & Approval for MV Cables Materials | 2d | 2025-12-27 A | 2025-12-28 A | DMM2-Eng-PQ-0135 | 100% |  |
| DMM2-Eng-PQ-978 |  | Review & Approval for Unit Substation Materials | 2d | 2026-01-15 A | 2026-01-17 A | DMM2-Eng-PQ-0137, DMM2-Eng-PQ-2002 | 100% |  |
| DMM2-Eng-PQ-988 |  | Review & Approval for RMU Materials | 2d | 2026-01-15 A | 2026-01-17 A | DMM2-Eng-PQ-0138, DMM2-Eng-PQ-2002 | 100% |  |
|  | LV | **Low Voltage Network** |  | 2025-10-28 | 2026-02-09 |  |  |  |
| DMM2-Eng-PQ-998 |  | Review & Approval for LV Cables Materials | 2d | 2025-10-28 A | 2025-10-29 A | DMM2-Eng-PQ-0139 | 100% |  |
| DMM2-Eng-PQ-1008 |  | Review & Approval for LV Pillars Materials | 6d | 2026-02-03 A | 2026-02-09 A | DMM2-Eng-PQ-0140 | 100% |  |
| DMM2-Eng-PQ-2000 |  | Review & Approval for LV Panels Materials | 6d | 2026-02-03 A | 2026-02-09 A | DMM2-Eng-PQ-1999 | 100% |  |
|  | Telecom | **Telecommunication Network** |  | 2025-11-11 | 2026-01-13 |  |  |  |
| DMM2-Eng-PQ-1028 |  | Review & Approval for Manholes Type 1&2 Materials | 2d | 2025-11-11 A | 2025-11-12 A | DMM2-Eng-PQ-0148 | 100% |  |
| DMM2-Eng-PQ-1018 |  | Review & Approval for HDPE Ducts Materials | 5d | 2026-01-08 A | 2026-01-13 A | DMM2-Eng-PQ-0147 | 100% |  |
|  | SL | **Street Lighting** |  | 2025-10-28 | 2026-02-05 |  |  |  |
| DMM2-Eng-PQ-1048 |  | Review & Approval for SL Cables Materials | 2d | 2025-10-28 A | 2025-10-29 A | DMM2-Eng-PQ-0142 | 100% |  |
| DMM2-Eng-PQ-1088 |  | Review & Approval for SL Drawpits Materials | 2d | 2025-11-11 A | 2025-11-12 A | DMM2-Eng-PQ-0146 | 100% |  |
| DMM2-Eng-PQ-1058 |  | Review & Approval for SL Poles Materials | 2d | 2025-12-27 A | 2025-12-28 A | DMM2-Eng-PQ-0143 | 100% |  |
| DMM2-Eng-PQ-1068 |  | Review & Approval for SL Luminares Materials | 2d | 2025-12-27 A | 2025-12-28 A | DMM2-Eng-PQ-0144 | 100% |  |
| DMM2-Eng-PQ-1038 |  | Review & Approval for SL Pillars Materials | 4d | 2026-02-02 A | 2026-02-05 A | DMM2-Eng-PQ-0141 | 100% |  |
| DMM2-Eng-PQ-1078 |  | Review & Approval for SL Earthing Materials | 4d | 2026-02-02 A | 2026-02-05 A | DMM2-Eng-PQ-0145 | 100% |  |
|  | Landscape | **Landscape Works** |  | 2025-10-24 | 2026-05-16 |  |  |  |
| DMM2-Eng-PQ-1118 |  | Review & Approval for Geotextile Layers Materials | 6d | 2025-10-24 A | 2025-10-30 A | DMM2-Eng-PQ-08 | 100% |  |
| DMM2-Eng-PQ-1178 |  | Review & Approval Prepare & Submit for Fences (MODON) Materials | 2d | 2025-11-18 A | 2025-11-19 A | DMM2-Eng-PQ-019 | 100% |  |
| DMM2-Eng-PQ-1158 |  | Review & Approval for Gravel/Stone Mulch Materials | 2d | 2026-01-04 A | 2026-01-05 A | DMM2-Eng-PQ-017 | 100% |  |
| DMM2-Eng-PQ-1098 |  | Review & Approval for Trees Materials | 3.75d | 2026-02-05 A | 2026-02-09 A | DMM2-Eng-PQ-06, DMM2-Eng-PQ-148 | 100% |  |
| DMM2-Eng-PQ-1108 |  | Review & Approval for Ornamental Grasses Materials | 4d | 2026-02-05 A | 2026-02-09 A | DMM2-Eng-PQ-07, DMM2-Eng-PQ-1138 | 100% |  |
| DMM2-Eng-PQ-1128 |  | Review & Approval for Plastic edge Materials | 13d | 2026-02-05 A | 2026-02-21 A | DMM2-Eng-PQ-09 | 100% |  |
| DMM2-Eng-PQ-1138 |  | Review & Approval for Large Shrubs Materials | 1.75d | 2026-02-05 A | 2026-02-07 A | DMM2-Eng-PQ-010, DMM2-Eng-PQ-1148 | 100% |  |
| DMM2-Eng-PQ-1148 |  | Review & Approval for Plants Materials | 1.75d | 2026-02-05 A | 2026-02-07 A | DMM2-Eng-PQ-016, DMM2-Eng-PQ-1098 | 100% |  |
| DMM2-Eng-PQ-1168 |  | Review & Approval for Fences (ZATCA HCIS) Materials | 4d | 2026-05-12 A | 2026-05-16 A | DMM2-Eng-PQ-018 | 100% |  |
| DMM2-Eng-PQ-1188 |  | Review & Approval for Vehicle Steel Gate Materials | 4d | 2026-05-12 A | 2026-05-16 A | DMM2-Eng-PQ-020 | 100% |  |
| DMM2-Eng-PQ-1198 |  | Review & Approval for Vehicle and Pedestrian Steel Gate Materials | 4d | 2026-05-12 A | 2026-05-16 A | DMM2-Eng-PQ-021 | 100% |  |
|  | Guard Room | **Guard Rooms** |  | 2025-10-01 | 2026-10-25 |  |  |  |
|  | GR MAT Civil | **Civil & Architecture** |  | 2025-10-20 | 2026-08-13 |  |  |  |
| DMM2-Eng-PQ-1208 |  | Review & Approval for Lean Concrete Materials | 2d | 2025-10-20 A | 2025-10-21 A | DMM2-Eng-PQ-022 | 100% |  |
| DMM2-Eng-PQ-1228 |  | Review & Approval for Screed Concrete Materials | 2d | 2025-10-20 A | 2025-10-21 A | DMM2-Eng-PQ-024, DMM2-Eng-PQ-1338 | 100% |  |
| DMM2-Eng-PQ-1238 |  | Review & Approval for Foam Concrete Materials | 2d | 2025-10-20 A | 2025-10-21 A | DMM2-Eng-PQ-025 | 100% |  |
| DMM2-Eng-PQ-1248 |  | Review & Approval for Reinforced Concrete Materials | 2d | 2025-11-13 A | 2025-11-15 A | DMM2-Eng-PQ-026 | 100% |  |
| DMM2-Eng-PQ-1218 |  | Review & Approval for Stone Coping Materials | 3d | 2025-12-04 A | 2025-12-07 A | DMM2-Eng-PQ-023 | 100% |  |
| DMM2-Eng-PQ-1288 |  | Review & Approval for Water proofing Membrane Materials | 3d | 2025-12-04 A | 2025-12-07 A | DMM2-Eng-PQ-030, DMM2-Eng-PQ-1238 | 100% |  |
| DMM2-Eng-PQ-1258 |  | Review & Approval for Vapor Retarders Materials | 3d | 2025-12-09 A | 2025-12-11 A | DMM2-Eng-PQ-027 | 100% |  |
| DMM2-Eng-PQ-1268 |  | Review & Approval for Board Insulation Materials | 3d | 2025-12-09 A | 2025-12-11 A | DMM2-Eng-PQ-028 | 100% |  |
| DMM2-Eng-PQ-1358 |  | Review & Approval for Wood Doors Materials | 2d | 2026-01-10 A | 2026-01-11 A | DMM2-Eng-PQ-037, DMM2-Eng-PQ-1348 | 100% |  |
| DMM2-Eng-PQ-1318 |  | Review & Approval for gypsum Board Suspended Ceiling Materials | 1d | 2026-01-19 A | 2026-01-19 A | DMM2-Eng-PQ-033, DMM2-Eng-PQ-1268 | 100% |  |
| DMM2-Eng-PQ-1368 |  | Review & Approval for Aluminum Windows Materials | 6d | 2026-04-22 A | 2026-04-28 A | DMM2-Eng-PQ-038 | 100% |  |
| DMM2-Eng-PQ-1328 |  | Review & Approval for Painting Materials | 7d | 2026-04-28 A | 2026-05-05 A | DMM2-Eng-PQ-034 | 100% |  |
| DMM2-Eng-PQ-1278 |  | Review & Approval for Fluid-Applied Water Proofing Paint Materials | 6d | 2026-05-10 A | 2026-05-16 A | DMM2-Eng-PQ-029 | 100% |  |
| DMM2-Eng-PQ-1348 |  | Review & Approval for Steel Doors Materials | 5d | 2026-05-13 A | 2026-05-18 A | DMM2-Eng-PQ-036 | 100% |  |
| DMM2-Eng-PQ-1298 |  | Review & Approval for Concrete Masonry Materials | 3d | 2026-05-16 A | 2026-05-18 A | DMM2-Eng-PQ-031 | 100% |  |
| DMM2-Eng-PQ-1308 |  | Review & Approval for Porcelain Flooring Tiles Materials | 3d | 2026-08-08 A | 2026-08-10 A | DMM2-Eng-PQ-032, DMM2-Eng-PQ-1298 | 100% |  |
| DMM2-Eng-PQ-1338 |  | Review & Approval for Raised Floor System Materials | 2d | 2026-08-12 A | 2026-08-13 A | DMM2-Eng-PQ-035 | 100% |  |
|  | GR MAT Mech | **Mechanical** |  | 2025-10-01 | 2026-10-25 |  |  |  |
| DMM2-Eng-PQ-1498 |  | Review & Approval for Fire Extinguishers (CO2 & Powder) Materials | 2d | 2025-10-01 A | 2025-10-02 A | DMM2-Eng-PQ-051 | 100% |  |
| DMM2-Eng-PQ-1388 |  | Review & Approval for uPVC Pipes Materials | 2d | 2025-11-11 A | 2025-11-12 A | DMM2-Eng-PQ-040 | 100% |  |
| DMM2-Eng-PQ-1458 |  | Review & Approval for Manhole Materials | 2d | 2025-11-11 A | 2025-11-12 A | DMM2-Eng-PQ-047 | 100% |  |
| DMM2-Eng-PQ-1398 |  | Review & Approval for PPR Pipes Materials | 1d | 2026-01-19 A | 2026-01-19 A | DMM2-Mob-09 | 100% |  |
| DMM2-Eng-PQ-1418 |  | Review & Approval for Scupper Materials | 3d | 2026-07-20 A | 2026-07-22 A | DMM2-Eng-PQ-043 | 100% |  |
| DMM2-Eng-PQ-1378 |  | Review & Approval for Exhaust Axial Fans Materials | 9d | 2026-08-30 A | 2026-09-08 A | DMM2-Eng-PQ-039 | 100% |  |
| DMM2-Eng-PQ-1408 |  | Review & Approval for DX Wall Mounted Split/AC Materials | 6d | 2026-10-10 | 2026-10-15 | DMM2-Eng-PQ-042, DMM2-Eng-PQ-041 |  | 17.32d |
| DMM2-Eng-PQ-1428 |  | Review & Approval for Clean out Materials | 4d | 2026-10-10 | 2026-10-13 | DMM2-Eng-PQ-044, DMM2-Eng-PQ-1418, DMM2-Eng-PQ-045 |  | 8.32d |

| ID | WBS | Task | Duration | Start | Finish | Predecessors | Complete | Total float |
| --- | --- | --- | --- | --- | --- | --- | --- | --- |
| DMM2-Eng-PQ-1468 |  | Review & Approval for Shower Materials | 6d | 2026-10-10 | 2026-10-15 | DMM2-Eng-PQ-048 |  | 17.32d |
| DMM2-Eng-PQ-1478 |  | Review & Approval for Toilet Materials | 6d | 2026-10-12 | 2026-10-18 | DMM2-Eng-PQ-049, DMM2-Eng-MS-378_R |  | 15.32d |
| DMM2-Eng-PQ-1438 |  | Review & Approval for Floor Drain Materials | 4d | 2026-10-14 | 2026-10-18 | DMM2-Eng-PQ-045, DMM2-Eng-PQ-1428, DMM2-Eng-PQ-044 |  | 8.32d |
| DMM2-Eng-PQ-1488 |  | Review & Approval for Semi Pedestal Sink Materials | 6d | 2026-10-14 | 2026-10-20 | DMM2-Eng-PQ-050, DMM2-Eng-PQ-051 |  | 13.32d |
| DMM2-Eng-PQ-1448 |  | Review & Approval for Electrical Water Heater Materials | 6d | 2026-10-19 | 2026-10-25 | DMM2-Eng-PQ-046, DMM2-Eng-PQ-1438 |  | 8.32d |
|  | GR MAT Elec | **Electrical** |  | 2025-10-28 | 2026-10-15 |  |  |  |
| DMM2-Eng-PQ-1518 |  | Review & Approval for Low Voltage Cable Materials | 2d | 2025-10-28 A | 2025-10-29 A | DMM2-Eng-PQ-053 | 100% |  |
| DMM2-Eng-PQ-1568 |  | Review & Approval for Fire Alarm System Materials | 5d | 2025-12-25 A | 2025-12-30 A | DMM2-Eng-PQ-058, DMM2-Eng-PQ-1558 | 100% |  |
| DMM2-Eng-PQ-1558 |  | Review & Approval for Enclosed Switches and Circuit Breakers Materials | 2d | 2026-01-11 A | 2026-01-12 A | DMM2-Eng-PQ-057, DMM2-Eng-PQ-056 | 100% |  |
| DMM2-Eng-PQ-1508 |  | Review & Approval for Panelboards Materials | 48.25d | 2026-02-25 A | 2026-05-02 A | DMM2-Eng-PQ-052 | 100% |  |
| DMM2-Eng-PQ-1528 |  | Review & Approval for Lighting Materials | 5d | 2026-05-07 A | 2026-05-12 A | DMM2-Eng-PQ-054 | 100% |  |
| DMM2-Eng-PQ-1538 |  | Review & Approval for Wiring Devices Materials | 6d | 2026-10-07 | 2026-10-13 | DMM2-Eng-PQ-055, DMM2-Eng-PQ-1518 |  | 19.32d |
| DMM2-Eng-PQ-1548 |  | Review & Approval for Ground Wires, Rods, Pits, Clamping Materials | 6d | 2026-10-07 | 2026-10-13 | DMM2-Eng-PQ-056, DMM2-Eng-SD-58, DMM2-Eng-PQ-057 |  | 19.32d |
| DMM2-Eng-PQ-1578 |  | Review & Approval for Data and Voice System Materials | 6d | 2026-10-07 | 2026-10-13 | DMM2-Eng-PQ-059, DMM2-Eng-PQ-1568 |  | 19.32d |
| DMM2-Eng-PQ-1588 |  | Review & Approval for Data Cabinet Materials | 6d | 2026-10-07 | 2026-10-13 | DMM2-Eng-PQ-060 |  | 19.32d |
| DMM2-Eng-PQ-1598 |  | Review & Approval for Data/ Voice RJ45 Outlet Materials | 6d | 2026-10-07 | 2026-10-13 | DMM2-Eng-PQ-061 |  | 19.32d |
| DMM2-Eng-PQ-1608 |  | Review & Approval for PC Workstation Materials | 6d | 2026-10-10 | 2026-10-15 | DMM2-Eng-PQ-062 |  | 17.32d |
| DMM2-Eng-PQ-1618 |  | Review & Approval for 50 inch Screen Materials | 6d | 2026-10-10 | 2026-10-15 | DMM2-Eng-PQ-063 |  | 17.32d |
|  | MSs | **Method Statements** |  | 2025-08-28 | 2026-09-26 |  |  |  |
|  | 2 | **Submittals & Approvals** |  | 2025-08-28 | 2026-09-26 |  |  |  |
|  | Site Grading | **Earth & Road Works** |  | 2025-09-14 | 2025-09-30 |  |  |  |
| DMM2-Eng-MS-68 |  | Prepare & Submit for Earth & Road Layers Application | 7d | 2025-09-14 A | 2025-09-21 A | DMM2-Eng-SD-01 SS | 100% |  |
| DMM2-Eng-MS-78 |  | Review & Approval | 5d | 2025-09-25 A | 2025-09-30 A | DMM2-Eng-MS-68 | 100% |  |
|  | Landscape | **Landscape Works** |  | 2025-12-14 | 2026-01-18 |  |  |  |
| DMM2-Eng-MS-88 |  | Prepare & Submit (Components Installation, Trees, Fences & Gates, etc..) | 29.7d | 2025-12-14 A | 2026-01-17 A | DMM2-Eng-MS-68 SS | 100% |  |
| DMM2-Eng-MS-98 |  | Review & Approval | 18.33d | 2025-12-28 A | 2026-01-18 A | DMM2-Eng-MS-88 | 100% |  |
|  | Guard Room | **Guard Rooms** |  | 2025-09-30 | 2026-09-24 |  |  |  |
|  | 1 | **Civil & Architecture** |  | 2025-09-30 | 2025-10-15 |  |  |  |
| DMM2-Eng-MS-108 |  | Prepare & Submit (Earthwork, Concrete, Finishes) | 7d | 2025-09-30 A | 2025-10-07 A | DMM2-Eng-MS-88 | 100% |  |
| DMM2-Eng-MS-118 |  | Review & Approval | 7d | 2025-10-08 A | 2025-10-15 A | DMM2-Eng-MS-108, DMM2-Eng-MS-98 | 100% |  |
|  | 3 | **Mechanical** |  | 2026-05-17 | 2026-05-31 |  |  |  |
| DMM2-Eng-MS-348 |  | Prepare & Submit (Components Installation) & Testing | 0.63d | 2026-05-17 A | 2026-05-17 A | DMM2-Eng-MS-108 SS | 100% |  |
| DMM2-Eng-MS-358 |  | Review & Approval | 0.94d | 2026-05-31 A | 2026-05-31 A | DMM2-Eng-MS-348 | 100% |  |
|  | 2 | **Electrical** |  | 2025-12-08 | 2026-09-24 |  |  |  |
| DMM2-Eng-MS-368 |  | Prepare & Submit (Components Installation) & Testing | 56.77d | 2025-12-08 A | 2026-02-11 A | DMM2-Eng-MS-348 SS | 100% |  |
| DMM2-Eng-MS-378 |  | Review & Approval (70.11% Completed) | 225d | 2025-12-10 A | 2026-09-15 A | DMM2-Eng-MS-368 | 100% |  |
| DMM2-Eng-MS-378_R |  | Review & Approval(Rem) | 1d | 2026-09-20 A | 2026-09-24 A | DMM2-Eng-MS-368, DMM2-Eng-MS-378 | 100% |  |
|  | SDS | **Wet Networks & Stations** |  | 2025-08-28 | 2026-09-26 |  |  |  |
|  | Sewer | **Sewerage Network** |  | 2025-09-08 | 2025-09-30 |  |  |  |
| DMM2-Eng-MS-128 |  | Prepare & Submit | 13d | 2025-09-08 A | 2025-09-22 A | DMM2-Eng-MS-368 | 100% |  |
| DMM2-Eng-MS-138 |  | Review & Approval | 7d | 2025-09-22 A | 2025-09-30 A | DMM2-Eng-MS-128, DMM2-Eng-MS-78, DMM2-Eng-MS-358 | 100% |  |
|  | Storm | **Storm Network** |  | 2025-08-28 | 2025-09-22 |  |  |  |
| DMM2-Eng-MS-158 |  | Review & Approval | 7d | 2025-08-28 A | 2025-09-04 A | DMM2-Eng-MS-148, DMM2-Eng-MS-118 | 100% |  |
| DMM2-Eng-MS-148 |  | Prepare & Submit | 13d | 2025-09-08 A | 2025-09-22 A | DMM2-Eng-MS-128 | 100% |  |
|  | Potable | **Potable Network** |  | 2025-09-01 | 2025-09-22 |  |  |  |
| DMM2-Eng-MS-178 |  | Review & Approval | 5d | 2025-09-01 A | 2025-09-06 A | DMM2-Eng-MS-168, DMM2-Eng-MS-138 | 100% |  |
| DMM2-Eng-MS-168 |  | Prepare & Submit | 13d | 2025-09-08 A | 2025-09-22 A | DMM2-Eng-MS-148 | 100% |  |
|  | TSE | **TSE Network** |  | 2025-09-01 | 2025-09-22 |  |  |  |
| DMM2-Eng-MS-198 |  | Review & Approval | 5d | 2025-09-01 A | 2025-09-06 A | DMM2-Eng-MS-188 | 100% |  |
| DMM2-Eng-MS-188 |  | Prepare & Submit | 13d | 2025-09-08 A | 2025-09-22 A | DMM2-Eng-MS-168 SS | 100% |  |
|  | Fire Fighting | **Fire Fighting Network** |  | 2025-09-01 | 2025-09-22 |  |  |  |
| DMM2-Eng-MS-218 |  | Review & Approval | 7d | 2025-09-01 A | 2025-09-08 A | DMM2-Eng-MS-208 | 100% |  |
| DMM2-Eng-MS-208 |  | Prepare & Submit | 13d | 2025-09-08 A | 2025-09-22 A | DMM2-Eng-MS-188 SS | 100% |  |
|  | Pot Pump St. | **Potable Water Pump Station** |  | 2025-12-13 | 2026-09-26 |  |  |  |
| DMM2-Eng-MS-228 |  | Prepare & Submit (90.63% Completed) | 223d | 2025-12-13 A | 2026-09-15 A | DMM2-Eng-MS-208 | 100% |  |
| DMM2-Eng-MS-238 |  | Review & Approval (90.63% Completed) | 222d | 2025-12-14 A | 2026-09-15 A | DMM2-Eng-MS-158, DMM2-Eng-MS-228 SS | 100% |  |
| DMM2-Eng-MS-238_R |  | Review & Approval(Rem) | 1d | 2026-09-20 A | 2026-09-22 A | DMM2-Eng-MS-158, DMM2-Eng-MS-228_R SS, DMM2-Eng-MS-238 | 100% |  |
| DMM2-Eng-MS-228_R |  | Prepare & Submit(Rem) | 1d | 2026-09-23 A | 2026-09-26 A | DMM2-Eng-MS-208, DMM2-Eng-MS-228 | 100% |  |
|  | Sewer Lift St. | **Sewer Lift Station** |  | 2025-12-13 | 2026-09-17 |  |  |  |
| DMM2-Eng-MS-248 |  | Prepare & Submit (90.63% Completed) | 223d | 2025-12-13 A | 2026-09-15 A | DMM2-Eng-MS-228 SS | 100% |  |
| DMM2-Eng-MS-258 |  | Review & Approval (90.63% Completed) | 222d | 2025-12-14 A | 2026-09-15 A | DMM2-Eng-MS-198, DMM2-Eng-MS-178, DMM2-Eng-MS-248 SS | 100% |  |
| DMM2-Eng-MS-248_R |  | Prepare & Submit(Rem) | 1d | 2026-09-17 A | 2026-09-17 A | DMM2-Eng-MS-228_R SS, DMM2-Eng-MS-248, DMM2-Eng-MS-238_R | 100% |  |
| DMM2-Eng-MS-258_R |  | Review & Approval(Rem) | 1d | 2026-09-17 A | 2026-09-17 A | DMM2-Eng-MS-198, DMM2-Eng-MS-178, DMM2-Eng-MS-248_R SS, DMM2-Eng-MS-258 | 100% |  |
|  | 1 | **Dry Networks** |  | 2025-10-04 | 2025-10-21 |  |  |  |
|  | MV | **Medium Voltage Network** |  | 2025-10-04 | 2025-10-21 |  |  |  |
| DMM2-Eng-MS-268 |  | Prepare & Submit | 5d | 2025-10-04 A | 2025-10-08 A | DMM2-Eng-MS-208 | 100% |  |
| DMM2-Eng-MS-278 |  | Review & Approval | 10d | 2025-10-11 A | 2025-10-21 A | DMM2-Eng-MS-268, DMM2-Eng-MS-218 | 100% |  |
|  | LV | **Low Voltage Network** |  | 2025-10-04 | 2025-10-21 |  |  |  |
| DMM2-Eng-MS-288 |  | Prepare & Submit | 5d | 2025-10-04 A | 2025-10-08 A | DMM2-Eng-MS-268 | 100% |  |
| DMM2-Eng-MS-298 |  | Review & Approval | 10d | 2025-10-11 A | 2025-10-21 A | DMM2-Eng-MS-288 | 100% |  |

| ID | WBS | Task | Duration | Start | Finish | Predecessors | Complete | Total float |
| --- | --- | --- | --- | --- | --- | --- | --- | --- |
|  | Telecom | **Telecommunication Network** |  | 2025-10-04 | 2025-10-21 |  |  |  |
| DMM2-Eng-MS-308 |  | Prepare & Submit | 5d | 2025-10-04 A | 2025-10-08 A | DMM2-Eng-MS-288 SS | 100% |  |
| DMM2-Eng-MS-318 |  | Review & Approval | 10d | 2025-10-11 A | 2025-10-21 A | DMM2-Eng-MS-308 | 100% |  |
|  | SL | **Street Lighting** |  | 2025-10-04 | 2025-10-21 |  |  |  |
| DMM2-Eng-MS-328 |  | Prepare & Submit | 5d | 2025-10-04 A | 2025-10-08 A | DMM2-Eng-MS-308 | 100% |  |
| DMM2-Eng-MS-338 |  | Review & Approval | 10d | 2025-10-11 A | 2025-10-21 A | DMM2-Eng-MS-328, DMM2-Eng-MS-318, DMM2-Eng-MS-298, DMM2-Eng-MS-278 | 100% |  |
|  | Procurement | **Procurement** |  | 2025-09-25 | 2026-12-29 |  |  |  |
|  | PR & PO | **PR & PO** |  | 2025-09-25 | 2026-10-27 |  |  |  |
|  | Site Grading | **Earth & Road Works** |  | 2025-10-09 | 2026-10-27 |  |  |  |
| DMM2-Proc-PO-04 |  | PR & PO for Subgrade Materials | 6d | 2025-10-09 A | 2025-10-15 A | DMM2-Eng-PQ-178, DMM2-Mob-012, DMM2-Eng-SD-02 | 100% |  |
| DMM2-Proc-PO-02 |  | PR & PO for Agg. Base Coarse | 4.37d | 2025-10-16 A | 2025-10-21 A | DMM2-Eng-PQ-158, DMM2-Mob-012, DMM2-Eng-SD-02 | 100% |  |
| DMM2-Proc-PO-01 |  | PR & PO for Embankment & Backfilling Materials | 6d | 2025-10-18 A | 2025-10-23 A | DMM2-Eng-PQ-148, DMM2-Mob-012, DMM2-Eng-SD-02 | 100% |  |
| DMM2-Proc-PO-03 |  | PR & PO for Asphalt Materials | 6d | 2025-11-12 A | 2025-11-18 A | DMM2-Eng-PQ-168, DMM2-Mob-012, DMM2-Eng-SD-02 | 100% |  |
| DMM2-Proc-PO-06 |  | PR & PO for Interlock Materials | 2d | 2026-02-01 A | 2026-02-02 A | DMM2-Eng-PQ-198, DMM2-Mob-012, DMM2-Eng-SD-02, DMM2-Proc-PO-05 | 100% |  |
| DMM2-Proc-PO-08 |  | PR & PO for Wheels Stopper (precast concrete) Materials | 2d | 2026-02-04 A | 2026-02-05 A | DMM2-Eng-PQ-218, DMM2-Mob-012, DMM2-Eng-SD-02 | 100% |  |
| DMM2-Proc-PO-148 |  | PR & PO for Concrete Materials | 4d | 2026-02-04 A | 2026-02-08 A | DMM2-Eng-PQ-1928, DMM2-Mob-012, DMM2-Eng-SD-02 | 100% |  |
| DMM2-Proc-PO-05 |  | PR & PO for Curbstone Materials | 2d | 2026-02-05 A | 2026-02-07 A | DMM2-Eng-PQ-188, DMM2-Mob-012, DMM2-Eng-SD-02, DMM2-Proc-PO-08 | 100% |  |
| DMM2-Proc-PO-09 |  | PR & PO for Traffic Signs Materials | 2d | 2026-10-07 | 2026-10-08 | DMM2-Eng-PQ-228, DMM2-Mob-012, DMM2-Eng-SD-02, DMM2-Proc-PO-148, DMM2-Proc-PO-03 |  | 21.32d |
| DMM2-Proc-PO-07 |  | PR & PO for Pavement Markings Materials | 2d | 2026-10-10 | 2026-10-11 | DMM2-Eng-PQ-208, DMM2-Mob-012, DMM2-Eng-SD-02, DMM2-Proc-PO-06, DMM2-Proc-PO-09, DMM2-Proc-PO-01 |  | 21.32d |
| DMM2-Proc-PO-010 |  | PR & PO for ground Mounted Information Signs Materials | 2d | 2026-10-26 | 2026-10-27 | DMM2-Eng-PQ-238, DMM2-Mob-012, DMM2-Eng-SD-02, DMM2-Proc-PO-0100, DMM-Mil-4, DMM2-Proc-PO-07, DMM2-Proc-PO-01 |  | 9.32d |
|  | Wet | **Wet Networks & Stations** |  | 2025-09-25 | 2026-10-22 |  |  |  |
|  | Storm | **Storm Network** |  | 2025-10-14 | 2025-12-28 |  |  |  |
| DMM2-Proc-PO-011 |  | PR & PO for GRP Pipes Materials | 4d | 2025-10-14 A | 2025-10-19 A | DMM2-Eng-PQ-248, DMM2-Eng-SD-09 | 100% |  |
| DMM2-Proc-PO-012 |  | PR & PO for Steel Reinforcement Materials | 2.87d | 2025-10-27 A | 2025-10-29 A | DMM2-Eng-PQ-258, DMM2-Eng-SD-09 | 100% |  |
| DMM2-Proc-PO-015 |  | PR & PO for uPVC Pipes Materials | 6d | 2025-10-27 A | 2025-11-03 A | DMM2-Eng-PQ-288, DMM2-Eng-SD-09, DMM2-Proc-PO-011 | 100% |  |
| DMM2-Proc-PO-013 |  | PR & PO for Inlet Manholes Materials | 2d | 2025-12-27 A | 2025-12-28 A | DMM2-Eng-PQ-268, DMM2-Eng-SD-09, DMM2-Proc-PO-011 | 100% |  |
| DMM2-Proc-PO-014 |  | PR & PO for Concrete Chambers & Catch Basin Materials | 2d | 2025-12-27 A | 2025-12-28 A | DMM2-Eng-PQ-278, DMM2-Eng-SD-09 | 100% |  |
|  | Sewer | **Sewerage Network** |  | 2025-10-12 | 2026-10-08 |  |  |  |
| DMM2-Proc-PO-016 |  | PR & PO for HDPE Pipes Materials | 6d | 2025-10-12 A | 2025-10-18 A | DMM2-Eng-PQ-298, DMM2-Eng-SD-08 | 100% |  |
| DMM2-Proc-PO-018 |  | PR & PO for Valves Materials | 1.75d | 2026-02-01 A | 2026-02-02 A | DMM2-Eng-PQ-318, DMM2-Eng-SD-08, DMM2-Proc-PO-016 | 100% |  |
| DMM2-Proc-PO-017 |  | PR & PO for Valves Chambers Materials | 2d | 2026-04-09 A | 2026-04-11 A | DMM2-Eng-PQ-308, DMM2-Eng-SD-08, DMM2-Proc-PO-018 | 100% |  |
| DMM2-Proc-PO-019 |  | PR & PO for Discharge Chamber Materials | 2d | 2026-10-07 | 2026-10-08 | DMM2-Eng-PQ-328, DMM2-Eng-SD-08, DMM2-Proc-PO-017, DMM2-Proc-PO-011 |  | 96.32d |
|  | Potable | **Potable Network** |  | 2025-10-12 | 2026-04-11 |  |  |  |
| DMM2-Proc-PO-020 |  | PR & PO for HDPE Pipes Materials | 6d | 2025-10-12 A | 2025-10-19 A | DMM2-Eng-PQ-338, DMM2-Eng-SD-012, DMM2-Proc-PO-016, DMM2-Proc-PO-0112 | 100% |  |
| DMM2-Proc-PO-023 |  | PR & PO for Flow Meter Materials | 6d | 2025-11-14 A | 2025-11-20 A | DMM2-Eng-PQ-368, DMM2-Eng-SD-012, DMM2-Proc-PO-022 | 100% |  |
| DMM2-Proc-PO-021 |  | PR & PO for Valves Materials | 1.75d | 2026-02-01 A | 2026-02-02 A | DMM2-Eng-PQ-348, DMM2-Eng-SD-012, DMM2-Proc-PO-020 | 100% |  |
| DMM2-Proc-PO-022 |  | PR & PO for Valves Chambers Materials | 2d | 2026-04-09 A | 2026-04-11 A | DMM2-Eng-PQ-358, DMM2-Eng-SD-012, DMM2-Proc-PO-021 | 100% |  |
|  | TSE | **TSE Network** |  | 2025-10-11 | 2026-02-28 |  |  |  |
| DMM2-Proc-PO-024 |  | PR & PO for HDPE Pipes Materials | 6d | 2025-10-11 A | 2025-10-16 A | DMM2-Eng-PQ-378, DMM2-Eng-SD-014, DMM2-Proc-PO-020, DMM2-Proc-PO-025, DMM2-Proc-PO-026 | 100% |  |
| DMM2-Proc-PO-026 |  | PR & PO for Valves Materials | 7d | 2026-01-13 A | 2026-01-20 A | DMM2-Eng-PQ-398, DMM2-Eng-SD-014 | 100% |  |
| DMM2-Proc-PO-025 |  | PR & PO for Solenoid Primary Control Valves Materials | 3d | 2026-02-24 A | 2026-02-28 A | DMM2-Eng-PQ-388, DMM2-Eng-SD-014 | 100% |  |
|  | Fire Fighting | **Fire Fighting Network** |  | 2025-09-25 | 2026-04-11 |  |  |  |
| DMM2-Proc-PO-158 |  | PR & PO for Fire Hydrant Materials | 6d | 2025-09-25 A | 2025-10-02 A | DMM2-Eng-PQ-1728, DMM2-Eng-SD-016, DMM2-Proc-PO-028 | 100% |  |
| DMM2-Proc-PO-027 |  | PR & PO for HDPE Pipes Materials | 6d | 2025-10-09 A | 2025-10-16 A | DMM2-Eng-PQ-408, DMM2-Eng-SD-016, DMM2-Proc-PO-024 | 100% |  |
| DMM2-Proc-PO-028 |  | PR & PO for Valves Materials | 1.75d | 2026-02-01 A | 2026-02-02 A | DMM2-Eng-PQ-418, DMM2-Eng-SD-016, DMM2-Proc-PO-027 | 100% |  |
| DMM2-Proc-PO-029 |  | PR & PO for Valves Chambers Materials | 2d | 2026-04-09 A | 2026-04-11 A | DMM2-Eng-PQ-428, DMM2-Eng-SD-016, DMM2-Proc-PO-158 | 100% |  |
|  | Pot Pump St. | **Potable Water Pump Station** |  | 2025-10-29 | 2026-10-22 |  |  |  |
|  | 1 | **Civil & Architecture** |  | 2026-10-07 | 2026-10-15 |  |  |  |
| DMM2-Proc-PO-030 |  | PR & PO for Stairs Materials | 2d | 2026-10-07 | 2026-10-08 | DMM2-Eng-PQ-438, DMM2-Eng-SD-018 |  | 1.32d |
| DMM2-Proc-PO-031 |  | PR & PO for CMU Walls Materials | 2d | 2026-10-07 | 2026-10-08 | DMM2-Eng-PQ-448, DMM2-Eng-SD-018 |  | 111.32d |
| DMM2-Proc-PO-035 |  | PR & PO for Gravel Materials | 2d | 2026-10-07 | 2026-10-08 | DMM2-Eng-PQ-488, DMM2-Eng-SD-018 |  | 50.32d |
| DMM2-Proc-PO-032 |  | PR & PO for Stainless Steel Ladder Materials | 2d | 2026-10-10 | 2026-10-11 | DMM2-Eng-PQ-458 SS, DMM2-Eng-SD-018, DMM2-Proc-PO-030, DMM2-Proc-PO-0143, DMM2-Proc-PO-0117 |  | 1.32d |
| DMM2-Proc-PO-034 |  | PR & PO for Metal Railing Materials | 2d | 2026-10-12 | 2026-10-13 | DMM2-Eng-PQ-478 SS, DMM2-Eng-SD-018, DMM2-Proc-PO-032 |  | 1.32d |
| DMM2-Proc-PO-036 |  | PR & PO for Handrail Materials | 2d | 2026-10-12 | 2026-10-13 | DMM2-Eng-PQ-498, DMM2-Eng-SD-018, DMM2-Proc-PO-034 SS |  | 1.32d |
| DMM2-Proc-PO-033 |  | PR & PO for Steel shutter Door Materials | 2d | 2026-10-14 | 2026-10-15 | DMM2-Eng-PQ-468, DMM2-Eng-SD-018, DMM2-Proc-PO-036 |  | 21.32d |
|  | 3 | **Mechanical** |  | 2025-10-29 | 2026-10-22 |  |  |  |
| DMM2-Proc-PO-037 |  | PR & PO for Water Pumps Materials | 10d | 2025-10-29 A | 2025-11-09 A | DMM2-Eng-PQ-508, DMM2-Eng-SD-018 | 100% |  |
| DMM2-Proc-PO-038 |  | PR & PO for Fire Pumps Materials | 10d | 2025-11-02 A | 2025-11-12 A | DMM2-Eng-PQ-518, DMM2-Eng-SD-018, DMM2-Proc-PO-037 | 100% |  |
| DMM2-Proc-PO-043 |  | PR & PO for FM200 Supression System Materials | 10d | 2025-11-02 A | 2025-11-13 A | DMM2-Eng-PQ-568, DMM2-Eng-SD-018 | 100% |  |
| DMM2-Proc-PO-040 |  | PR & PO for OverHead Crane Materials | 2d | 2026-01-06 A | 2026-01-07 A | DMM2-Eng-PQ-538, DMM2-Eng-SD-018, DMM2-Proc-PO-039 | 100% |  |
| DMM2-Proc-PO-168 |  | PR & PO for Gate Valves Materials | 2d | 2026-01-10 A | 2026-01-11 A | DMM2-Eng-PQ-1788, DMM2-Eng-SD-018, DMM2-Proc-PO-040 | 100% |  |
| DMM2-Proc-PO-178 |  | PR & PO for Electromagnetic Flow Meters | 7.99d | 2026-01-17 A | 2026-01-26 A | DMM2-Eng-PQ-1808, DMM2-Eng-SD-018, DMM2-Eng-PQ-628 | 100% |  |
| DMM2-Proc-PO-039 |  | PR & PO for Butterfly Valve Materials | 1d | 2026-01-26 A | 2026-01-26 A | DMM2-Eng-PQ-528, DMM2-Eng-SD-018, DMM2-Proc-PO-038 | 100% |  |
| DMM2-Proc-PO-042 |  | PR & PO for Sand Trap Louver Materials | 2d | 2026-10-07 | 2026-10-08 | DMM2-Eng-PQ-558, DMM2-Eng-SD-018 |  | 2.32d |
| DMM2-Proc-PO-188 |  | PR & PO for Fans Materials | 2d | 2026-10-07 | 2026-10-08 | DMM2-Eng-PQ-1828, DMM2-Eng-SD-018, DMM2-Eng-PQ-828 |  | 20.32d |
| DMM2-Proc-PO-198 |  | PR & PO for Louvers Materials | 2d | 2026-10-07 | 2026-10-08 | DMM2-Eng-PQ-1838, DMM2-Eng-SD-018, DMM2-Eng-PQ-1088 |  | 40.32d |
| DMM2-Proc-PO-041 |  | PR & PO for Strainers Materials | 2d | 2026-10-10 | 2026-10-11 | DMM2-Eng-PQ-548, DMM2-Eng-SD-018, DMM2-Proc-PO-038, DMM2-Proc-PO-042 |  | 2.32d |
| DMM2-Proc-PO-045 |  | PR & PO for Exhaust Fans Materials | 2d | 2026-10-12 | 2026-10-13 | DMM2-Eng-PQ-588, DMM2-Eng-SD-018, DMM2-Proc-PO-041 |  | 2.32d |
| DMM2-Proc-PO-050 |  | PR & PO for Trench Drain Materials | 2d | 2026-10-13 | 2026-10-14 | DMM2-Eng-PQ-638, DMM2-Eng-SD-018, DMM2-Proc-PO-168, DMM2-Proc-Delv-2648_R |  | 38.32d |
| DMM2-Proc-PO-044 |  | PR & PO for Hose Bibb Materials | 2d | 2026-10-14 | 2026-10-15 | DMM2-Eng-PQ-578, DMM2-Eng-SD-018, DMM2-Eng-PQ-698 |  | 15.32d |

| ID | WBS | Task | Duration | Start | Finish | Predecessors | Complete | Total float |
| --- | --- | --- | --- | --- | --- | --- | --- | --- |
| DMM2-Proc-PO-046 |  | PR & PO for Chlorine Cylinder Racks Materials | 2d | 2026-10-14 | 2026-10-15 | DMM2-Eng-PQ-598, DMM2-Eng-SD-018, DMM2-Proc-PO-045 |  | 2.32d |
| DMM2-Proc-PO-047 |  | PR & PO for Chlorinators Materials | 2d | 2026-10-17 | 2026-10-18 | DMM2-Eng-PQ-608, DMM2-Eng-SD-018, DMM2-Proc-PO-046 |  | 11.32d |
| DMM2-Proc-PO-048 |  | PR & PO for Discharge Line Analyzer Materials | 2d | 2026-10-19 | 2026-10-20 | DMM2-Eng-PQ-618, DMM2-Eng-SD-018, DMM2-Proc-PO-047 |  | 11.32d |
| DMM2-Proc-PO-049 |  | PR & PO for Emergency shower Materials | 2d | 2026-10-21 | 2026-10-22 | DMM2-Eng-PQ-628, DMM2-Eng-SD-018, DMM2-Proc-PO-048, DMM2-Eng-PQ-1808 |  | 15.32d |
|  | 2 | **Electrical** |  | 2026-10-07 | 2026-10-08 |  |  |  |
| DMM2-Proc-PO-051 |  | PR & PO for Switches and Circuit Breakers Materials | 2d | 2026-10-07 | 2026-10-08 | DMM2-Eng-PQ-1848, DMM2-Eng-SD-018, DMM2-Eng-PQ-1088 |  | 55.32d |
|  | Sewer Lift St. | **Sewer Lift Station** |  | 2025-10-26 | 2026-10-13 |  |  |  |
|  | 1 | **Civil & Architecture** |  | 2026-10-07 | 2026-10-13 |  |  |  |
| DMM2-Proc-PO-052 |  | PR & PO for Metal Ladders Materials | 2d | 2026-10-07 | 2026-10-08 | DMM2-Eng-PQ-658, DMM2-Eng-SD-020 |  | 19.32d |
| DMM2-Proc-PO-054 |  | PR & PO for Internal painting (Acrylic) Materials | 2d | 2026-10-10 | 2026-10-11 | DMM2-Eng-PQ-678, DMM2-Eng-SD-020, DMM2-Proc-PO-052, DMM2-Proc-PO-097, DMM2-Eng-PQ-698 |  | 19.32d |
| DMM2-Proc-PO-055 |  | PR & PO for Signages Materials | 2d | 2026-10-10 | 2026-10-11 | DMM2-Eng-PQ-688, DMM2-Eng-SD-020, DMM2-Proc-PO-052, DMM2-Eng-PQ-1078 |  | 35.32d |
| DMM2-Proc-PO-053 |  | PR & PO for Metal Covers Materials | 2d | 2026-10-12 | 2026-10-13 | DMM2-Eng-PQ-668, DMM2-Eng-SD-020, DMM2-Proc-PO-055, DMM2-Eng-PQ-1088 |  | 36.32d |
|  | 3 | **Mechanical** |  | 2025-10-30 | 2026-10-08 |  |  |  |
| DMM2-Proc-PO-056 |  | PR & PO for Submersible Pumps Materials | 10d | 2025-10-30 A | 2025-11-10 A | DMM2-Eng-PQ-698, DMM2-Eng-SD-020, DMM2-Eng-PQ-678, DMM2-Eng-SD-018 | 100% |  |
| DMM2-Proc-PO-057 |  | PR & PO for Double Flanged DI Pipes Materials | 10d | 2025-10-30 A | 2025-11-10 A | DMM2-Eng-PQ-708, DMM2-Eng-SD-020, DMM2-Proc-PO-056 | 100% |  |
| DMM2-Proc-PO-058 |  | PR & PO for Buried Flanged DI Pipes Materials | 12.15d | 2025-10-30 A | 2025-11-13 A | DMM2-Eng-PQ-718, DMM2-Eng-SD-020, DMM2-Proc-PO-057 | 100% |  |
| DMM2-Proc-PO-059 |  | PR & PO for Geotextile Membrane Materials | 1d | 2025-11-08 A | 2025-11-09 A | DMM2-Eng-PQ-728, DMM2-Eng-SD-020, DMM2-Proc-PO-058 | 100% |  |
| DMM2-Proc-PO-064 |  | PR & PO for JIB Crane Materials | 2d | 2025-12-10 A | 2025-12-11 A | DMM2-Eng-PQ-778, DMM2-Eng-SD-020, DMM2-Eng-PQ-768 | 100% |  |
| DMM2-Proc-PO-062 |  | PR & PO for Odor Control Unit Materials | 2d | 2026-01-01 A | 2026-01-03 A | DMM2-Eng-PQ-758, DMM2-Eng-SD-020, DMM2-Proc-PO-056 | 100% |  |
| DMM2-Proc-PO-061 |  | PR & PO for Basket Screens Materials | 1d | 2026-01-03 A | 2026-01-03 A | DMM2-Eng-PQ-748, DMM2-Eng-SD-020, DMM2-Proc-PO-060 | 100% |  |
| DMM2-Proc-PO-060 |  | PR & PO for Non Return Valve (Flap) Materials | 1d | 2026-01-19 A | 2026-01-19 A | DMM2-Eng-PQ-738, DMM2-Eng-SD-020, DMM2-Proc-PO-059 | 100% |  |
| DMM2-Proc-PO-066 |  | PR & PO for Screening Container Materials | 1.19d | 2026-08-16 A | 2026-08-17 A | DMM2-Eng-PQ-798, DMM2-Eng-SD-020, DMM2-Proc-PO-062 | 100% |  |
| DMM2-Proc-PO-065 |  | PR & PO for Penstock Materials | 2d | 2026-08-19 A | 2026-08-20 A | DMM2-Eng-PQ-788, DMM2-Eng-SD-020, DMM2-Proc-PO-064, DMM2-Proc-PO-063 | 100% |  |
| DMM2-Proc-PO-063 |  | PR & PO for Surge Tank Materials | 4.42d | 2026-08-30 A | 2026-09-03 A | DMM2-Eng-PQ-768, DMM2-Eng-SD-020, DMM2-Proc-PO-059, DMM2-Proc-PO-168, DMM2-Eng-PQ-778 | 100% |  |
| DMM2-Proc-PO-067 |  | PR & PO for Scupper Materials | 2d | 2026-10-07 | 2026-10-08 | DMM2-Eng-PQ-808, DMM2-Eng-SD-020, DMM2-Proc-PO-066, DMM2-Eng-MS-258_R |  | 25.32d |
|  | 2 | **Electrical** |  | 2025-10-26 | 2026-10-08 |  |  |  |
| DMM2-Proc-PO-072 |  | PR & PO for Fuel Pump Materials | 10d | 2025-10-26 A | 2025-11-05 A | DMM2-Eng-PQ-858, DMM2-Eng-SD-020, DMM2-Proc-PO-071 | 100% |  |
| DMM2-Proc-PO-075 |  | PR & PO for Displacement Rotary Type Pump Materials | 10d | 2025-10-28 A | 2025-11-09 A | DMM2-Eng-PQ-888, DMM2-Eng-SD-020, DMM2-Proc-PO-074 | 100% |  |
| DMM2-Proc-PO-076 |  | PR & PO for Electrical Hand Holes Materials | 2d | 2025-12-08 A | 2025-12-09 A | DMM2-Eng-PQ-898, DMM2-Eng-SD-020 | 100% |  |
| DMM2-Proc-PO-080 |  | PR & PO for Process Control Wiring Materials | 1.25d | 2025-12-14 A | 2025-12-15 A | DMM2-Eng-PQ-938, DMM2-Eng-SD-020, DMM2-Proc-PO-079, DMM2-Proc-PO-208, DMM2-Proc-PO-076, DMM2-Proc-PO-077, DMM2-Eng-PQ-918 | 100% |  |
| DMM2-Proc-PO-068 |  | PR & PO for Motor Control Center (MCC) Materials | 1d | 2025-12-20 A | 2025-12-20 A | DMM2-Eng-PQ-818, DMM2-Eng-SD-020 | 100% |  |
| DMM2-Proc-PO-070 |  | PR & PO for Low Voltage Cables Materials | 1.75d | 2025-12-23 A | 2025-12-24 A | DMM2-Eng-PQ-838, DMM2-Eng-SD-020, DMM2-Proc-PO-069, DMM2-Proc-PO-080 | 100% |  |
| DMM2-Proc-PO-079 |  | PR & PO for PLC System Materials | 2d | 2025-12-28 A | 2025-12-29 A | DMM2-Eng-PQ-1908, DMM2-Eng-SD-020 | 100% |  |
| DMM2-Proc-PO-069 |  | PR & PO for Local Control Panel Materials | 2d | 2025-12-29 A | 2025-12-30 A | DMM2-Eng-PQ-828, DMM2-Eng-SD-020, DMM2-Proc-PO-068, DMM2-Proc-PO-081, DMM2-Proc-PO-0109, DMM2-Eng-PQ-1828, DMM2-Eng-SD-38 | 100% |  |
| DMM2-Proc-PO-071 |  | PR & PO for Standby Diesel Generator Materials | 4d | 2025-12-29 A | 2026-01-01 A | DMM2-Eng-PQ-848, DMM2-Eng-SD-020, DMM2-Proc-PO-070 | 100% |  |
| DMM2-Proc-PO-077 |  | PR & PO for Galvanized Steel Pole Materials | 1d | 2025-12-31 A | 2025-12-31 A | DMM2-Eng-PQ-908, DMM2-Eng-SD-020 | 100% |  |
| DMM2-Proc-PO-208 |  | PR & PO for Addressable Fire Alarm Materials | 1d | 2026-01-03 A | 2026-01-03 A | DMM2-Eng-PQ-1898, DMM2-Eng-SD-020 | 100% |  |
| DMM2-Proc-PO-073 |  | PR & PO for Automatic Transfer (Switch ATS) Materials | 2d | 2026-01-10 A | 2026-01-11 A | DMM2-Eng-PQ-868, DMM2-Eng-SD-020, DMM2-Proc-PO-072, DMM2-Proc-PO-070 | 100% |  |
| DMM2-Proc-PO-081 |  | PR & PO for Instrumentation for Process Systems Materials | 1d | 2026-01-26 A | 2026-01-26 A | DMM2-Eng-PQ-948, DMM2-Eng-SD-020 | 100% |  |
| DMM2-Proc-PO-074 |  | PR & PO for Under Ground Fuel Tank Materials | 1d | 2026-06-02 A | 2026-06-02 A | DMM2-Eng-PQ-878, DMM2-Eng-SD-020, DMM2-Proc-PO-073 | 100% |  |
| DMM2-Proc-PO-078 |  | PR & PO for Surfaced Mounted Light (LED) Materials | 2d | 2026-10-07 | 2026-10-08 | DMM2-Eng-PQ-918, DMM2-Eng-SD-020, DMM2-Eng-PQ-938 |  | 31.32d |
|  | Dry | **Dry Networks** |  | 2025-12-16 | 2026-04-06 |  |  |  |
|  | MV | **Medium Voltage Network** |  | 2025-12-25 | 2026-02-03 |  |  |  |
| DMM2-Proc-PO-082 |  | PR & PO for MV Cables Materials | 2d | 2025-12-25 A | 2025-12-27 A | DMM2-Eng-PQ-958, DMM2-Eng-SD-022 | 100% |  |
| DMM2-Proc-PO-084 |  | PR & PO for Unit Substation Materials | 2d | 2026-01-05 A | 2026-01-06 A | DMM2-Eng-PQ-978, DMM2-Eng-SD-022, DMM2-Proc-PO-083 | 100% |  |
| DMM2-Proc-PO-085 |  | PR & PO for RMU Materials | 2d | 2026-01-08 A | 2026-01-10 A | DMM2-Eng-PQ-988, DMM2-Eng-SD-022, DMM2-Proc-PO-084 | 100% |  |
| DMM2-Proc-PO-083 |  | PR & PO for Straight Joints, Termination Materials | 6.06d | 2026-01-27 A | 2026-02-03 A | DMM2-Eng-PQ-968, DMM2-Eng-SD-022, DMM2-Proc-PO-082 | 100% |  |
|  | LV | **Low Voltage Network** |  | 2025-12-24 | 2026-02-12 |  |  |  |
| DMM2-Proc-PO-086 |  | PR & PO for LV Cables Materials | 3d | 2025-12-24 A | 2025-12-27 A | DMM2-Eng-PQ-998, DMM2-Eng-SD-024 | 100% |  |
| DMM2-Proc-PO-087 |  | PR & PO for LV Pillars Materials | 8d | 2026-02-04 A | 2026-02-12 A | DMM2-Eng-PQ-1008, DMM2-Eng-SD-024, DMM2-Proc-PO-086 | 100% |  |
| DMM2-Proc-PO-209 |  | PR & PO for LV Panels Materials | 8d | 2026-02-04 A | 2026-02-12 A | DMM2-Eng-PQ-2000, DMM2-Eng-SD-024, DMM2-Proc-PO-087 | 100% |  |
|  | Telecom | **Telecommunication Network** |  | 2025-12-16 | 2025-12-31 |  |  |  |
| DMM2-Proc-PO-088 |  | PR & PO for HDPE Ducts Materials | 2d | 2025-12-16 A | 2025-12-17 A | DMM2-Eng-PQ-1018, DMM2-Eng-SD-026 | 100% |  |
| DMM2-Proc-PO-089 |  | PR & PO for Manholes Type 1&2 Materials | 3d | 2025-12-29 A | 2025-12-31 A | DMM2-Eng-PQ-1028, DMM2-Eng-SD-026, DMM2-Proc-PO-088 | 100% |  |
|  | SL | **Street Lighting** |  | 2025-12-17 | 2026-04-06 |  |  |  |
| DMM2-Proc-PO-092 |  | PR & PO for SL Poles Materials | 5d | 2025-12-17 A | 2025-12-22 A | DMM2-Eng-PQ-1058, DMM2-Eng-SD-028, DMM2-Proc-PO-091 | 100% |  |
| DMM2-Proc-PO-091 |  | PR & PO for SL Cables Materials | 3d | 2025-12-24 A | 2025-12-27 A | DMM2-Eng-PQ-1048, DMM2-Eng-SD-028, DMM2-Proc-PO-090 | 100% |  |
| DMM2-Proc-PO-093 |  | PR & PO for SL Luminares Materials | 5d | 2025-12-24 A | 2025-12-29 A | DMM2-Eng-PQ-1068, DMM2-Eng-SD-028, DMM2-Proc-PO-092 | 100% |  |
| DMM2-Proc-PO-090 |  | PR & PO for SL Pillars Materials | 8d | 2026-02-04 A | 2026-02-12 A | DMM2-Eng-PQ-1038, DMM2-Eng-SD-028 | 100% |  |
| DMM2-Proc-PO-094 |  | PR & PO for SL Earthing Materials | 11d | 2026-03-25 A | 2026-04-06 A | DMM2-Eng-PQ-1078, DMM2-Eng-SD-028, DMM2-Proc-PO-093, DMM2-Proc-PO-0141, DMM2-Proc-PO-043, DMM2-Eng-SD-58, DMM2-Eng-SD-38, DMM2-Eng-PQ-1248, DMM2-Eng-SD-020, DMM2-Eng-PQ-1528, DMM2-Eng-PQ-1398 | 100% |  |
| DMM2-Proc-PO-095 |  | PR & PO for SL Drawpits Materials | 6d | 2026-03-29 A | 2026-04-04 A | DMM2-Eng-PQ-1088, DMM2-Eng-SD-028, DMM2-Proc-PO-094, DMM2-Proc-PO-0136, DMM2-Proc-PO-0132, DMM2-Proc-PO-0102, DMM2-Proc-PO-0116, DMM2-Proc-PO-0115, DMM2-Proc-PO-099, DMM2-Proc-PO-0101, DMM2-Eng-PQ-1188, DMM2-Eng-PQ-668, DMM2-Eng-SD-38, DMM2-Eng-PQ-1418, DMM2-Eng-PQ-1838, DMM2-Eng-PQ-1368, DMM2-Eng-PQ-1178, DMM2-Eng-PQ-1348, DMM2-Eng-PQ-1848, DMM2-Eng-PQ-1358, DMM2-Eng-PQ-1338, DMM2-Eng-PQ-1168, DMM2-Eng-SD-58, DMM2-Eng-PQ-1558 | 100% |  |
|  | Landscape | **Landscape Works** |  | 2025-12-09 | 2026-10-08 |  |  |  |
| DMM2-Proc-PO-098 |  | PR & PO for Geotextile Layers Materials | 2d | 2025-12-09 A | 2025-12-10 A | DMM2-Eng-PQ-1118, DMM2-Eng-SD-04 | 100% |  |
| DMM2-Proc-PO-0100 |  | PR & PO for Large Shrubs Materials | 2.25d | 2026-02-26 A | 2026-03-01 A | DMM2-Eng-PQ-1138, DMM2-Eng-SD-04 | 100% |  |
| DMM2-Proc-PO-0101 |  | PR & PO for Plants Materials | 2.25d | 2026-02-26 A | 2026-03-01 A | DMM2-Eng-PQ-1148, DMM2-Eng-SD-04 | 100% |  |
| DMM2-Proc-PO-0102 |  | PR & PO for Gravel/Stone Mulch Materials | 2.25d | 2026-02-26 A | 2026-03-01 A | DMM2-Eng-PQ-1158, DMM2-Eng-SD-04 | 100% |  |
| DMM2-Proc-PO-096 |  | PR & PO for Trees Materials | 2.25d | 2026-02-26 A | 2026-03-01 A | DMM2-Eng-PQ-1098, DMM2-Eng-SD-04 | 100% |  |
| DMM2-Proc-PO-097 |  | PR & PO for Ornamental Grasses Materials | 2.25d | 2026-02-26 A | 2026-03-01 A | DMM2-Eng-PQ-1108, DMM2-Eng-SD-04, DMM2-Eng-PQ-1198 | 100% |  |
| DMM2-Proc-PO-099 |  | PR & PO for Plastic edge Materials | 2.25d | 2026-02-26 A | 2026-03-01 A | DMM2-Eng-PQ-1128, DMM2-Eng-SD-04 | 100% |  |
| DMM2-Proc-PO-0103 |  | PR & PO for Fences (ZATCA HCIS) Materials | 2d | 2026-10-07 | 2026-10-08 | DMM2-Eng-PQ-1168, DMM2-Eng-SD-04, DMM2-Proc-PO-098, DMM2-Eng-PQ-1088 |  | 60.32d |

| ID | WBS | Task | Duration | Start | Finish | Predecessors | Complete | Total float |
| --- | --- | --- | --- | --- | --- | --- | --- | --- |
| DMM2-Proc-PO-0104 |  | PR & PO Prepare & Submit for Fences (MODON) Materials | 2d | 2026-10-07 | 2026-10-08 | DMM2-Eng-PQ-1178, DMM2-Eng-SD-04, DMM2-Eng-PQ-1088 |  | 50.32d |
| DMM2-Proc-PO-0105 |  | PR & PO for Vehicle Steel Gate Materials | 2d | 2026-10-07 | 2026-10-08 | DMM2-Eng-PQ-1188, DMM2-Eng-SD-04, DMM2-Eng-PQ-1088 |  | 40.32d |
| DMM2-Proc-PO-0106 |  | PR & PO for Vehicle and Pedestrian Steel Gate Materials | 2d | 2026-10-07 | 2026-10-08 | DMM2-Eng-PQ-1198, DMM2-Eng-SD-04, DMM2-Eng-PQ-1108 |  | 6.32d |
|  | Guard Room | **Guard Rooms** |  | 2025-10-24 | 2026-10-27 |  |  |  |
|  | GR MAT Civil | **Civil & Architecture** |  | 2025-10-24 | 2026-10-13 |  |  |  |
| DMM2-Proc-PO-0112 |  | PR & PO for Vapor Retarders Materials | 10d | 2025-10-24 A | 2025-11-04 A | DMM2-Eng-PQ-1258, DMM2-Eng-SD-06 | 100% |  |
| DMM2-Proc-PO-0115 |  | PR & PO for Water proofing Membrane Materials | 10d | 2025-10-24 A | 2025-11-04 A | DMM2-Eng-PQ-1288, DMM2-Eng-SD-06 | 100% |  |
| DMM2-Proc-PO-0109 |  | PR & PO for Screed Concrete Materials | 10d | 2026-02-02 A | 2026-02-14 A | DMM2-Eng-PQ-1228, DMM2-Eng-SD-06, DMM2-Eng-PQ-1278 | 100% |  |
| DMM2-Proc-PO-0107 |  | PR & PO for Lean Concrete Materials | 1.25d | 2026-02-04 A | 2026-02-05 A | DMM2-Eng-PQ-1208, DMM2-Eng-SD-06 | 100% |  |
| DMM2-Proc-PO-0110 |  | PR & PO for Foam Concrete Materials | 6d | 2026-02-05 A | 2026-02-12 A | DMM2-Eng-PQ-1238, DMM2-Eng-SD-06, DMM2-Eng-PQ-1218 | 100% |  |
| DMM2-Proc-PO-0116 |  | PR & PO for Concrete Masonry Materials | 5.75d | 2026-02-14 A | 2026-02-21 A | DMM2-Eng-PQ-1298, DMM2-Eng-SD-06 | 100% |  |
| DMM2-Proc-PO-0108 |  | PR & PO for Stone Coping Materials | 2d | 2026-10-07 | 2026-10-08 | DMM2-Eng-PQ-1218, DMM2-Eng-SD-06, DMM2-Proc-PO-0107, DMM2-Proc-PO-096, DMM2-Eng-PQ-1238 |  | 31.32d |
| DMM2-Proc-PO-0114 |  | PR & PO for Fluid-Applied Water Proofing Paint Materials | 2d | 2026-10-07 | 2026-10-08 | DMM2-Eng-PQ-1278, DMM2-Eng-SD-06, DMM2-Eng-PQ-1228 |  | 42.32d |
| DMM2-Proc-PO-0117 |  | PR & PO for Porcelain Flooring Tiles Materials | 2d | 2026-10-07 | 2026-10-08 | DMM2-Eng-PQ-1308, DMM2-Eng-SD-06 |  | 1.32d |
| DMM2-Proc-PO-0118 |  | PR & PO for gypsum Board Suspended Ceiling Materials | 2d | 2026-10-07 | 2026-10-08 | DMM2-Eng-PQ-1318, DMM2-Eng-SD-06 |  | 31.32d |
| DMM2-Proc-PO-0119 |  | PR & PO for Painting Materials | 2d | 2026-10-07 | 2026-10-08 | DMM2-Eng-PQ-1328, DMM2-Eng-SD-06 |  | 19.32d |
| DMM2-Proc-PO-0120 |  | PR & PO for Raised Floor System Materials | 2d | 2026-10-07 | 2026-10-08 | DMM2-Eng-PQ-1338, DMM2-Eng-SD-06, DMM2-Eng-PQ-1088 |  | 44.32d |
| DMM2-Proc-PO-0121 |  | PR & PO for Steel Doors Materials | 2d | 2026-10-07 | 2026-10-08 | DMM2-Eng-PQ-1348, DMM2-Eng-SD-06, DMM2-Eng-PQ-1088 |  | 42.32d |
| DMM2-Proc-PO-0122 |  | PR & PO for Wood Doors Materials | 2d | 2026-10-07 | 2026-10-08 | DMM2-Eng-PQ-1358, DMM2-Eng-SD-06, DMM2-Eng-PQ-1088 |  | 47.32d |
| DMM2-Proc-PO-0123 |  | PR & PO for Aluminum Windows Materials | 2d | 2026-10-07 | 2026-10-08 | DMM2-Eng-PQ-1368, DMM2-Eng-SD-06, DMM2-Eng-PQ-1088 |  | 37.32d |
| DMM2-Proc-PO-0111 |  | PR & PO for Reinforced Concrete Materials | 2d | 2026-10-10 | 2026-10-11 | DMM2-Eng-PQ-1248, DMM2-Eng-SD-06, DMM2-Proc-PO-0110, DMM2-Proc-PO-0119, B8.31 23 16.0139, DMM2-Eng-PQ-1078 |  | 19.32d |
| DMM2-Proc-PO-0113 |  | PR & PO for Board Insulation Materials | 2d | 2026-10-12 | 2026-10-13 | DMM2-Eng-PQ-1268, DMM2-Eng-SD-06, DMM2-Proc-PO-0111, B8.31 23 16.0141, DMM2-Proc-PO-094 |  | 19.32d |
|  | GR MAT Mech | **Mechanical** |  | 2025-12-04 | 2026-10-27 |  |  |  |
| DMM2-Proc-PO-0132 |  | PR & PO for Manhole Materials | 4d | 2025-12-04 A | 2025-12-08 A | DMM2-Eng-PQ-1458, DMM2-Eng-SD-38 | 100% |  |
| DMM2-Proc-PO-0136 |  | PR & PO for Fire Extinguishers (CO2 & Powder) Materials | 3d | 2025-12-06 A | 2025-12-08 A | DMM2-Eng-PQ-1498, DMM2-Eng-SD-38 | 100% |  |
| DMM2-Proc-PO-0125 |  | PR & PO for uPVC Pipes Materials | 5d | 2025-12-14 A | 2025-12-18 A | DMM2-Eng-PQ-1388, DMM2-Eng-SD-38 | 100% |  |
| DMM2-Proc-PO-0130 |  | PR & PO for Floor Drain Materials | 1.91d | 2026-08-30 A | 2026-08-31 A | DMM2-Eng-SD-38, DMM2-Eng-PQ-1088 | 100% |  |
| DMM2-Proc-PO-0124 |  | PR & PO for Exhaust Axial Fans Materials | 2d | 2026-10-07 | 2026-10-08 | DMM2-Eng-PQ-1378, DMM2-Eng-SD-38, DMM2-Eng-PQ-1388 |  | 34.32d |
| DMM2-Proc-PO-0126 |  | PR & PO for PPR Pipes Materials | 2d | 2026-10-07 | 2026-10-08 | DMM2-Eng-PQ-1398, DMM2-Eng-SD-38, DMM2-Proc-PO-0125, DMM2-Eng-PQ-1078 |  | 11.32d |
| DMM2-Proc-PO-0128 |  | PR & PO for Scupper Materials | 2d | 2026-10-07 | 2026-10-08 | DMM2-Eng-PQ-1418, DMM2-Eng-SD-38, DMM2-Eng-PQ-1088 |  | 15.32d |
| DMM2-Proc-PO-0129 |  | PR & PO for Clean out Materials | 1d | 2026-10-14 | 2026-10-14 | DMM2-Eng-PQ-1428, DMM2-Eng-SD-38 |  | 14.32d |
| DMM2-Proc-PO-0127 |  | PR & PO for DX Wall Mounted Split/AC Materials | 2d | 2026-10-17 | 2026-10-18 | DMM2-Eng-PQ-1408, DMM2-Eng-SD-38, DMM2-Proc-PO-0126, DMM2-Eng-PQ-1078 |  | 34.32d |
| DMM2-Proc-PO-0133 |  | PR & PO for Shower Materials | 2d | 2026-10-17 | 2026-10-18 | DMM2-Eng-PQ-1468, DMM2-Eng-SD-38, DMM2-Eng-PQ-1088 |  | 38.32d |
| DMM2-Proc-PO-0134 |  | PR & PO for Toilet Materials | 2d | 2026-10-19 | 2026-10-20 | DMM2-Eng-PQ-1478, DMM2-Eng-SD-38, DMM2-Eng-PQ-1088 |  | 33.32d |
| DMM2-Proc-PO-0135 |  | PR & PO for Semi Pedestal Sink Materials | 2d | 2026-10-21 | 2026-10-22 | DMM2-Eng-PQ-1488, DMM2-Eng-SD-38, DMM2-Eng-PQ-1088 |  | 34.32d |
| DMM2-Proc-PO-0131 |  | PR & PO for Electrical Water Heater Materials | 2d | 2026-10-26 | 2026-10-27 | DMM2-Eng-PQ-1448, DMM2-Eng-SD-38, DMM2-Eng-PQ-828 |  | 8.32d |
|  | GR MAT Elec | **Electrical** |  | 2025-12-16 | 2026-10-18 |  |  |  |
| DMM2-Proc-PO-0138 |  | PR & PO for Low Voltage Cable Materials | 10d | 2025-12-16 A | 2025-12-27 A | DMM2-Eng-PQ-1518, DMM2-Eng-SD-58, DMM2-Eng-PQ-1508 | 100% |  |
| DMM2-Proc-PO-0141 |  | PR & PO for Ground Wires, Rods, Pits, Clamping Materials | 1.25d | 2025-12-27 A | 2025-12-28 A | DMM2-Eng-SD-58, DMM2-Eng-PQ-056 | 100% |  |
| DMM2-Proc-PO-0137 |  | PR & PO for Panelboards Materials | 2d | 2026-10-07 | 2026-10-08 | DMM2-Eng-PQ-1508, DMM2-Eng-SD-58, DMM2-Eng-PQ-1518 |  | 36.32d |
| DMM2-Proc-PO-0139 |  | PR & PO for Lighting Materials | 2d | 2026-10-07 | 2026-10-08 | DMM2-Eng-PQ-1528, DMM2-Eng-SD-58, DMM2-Proc-PO-0138, DMM2-Eng-PQ-1078 |  | 31.32d |
| DMM2-Proc-PO-0142 |  | PR & PO for Enclosed Switches and Circuit Breakers Materials | 2d | 2026-10-07 | 2026-10-08 | DMM2-Eng-PQ-1558, DMM2-Eng-SD-58, DMM2-Eng-PQ-1088 |  | 34.32d |
| DMM2-Proc-PO-0143 |  | PR & PO for Fire Alarm System Materials | 2d | 2026-10-07 | 2026-10-08 | DMM2-Eng-PQ-1568, DMM2-Eng-SD-58 |  | 1.32d |
| DMM2-Proc-PO-0140 |  | PR & PO for Wiring Devices Materials | 2d | 2026-10-14 | 2026-10-15 | DMM2-Eng-PQ-1538, DMM2-Eng-SD-58, DMM2-Proc-PO-0139, DMM2-Proc-PO-0118, DMM2-Eng-PQ-1078 |  | 27.32d |
| DMM2-Proc-PO-0145 |  | PR & PO for Data Cabinet Materials | 2d | 2026-10-14 | 2026-10-15 | DMM2-Eng-PQ-1588, DMM2-Eng-SD-58, DMM2-Proc-PO-0141, DMM2-Proc-PO-0113 |  | 32.32d |
| DMM2-Proc-PO-0146 |  | PR & PO for Data/ Voice RJ45 Outlet Materials | 2d | 2026-10-17 | 2026-10-18 | DMM2-Eng-PQ-1598, DMM2-Eng-SD-58, DMM2-Proc-PO-0145 |  | 32.32d |
| DMM2-Proc-PO-0147 |  | PR & PO for PC Workstation Materials | 2d | 2026-10-17 | 2026-10-18 | DMM2-Eng-PQ-1608, DMM2-Eng-SD-58, DMM2-Proc-PO-0139, DMM2-Eng-PQ-1078 |  | 37.32d |
| DMM2-Proc-PO-0148 |  | PR & PO for 50 inch Screen Materials | 2d | 2026-10-17 | 2026-10-18 | DMM2-Eng-PQ-1618, DMM2-Eng-SD-58, DMM2-Eng-PQ-1088 |  | 39.32d |
|  | Mauf. & Delivery | **Manufacturing & Delivery** |  | 2025-10-05 | 2026-12-29 |  |  |  |
|  | Long Lead | **Long Lead Items** |  | 2025-10-11 | 2026-11-24 |  |  |  |
|  | Zone 01 | **Zone 01** |  | 2025-10-11 | 2026-11-01 |  |  |  |
|  | SDS | **Wet Networks & Stations** |  | 2025-10-11 | 2026-11-01 |  |  |  |
|  | Sewer | **Sewerage Network** |  | 2025-11-24 | 2026-02-16 |  |  |  |
| DMM2-Proc-Delv-1888 |  | Manuf. & Delivery for GRP Pipes Materials | 28.43d | 2025-11-24 A | 2025-12-27 A | DMM2-Proc-PO-011, B5.33 31 00.02.021 SS, DMM2-Eng-PQ-328 | 100% |  |
| DMM2-Proc-Delv-1898 |  | Manuf. & Delivery for Inlet Manholes Materials | 50.97d | 2025-12-20 A | 2026-02-16 A | DMM2-Proc-PO-013, B5.33 05 13.011 SS | 100% |  |
|  | Storm | **Storm Network** |  | 2025-11-24 | 2026-05-25 |  |  |  |
| DMM2-Proc-Delv-508 |  | Manuf. & Delivery for GRP Pipes Materials | 34.84d | 2025-11-24 A | 2026-01-03 A | DMM2-Proc-PO-011, B6.33 42 11.021 SS | 100% |  |
| DMM2-Proc-Delv-528 |  | Manuf. & Delivery for Inlet Manholes Materials | 62.15d | 2025-12-20 A | 2026-03-07 A | DMM2-Proc-PO-013, B6.33 05 13.011 SS | 100% |  |
| DMM2-Proc-Delv-538 |  | Manuf. & Delivery for Catch Basin Materials | 118d | 2025-12-27 A | 2026-05-25 A | DMM2-Proc-PO-014, B6.33 05 63.071 SS | 100% |  |
|  | Potable | **Potable Network** |  | 2025-12-03 | 2026-10-08 |  |  |  |
| DMM2-Proc-Delv-598 |  | Manuf. & Delivery for HDPE Pipes Materials | 86.21d | 2025-12-03 A | 2026-03-26 A | DMM2-Proc-PO-020 | 100% |  |
| DMM2-Proc-Delv-608 |  | Manuf. & Delivery for Valves Materials | 13.25d | 2026-02-07 A | 2026-02-24 A | DMM2-Proc-PO-021, B3.33 14 13.01.021 SS | 100% |  |
| DMM2-Proc-Delv-618 |  | Manuf. & Delivery for Valves Chambers Materials (75.00% Completed) | 107d | 2026-05-10 A | 2026-09-15 A | DMM2-Proc-PO-022, B3.33 05 63.02.011 SS | 100% |  |
| DMM2-Proc-Delv-618_R |  | Manuf. & Delivery for Valves Chambers Materials(Rem) | 4d | 2026-09-22 A | 2026-10-08 | DMM2-Proc-PO-022, B3.33 05 63.02.011 SS, DMM2-Proc-Delv-618 | 50% | 20.32d |
|  | Fire Fighting | **Fire Fighting Network** |  | 2025-10-11 | 2026-04-12 |  |  |  |
| DMM2-Proc-Delv-1958 |  | Manuf. & Delivery for Fire Hydrant Materials | 145.46d | 2025-10-11 A | 2026-04-11 A | DMM2-Proc-PO-158, B3.33 14 19.01.fh2 SS | 100% |  |
| DMM2-Proc-Delv-668 |  | Manuf. & Delivery for HDPE Pipes Materials | 102.29d | 2025-11-11 A | 2026-03-18 A | DMM2-Proc-PO-027, B3.1. 33 14 13.011 SS | 100% |  |
| DMM2-Proc-Delv-678 |  | Manuf. & Delivery for Valves Materials | 1.75d | 2026-02-28 A | 2026-03-02 A | DMM2-Proc-PO-028, B3.1. 33 14 13.021 SS | 100% |  |
| DMM2-Proc-Delv-688 |  | Manuf. & Delivery for Valves Chambers Materials | 29.5d | 2026-02-28 A | 2026-04-12 A | DMM2-Proc-PO-029, B3.33 05 63.02.42 SS | 100% |  |
|  | TSE | **TSE Network** |  | 2025-11-27 | 2026-11-01 |  |  |  |

| ID | WBS | Task | Duration | Start | Finish | Predecessors | Complete | Total float |
| --- | --- | --- | --- | --- | --- | --- | --- | --- |
| DMM2-Proc-Delv-638 |  | Manuf. & Delivery for HDPE Pipes Materials | 110.06d | 2025-11-27 A | 2026-04-18 A | DMM2-Proc-PO-024, B4.33 14 13.071 SS | 100% |  |
| DMM2-Proc-Delv-658 |  | Manuf. & Delivery for Valves Materials | 1.75d | 2026-02-28 A | 2026-03-02 A | DMM2-Proc-PO-026, B4.33 14 13.061 SS | 100% |  |
| DMM2-Proc-Delv-648 |  | Manuf. & Delivery for Solenoid Primary Control Valves Materials | 20d | 2026-10-10 | 2026-11-01 | DMM2-Proc-PO-025, B4.33 14 13.063 SS, DMM2-Proc-Delv-618_R |  | 20.32d |
|  | SDS1 | **Dry Networks** |  | 2025-12-28 | 2026-10-10 |  |  |  |
|  | MV | **Medium Voltage Network** |  | 2025-12-28 | 2026-01-04 |  |  |  |
| DMM2-Proc-Delv-1218 |  | Manuf. & Delivery for MV Cables Materials | 7d | 2025-12-28 A | 2026-01-04 A | DMM2-Proc-PO-082 | 100% |  |
|  | LV | **Low Voltage Network** |  | 2025-12-28 | 2026-04-15 |  |  |  |
| DMM2-Proc-Delv-1258 |  | Manuf. & Delivery for LV Cables Materials | 82.5d | 2025-12-28 A | 2026-04-15 A | DMM2-Proc-PO-086, B2.33 71 00 02 97 SS | 100% |  |
|  | Telecom | **Telecommunication Network** |  | 2026-02-01 | 2026-03-31 |  |  |  |
| DMM2-Proc-Delv-1278 |  | Manuf. & Delivery for HDPE Ducts Materials | 1.25d | 2026-02-01 A | 2026-02-02 A | DMM2-Proc-PO-088, B2.31 23 00.591 SS | 100% |  |
| DMM2-Proc-Delv-1288 |  | Manuf. & Delivery for Manholes Type 1&2 Materials | 15.87d | 2026-03-04 A | 2026-03-31 A | DMM2-Proc-PO-089 | 100% |  |
|  | SL | **Street Lighting** |  | 2025-12-28 | 2026-10-10 |  |  |  |
| DMM2-Proc-Delv-1308 |  | Manuf. & Delivery for SL Cables Materials | 83d | 2025-12-28 A | 2026-04-15 A | DMM2-Proc-PO-091, B2.33 71 00 02 100 | 100% |  |
| DMM2-Proc-Delv-1318 |  | Manuf. & Delivery for SL Poles Materials | 72.28d | 2025-12-28 A | 2026-04-04 A | DMM2-Proc-PO-092 | 100% |  |
| DMM2-Proc-Delv-1328 |  | Manuf. & Delivery for SL Luminares Materials (80.00% Completed) | 210d | 2025-12-28 A | 2026-09-15 A | DMM2-Proc-PO-093, B2.33 71 16.021 SS | 100% |  |
| DMM2-Proc-Delv-1328_R |  | Manuf. & Delivery for SL Luminares Materials(Rem) | 4d | 2026-09-19 A | 2026-10-10 | DMM2-Proc-PO-093, B2.33 71 16.021_R SS, DMM2-Proc-Delv-1328 | 30% | 110.52d |
|  | Zone 02 | **Zone 02** |  | 2025-12-08 | 2026-11-24 |  |  |  |
|  | SDS | **Wet Networks & Stations** |  | 2025-12-08 | 2026-11-24 |  |  |  |
|  | Sewer | **Sewerage Network** |  | 2025-12-16 | 2026-10-31 |  |  |  |
| DMM2-Proc-Delv-2298 |  | Manuf. & Delivery for HDPE Pipes Materials | 66.5d | 2025-12-16 A | 2026-03-09 A | DMM2-Proc-PO-016 | 100% |  |
| DMM2-Proc-Delv-3628 |  | Manuf. & Delivery for GRP Pipes Materials | 57.32d | 2025-12-25 A | 2026-03-08 A | DMM2-Proc-PO-011, DMM2-Proc-Delv-1888 | 100% |  |
| DMM2-Proc-Delv-2328 |  | Manuf. & Delivery for Discharge Chamber Materials (0.00% Completed) | 210d | 2025-12-28 A | 2026-09-15 A | DMM2-Proc-Delv-3638 SS | 100% |  |
| DMM2-Proc-Delv-3638 |  | Manuf. & Delivery for Inlet Manholes Materials | 52d | 2025-12-28 A | 2026-03-02 A | DMM2-Proc-PO-013, DMM2-Proc-Delv-1898 | 100% |  |
| DMM2-Proc-Delv-2318 |  | Manuf. & Delivery for Valves Materials | 38d | 2026-02-01 A | 2026-03-29 A | DMM2-Proc-PO-018 | 100% |  |
| DMM2-Proc-Delv-2328_R |  | Manuf. & Delivery for Discharge Chamber Materials(Rem) | 10d | 2026-10-07 | 2026-10-18 | DMM2-Proc-PO-019 FF, DMM2-Proc-Delv-3638 SS, DMM2-Proc-Delv-2328 |  | 88.32d |
| DMM2-Proc-Delv-2308 |  | Manuf. & Delivery for Valves Chambers Materials | 15d | 2026-10-13 | 2026-10-31 | DMM2-Proc-PO-017, B3.33 14 19.01.26 SS+1d |  | 88.76d |
|  | Storm | **Storm Network** |  | 2025-12-15 | 2026-05-25 |  |  |  |
| DMM2-Proc-Delv-2248 |  | Manuf. & Delivery for GRP Pipes Materials | 55.76d | 2025-12-15 A | 2026-02-18 A | DMM2-Proc-PO-011, DMM2-Proc-Delv-508 | 100% |  |
| DMM2-Proc-Delv-2268 |  | Manuf. & Delivery for Inlet Manholes Materials | 68.75d | 2025-12-28 A | 2026-03-30 A | DMM2-Proc-PO-013, DMM2-Proc-Delv-528 | 100% |  |
| DMM2-Proc-Delv-2278 |  | Manuf. & Delivery for Concrete Chambers & Catch Basin Materials | 117d | 2025-12-28 A | 2026-05-25 A | DMM2-Proc-PO-014, DMM2-Proc-Delv-538 | 100% |  |
|  | Potable | **Potable Network** |  | 2026-02-03 | 2026-10-11 |  |  |  |
| DMM2-Proc-Delv-2338 |  | Manuf. & Delivery for HDPE Pipes Materials | 23.49d | 2026-02-03 A | 2026-03-07 A | DMM2-Proc-PO-020, DMM2-Proc-Delv-598, DMM2-Proc-PO-023 | 100% |  |
| DMM2-Proc-Delv-2348 |  | Manuf. & Delivery for Valves Materials | 0.82d | 2026-02-21 A | 2026-02-23 A | DMM2-Proc-PO-021, DMM2-Proc-Delv-608 | 100% |  |
| DMM2-Proc-Delv-2358 |  | Manuf. & Delivery for Valves Chambers Materials | 6d | 2026-05-21 A | 2026-06-01 A | DMM2-Proc-PO-022 | 100% |  |
| DMM2-Proc-Delv-2368 |  | Manuf. & Delivery for Flow Meter Materials | 4d | 2026-10-07 | 2026-10-11 | DMM2-Proc-PO-023, DMM2-Proc-Delv-2348 |  | 68.32d |
| DMM2-Proc-Delv-3648 |  | Manuf. & Delivery for Flow Meter Chamber Materials | 4d | 2026-10-07 | 2026-10-11 | DMM2-Proc-Delv-2368 FF |  | 68.32d |
|  | Fire Fighting | **Fire Fighting Network** |  | 2026-02-04 | 2026-10-15 |  |  |  |
| DMM2-Proc-Delv-2408 |  | Manuf. & Delivery for HDPE Pipes Materials | 12.36d | 2026-02-04 A | 2026-02-18 A | DMM2-Proc-PO-027, DMM2-Proc-Delv-668 | 100% |  |
| DMM2-Proc-Delv-2418 |  | Manuf. & Delivery for Valves Materials | 3.75d | 2026-02-18 A | 2026-02-25 A | DMM2-Proc-PO-028, DMM2-Proc-Delv-678 | 100% |  |
| DMM2-Proc-Delv-3698 |  | Manuf. & Delivery for Fire Hydrant Materials | 17.27d | 2026-03-05 A | 2026-04-02 A | DMM2-Proc-PO-158, DMM2-Proc-Delv-1958 | 100% |  |
| DMM2-Proc-Delv-2428 |  | Manuf. & Delivery for Valves Chambers Materials (33.33% Completed) | 86d | 2026-06-08 A | 2026-09-15 A | DMM2-Proc-PO-029, DMM2-Proc-Delv-688 | 100% |  |
| DMM2-Proc-Delv-2428_R |  | Manuf. & Delivery for Valves Chambers Materials(Rem) | 10d | 2026-09-17 A | 2026-10-15 | DMM2-Proc-PO-029, DMM2-Proc-Delv-688, DMM2-Proc-Delv-2428 | 20% | 105.32d |
|  | TSE | **TSE Network** |  | 2025-12-08 | 2026-11-24 |  |  |  |
| DMM2-Proc-Delv-2378 |  | Manuf. & Delivery for HDPE Pipes Materials | 95.18d | 2025-12-08 A | 2026-04-12 A | DMM2-Proc-PO-024, DMM2-Proc-Delv-638 | 100% |  |
| DMM2-Proc-Delv-2398 |  | Manuf. & Delivery for Valves Materials | 38.92d | 2026-02-15 A | 2026-04-13 A | DMM2-Proc-PO-026, DMM2-Proc-Delv-658 | 100% |  |
| DMM2-Proc-Delv-2388 |  | Manuf. & Delivery for Solenoid Primary Control Valves Materials | 20d | 2026-11-02 | 2026-11-24 | DMM2-Proc-PO-025, DMM2-Proc-Delv-648 |  | 24.32d |
|  | Pot Pump St. | **Potable Water Pump Station** |  | 2026-02-08 | 2026-11-15 |  |  |  |
|  | 3 | **Mechanical** |  | 2026-02-08 | 2026-11-04 |  |  |  |
| DMM2-Proc-Delv-2508 |  | Manuf. & Delivery for Water Pumps Materials | 142.93d | 2026-02-08 A | 2026-08-10 A | DMM2-Proc-PO-037, B1.1.31 23 19.02 SS, B1.1.31 23 23.102 | 100% |  |
| DMM2-Proc-Delv-2518 |  | Manuf. & Delivery for Fire Pumps Materials (80.00% Completed) | 146d | 2026-03-25 A | 2026-09-15 A | DMM2-Proc-PO-038, B1.1.31 23 23.102 | 100% |  |
| DMM2-Proc-Delv-3748 |  | Manuf. & Delivery for Gate Valves Materials | 17d | 2026-04-09 A | 2026-04-28 A | DMM2-Proc-PO-168, DMM2-Proc-PO-021, B1.1.31 23 23.102 | 100% |  |
| DMM2-Proc-Delv-3728 |  | Manuf. & Delivery for Submersible Pumps Materials | 58.8d | 2026-06-03 A | 2026-08-10 A | DMM2-Proc-PO-056, B1.1.31 23 23.102 | 100% |  |
| DMM2-Proc-Delv-2538 |  | Manuf. & Delivery for OverHead Crane Materials (80.00% Completed) | 87d | 2026-06-07 A | 2026-09-15 A | DMM2-Proc-PO-040, B1.1.31 23 23.102, DMM2-Proc-Delv-3738 SS+10d | 100% |  |
| DMM2-Proc-Delv-2528 |  | Manuf. & Delivery for Butterfly Valve Materials (80.00% Completed) | 78d | 2026-06-17 A | 2026-09-15 A | DMM2-Proc-PO-039, B1.1.31 23 23.102, DMM2-Proc-Delv-3738 SS+15d | 100% |  |
| DMM2-Proc-Delv-3768 |  | Manuf. & Delivery for Electromagnetic Flow Meters Materials (80.00% Completed) | 76d | 2026-06-20 A | 2026-09-15 A | DMM2-Proc-PO-178, B1.1.31 23 23.102, DMM2-Proc-Delv-3738 SS+25d | 100% |  |
| DMM2-Proc-Delv-3758 |  | Manuf. & Delivery for Non Return (Flap) Materials (80.00% Completed) | 73d | 2026-06-23 A | 2026-09-15 A | DMM2-Proc-PO-060, B1.1.31 23 23.102, DMM2-Proc-Delv-3738 SS+20d | 100% |  |
| DMM2-Proc-Delv-3738 |  | Manuf. & Delivery for DI Pipes Materials (80.00% Completed) | 72d | 2026-06-24 A | 2026-09-15 A | DMM2-Proc-PO-057, DMM2-Proc-PO-058, B1.1.31 23 23.102 | 100% |  |
| DMM2-Proc-Delv-2518_R |  | Manuf. & Delivery for Fire Pumps Materials(Rem) | 9d | 2026-09-22 A | 2026-09-27 A | DMM2-Proc-PO-038, B1.1.31 23 23.102, DMM2-Proc-Delv-2518 | 100% |  |
| DMM2-Proc-Delv-3758_R |  | Manuf. & Delivery for Non Return (Flap) Materials(Rem) | 14d | 2026-09-24 A | 2026-10-03 A | DMM2-Proc-PO-060, B1.1.31 23 23.102, DMM2-Proc-Delv-3738_R SS, DMM2-Proc-Delv-3758 | 100% |  |
| DMM2-Proc-Delv-2528_R |  | Manuf. & Delivery for Butterfly Valve Materials(Rem) | 14d | 2026-10-07 | 2026-10-22 | DMM2-Proc-PO-039, B1.1.31 23 23.102, DMM2-Proc-Delv-3738_R SS, DMM2-Proc-Delv-2528 |  | 16.32d |
| DMM2-Proc-Delv-2538_R |  | Manuf. & Delivery for OverHead Crane Materials(Rem) | 12d | 2026-10-07 | 2026-10-20 | DMM2-Proc-PO-040, B1.1.31 23 23.102, DMM2-Proc-Delv-3738_R SS, DMM2-Proc-Delv-2538 |  | 16.32d |
| DMM2-Proc-Delv-3738_R |  | Manuf. & Delivery for DI Pipes Materials(Rem) | 6d | 2026-10-07 | 2026-10-13 | DMM2-Proc-PO-057, DMM2-Proc-PO-058, B1.1.31 23 23.102, DMM2-Proc-Delv-3738 |  | 11.32d |
| DMM2-Proc-Delv-3768_R |  | Manuf. & Delivery for Electromagnetic Flow Meters Materials(Rem) | 14d | 2026-10-07 | 2026-10-22 | DMM2-Proc-PO-178, B1.1.31 23 23.102, DMM2-Proc-Delv-3738_R SS, DMM2-Proc-Delv-3768 |  | 23.32d |
| DMM2-Proc-Delv-3778 |  | Manuf. & Delivery for Surge Tank Materials | 25d | 2026-10-07 | 2026-11-04 | DMM2-Proc-PO-063, B1.1.31 23 23.102, DMM2-Proc-Delv-3738_R SS, DMM2-Proc-PO-064 |  | 11.32d |
|  | 2 | **Electrical** |  | 2026-02-18 | 2026-11-15 |  |  |  |
| DMM2-Proc-Delv-3868 |  | Manuf. & Delivery for PLC System Materials (80.00% Completed) | 165d | 2026-02-18 A | 2026-09-15 A | DMM2-Proc-PO-079, DMM2-Proc-Delv-2508 SS+25d | 100% |  |
| DMM2-Proc-Delv-3808 |  | Manuf. & Delivery for Motor Control Center (MCC) Materials (80.00% Completed) | 163.25d | 2026-02-21 A | 2026-09-15 A | DMM2-Proc-PO-068, DMM2-Proc-Delv-3768 SS | 100% |  |
| DMM2-Proc-Delv-3848 |  | Manuf. & Delivery for Generators Materials | 2d | 2026-04-14 A | 2026-04-15 A | DMM2-Proc-PO-071, B1.1.31 23 23.102 SS | 100% |  |
| DMM2-Proc-Delv-2648 |  | Manuf. & Delivery for LV Cables Materials (80.00% Completed) | 122d | 2026-04-22 A | 2026-09-15 A | DMM2-Proc-PO-070, DMM2-Proc-Delv-1258 | 100% |  |
| DMM2-Proc-Delv-3828 |  | Manuf. & Delivery for Local Control Panel Materials (80.00% Completed) | 102d | 2026-05-15 A | 2026-09-15 A | DMM2-Proc-PO-069, DMM2-Proc-Delv-2538 SS+20d | 100% |  |

| ID | WBS | Task | Duration | Start | Finish | Predecessors | Complete | Total float |
| --- | --- | --- | --- | --- | --- | --- | --- | --- |
| DMM2-Proc-Delv-2648_R |  | Manuf. & Delivery for LV Cables Materials(Rem) | 5d | 2026-10-07 | 2026-10-12 | DMM2-Proc-PO-070, DMM2-Proc-Delv-1258, DMM2-Proc-Delv-2648 |  | 5.32d |
| DMM2-Proc-Delv-3808_R |  | Manuf. & Delivery for Motor Control Center (MCC) Materials(Rem) | 9d | 2026-10-07 | 2026-10-17 | DMM2-Proc-PO-068, DMM2-Proc-Delv-3768_R SS, DMM2-Proc-Delv-3808 |  | 23.32d |
| DMM2-Proc-Delv-3828_R |  | Manuf. & Delivery for Local Control Panel Materials(Rem) | 4.2d | 2026-10-07 | 2026-10-12 | DMM2-Proc-PO-069, DMM2-Proc-Delv-2538_R SS, DMM2-Proc-Delv-3828 |  | 32.12d |
| DMM2-Proc-Delv-3858 |  | Manuf. & Delivery for Addressable Fire Alarm System Materials | 25d | 2026-10-07 | 2026-11-04 | DMM2-Proc-PO-208, DMM2-Proc-Delv-3808_R SS |  | 23.32d |
| DMM2-Proc-Delv-3868_R |  | Manuf. & Delivery for PLC System Materials(Rem) | 12d | 2026-10-07 | 2026-10-20 | DMM2-Proc-PO-079, DMM2-Proc-Delv-2508 SS, DMM2-Proc-Delv-3868 |  | 44.32d |
| DMM2-Proc-Delv-3878 |  | Manuf. & Delivery for Automatic Transfer Switch ATS panel Materials | 19d | 2026-10-07 | 2026-10-28 | DMM2-Proc-PO-073, B1.1.31 23 23.102 SS+5d |  | 29.32d |
| DMM2-Proc-Delv-3838 |  | Manuf. & Delivery for Panelboards Materials | 16d | 2026-10-28 | 2026-11-15 | DMM2-Proc-PO-069, B1.1.31 23 23.102 SS+10d, DMM2-Proc-PO-188, DMM2-Proc-PO-0131 |  | 8.32d |
|  | SDS1 | **Dry Networks** |  | 2025-12-28 | 2026-10-29 |  |  |  |
|  | MV | **Medium Voltage Network** |  | 2026-01-06 | 2026-10-18 |  |  |  |
| DMM2-Proc-Delv-2958 |  | Manuf. & Delivery for MV Cables Materials | 1d | 2026-01-06 A | 2026-01-06 A | DMM2-Proc-PO-082, DMM2-Proc-Delv-1218 | 100% |  |
| DMM2-Proc-Delv-2978 |  | Manuf. & Delivery for Unit Substation Materials (90.00% Completed) | 195d | 2026-01-14 A | 2026-09-15 A | DMM2-Proc-PO-084 | 100% |  |
| DMM2-Proc-Delv-2988 |  | Manuf. & Delivery for RMU Materials (90.00% Completed) | 195d | 2026-01-14 A | 2026-09-15 A | DMM2-Proc-PO-085 | 100% |  |
| DMM2-Proc-Delv-2978_R |  | Manuf. & Delivery for Unit Substation Materials(Rem) | 10d | 2026-10-07 | 2026-10-18 | DMM2-Proc-PO-084, DMM2-Proc-Delv-2978 |  | 90.32d |
| DMM2-Proc-Delv-2988_R |  | Manuf. & Delivery for RMU Materials(Rem) | 10d | 2026-10-07 | 2026-10-18 | DMM2-Proc-PO-085, DMM2-Proc-Delv-2988 |  | 24.32d |
|  | LV | **Low Voltage Network** |  | 2026-03-25 | 2026-09-12 |  |  |  |
| DMM2-Proc-Delv-2998 |  | Manuf. & Delivery for LV Cables Materials | 142.95d | 2026-03-25 A | 2026-09-12 A | DMM2-Proc-PO-086 | 100% |  |
|  | Telecom | **Telecommunication Network** |  | 2026-01-21 | 2026-04-12 |  |  |  |
| DMM2-Proc-Delv-3018 |  | Manuf. & Delivery for HDPE Ducts Materials | 9d | 2026-01-21 A | 2026-02-01 A | DMM2-Proc-PO-088, DMM2-Proc-Delv-1278 | 100% |  |
| DMM2-Proc-Delv-3028 |  | Manuf. & Delivery for Manholes Type 1&2 Materials | 24.5d | 2026-03-08 A | 2026-04-12 A | DMM2-Proc-PO-089, DMM2-Proc-Delv-1288 | 100% |  |
|  | SL | **Street Lighting** |  | 2025-12-28 | 2026-10-29 |  |  |  |
| DMM2-Proc-Delv-3068 |  | Manuf. & Delivery for SL Luminares Materials (80.11% Completed) | 210d | 2025-12-28 A | 2026-09-15 A | DMM2-Proc-PO-093, DMM2-Proc-Delv-1328 SS | 100% |  |
| DMM2-Proc-Delv-3058 |  | Manuf. & Delivery for SL Poles Materials | 31.25d | 2026-02-18 A | 2026-04-08 A | DMM2-Proc-PO-092, DMM2-Proc-Delv-1318 | 100% |  |
| DMM2-Proc-Delv-3038 |  | Manuf. & Delivery for SL Pillars Materials (80.11% Completed) | 147d | 2026-03-24 A | 2026-09-15 A | DMM2-Proc-PO-090 | 100% |  |
| DMM2-Proc-Delv-3048 |  | Manuf. & Delivery for SL Cables Materials | 143.97d | 2026-03-25 A | 2026-09-13 A | DMM2-Proc-PO-091, DMM2-Proc-Delv-1308 | 100% |  |
| DMM2-Proc-Delv-3068_R |  | Manuf. & Delivery for SL Luminares Materials(Rem) | 4d | 2026-09-22 A | 2026-10-11 | DMM2-Proc-PO-093, DMM2-Proc-Delv-1328_R SS, DMM2-Proc-Delv-3068 | 16% | 90.32d |
| DMM2-Proc-Delv-3038_R |  | Manuf. & Delivery for SL Pillars Materials(Rem) | 20d | 2026-10-07 | 2026-10-29 | DMM2-Proc-PO-090, DMM2-Proc-Delv-3038 |  | 87.32d |
|  | Zone 03 | **Zone 03** |  | 2025-11-24 | 2026-11-24 |  |  |  |
|  | SDS | **Wet Networks & Stations** |  | 2025-11-24 | 2026-11-24 |  |  |  |
|  | Sewer | **Sewerage Network** |  | 2025-11-24 | 2026-10-28 |  |  |  |
| DMM2-Proc-Delv-5368 |  | Manuf. & Delivery for GRP Pipes Materials | 81.07d | 2025-11-24 A | 2026-03-02 A | DMM2-Proc-PO-011, DMM2-Proc-Delv-3628 | 100% |  |
| DMM2-Proc-Delv-4038 |  | Manuf. & Delivery for HDPE Pipes Materials (0.00% Completed) | 223.75d | 2025-12-11 A | 2026-09-15 A | DMM2-Proc-PO-016, DMM2-Proc-Delv-2298 | 100% |  |
| DMM2-Proc-Delv-5378 |  | Manuf. & Delivery for Inlet Manholes Materials | 53.22d | 2025-12-28 A | 2026-03-03 A | DMM2-Proc-PO-013, DMM2-Proc-Delv-3638 | 100% |  |
| DMM2-Proc-Delv-4048 |  | Manuf. & Delivery for Valves Chambers Materials | 15d | 2026-09-17 A | 2026-10-19 | DMM2-Proc-PO-017, B6.33 05 39.01.1747 | 33% | 103.27d |
| DMM2-Proc-Delv-4058 |  | Manuf. & Delivery for Valves Materials | 15d | 2026-09-24 A | 2026-10-04 A | DMM2-Proc-PO-018, DMM2-Proc-Delv-2318 | 100% |  |
| DMM2-Proc-Delv-4038_R |  | Manuf. & Delivery for HDPE Pipes Materials(Rem) | 19d | 2026-10-07 | 2026-10-28 | DMM2-Proc-PO-016, DMM2-Proc-Delv-2298, DMM2-Proc-Delv-4038 |  | 94.32d |
|  | Storm | **Storm Network** |  | 2025-12-21 | 2026-08-26 |  |  |  |
| DMM2-Proc-Delv-3988 |  | Manuf. & Delivery for GRP Pipes Materials | 69.17d | 2025-12-21 A | 2026-03-24 A | DMM2-Proc-PO-011, DMM2-Proc-Delv-2248 | 100% |  |
| DMM2-Proc-Delv-4008 |  | Manuf. & Delivery for Inlet Manholes Materials | 77.33d | 2025-12-28 A | 2026-04-09 A | DMM2-Proc-PO-013, DMM2-Proc-Delv-2268 | 100% |  |
| DMM2-Proc-Delv-4018 |  | Manuf. & Delivery for Concrete Chambers & Catch Basin Materials | 193d | 2025-12-28 A | 2026-08-26 A | DMM2-Proc-PO-014, DMM2-Proc-Delv-2278, DMM2-Proc-PO-069 | 100% |  |
|  | Potable | **Potable Network** |  | 2025-11-28 | 2026-10-10 |  |  |  |
| DMM2-Proc-Delv-4078 |  | Manuf. & Delivery for HDPE Pipes Materials | 102.06d | 2025-11-28 A | 2026-04-09 A | DMM2-Proc-PO-020, DMM2-Proc-Delv-2338 | 100% |  |
| DMM2-Proc-Delv-4088 |  | Manuf. & Delivery for Valves Materials | 12d | 2026-03-01 A | 2026-03-18 A | DMM2-Proc-PO-021, DMM2-Proc-Delv-2348 | 100% |  |
| DMM2-Proc-Delv-4098 |  | Manuf. & Delivery for Valves Chambers Materials (80.00% Completed) | 102d | 2026-05-15 A | 2026-09-15 A | DMM2-Proc-PO-022, DMM2-Proc-Delv-2358 | 100% |  |
| DMM2-Proc-Delv-4098_R |  | Manuf. & Delivery for Valves Chambers Materials(Rem) | 3d | 2026-10-07 | 2026-10-10 | DMM2-Proc-PO-022, DMM2-Proc-Delv-2358, DMM2-Proc-Delv-4098 |  | 110.32d |
|  | Fire Fighting | **Fire Fighting Network** |  | 2025-11-28 | 2026-10-08 |  |  |  |
| DMM2-Proc-Delv-4148 |  | Manuf. & Delivery for HDPE Pipes Materials | 91.39d | 2025-11-28 A | 2026-03-28 A | DMM2-Proc-PO-027, DMM2-Proc-Delv-2408 | 100% |  |
| DMM2-Proc-Delv-4158 |  | Manuf. & Delivery for Valves Materials | 6.22d | 2026-04-06 A | 2026-04-13 A | DMM2-Proc-PO-028, DMM2-Proc-Delv-2418 | 100% |  |
| DMM2-Proc-Delv-5438 |  | Manuf. & Delivery for Fire Hydrant Materials | 24.37d | 2026-04-22 A | 2026-05-20 A | DMM2-Proc-PO-158, DMM2-Proc-Delv-3698 | 100% |  |
| DMM2-Proc-Delv-4168 |  | Manuf. & Delivery for Valves Chambers Materials (80.00% Completed) | 104d | 2026-05-13 A | 2026-09-15 A | DMM2-Proc-PO-029, DMM2-Proc-Delv-2428 SS | 100% |  |
| DMM2-Proc-Delv-4168_R |  | Manuf. & Delivery for Valves Chambers Materials(Rem) | 2d | 2026-10-07 | 2026-10-08 | DMM2-Proc-PO-029, DMM2-Proc-Delv-2428_R SS, DMM2-Proc-Delv-4168 |  | 111.32d |
|  | TSE | **TSE Network** |  | 2025-12-07 | 2026-11-24 |  |  |  |
| DMM2-Proc-Delv-4118 |  | Manuf. & Delivery for HDPE Pipes Materials | 83.03d | 2025-12-07 A | 2026-03-26 A | DMM2-Proc-PO-024, DMM2-Proc-Delv-2378 | 100% |  |
| DMM2-Proc-Delv-4138 |  | Manuf. & Delivery for Valves Materials | 26.22d | 2026-03-06 A | 2026-04-13 A | DMM2-Proc-PO-026, DMM2-Proc-Delv-2398 | 100% |  |
| DMM2-Proc-Delv-4128 |  | Manuf. & Delivery for Solenoid Primary Control Valves Materials | 10d | 2026-11-14 | 2026-11-24 | DMM2-Proc-PO-025 FF, DMM2-Proc-Delv-2388 FF |  | 24.32d |
|  | Sewer Lift St. | **Sewer Lift Station** |  | 2025-12-24 | 2026-11-10 |  |  |  |
|  | 3 | **Mechanical** |  | 2025-12-24 | 2026-11-10 |  |  |  |
| DMM2-Proc-Delv-4518 |  | Manuf. & Delivery for JIB Crane Materials (46.78% Completed) | 213d | 2025-12-24 A | 2026-09-15 A | DMM2-Proc-PO-064 | 100% |  |
| DMM2-Proc-Delv-4448 |  | Manuf. & Delivery for Double Flanged DI Pipes Materials (0.00% Completed) | 211d | 2025-12-26 A | 2026-09-15 A | DMM2-Proc-PO-057, DMM2-Proc-Delv-7439 SS | 100% |  |
| DMM2-Proc-Delv-4478 |  | Manuf. & Delivery for Non Return Valve (Flap) Materials (0.00% Completed) | 187d | 2026-01-24 A | 2026-09-15 A | DMM2-Proc-PO-060 | 100% |  |
| DMM2-Proc-Delv-4448_R |  | Manuf. & Delivery for Double Flanged DI Pipes Materials(Rem) | 20d | 2026-10-07 | 2026-10-29 | DMM2-Proc-PO-057, DMM2-Proc-Delv-7439_R SS, DMM2-Proc-Delv-4448 |  | 11.32d |
| DMM2-Proc-Delv-4478_R |  | Manuf. & Delivery for Non Return Valve (Flap) Materials(Rem) | 20d | 2026-10-07 | 2026-10-29 | DMM2-Proc-PO-060, DMM2-Proc-Delv-4478 |  | 20.32d |
| DMM2-Proc-Delv-4488 |  | Manuf. & Delivery for Basket Screens Materials | 20d | 2026-10-07 | 2026-10-29 | DMM2-Proc-PO-061 |  | 19.32d |
| DMM2-Proc-Delv-4508 |  | Manuf. & Delivery for Surge Tank Materials | 30d | 2026-10-07 | 2026-11-10 | DMM2-Proc-PO-063, DMM2-Proc-PO-071 |  | 12.32d |
| DMM2-Proc-Delv-4518_R |  | Manuf. & Delivery for JIB Crane Materials(Rem) | 15d | 2026-10-07 | 2026-10-24 | DMM2-Proc-PO-064, DMM2-Proc-Delv-4518 |  | 18.32d |
| DMM2-Proc-Delv-4438 |  | Manuf. & Delivery for Submersible Pumps Materials | 13d | 2026-10-17 | 2026-10-31 | DMM2-Proc-PO-056, DMM2-Proc-PO-054, DMM2-Proc-PO-044 |  | 15.32d |
| DMM2-Proc-Delv-4458 |  | Manuf. & Delivery for Buried Flanged DI Pipes Materials | 2d | 2026-10-31 | 2026-11-01 | DMM2-Proc-PO-058, DMM2-Proc-Delv-4448_R, DMM2-Proc-PO-071 |  | 11.32d |
| DMM2-Proc-Delv-4498 |  | Manuf. & Delivery for Odor Control Unit Materials | 3d | 2026-10-31 | 2026-11-02 | DMM2-Proc-PO-062, DMM2-Proc-Delv-4558 SS, DMM2-Proc-Delv-4488 |  | 19.32d |
|  | 2 | **Electrical** |  | 2026-01-05 | 2026-11-03 |  |  |  |
| DMM2-Proc-Delv-4608 |  | Manuf. & Delivery for Automatic Transfer (Switch ATS) Materials (0.00% Completed) | 203d | 2026-01-05 A | 2026-09-15 A | DMM2-Proc-PO-073, DMM2-Proc-PO-065 FF | 100% |  |
| DMM2-Proc-Delv-4628 |  | Manuf. & Delivery for Displacement Rotary Type Pump Materials (42.56% Completed) | 195d | 2026-01-14 A | 2026-09-15 A | DMM2-Proc-PO-075 | 100% |  |

| ID | WBS | Task | Duration | Start | Finish | Predecessors | Complete | Total float |
| --- | --- | --- | --- | --- | --- | --- | --- | --- |
| DMM2-Proc-Delv-4668 |  | Manuf. & Delivery for PLC System Materials (80.00% Completed) | 159.5d | 2026-02-28 A | 2026-09-15 A | DMM2-Proc-PO-079, DMM2-Proc-Delv-4628 SS, DMM2-Proc-Delv-4578 SS, DMM2-Proc-Delv-4518 SS | 100% |  |
| DMM2-Proc-Delv-4578 |  | Manuf. & Delivery for Low Voltage Cables Materials (50.00% Completed) | 137d | 2026-04-05 A | 2026-09-15 A | DMM2-Proc-PO-070, DMM2-Proc-Delv-4478 SS | 100% |  |
| DMM2-Proc-Delv-4588 |  | Manuf. & Delivery for Standby Diesel Generator Materials | 2d | 2026-04-14 A | 2026-04-15 A | DMM2-Proc-PO-071, DMM2-Proc-PO-058, DMM2-Proc-PO-0138 | 100% |  |
| DMM2-Proc-Delv-4598 |  | Manuf. & Delivery for Fuel Pump Materials (50.00% Completed) | 111d | 2026-05-05 A | 2026-09-15 A | DMM2-Proc-PO-072, DMM2-Proc-Delv-4608 SS | 100% |  |
| DMM2-Proc-Delv-4578_R |  | Manuf. & Delivery for Low Voltage Cables Materials(Rem) | 15d | 2026-10-07 | 2026-10-24 | DMM2-Proc-PO-070, DMM2-Proc-Delv-4478_R SS, DMM2-Proc-Delv-4578 |  | 33.32d |
| DMM2-Proc-Delv-4598_R |  | Manuf. & Delivery for Fuel Pump Materials(Rem) | 20d | 2026-10-07 | 2026-10-29 | DMM2-Proc-PO-072, DMM2-Proc-Delv-4608_R SS, DMM2-Proc-Delv-4598 |  | 19.32d |
| DMM2-Proc-Delv-4608_R |  | Manuf. & Delivery for Automatic Transfer (Switch ATS) Materials(Rem) | 20d | 2026-10-07 | 2026-10-29 | DMM2-Proc-PO-073, DMM2-Proc-PO-065 FF, DMM2-Proc-Delv-4608 |  | 18.32d |
| DMM2-Proc-Delv-4628_R |  | Manuf. & Delivery for Displacement Rotary Type Pump Materials(Rem) | 24d | 2026-10-07 | 2026-11-03 | DMM2-Proc-PO-075, DMM2-Proc-Delv-4628 |  | 9.32d |
| DMM2-Proc-Delv-4668_R |  | Manuf. & Delivery for PLC System Materials(Rem) | 15d | 2026-10-07 | 2026-10-24 | DMM2-Proc-PO-079, DMM2-Proc-Delv-4628_R SS, DMM2-Proc-Delv-4578_R SS, DMM2-Proc-Delv-4518_R SS, DMM2-Proc-Delv-4668 |  | 39.32d |
| DMM2-Proc-Delv-4558 |  | Manuf. & Delivery for Motor Control Center (MCC) Materials | 3d | 2026-10-10 | 2026-10-12 | DMM2-Proc-PO-068 SS, DMM2-Proc-Delv-7458 SS, DMM2-Proc-PO-065 SS |  | 31.32d |
| DMM2-Proc-Delv-4568 |  | Manuf. & Delivery for Local Control Panel Materials | 3d | 2026-10-31 | 2026-11-02 | DMM2-Proc-PO-069, DMM2-Proc-Delv-7454 |  | 19.32d |
|  | SDS1 | **Dry Networks** |  | 2026-01-06 | 2026-10-29 |  |  |  |
|  | MV | **Medium Voltage Network** |  | 2026-01-06 | 2026-10-29 |  |  |  |
| DMM2-Proc-Delv-4698 |  | Manuf. & Delivery for MV Cables Materials | 9.91d | 2026-01-06 A | 2026-01-17 A | DMM2-Proc-PO-082, DMM2-Proc-Delv-2958 | 100% |  |
| DMM2-Proc-Delv-4728 |  | Manuf. & Delivery for RMU Materials (80.11% Completed) | 126d | 2026-04-17 A | 2026-09-15 A | DMM2-Proc-PO-085, DMM2-Proc-Delv-2988 SS | 100% |  |
| DMM2-Proc-Delv-4718 |  | Manuf. & Delivery for Unit Substation Materials (80.11% Completed) | 125d | 2026-04-19 A | 2026-09-15 A | DMM2-Proc-PO-084, DMM2-Proc-Delv-6438, DMM2-Proc-Delv-2978 SS | 100% |  |
| DMM2-Proc-Delv-4718_R |  | Manuf. & Delivery for Unit Substation Materials(Rem) | 20d | 2026-10-07 | 2026-10-29 | DMM2-Proc-PO-084, DMM2-Proc-Delv-6438, DMM2-Proc-Delv-2978_R SS, DMM2-Proc-Delv-4718 |  | 90.32d |
| DMM2-Proc-Delv-4728_R |  | Manuf. & Delivery for RMU Materials(Rem) | 20d | 2026-10-07 | 2026-10-29 | DMM2-Proc-PO-085, DMM2-Proc-Delv-2988_R SS, DMM2-Proc-Delv-4728 |  | 24.32d |
|  | LV | **Low Voltage Network** |  | 2026-03-11 | 2026-10-29 |  |  |  |
| DMM2-Proc-Delv-4738 |  | Manuf. & Delivery for LV Cables Materials | 147.44d | 2026-03-11 A | 2026-09-10 A | DMM2-Proc-PO-086, DMM2-Proc-Delv-2998 | 100% |  |
| DMM2-Proc-Delv-7199 |  | Manuf. & Delivery for LV Panels Materials (80.11% Completed) | 133d | 2026-04-09 A | 2026-09-15 A | DMM2-Proc-PO-209, DMM2-Proc-Delv-2998 | 100% |  |
| DMM2-Proc-Delv-4748 |  | Manuf. & Delivery for LV Pillars Materials (80.11% Completed) | 129d | 2026-04-14 A | 2026-09-15 A | DMM2-Proc-PO-087 | 100% |  |
| DMM2-Proc-Delv-4748_R |  | Manuf. & Delivery for LV Pillars Materials(Rem) | 20d | 2026-10-07 | 2026-10-29 | DMM2-Proc-PO-087, DMM2-Proc-Delv-4748 |  | 70.32d |
| DMM2-Proc-Delv-7199_R |  | Manuf. & Delivery for LV Panels Materials(Rem) | 20d | 2026-10-07 | 2026-10-29 | DMM2-Proc-PO-209, DMM2-Proc-Delv-2998, DMM2-Proc-Delv-7199 |  | 70.32d |
|  | Telecom | **Telecommunication Network** |  | 2026-01-21 | 2026-04-05 |  |  |  |
| DMM2-Proc-Delv-4758 |  | Manuf. & Delivery for HDPE Ducts Materials | 9d | 2026-01-21 A | 2026-02-01 A | DMM2-Proc-PO-088, DMM2-Proc-Delv-3018 | 100% |  |
| DMM2-Proc-Delv-4768 |  | Manuf. & Delivery for Manholes Type 1&2 Materials | 14d | 2026-03-15 A | 2026-04-05 A | DMM2-Proc-PO-089, DMM2-Proc-Delv-3028 | 100% |  |
|  | SL | **Street Lighting** |  | 2026-02-10 | 2026-10-29 |  |  |  |
| DMM2-Proc-Delv-4798 |  | Manuf. & Delivery for SL Poles Materials (90.00% Completed) | 171.75d | 2026-02-10 A | 2026-09-15 A | DMM2-Proc-PO-092, DMM2-Proc-Delv-3058 | 100% |  |
| DMM2-Proc-Delv-4778 |  | Manuf. & Delivery for SL Pillars Materials (90.00% Completed) | 145d | 2026-03-26 A | 2026-09-15 A | DMM2-Proc-PO-090, DMM2-Proc-Delv-3038 SS, DMM2-Proc-Delv-7199 SS | 100% |  |
| DMM2-Proc-Delv-4788 |  | Manuf. & Delivery for SL Cables Materials (90.00% Completed) | 134d | 2026-04-08 A | 2026-09-15 A | DMM2-Proc-PO-091, DMM2-Proc-Delv-3048, DMM2-Proc-Delv-3048 FF | 100% |  |
| DMM2-Proc-Delv-4808 |  | Manuf. & Delivery for SL Luminares Materials (90.00% Completed) | 131d | 2026-04-12 A | 2026-09-15 A | DMM2-Proc-PO-093, DMM2-Proc-Delv-3068 SS | 100% |  |
| DMM2-Proc-Delv-4778_R |  | Manuf. & Delivery for SL Pillars Materials(Rem) | 20d | 2026-10-07 | 2026-10-29 | DMM2-Proc-PO-090, DMM2-Proc-Delv-3038_R SS, DMM2-Proc-Delv-7199_R SS, DMM2-Proc-Delv-4778 |  | 87.32d |
| DMM2-Proc-Delv-4788_R |  | Manuf. & Delivery for SL Cables Materials(Rem) | 10d | 2026-10-07 | 2026-10-18 | DMM2-Proc-PO-091, DMM2-Proc-Delv-3048, DMM2-Proc-Delv-3048 FF, DMM2-Proc-Delv-4788 |  | 80.32d |
| DMM2-Proc-Delv-4798_R |  | Manuf. & Delivery for SL Poles Materials(Rem) | 10d | 2026-10-07 | 2026-10-18 | DMM2-Proc-PO-092, DMM2-Proc-Delv-3058, DMM2-Proc-Delv-4798 |  | 23.32d |
| DMM2-Proc-Delv-4808_R |  | Manuf. & Delivery for SL Luminares Materials(Rem) | 10d | 2026-10-07 | 2026-10-18 | DMM2-Proc-PO-093, DMM2-Proc-Delv-3068_R SS, DMM2-Proc-Delv-4808 |  | 90.32d |
|  | Zone 04 | **Zone 04** |  | 2025-12-09 | 2026-11-10 |  |  |  |
|  | SDS | **Wet Networks & Stations** |  | 2025-12-09 | 2026-11-04 |  |  |  |
|  | Sewer | **Sewerage Network** |  | 2026-01-10 | 2026-04-16 |  |  |  |
| DMM2-Proc-Delv-7108 |  | Manuf. & Delivery for GRP Pipes Materials | 72.6d | 2026-01-10 A | 2026-04-16 A | DMM2-Proc-Delv-5368 | 100% |  |
| DMM2-Proc-Delv-7118 |  | Manuf. & Delivery for Inlet Manholes Materials | 4.88d | 2026-03-04 A | 2026-03-11 A | DMM2-Proc-PO-013, DMM2-Proc-Delv-5378 | 100% |  |
|  | Storm | **Storm Network** |  | 2026-01-26 | 2026-10-24 |  |  |  |
| DMM2-Proc-Delv-5728 |  | Manuf. & Delivery for GRP Pipes Materials | 33.65d | 2026-01-26 A | 2026-03-12 A | DMM2-Proc-Delv-3988 | 100% |  |
| DMM2-Proc-Delv-5748 |  | Manuf. & Delivery for Inlet Manholes Materials (90.00% Completed) | 141.67d | 2026-03-30 A | 2026-09-15 A | DMM2-Proc-PO-013, DMM2-Proc-Delv-4008 | 100% |  |
| DMM2-Proc-Delv-5758 |  | Manuf. & Delivery for Concrete Chambers & Catch Basin Materials (40.05% Completed) | 127d | 2026-04-16 A | 2026-09-15 A | DMM2-Proc-Delv-5748 FF | 100% |  |
| DMM2-Proc-Delv-5748_R |  | Manuf. & Delivery for Inlet Manholes Materials(Rem) | 10d | 2026-09-25 A | 2026-09-28 A | DMM2-Proc-PO-013, DMM2-Proc-Delv-4008, DMM2-Proc-Delv-5748 | 100% |  |
| DMM2-Proc-Delv-5758_R |  | Manuf. & Delivery for Concrete Chambers & Catch Basin Materials(Rem) | 15d | 2026-10-07 | 2026-10-24 | DMM2-Proc-Delv-5748_R FF, DMM2-Proc-Delv-5758 |  | 96.32d |
|  | Potable | **Potable Network** |  | 2026-01-31 | 2026-10-07 |  |  |  |
| DMM2-Proc-Delv-5818 |  | Manuf. & Delivery for HDPE Pipes Materials | 62.53d | 2026-01-31 A | 2026-04-26 A | DMM2-Proc-PO-020, DMM2-Proc-Delv-4078 | 100% |  |
| DMM2-Proc-Delv-5828 |  | Manuf. & Delivery for Valves Materials | 67.72d | 2026-03-09 A | 2026-06-07 A | DMM2-Proc-PO-021, DMM2-Proc-Delv-4088 | 100% |  |
| DMM2-Proc-Delv-5838 |  | Manuf. & Delivery for Valves Chambers Materials (80.00% Completed) | 83.4d | 2026-06-10 A | 2026-09-15 A | DMM2-Proc-PO-022, DMM2-Proc-Delv-4098 SS | 100% |  |
| DMM2-Proc-Delv-5838_R |  | Manuf. & Delivery for Valves Chambers Materials(Rem) | 3d | 2026-09-27 A | 2026-10-07 | DMM2-Proc-PO-022, DMM2-Proc-Delv-4098_R SS, DMM2-Proc-Delv-5838 | 75% | 112.57d |
|  | Fire Fighting | **Fire Fighting Network** |  | 2026-02-05 | 2026-10-10 |  |  |  |
| DMM2-Proc-Delv-5888 |  | Manuf. & Delivery for HDPE Pipes Materials | 55.8d | 2026-02-05 A | 2026-04-23 A | DMM2-Proc-PO-027, DMM2-Proc-Delv-4148 | 100% |  |
| DMM2-Proc-Delv-5898 |  | Manuf. & Delivery for Valves Materials | 24.75d | 2026-02-08 A | 2026-03-16 A | DMM2-Proc-PO-028, DMM2-Proc-Delv-4158 | 100% |  |
| DMM2-Proc-Delv-7178 |  | Manuf. & Delivery for Fire Hydrant Materials | 51.45d | 2026-04-01 A | 2026-06-04 A | DMM2-Proc-PO-158, DMM2-Proc-Delv-5438 | 100% |  |
| DMM2-Proc-Delv-5908 |  | Manuf. & Delivery for Valves Chambers Materials (80.00% Completed) | 84d | 2026-06-10 A | 2026-09-15 A | DMM2-Proc-PO-029, DMM2-Proc-Delv-4168 SS | 100% |  |
| DMM2-Proc-Delv-5908_R |  | Manuf. & Delivery for Valves Chambers Materials(Rem) | 3d | 2026-09-20 A | 2026-10-10 | DMM2-Proc-PO-029, DMM2-Proc-Delv-4168_R SS, DMM2-Proc-Delv-5908, DMM2-Proc-Delv-5838_R | 33% | 85.31d |
|  | TSE | **TSE Network** |  | 2025-12-09 | 2026-11-04 |  |  |  |
| DMM2-Proc-Delv-5858 |  | Manuf. & Delivery for HDPE Pipes Materials (90.00% Completed) | 225.61d | 2025-12-09 A | 2026-09-15 A | DMM2-Proc-PO-024, DMM2-Proc-Delv-4118 | 100% |  |
| DMM2-Proc-Delv-5878 |  | Manuf. & Delivery for Valves Materials (80.00% Completed) | 147.38d | 2026-03-18 A | 2026-09-15 A | DMM2-Proc-PO-026, DMM2-Proc-Delv-4138 | 100% |  |
| DMM2-Proc-Delv-5858_R |  | Manuf. & Delivery for HDPE Pipes Materials(Rem) | 2d | 2026-10-07 | 2026-10-08 | DMM2-Proc-PO-024, DMM2-Proc-Delv-4118, DMM2-Proc-Delv-5858 |  | 12.32d |
| DMM2-Proc-Delv-5868 |  | Manuf. & Delivery for Solenoid Primary Control Valves Materials | 25d | 2026-10-07 | 2026-11-04 | DMM2-Proc-PO-025, DMM2-Proc-Delv-4118 |  | 41.32d |
| DMM2-Proc-Delv-5878_R |  | Manuf. & Delivery for Valves Materials(Rem) | 2d | 2026-10-07 | 2026-10-08 | DMM2-Proc-PO-026, DMM2-Proc-Delv-4138, DMM2-Proc-Delv-5878 |  | 11.32d |
|  | SDS1 | **Dry Networks** |  | 2026-01-15 | 2026-11-10 |  |  |  |
|  | MV | **Medium Voltage Network** |  | 2026-01-15 | 2026-11-10 |  |  |  |
| DMM2-Proc-Delv-6438 |  | Manuf. & Delivery for MV Cables Materials | 0.25d | 2026-01-15 A | 2026-01-17 A | DMM2-Proc-PO-082, DMM2-Proc-Delv-4698 | 100% |  |
| DMM2-Proc-Delv-6458 |  | Manuf. & Delivery for Unit Substation Materials (80.11% Completed) | 172.75d | 2026-02-09 A | 2026-09-15 A | DMM2-Proc-PO-084, DMM2-Proc-Delv-4718 SS | 100% |  |
| DMM2-Proc-Delv-6468 |  | Manuf. & Delivery for RMU Materials (80.11% Completed) | 172.75d | 2026-02-09 A | 2026-09-15 A | DMM2-Proc-PO-085, DMM2-Proc-Delv-4728 SS | 100% |  |
| DMM2-Proc-Delv-6468_R |  | Manuf. & Delivery for RMU Materials(Rem) | 20d | 2026-10-07 | 2026-10-29 | DMM2-Proc-PO-085, DMM2-Proc-Delv-4728_R SS, DMM2-Proc-Delv-6468 |  | 24.32d |

| ID | WBS | Task | Duration | Start | Finish | Predecessors | Complete | Total float |
| --- | --- | --- | --- | --- | --- | --- | --- | --- |
| DMM2-Proc-Delv-6458_R |  | Manuf. & Delivery for Unit Substation Materials(Rem) | 20d | 2026-10-19 | 2026-11-10 | DMM2-Proc-PO-084, DMM2-Proc-Delv-4718_R SS, DMM2-Proc-Delv-6458, DMM2-Proc-Delv-4788_R |  | 80.32d |
|  | LV | **Low Voltage Network** |  | 2026-04-25 | 2026-09-10 |  |  |  |
| DMM2-Proc-Delv-6478 |  | Manuf. & Delivery for LV Cables Materials | 115.19d | 2026-04-25 A | 2026-09-10 A | DMM2-Proc-PO-086, DMM2-Proc-Delv-4738 | 100% |  |
|  | Telecom | **Telecommunication Network** |  | 2026-01-21 | 2026-04-15 |  |  |  |
| DMM2-Proc-Delv-6498 |  | Manuf. & Delivery for HDPE Ducts Materials | 9d | 2026-01-21 A | 2026-02-01 A | DMM2-Proc-PO-088, DMM2-Proc-Delv-4758 | 100% |  |
| DMM2-Proc-Delv-6508 |  | Manuf. & Delivery for Manholes Type 1&2 Materials | 3d | 2026-04-13 A | 2026-04-15 A | DMM2-Proc-PO-089, DMM2-Proc-Delv-4768 | 100% |  |
|  | SL | **Street Lighting** |  | 2026-02-03 | 2026-10-29 |  |  |  |
| DMM2-Proc-Delv-6548 |  | Manuf. & Delivery for SL Luminares Materials (90.00% Completed) | 177.75d | 2026-02-03 A | 2026-09-15 A | DMM2-Proc-PO-093, DMM2-Proc-Delv-4808 SS | 100% |  |
| DMM2-Proc-Delv-6538 |  | Manuf. & Delivery for SL Poles Materials (90.00% Completed) | 169d | 2026-02-13 A | 2026-09-15 A | DMM2-Proc-PO-092, DMM2-Proc-Delv-4798 SS | 100% |  |
| DMM2-Proc-Delv-6528 |  | Manuf. & Delivery for SL Cables Materials | 162.25d | 2026-02-17 A | 2026-09-12 A | DMM2-Proc-PO-091 | 100% |  |
| DMM2-Proc-Delv-6518 |  | Manuf. & Delivery for SL Pillars Materials (50.00% Completed) | 51d | 2026-07-19 A | 2026-09-15 A | DMM2-Proc-PO-090, DMM2-Proc-Delv-4748 SS, DMM2-Proc-Delv-4778 SS | 100% |  |
| DMM2-Proc-Delv-6518_R |  | Manuf. & Delivery for SL Pillars Materials(Rem) | 20d | 2026-10-07 | 2026-10-29 | DMM2-Proc-PO-090, DMM2-Proc-Delv-4748_R SS, DMM2-Proc-Delv-4778_R SS, DMM2-Proc-Delv-6518 |  | 87.32d |
| DMM2-Proc-Delv-6538_R |  | Manuf. & Delivery for SL Poles Materials(Rem) | 10d | 2026-10-07 | 2026-10-18 | DMM2-Proc-PO-092, DMM2-Proc-Delv-4798_R SS, DMM2-Proc-Delv-6538 |  | 23.32d |
| DMM2-Proc-Delv-6548_R |  | Manuf. & Delivery for SL Luminares Materials(Rem) | 10d | 2026-10-07 | 2026-10-18 | DMM2-Proc-PO-093, DMM2-Proc-Delv-4808_R SS, DMM2-Proc-Delv-6548 |  | 90.32d |
|  | Short Lead | **Short Lead Items** |  | 2025-10-05 | 2026-12-29 |  |  |  |
|  | Zone 01 | **Zone 01** |  | 2025-10-05 | 2026-12-29 |  |  |  |
|  | Site Grading | **Earth & Road Works** |  | 2025-10-05 | 2026-11-15 |  |  |  |
| DMM2-Proc-Delv-7200 |  | Manuf. & Delivery for Embankment & Backfilling Materials | 37.38d | 2025-10-05 A | 2025-11-17 A | DMM2-Proc-PO-01, DMM2-Eng-PQ-238, DMM2-Eng-SD-02, DMM2-Eng-PQ-208 | 100% |  |
| DMM2-Proc-Delv-7203 |  | Manuf. & Delivery for Subgrade Materials | 128.24d | 2025-11-18 A | 2026-04-29 A | DMM2-Proc-PO-04, DMM2-Proc-Delv-7200 | 100% |  |
| DMM2-Proc-Delv-7201 |  | Manuf. & Delivery for Agg. Base Coarse (90.00% Completed) | 112.76d | 2026-05-03 A | 2026-09-15 A | DMM2-Proc-PO-02, DMM2-Proc-Delv-7203 | 100% |  |
| DMM2-Proc-Delv-7202 |  | Manuf. & Delivery for Asphalt Materials (40.00% Completed) | 90.76d | 2026-06-02 A | 2026-09-15 A | DMM2-Proc-PO-03, DMM2-Proc-Delv-7201 SS | 100% |  |
| DMM2-Proc-Delv-7204 |  | Manuf. & Delivery for Curbstone Materials (0.00% Completed) | 18d | 2026-08-26 A | 2026-09-15 A | DMM2-Proc-PO-05 | 100% |  |
| DMM2-Proc-Delv-7204_R |  | Manuf. & Delivery for Curbstone Materials(Rem) | 13d | 2026-09-19 A | 2026-10-15 | DMM2-Proc-Delv-7205 FF, DMM2-Proc-PO-05, DMM2-Proc-Delv-7204 | 50% | 40.82d |
| DMM2-Proc-Delv-7201_R |  | Manuf. & Delivery for Agg. Base Coarse(Rem) | 31d | 2026-09-27 A | 2026-10-25 | DMM2-Proc-PO-02, DMM2-Proc-Delv-7203, DMM2-Proc-Delv-7201 | 50% | 97.82d |
| DMM2-Proc-Delv-7202_R |  | Manuf. & Delivery for Asphalt Materials(Rem) | 35d | 2026-09-29 A | 2026-10-27 | DMM2-Proc-PO-03, DMM2-Proc-Delv-7201_R SS, DMM2-Proc-Delv-7202 | 50% | 40.82d |
| DMM2-Proc-Delv-7205 |  | Manuf. & Delivery for Interlock Materials | 15d | 2026-09-30 A | 2026-10-15 | DMM2-Proc-PO-06 | 50% | 40.82d |
| DMM2-Proc-Delv-7206 |  | Manuf. & Delivery for Pavement Markings Materials | 10d | 2026-10-15 | 2026-10-27 | DMM2-Proc-PO-07, DMM2-Proc-Delv-7204_R, DMM2-Proc-Delv-7200 |  | 40.82d |
| DMM2-Proc-Delv-7208 |  | Manuf. & Delivery for Traffic Signs Materials | 10d | 2026-10-27 | 2026-11-08 | DMM2-Proc-PO-09, DMM2-Proc-Delv-7206 |  | 40.82d |
| DMM2-Proc-Delv-7209 |  | Manuf. & Delivery for ground Mounted Information Signs Materials | 10d | 2026-10-28 | 2026-11-08 | DMM2-Proc-PO-010 |  | 71.32d |
| DMM2-Proc-Delv-7207 |  | Manuf. & Delivery for Wheels Stopper (precast concrete) Materials | 2d | 2026-11-12 | 2026-11-15 | DMM2-Proc-PO-08, DMM2-Proc-Delv-7503 FF |  | 75.82d |
|  | SDS | **Wet Networks & Stations** |  | 2025-12-07 | 2026-11-04 |  |  |  |
|  | Storm | **Storm Network** |  | 2025-12-07 | 2025-12-18 |  |  |  |
| DMM2-Proc-Delv-7213 |  | Manuf. & Delivery for uPVC Pipes Materials | 10.42d | 2025-12-07 A | 2025-12-18 A | DMM2-Proc-PO-015, DMM2-Proc-PO-014 | 100% |  |
|  | TSE | **TSE Network** |  | 2026-10-19 | 2026-11-04 |  |  |  |
| DMM2-Proc-Delv-7256 |  | Manuf. & Delivery for Dripper Materials | 15d | 2026-10-19 | 2026-11-04 | DMM2-Proc-Delv-648 FF+3d |  | 23.32d |
| DMM2-Proc-Delv-7257 |  | Manuf. & Delivery for Bubbler Materials | 15d | 2026-10-19 | 2026-11-04 | DMM2-Proc-Delv-648 FF+3d |  | 29.32d |
| DMM2-Proc-Delv-7258 |  | Manuf. & Delivery for Pull Box Materials | 15d | 2026-10-19 | 2026-11-04 | DMM2-Proc-Delv-648 FF+3d |  | 22.32d |
| DMM2-Proc-Delv-7259 |  | Manuf. & Delivery for Two Wire Decoder Cable 12 awg Materials | 15d | 2026-10-19 | 2026-11-04 | DMM2-Proc-Delv-648 FF+3d |  | 20.32d |
|  | SDS1 | **Dry Networks** |  | 2026-10-19 | 2026-10-27 |  |  |  |
|  | MV | **Medium Voltage Network** |  |  |  |  |  |  |
|  | SL | **Street Lighting** |  | 2026-10-19 | 2026-10-27 |  |  |  |
| DMM2-Proc-Delv-7240 |  | Manuf. & Delivery for SL Earthing Materials | 5d | 2026-10-19 | 2026-10-24 | DMM2-Proc-PO-094, DMM2-Proc-PO-0147, DMM2-Proc-PO-0140, DMM2-Proc-PO-0127, DMM2-Proc-PO-0111, DMM2-Proc-PO-055, DMM2-Proc-PO-0139, DMM2-Proc-PO-0126 |  | 89.32d |
| DMM2-Proc-Delv-7241 |  | Manuf. & Delivery for SL Drawpits Materials | 4d | 2026-10-24 | 2026-10-27 | DMM2-Proc-PO-095, DMM2-Proc-PO-0105, DMM2-Proc-PO-053, DMM2-Proc-PO-0129, DMM2-Proc-PO-0130, DMM2-Proc-PO-0128, DMM2-Proc-PO-198, DMM2-Proc-PO-0123, DMM2-Proc-PO-0104, DMM2-Proc-PO-0121, DMM2-Proc-PO-0135, DMM2-Proc-PO-051, DMM2-Proc-PO-0122, DMM2-Proc-PO-0120, DMM2-Proc-PO-0103, DMM2-Proc-PO-0134, DMM2-Proc-PO-0133, DMM2-Proc-PO-0148, DMM2-Proc-PO-0142 |  | 87.32d |
|  | Landscape | **Landscape Works** |  | 2026-10-07 | 2026-12-29 |  |  |  |
| DMM2-Proc-Delv-7242 |  | Manuf. & Delivery for Trees Materials | 30d | 2026-10-07 | 2026-11-10 | DMM2-Proc-PO-096 |  | 27.32d |
| DMM2-Proc-Delv-7244 |  | Manuf. & Delivery for Geotextile Layers Materials | 30d | 2026-10-07 | 2026-11-10 | DMM2-Proc-PO-098 |  | 5.32d |
| DMM2-Proc-Delv-7246 |  | Manuf. & Delivery for Large Shrubs Materials | 12d | 2026-10-07 | 2026-10-20 | DMM2-Proc-PO-0100 |  | 37.32d |
| DMM2-Proc-Delv-7248 |  | Manuf. & Delivery for Gravel/Stone Mulch Materials | 20d | 2026-10-07 | 2026-10-29 | DMM2-Proc-PO-0102 |  | 15.32d |
| DMM2-Proc-Delv-7252 |  | Manuf. & Delivery for Vehicle and Pedestrian Steel Gate Materials | 30d | 2026-10-10 | 2026-11-12 | DMM2-Proc-PO-0106, DMM2-Proc-PO-097 |  | 6.32d |
| DMM2-Proc-Delv-7251 |  | Manuf. & Delivery for Vehicle Steel Gate Materials | 10d | 2026-11-14 | 2026-11-24 | DMM2-Proc-PO-0105, DMM2-Proc-Delv-7252, DMM2-Proc-PO-095 |  | 10.32d |
| DMM2-Proc-Delv-7245 |  | Manuf. & Delivery for Plastic edge Materials | 10d | 2026-11-19 | 2026-11-30 | DMM2-Proc-PO-099, DMM2-Proc-Delv-7334 |  | 5.32d |
| DMM2-Proc-Delv-7250 |  | Manuf. & Delivery Prepare & Submit for Fences (MODON) Materials | 10d | 2026-11-25 | 2026-12-06 | DMM2-Proc-PO-0104, DMM2-Proc-Delv-7251, DMM2-Proc-PO-095 |  | 10.32d |
| DMM2-Proc-Delv-7247 |  | Manuf. & Delivery for Plants Materials | 15d | 2026-12-01 | 2026-12-17 | DMM2-Proc-PO-0101, DMM2-Proc-Delv-7245, DMM2-Proc-Delv-7541 |  | 8.32d |
| DMM2-Proc-Delv-7249 |  | Manuf. & Delivery for Fences (ZATCA HCIS) Materials | 10d | 2026-12-07 | 2026-12-17 | DMM2-Proc-PO-0103, DMM2-Proc-Delv-7250 |  | 10.32d |
| DMM2-Proc-Delv-7243 |  | Manuf. & Delivery for Ornamental Grasses Materials | 10d | 2026-12-19 | 2026-12-29 | DMM2-Proc-PO-097, DMM2-Proc-Delv-7247, DMM2-Proc-Delv-7328, DMM2-Proc-PO-0106 |  | 10.32d |
|  | Zone 02 | **Zone 02** |  | 2025-10-22 | 2026-12-23 |  |  |  |
|  | Site Grading | **Earth & Road Works** |  | 2025-10-22 | 2026-11-19 |  |  |  |
| DMM2-Proc-Delv-7263 |  | Manuf. & Delivery for Embankment & Backfilling Materials | 113.7d | 2025-10-22 A | 2026-03-09 A | DMM2-Proc-PO-01, DMM2-Proc-Delv-7200 | 100% |  |
| DMM2-Proc-Delv-7266 |  | Manuf. & Delivery for Subgrade Materials | 112.86d | 2025-12-07 A | 2026-04-29 A | DMM2-Proc-PO-04, DMM2-Proc-Delv-7203 | 100% |  |
| DMM2-Proc-Delv-7264 |  | Manuf. & Delivery for Agg. Base Coarse (30.00% Completed) | 104.76d | 2026-05-12 A | 2026-09-15 A | DMM2-Proc-PO-02, DMM2-Proc-Delv-7201 SS | 100% |  |
| DMM2-Proc-Delv-7265 |  | Manuf. & Delivery for Asphalt Materials | 10d | 2026-09-17 A | 2026-10-27 | DMM2-Proc-PO-03, DMM2-Proc-Delv-7202_R FF | 50% | 40.82d |
| DMM2-Proc-Delv-7264_R |  | Manuf. & Delivery for Agg. Base Coarse(Rem) | 7d | 2026-09-23 A | 2026-10-11 | DMM2-Proc-PO-02, DMM2-Proc-Delv-7201_R SS, DMM2-Proc-Delv-7264 | 50% | 109.82d |
| DMM2-Proc-Delv-7267 |  | Manuf. & Delivery for Curbstone Materials | 8d | 2026-10-05 A | 2026-10-11 | DMM2-Proc-PO-05, DMM2-Proc-Delv-7204_R | 50% | 47.32d |
| DMM2-Proc-Delv-7268 |  | Manuf. & Delivery for Interlock Materials | 15d | 2026-10-05 A | 2026-10-15 | DMM2-Proc-PO-06, DMM2-Proc-Delv-7205 | 50% | 32.82d |
| DMM2-Proc-Delv-7269 |  | Manuf. & Delivery for Pavement Markings Materials | 10d | 2026-10-27 | 2026-11-08 | DMM2-Proc-PO-07, DMM2-Proc-Delv-7206 |  | 40.82d |
| DMM2-Proc-Delv-7271 |  | Manuf. & Delivery for Traffic Signs Materials | 10d | 2026-11-08 | 2026-11-19 | DMM2-Proc-PO-09, DMM2-Proc-Delv-7208 |  | 40.82d |
| DMM2-Proc-Delv-7272 |  | Manuf. & Delivery for ground Mounted Information Signs Materials | 10d | 2026-11-09 | 2026-11-19 | DMM2-Proc-PO-010, DMM2-Proc-Delv-7209 |  | 71.32d |
| DMM2-Proc-Delv-7270 |  | Manuf. & Delivery for Wheels Stopper (precast concrete) Materials | 2d | 2026-11-12 | 2026-11-15 | DMM2-Proc-PO-08, DMM2-Proc-Delv-7207 SS |  | 75.82d |
|  | SDS | **Wet Networks & Stations** |  | 2025-12-09 | 2026-11-21 |  |  |  |
|  | Storm | **Storm Network** |  | 2025-12-09 | 2026-09-22 |  |  |  |

| ID | WBS | Task | Duration | Start | Finish | Predecessors | Complete | Total float |
| --- | --- | --- | --- | --- | --- | --- | --- | --- |
| DMM2-Proc-Delv-7277 |  | Manuf. & Delivery for uPVC Pipes Materials (77.75% Completed) | 225.18d | 2025-12-09 A | 2026-09-15 A | DMM2-Proc-Delv-7213 | 100% |  |
| DMM2-Proc-Delv-7274 |  | Manuf. & Delivery for Steel Reinforcement Materials (40.00% Completed) | 98d | 2026-05-20 A | 2026-09-15 A | DMM2-Proc-PO-012 | 100% |  |
| DMM2-Proc-Delv-7274_R |  | Manuf. & Delivery for Steel Reinforcement Materials(Rem) | 18d | 2026-09-19 A | 2026-09-20 A | DMM2-Proc-PO-012, DMM2-Proc-Delv-7274 | 100% |  |
| DMM2-Proc-Delv-7277_R |  | Manuf. & Delivery for uPVC Pipes Materials(Rem) | 6d | 2026-09-21 A | 2026-09-22 A | DMM2-Proc-Delv-7213, DMM2-Proc-Delv-7277 | 100% |  |
|  | TSE | **TSE Network** |  | 2026-10-25 | 2026-11-04 |  |  |  |
| DMM2-Proc-Delv-7382 |  | Manuf. & Delivery for Pull Box Materials | 10d | 2026-10-25 | 2026-11-04 | DMM2-Proc-Delv-7258 FF |  | 22.32d |
| DMM2-Proc-Delv-7383 |  | Manuf. & Delivery for Two Wire Decoder Cable 12 awg Materials | 10d | 2026-10-25 | 2026-11-04 | DMM2-Proc-Delv-7259 FF |  | 20.32d |
| DMM2-Proc-Delv-7380 |  | Manuf. & Delivery for Dripper Materials | 7d | 2026-10-28 | 2026-11-04 | DMM2-Proc-Delv-7256 FF |  | 23.32d |
| DMM2-Proc-Delv-7381 |  | Manuf. & Delivery for Bubbler Materials | 7d | 2026-10-28 | 2026-11-04 | DMM2-Proc-Delv-7257 FF |  | 29.32d |
|  | Pot Pump St. | **Potable Water Pump Station** |  | 2026-09-19 | 2026-11-21 |  |  |  |
|  | 1 | **Civil & Architecture** |  | 2026-09-19 | 2026-11-09 |  |  |  |
| DMM2-Proc-Delv-7293 |  | Manuf. & Delivery for CMU Walls Materials | 3d | 2026-09-19 A | 2026-09-21 A | DMM2-Proc-PO-031 | 100% |  |
| DMM2-Proc-Delv-7297 |  | Manuf. & Delivery for Gravel Materials | 2d | 2026-10-10 | 2026-10-11 | DMM2-Proc-PO-035 |  | 50.32d |
| DMM2-Proc-Delv-7294 |  | Manuf. & Delivery for Stainless Steel Ladder Materials | 15d | 2026-10-13 | 2026-10-29 | DMM2-Proc-PO-032, DMM2-Proc-Delv-2648_R |  | 18.32d |
| DMM2-Proc-Delv-7298 |  | Manuf. & Delivery for Handrail Materials | 15d | 2026-10-14 | 2026-10-31 | DMM2-Proc-PO-036 |  | 1.32d |
| DMM2-Proc-Delv-7292 |  | Manuf. & Delivery for Stairs Materials | 8d | 2026-10-24 | 2026-11-01 | DMM2-Proc-PO-030, DMM2-Proc-Delv-2648_R, DMM2-Proc-Delv-2528_R |  | 16.32d |
| DMM2-Proc-Delv-7295 |  | Manuf. & Delivery for Steel shutter Door Materials | 15d | 2026-10-24 | 2026-11-09 | DMM2-Proc-PO-033, DMM2-Proc-PO-178, DMM2-Proc-PO-049 |  | 15.32d |
| DMM2-Proc-Delv-7296 |  | Manuf. & Delivery for Metal Railing Materials | 8d | 2026-11-01 | 2026-11-09 | DMM2-Proc-PO-034, DMM2-Proc-Delv-7295 FF |  | 15.32d |
|  | 3 | **Mechanical** |  | 2026-10-10 | 2026-11-21 |  |  |  |
| DMM2-Proc-Delv-7304 |  | Manuf. & Delivery for Sand Trap Louver Materials | 10d | 2026-10-10 | 2026-10-20 | DMM2-Proc-PO-042 |  | 7.32d |
| DMM2-Proc-Delv-7393 |  | Manuf. & Delivery for Fans Materials | 10d | 2026-10-10 | 2026-10-20 | DMM2-Proc-PO-188, DMM2-Proc-PO-069 |  | 20.32d |
| DMM2-Proc-Delv-7312 |  | Manuf. & Delivery for Trench Drain Materials | 6d | 2026-10-15 | 2026-10-21 | DMM2-Proc-PO-050 |  | 38.32d |
| DMM2-Proc-Delv-7306 |  | Manuf. & Delivery for Hose Bibb Materials | 10d | 2026-10-17 | 2026-10-27 | DMM2-Proc-PO-044, DMM2-Proc-PO-056 |  | 34.32d |
| DMM2-Proc-Delv-7308 |  | Manuf. & Delivery for Chlorine Cylinder Racks Materials | 20d | 2026-10-17 | 2026-11-08 | DMM2-Proc-PO-046, DMM2-Proc-Delv-2648_R |  | 2.32d |
| DMM2-Proc-Delv-7309 |  | Manuf. & Delivery for Chlorinators Materials | 8d | 2026-10-19 | 2026-10-27 | DMM2-Proc-PO-047, DMM2-Proc-Delv-2648_R |  | 14.32d |
| DMM2-Proc-Delv-7305 |  | Manuf. & Delivery for FM200 Supression System Materials | 15d | 2026-10-21 | 2026-11-07 | DMM2-Proc-PO-043, DMM2-Proc-Delv-2648_R, DMM2-Proc-Delv-7304, DMM2-Proc-Delv-3748, DMM2-Proc-Delv-3758_R |  | 7.32d |
| DMM2-Proc-Delv-7310 |  | Manuf. & Delivery for Discharge Line Analyzer Materials | 9d | 2026-10-21 | 2026-10-31 | DMM2-Proc-PO-048, DMM2-Proc-Delv-2648_R |  | 11.32d |
| DMM2-Proc-Delv-7394 |  | Manuf. & Delivery for Louvers Materials | 15d | 2026-10-21 | 2026-11-07 | DMM2-Proc-PO-198, DMM2-Proc-Delv-7393, DMM2-Proc-PO-095 |  | 30.32d |
| DMM2-Proc-Delv-7311 |  | Manuf. & Delivery for Emergency shower Materials | 10d | 2026-10-24 | 2026-11-03 | DMM2-Proc-PO-049, DMM2-Proc-PO-178, DMM2-Proc-PO-014 |  | 30.32d |
| DMM2-Proc-Delv-7307 |  | Manuf. & Delivery for Exhaust Fans Materials | 10d | 2026-11-01 | 2026-11-11 | DMM2-Proc-PO-045, DMM2-Proc-Delv-7298 |  | 1.32d |
| DMM2-Proc-Delv-7303 |  | Manuf. & Delivery for Strainers Materials | 10d | 2026-11-10 | 2026-11-21 | DMM2-Proc-PO-041, DMM2-Proc-Delv-7296 |  | 15.32d |
|  | 2 | **Electrical** |  | 2026-11-08 | 2026-11-12 |  |  |  |
| DMM2-Proc-Delv-7396 |  | Manuf. & Delivery for Switches and Circuit Breakers Materials | 5d | 2026-11-08 | 2026-11-12 | DMM2-Proc-PO-051, DMM2-Proc-Delv-7394, DMM2-Proc-PO-095 |  | 30.32d |
|  | SDS1 | **Dry Networks** |  |  |  |  |  |  |
|  | MV | **Medium Voltage Network** |  |  |  |  |  |  |
|  | SL | **Street Lighting** |  |  |  |  |  |  |
|  | Landscape | **Landscape Works** |  | 2026-10-21 | 2026-12-23 |  |  |  |
| DMM2-Proc-Delv-7332 |  | Manuf. & Delivery for Large Shrubs Materials | 3d | 2026-10-21 | 2026-10-24 | DMM2-Proc-PO-0100, DMM2-Proc-Delv-7246, DMM2-Proc-Delv-7540 |  | 37.32d |
| DMM2-Proc-Delv-7328 |  | Manuf. & Delivery for Trees Materials | 15d | 2026-11-11 | 2026-11-28 | DMM2-Proc-PO-096, DMM2-Proc-Delv-7242, DMM2-Proc-Delv-7246 |  | 27.32d |
| DMM2-Proc-Delv-7330 |  | Manuf. & Delivery for Geotextile Layers Materials | 10d | 2026-11-11 | 2026-11-22 | DMM2-Proc-PO-098, DMM2-Proc-Delv-7244 |  | 9.32d |
| DMM2-Proc-Delv-7334 |  | Manuf. & Delivery for Gravel/Stone Mulch Materials | 7d | 2026-11-11 | 2026-11-18 | DMM2-Proc-PO-0102, DMM2-Proc-Delv-7248, DMM2-Proc-Delv-7244 |  | 5.32d |
| DMM2-Proc-Delv-7338 |  | Manuf. & Delivery for Vehicle and Pedestrian Steel Gate Materials | 10d | 2026-11-14 | 2026-11-24 | DMM2-Proc-PO-0106, DMM2-Proc-Delv-7252 |  | 6.32d |
| DMM2-Proc-Delv-7337 |  | Manuf. & Delivery for Vehicle Steel Gate Materials | 10d | 2026-11-25 | 2026-12-06 | DMM2-Proc-PO-0105, DMM2-Proc-Delv-7251 |  | 14.32d |
| DMM2-Proc-Delv-7331 |  | Manuf. & Delivery for Plastic edge Materials | 10d | 2026-12-01 | 2026-12-12 | DMM2-Proc-PO-099, DMM2-Proc-Delv-7245 |  | 5.32d |
| DMM2-Proc-Delv-7335 |  | Manuf. & Delivery for Fences (ZATCA HCIS) Materials | 15d | 2026-12-07 | 2026-12-23 | DMM2-Proc-PO-0103, DMM2-Proc-Delv-7249 SS |  | 10.32d |
| DMM2-Proc-Delv-7336 |  | Manuf. & Delivery for Fences (MODON) Materials | 15d | 2026-12-07 | 2026-12-23 | DMM2-Proc-PO-0104, DMM2-Proc-Delv-7250 SS, DMM2-Proc-Delv-7249 SS |  | 10.32d |
| DMM2-Proc-Delv-7329 |  | Manuf. & Delivery for Ornamental Grasses Materials | 3d | 2026-12-19 | 2026-12-21 | DMM2-Proc-PO-097, DMM2-Proc-Delv-7243 SS |  | 10.32d |
| DMM2-Proc-Delv-7333 |  | Manuf. & Delivery for Plants Materials | 5d | 2026-12-19 | 2026-12-23 | DMM2-Proc-PO-0101, DMM2-Proc-Delv-7247, DMM2-Proc-Delv-7331 |  | 8.32d |
|  | Guard Room | **Guard Rooms** |  | 2026-10-07 | 2026-11-16 |  |  |  |
|  | GR MAT Civil | **Civil & Architecture** |  | 2026-10-07 | 2026-11-07 |  |  |  |
| DMM2-Proc-Delv-7343 |  | Manuf. & Delivery for Water proofing Membrane Materials | 5d | 2026-10-07 | 2026-10-12 | DMM2-Proc-PO-0115 |  | 44.32d |
| DMM2-Proc-Delv-7344 |  | Manuf. & Delivery for Concrete Masonry Materials | 5d | 2026-10-07 | 2026-10-12 | DMM2-Proc-Delv-7293 |  | 20.32d |
| DMM2-Proc-Delv-7342 |  | Manuf. & Delivery for Fluid-Applied Water Proofing Paint Materials | 3d | 2026-10-10 | 2026-10-12 | DMM2-Proc-PO-0114 |  | 42.32d |
| DMM2-Proc-Delv-7345 |  | Manuf. & Delivery for Porcelain Flooring Tiles Materials | 15d | 2026-10-10 | 2026-10-26 | DMM2-Proc-PO-0117 |  | 19.32d |
| DMM2-Proc-Delv-7341 |  | Manuf. & Delivery for Board Insulation Materials | 7d | 2026-10-14 | 2026-10-21 | DMM2-Proc-PO-0113, DMM2-Proc-Delv-7344 |  | 19.32d |
| DMM2-Proc-Delv-7339 |  | Manuf. & Delivery for Stone Coping Materials | 3d | 2026-10-22 | 2026-10-25 | DMM2-Proc-PO-0108, DMM2-Proc-Delv-7341, DMM2-Proc-PO-0110 |  | 20.32d |
| DMM2-Proc-Delv-7346 |  | Manuf. & Delivery for gypsum Board Suspended Ceiling Materials | 3d | 2026-10-22 | 2026-10-25 | DMM2-Proc-PO-0118, DMM2-Proc-Delv-7341 |  | 33.32d |
| DMM2-Proc-Delv-7348 |  | Manuf. & Delivery for Raised Floor System Materials | 3d | 2026-10-22 | 2026-10-25 | DMM2-Proc-PO-0120, DMM2-Proc-Delv-7341, DMM2-Proc-PO-095 |  | 33.32d |
| DMM2-Proc-Delv-7351 |  | Manuf. & Delivery for Aluminum Windows Materials | 3d | 2026-10-22 | 2026-10-25 | DMM2-Proc-PO-0123, DMM2-Proc-Delv-7341, DMM2-Proc-PO-095 |  | 26.32d |
| DMM2-Proc-Delv-7340 |  | Manuf. & Delivery for Vapor Retarders Materials | 5d | 2026-10-27 | 2026-11-01 | DMM2-Proc-PO-0112, DMM2-Proc-Delv-7345, DMM2-Proc-Delv-7343, B8.31 23 16.019 |  | 32.32d |
| DMM2-Proc-Delv-7347 |  | Manuf. & Delivery for Painting Materials | 2d | 2026-10-27 | 2026-10-28 | DMM2-Proc-PO-0119 SS, DMM2-Proc-Delv-7346, DMM2-Proc-Delv-7340 SS, B8.31 23 16.019 |  | 32.32d |
| DMM2-Proc-Delv-7349 |  | Manuf. & Delivery for Steel Doors Materials | 5d | 2026-10-27 | 2026-11-01 | DMM2-Proc-PO-0121, DMM2-Proc-Delv-7345, DMM2-Proc-PO-095 |  | 27.32d |
| DMM2-Proc-Delv-7350 |  | Manuf. & Delivery for Wood Doors Materials | 5d | 2026-11-02 | 2026-11-07 | DMM2-Proc-PO-0122, DMM2-Proc-Delv-7349, DMM2-Proc-PO-095 |  | 27.32d |
|  | GR MAT Mech | **Mechanical** |  | 2026-10-07 | 2026-11-07 |  |  |  |
| DMM2-Proc-Delv-7353 |  | Manuf. & Delivery for uPVC Pipes Materials | 2d | 2026-10-07 | 2026-10-08 | DMM2-Proc-PO-0125 |  | 6.32d |
| DMM2-Proc-Delv-7360 |  | Manuf. & Delivery for Manhole Materials | 3d | 2026-10-07 | 2026-10-10 | DMM2-Proc-PO-0132 |  | 23.32d |
| DMM2-Proc-Delv-7354 |  | Manuf. & Delivery for PPR Pipes Materials | 3d | 2026-10-10 | 2026-10-12 | DMM2-Proc-PO-0126 |  | 11.32d |
| DMM2-Proc-Delv-7356 |  | Manuf. & Delivery for Scupper Materials | 3d | 2026-10-10 | 2026-10-12 | DMM2-Proc-PO-0128, B8.31 23 16.0111, DMM2-Proc-PO-095 |  | 15.32d |
| DMM2-Proc-Delv-7358 |  | Manuf. & Delivery for Floor Drain Materials | 2d | 2026-10-13 | 2026-10-14 | DMM2-Proc-PO-0130, DMM2-Proc-Delv-7354, DMM2-Proc-PO-069, DMM2-Proc-PO-095, DMM2-Proc-PO-014 |  | 17.32d |
| DMM2-Proc-Delv-7357 |  | Manuf. & Delivery for Clean out Materials | 1d | 2026-10-15 | 2026-10-15 | DMM2-Proc-PO-0129 |  | 14.32d |

| ID | WBS | Task | Duration | Start | Finish | Predecessors | Complete | Total float |
| --- | --- | --- | --- | --- | --- | --- | --- | --- |
| DMM2-Proc-Delv-7362 |  | Manuf. & Delivery for Toilet Materials | 3d | 2026-10-21 | 2026-10-24 | DMM2-Proc-PO-0134, DMM2-Proc-PO-095 |  | 33.32d |
| DMM2-Proc-Delv-7361 |  | Manuf. & Delivery for Shower Materials | 2d | 2026-10-25 | 2026-10-26 | DMM2-Proc-PO-0133, DMM2-Proc-Delv-7363 SS, DMM2-Proc-PO-095 |  | 33.32d |
| DMM2-Proc-Delv-7363 |  | Manuf. & Delivery for Semi Pedestal Sink Materials | 2d | 2026-10-25 | 2026-10-26 | DMM2-Proc-PO-0135, DMM2-Proc-Delv-7356, DMM2-Proc-Delv-7362, DMM2-Proc-PO-095 |  | 33.32d |
| DMM2-Proc-Delv-7352 |  | Manuf. & Delivery for Exhaust Axial Fans Materials | 3d | 2026-10-26 | 2026-10-28 | DMM2-Proc-PO-0124, DMM2-Proc-Delv-7339, DMM2-Proc-PO-0125 |  | 20.32d |
| DMM2-Proc-Delv-7364 |  | Manuf. & Delivery for Fire Extinguishers (CO2 & Powder) Materials | 3d | 2026-10-27 | 2026-10-29 | DMM2-Proc-PO-0136, DMM2-Proc-Delv-7371 |  | 19.32d |
| DMM2-Proc-Delv-7359 |  | Manuf. & Delivery for Electrical Water Heater Materials | 5d | 2026-10-31 | 2026-11-04 | DMM2-Proc-PO-0131, DMM2-Proc-Delv-7364, DMM2-Proc-Delv-7370, DMM2-Proc-Delv-7352 |  | 19.32d |
| DMM2-Proc-Delv-7355 |  | Manuf. & Delivery for DX Wall Mounted Split/AC Materials | 2d | 2026-11-05 | 2026-11-07 | DMM2-Proc-PO-0127, DMM2-Proc-Delv-7359, DMM2-Proc-PO-094 |  | 19.32d |
|  | GR MAT Elec | **Electrical** |  | 2026-10-10 | 2026-11-16 |  |  |  |
| DMM2-Proc-Delv-7370 |  | Manuf. & Delivery for Enclosed Switches and Circuit Breakers Materials | 3d | 2026-10-10 | 2026-10-12 | DMM2-Proc-PO-0142, DMM2-Proc-PO-095 |  | 34.32d |
| DMM2-Proc-Delv-7367 |  | Manuf. & Delivery for Lighting Materials | 5d | 2026-10-13 | 2026-10-18 | DMM2-Proc-PO-0139, DMM2-Proc-Delv-7344, DMM2-Proc-PO-094 |  | 44.32d |
| DMM2-Proc-Delv-7368 |  | Manuf. & Delivery for Wiring Devices Materials | 4d | 2026-10-17 | 2026-10-20 | DMM2-Proc-PO-0140, DMM2-Proc-Delv-7344, DMM2-Proc-PO-0141, DMM2-Proc-PO-094 |  | 27.32d |
| DMM2-Proc-Delv-7369 |  | Manuf. & Delivery for Ground Wires, Rods, Pits, Clamping Materials | 4d | 2026-10-17 | 2026-10-20 | DMM2-Proc-PO-0141, DMM2-Proc-Delv-7344, DMM2-Eng-PQ-1548, DMM2-Proc-PO-0140 |  | 35.32d |
| DMM2-Proc-Delv-7375 |  | Manuf. & Delivery for PC Workstation Materials | 2d | 2026-10-21 | 2026-10-22 | DMM2-Proc-PO-0147, DMM2-Proc-Delv-7369, DMM2-Proc-PO-094 |  | 35.32d |
| DMM2-Proc-Delv-7366 |  | Manuf. & Delivery for Low Voltage Cable Materials | 4d | 2026-10-22 | 2026-10-26 | DMM2-Proc-PO-0138, DMM2-Proc-Delv-7341, DMM2-Proc-PO-0137, DMM2-Proc-PO-071 |  | 25.32d |
| DMM2-Proc-Delv-7371 |  | Manuf. & Delivery for Fire Alarm System Materials | 4d | 2026-10-22 | 2026-10-26 | DMM2-Proc-PO-0143, DMM2-Proc-Delv-7341 |  | 19.32d |
| DMM2-Proc-Delv-7376 |  | Manuf. & Delivery for 50 inch Screen Materials | 3d | 2026-10-26 | 2026-10-28 | DMM2-Proc-PO-0148, DMM2-Proc-Delv-7339, DMM2-Proc-Delv-7375, DMM2-Proc-PO-095 |  | 33.32d |
| DMM2-Proc-Delv-7374 |  | Manuf. & Delivery for Data/ Voice RJ45 Outlet Materials | 3d | 2026-10-27 | 2026-10-29 | DMM2-Proc-PO-0146, DMM2-Proc-Delv-7371 |  | 25.32d |
| DMM2-Proc-Delv-7373 |  | Manuf. & Delivery for Data Cabinet Materials | 5d | 2026-10-31 | 2026-11-04 | DMM2-Proc-PO-0145, DMM2-Proc-Delv-7374 |  | 25.32d |
| DMM2-Proc-Delv-7365 |  | Manuf. & Delivery for Panelboards Materials | 1d | 2026-11-16 | 2026-11-16 | DMM2-Proc-PO-0137, DMM2-Proc-Delv-3838, DMM2-Proc-PO-0138 |  | 8.32d |
|  | Zone 03 | **Zone 03** |  | 2025-11-03 | 2026-11-23 |  |  |  |
|  | Site Grading | **Earth & Road Works** |  | 2025-11-03 | 2026-11-23 |  |  |  |
| DMM2-Proc-Delv-7403 |  | Manuf. & Delivery for Embankment & Backfilling Materials | 135.75d | 2025-11-03 A | 2026-04-22 A | DMM2-Proc-PO-01, DMM2-Proc-Delv-7263 | 100% |  |
| DMM2-Proc-Delv-7406 |  | Manuf. & Delivery for Subgrade Materials | 101.77d | 2025-12-19 A | 2026-04-29 A | DMM2-Proc-PO-04, DMM2-Proc-Delv-7266 | 100% |  |
| DMM2-Proc-Delv-7404 |  | Manuf. & Delivery for Agg. Base Coarse (40.00% Completed) | 106.76d | 2026-05-10 A | 2026-09-15 A | DMM2-Proc-PO-02, DMM2-Proc-Delv-7264 SS | 100% |  |
| DMM2-Proc-Delv-7405 |  | Manuf. & Delivery for Asphalt Materials (30.00% Completed) | 87.76d | 2026-06-06 A | 2026-09-15 A | DMM2-Proc-PO-03, DMM2-Proc-Delv-7500, DMM2-Proc-Delv-7498 SS | 100% |  |
| DMM2-Proc-Delv-7404_R |  | Manuf. & Delivery for Agg. Base Coarse(Rem) | 6d | 2026-09-20 A | 2026-10-10 | DMM2-Proc-PO-02, DMM2-Proc-Delv-7264_R SS, DMM2-Proc-Delv-7404 | 50% | 42.82d |
| DMM2-Proc-Delv-7405_R |  | Manuf. & Delivery for Asphalt Materials(Rem) | 10.5d | 2026-09-24 A | 2026-10-13 | DMM2-Proc-PO-03, DMM2-Proc-Delv-7500, DMM2-Proc-Delv-7498_R SS, DMM2-Proc-Delv-7405 | 50% | 14.07d |
| DMM2-Proc-Delv-7408 |  | Manuf. & Delivery for Interlock Materials | 15d | 2026-10-07 | 2026-10-24 | DMM2-Proc-PO-06 |  | 5.32d |
| DMM2-Proc-Delv-7407 |  | Manuf. & Delivery for Curbstone Materials | 5d | 2026-10-13 | 2026-10-19 | DMM2-Proc-PO-05, DMM2-Proc-Delv-7405_R |  | 15.07d |
| DMM2-Proc-Delv-7412 |  | Manuf. & Delivery for ground Mounted Information Signs Materials | 5d | 2026-10-28 | 2026-11-02 | DMM2-Proc-PO-010 |  | 9.32d |
| DMM2-Proc-Delv-7409 |  | Manuf. & Delivery for Pavement Markings Materials | 4d | 2026-11-08 | 2026-11-12 | DMM2-Proc-PO-07, DMM2-Proc-Delv-7269 |  | 40.82d |
| DMM2-Proc-Delv-7410 |  | Manuf. & Delivery for Wheels Stopper (precast concrete) Materials | 2d | 2026-11-12 | 2026-11-15 | DMM2-Proc-PO-08, DMM2-Proc-Delv-7270 SS |  | 75.82d |
| DMM2-Proc-Delv-7411 |  | Manuf. & Delivery for Traffic Signs Materials | 3d | 2026-11-19 | 2026-11-23 | DMM2-Proc-PO-09, DMM2-Proc-Delv-7271, DMM2-Proc-Delv-7501 |  | 40.82d |
|  | SDS | **Wet Networks & Stations** |  | 2026-01-12 | 2026-11-22 |  |  |  |
|  | Storm | **Storm Network** |  | 2026-05-18 | 2026-09-27 |  |  |  |
| DMM2-Proc-Delv-7417 |  | Manuf. & Delivery for uPVC Pipes Materials (80.00% Completed) | 99.21d | 2026-05-18 A | 2026-09-15 A | DMM2-Proc-Delv-7277 SS | 100% |  |
| DMM2-Proc-Delv-7414 |  | Manuf. & Delivery for Steel Reinforcement Materials (50.00% Completed) | 92d | 2026-06-01 A | 2026-09-15 A | DMM2-Proc-Delv-7274 SS | 100% |  |
| DMM2-Proc-Delv-7417_R |  | Manuf. & Delivery for uPVC Pipes Materials(Rem) | 5.2d | 2026-09-21 A | 2026-09-27 A | DMM2-Proc-Delv-7277_R SS, DMM2-Proc-Delv-7417 | 100% |  |
|  | TSE | **TSE Network** |  | 2026-11-05 | 2026-11-22 |  |  |  |
| DMM2-Proc-Delv-7490 |  | Manuf. & Delivery for Dripper Materials | 7d | 2026-11-05 | 2026-11-12 | DMM2-Proc-Delv-7380, B3.1. 33 14 13-4 |  | 23.32d |
| DMM2-Proc-Delv-7491 |  | Manuf. & Delivery for Bubbler Materials | 15d | 2026-11-05 | 2026-11-22 | DMM2-Proc-Delv-7381 |  | 29.32d |
| DMM2-Proc-Delv-7492 |  | Manuf. & Delivery for Pull Box Materials | 15d | 2026-11-05 | 2026-11-22 | DMM2-Proc-Delv-7382 |  | 22.32d |
| DMM2-Proc-Delv-7493 |  | Manuf. & Delivery for Two Wire Decoder Cable 12 awg Materials | 15d | 2026-11-05 | 2026-11-22 | DMM2-Proc-Delv-7383 |  | 20.32d |
|  | Sewer Lift St. | **Sewer Lift Station** |  | 2026-01-12 | 2026-11-05 |  |  |  |
|  | 1 | **Civil & Architecture** |  | 2026-10-10 | 2026-11-04 |  |  |  |
| DMM2-Proc-Delv-7432 |  | Manuf. & Delivery for Metal Ladders Materials | 3d | 2026-10-10 | 2026-10-12 | DMM2-Proc-PO-052 |  | 31.32d |
| DMM2-Proc-Delv-7434 |  | Manuf. & Delivery for Internal painting (Acrylic) Materials | 4d | 2026-10-12 | 2026-10-15 | DMM2-Proc-PO-054, DMM2-Proc-PO-056 |  | 25.32d |
| DMM2-Proc-Delv-7435 |  | Manuf. & Delivery for Signages Materials | 3d | 2026-10-31 | 2026-11-02 | DMM2-Proc-PO-055, DMM2-Proc-Delv-7434, DMM2-Proc-Delv-4598_R, DMM2-Proc-PO-094 |  | 19.32d |
| DMM2-Proc-Delv-7433 |  | Manuf. & Delivery for Metal Covers Materials | 2d | 2026-11-03 | 2026-11-04 | DMM2-Proc-PO-053, DMM2-Proc-Delv-7435, DMM2-Proc-PO-095 |  | 19.32d |
|  | 3 | **Mechanical** |  | 2026-01-12 | 2026-11-05 |  |  |  |
| DMM2-Proc-Delv-7439 |  | Manuf. & Delivery for Geotextile Membrane Materials (30.00% Completed) | 197d | 2026-01-12 A | 2026-09-15 A | DMM2-Proc-PO-059 | 100% |  |
| DMM2-Proc-Delv-7439_R |  | Manuf. & Delivery for Geotextile Membrane Materials(Rem) | 14d | 2026-10-07 | 2026-10-22 | DMM2-Proc-PO-059, DMM2-Proc-Delv-7439 |  | 11.32d |
| DMM2-Proc-Delv-7445 |  | Manuf. & Delivery for Penstock Materials | 15d | 2026-10-07 | 2026-10-24 | DMM2-Proc-PO-065 |  | 31.32d |
| DMM2-Proc-Delv-7447 |  | Manuf. & Delivery for Scupper Materials | 20d | 2026-10-10 | 2026-11-01 | DMM2-Proc-PO-067, DMM2-Proc-PO-013 |  | 25.32d |
| DMM2-Proc-Delv-7446 |  | Manuf. & Delivery for Screening Container Materials | 4d | 2026-11-02 | 2026-11-05 | DMM2-Proc-PO-066, DMM2-Proc-Delv-4458 |  | 18.32d |
|  | 2 | **Electrical** |  | 2026-10-07 | 2026-11-03 |  |  |  |
| DMM2-Proc-Delv-7454 |  | Manuf. & Delivery for Under Ground Fuel Tank Materials | 20d | 2026-10-07 | 2026-10-29 | DMM2-Proc-PO-074 |  | 19.32d |
| DMM2-Proc-Delv-7456 |  | Manuf. & Delivery for Electrical Hand Holes Materials | 3d | 2026-10-10 | 2026-10-12 | DMM2-Proc-PO-076, DMM2-Proc-Delv-7432 SS |  | 31.32d |
| DMM2-Proc-Delv-7457 |  | Manuf. & Delivery for Galvanized Steel Pole Materials | 3d | 2026-10-10 | 2026-10-12 | DMM2-Proc-PO-077, DMM2-Proc-Delv-7456 SS |  | 31.32d |
| DMM2-Proc-Delv-7458 |  | Manuf. & Delivery for Surfaced Mounted Light (LED) Materials | 3d | 2026-10-10 | 2026-10-12 | DMM2-Proc-PO-078, DMM2-Proc-Delv-7457 SS, DMM2-Proc-PO-080 |  | 31.32d |
| DMM2-Proc-Delv-7460 |  | Manuf. & Delivery for Process Control Wiring Materials | 2d | 2026-10-25 | 2026-10-26 | DMM2-Proc-PO-080, DMM2-Proc-Delv-7461 SS, DMM2-Proc-PO-078 |  | 43.32d |
| DMM2-Proc-Delv-7461 |  | Manuf. & Delivery for Instrumentation for Process Systems Materials | 9d | 2026-10-25 | 2026-11-03 | DMM2-Proc-PO-081, DMM2-Proc-Delv-4668_R |  | 39.32d |
|  | SDS1 | **Dry Networks** |  |  |  |  |  |  |
|  | MV | **Medium Voltage Network** |  |  |  |  |  |  |
|  | SL | **Street Lighting** |  |  |  |  |  |  |
|  | Zone 04 | **Zone 04** |  | 2025-11-07 | 2026-11-29 |  |  |  |
|  | Site Grading | **Earth & Road Works** |  | 2025-11-07 | 2026-11-15 |  |  |  |
| DMM2-Proc-Delv-7497 |  | Manuf. & Delivery for Embankment & Backfilling Materials | 34.7d | 2025-11-07 A | 2025-12-17 A | DMM2-Proc-PO-01, DMM2-Proc-Delv-7403 | 100% |  |
| DMM2-Proc-Delv-7500 |  | Manuf. & Delivery for Subgrade Materials | 105.4d | 2025-12-15 A | 2026-04-29 A | DMM2-Proc-PO-04, DMM2-Proc-Delv-7406 | 100% |  |
| DMM2-Proc-Delv-7498 |  | Manuf. & Delivery for Agg. Base Coarse (10.00% Completed) | 88.76d | 2026-06-04 A | 2026-09-15 A | DMM2-Proc-PO-02, DMM2-Proc-Delv-7404 SS | 100% |  |

| ID | WBS | Task | Duration | Start | Finish | Predecessors | Complete | Total float |
| --- | --- | --- | --- | --- | --- | --- | --- | --- |
| DMM2-Proc-Delv-7498_R |  | Manuf. & Delivery for Agg. Base Coarse(Rem) | 7.2d | 2026-10-07 | 2026-10-15 | DMM2-Proc-PO-02, DMM2-Proc-Delv-7404_R SS, DMM2-Proc-Delv-7498 |  | 42.82d |
| DMM2-Proc-Delv-7499 |  | Manuf. & Delivery for Asphalt Materials | 7d | 2026-10-13 | 2026-10-21 | DMM2-Proc-PO-03, DMM2-Proc-Delv-7405_R |  | 14.07d |
| DMM2-Proc-Delv-7501 |  | Manuf. & Delivery for Curbstone Materials | 8d | 2026-10-19 | 2026-10-28 | DMM2-Proc-PO-05, DMM2-Proc-Delv-7407 |  | 15.07d |
| DMM2-Proc-Delv-7502 |  | Manuf. & Delivery for Interlock Materials | 8d | 2026-10-25 | 2026-11-02 | DMM2-Proc-PO-06, DMM2-Proc-Delv-7408, DMM2-Proc-Delv-7499 |  | 11.32d |
| DMM2-Proc-Delv-7505 |  | Manuf. & Delivery for Traffic Signs Materials | 3d | 2026-11-03 | 2026-11-05 | DMM2-Proc-PO-09, DMM2-Proc-Delv-7502 |  | 11.32d |
| DMM2-Proc-Delv-7506 |  | Manuf. & Delivery for ground Mounted Information Signs Materials | 5d | 2026-11-03 | 2026-11-08 | DMM2-Proc-PO-010, DMM2-Proc-Delv-7412 |  | 9.32d |
| DMM2-Proc-Delv-7503 |  | Manuf. & Delivery for Pavement Markings Materials | 2d | 2026-11-12 | 2026-11-15 | DMM2-Proc-PO-07, DMM2-Proc-Delv-7409 |  | 40.82d |
| DMM2-Proc-Delv-7504 |  | Manuf. & Delivery for Wheels Stopper (precast concrete) Materials | 2d | 2026-11-12 | 2026-11-15 | DMM2-Proc-PO-08, DMM2-Proc-Delv-7410 SS |  | 75.82d |
|  | SDS | **Wet Networks & Stations** |  | 2026-04-30 | 2026-11-26 |  |  |  |
|  | Storm | **Storm Network** |  | 2026-04-30 | 2026-09-29 |  |  |  |
| DMM2-Proc-Delv-7510 |  | Manuf. & Delivery for uPVC Pipes Materials (60.00% Completed) | 114.21d | 2026-04-30 A | 2026-09-15 A | DMM2-Proc-Delv-7417 SS | 100% |  |
| DMM2-Proc-Delv-7510_R |  | Manuf. & Delivery for uPVC Pipes Materials(Rem) | 10.4d | 2026-09-22 A | 2026-09-29 A | DMM2-Proc-Delv-7417_R SS, DMM2-Proc-Delv-7510 | 100% |  |
|  | TSE | **TSE Network** |  | 2026-11-22 | 2026-11-26 |  |  |  |
| DMM2-Proc-Delv-7554 |  | Manuf. & Delivery for Bubbler Materials | 1d | 2026-11-22 | 2026-11-22 | DMM2-Proc-Delv-7491 FF |  | 29.32d |
| DMM2-Proc-Delv-7556 |  | Manuf. & Delivery for Two Wire Decoder Cable 12 awg Materials | 1d | 2026-11-22 | 2026-11-22 | DMM2-Proc-Delv-7493 FF |  | 20.32d |
| DMM2-Proc-Delv-7555 |  | Manuf. & Delivery for Pull Box Materials | 4d | 2026-11-23 | 2026-11-26 | DMM2-Proc-Delv-7492 |  | 22.32d |
|  | SDS1 | **Dry Networks** |  |  |  |  |  |  |
|  | MV | **Medium Voltage Network** |  |  |  |  |  |  |
|  | SL | **Street Lighting** |  |  |  |  |  |  |
|  | Landscape | **Landscape Works** |  | 2026-10-07 | 2026-11-29 |  |  |  |
| DMM2-Proc-Delv-7540 |  | Manuf. & Delivery for Ornamental Grasses Materials | 3d | 2026-10-07 | 2026-10-10 | DMM2-Proc-PO-097 |  | 46.32d |
| DMM2-Proc-Delv-7543 |  | Manuf. & Delivery for Large Shrubs Materials | 3d | 2026-10-07 | 2026-10-10 | DMM2-Proc-PO-0100 |  | 49.32d |
| DMM2-Proc-Delv-7539 |  | Manuf. & Delivery for Trees Materials | 3d | 2026-11-11 | 2026-11-14 | DMM2-Proc-PO-096, DMM2-Proc-Delv-7242 |  | 37.32d |
| DMM2-Proc-Delv-7541 |  | Manuf. & Delivery for Geotextile Layers Materials | 6d | 2026-11-23 | 2026-11-29 | DMM2-Proc-PO-098, DMM2-Proc-Delv-7330 |  | 9.32d |
|  | Construction | **Construction** |  | 2025-09-06 | 2027-01-09 |  |  |  |
| Mil.Cons.Fin |  | Construction - Finish Milstone | 0d | 2026-12-29 | 2026-12-29 | Prov.Sum 01 FF |  | 8d |
|  | Prior | **Zonewise Survey Works** |  | 2025-09-06 | 2025-11-01 |  |  |  |
| DMM2-Cons-Surv-Z01 |  | Control Points, Benchmarks & Coordinations - Zone 01 | 8d | 2025-09-06 A | 2025-09-14 A | DMM2-Mob-34, DMM2-Mob-09, DMM2-Mob-08, DMM2-Mob-022 | 100% |  |
| DMM2-Cons-Surv-Z02 |  | Control Points, Benchmarks & Coordinations - Zone 02 | 6d | 2025-09-22 A | 2025-09-29 A | DMM2-Cons-Surv-Z01 | 100% |  |
| DMM2-Cons-Surv-Z03 |  | Control Points, Benchmarks & Coordinations - Zone 03 | 5.62d | 2025-10-12 A | 2025-10-18 A | DMM2-Cons-Surv-Z02 | 100% |  |
| DMM2-Cons-Surv-Z04 |  | Control Points, Benchmarks & Coordinations - Zone 04 | 6.88d | 2025-10-25 A | 2025-11-01 A | DMM2-Cons-Surv-Z03 | 100% |  |
|  | Zone 01 | **Zone 01** |  | 2025-09-18 | 2026-12-01 |  |  |  |
|  | Dewatering | **Earthworks & Site Grading** |  | 2025-09-18 | 2026-10-19 |  |  |  |
| B1.1.31 23 19.01 |  | Dewatering | 16d | 2025-09-18 A | 2025-10-07 A | DMM2-Cons-Surv-Z01, DMM2-Mob-01 | 100% |  |
| B1.1.31 23 16.01 |  | Excavation (all types of soil) (92.00% Completed) | 278d | 2025-10-09 A | 2026-09-15 A | B1.1.31 23 19.01 | 100% |  |
| B1.1.31 23 23.01 |  | Engineering Backfiling - Road 01 - Part 01 | 42.72d | 2025-10-14 A | 2025-12-02 A | B1.1.31 23 19.01 | 100% |  |
| B1.1.31 23 23.22 |  | Engineering Backfiling - Service Road (12.00% Completed) | 267d | 2025-10-22 A | 2026-09-15 A | B1.1.31 23 23.01, B1.1.31 23 23.32 | 100% |  |
| B1.1.31 23 23.32 |  | Engineering Backfiling - Road 01 - Part 02 | 35.43d | 2025-10-25 A | 2025-12-04 A | B1.1.31 23 23.01 | 100% |  |
| B1.1.31 23 23.22_R |  | Engineering Backfiling - Service Road(Rem) | 12d | 2026-09-19 A | 2026-10-19 | B1.1.31 23 23.01, B1.1.31 23 23.32, B1.1.31 23 23.22 | 15% | 21.72d |
| B1.1.31 23 16.01_R |  | Excavation (all types of soil)(Rem) | 3.99d | 2026-10-07 | 2026-10-11 | B1.1.31 23 19.01, B1.1.31 23 16.01 |  | 27.93d |
|  | RD 01 | **Road 01** |  | 2025-11-11 | 2026-12-01 |  |  |  |
|  | Wet Networks | **Wet Networks** |  | 2025-11-11 | 2026-11-30 |  |  |  |
|  | Sewerage Network | **Sewerage Network** |  | 2025-11-11 | 2026-10-28 |  |  |  |
|  | GRP | **GRP Pipes** |  | 2025-11-11 | 2026-03-15 |  |  |  |
|  | 200 | **?200** |  | 2025-11-11 | 2026-03-15 |  |  |  |
|  | 3 | **Depth From 1.5m to 2.5m** |  | 2025-11-11 | 2026-03-11 |  |  |  |
| B5.33 31 00.02.021 |  | Excavation | 43.19d | 2025-11-11 A | 2025-12-31 A | B1.1.31 23 23.32 | 100% |  |
| B5.33 31 00.02.022 |  | Sand Bedding | 21.99d | 2025-12-06 A | 2025-12-31 A | B5.33 31 00.02.021 | 100% |  |
| B5.33 31 00.02.023 |  | Pipe Laying | 31.08d | 2025-12-09 A | 2026-01-14 A | B5.33 31 00.02.022 | 100% |  |
| B5.33 31 00.02.024 |  | Embedment & Test | 69.66d | 2025-12-14 A | 2026-03-11 A | B5.33 31 00.02.023 | 100% |  |
| B5.33 31 00.02.025 |  | Backfilling & Warrning Tape | 54.66d | 2025-12-25 A | 2026-03-04 A | B5.33 31 00.02.024 | 100% |  |
|  | 2 | **Depth From 2.5m to 3.5m** |  | 2026-01-04 | 2026-03-14 |  |  |  |
| B5.33 31 00.02.031 |  | Excavation | 6.85d | 2026-01-04 A | 2026-01-11 A | B5.33 31 00.02.021 | 100% |  |
| B5.33 31 00.02.032 |  | Sand Bedding | 5.85d | 2026-01-06 A | 2026-01-12 A | B5.33 31 00.02.031 | 100% |  |
| B5.33 31 00.02.033 |  | Pipe Laying | 29.17d | 2026-01-08 A | 2026-02-11 A | B5.33 31 00.02.032 | 100% |  |
| B5.33 31 00.02.034 |  | Embedment & Test | 48.29d | 2026-01-10 A | 2026-03-14 A | B5.33 31 00.02.033 | 100% |  |
| B5.33 31 00.02.035 |  | Backfilling & Warrning Tape | 44.8d | 2026-01-12 A | 2026-03-11 A | B5.33 31 00.02.034 | 100% |  |
|  | 1 | **Depth From 3.5m to 4.5m** |  | 2026-01-05 | 2026-03-15 |  |  |  |
| B5.33 31 00.02.041 |  | Excavation | 6.97d | 2026-01-05 A | 2026-01-12 A | B5.33 31 00.02.031 | 100% |  |
| B5.33 31 00.02.042 |  | Sand Bedding | 5.31d | 2026-01-07 A | 2026-01-13 A | B5.33 31 00.02.041 | 100% |  |
| B5.33 31 00.02.043 |  | Pipe Laying | 6.31d | 2026-01-08 A | 2026-01-15 A | B5.33 31 00.02.042 | 100% |  |
| B5.33 31 00.02.044 |  | Embedment & Test | 49.04d | 2026-01-10 A | 2026-03-15 A | B5.33 31 00.02.043 | 100% |  |
| B5.33 31 00.02.045 |  | Backfilling & Warrning Tape | 41.67d | 2026-01-17 A | 2026-03-14 A | B5.33 31 00.02.044, B5.33 31 00.02.034 | 100% |  |
|  | 150 | **?150** |  | 2025-12-18 | 2026-01-04 |  |  |  |
|  | 1 | **Depth From 1.5m to 2.5m** |  | 2025-12-18 | 2026-01-04 |  |  |  |
| B5.33 31 00.01.021 |  | Excavation | 1d | 2025-12-18 A | 2025-12-20 A | B5.33 31 00.02.041 | 100% |  |
| B5.33 31 00.01.022 |  | Sand Bedding | 2.02d | 2025-12-20 A | 2025-12-22 A | B5.33 31 00.01.021 | 100% |  |
| B5.33 31 00.01.023 |  | Pipe Laying | 0.91d | 2025-12-23 A | 2025-12-24 A | B5.33 31 00.01.022 | 100% |  |
| B5.33 31 00.01.024 |  | Embedment & Test | 1.35d | 2025-12-25 A | 2025-12-27 A | B5.33 31 00.01.023 | 100% |  |
| B5.33 31 00.01.025 |  | Backfilling & Warrning Tape | 5.06d | 2025-12-29 A | 2026-01-04 A | B5.33 31 00.01.024, B5.33 31 00.02.025, B5.33 31 00.02.035 | 100% |  |

| ID | WBS | Task | Duration | Start | Finish | Predecessors | Complete | Total float |
| --- | --- | --- | --- | --- | --- | --- | --- | --- |
|  | Manholes | **Manholes ?1200** |  | 2025-11-12 | 2026-10-28 |  |  |  |
|  | 2 | **Depth From 0.0m to 1.5m** |  | 2025-11-12 | 2026-10-11 |  |  |  |
| B5.33 05 13.011 |  | Excavation & Compaction | 48.2d | 2025-11-12 A | 2026-01-07 A | B5.33 31 00.01.021 | 100% |  |
| B5.33 05 13.012 |  | Blinding Conc, & RC Base | 1.5d | 2026-02-25 A | 2026-02-26 A | B5.33 05 13.011 | 100% |  |
| B5.33 05 13.013 |  | Manhole Installation | 4d | 2026-03-18 A | 2026-03-28 A | B5.33 05 13.012 | 100% |  |
| B5.33 05 13.014 |  | Test, Internal Finishing, Benching & Cover (43.20% Completed) | 90d | 2026-06-03 A | 2026-09-15 A | B5.33 05 13.013 | 100% |  |
| B5.33 05 13.015 |  | Backfilling | 5d | 2026-06-11 A | 2026-06-17 A | B5.33 05 13.013 | 100% |  |
| B5.33 05 13.014_R |  | Test, Internal Finishing, Benching & Cover(Rem) | 3.04d | 2026-10-07 | 2026-10-11 | B5.33 05 13.013, B5.33 05 13.014 |  | 95.08d |
|  | 3 | **Depth From 1.5m to 2.5m** |  | 2025-12-18 | 2026-10-14 |  |  |  |
| B5.33 05 13.021 |  | Excavation & Compaction | 23.2d | 2025-12-18 A | 2026-01-14 A | B5.33 05 13.011 | 100% |  |
| B5.33 05 13.022 |  | Blinding Conc, & RC Base | 2.25d | 2026-02-25 A | 2026-02-28 A | B5.33 05 13.021 | 100% |  |
| B5.33 05 13.023 |  | Manhole Installation | 2d | 2026-04-01 A | 2026-04-02 A | B5.33 05 13.022 | 100% |  |
| B5.33 05 13.024 |  | Test, Internal Finishing, Benching & Cover (43.20% Completed) | 90d | 2026-06-03 A | 2026-09-15 A | B5.33 05 13.023 | 100% |  |
| B5.33 05 13.025 |  | Backfilling | 5d | 2026-06-11 A | 2026-06-17 A | B5.33 05 13.024 SS | 100% |  |
| B5.33 05 13.024_R |  | Test, Internal Finishing, Benching & Cover(Rem) | 3.04d | 2026-10-11 | 2026-10-14 | B5.33 05 13.023, B5.33 05 13.024, B5.33 05 13.014_R |  | 95.08d |
|  | 4 | **Depth From 2.5m to 3.5m** |  | 2025-12-21 | 2026-10-21 |  |  |  |
| B5.33 05 13.031 |  | Excavation & Compaction | 24.2d | 2025-12-21 A | 2026-01-18 A | B5.33 05 13.021 | 100% |  |
| B5.33 05 13.032 |  | Blinding Conc, & RC Base | 2.25d | 2026-02-28 A | 2026-03-02 A | B5.33 05 13.031 | 100% |  |
| B5.33 05 13.033 |  | Manhole Installation | 2d | 2026-04-08 A | 2026-04-09 A | B5.33 05 13.032 | 100% |  |
| B5.33 05 13.034 |  | Test, Internal Finishing, Benching & Cover (43.20% Completed) | 90d | 2026-06-03 A | 2026-09-15 A | B5.33 05 13.033 | 100% |  |
| B5.33 05 13.035 |  | Backfilling | 5d | 2026-06-11 A | 2026-06-17 A | B5.33 05 13.025, B5.33 31 00.02.035 | 100% |  |
| B5.33 05 13.034_R |  | Test, Internal Finishing, Benching & Cover(Rem) | 3.04d | 2026-10-14 | 2026-10-18 | B5.33 05 13.033, B5.33 05 13.034, B5.33 05 13.024_R |  | 95.08d |
|  | 4 | **Depth From 2.5m to 3.5m Backdrop** |  | 2026-01-07 | 2026-10-21 |  |  |  |
| B5.33 05 13.041 |  | Excavation & Compaction | 1d | 2026-01-07 A | 2026-01-08 A | B5.33 05 13.031 | 100% |  |
| B5.33 05 13.042 |  | Blinding Conc, & RC Base | 3d | 2026-04-15 A | 2026-04-18 A | B5.33 05 13.041 | 100% |  |
| B5.33 05 13.043 |  | Manhole Installation | 55.5d | 2026-04-18 A | 2026-06-25 A | B5.33 05 13.042 | 100% |  |
| B5.33 05 13.044 |  | Test, Internal Finishing, Benching & Cover (43.20% Completed) | 89.2d | 2026-06-03 A | 2026-09-15 A | B5.33 05 13.043 | 100% |  |
| B5.33 05 13.045 |  | Backfilling | 5d | 2026-06-11 A | 2026-06-17 A | B5.33 31 00.02.045, B5.33 05 13.035 | 100% |  |
| B5.33 05 13.044_R |  | Test, Internal Finishing, Benching & Cover(Rem) | 3.04d | 2026-10-18 | 2026-10-21 | B5.33 05 13.043, B5.33 05 13.044, B5.33 05 13.034_R |  | 95.08d |
|  | 1 | **Depth From 3.5m to 4.5m** |  | 2026-01-03 | 2026-10-28 |  |  |  |
| B5.33 05 13.051 |  | Excavation & Compaction | 1d | 2026-01-03 A | 2026-01-04 A | B5.33 05 13.041 | 100% |  |
| B5.33 05 13.052 |  | Blinding Conc, & RC Base | 1.5d | 2026-03-04 A | 2026-03-05 A | B5.33 05 13.051 | 100% |  |
| B5.33 05 13.053 |  | Manhole Installation | 5d | 2026-04-22 A | 2026-04-27 A | B5.33 05 13.052 | 100% |  |
| B5.33 05 13.054 |  | Test, Internal Finishing, Benching & Cover (43.20% Completed) | 90d | 2026-06-03 A | 2026-09-15 A | B5.33 05 13.053 | 100% |  |
| B5.33 05 13.055 |  | Backfilling | 5d | 2026-06-11 A | 2026-06-17 A | B5.33 05 13.045 | 100% |  |
| B5.33 05 13.054_R |  | Test, Internal Finishing, Benching & Cover(Rem) | 3.04d | 2026-10-25 | 2026-10-28 | B5.33 05 13.053, B5.33 05 13.054, B5.33 05 13.064_R |  | 95.08d |
|  | 1 | **Depth From 3.5m to 4.5m Backdrop** |  | 2026-01-05 | 2026-10-25 |  |  |  |
| B5.33 05 13.061 |  | Excavation & Compaction | 1d | 2026-01-05 A | 2026-01-06 A | B5.33 05 13.051 | 100% |  |
| B5.33 05 13.062 |  | Blinding Conc, & RC Base | 20.25d | 2026-04-29 A | 2026-05-23 A | B5.33 05 13.061 | 100% |  |
| B5.33 05 13.063 |  | Manhole Installation | 20.5d | 2026-04-30 A | 2026-05-24 A | B5.33 05 13.062 | 100% |  |
| B5.33 05 13.064 |  | Test, Internal Finishing, Benching & Cover (43.20% Completed) | 90d | 2026-06-03 A | 2026-09-15 A | B5.33 05 13.063 | 100% |  |
| B5.33 05 13.065 |  | Backfilling | 5d | 2026-06-11 A | 2026-06-17 A | B5.33 05 13.055 | 100% |  |
| B5.33 05 13.064_R |  | Test, Internal Finishing, Benching & Cover(Rem) | 3.04d | 2026-10-21 | 2026-10-25 | B5.33 05 13.063, B5.33 05 13.064, B5.33 05 13.044_R |  | 95.08d |
|  | Storm | **Storm Network** |  | 2025-12-15 | 2026-10-05 |  |  |  |
|  | GRP | **GRP** |  | 2025-12-15 | 2026-03-30 |  |  |  |
|  | ?400 | **?400** |  | 2025-12-15 | 2026-03-12 |  |  |  |
|  | 3 | **Depth From 1.5m to 2.5m** |  | 2025-12-15 | 2026-03-12 |  |  |  |
| B6.33 42 11.021 |  | Excavation | 3.09d | 2025-12-15 A | 2025-12-18 A | B5.33 05 13.015 | 100% |  |
| B6.33 42 11.022 |  | Sand Bedding | 2d | 2025-12-18 A | 2025-12-21 A | B6.33 42 11.021 | 100% |  |
| B6.33 42 11.023 |  | Pipe Laying | 21.29d | 2025-12-21 A | 2026-01-14 A | B6.33 42 11.022 | 100% |  |
| B6.33 42 11.024 |  | Embedment & Test | 21d | 2025-12-22 A | 2026-01-15 A | B6.33 42 11.023 | 100% |  |
| B6.33 42 11.025 |  | Backfilling & Warrning Tape | 61.33d | 2025-12-24 A | 2026-03-12 A | B6.33 42 11.024 | 100% |  |
|  | ?4001 | **?500** |  | 2025-12-18 | 2026-03-22 |  |  |  |
|  | 3 | **Depth From 1.5m to 2.5m** |  | 2025-12-18 | 2026-03-18 |  |  |  |
| B6.33 42 11.041 |  | Excavation | 22.85d | 2025-12-18 A | 2026-01-14 A | B6.33 42 11.021 | 100% |  |
| B6.33 42 11.042 |  | Sand Bedding | 23.25d | 2025-12-21 A | 2026-01-17 A | B6.33 42 11.041 | 100% |  |
| B6.33 42 11.043 |  | Pipe Laying | 22d | 2025-12-24 A | 2026-01-19 A | B6.33 42 11.042 | 100% |  |
| B6.33 42 11.044 |  | Embedment & Test | 58.12d | 2025-12-27 A | 2026-03-11 A | B6.33 42 11.043 | 100% |  |
| B6.33 42 11.045 |  | Backfilling & Warrning Tape | 60.63d | 2025-12-29 A | 2026-03-18 A | B6.33 42 11.044 | 100% |  |
|  | 4 | **Depth From 2.5m to 3.5m** |  | 2026-01-03 | 2026-03-22 |  |  |  |
| B6.33 42 11.051 |  | Excavation | 10.19d | 2026-01-03 A | 2026-01-14 A | B6.33 42 11.041 | 100% |  |
| B6.33 42 11.052 |  | Sand Bedding | 9.5d | 2026-01-06 A | 2026-01-17 A | B6.33 42 11.051 | 100% |  |
| B6.33 42 11.053 |  | Pipe Laying | 32.04d | 2026-01-07 A | 2026-02-14 A | B6.33 42 11.052 | 100% |  |
| B6.33 42 11.054 |  | Embedment & Test | 52.73d | 2026-01-10 A | 2026-03-19 A | B6.33 42 11.053 | 100% |  |
| B6.33 42 11.055 |  | Backfilling & Warrning Tape | 49.73d | 2026-01-13 A | 2026-03-22 A | B6.33 42 11.054 | 100% |  |
|  | ?4002 | **?600** |  | 2026-01-10 | 2026-03-30 |  |  |  |
|  | 3 | **Depth From 1.5m to 2.5m** |  | 2026-01-10 | 2026-03-30 |  |  |  |
| B6.33 42 11.0401 |  | Excavation | 2.01d | 2026-01-10 A | 2026-01-12 A | B6.33 42 11.051 | 100% |  |
| B6.33 42 11.0402 |  | Sand Bedding | 1.01d | 2026-01-12 A | 2026-01-13 A | B6.33 42 11.0401 | 100% |  |
| B6.33 42 11.0403 |  | Pipe Laying | 2.01d | 2026-01-13 A | 2026-01-15 A | B6.33 42 11.0402 | 100% |  |

| ID | WBS | Task | Duration | Start | Finish | Predecessors | Complete |
| --- | --- | --- | --- | --- | --- | --- | --- |
| B6.33 42 11.0404 |  | Embedment & Test | 43.04d | 2026-01-21 A | 2026-03-25 A | B6.33 42 11.0403 | 100% |
| B6.33 42 11.0405 |  | Backfilling & Warrning Tape | 43.05d | 2026-01-26 A | 2026-03-30 A | B6.33 42 11.0404, B6.33 42 11.025 | 100% |
|  | ?40021 | **?700** |  | 2026-01-06 | 2026-03-18 |  |  |
|  | 4 | **Depth From 2.5m to 3.5m** |  | 2026-01-06 | 2026-03-18 |  |  |
| B6.33 42 11.111 |  | Excavation | 2.77d | 2026-01-06 A | 2026-01-10 A | B6.33 42 11.0401 | 100% |
| B6.33 42 11.112 |  | Sand Bedding | 1.77d | 2026-01-08 A | 2026-01-11 A | B6.33 42 11.111 | 100% |
| B6.33 42 11.113 |  | Pipe Laying | 2.77d | 2026-01-10 A | 2026-01-13 A | B6.33 42 11.112 | 100% |
| B6.33 42 11.114 |  | Embedment & Test | 41.29d | 2026-01-21 A | 2026-03-18 A | B6.33 42 11.113 | 100% |
| B6.33 42 11.115 |  | Backfilling & Warrning Tape | 35.8d | 2026-01-26 A | 2026-03-16 A | B6.33 42 11.114 | 100% |
|  | Strom Manholes | **Manholes** |  | 2025-12-27 | 2026-10-05 |  |  |
|  | 1 | **?1200** |  | 2025-12-27 | 2026-09-26 |  |  |
|  | 3 | **Depth From 1.5m to 2.5m** |  | 2025-12-27 | 2026-09-19 |  |  |
| B6.33 05 13.011 |  | Excavation & Compaction | 1.86d | 2025-12-27 A | 2025-12-28 A | B5.33 05 13.061, B6.33 42 11.021 | 100% |
| B6.33 05 13.012 |  | Blinding Conc, & RC Base | 1.75d | 2026-03-18 A | 2026-03-19 A | B6.33 05 13.011 | 100% |
| B6.33 05 13.013 |  | Manhole Installation | 12.6d | 2026-06-10 A | 2026-06-24 A | B6.33 05 13.012 | 100% |
| B6.33 05 13.014 |  | Test, Internal Finishing, Benching & Cover (90.00% Completed) | 77d | 2026-06-18 A | 2026-09-15 A | B6.33 05 13.013 | 100% |
| B6.33 05 13.015 |  | Backfilling | 10.5d | 2026-06-21 A | 2026-07-02 A | B6.33 05 13.014 SS | 100% |
| B6.33 05 13.014_R |  | Test, Internal Finishing, Benching & Cover(Rem) | 3d | 2026-09-17 A | 2026-09-19 A | B6.33 05 13.013, B6.33 05 13.014 | 100% |
|  | 4 | **Depth From 2.5m to 3.5m** |  | 2026-01-08 | 2026-09-22 |  |  |
| B6.33 05 13.021 |  | Excavation & Compaction | 0.48d | 2026-01-08 A | 2026-01-10 A | B6.33 05 13.011 | 100% |
| B6.33 05 13.022 |  | Blinding Conc, & RC Base | 1.5d | 2026-03-04 A | 2026-03-05 A | B6.33 05 13.021 | 100% |
| B6.33 05 13.023 |  | Manhole Installation | 0.5d | 2026-03-07 A | 2026-03-07 A | B6.33 05 13.022 | 100% |
| B6.33 05 13.025 |  | Backfilling | 26.5d | 2026-06-03 A | 2026-07-04 A | B6.33 42 11.114 | 100% |
| B6.33 05 13.024 |  | Test, Internal Finishing, Benching & Cover (90.00% Completed) | 78d | 2026-06-17 A | 2026-09-15 A | B6.33 05 13.023 | 100% |
| B6.33 05 13.024_R |  | Test, Internal Finishing, Benching & Cover(Rem) | 3d | 2026-09-20 A | 2026-09-22 A | B6.33 05 13.023, B6.33 05 13.024, B6.33 05 13.014_R | 100% |
|  | 1 | **Depth From 3.5m to 4.5m** |  | 2026-01-28 | 2026-09-26 |  |  |
| B6.33 05 13.115 |  | Excavation & Compaction | 2d | 2026-01-28 A | 2026-01-29 A | B6.33 05 13.021 | 100% |
| B6.33 05 13.85 |  | Blinding Conc, & RC Base | 6d | 2026-04-19 A | 2026-04-25 A | B6.33 05 13.115 | 100% |
| B6.33 05 13.95 |  | Manhole Installation | 19.6d | 2026-06-10 A | 2026-07-02 A | B6.33 05 13.85 | 100% |
| B6.33 05 13.105 |  | Test, Internal Finishing, Benching & Cover (90.00% Completed) | 77d | 2026-06-18 A | 2026-09-15 A | B6.33 05 13.95 | 100% |
| B6.33 05 13.125 |  | Backfilling | 12.5d | 2026-06-21 A | 2026-07-05 A | B6.33 05 13.95 | 100% |
| B6.33 05 13.105_R |  | Test, Internal Finishing, Benching & Cover(Rem) | 3d | 2026-09-24 A | 2026-09-26 A | B6.33 05 13.95, B6.33 05 13.105 | 100% |
|  | 2 | **?1500** |  | 2026-03-04 | 2026-09-30 |  |  |
|  | 3 | **Depth From 1.5m to 2.5m** |  | 2026-03-04 | 2026-09-27 |  |  |
| B6.33 05 13.041 |  | Excavation & Compaction | 11.15d | 2026-03-04 A | 2026-03-25 A | B6.33 05 13.115 | 100% |
| B6.33 05 13.042 |  | Blinding Conc, & RC Base | 7d | 2026-03-14 A | 2026-03-28 A | B6.33 05 13.041 | 100% |
| B6.33 05 13.043 |  | Manhole Installation | 13.6d | 2026-06-10 A | 2026-06-25 A | B6.33 05 13.042 | 100% |
| B6.33 05 13.044 |  | Test, Internal Finishing, Benching & Cover (90.00% Completed) | 77d | 2026-06-18 A | 2026-09-15 A | B6.33 05 13.043 | 100% |
| B6.33 05 13.045 |  | Backfilling | 6.5d | 2026-06-22 A | 2026-06-29 A | B6.33 05 13.015 | 100% |
| B6.33 05 13.044_R |  | Test, Internal Finishing, Benching & Cover(Rem) | 3d | 2026-09-24 A | 2026-09-27 A | B6.33 05 13.043, B6.33 05 13.044, B6.33 05 13.024_R, B6.33 05 13.105_R | 100% |
|  | 4 | **Depth From 2.5m to 3.5m** |  | 2026-03-07 | 2026-09-30 |  |  |
| B6.33 05 13.051 |  | Excavation & Compaction | 5.38d | 2026-03-07 A | 2026-03-15 A | B6.33 05 13.041 | 100% |
| B6.33 05 13.052 |  | Blinding Conc, & RC Base | 2.5d | 2026-03-15 A | 2026-03-18 A | B6.33 05 13.051 | 100% |
| B6.33 05 13.053 |  | Manhole Installation | 1d | 2026-03-24 A | 2026-03-25 A | B6.33 05 13.052 | 100% |
| B6.33 05 13.054 |  | Test, Internal Finishing, Benching & Cover (90.00% Completed) | 78d | 2026-06-17 A | 2026-09-15 A | B6.33 05 13.053 | 100% |
| B6.33 05 13.055 |  | Backfilling | 4d | 2026-07-02 A | 2026-07-07 A | B6.33 05 13.054 SS+1d, B6.33 05 13.054 FF+1d | 100% |
| B6.33 05 13.054_R |  | Test, Internal Finishing, Benching & Cover(Rem) | 3d | 2026-09-28 A | 2026-09-30 A | B6.33 05 13.053, B6.33 05 13.054, B6.33 05 13.044_R | 100% |
|  | 3 | **?2000** |  | 2026-01-29 | 2026-10-05 |  |  |
|  | 4 | **Depth From 2.5m to 3.5m** |  | 2026-02-01 | 2026-10-04 |  |  |
| B6.33 05 13.071 |  | Excavation & Compaction | 2d | 2026-02-01 A | 2026-02-02 A | B6.33 05 13.051 | 100% |
| B6.33 05 13.072 |  | Blinding Conc, & RC Base | 3d | 2026-04-04 A | 2026-04-06 A | B6.33 05 13.071 | 100% |
| B6.33 05 13.073 |  | Manhole Installation | 18.6d | 2026-06-10 A | 2026-07-01 A | B6.33 05 13.072 | 100% |
| B6.33 05 13.074 |  | Test, Internal Finishing, Benching & Cover (90.00% Completed) | 77d | 2026-06-18 A | 2026-09-15 A | B6.33 05 13.073 | 100% |
| B6.33 05 13.075 |  | Backfilling | 11.5d | 2026-06-21 A | 2026-07-04 A | B6.33 05 13.074 SS+1d, B6.33 05 13.074 FF+1d | 100% |
| B6.33 05 13.074_R |  | Test, Internal Finishing, Benching & Cover(Rem) | 3d | 2026-10-01 A | 2026-10-04 A | B6.33 05 13.073, B6.33 05 13.074, B6.33 05 13.054_R | 100% |
|  | 1 | **Depth From 3.5m to 4.5m** |  | 2026-01-29 | 2026-10-05 |  |  |
| B6.33 05 13.081 |  | Excavation & Compaction | 2d | 2026-01-29 A | 2026-01-31 A | B6.33 05 13.071 | 100% |
| B6.33 05 13.082 |  | Blinding Conc, & RC Base | 3d | 2026-06-10 A | 2026-06-13 A | B6.33 05 13.081 | 100% |
| B6.33 05 13.083 |  | Manhole Installation | 15.6d | 2026-06-14 A | 2026-07-01 A | B6.33 05 13.082 | 100% |
| B6.33 05 13.084 |  | Test, Internal Finishing, Benching & Cover (90.00% Completed) | 77d | 2026-06-18 A | 2026-09-15 A | B6.33 05 13.083 | 100% |
| B6.33 05 13.085 |  | Backfilling | 14.5d | 2026-06-20 A | 2026-07-06 A | B6.33 05 13.084 SS+1d, B6.33 05 13.084 FF+1d | 100% |
| B6.33 05 13.084_R |  | Test, Internal Finishing, Benching & Cover(Rem) | 3d | 2026-10-05 A | 2026-10-05 A | B6.33 05 13.083, B6.33 05 13.084, B6.33 05 13.074_R | 100% |
|  | Catch Basins | **Catch Basins** |  | 2026-03-04 | 2026-09-29 |  |  |
|  | Sing | **Single** |  | 2026-03-23 | 2026-09-29 |  |  |
| B6.33 05 63.071 |  | Excavation, Compaction & Vapour Barrier | 50.34d | 2026-03-23 A | 2026-05-21 A | B6.33 05 13.041 | 100% |
| B6.33 05 63.073 |  | Blinding Conc. | 2d | 2026-05-21 A | 2026-05-24 A | B6.33 05 63.071 | 100% |
| B6.33 05 63.074 |  | Catch Basin Installation | 21.81d | 2026-05-24 A | 2026-06-23 A | B6.33 05 63.073 | 100% |
| B6.33 05 63.072 |  | Backfilling, DI Frame & Grate Cover Fixing (90.00% Completed) | 77.85d | 2026-06-17 A | 2026-09-15 A | B6.33 05 63.074, B6.33 42 11.351010 | 100% |
| B6.33 05 63.072_R |  | Backfilling, DI Frame & Grate Cover Fixing(Rem) | 3d | 2026-09-24 A | 2026-09-29 A | B6.33 05 63.074, B6.33 42 11.351010, B6.33 05 63.072 | 100% |
|  | Dou | **Double** |  | 2026-07-29 | 2026-09-22 |  |  |

| ID | WBS | Task | Duration | Start | Finish | Predecessors | Complete | Total float |
| --- | --- | --- | --- | --- | --- | --- | --- | --- |
| B6.33 05 63.081 |  | Excavation, Compaction & Vapour Barrier | 22.2d | 2026-07-29 A | 2026-08-24 A | B6.33 05 63.071 | 100% |  |
| B6.33 05 63.083 |  | Blinding Conc. | 23.2d | 2026-08-01 A | 2026-08-27 A | B6.33 05 63.081 | 100% |  |
| B6.33 05 63.084 |  | Catch Basin Installation | 24.3d | 2026-08-02 A | 2026-08-30 A | B6.33 05 63.083 | 100% |  |
| B6.33 05 63.082 |  | Backfilling, DI Frame & Grate Cover Fixing (90.00% Completed) | 38d | 2026-08-03 A | 2026-09-15 A | B6.33 05 63.084, B6.33 42 11.361010 | 100% |  |
| B6.33 05 63.082_R |  | Backfilling, DI Frame & Grate Cover Fixing(Rem) | 3d | 2026-09-17 A | 2026-09-22 A | B6.33 05 63.084, B6.33 42 11.361010, B6.33 05 63.082 | 100% |  |
|  | UPVC | **UPVC** |  | 2026-03-04 | 2026-08-25 |  |  |  |
|  | UPVC300 | **?300 From 0.0 to 1.5m** |  | 2026-03-04 | 2026-04-11 |  |  |  |
| B6.33 42 11.351010 |  | Fittings & Pipe Installation | 3d | 2026-03-04 A | 2026-03-09 A | B6.33 42 11.351000 | 100% |  |
| B6.33 42 11.351000 |  | Catch Basin Opening Prep. | 8d | 2026-04-01 A | 2026-04-11 A | B6.33 05 63.074 | 100% |  |
|  | UPVC3001 | **?400 From 0.0 to 1.5m** |  | 2026-04-12 | 2026-08-25 |  |  |  |
| B6.33 42 11.361010 |  | Fittings & Pipe Installation | 105.76d | 2026-04-12 A | 2026-08-18 A | B6.33 42 11.361000 | 100% |  |
| B6.33 42 11.361000 |  | Catch Basin Opening Prep. | 72.1d | 2026-06-02 A | 2026-08-25 A | B6.33 05 63.084 | 100% |  |
|  | Potable | **Potable Network** |  | 2026-02-01 | 2026-10-15 |  |  |  |
|  | HDPE | **HDPE Pipes** |  | 2026-02-01 | 2026-06-28 |  |  |  |
|  | ?110mm | **?110mm** |  | 2026-02-01 | 2026-06-28 |  |  |  |
|  | Depth: 0.0m - 1.5m | **Depth: 0.0m - 1.5m** |  | 2026-02-01 | 2026-06-24 |  |  |  |
| B3.33 14 13.01.011 |  | Excavation | 40.33d | 2026-02-01 A | 2026-04-01 A | B5.33 31 00.02.045, B5.33 05 13.061 | 100% |  |
| B3.33 14 13.01.012 |  | Sand Bedding | 30.37d | 2026-02-14 A | 2026-04-02 A | B3.33 14 13.01.011 | 100% |  |
| B3.33 14 13.01.013 |  | Pipe Laying | 30.62d | 2026-02-16 A | 2026-04-05 A | B3.33 14 13.01.012 | 100% |  |
| B3.33 14 13.01.014 |  | Embedment & Test | 33.76d | 2026-04-12 A | 2026-05-20 A | B3.33 14 13.01.013, B3.33 14 19.01.104 | 100% |  |
| B3.33 14 13.01.015 |  | Backfilling & Warrning Tape | 49.39d | 2026-04-23 A | 2026-06-24 A | B3.33 14 13.01.014, B3.33 14 13.02.15, B3.33 14 19.01.104 | 100% |  |
|  | Depth: 1.51m - 2.5m | **Depth: 1.51m - 2.5m** |  | 2026-02-02 | 2026-06-28 |  |  |  |
| B3.33 14 13.01.021 |  | Excavation | 49.83d | 2026-02-02 A | 2026-04-14 A | B3.33 14 13.01.011 | 100% |  |
| B3.33 14 13.01.022 |  | Sand Bedding | 35.99d | 2026-02-19 A | 2026-04-15 A | B3.33 14 13.01.021 | 100% |  |
| B3.33 14 13.01.023 |  | Pipe Laying | 66.87d | 2026-02-22 A | 2026-05-23 A | B3.33 14 13.01.022 | 100% |  |
| B3.33 14 13.01.024 |  | Embedment & Test | 60.49d | 2026-03-06 A | 2026-05-24 A | B3.33 14 13.01.023, B3.33 14 19.01.104 | 100% |  |
| B3.33 14 13.01.025 |  | Backfilling & Warrning Tape | 83.42d | 2026-03-11 A | 2026-06-28 A | B3.33 14 13.01.024 | 100% |  |
|  | Valves & Chambers | **Valves & Chambers** |  | 2026-02-25 | 2026-10-15 |  |  |  |
|  | GV | **Gate Valves** |  | 2026-02-25 | 2026-10-10 |  |  |  |
|  | 1 | **Gate valves dia (110) mm** |  | 2026-02-25 | 2026-10-10 |  |  |  |
| B3.33 14 19.01.104 |  | Burried Isolation Valve Installation | 24.25d | 2026-02-25 A | 2026-04-05 A | B3.33 14 13.01.023, B3.33 14 13.01.013 | 100% |  |
| B3.33 14 19.01.105 |  | Spindle & Surface Box | 3d | 2026-10-07 | 2026-10-10 | B3.33 14 19.01.104, B3.33 14 13.01.014 |  | 104.32d |
|  | 2 | **Air Valves** |  | 2026-06-11 | 2026-10-15 |  |  |  |
|  | 4 | **Air valves on less than 315 mm. (In Chamber)** |  | 2026-06-11 | 2026-10-15 |  |  |  |
| B3.33 05 63.02.011 |  | Land Adjustment & Compaction | 2d | 2026-06-11 A | 2026-06-14 A | B3.33 14 13.01.024 | 100% |  |
| B3.33 05 63.02.012 |  | Foundations | 1d | 2026-06-14 A | 2026-06-15 A | B3.33 05 63.02.011 | 100% |  |
| B3.33 05 63.02.013 |  | Chambers Walls Conc Cast In Situ | 1d | 2026-06-15 A | 2026-06-15 A | B3.33 05 63.02.012 | 100% |  |
| B3.33 05 63.02.014 |  | Chamber Curing, Finishing & Steel Cover (50.00% Completed) | 79d | 2026-06-16 A | 2026-09-15 A | B3.33 05 63.02.013 | 100% |  |
| B3.33 05 63.02.014_R |  | Chamber Curing, Finishing & Steel Cover(Rem) | 3d | 2026-10-07 | 2026-10-10 | B3.33 05 63.02.013, B3.33 05 63.02.014 |  | 91.32d |
| B3.33 05 63.02.015 |  | Valve & Fitting Installation | 5d | 2026-10-11 | 2026-10-15 | B3.33 05 63.02.014_R |  | 91.32d |
|  | Crossing | **Plots and Buildings Crossing** |  | 2026-05-20 | 2026-05-25 |  |  |  |
| B3.33 14 13.02.13 |  | Earthwork | 3d | 2026-05-20 A | 2026-05-23 A | B3.33 14 13.01.021 | 100% |  |
| B3.33 14 13.02.14 |  | Sand Bedding | 3d | 2026-05-21 A | 2026-05-24 A | B3.33 14 13.02.13 | 100% |  |
| B3.33 14 13.02.15 |  | Tee, Pipe (Crossing) Installation & Backfilling | 2d | 2026-05-24 A | 2026-05-25 A | B3.33 14 13.02.14 | 100% |  |
|  | Fire Fighting | **Fire Fighting Network** |  | 2026-02-02 | 2026-10-26 |  |  |  |
|  | HDPE | **HDPE Pipes** |  | 2026-02-02 | 2026-09-26 |  |  |  |
|  | ?250mm | **?250mm** |  | 2026-02-02 | 2026-09-26 |  |  |  |
|  | Depth: 0.0m - 1.5m | **Depth: 0.0m - 1.5m** |  | 2026-02-02 | 2026-09-26 |  |  |  |
| B3.1. 33 14 13.011 |  | Excavation | 51.14d | 2026-02-02 A | 2026-04-15 A | B3.33 14 13.01.015, B3.33 14 13.01.025 | 100% |  |
| B3.1. 33 14 13.012 |  | Sand Bedding | 50.85d | 2026-02-09 A | 2026-04-22 A | B3.1. 33 14 13.011 | 100% |  |
| B3.1. 33 14 13.013 |  | Pipe Laying | 38.1d | 2026-02-11 A | 2026-04-09 A | B3.1. 33 14 13.012 | 100% |  |
| B3.1. 33 14 13.014 |  | Embedment & Test | 4d | 2026-04-08 A | 2026-04-12 A | B3.1. 33 14 13.013, B3.33 14 19.01.120 | 100% |  |
| B3.1. 33 14 13.015 |  | Backfilling & Warrning Tape (95.00% Completed) | 124d | 2026-04-20 A | 2026-09-15 A | B3.1. 33 14 13.014 | 100% |  |
| B3.1. 33 14 13.015_R |  | Backfilling & Warrning Tape(Rem) | 4d | 2026-09-22 A | 2026-09-26 A | B3.1. 33 14 13.014, B3.1. 33 14 13.015 | 100% |  |
|  | Depth: 1.51m - 2.5m | **Depth: 1.51m - 2.5m** |  | 2026-02-02 | 2026-09-26 |  |  |  |
| B3.1. 33 14 13.021 |  | Excavation | 38.55d | 2026-02-02 A | 2026-04-01 A | B3.1. 33 14 13.011 | 100% |  |
| B3.1. 33 14 13.022 |  | Sand Bedding | 34.05d | 2026-02-10 A | 2026-04-04 A | B3.1. 33 14 13.021 | 100% |  |
| B3.1. 33 14 13.023 |  | Pipe Laying | 33.3d | 2026-02-12 A | 2026-04-05 A | B3.1. 33 14 13.022 | 100% |  |
| B3.1. 33 14 13.024 |  | Embedment & Test | 44.36d | 2026-04-29 A | 2026-06-24 A | B3.1. 33 14 13.023, B3.33 14 19.01.120 | 100% |  |
| B3.1. 33 14 13.025 |  | Backfilling & Warrning Tape (95.00% Completed) | 112d | 2026-05-04 A | 2026-09-15 A | B3.1. 33 14 13.024, B3.1. 33 14 13.014 | 100% |  |
| B3.1. 33 14 13.025_R |  | Backfilling & Warrning Tape(Rem) | 4d | 2026-09-21 A | 2026-09-26 A | B3.1. 33 14 13.024, B3.1. 33 14 13.014, B3.1. 33 14 13.025, B3.1. 33 14 13.015_R | 100% |  |
|  | Valves & Chambers | **Valves & Chambers** |  | 2026-03-05 | 2026-10-26 |  |  |  |
|  | GV | **Gate Valves** |  | 2026-03-05 | 2026-10-26 |  |  |  |
|  | 1 | **Gate valves dia (250) mm** |  | 2026-03-05 | 2026-10-26 |  |  |  |
| B3.33 14 19.01.120 |  | Burried Isolation Valve Installation | 15.29d | 2026-03-05 A | 2026-03-31 A | B3.1. 33 14 13.023, B3.1. 33 14 13.013 | 100% |  |
| B3.33 14 19.01.121 |  | Spindle & Surface Box | 4d | 2026-10-22 | 2026-10-26 | B3.33 14 19.01.120, B3.33 14 19.01.133, B3.33 14 19.01.127, B3.1. 33 14 13.025_R |  | 64.32d |
|  | 2 | **Air Valves** |  | 2026-06-10 | 2026-10-18 |  |  |  |
|  | 4 | **Air valves on less than 315 mm. (In Chamber)** |  | 2026-06-10 | 2026-10-18 |  |  |  |
| B3.33 05 63.02.42 |  | Land Adjustment & Compaction | 1.33d | 2026-06-10 A | 2026-06-11 A | B3.1. 33 14 13.021 | 100% |  |
| B3.33 05 63.02.40 |  | Foundations | 2d | 2026-06-13 A | 2026-06-14 A | B3.33 05 63.02.42 | 100% |  |

| ID | WBS | Task | Duration | Start | Finish | Predecessors | Complete | Total float |
| --- | --- | --- | --- | --- | --- | --- | --- | --- |
| B3.33 05 63.02.43 |  | Chambers Walls Conc Cast In Situ | 1d | 2026-06-15 A | 2026-06-15 A | B3.33 05 63.02.40 | 100% |  |
| B3.33 05 63.02.41 |  | Chamber Curing, Finishing & Steel Cover (50.00% Completed) | 79d | 2026-06-16 A | 2026-09-15 A | B3.33 05 63.02.43 | 100% |  |
| B3.33 05 63.02.41_R |  | Chamber Curing, Finishing & Steel Cover(Rem) | 4d | 2026-10-07 | 2026-10-11 | B3.33 05 63.02.43, B3.33 05 63.02.41 |  | 60.32d |
| B3.33 05 63.02.44 |  | Valve & Fitting Installation | 6d | 2026-10-12 | 2026-10-18 | B3.33 05 63.02.41_R, B3.33 05 63.01.31 |  | 60.32d |
|  | Washout Valves | **Washout Valves** |  | 2026-05-02 | 2026-05-19 |  |  |  |
|  | 4 | **Washout valves on 110-400 mm. (In Chamber)** |  | 2026-05-02 | 2026-05-19 |  |  |  |
| B3.33 05 63.01.32 |  | Land Adjustment & Compaction | 6d | 2026-05-02 A | 2026-05-07 A | B3.33 05 63.02.42 | 100% |  |
| B3.33 05 63.01.30 |  | Foundations | 3d | 2026-05-09 A | 2026-05-11 A | B3.33 05 63.01.32 | 100% |  |
| B3.33 05 63.01.33 |  | Chambers Walls Conc Cast In Situ | 2d | 2026-05-14 A | 2026-05-16 A | B3.33 05 63.01.30 | 100% |  |
| B3.33 05 63.01.31 |  | Chamber Curing, Finishing & Steel Cover | 2d | 2026-05-17 A | 2026-05-18 A | B3.33 05 63.01.33 | 100% |  |
| B3.33 05 63.01.34 |  | Valve & Fitting Installation | 2d | 2026-05-18 A | 2026-05-19 A | B3.33 05 63.01.31 | 100% |  |
|  | 3 | **Fire Hydrant** |  | 2026-04-20 | 2026-05-16 |  |  |  |
| B3.33 14 19.01.fh2 |  | Riser Pipe & Flanged Fittings Installation | 10.54d | 2026-04-20 A | 2026-05-02 A | B3.1. 33 14 13.023, B3.1. 33 14 13.013 | 100% |  |
| B3.33 14 19.01.fh3 |  | Firehydrant Fixing/Installation | 15.31d | 2026-04-21 A | 2026-05-09 A | B3.33 14 19.01.fh2 | 100% |  |
| B3.33 14 19.01.fh5 |  | Backfilling & Compaction | 16.85d | 2026-04-27 A | 2026-05-16 A | B3.33 14 19.01.fh3, B3.1. 33 14 13-01106 | 100% |  |
|  | TSE | **TSE Network** |  | 2026-03-02 | 2026-11-30 |  |  |  |
|  | HDPE | **HDPE Pipes** |  | 2026-03-02 | 2026-05-24 |  |  |  |
|  | ?110mm | **?110mm** |  | 2026-03-02 | 2026-05-20 |  |  |  |
|  | Depth: 0.0m - 1.5m | **Depth: 0.0m - 1.5m** |  | 2026-03-02 | 2026-05-20 |  |  |  |
| B4.33 14 13.071 |  | Excavation | 8d | 2026-03-02 A | 2026-03-13 A | B3.33 14 13.02.13, B3.1. 33 14 13.021 | 100% |  |
| B4.33 14 13.072 |  | Sand Bedding | 10.5d | 2026-03-04 A | 2026-03-20 A | B4.33 14 13.071 | 100% |  |
| B4.33 14 13.073 |  | Pipe Laying | 13.16d | 2026-03-07 A | 2026-03-30 A | B4.33 14 13.072 | 100% |  |
| B4.33 14 13.074 |  | Embedment & Test | 10.97d | 2026-03-26 A | 2026-04-08 A | B4.33 14 13.073, B3.33 14 19.01.136 | 100% |  |
| B4.33 14 13.075 |  | Backfilling & Warrning Tape | 46.15d | 2026-03-28 A | 2026-05-20 A | B4.33 14 13.074, B3.33 14 19.01.136 | 100% |  |
|  | ?90mm | **?90mm** |  | 2026-03-07 | 2026-05-24 |  |  |  |
|  | Depth: 0.0m - 1.5m | **Depth: 0.0m - 1.5m** |  | 2026-03-07 | 2026-05-24 |  |  |  |
| B4.33 14 13.061 |  | Excavation | 10.67d | 2026-03-07 A | 2026-03-26 A | B4.33 14 13.071 | 100% |  |
| B4.33 14 13.062 |  | Sand Bedding | 11.17d | 2026-03-09 A | 2026-03-29 A | B4.33 14 13.061 | 100% |  |
| B4.33 14 13.063 |  | Pipe Laying | 11.67d | 2026-03-11 A | 2026-03-31 A | B4.33 14 13.062 | 100% |  |
| B4.33 14 13.064 |  | Embedment & Test | 32.67d | 2026-04-15 A | 2026-05-23 A | B4.33 14 13.063, B3.33 14 19.01.136 | 100% |  |
| B4.33 14 13.065 |  | Backfilling & Warrning Tape | 27.06d | 2026-04-22 A | 2026-05-24 A | B4.33 14 13.064 | 100% |  |
|  | Valves & Chambers | **Valves & Chambers** |  | 2026-03-09 | 2026-11-30 |  |  |  |
|  | GV | **Gate Valves** |  | 2026-03-09 | 2026-10-10 |  |  |  |
|  | 1 | **Gate valves dia (250) mm** |  | 2026-03-09 | 2026-10-10 |  |  |  |
| B3.33 14 19.01.136 |  | Burried Isolation Valve Installation | 14.4d | 2026-03-09 A | 2026-04-02 A | B4.33 14 13.063, B4.33 14 13.073 | 100% |  |
| B3.33 14 19.01.137 |  | Spindle & Surface Box | 3d | 2026-10-07 | 2026-10-10 | B3.33 14 19.01.136, B4.33 14 13.074 |  | 57.32d |
|  | 2 | **Air Valves** |  | 2026-06-10 | 2026-10-15 |  |  |  |
|  | 4 | **Air valves on less than 315 mm. (In Chamber)** |  | 2026-06-10 | 2026-10-15 |  |  |  |
| B3.33 05 63.02.87 |  | Land Adjustment & Compaction | 2d | 2026-06-10 A | 2026-06-11 A | B4.33 14 13.061 | 100% |  |
| B3.33 05 63.02.85 |  | Foundations | 3d | 2026-06-13 A | 2026-06-15 A | B3.33 05 63.02.87 | 100% |  |
| B3.33 05 63.02.88 |  | Chambers Walls Conc Cast In Situ | 1d | 2026-06-14 A | 2026-06-14 A | B3.33 05 63.02.85 | 100% |  |
| B3.33 05 63.02.86 |  | Chamber Curing, Finishing & Steel Cover (50.00% Completed) | 80d | 2026-06-15 A | 2026-09-15 A | B3.33 05 63.02.88 | 100% |  |
| B3.33 05 63.02.86_R |  | Chamber Curing, Finishing & Steel Cover(Rem) | 3d | 2026-10-07 | 2026-10-10 | B3.33 05 63.02.88, B3.33 05 63.02.86 |  | 6.32d |
| B3.33 05 63.02.89 |  | Valve & Fitting Installation | 5d | 2026-10-11 | 2026-10-15 | B3.33 05 63.02.86_R |  | 6.32d |
|  | Washout Valves | **Washout Valves** |  | 2026-05-23 | 2026-11-30 |  |  |  |
|  | 4 | **Washout valves on 110-400 mm. (In Chamber)** |  | 2026-05-23 | 2026-11-30 |  |  |  |
| B3.33 05 63.01.67 |  | Land Adjustment & Compaction | 2d | 2026-05-23 A | 2026-05-24 A | B3.33 05 63.02.87, B3.33 05 63.02.87 FF | 100% |  |
| B3.33 05 63.01.65 |  | Foundations (60.00% Completed) | 84d | 2026-06-10 A | 2026-09-15 A | B3.33 05 63.01.67 | 100% |  |
| B3.33 05 63.01.68 |  | Chambers Walls Conc Cast In Situ (60.00% Completed) | 83d | 2026-06-11 A | 2026-09-15 A | B3.33 05 63.01.65 SS | 100% |  |
| B3.33 05 63.01.66 |  | Chamber Curing, Finishing & Steel Cover (60.00% Completed) | 81d | 2026-06-14 A | 2026-09-15 A | B3.33 05 63.01.68 SS | 100% |  |
| B3.33 05 63.01.65_R |  | Foundations(Rem) | 2.2d | 2026-10-07 | 2026-10-10 | B3.33 05 63.01.67, B3.33 05 63.01.65 |  | 63.72d |
| B3.33 05 63.01.66_R |  | Chamber Curing, Finishing & Steel Cover(Rem) | 2.6d | 2026-10-07 | 2026-10-10 | B3.33 05 63.01.68_R SS, B3.33 05 63.01.66 |  | 63.72d |
| B3.33 05 63.01.68_R |  | Chambers Walls Conc Cast In Situ(Rem) | 2.2d | 2026-10-07 | 2026-10-10 | B3.33 05 63.01.65_R SS, B3.33 05 63.01.68 |  | 63.72d |
| B3.33 05 63.01.69 |  | Valve & Fitting Installation | 3d | 2026-11-28 | 2026-11-30 | B3.33 05 63.01.66_R, B4.32 84 13.30 |  | 22.32d |
|  | Solenoid valves | **Solenoid valves** |  | 2026-11-05 | 2026-11-26 |  |  |  |
|  | Solenoid valve ?1.0 | **1 Solenoid valve ?1.0 inch with box** |  | 2026-11-05 | 2026-11-23 |  |  |  |
| B4.32 84 13.31 |  | Cable Laying Two-Wire Decoder (12 AWG) | 3d | 2026-11-05 | 2026-11-08 | B4.33 14 13.063, DMM2-Proc-Delv-7259 |  | 26.32d |
| B4.32 84 13.066 |  | Pull Box Installation | 3d | 2026-11-09 | 2026-11-11 | B4.32 84 13.31 |  | 26.32d |
| B4.32 84 13.32 |  | Solenoid Valve Box Installation | 3d | 2026-11-09 | 2026-11-11 | B4.32 84 13.31 |  | 29.32d |
| B4.32 84 13.33 |  | Bubblers Installation | 3d | 2026-11-21 | 2026-11-23 | B4.32 84 13.32, B4.32 84 13.39, B3.33 14 19.01.137, B4.33 14 13.074 |  | 22.32d |
|  | Solenoid valve ?1.5 | **1 Solenoid valve ?1.5 inch with box** |  | 2026-11-09 | 2026-11-18 |  |  |  |
| B4.32 84 13.34 |  | Cable Laying Two-Wire Decoder (12 AWG) | 3d | 2026-11-09 | 2026-11-11 | B4.32 84 13.31 |  | 26.32d |
| B4.32 84 13.067 |  | Pull Box Installation | 3d | 2026-11-12 | 2026-11-15 | B4.32 84 13.066 |  | 26.32d |
| B4.32 84 13.35 |  | Solenoid Valve Box Installation | 3d | 2026-11-12 | 2026-11-15 | B4.32 84 13.34 |  | 26.32d |
| B4.32 84 13.36 |  | Bubblers Installation | 3d | 2026-11-16 | 2026-11-18 | B4.32 84 13.35, B4.33 14 13.074 |  | 26.32d |
|  | Solenoid valve ?2.0 | **1 Solenoid valve ?2.0 inch with box** |  | 2026-11-12 | 2026-11-26 |  |  |  |
| B4.32 84 13.28 |  | Cable Laying Two-Wire Decoder (12 AWG) | 3d | 2026-11-12 | 2026-11-15 | B4.32 84 13.34 |  | 26.32d |
| B4.32 84 13.068 |  | Pull Box Installation | 3d | 2026-11-16 | 2026-11-18 | B4.32 84 13.067, B4.32 84 13.32, B3.33 14 19.01.137, B4.33 14 13.075 |  | 26.32d |
| B4.32 84 13.29 |  | Solenoid Valve Box Installation | 3d | 2026-11-16 | 2026-11-18 | B4.32 84 13.28 |  | 26.32d |
| B4.32 84 13.30 |  | Bubblers Installation | 3d | 2026-11-24 | 2026-11-26 | B4.32 84 13.29, B4.32 84 13.36, B4.32 84 13.068, B4.32 84 13.33 |  | 22.32d |

| ID | WBS | Task | Duration | Start | Finish | Predecessors | Complete | Total float |
| --- | --- | --- | --- | --- | --- | --- | --- | --- |
|  | Dry Networks | **Dry Networks** |  | 2026-04-30 | 2026-11-28 |  |  |  |
|  | MV Network | **Medium Voltage Network** |  | 2026-04-30 | 2026-10-22 |  |  |  |
|  | Duct Banks | **Duct Banks** |  | 2026-04-30 | 2026-10-10 |  |  |  |
|  | 4 Way | **4 Way** |  | 2026-04-30 | 2026-10-10 |  |  |  |
| B2.31 23 00.02 |  | Excavation | 2d | 2026-04-30 A | 2026-05-02 A | B3.33 14 13.01.015, B3.33 14 13.01.025 | 100% |  |
| B2.33 71 00.02 |  | Shuttering, Steel Fixing Incl. UPVC Pipe & Conc. Cast | 3d | 2026-05-06 A | 2026-05-09 A | B2.31 23 00.02 | 100% |  |
| B2.33 71 00.021 |  | Backfilling & Warrning Tape (71.00% Completed) | 87d | 2026-06-07 A | 2026-09-15 A | B2.33 71 00.02 | 100% |  |
| B2.33 71 00.021_R |  | Backfilling & Warrning Tape(Rem) | 3d | 2026-10-07 | 2026-10-10 | B2.33 71 00.02, B2.33 71 00.021 |  | 55.32d |
|  | Cables | **Cables** |  | 2026-09-01 | 2026-10-22 |  |  |  |
|  | 3C,500mm2 | **3C,500mm2** |  | 2026-09-01 | 2026-10-22 |  |  |  |
| B2.33 71 49.23.01 |  | Cable 13.8 kV Unarmored | 10.1d | 2026-09-01 A | 2026-09-13 A | B2.33 71 00.021 SS+1d, B2.33 71 00.021 FF+1d | 100% |  |
| B2.33 71 49.23.02 |  | Straight joints cables | 3d | 2026-10-07 | 2026-10-10 | B2.33 71 49.23.01 |  | 82.32d |
| B2.33 71 49.23.03 |  | Cable Termination | 4d | 2026-10-19 | 2026-10-22 | B2.33 71 49.23.02, B2.33 71 49.23.91 |  | 75.32d |
|  | Low Voltage Network | **Low Voltage Network** |  | 2026-05-11 | 2026-11-28 |  |  |  |
|  | Duct Banks | **Duct Banks** |  | 2026-05-11 | 2026-11-28 |  |  |  |
|  | 2 Way | **2 Way** |  | 2026-05-11 | 2026-06-14 |  |  |  |
| B2.33 71 00 02 97 |  | Excavation | 3d | 2026-05-11 A | 2026-05-14 A | B4.33 14 13.065 | 100% |  |
| B2.33 71 00 02 98 |  | Shuttering, Steel Fixing Incl. UPVC Pipe & Conc. Cast | 2d | 2026-05-16 A | 2026-05-18 A | B2.33 71 00 02 97 | 100% |  |
| B2.33 71 00 02 99 |  | Backfilling & Warrning Tape | 18d | 2026-05-19 A | 2026-06-14 A | B2.33 71 00 02 98 | 100% |  |
|  | 4 Way | **6 Way** |  | 2026-06-08 | 2026-11-28 |  |  |  |
| B2.33 71 00 02 100 |  | Excavation | 3d | 2026-06-08 A | 2026-06-10 A | B2.33 71 00 02 97 | 100% |  |
| B2.33 71 00 02 101 |  | Shuttering, Steel Fixing Incl. UPVC Pipe & Conc. Cast (0.00% Completed) | 6d | 2026-09-09 A | 2026-09-15 A | B2.33 71 00 02 100 | 100% |  |
| B2.33 71 00 02 101_R |  | Shuttering, Steel Fixing Incl. UPVC Pipe & Conc. Cast(Rem) | 2d | 2026-10-07 | 2026-10-08 | B2.33 71 00 02 100, B2.33 71 00 02 101 |  | 102.32d |
| B2.33 71 00 02 102 |  | Backfilling & Warrning Tape | 3d | 2026-11-25 | 2026-11-28 | B2.33 71 00 02 101_R, B2.33 71 00 02 99 SS, B2.33 71 00 01 13, B2.33 71 00.267_R, B2.33 71 00 02 141, B2.33 71 00 02 153, B2.33 71 00 02 150, B2.33 71 00 02 99 |  | 62.32d |
|  | Street Lighting | **Street Lighting** |  | 2026-08-29 | 2026-11-26 |  |  |  |
|  | Cables | **Cables** |  | 2026-09-12 | 2026-11-26 |  |  |  |
|  | 4C,10+1C,10mm2 | **4C,10+1C,10mm2** |  | 2026-09-12 | 2026-11-26 |  |  |  |
| B2.33 71 19 62 |  | Land Adjustment (50.00% Completed) | 4d | 2026-09-12 A | 2026-09-15 A | B2.33 71 00 02 100, DMM2-Proc-PO-091 | 100% |  |
| B2.33 71 49.23.112 |  | Cable Pulling (50.00% Completed) | 2d | 2026-09-14 A | 2026-09-15 A | DMM2-Proc-Delv-1308, B2.33 71 19 62 SS | 100% |  |
| B2.33 71 19 62_R |  | Land Adjustment(Rem) | 1d | 2026-10-07 | 2026-10-07 | B2.33 71 00 02 100, DMM2-Proc-PO-091, B2.33 71 19 62 |  | 101.32d |
| B2.33 71 49.23.112_R |  | Cable Pulling(Rem) | 2d | 2026-10-07 | 2026-10-08 | DMM2-Proc-Delv-1308, B2.33 71 19 62_R SS, B2.33 71 49.23.112 |  | 101.32d |
| B2.33 71 19 72 |  | Backfilling | 3d | 2026-11-24 | 2026-11-26 | B2.33 71 49.23.112_R, B2.33 71 16.28 FF |  | 62.32d |
|  | Earthing | **Earthing** |  | 2026-10-10 | 2026-10-17 |  |  |  |
| B2.33 71 19 011 |  | Land Adjustment | 2d | 2026-10-10 | 2026-10-11 | B2.33 71 16.021_R |  | 28.32d |
| B2.33 71 19 012 |  | Earth Rods & Conduits | 2d | 2026-10-12 | 2026-10-13 | B2.33 71 19 011, B2.1.33 81 26.11 |  | 28.32d |
| B2.33 71 19 013 |  | Backfilling | 3d | 2026-10-14 | 2026-10-17 | B2.33 71 19 012 |  | 28.32d |
|  | SL Poles | **SL Poles** |  | 2026-08-29 | 2026-10-26 |  |  |  |
|  | Pole (10 M Sngl Arm) | **Pole (10 M Single Arm)** |  | 2026-08-29 | 2026-10-26 |  |  |  |
| B2.33 71 16.021 |  | Excavation (92.00% Completed) | 15.1d | 2026-08-29 A | 2026-09-15 A | B1.2.32 11 26.01.1 SS | 100% |  |
| B2.33 71 16.022 |  | PC & RC Foundation (92.00% Completed) | 14.1d | 2026-08-30 A | 2026-09-15 A | B2.33 71 16.021 SS | 100% |  |
| B2.33 71 16.023 |  | Lighting Poles Installation Incl power box, Cables (92.00% Completed) | 13.1d | 2026-08-31 A | 2026-09-15 A | B2.33 71 16.022 SS | 100% |  |
| B2.26.56.19.01 |  | Lighting Luminares Inst (92.00% Completed) | 5.52d | 2026-09-09 A | 2026-09-15 A | B2.33 71 16.023 SS | 100% |  |
| B2.26.56.19.01_R |  | Lighting Luminares Inst(Rem) | 2d | 2026-10-07 | 2026-10-08 | B2.33 71 16.023_R SS, B2.26.56.19.01 |  | 94.32d |
| B2.33 71 16.021_R |  | Excavation(Rem) | 2d | 2026-10-07 | 2026-10-08 | B1.2.32 11 26.01.1_R SS, B2.33 71 16.021 |  | 28.32d |
| B2.33 71 16.022_R |  | PC & RC Foundation(Rem) | 2d | 2026-10-07 | 2026-10-08 | B2.33 71 16.021_R SS, B2.33 71 16.022 |  | 94.32d |
| B2.33 71 16.023_R |  | Lighting Poles Installation Incl power box, Cables(Rem) | 2d | 2026-10-07 | 2026-10-08 | B2.33 71 16.022_R SS, B2.33 71 16.023 |  | 94.32d |
| B2.33 71 16.025 |  | Backfilling, Grouting & Chamfering | 3d | 2026-10-24 | 2026-10-26 | B2.26.56.19.01_R, B2.33 71 00 02 72 |  | 82.32d |
|  | Telecommunication | **Telecommunication Network** |  | 2026-06-30 | 2026-10-14 |  |  |  |
|  | Manholes | **Manholes** |  | 2026-09-09 | 2026-10-08 |  |  |  |
|  | Manhole Type 1 | **Manhole Type 1** |  | 2026-09-12 | 2026-10-08 |  |  |  |
| B2.31 23 00.571 |  | Excavation (88.00% Completed) | 4d | 2026-09-12 A | 2026-09-15 A | DMM2-Proc-PO-089, B2.33 71 00.021 SS | 100% |  |
| B2.33 71 00.141 |  | Manhole Installation (88.00% Completed) | 2d | 2026-09-14 A | 2026-09-15 A | DMM2-Proc-Delv-1288, B2.31 23 00.571 SS | 100% |  |
| B2.33 71 00.151 |  | Backfilling & Warrning Tape (88.00% Completed) | 1d | 2026-09-15 A | 2026-09-15 A | B2.33 71 00.181, B2.33 71 00.141 SS | 100% |  |
| B2.31 23 00.571_R |  | Excavation(Rem) | 2d | 2026-10-07 | 2026-10-08 | DMM2-Proc-PO-089, B2.33 71 00.021_R SS, B2.31 23 00.571 |  | 88.32d |
| B2.33 71 00.141_R |  | Manhole Installation(Rem) | 2d | 2026-10-07 | 2026-10-08 | DMM2-Proc-Delv-1288, B2.31 23 00.571_R SS, B2.33 71 00.141 |  | 101.32d |
| B2.33 71 00.151_R |  | Backfilling & Warrning Tape(Rem) | 2d | 2026-10-07 | 2026-10-08 | B2.33 71 00.181, B2.33 71 00.141_R SS, B2.33 71 00.151 |  | 101.32d |
|  | Manhole Type 2 | **Manhole Type 2** |  | 2026-09-09 | 2026-10-08 |  |  |  |
| B2.31 23 00.581 |  | Excavation (88.00% Completed) | 6d | 2026-09-09 A | 2026-09-15 A | B2.31 23 00.571 SS | 100% |  |
| B2.33 71 00.161 |  | Manhole Installation (88.00% Completed) | 4d | 2026-09-12 A | 2026-09-15 A | B2.31 23 00.581 SS | 100% |  |
| B2.33 71 00.171 |  | Backfilling & Warrning Tape (88.00% Completed) | 3d | 2026-09-13 A | 2026-09-15 A | B2.33 71 00.161 SS | 100% |  |
| B2.31 23 00.581_R |  | Excavation(Rem) | 2d | 2026-10-07 | 2026-10-08 | B2.31 23 00.571_R SS, B2.31 23 00.581 |  | 88.32d |
| B2.33 71 00.161_R |  | Manhole Installation(Rem) | 2d | 2026-10-07 | 2026-10-08 | B2.31 23 00.581_R SS, B2.33 71 00.161 |  | 88.32d |
| B2.33 71 00.171_R |  | Backfilling & Warrning Tape(Rem) | 2d | 2026-10-07 | 2026-10-08 | B2.33 71 00.161_R SS, B2.33 71 00.171 |  | 88.32d |
|  | Crossing Ducts | **Road Crossing Ducts** |  | 2026-06-30 | 2026-07-15 |  |  |  |
|  | 1 | **Size (6*50mm) HDPE** |  | 2026-06-30 | 2026-07-15 |  |  |  |
| B2.31 23 00.591 |  | Excavation | 2d | 2026-06-30 A | 2026-07-02 A | B2.33 71 00 02 100 | 100% |  |
| B2.33 71 00.181 |  | Shuttering, Steel Fixing Incl. UPVC Pipe & Conc. Cast | 2d | 2026-07-02 A | 2026-07-05 A | B2.31 23 00.591 | 100% |  |
| B2.33 71 00.191 |  | Backfilling & Warrning Tape | 4.33d | 2026-07-10 A | 2026-07-15 A | B2.33 71 00.181 | 100% |  |
|  | 2 | **Size (2*32mm) HDPE** |  | 2026-07-02 | 2026-07-12 |  |  |  |
| B2.31 23 00.601 |  | Excavation | 1d | 2026-07-02 A | 2026-07-04 A | B2.31 23 00.591 | 100% |  |

| ID | WBS | Task | Duration | Start | Finish | Predecessors | Complete | Total float |
| --- | --- | --- | --- | --- | --- | --- | --- | --- |
| B2.33 71 00.201 |  | Shuttering, Steel Fixing Incl. UPVC Pipe & Conc. Cast | 4d | 2026-07-04 A | 2026-07-08 A | B2.31 23 00.601 | 100% |  |
| B2.33 71 00.211 |  | Backfilling & Warrning Tape | 3d | 2026-07-08 A | 2026-07-12 A | B2.33 71 00.201 | 100% |  |
|  | Ducts | **Ducts** |  | 2026-09-05 | 2026-10-08 |  |  |  |
|  | (6*50mm) | **Size (6*50mm) HDPE ducts** |  | 2026-09-05 | 2026-10-08 |  |  |  |
| B2.1.33 81 26.11 |  | Excavation | 2d | 2026-09-05 A | 2026-09-07 A | B2.31 23 00.591 | 100% |  |
| B2.1.33 81 26.12 |  | HDPE Pipe, Shuttering, Steel Fixing & Conc. Cast | 1d | 2026-09-07 A | 2026-09-08 A | B2.1.33 81 26.11 | 100% |  |
| B2.1.33 81 26.13 |  | Backfilling & Warrning Tape (88.00% Completed) | 6d | 2026-09-09 A | 2026-09-15 A | B2.33 71 00.171 SS | 100% |  |
| B2.1.33 81 26.13_R |  | Backfilling & Warrning Tape(Rem) | 2d | 2026-10-07 | 2026-10-08 | B2.33 71 00.171_R SS, B2.1.33 81 26.13 |  | 88.32d |
|  | (6*50mm+2*32mm) | **Size (6*50mm+2*32mm) HDPE ducts** |  | 2026-09-06 | 2026-10-08 |  |  |  |
| B2.1.33 81 26.21 |  | Excavation | 1d | 2026-09-06 A | 2026-09-07 A | B2.1.33 81 26.11 | 100% |  |
| B2.1.33 81 26.22 |  | HDPE Pipe, Shuttering, Steel Fixing & Conc. Cast | 1d | 2026-09-07 A | 2026-09-08 A | B2.1.33 81 26.21 | 100% |  |
| B2.1.33 81 26.23 |  | Backfilling & Warrning Tape (88.00% Completed) | 5d | 2026-09-10 A | 2026-09-15 A | B2.1.33 81 26.13 SS | 100% |  |
| B2.1.33 81 26.23_R |  | Backfilling & Warrning Tape(Rem) | 2d | 2026-10-07 | 2026-10-08 | B2.1.33 81 26.13_R SS, B2.1.33 81 26.23 |  | 106.32d |
|  | (6*50mm+4*32mm) | **Size (6*50mm+4*32mm) HDPE ducts** |  | 2026-09-06 | 2026-10-08 |  |  |  |
| B2.1.33 81 26.31 |  | Excavation (88.00% Completed) | 8.94d | 2026-09-06 A | 2026-09-15 A | B2.1.33 81 26.21 | 100% |  |
| B2.1.33 81 26.32 |  | HDPE Pipe, Shuttering, Steel Fixing & Conc. Cast (88.00% Completed) | 5d | 2026-09-10 A | 2026-09-15 A | B2.1.33 81 26.31 SS, B2.1.33 81 26.12 | 100% |  |
| B2.1.33 81 26.33 |  | Backfilling & Warrning Tape (88.00% Completed) | 4d | 2026-09-12 A | 2026-09-15 A | B2.1.33 81 26.32 SS | 100% |  |
| B2.1.33 81 26.31_R |  | Excavation(Rem) | 2d | 2026-10-07 | 2026-10-08 | B2.1.33 81 26.21, B2.1.33 81 26.31 |  | 45.32d |
| B2.1.33 81 26.32_R |  | HDPE Pipe, Shuttering, Steel Fixing & Conc. Cast(Rem) | 2d | 2026-10-07 | 2026-10-08 | B2.1.33 81 26.31_R SS, B2.1.33 81 26.12, B2.1.33 81 26.32 |  | 107.32d |
| B2.1.33 81 26.33_R |  | Backfilling & Warrning Tape(Rem) | 2d | 2026-10-07 | 2026-10-08 | B2.1.33 81 26.32_R SS, B2.1.33 81 26.33 |  | 107.32d |
|  | (2*32mm) | **Size (2*32mm) HDPE ducts** |  | 2026-09-06 | 2026-10-08 |  |  |  |
| B2.1.33 81 26.41 |  | Excavation (88.00% Completed) | 8.94d | 2026-09-06 A | 2026-09-15 A | B2.1.33 81 26.31 SS | 100% |  |
| B2.1.33 81 26.42 |  | HDPE Pipe, Shuttering, Steel Fixing & Conc. Cast (88.00% Completed) | 5d | 2026-09-10 A | 2026-09-15 A | B2.1.33 81 26.41 SS, B2.1.33 81 26.22 | 100% |  |
| B2.1.33 81 26.43 |  | Backfilling & Warrning Tape (88.00% Completed) | 3d | 2026-09-13 A | 2026-09-15 A | B2.1.33 81 26.42 SS | 100% |  |
| B2.1.33 81 26.41_R |  | Excavation(Rem) | 2d | 2026-10-07 | 2026-10-08 | B2.1.33 81 26.31_R SS, B2.1.33 81 26.41 |  | 45.32d |
| B2.1.33 81 26.42_R |  | HDPE Pipe, Shuttering, Steel Fixing & Conc. Cast(Rem) | 2d | 2026-10-07 | 2026-10-08 | B2.1.33 81 26.41_R SS, B2.1.33 81 26.22, B2.1.33 81 26.42 |  | 107.32d |
| B2.1.33 81 26.43_R |  | Backfilling & Warrning Tape(Rem) | 2d | 2026-10-07 | 2026-10-08 | B2.1.33 81 26.42_R SS, B2.1.33 81 26.43 |  | 107.32d |
|  | (4*32mm) | **Size (4*32mm) HDPE ducts** |  | 2026-09-07 | 2026-10-08 |  |  |  |
| B2.1.33 81 26.51 |  | Excavation (88.00% Completed) | 7.94d | 2026-09-07 A | 2026-09-15 A | B2.1.33 81 26.41 SS, B2.1.33 81 26.11 | 100% |  |
| B2.1.33 81 26.52 |  | HDPE Pipe, Shuttering, Steel Fixing & Conc. Cast (88.00% Completed) | 5d | 2026-09-10 A | 2026-09-15 A | B2.1.33 81 26.51 SS | 100% |  |
| B2.1.33 81 26.53 |  | Backfilling & Warrning Tape (88.00% Completed) | 4d | 2026-09-12 A | 2026-09-15 A | B2.1.33 81 26.52 SS, B2.1.33 81 26.33 SS | 100% |  |
| B2.1.33 81 26.51_R |  | Excavation(Rem) | 2d | 2026-10-07 | 2026-10-08 | B2.1.33 81 26.41_R SS, B2.1.33 81 26.11, B2.1.33 81 26.51 |  | 45.32d |
| B2.1.33 81 26.52_R |  | HDPE Pipe, Shuttering, Steel Fixing & Conc. Cast(Rem) | 2d | 2026-10-07 | 2026-10-08 | B2.1.33 81 26.51_R SS, B2.1.33 81 26.52 |  | 107.32d |
| B2.1.33 81 26.53_R |  | Backfilling & Warrning Tape(Rem) | 2d | 2026-10-07 | 2026-10-08 | B2.1.33 81 26.52_R SS, B2.1.33 81 26.33_R SS, B2.1.33 81 26.53 |  | 107.32d |
|  | Demolishing | **Demolishing and Site Clearing** |  | 2026-09-06 | 2026-10-14 |  |  |  |
| B2.1.02 41 00.011 |  | Excavation (88.00% Completed) | 9d | 2026-09-06 A | 2026-09-15 A | B2.1.33 81 26.51 SS | 100% |  |
| B2.1.02 41 00.012 |  | Old Manholes Grubbing (88.00% Completed) | 8d | 2026-09-07 A | 2026-09-15 A | B2.1.02 41 00.011 SS | 100% |  |
| B2.1.02 41 00.013 |  | Old Network Components Grubbing (88.00% Completed) | 6d | 2026-09-09 A | 2026-09-15 A | B2.1.02 41 00.011 SS | 100% |  |
| B2.1.02 41 00.014 |  | New Manholes Installation (88.00% Completed) | 4d | 2026-09-12 A | 2026-09-15 A | B2.1.02 41 00.012 SS | 100% |  |
| B2.1.02 41 00.015 |  | New Network Components Installation (88.00% Completed) | 3d | 2026-09-13 A | 2026-09-15 A | B2.1.02 41 00.013 SS | 100% |  |
| B2.1.02 41 00.011_R |  | Excavation(Rem) | 2d | 2026-10-07 | 2026-10-08 | B2.1.33 81 26.51_R SS, B2.1.02 41 00.011 |  | 45.32d |
| B2.1.02 41 00.012_R |  | Old Manholes Grubbing(Rem) | 2d | 2026-10-07 | 2026-10-08 | B2.1.02 41 00.011_R SS, B2.1.02 41 00.012 |  | 45.32d |
| B2.1.02 41 00.013_R |  | Old Network Components Grubbing(Rem) | 2d | 2026-10-07 | 2026-10-08 | B2.1.02 41 00.011_R SS, B2.1.02 41 00.013 |  | 60.32d |
| B2.1.02 41 00.014_R |  | New Manholes Installation(Rem) | 2d | 2026-10-07 | 2026-10-08 | B2.1.02 41 00.012_R SS, B2.1.02 41 00.014 |  | 45.32d |
| B2.1.02 41 00.015_R |  | New Network Components Installation(Rem) | 2d | 2026-10-07 | 2026-10-08 | B2.1.02 41 00.013_R SS, B2.1.02 41 00.015 |  | 60.32d |
| B2.1.02 41 00.016 |  | Backfilling & Warrning Tape | 5d | 2026-10-10 | 2026-10-14 | B2.1.02 41 00.014_R |  | 45.32d |
|  | Earth & Road Works | **Earth & Road Works** |  | 2025-11-22 | 2026-10-27 |  |  |  |
|  | Earth Works | **Earth Works - Roads** |  | 2025-11-22 | 2025-12-06 |  |  |  |
| B1.2.31 23 23.01.1 |  | Engineering Backfiling | 12.06d | 2025-11-22 A | 2025-12-06 A | B1.2.31 23 16.01.1 SS+2d | 100% |  |
| B1.2.31 23 16.01.1 |  | Roadway Excavation | 3.66d | 2025-11-27 A | 2025-12-01 A | B2.33 71 00.211 | 100% |  |
|  | Earth Layers | **Earth Layers** |  | 2025-12-24 | 2026-10-13 |  |  |  |
| B1.2.32 11 13.01.1 |  | Subgrade (65.00% Completed) | 213d | 2025-12-24 A | 2026-09-15 A | B1.2.31 23 23.01.1 | 100% |  |
| B1.2.32 11 23.01.1 |  | Aggregate Base Course (90.00% Completed) | 116d | 2026-04-29 A | 2026-09-15 A | B1.2.32 11 13.01.1 FF | 100% |  |
| B1.2.32 11 13.01.1_R |  | Subgrade(Rem) | 4.9d | 2026-09-26 A | 2026-10-07 | B1.2.31 23 23.01.1, B1.2.32 11 13.01.1 | 90% | 112.83d |
| B1.2.32 11 23.01.1_R |  | Aggregate Base Course(Rem) | 6d | 2026-10-07 | 2026-10-13 | B1.2.32 11 13.01.1_R FF, B1.2.32 11 23.01.1 |  | 107.32d |
|  | Interlock | **Interlock** |  | 2026-10-14 | 2026-10-17 |  |  |  |
| B1.2.32 14 13.13.1 |  | 60mm thick - Interlocking Block Pavers | 2d | 2026-10-14 | 2026-10-17 | 10 14 53.08 |  | 22d |
|  | Curbstone | **Curbstone** |  | 2026-09-12 | 2026-10-20 |  |  |  |
|  | Pre Install | **Pre-Installation** |  | 2026-09-12 | 2026-10-14 |  |  |  |
| 32 16 131 |  | Excavation (25.00% Completed) | 3.8d | 2026-09-12 A | 2026-09-15 A | B1.2.32 11 23.01.1 FF | 100% |  |
| 32 16 133 |  | Haunching (25.00% Completed) | 2.8d | 2026-09-13 A | 2026-09-15 A | 32 16 132 FF | 100% |  |
| 32 16 132 |  | PCC (25.00% Completed) | 1.8d | 2026-09-14 A | 2026-09-15 A | 32 16 131 FF | 100% |  |
| 32 16 133_R |  | Haunching(Rem) | 3d | 2026-10-12 | 2026-10-14 | 32 16 132_R FF, 32 16 133 |  | 46.32d |
| 32 16 131_R |  | Excavation(Rem) | 2d | 2026-10-13 | 2026-10-14 | B2.31 23 00.41 FF, 32 16 131 |  | 46.32d |
| 32 16 132_R |  | PCC(Rem) | 2d | 2026-10-13 | 2026-10-14 | 32 16 131_R FF, 32 16 132 |  | 46.32d |
|  | Installation | **Installation** |  | 2026-09-14 | 2026-10-20 |  |  |  |
| B1.2.32 16.13.01.1 |  | Curb Stone, Type K1 (10.00% Completed) | 1.8d | 2026-09-14 A | 2026-09-15 A | 32 16 133 SS | 100% |  |
| B1.2.32 16.13.01.1_R |  | Curb Stone, Type K1(Rem) | 2d | 2026-10-14 | 2026-10-17 | B1.2.32 14 13.13.1 FF, 32 16 133_R SS, B1.2.32 16.13.01.1 |  | 45d |
| B1.2.32 16.13.03.1 |  | Edge Curb, Type K4 | 2d | 2026-10-17 | 2026-10-19 | B1.2.32 14 13.13.1, 32 16 133_R, B1.2.32 16.13.01.1_R |  | 45d |
| B1.2.32 16.13.041 |  | Heel Curb, Type K5 | 1d | 2026-10-19 | 2026-10-20 | B1.2.32 14 13.13.1, 32 16 133_R, B1.2.32 16.13.03.1 |  | 45d |

| ID | WBS | Task | Duration | Start | Finish | Predecessors | Complete | Total float |
| --- | --- | --- | --- | --- | --- | --- | --- | --- |
|  | Finishing | **Finishing** |  | 2026-10-19 | 2026-10-20 |  |  |  |
| 32 16 134 |  | Finishing, Fareface | 1d | 2026-10-19 | 2026-10-20 | B1.2.32 16.13.01.1_R SS, B1.2.32 16.13.03.1 SS, B1.2.32 16.13.041 SS |  | 45d |
|  | Asphalt Layers | **Asphalt Layers** |  | 2026-05-17 | 2026-10-15 |  |  |  |
| B1.2.32 11 26.01.1 |  | Bituminous Base Course including Prime Coat (MC1) and tack coat (RC2) (92.00% Completed) | 100.03d | 2026-05-17 A | 2026-09-15 A | B1.2.32 11 23.01.1 SS | 100% |  |
| B1.2.32 11 26.01.1_R |  | Bituminous Base Course including Prime Coat (MC1) and tack coat (RC2)(Rem) | 6d | 2026-09-30 A | 2026-10-10 | B1.2.32 11 23.01.1_R SS, B1.2.32 11 26.01.1 | 50% | 28.32d |
| B1.2.32 12 16.01.1 |  | Bituminous concrete Wearing Course, including tack coat (RC2) | 5d | 2026-10-11 | 2026-10-15 | B1.2.32 11 26.01.1_R |  | 50.32d |
|  | Pavement Marking | **Pavement Marking** |  | 2026-10-19 | 2026-10-21 |  |  |  |
| B1.2.32 17 23.01.1 |  | Retroreflective Thermoplastic White Traffic lines | 3d | 2026-10-19 | 2026-10-21 | B1.2.32 12 16.01.1, B1.2.32 12 19.13.01, B1.2.32 17 23.02.1 SS |  | 67.32d |
| B1.2.32 17 23.02.1 |  | Retroreflective Thermoplastic Yellow, Traffic lines | 2d | 2026-10-19 | 2026-10-20 | B1.2.32 12 16.01.1, B1.2.32 12 19.13.01 |  | 67.32d |
|  | Traffic Signs | **Traffic Signs** |  | 2026-10-14 | 2026-10-27 |  |  |  |
|  | Pre Install | **Pre-Installation** |  | 2026-10-14 | 2026-10-20 |  |  |  |
| 10 14 53.1 |  | Excavation | 2d | 2026-10-14 | 2026-10-17 | B1.2.32 14 13.13.1 SS |  | 22d |
| 10 14 53.01 |  | Foundation | 3d | 2026-10-17 | 2026-10-20 | 10 14 53.1 |  | 30d |
|  | Installation | **Installation** |  | 2026-10-20 | 2026-10-27 |  |  |  |
| B1.2.10 14 53.011 |  | 1 Sheet Alumenium, Single post | 4d | 2026-10-20 | 2026-10-25 | 10 14 53.01 |  | 30d |
| B1.2.10 14 14.01.1 |  | Ground mounted, 1 Sheet Alumenium, Single post | 2d | 2026-10-25 | 2026-10-27 | B1.2.32 14 13.13.1, B1.2.10 14 53.021 SS |  | 30d |
| B1.2.10 14 53.021 |  | 2 Sheet Alumenium, Single post | 2d | 2026-10-25 | 2026-10-27 | B1.2.32 14 13.13.1, B1.2.10 14 53.011 |  | 30d |
|  | Road Misc. | **Miscellaneous** |  | 2026-10-17 | 2026-10-18 |  |  |  |
| B1.2.32 12 19.13.01 |  | Speed Tables | 2d | 2026-10-17 | 2026-10-18 | B1.2.32 12 16.01.1 |  | 67.32d |
|  | Landscape | **Landscape** |  | 2026-05-14 | 2026-12-01 |  |  |  |
|  | Geotextile | **Geotextile** |  | 2026-11-09 | 2026-11-23 |  |  |  |
| B7.31 32 19.23.01 |  | Geotextile to protect trees planting soil | 6d | 2026-11-09 | 2026-11-16 | B7.32 31 26.03.043, B7.32 31 26.03.023, B7.32 31 26.023 |  | 22d |
| B7.31 32 19.23.02 |  | Geotextile below gravel bed | 6d | 2026-11-16 | 2026-11-23 | B7.31 32 19.23.01, B7.32 31 26.03.043, B7.32 31 26.03.023, B7.32 31 26.023 |  | 22d |
|  | Steel fence (MODON) | **Steel fence (MODON)** |  | 2026-05-14 | 2026-10-24 |  |  |  |
| B7.32 31 26.021 |  | Earthwork (70.00% Completed) | 103d | 2026-05-14 A | 2026-09-15 A | B1.2.32 11 23.01.1 FF | 100% |  |
| B7.32 31 26.022 |  | Foundation (70.00% Completed) | 101d | 2026-05-17 A | 2026-09-15 A | B7.32 31 26.021 SS | 100% |  |
| B7.32 31 26.021_R |  | Earthwork(Rem) | 5d | 2026-10-11 | 2026-10-17 | 10 14 53.1 FF, B7.32 31 26.021 |  | 22d |
| B7.32 31 26.022_R |  | Foundation(Rem) | 4.2d | 2026-10-11 | 2026-10-15 | B7.32 31 26.021_R SS, B7.32 31 26.022 |  | 35.8d |
| B7.32 31 26.023 |  | Fence Installation | 7d | 2026-10-15 | 2026-10-24 | B7.32 31 26.022_R |  | 35.8d |
|  | Gates | **Gates** |  | 2026-10-17 | 2026-11-09 |  |  |  |
|  | Gates (1.6x 2.7)m | **Size (1.6x 2.7)m** |  | 2026-10-17 | 2026-11-03 |  |  |  |
| B7.32 31 26.03.021 |  | Earthwork | 5d | 2026-10-17 | 2026-10-22 | B7.32 31 26.021_R |  | 22d |
| B7.32 31 26.03.022 |  | Foundation | 5d | 2026-10-22 | 2026-10-28 | B7.32 31 26.03.021 |  | 27d |
| B7.32 31 26.03.023 |  | Gate Installation | 5d | 2026-10-28 | 2026-11-03 | B7.32 31 26.03.022 |  | 27d |
|  | Gates (4.5x 2.7)m | **Size (4.5x 2.7)m** |  | 2026-10-22 | 2026-11-09 |  |  |  |
| B7.32 31 26.03.041 |  | Earthwork | 5d | 2026-10-22 | 2026-10-28 | B7.32 31 26.03.021 |  | 22d |
| B7.32 31 26.03.042 |  | Foundation | 5d | 2026-10-28 | 2026-11-03 | B7.32 31 26.03.041 |  | 22d |
| B7.32 31 26.03.043 |  | Gate Installation | 5d | 2026-11-03 | 2026-11-09 | B7.32 31 26.03.042 |  | 22d |
|  | Trees | **Trees** |  | 2026-11-25 | 2026-12-01 |  |  |  |
| B7.32 93 43.02 |  | Cassia Glauca | 5d | 2026-11-25 | 2026-12-01 | B7.32 31 26.03.043, B7.32 31 26.03.023, B7.32 31 26.023, B7.31 32 19.23.01, B7.31 32 19.23.02, B7.32 93 33.02 |  | 20d |
|  | Service Road | **Service Road** |  | 2026-01-08 | 2026-12-01 |  |  |  |
|  | Wet Networks | **Wet Networks** |  | 2026-05-22 | 2026-12-01 |  |  |  |
|  | Storm | **Storm Network** |  | 2026-05-22 | 2026-12-01 |  |  |  |
|  | GRP | **GRP** |  | 2026-10-19 | 2026-11-24 |  |  |  |
|  | ?40011 | **?1300** |  | 2026-10-19 | 2026-11-10 |  |  |  |
|  | 3 | **Depth From 3.5m to 4.5m** |  | 2026-10-19 | 2026-11-10 |  |  |  |
| B6.33 42 11.26.1 |  | Excavation | 3d | 2026-10-19 | 2026-10-22 | B6.33 05 13.081, B1.1.31 23 23.22_R, B1.1.31 23 16.01_R |  | 21.72d |
| B6.33 42 11.26.2 |  | Sand Bedding | 3d | 2026-10-22 | 2026-10-26 | B6.33 42 11.26.1 |  | 27.72d |
| B6.33 42 11.26.3 |  | Pipe Laying | 3d | 2026-10-26 | 2026-10-29 | B6.33 42 11.26.2 |  | 27.72d |
| B6.33 42 11.26.4 |  | Embedment & Test | 4d | 2026-10-29 | 2026-11-03 | B6.33 42 11.26.3 |  | 27.72d |
| B6.33 42 11.26.5 |  | Backfilling & Warrning Tape | 6d | 2026-11-03 | 2026-11-10 | B6.33 42 11.26.4, B6.33 42 11.055, B6.33 42 11.0405, B6.33 05 13.084_R |  | 27.72d |
|  | ?40012 | **?1400** |  | 2026-10-22 | 2026-11-18 |  |  |  |
|  | 1 | **Depth From 3.5m to 4.5m** |  | 2026-10-22 | 2026-11-15 |  |  |  |
| B6.33 42 11.30.1 |  | Excavation | 3d | 2026-10-22 | 2026-10-26 | B6.33 42 11.26.1 |  | 21.72d |
| B6.33 42 11.30.2 |  | Sand Bedding | 3d | 2026-10-26 | 2026-10-29 | B6.33 42 11.30.1 |  | 29.72d |
| B6.33 42 11.30.3 |  | Pipe Laying | 3d | 2026-10-29 | 2026-11-02 | B6.33 42 11.30.2 |  | 29.72d |
| B6.33 42 11.30.4 |  | Embedment & Test | 5d | 2026-11-02 | 2026-11-08 | B6.33 42 11.30.3 |  | 29.72d |
| B6.33 42 11.30.5 |  | Backfilling & Warrning Tape | 6d | 2026-11-08 | 2026-11-15 | B6.33 42 11.30.4, B6.33 42 11.115 |  | 29.72d |
|  | 4 | **Depth From 2.5m to 3.5m** |  | 2026-10-26 | 2026-11-18 |  |  |  |
| B6.33 42 11.29.1 |  | Excavation | 3d | 2026-10-26 | 2026-10-29 | B6.33 42 11.30.1 |  | 21.72d |
| B6.33 42 11.29.2 |  | Sand Bedding | 3d | 2026-10-29 | 2026-11-02 | B6.33 42 11.29.1 |  | 26.72d |
| B6.33 42 11.29.3 |  | Pipe Laying | 3d | 2026-11-02 | 2026-11-05 | B6.33 42 11.29.2 |  | 26.72d |
| B6.33 42 11.29.4 |  | Embedment & Test | 5d | 2026-11-05 | 2026-11-11 | B6.33 42 11.29.3 |  | 26.72d |
| B6.33 42 11.29.5 |  | Backfilling & Warrning Tape | 6d | 2026-11-11 | 2026-11-18 | B6.33 42 11.29.4, B6.33 42 11.34-1.7 |  | 26.72d |
|  | ?400121 | **?1500** |  | 2026-10-29 | 2026-11-24 |  |  |  |
|  | 4 | **Depth From 2.5m to 3.5m** |  | 2026-10-29 | 2026-11-21 |  |  |  |
| B6.33 42 11.33.1 |  | Excavation | 3d | 2026-10-29 | 2026-11-02 | B6.33 42 11.29.1 |  | 21.72d |
| B6.33 42 11.33.2 |  | Sand Bedding | 3d | 2026-11-02 | 2026-11-05 | B6.33 42 11.33.1 |  | 24.72d |
| B6.33 42 11.33.3 |  | Pipe Laying | 3d | 2026-11-05 | 2026-11-09 | B6.33 42 11.33.2 |  | 24.72d |
| B6.33 42 11.33.4 |  | Embedment & Test | 4d | 2026-11-09 | 2026-11-14 | B6.33 42 11.33.3 |  | 24.72d |

| ID | WBS | Task | Duration | Start | Finish | Predecessors | Complete | Total float |
| --- | --- | --- | --- | --- | --- | --- | --- | --- |
| B6.33 42 11.33.5 |  | Backfilling & Warrning Tape | 6d | 2026-11-14 | 2026-11-21 | B6.33 42 11.33.4, B6.33 42 11.26.5 |  | 24.72d |
|  | 1 | **Depth From 3.5m to 4.5m** |  | 2026-11-02 | 2026-11-24 |  |  |  |
| B6.33 42 11.34.1 |  | Excavation | 3d | 2026-11-02 | 2026-11-05 | B6.33 42 11.33.1 |  | 21.72d |
| B6.33 42 11.34.2 |  | Sand Bedding | 3d | 2026-11-05 | 2026-11-09 | B6.33 42 11.34.1 |  | 26.72d |
| B6.33 42 11.34.3 |  | Pipe Laying | 3d | 2026-11-09 | 2026-11-12 | B6.33 42 11.34.2 |  | 26.72d |
| B6.33 42 11.34.4 |  | Embedment & Test | 5d | 2026-11-12 | 2026-11-18 | B6.33 42 11.34.3 |  | 26.72d |
| B6.33 42 11.34.5 |  | Backfilling & Warrning Tape | 3d | 2026-11-21 | 2026-11-24 | B6.33 42 11.34.4, B6.33 42 11.33.5, B6.33 42 11.30.5, B6.33 42 11.29.5, B6.33 42 11.35.11_R |  | 24.72d |
|  | Strom Manholes | **Manholes** |  | 2026-11-05 | 2026-12-01 |  |  |  |
|  | 3 | **?2000** |  | 2026-11-05 | 2026-12-01 |  |  |  |
|  | 4 | **Depth From 2.5m to 3.5m** |  | 2026-11-05 | 2026-11-26 |  |  |  |
| B6.33 05 13.07.1 |  | Excavation & Compaction | 3d | 2026-11-05 | 2026-11-09 | B6.33 42 11.34.1 |  | 21.72d |
| B6.33 05 13.07.2 |  | Blinding Conc, & RC Base | 4d | 2026-11-09 | 2026-11-14 | B6.33 05 13.07.1 |  | 22.72d |
| B6.33 05 13.07.3 |  | Manhole Installation | 3d | 2026-11-14 | 2026-11-17 | B6.33 05 13.07.2 |  | 22.72d |
| B6.33 05 13.07.4 |  | Test, Internal Finishing, Benching & Cover | 5d | 2026-11-17 | 2026-11-23 | B6.33 05 13.07.3 |  | 22.72d |
| B6.33 05 13.07.5 |  | Backfilling | 3d | 2026-11-23 | 2026-11-26 | B6.33 05 13.07.4, B6.33 05 13.055, B6.33 05 13.075, B6.33 05 13.085 |  | 22.72d |
|  | 1 | **Depth From 3.5m to 4.5m** |  | 2026-11-09 | 2026-11-28 |  |  |  |
| B6.33 05 13.08.1 |  | Excavation & Compaction | 3d | 2026-11-09 | 2026-11-12 | B6.33 05 13.07.1 |  | 21.72d |
| B6.33 05 13.08.2 |  | Blinding Conc, & RC Base | 4d | 2026-11-12 | 2026-11-17 | B6.33 05 13.08.1 |  | 21.72d |
| B6.33 05 13.08.3 |  | Manhole Installation | 3d | 2026-11-17 | 2026-11-21 | B6.33 05 13.08.2 |  | 21.72d |
| B6.33 05 13.08.4 |  | Test, Internal Finishing, Benching & Cover | 3d | 2026-11-21 | 2026-11-24 | B6.33 05 13.08.3 |  | 21.72d |
| B6.33 05 13.08.5 |  | Backfilling | 3d | 2026-11-24 | 2026-11-28 | B6.33 05 13.08.4, B6.33 05 13.05.06_R, B6.33 05 13.07.06_R |  | 21.72d |
|  | 3 | **Depth From 4.5m to 5.5m** |  | 2026-11-12 | 2026-12-01 |  |  |  |
| B6.33 05 13.09.1 |  | Excavation & Compaction | 3d | 2026-11-12 | 2026-11-16 | B6.33 05 13.08.1 |  | 22.72d |
| B6.33 05 13.09.2 |  | Blinding Conc, & RC Base | 4d | 2026-11-16 | 2026-11-21 | B6.33 05 13.09.1 |  | 22.72d |
| B6.33 05 13.09.3 |  | Manhole Installation | 2d | 2026-11-21 | 2026-11-23 | B6.33 05 13.09.2 |  | 22.72d |
| B6.33 05 13.09.4 |  | Test, Internal Finishing, Benching & Cover | 3d | 2026-11-23 | 2026-11-26 | B6.33 05 13.09.3 |  | 22.72d |
| B6.33 05 13.09.5 |  | Backfilling | 3d | 2026-11-28 | 2026-12-01 | B6.33 05 13.09.4, B6.33 05 13.08.5, B6.33 05 13.07.5, B6.33 42 11.34.5 |  | 21.72d |
|  | Catch Basins | **Catch Basins** |  | 2026-05-22 | 2026-11-25 |  |  |  |
|  | Sing | **Single** |  | 2026-05-22 | 2026-11-17 |  |  |  |
| B6.33 05 63.07.1 |  | Excavation, Compaction & Vapour Barrier (4.76% Completed) | 96d | 2026-05-22 A | 2026-09-15 A | B1.2.32 11 23.01.1 FF | 100% |  |
| B6.33 05 63.07.2 |  | Blinding Conc. (4.76% Completed) | 95d | 2026-05-24 A | 2026-09-15 A | B6.33 05 63.07.1 SS | 100% |  |
| B6.33 05 63.07.3 |  | Catch Basin Installation (4.76% Completed) | 90d | 2026-06-03 A | 2026-09-15 A | B6.33 05 63.07.2 SS | 100% |  |
| B6.33 05 63.07.4 |  | Backfilling, DI Frame & Grate Cover Fixing | 3d | 2026-10-11 | 2026-10-13 | B6.33 42 11.35.12, B6.33 05 40.01.760_R, B6.33 05 63.08.4 |  | 62.92d |
| B6.33 05 63.07.1_R |  | Excavation, Compaction & Vapour Barrier(Rem) | 3d | 2026-11-12 | 2026-11-16 | B6.33 05 13.09.1 FF, B6.33 05 63.07.1 |  | 71.12d |
| B6.33 05 63.07.2_R |  | Blinding Conc.(Rem) | 3d | 2026-11-12 | 2026-11-16 | B6.33 05 63.07.1_R SS, B6.33 05 63.07.2 |  | 78.12d |
| B6.33 05 63.07.3_R |  | Catch Basin Installation(Rem) | 4d | 2026-11-12 | 2026-11-17 | B6.33 05 63.07.2_R SS, B6.33 05 63.07.3 |  | 78.12d |
|  | Dou | **Double** |  | 2026-10-07 | 2026-11-25 |  |  |  |
| B6.33 05 63.08.4 |  | Backfilling, DI Frame & Grate Cover Fixing | 3d | 2026-10-07 | 2026-10-10 | B6.33 42 11.36.12, B6.33 42 11.35.12 |  | 62.92d |
| B6.33 05 63.08.1 |  | Excavation, Compaction & Vapour Barrier | 3d | 2026-11-16 | 2026-11-19 | B6.33 05 63.07.1_R, B1.1.31 23 19.02 |  | 71.12d |
| B6.33 05 63.08.2 |  | Blinding Conc. | 3d | 2026-11-19 | 2026-11-23 | B6.33 05 63.08.1, B6.33 42 11.31-1 1 |  | 71.12d |
| B6.33 05 63.08.3 |  | Catch Basin Installation | 2d | 2026-11-23 | 2026-11-25 | B6.33 05 63.08.2, DMM2-Proc-Delv-5758_R |  | 71.12d |
|  | UPVC | **UPVC** |  | 2026-06-01 | 2026-09-30 |  |  |  |
|  | UPVC300 | **?300 From 0.0 to 1.5m** |  | 2026-06-01 | 2026-09-29 |  |  |  |
| B6.33 42 11.35.11 |  | Catch Basin Opening Prep. (3.81% Completed) | 92d | 2026-06-01 A | 2026-09-15 A | B6.33 05 63.07.3 SS | 100% |  |
| B6.33 42 11.35.12 |  | Fittings & Pipe Installation | 11.81d | 2026-06-01 A | 2026-06-14 A | B6.33 42 11.35.11 SS+1d, B6.33 42 11.35.11 FF+1d | 100% |  |
| B6.33 42 11.35.11_R |  | Catch Basin Opening Prep.(Rem) | 3d | 2026-09-26 A | 2026-09-29 A | B6.33 05 63.07.3_R SS, B6.33 42 11.35.11 | 100% |  |
|  | UPVC3001 | **?400 From 0.0 to 1.5m** |  | 2026-09-20 | 2026-09-30 |  |  |  |
| B6.33 42 11.36.11 |  | Catch Basin Opening Prep. | 3d | 2026-09-20 A | 2026-09-27 A | B6.33 05 63.08.3 | 100% |  |
| B6.33 42 11.36.12 |  | Fittings & Pipe Installation | 2d | 2026-09-26 A | 2026-09-30 A | B6.33 42 11.36.11 | 100% |  |
|  | SDS1 | **Dry Networks** |  | 2026-10-18 | 2026-11-26 |  |  |  |
|  | SL | **Street Lighting** |  | 2026-10-18 | 2026-11-26 |  |  |  |
|  | Duct Banks | **Duct Banks** |  | 2026-10-31 | 2026-11-12 |  |  |  |
|  | 2 Way | **2 Way** |  | 2026-10-31 | 2026-11-04 |  |  |  |
| B2.33 71 00 02 011 |  | Excavation | 2d | 2026-10-31 | 2026-11-01 | B2.33 71 19 13 |  | 73.32d |
| B2.33 71 00 02 012 |  | Shuttering, Steel Fixing Incl. UPVC Pipe & Conc. Cast | 3d | 2026-11-02 | 2026-11-04 | B2.33 71 00 02 011 |  | 78.32d |
| B2.33 71 00 02 013 |  | Backfilling & Warrning Tape | 3d | 2026-11-02 | 2026-11-04 | B2.33 71 00 02 012 SS, B6.33 42 11.35.12 |  | 78.32d |
|  | 4 Way | **4 Way** |  | 2026-11-02 | 2026-11-12 |  |  |  |
| B2.33 71 00 02 021 |  | Excavation | 2d | 2026-11-02 | 2026-11-03 | B2.33 71 00 02 011 |  | 73.32d |
| B2.33 71 00 02 022 |  | Shuttering, Steel Fixing Incl. UPVC Pipe & Conc. Cast | 3d | 2026-11-04 | 2026-11-07 | B2.33 71 00 02 021 |  | 73.32d |
| B2.33 71 00 02 023 |  | Backfilling & Warrning Tape | 3d | 2026-11-09 | 2026-11-12 | B2.33 71 00 02 022, B6.33 42 11.35.12, B2.33 71 16.66 |  | 72d |
|  | Drawpits | **Drawpits** |  | 2026-11-04 | 2026-11-10 |  |  |  |
| B2.33 71 00 02 041 |  | Excavation | 2d | 2026-11-04 | 2026-11-05 | B2.33 71 00 02 021, B2.33 71 00 02 011 |  | 79.32d |
| B2.33 71 00 02 042 |  | Drawpits Installation | 2d | 2026-11-07 | 2026-11-08 | B2.33 71 00 02 041, DMM2-Proc-Delv-7241 |  | 79.32d |
| B2.33 71 00 02 043 |  | Backfilling & Warrning Tape | 2d | 2026-11-09 | 2026-11-10 | B2.33 71 00 02 042, B6.33 42 11.35.12 |  | 79.32d |
|  | Cables | **Cables** |  | 2026-10-20 | 2026-11-16 |  |  |  |
|  | 4C,10+1C,10mm2 | **4C,10+1C,10mm2** |  | 2026-10-20 | 2026-11-16 |  |  |  |
| B2.33 71 19 242 |  | Land Adjustment | 3d | 2026-10-20 | 2026-10-22 | B2.33 71 16.25 |  | 30.32d |
| B2.33 71 49.23.202 |  | Cable Pulling | 2d | 2026-10-24 | 2026-10-25 | B2.33 71 19 242 |  | 30.32d |
| B2.33 71 19 252 |  | Backfilling | 3d | 2026-11-12 | 2026-11-16 | B2.33 71 00 02 023 |  | 72d |
|  | SL Poles | **SL Poles** |  | 2026-10-18 | 2026-11-26 |  |  |  |

| ID | WBS | Task | Duration | Start | Finish | Predecessors | Complete | Total float |
| --- | --- | --- | --- | --- | --- | --- | --- | --- |
|  | Pole (10 M Sngl Arm) | **Pole (10 M Single Arm)** |  | 2026-10-18 | 2026-11-26 |  |  |  |
| B2.33 71 16.25 |  | Excavation | 2d | 2026-10-18 | 2026-10-19 | B2.33 71 19 013 |  | 28.32d |
| B2.33 71 16.26 |  | PC & RC Foundation | 3d | 2026-10-20 | 2026-10-22 | B2.33 71 16.25 |  | 28.32d |
| B2.33 71 16.27 |  | Lighting Poles Installation Incl power box, Cables | 4d | 2026-10-24 | 2026-10-27 | B2.33 71 16.26 |  | 28.32d |
| B2.26.56.19.1 |  | Lighting Luminares Inst | 3d | 2026-10-28 | 2026-10-31 | B2.33 71 16.27 |  | 82.32d |
| B2.33 71 16.28 |  | Backfilling, Grouting & Chamfering | 3d | 2026-11-24 | 2026-11-26 | B2.26.56.19.1, B2.1.02 41 00.18 SS, B2.33 71 00 02 013, B2.33 71 00 02 57 |  | 62.32d |
|  | Relocate SLP | **Relocate Lighting Poles** |  | 2026-10-20 | 2026-11-16 |  |  |  |
| B2.1.02 41 00.16 |  | Excavation (Evacuation Around Poles) | 2d | 2026-10-20 | 2026-10-21 | B2.33 71 16.25 |  | 85.32d |
| B2.1.02 41 00.17 |  | Old Poles Grubbing | 3d | 2026-10-22 | 2026-10-25 | B2.1.02 41 00.16 |  | 85.32d |
| B2.1.02 41 00.17a |  | Poles Transferring & Installation Incl. Foundation | 2d | 2026-10-26 | 2026-10-27 | B2.1.02 41 00.17 |  | 85.32d |
| B2.1.02 41 00.18 |  | Backfilling & Warrning Tape | 3d | 2026-11-12 | 2026-11-16 | B2.1.02 41 00.17a, B2.33 71 19 252 FF, B2.33 71 19 28 |  | 72d |
|  | Earthing | **Earthing** |  | 2026-10-28 | 2026-11-04 |  |  |  |
| B2.33 71 19 13 |  | Land Adjustment | 2d | 2026-10-28 | 2026-10-29 | B2.33 71 49.23.202, B2.33 71 16.27 |  | 28.32d |
| B2.33 71 19 14 |  | Earth Rods & Conduits | 2d | 2026-10-31 | 2026-11-01 | B2.33 71 19 13 |  | 28.32d |
| B2.33 71 19 15 |  | Backfilling | 3d | 2026-11-02 | 2026-11-04 | B2.33 71 19 14 |  | 28.32d |
|  | Earth & Road Works | **Earth & Road Works** |  | 2026-01-08 | 2026-11-15 |  |  |  |
|  | Earth Works | **Earth Works** |  | 2026-01-08 | 2026-10-21 |  |  |  |
| B1.2.31 23 16.01.2 |  | Roadway Excavation | 53.44d | 2026-01-08 A | 2026-03-24 A | B6.33 42 11.35.12 | 100% |  |
| B1.2.31 23 23.01.2 |  | Embankment Backfiling (12.00% Completed) | 199d | 2026-01-10 A | 2026-09-15 A | B1.2.31 23 16.01.2 | 100% |  |
| B1.2.31 23 23.01.2_R |  | Embankment Backfiling(Rem) | 13d | 2026-10-07 | 2026-10-21 | B1.2.31 23 16.01.2, B1.2.31 23 23.01.2 |  | 34.32d |
|  | Earth Layers | **Earth Layers** |  | 2026-08-17 | 2026-10-10 |  |  |  |
| B1.2.32 11 23.01.2 |  | Aggregate Base Course (22.00% Completed) | 26d | 2026-08-17 A | 2026-09-15 A | B1.2.32 11 13.01.2 SS | 100% |  |
| B1.2.32 11 13.01.2 |  | Subgrade (50.00% Completed) | 14d | 2026-08-31 A | 2026-09-15 A | B1.2.31 23 23.01.2 SS | 100% |  |
| B1.2.32 11 13.01.2_R |  | Subgrade(Rem) | 3d | 2026-10-07 | 2026-10-10 | B1.2.31 23 23.01.2_R SS, B1.2.32 11 13.01.2 |  | 34.32d |
| B1.2.32 11 23.01.2_R |  | Aggregate Base Course(Rem) | 3d | 2026-10-07 | 2026-10-10 | B1.2.32 11 13.01.2_R SS, B1.2.32 11 23.01.2 |  | 34.32d |
|  | Interlock | **Interlock** |  | 2026-11-02 | 2026-11-04 |  |  |  |
| B1.2.32 14 13.13.2 |  | 60mm thick - Interlocking Block Pavers | 3d | 2026-11-02 | 2026-11-04 | B1.2.32 11 23.01.2_R SS, B2.33 71 19 15 SS |  | 28.32d |
|  | Curbstone | **Curbstone** |  | 2026-10-11 | 2026-11-12 |  |  |  |
|  | Pre Install | **Pre-Installation** |  | 2026-10-11 | 2026-10-19 |  |  |  |
| 32 16 13.0021 |  | Excavation | 2d | 2026-10-11 | 2026-10-12 | B1.2.32 11 23.01.2_R |  | 34.32d |
| 32 16 13.0023 |  | Haunching | 3d | 2026-10-13 | 2026-10-15 | 32 16 13.0021 |  | 40.32d |
| 32 16 13.0024 |  | PCC | 3d | 2026-10-17 | 2026-10-19 | 32 16 13.0023 |  | 40.32d |
|  | Installation | **Installation** |  | 2026-11-02 | 2026-11-07 |  |  |  |
| B1.2.32 16.13.01.2 |  | Curb Stone, Type K1 | 2d | 2026-11-02 | 2026-11-03 | B1.2.32 14 13.13.2 SS, 32 16 13.0024, DMM2-Proc-Delv-7267 |  | 29.32d |
| B1.2.32 16.13.03.2 |  | Edge Curb, Type K4 | 2d | 2026-11-02 | 2026-11-03 | B1.2.32 14 13.13.2 SS, B1.2.32 16.13.01.2 SS |  | 29.32d |
| B1.2.32 16.13.042 |  | Heel Curb, Type K5 | 2d | 2026-11-05 | 2026-11-07 | B1.2.32 14 13.13.2, B1.2.32 16.13.03.2 |  | 28.32d |
|  | Finishing | **Finishing** |  | 2026-11-11 | 2026-11-12 |  |  |  |
| 32 16 13.0022 |  | Finishing, Fareface | 2d | 2026-11-11 | 2026-11-12 | B1.2.32 16.13.01.2, B1.2.32 16.13.03.2, B1.2.32 16.13.042, B1.2.32 12 16.01.2 |  | 40.32d |
|  | Asphalt Layers | **Asphalt Layers** |  | 2026-08-26 | 2026-11-10 |  |  |  |
| B1.2.32 11 26.01.2 |  | Bituminous Base Course including Prime Coat (MC1) and tack coat (RC2) (0.00% Completed) | 18d | 2026-08-26 A | 2026-09-15 A | B1.2.32 11 23.01.2 FF | 100% |  |
| B1.2.32 11 26.01.2_R |  | Bituminous Base Course including Prime Coat (MC1) and tack coat (RC2)(Rem) | 4d | 2026-10-07 | 2026-10-11 | B1.2.32 11 23.01.2_R FF, B1.2.32 11 26.01.2 |  | 53.32d |
| B1.2.32 12 16.01.2 |  | Bituminous concrete Wearing Course, including tack coat (RC2) | 5d | 2026-11-05 | 2026-11-10 | B1.2.32 11 26.01.2_R SS, B1.2.32 16.13.042 SS |  | 28.32d |
|  | Pavement Marking | **Pavement Marking** |  | 2026-11-14 | 2026-11-15 |  |  |  |
| B1.2.32 17 23.01.2 |  | Retroreflective Thermoplastic White Traffic lines | 2d | 2026-11-14 | 2026-11-15 | B1.2.32 12 16.01.2, B1.2.32 12 19.13.02, 32 16 13.0022, B1.1.02 41 00.01 |  | 40.32d |
| B1.2.32 17 23.02.2 |  | Retroreflective Thermoplastic Yellow, Traffic lines | 2d | 2026-11-14 | 2026-11-15 | B1.2.32 12 16.01.2, B1.2.32 12 19.13.02, 32 16 13.0022 |  | 40.32d |
|  | Traffic Signs | **Traffic Signs** |  | 2026-10-13 | 2026-10-21 |  |  |  |
|  | Pre Install | **Pre-Installation** |  | 2026-10-13 | 2026-10-17 |  |  |  |
| B2.31 23 00.41 |  | Excavation | 2d | 2026-10-13 | 2026-10-14 | 32 16 13.0021 |  | 34.32d |
| 10 14 53.02 |  | Foundation | 2d | 2026-10-15 | 2026-10-17 | B2.31 23 00.41 |  | 34.32d |
|  | Installation | **Installation** |  | 2026-10-18 | 2026-10-21 |  |  |  |
| B1.2.10 14 53.317 |  | 1 Sheet Alumenium, Single post | 2d | 2026-10-18 | 2026-10-19 | 10 14 53.02 |  | 34.32d |
| B1.2.10 14 14.01.18 |  | Ground mounted, 1 Sheet Alumenium, Single post | 2d | 2026-10-20 | 2026-10-21 | 10 14 53.02, B1.2.10 14 53.318 SS |  | 34.32d |
| B1.2.10 14 53.318 |  | 2 Sheet Alumenium, Single post | 2d | 2026-10-20 | 2026-10-21 | 10 14 53.02, B1.2.10 14 53.317 |  | 34.32d |
|  | Road Misc. | **Miscellaneous** |  | 2026-11-11 | 2026-11-12 |  |  |  |
| B1.2.32 12 19.13.02 |  | Speed Tables | 2d | 2026-11-11 | 2026-11-12 | B1.2.32 12 16.01.2 |  | 40.32d |
|  | Demolishion | **Demolishing and Site Clearing** |  | 2026-01-17 | 2026-06-15 |  |  |  |
| B1.1.02 41 00.03 |  | Removal of concrete protection | 4d | 2026-01-17 A | 2026-01-20 A | B1.1.02 41 00.02 | 100% |  |
| B1.1.02 41 00.09 |  | Dismantling and relocation of existing inlets | 24.25d | 2026-03-06 A | 2026-04-11 A | B1.1.02 41 00.05 | 100% |  |
| B1.1.02 41 00.02 |  | Removal of bituminous concrete wearing course | 5d | 2026-04-06 A | 2026-04-10 A | B1.1.02 41 00.01 | 100% |  |
| B1.1.02 41 00.08 |  | Selective Tree Removal | 4d | 2026-04-06 A | 2026-04-09 A | B1.1.02 41 00.06 | 100% |  |
| B1.1.02 41 00.04 |  | Removal of riprap | 6d | 2026-04-15 A | 2026-04-21 A | B1.1.02 41 00.03 | 100% |  |
| B1.1.02 41 00.01 |  | Removal of curbstone | 4d | 2026-05-09 A | 2026-05-12 A | B2.31 23 00.02 | 100% |  |
| B1.1.02 41 00.10 |  | Dismantling and level adjustment for storm manholes | 2d | 2026-05-31 A | 2026-06-01 A | B1.1.02 41 00.09, B1.1.02 41 00.100 | 100% |  |
| B1.1.02 41 00.05 |  | Removal of traffic signs | 7d | 2026-06-08 A | 2026-06-15 A | B1.1.02 41 00.08 | 100% |  |
| B1.1.02 41 00.06 |  | Removal of culvert's wing walls | 7d | 2026-06-08 A | 2026-06-15 A | B1.1.02 41 00.04 | 100% |  |
| B1.1.02 41 00.101 |  | Removal of existing building | 7d | 2026-06-08 A | 2026-06-15 A | B1.1.02 41 00.10 | 100% |  |
|  | Zone 02 | **Zone 02** |  | 2025-09-18 | 2027-01-09 |  |  |  |
|  | Dewatering | **Earthworks & Site Grading** |  | 2025-09-18 | 2026-10-14 |  |  |  |
| B1.1.31 23 19.02 |  | Dewatering | 18.49d | 2025-09-18 A | 2025-10-12 A | B1.1.31 23 19.01 | 100% |  |
| B1.1.31 23 16.02 |  | Excavation (all types of soil) (95.00% Completed) | 274d | 2025-10-14 A | 2026-09-15 A | B1.1.31 23 19.02, B1.1.31 23 16.01 FF | 100% |  |

| ID | WBS | Task | Duration | Start | Finish | Predecessors | Complete | Total float |
| --- | --- | --- | --- | --- | --- | --- | --- | --- |
| B1.1.31 23 23.52 |  | Engineering Backfiling - Entrance Road 01 | 82.14d | 2025-10-28 A | 2026-02-01 A | B1.1.31 23 23.92, B1.1.31 23 23.92 FF | 100% |  |
| B1.1.31 23 23.72 |  | Engineering Backfiling - Management Road 01 | 82.14d | 2025-11-09 A | 2026-02-12 A | B1.1.31 23 23.62 | 100% |  |
| B1.1.31 23 23.62 |  | Engineering Backfiling - Entrance Road 02 | 99.14d | 2025-11-12 A | 2026-03-15 A | B1.1.31 23 23.52, B1.1.31 23 23.52 FF | 100% |  |
| B1.1.31 23 23.42 |  | Engineering Backfiling - Commercial Road 01 | 89.64d | 2025-11-15 A | 2026-03-03 A | B1.1.31 23 23.01 | 100% |  |
| B1.1.31 23 23.82 |  | Engineering Backfiling - Parking Roads | 75.1d | 2025-12-01 A | 2026-03-03 A | B1.1.31 23 23.42 | 100% |  |
| B1.1.31 23 23.102 |  | Engineering Backfiling - Pump Station | 25.81d | 2026-01-26 A | 2026-03-01 A | B1.1.31 23 23.02 | 100% |  |
| B1.1.31 23 23.02 |  | Engineering Backfiling - Arterial Roads | 27.67d | 2026-02-02 A | 2026-03-12 A | B1.1.31 23 23.32 | 100% |  |
| B1.1.31 23 23.112 |  | Engineering Backfiling - Guard Rooms | 30.01d | 2026-02-04 A | 2026-03-19 A | B1.1.31 23 23.102, B1.1.31 23 23.82 | 100% |  |
| B1.1.31 23 23.92 |  | Engineering Backfiling - Service Road | 24.51d | 2026-02-18 A | 2026-04-01 A | B1.1.31 23 23.112 SS+2d, B1.1.31 23 23.112 FF+2d | 100% |  |
| B1.1.31 23 16.02_R |  | Excavation (all types of soil)(Rem) | 6.22d | 2026-10-07 | 2026-10-14 | B1.1.31 23 19.02, B1.1.31 23 16.01_R FF, B1.1.31 23 16.02 |  | 74.1d |
|  | Service Road | **Service Road** |  | 2026-02-13 | 2026-12-02 |  |  |  |
|  | Wet Networks | **Wet Networks** |  | 2026-08-09 | 2026-11-07 |  |  |  |
|  | Stormwater Network | **Stormwater Network** |  | 2026-08-09 | 2026-11-07 |  |  |  |
|  | GRP | **GRP** |  | 2026-08-11 | 2026-10-14 |  |  |  |
|  | ?40011 | **?1500** |  | 2026-08-11 | 2026-10-14 |  |  |  |
|  | 3 | **Depth From 2.5m to 3.5m** |  | 2026-08-13 | 2026-10-14 |  |  |  |
| B6.33 42 11.31-1 1 |  | Excavation | 2d | 2026-08-13 A | 2026-08-16 A | B1.1.31 23 19.02, B1.1.31 23 23.92 | 100% |  |
| B6.33 42 11.31-1 3 |  | Sand Bedding (67.47% Completed) | 26.1d | 2026-08-16 A | 2026-09-15 A | B6.33 42 11.31-1 1 | 100% |  |
| B6.33 42 11.31-1 5 |  | Pipe Laying (39.69% Completed) | 25.1d | 2026-08-17 A | 2026-09-15 A | B6.33 42 11.31-1 3 FF | 100% |  |
| B6.33 42 11.31-1 7 |  | Embedment & Test (67.47% Completed) | 23d | 2026-08-20 A | 2026-09-15 A | B6.33 42 11.31-1 5 FF | 100% |  |
| B6.33 42 11.31-1 9 |  | Backfilling & Warrning Tape (67.47% Completed) | 21d | 2026-08-23 A | 2026-09-15 A | B6.33 42 11.31-1 7 FF | 100% |  |
| B6.33 42 11.31-1 3_R |  | Sand Bedding(Rem) | 2.28d | 2026-10-07 | 2026-10-10 | B6.33 42 11.31-1 1, B6.33 42 11.31-1 3 |  | 48.36d |
| B6.33 42 11.31-1 5_R |  | Pipe Laying(Rem) | 2.28d | 2026-10-07 | 2026-10-10 | B6.33 42 11.31-1 3_R FF, B6.33 42 11.31-1 5 |  | 48.36d |
| B6.33 42 11.31-1 7_R |  | Embedment & Test(Rem) | 2.84d | 2026-10-07 | 2026-10-10 | B6.33 42 11.31-1 5_R FF, B6.33 42 11.31-1 7 |  | 47.8d |
| B6.33 42 11.31-1 9_R |  | Backfilling & Warrning Tape(Rem) | 3.12d | 2026-10-11 | 2026-10-14 | B6.33 42 11.31-1 7_R FF, B6.33 42 11.31-1 9, B6.33 42 11.01-1029_R |  | 44.4d |
|  | 1 | **Depth From 3.5m to 4.5m** |  | 2026-08-11 | 2026-10-14 |  |  |  |
| B6.33 42 11.31-1 2 |  | Excavation | 5d | 2026-08-11 A | 2026-08-17 A | B6.33 42 11.31-1 1 | 100% |  |
| B6.33 42 11.31-1 4 |  | Sand Bedding (67.47% Completed) | 27.1d | 2026-08-15 A | 2026-09-15 A | B6.33 42 11.31-1 2 | 100% |  |
| B6.33 42 11.31-1 6 |  | Pipe Laying (67.47% Completed) | 26.1d | 2026-08-16 A | 2026-09-15 A | B6.33 42 11.31-1 4 FF | 100% |  |
| B6.33 42 11.31-1 8 |  | Embedment & Test (67.47% Completed) | 23d | 2026-08-20 A | 2026-09-15 A | B6.33 42 11.31-1 6 FF | 100% |  |
| B6.33 42 11.31-1 10 |  | Backfilling & Warrning Tape (67.47% Completed) | 19d | 2026-08-25 A | 2026-09-15 A | B6.33 42 11.31-1 8 FF | 100% |  |
| B6.33 42 11.31-1 4_R |  | Sand Bedding(Rem) | 2.28d | 2026-10-07 | 2026-10-10 | B6.33 42 11.31-1 2, B6.33 42 11.31-1 4 |  | 111.04d |
| B6.33 42 11.31-1 6_R |  | Pipe Laying(Rem) | 2.28d | 2026-10-07 | 2026-10-10 | B6.33 42 11.31-1 4_R FF, B6.33 42 11.31-1 6 |  | 111.04d |
| B6.33 42 11.31-1 8_R |  | Embedment & Test(Rem) | 2.84d | 2026-10-07 | 2026-10-10 | B6.33 42 11.31-1 6_R FF, B6.33 42 11.31-1 8 |  | 110.48d |
| B6.33 42 11.31-1 10_R |  | Backfilling & Warrning Tape(Rem) | 2.94d | 2026-10-12 | 2026-10-14 | B6.33 42 11.31-1 8_R FF, B6.33 42 11.31-1 10, B6.33 42 11.02 5_R |  | 106.38d |
|  | Strom Manholes | **Manholes** |  | 2026-08-10 | 2026-10-24 |  |  |  |
|  | 2 | **?1500** |  | 2026-08-15 | 2026-10-21 |  |  |  |
|  | 1 | **Depth From 2.5m to 3.5m** |  | 2026-08-15 | 2026-10-21 |  |  |  |
| B6.33 05 39.01.3327 |  | Excavation & Compaction | 1d | 2026-08-15 A | 2026-08-16 A | B6.33 42 11.31-1 2 | 100% |  |
| B6.33 05 39.01.3337 |  | Blinding Conc, & RC Base (75.00% Completed) | 24d | 2026-08-19 A | 2026-09-15 A | B6.33 05 39.01.3327 | 100% |  |
| B6.33 05 39.01.3347 |  | Manhole Installation (75.00% Completed) | 21d | 2026-08-23 A | 2026-09-15 A | B6.33 05 39.01.3337 SS | 100% |  |
| B6.33 05 39.01.3367 |  | Backfilling (75.00% Completed) | 20d | 2026-08-24 A | 2026-09-15 A | B6.33 05 13.01 5 SS, B6.33 05 13.07 5 SS | 100% |  |
| B6.33 05 39.01.3337_R |  | Blinding Conc, & RC Base(Rem) | 2d | 2026-09-19 A | 2026-09-20 A | B6.33 05 39.01.3327, B6.33 05 39.01.3337 | 100% |  |
| B6.33 05 39.01.3347_R |  | Manhole Installation(Rem) | 2d | 2026-09-21 A | 2026-09-24 A | B6.33 05 39.01.3337_R SS, B6.33 05 39.01.3347 | 100% |  |
| B6.33 05 39.01.3357 |  | Test, Internal Finishing, Benching & Cover | 5d | 2026-10-07 | 2026-10-12 | B6.33 05 39.01.3347_R |  | 106.32d |
| B6.33 05 39.01.3367_R |  | Backfilling(Rem) | 4d | 2026-10-17 | 2026-10-21 | B6.33 05 39.01.3357 FF, B6.33 05 13.01 5_R SS, B6.33 05 13.07 5_R SS, B6.33 05 39.01.3367 |  | 99.08d |
|  | 3 | **?2000** |  | 2026-08-10 | 2026-10-24 |  |  |  |
|  | 3 | **Depth From 2.5m to 3.5m** |  | 2026-08-19 | 2026-10-14 |  |  |  |
| B6.33 05 39.01.3377 |  | Excavation & Compaction (75.00% Completed) | 24d | 2026-08-19 A | 2026-09-15 A | B6.33 05 39.01.3327 | 100% |  |
| B6.33 05 39.01.3387 |  | Blinding Conc, & RC Base (75.00% Completed) | 22d | 2026-08-22 A | 2026-09-15 A | B6.33 05 39.01.3377 SS | 100% |  |
| B6.33 05 39.01.3397 |  | Manhole Installation (75.00% Completed) | 21d | 2026-08-23 A | 2026-09-15 A | B6.33 05 39.01.3387 SS | 100% |  |
| B6.33 05 39.01.3417 |  | Backfilling (75.00% Completed) | 19d | 2026-08-25 A | 2026-09-15 A | B6.33 05 39.01.3397 | 100% |  |
| B6.33 05 39.01.3377_R |  | Excavation & Compaction(Rem) | 2d | 2026-10-07 | 2026-10-08 | B6.33 05 39.01.3327, B6.33 05 39.01.3377 |  | 42.8d |
| B6.33 05 39.01.3387_R |  | Blinding Conc, & RC Base(Rem) | 2d | 2026-10-07 | 2026-10-08 | B6.33 05 39.01.3377_R SS, B6.33 05 39.01.3387 |  | 42.8d |
| B6.33 05 39.01.3397_R |  | Manhole Installation(Rem) | 2d | 2026-10-07 | 2026-10-08 | B6.33 05 39.01.3387_R SS, B6.33 05 39.01.3397 |  | 42.8d |
| B6.33 05 39.01.3407 |  | Test, Internal Finishing, Benching & Cover | 5d | 2026-10-10 | 2026-10-14 | B6.33 05 39.01.3397_R |  | 42.8d |
| B6.33 05 39.01.3417_R |  | Backfilling(Rem) | 2.25d | 2026-10-12 | 2026-10-14 | B6.33 05 39.01.3407 FF, B6.33 05 39.01.3417 |  | 42.8d |
|  | 1 | **Depth From 3.5m to 4.5m** |  | 2026-08-13 | 2026-10-14 |  |  |  |
| B6.33 05 39.01.3427 |  | Excavation & Compaction (75.00% Completed) | 29d | 2026-08-13 A | 2026-09-15 A | B6.33 05 39.01.3377 SS | 100% |  |
| B6.33 05 39.01.3437 |  | Blinding Conc, & RC Base (75.00% Completed) | 27d | 2026-08-16 A | 2026-09-15 A | B6.33 05 39.01.3427 SS | 100% |  |
| B6.33 05 39.01.3447 |  | Manhole Installation (75.00% Completed) | 24d | 2026-08-19 A | 2026-09-15 A | B6.33 05 39.01.3437 SS | 100% |  |
| B6.33 05 39.01.3467 |  | Backfilling (75.00% Completed) | 21d | 2026-08-23 A | 2026-09-15 A | B6.33 05 39.01.3417 | 100% |  |
| B6.33 05 39.01.3467_R |  | Backfilling(Rem) | 2d | 2026-09-22 A | 2026-09-24 A | B6.33 05 39.01.3457 FF, B6.33 05 39.01.3467 | 100% |  |
| B6.33 05 39.01.3427_R |  | Excavation & Compaction(Rem) | 2d | 2026-10-07 | 2026-10-08 | B6.33 05 39.01.3377_R SS, B6.33 05 39.01.3427 |  | 97.32d |
| B6.33 05 39.01.3437_R |  | Blinding Conc, & RC Base(Rem) | 2d | 2026-10-07 | 2026-10-08 | B6.33 05 39.01.3427_R SS, B6.33 05 39.01.3437 |  | 106.32d |
| B6.33 05 39.01.3447_R |  | Manhole Installation(Rem) | 2d | 2026-10-07 | 2026-10-08 | B6.33 05 39.01.3437_R SS, B6.33 05 39.01.3447 |  | 106.32d |
| B6.33 05 39.01.3457 |  | Test, Internal Finishing, Benching & Cover | 5d | 2026-10-10 | 2026-10-14 | B6.33 05 39.01.3447_R |  | 106.32d |
|  | 2 | **Depth From 4.5m to 5.5m** |  | 2026-08-10 | 2026-10-24 |  |  |  |
| B6.33 05 39.01.3477 |  | Excavation & Compaction (75.00% Completed) | 32d | 2026-08-10 A | 2026-09-15 A | B6.33 05 39.01.3427 SS | 100% |  |
| B6.33 05 39.01.3487 |  | Blinding Conc, & RC Base (75.00% Completed) | 29d | 2026-08-13 A | 2026-09-15 A | B6.33 05 39.01.3477 SS | 100% |  |

| ID | WBS | Task | Duration | Start | Finish | Predecessors | Complete | Total float |
| --- | --- | --- | --- | --- | --- | --- | --- | --- |
| B6.33 05 39.01.3497 |  | Manhole Installation (75.00% Completed) | 26d | 2026-08-17 A | 2026-09-15 A | B6.33 05 39.01.3487 SS | 100% |  |
| B6.33 05 39.01.3517 |  | Backfilling (75.00% Completed) | 23d | 2026-08-20 A | 2026-09-15 A | B6.33 05 39.01.3367 SS, B6.33 05 39.01.4017 SS | 100% |  |
| B6.33 05 39.01.3477_R |  | Excavation & Compaction(Rem) | 2d | 2026-10-07 | 2026-10-08 | B6.33 05 39.01.3427_R SS, B6.33 05 39.01.3477 |  | 97.32d |
| B6.33 05 39.01.3487_R |  | Blinding Conc, & RC Base(Rem) | 2d | 2026-10-07 | 2026-10-08 | B6.33 05 39.01.3477_R SS, B6.33 05 39.01.3487 |  | 106.32d |
| B6.33 05 39.01.3497_R |  | Manhole Installation(Rem) | 2d | 2026-10-07 | 2026-10-08 | B6.33 05 39.01.3487_R SS, B6.33 05 39.01.3497 |  | 106.32d |
| B6.33 05 39.01.3507 |  | Test, Internal Finishing, Benching & Cover | 5d | 2026-10-10 | 2026-10-14 | B6.33 05 39.01.3497_R |  | 106.32d |
| B6.33 05 39.01.3517_R |  | Backfilling(Rem) | 6d | 2026-10-17 | 2026-10-24 | B6.33 05 39.01.3507 FF, B6.33 05 39.01.3367_R SS, B6.33 05 39.01.4017_R SS, B6.33 05 39.01.3517 |  | 99.08d |
|  | Catch Basins | **Catch Basins** |  | 2026-08-09 | 2026-11-07 |  |  |  |
|  | Sing | **Single** |  | 2026-10-10 | 2026-10-31 |  |  |  |
| B6.33 05 40.01.330 |  | Excavation, Compaction & Vapour Barrier | 3d | 2026-10-10 | 2026-10-12 | B6.33 05 39.01.3477_R |  | 97.32d |
| B6.33 05 40.01.340 |  | Blinding Conc. | 3d | 2026-10-13 | 2026-10-15 | B6.33 05 40.01.330 |  | 97.32d |
| B6.33 05 40.01.350 |  | Catch Basin Installation | 4d | 2026-10-17 | 2026-10-20 | B6.33 05 40.01.340 |  | 97.32d |
| B6.33 05 40.01.360 |  | Backfilling, DI Frame & Grate Cover Fixing | 6d | 2026-10-24 | 2026-10-31 | B6.33 42 11.36-1.2_R, B6.33 42 11.02.5_R |  | 42.8d |
|  | Dou | **Double** |  | 2026-10-13 | 2026-11-07 |  |  |  |
| B6.33 05 40.01.810 |  | Excavation, Compaction & Vapour Barrier | 3d | 2026-10-13 | 2026-10-15 | B6.33 05 40.01.330 |  | 98.32d |
| B6.33 05 40.01.820 |  | Blinding Conc. | 3d | 2026-10-17 | 2026-10-19 | B6.33 05 40.01.810 |  | 98.32d |
| B6.33 05 40.01.830 |  | Catch Basin Installation | 4d | 2026-10-21 | 2026-10-25 | B6.33 05 40.01.820, B6.33 05 40.01.350 |  | 97.32d |
| B6.33 05 40.01.840 |  | Backfilling, DI Frame & Grate Cover Fixing | 6d | 2026-10-31 | 2026-11-07 | B6.33 05 40.01.360, B6.33 05 63.053, B6.33 05 63.063 |  | 42.78d |
|  | UPVC | **UPVC** |  | 2026-08-09 | 2026-10-05 |  |  |  |
|  | UPVC300 | **?300 From 0.0 to 1.5m** |  | 2026-08-09 | 2026-10-05 |  |  |  |
| B6.33 42 11.35-1.2 |  | Fittings & Pipe Installation (45.36% Completed) | 33d | 2026-08-09 A | 2026-09-15 A | B6.33 42 11.31-1 2 FF | 100% |  |
| B6.33 42 11.35-1.1 |  | Catch Basin Opening Prep. | 3d | 2026-09-29 A | 2026-10-01 A | B6.33 05 40.01.830 | 100% |  |
| B6.33 42 11.35-1.2_R |  | Fittings & Pipe Installation(Rem) | 2.09d | 2026-10-03 A | 2026-10-05 A | B6.33 42 11.35-1.1 FF, B6.33 42 11.35-1.2 | 100% |  |
|  | UPVC3001 | **?400 From 0.0 to 1.5m** |  | 2026-08-12 | 2026-10-03 |  |  |  |
| B6.33 42 11.36-1.2 |  | Fittings & Pipe Installation (36.29% Completed) | 30d | 2026-08-12 A | 2026-09-15 A | B6.33 42 11.35-1.2 SS+1d, B6.33 42 11.35-1.2 FF+1d | 100% |  |
| B6.33 42 11.36-1.1 |  | Catch Basin Opening Prep. | 3d | 2026-09-26 A | 2026-09-29 A | B6.33 42 11.35-1.1 | 100% |  |
| B6.33 42 11.36-1.2_R |  | Fittings & Pipe Installation(Rem) | 2.09d | 2026-09-29 A | 2026-10-03 A | B6.33 42 11.36-1.1 FF, B6.33 42 11.36-1.2 | 100% |  |
|  | Dry Networks | **Dry Networks** |  | 2026-10-24 | 2026-11-29 |  |  |  |
|  | Street Lighting | **Street Lighting** |  | 2026-10-24 | 2026-11-29 |  |  |  |
|  | SL Poles | **SL Poles** |  | 2026-10-24 | 2026-11-09 |  |  |  |
|  | Pole (10 M Sngl Arm) | **Pole (10 M Single Arm)** |  | 2026-10-24 | 2026-11-09 |  |  |  |
| B2.33 71 16.63 |  | Excavation | 2d | 2026-10-24 | 2026-10-26 | B1.2.32 11 26.01.9 |  | 0d |
| B2.33 71 16.64 |  | PC & RC Foundation | 3d | 2026-10-26 | 2026-10-29 | B2.33 71 16.63 |  | 72d |
| B2.33 71 16.65 |  | Lighting Poles Installation Incl power box, Cables | 3d | 2026-10-29 | 2026-11-02 | B2.33 71 16.64 |  | 72d |
| B2.26.56.19.9 |  | Lighting Luminares Inst | 3d | 2026-11-02 | 2026-11-05 | B2.33 71 16.65 |  | 72d |
| B2.33 71 16.66 |  | Backfilling, Grouting & Chamfering | 3d | 2026-11-05 | 2026-11-09 | B2.26.56.19.9 |  | 72d |
|  | Earthing | **Earthing** |  | 2026-10-26 | 2026-11-29 |  |  |  |
| B2.33 71 19 32 |  | Land Adjustment | 2d | 2026-10-26 | 2026-10-28 | B2.33 71 16.63 |  | 0d |
| B2.33 71 19 33 |  | Earth Rods & Conduits | 2d | 2026-10-28 | 2026-10-31 | B2.33 71 19 32, DMM2-Proc-Delv-7240 |  | 86d |
| B2.33 71 19 34 |  | Backfilling | 3d | 2026-11-26 | 2026-11-29 | B2.33 71 19 33, B2.33 71 19 92 |  | 63.32d |
|  | LV Network | **Low Voltage Network** |  | 2026-10-28 | 2026-11-08 |  |  |  |
|  | MV Replacing | **Cable Replacement** |  | 2026-10-28 | 2026-11-08 |  |  |  |
| B2.33 71 49.23.101 |  | Excavation | 2d | 2026-10-28 | 2026-10-31 | B2.33 71 19 32 |  | 0d |
| B2.33 71 49.23.98 |  | Old Cable Grubbing | 2d | 2026-10-31 | 2026-11-02 | B2.33 71 49.23.101 |  | 0d |
| B2.33 71 49.23.99 |  | New Cable Installation | 2d | 2026-11-02 | 2026-11-04 | B2.33 71 49.23.98 |  | 0d |
| B2.33 71 49.23.100 |  | Backfilling & Warrning Tape | 3d | 2026-11-04 | 2026-11-08 | B2.33 71 49.23.99 |  | 0d |
|  | Earth & Road Works | **Earth & Road Works** |  | 2026-02-13 | 2026-12-02 |  |  |  |
|  | Earth Works | **Earth Works** |  | 2026-02-13 | 2026-10-13 |  |  |  |
| B1.2.31 23 23.01.9 |  | Embankment Backfiling | 16.63d | 2026-02-13 A | 2026-03-10 A | B1.2.31 23 23.01.10 | 100% |  |
| B1.2.31 23 16.01.9 |  | Roadway Excavation | 2d | 2026-10-11 | 2026-10-13 | B2.31 23 00.221 |  | 0d |
|  | Earth Layers | **Earth Layers** |  | 2026-10-13 | 2026-10-18 |  |  |  |
| B1.2.32 11 13.01.9 |  | Subgrade | 2d | 2026-10-13 | 2026-10-15 | B1.2.31 23 23.01.9, B1.1.31 23 23.112, B1.2.31 23 16.01.9 |  | 0d |
| B1.2.32 11 23.01.9 |  | Aggregate Base Course | 2d | 2026-10-15 | 2026-10-18 | B1.2.32 11 13.01.9 |  | 0d |
|  | Interlock | **Interlock** |  | 2026-11-08 | 2026-11-11 |  |  |  |
| B1.2.32 14 13.13.9 |  | 60mm thick - Interlocking Block Pavers | 3d | 2026-11-08 | 2026-11-11 | B2.33 71 49.23.100 |  | 0d |
|  | Curbstone | **Curbstone** |  | 2026-11-08 | 2026-11-23 |  |  |  |
|  | Pre Install | **Pre-Installation** |  | 2026-11-08 | 2026-11-15 |  |  |  |
| B2.31 23 00.241 |  | Excavation | 2d | 2026-11-08 | 2026-11-10 | B1.2.32 14 13.13.9 SS |  | 13d |
| B1.2.32 14 13.13.29 |  | PCC | 2d | 2026-11-10 | 2026-11-12 | B2.31 23 00.241 |  | 13d |
| 32 16 13.009 |  | Haunching | 2d | 2026-11-12 | 2026-11-15 | B1.2.32 14 13.13.29 |  | 13d |
|  | Installation | **Installation** |  | 2026-11-15 | 2026-11-23 |  |  |  |
| B1.2.32 16.13.01.9 |  | Curb Stone, Type K1 | 2d | 2026-11-15 | 2026-11-17 | 32 16 13.009 |  | 13d |
| B1.2.32 16.13.02.8 |  | Dropped Curb, Type K3 | 1d | 2026-11-17 | 2026-11-18 | 32 16 13.009, B1.2.32 16.13.01.9 |  | 13d |
| B1.2.32 16.13.03.9 |  | Edge Curb, Type K4 | 2d | 2026-11-18 | 2026-11-21 | 32 16 13.009, B1.2.32 16.13.02.8 |  | 13d |
| B1.2.32 16.13.049 |  | Heel Curb, Type K5 | 2d | 2026-11-21 | 2026-11-23 | 32 16 13.009, B1.2.32 16.13.03.9 |  | 13d |
|  | Finishing | **Finishing** |  | 2026-11-21 | 2026-11-23 |  |  |  |
| 32 16 13.09 |  | Finishing, Fareface | 2d | 2026-11-21 | 2026-11-23 | B1.2.32 16.13.01.9 SS, B1.2.32 16.13.02.8 SS, B1.2.32 16.13.03.9 SS, B1.2.32 16.13.049 SS |  | 13d |
|  | Asphalt Layers | **Asphalt Layers** |  | 2026-10-18 | 2026-11-29 |  |  |  |
| B1.2.32 11 26.01.9 |  | Bituminous Base Course including Prime Coat (MC1) and tack coat (RC2) | 5d | 2026-10-18 | 2026-10-24 | B1.2.32 11 23.01.9 |  | 0d |
| B1.2.32 12 16.01.9 |  | Bituminous concrete Wearing Course, including tack coat (RC2) | 5d | 2026-11-23 | 2026-11-29 | B1.2.32 11 26.01.9, 32 16 13.09 |  | 13d |

| ID | WBS | Task | Duration | Start | Finish | Predecessors | Complete | Total float |
| --- | --- | --- | --- | --- | --- | --- | --- | --- |
|  | Pavement Marking | **Pavement Marking** |  | 2026-12-01 | 2026-12-02 |  |  |  |
| B1.2.32 17 23.01.9 |  | Retroreflective Thermoplastic White Traffic lines | 1d | 2026-12-01 | 2026-12-02 | B1.2.32 12 16.01.9, B1.2.32 12 19.13.09 |  | 26d |
| B1.2.32 17 23.02.9 |  | Retroreflective Thermoplastic Yellow, Traffic lines | 1d | 2026-12-01 | 2026-12-02 | B1.2.32 12 16.01.9, B1.2.32 12 19.13.09 |  | 26d |
|  | Traffic Signs | **Traffic Signs** |  | 2026-11-08 | 2026-11-15 |  |  |  |
|  | Pre Install | **Pre-Installation** |  | 2026-11-08 | 2026-11-12 |  |  |  |
| B2.31 23 00.251 |  | Excavation | 2d | 2026-11-08 | 2026-11-10 | B1.2.32 14 13.13.9 SS |  | 0d |
| 10 14 53.09 |  | Foundation | 2d | 2026-11-10 | 2026-11-12 | B2.31 23 00.251 |  | 54d |
|  | Installation | **Installation** |  | 2026-11-12 | 2026-11-15 |  |  |  |
| B1.2.10 14 53.019 |  | 1 Sheet Alumenium, Single post | 2d | 2026-11-12 | 2026-11-15 | B1.2.32 14 13.13.9, 10 14 53.09, 32 16 13.016 |  | 54d |
|  | Road Misc. | **Miscellaneous** |  | 2026-11-29 | 2026-12-01 |  |  |  |
| B1.2.32 12 19.13.09 |  | Speed Tables | 2d | 2026-11-29 | 2026-12-01 | B1.2.32 12 16.01.9 |  | 26d |
|  | Enterance RD 01 | **Entrance Road 01** |  | 2025-12-03 | 2027-01-04 |  |  |  |
|  | Wet Networks | **Wet Networks** |  | 2026-02-18 | 2026-10-12 |  |  |  |
|  | Sewerage Network | **Sewerage Network** |  | 2026-03-11 | 2026-10-12 |  |  |  |
|  | GRP | **GRP Pipes** |  | 2026-03-11 | 2026-10-12 |  |  |  |
|  | 150 | **?150** |  | 2026-03-11 | 2026-10-12 |  |  |  |
|  | 1 | **Depth From 0.0m - 1.5m** |  | 2026-03-11 | 2026-10-12 |  |  |  |
| B5.33 31 00.01.2119 |  | Excavation | 36.36d | 2026-03-11 A | 2026-04-29 A | B5.33 31 00.01.025 | 100% |  |
| B5.33 31 00.01.2129 |  | Sand Bedding | 35.36d | 2026-03-14 A | 2026-04-30 A | B5.33 31 00.01.2119 | 100% |  |
| B5.33 31 00.01.2139 |  | Pipe Laying | 14.36d | 2026-03-17 A | 2026-04-08 A | B5.33 31 00.01.2129 | 100% |  |
| B5.33 31 00.01.2149 |  | Embedment & Test | 4.62d | 2026-05-06 A | 2026-05-11 A | B5.33 31 00.01.2139 | 100% |  |
| B5.33 31 00.01.2159 |  | Backfilling & Warrning Tape (7.30% Completed) | 105.89d | 2026-05-11 A | 2026-09-15 A | B5.33 31 00.01.2149 | 100% |  |
| B5.33 31 00.01.2159_R |  | Backfilling & Warrning Tape(Rem) | 4.67d | 2026-10-07 | 2026-10-12 | B5.33 31 00.01.2149, B5.33 31 00.01.2159 |  | 88.76d |
|  | 1 | **?200** |  | 2026-03-14 | 2026-10-12 |  |  |  |
|  | 1 | **Depth From 0.0m - 1.5m** |  | 2026-03-14 | 2026-10-12 |  |  |  |
| B5.33 31 00.01.2169 |  | Excavation | 44.36d | 2026-03-14 A | 2026-05-11 A | B5.33 31 00.01.2119 | 100% |  |
| B5.33 31 00.01.2179 |  | Sand Bedding | 45.36d | 2026-03-17 A | 2026-05-14 A | B5.33 31 00.01.2169 | 100% |  |
| B5.33 31 00.01.2189 |  | Pipe Laying | 47.11d | 2026-03-19 A | 2026-05-18 A | B5.33 31 00.01.2179 | 100% |  |
| B5.33 31 00.01.2199 |  | Embedment & Test (10.51% Completed) | 139.44d | 2026-04-01 A | 2026-09-15 A | B5.33 31 00.01.2189 | 100% |  |
| B5.33 31 00.01.2209 |  | Backfilling & Warrning Tape (10.47% Completed) | 132d | 2026-04-10 A | 2026-09-15 A | B5.33 31 00.01.2199 FF, B5.33 31 00.01.2159 SS | 100% |  |
| B5.33 31 00.01.2199_R |  | Embedment & Test(Rem) | 3.58d | 2026-10-07 | 2026-10-11 | B5.33 31 00.01.2189, B5.33 31 00.01.2199 |  | 89.74d |
| B5.33 31 00.01.2209_R |  | Backfilling & Warrning Tape(Rem) | 4.56d | 2026-10-07 | 2026-10-12 | B5.33 31 00.01.2199_R FF, B5.33 31 00.01.2159_R SS, B5.33 31 00.01.2209 |  | 88.76d |
|  | Stormwater Network | **Stormwater Network** |  | 2026-02-18 | 2026-10-10 |  |  |  |
|  | GRP | **GRP** |  | 2026-02-18 | 2026-06-24 |  |  |  |
|  | ?400 | **?400** |  | 2026-02-18 | 2026-05-20 |  |  |  |
|  | 3 | **Depth From 1.5m to 2.5m** |  | 2026-02-18 | 2026-05-20 |  |  |  |
| B6.33 42 11.02.02 |  | Excavation | 14.5d | 2026-02-18 A | 2026-03-13 A | B1.1.31 23 23.52 | 100% |  |
| B6.33 42 11.02.03 |  | Sand Bedding | 17d | 2026-02-21 A | 2026-03-20 A | B6.33 42 11.02.02 | 100% |  |
| B6.33 42 11.02.04 |  | Pipe Laying | 19.25d | 2026-02-23 A | 2026-03-27 A | B6.33 42 11.02.03 | 100% |  |
| B6.33 42 11.02.05 |  | Embedment & Test | 15.4d | 2026-04-02 A | 2026-04-20 A | B6.33 42 11.02.04 | 100% |  |
| B6.33 42 11.02.06 |  | Backfilling & Warrning Tape | 37.29d | 2026-04-07 A | 2026-05-20 A | B6.33 42 11.02.05 | 100% |  |
|  | ?4001 | **?500** |  | 2026-03-24 | 2026-06-23 |  |  |  |
|  | 3 | **Depth From 1.5m to 2.5m** |  | 2026-03-24 | 2026-06-23 |  |  |  |
| B6.33 42 11.04.02 |  | Excavation | 6.74d | 2026-03-24 A | 2026-04-01 A | B6.33 42 11.02.02 | 100% |  |
| B6.33 42 11.04.03 |  | Sand Bedding | 4.74d | 2026-03-26 A | 2026-04-01 A | B6.33 42 11.04.02 | 100% |  |
| B6.33 42 11.04.04 |  | Pipe Laying | 2.74d | 2026-03-29 A | 2026-04-01 A | B6.33 42 11.04.03 | 100% |  |
| B6.33 42 11.04.05 |  | Embedment & Test | 2.08d | 2026-03-30 A | 2026-04-01 A | B6.33 42 11.04.04 | 100% |  |
| B6.33 42 11.04.06 |  | Backfilling & Warrning Tape | 63.65d | 2026-04-06 A | 2026-06-23 A | B6.33 42 11.04.05 | 100% |  |
|  | ?4002 | **?600** |  | 2026-03-26 | 2026-05-05 |  |  |  |
|  | 4 | **Depth From 2.5m to 3.5m** |  | 2026-03-26 | 2026-05-05 |  |  |  |
| B6.33 42 11.08.02 |  | Excavation | 1.16d | 2026-03-26 A | 2026-03-28 A | B6.33 42 11.04.02 | 100% |  |
| B6.33 42 11.08.03 |  | Sand Bedding | 1.16d | 2026-03-29 A | 2026-03-30 A | B6.33 42 11.08.02 | 100% |  |
| B6.33 42 11.08.04 |  | Pipe Laying | 1.16d | 2026-03-31 A | 2026-04-01 A | B6.33 42 11.08.03 | 100% |  |
| B6.33 42 11.08.05 |  | Embedment & Test | 11.24d | 2026-04-01 A | 2026-04-14 A | B6.33 42 11.08.04 | 100% |  |
| B6.33 42 11.08.06 |  | Backfilling & Warrning Tape | 26.74d | 2026-04-04 A | 2026-05-05 A | B6.33 42 11.08.05 | 100% |  |
|  | ?40021 | **?700** |  | 2026-04-06 | 2026-06-24 |  |  |  |
|  | 4 | **Depth From 2.5m to 3.5m** |  | 2026-04-06 | 2026-06-24 |  |  |  |
| B6.33 42 11.11.02 |  | Excavation | 29.16d | 2026-04-06 A | 2026-05-10 A | B6.33 42 11.08.02 | 100% |  |
| B6.33 42 11.11.03 |  | Sand Bedding | 28.16d | 2026-04-09 A | 2026-05-12 A | B6.33 42 11.11.02 | 100% |  |
| B6.33 42 11.11.04 |  | Pipe Laying | 29.16d | 2026-04-11 A | 2026-05-14 A | B6.33 42 11.11.03 | 100% |  |
| B6.33 42 11.11.05 |  | Embedment & Test | 29.33d | 2026-04-13 A | 2026-05-17 A | B6.33 42 11.11.04 | 100% |  |
| B6.33 42 11.11.06 |  | Backfilling & Warrning Tape | 54.41d | 2026-04-18 A | 2026-06-24 A | B6.33 42 11.11.05, B6.33 42 11.045 | 100% |  |
|  | Strom Manholes | **Manholes** |  | 2026-02-26 | 2026-10-08 |  |  |  |
|  | 1 | **?1200** |  | 2026-02-26 | 2026-09-26 |  |  |  |
|  | 4 | **Depth From 1.5m to 2.5m** |  | 2026-02-26 | 2026-09-26 |  |  |  |
| B6.33 05 13.01.02 |  | Excavation & Compaction | 0.75d | 2026-02-26 A | 2026-02-28 A | B6.33 42 11.11.02 | 100% |  |
| B6.33 05 13.01.03 |  | Blinding Conc, & RC Base | 5d | 2026-05-01 A | 2026-05-06 A | B6.33 05 13.01.02 | 100% |  |
| B6.33 05 13.01.04 |  | Manhole Installation (85.00% Completed) | 88d | 2026-06-06 A | 2026-09-15 A | B6.33 05 13.01.03 | 100% |  |
| B6.33 05 13.01.05 |  | Test, Internal Finishing, Benching & Cover (85.00% Completed) | 82d | 2026-06-13 A | 2026-09-15 A | B6.33 05 13.01.04 SS | 100% |  |
| B6.33 05 13.01.06 |  | Backfilling (85.00% Completed) | 76d | 2026-06-20 A | 2026-09-15 A | B6.33 05 13.025, B6.33 05 13.01.05 SS | 100% |  |

| ID | WBS | Task | Duration | Start | Finish | Predecessors | Complete | Total float |
| --- | --- | --- | --- | --- | --- | --- | --- | --- |
| B6.33 05 13.01.04_R |  | Manhole Installation(Rem) | 2d | 2026-09-16 A | 2026-09-17 A | B6.33 05 13.01.03, B6.33 05 13.01.04 | 100% |  |
| B6.33 05 13.01.05_R |  | Test, Internal Finishing, Benching & Cover(Rem) | 2d | 2026-09-22 A | 2026-09-24 A | B6.33 05 13.01.04_R SS, B6.33 05 13.01.05 | 100% |  |
| B6.33 05 13.01.06_R |  | Backfilling(Rem) | 2d | 2026-09-24 A | 2026-09-26 A | B6.33 05 13.025, B6.33 05 13.01.05_R SS, B6.33 05 13.01.06 | 100% |  |
|  | 2 | **?1500** |  | 2026-03-08 | 2026-10-08 |  |  |  |
|  | 4 | **Depth From 2.5m to 3.5m** |  | 2026-03-08 | 2026-10-08 |  |  |  |
| B6.33 05 13.05.02 |  | Excavation & Compaction | 0.75d | 2026-03-08 A | 2026-03-09 A | B6.33 05 13.01.02 | 100% |  |
| B6.33 05 13.05.03 |  | Blinding Conc, & RC Base (92.00% Completed) | 88d | 2026-06-06 A | 2026-09-15 A | B6.33 05 13.05.02 | 100% |  |
| B6.33 05 13.05.04 |  | Manhole Installation (92.00% Completed) | 82d | 2026-06-13 A | 2026-09-15 A | B6.33 05 13.05.03 SS | 100% |  |
| B6.33 05 13.05.05 |  | Test, Internal Finishing, Benching & Cover (92.00% Completed) | 76d | 2026-06-20 A | 2026-09-15 A | B6.33 05 13.05.04 SS | 100% |  |
| B6.33 05 13.05.06 |  | Backfilling (92.00% Completed) | 75d | 2026-06-21 A | 2026-09-15 A | B6.33 05 13.125, B6.33 05 13.05.05 SS | 100% |  |
| B6.33 05 13.05.03_R |  | Blinding Conc, & RC Base(Rem) | 2d | 2026-09-24 A | 2026-09-27 A | B6.33 05 13.05.02, B6.33 05 13.05.03, B6.33 42 11.31-1 10_R | 100% |  |
| B6.33 05 13.05.04_R |  | Manhole Installation(Rem) | 2d | 2026-09-24 A | 2026-09-27 A | B6.33 05 13.05.03_R SS, B6.33 05 13.05.04 | 100% |  |
| B6.33 05 13.05.05_R |  | Test, Internal Finishing, Benching & Cover(Rem) | 2d | 2026-10-07 | 2026-10-08 | B6.33 05 13.05.04_R SS, B6.33 05 13.05.05 |  | 60.92d |
| B6.33 05 13.05.06_R |  | Backfilling(Rem) | 2d | 2026-10-07 | 2026-10-08 | B6.33 05 13.125, B6.33 05 13.05.05_R SS, B6.33 05 13.05.06 |  | 60.92d |
|  | 3 | **?2000** |  | 2026-06-06 | 2026-10-08 |  |  |  |
|  | 4 | **Depth From 2.5m to 3.5m** |  | 2026-06-06 | 2026-10-08 |  |  |  |
| B6.33 05 13.07.02 |  | Excavation & Compaction (85.00% Completed) | 88d | 2026-06-06 A | 2026-09-15 A | B6.33 05 13.05.02 | 100% |  |
| B6.33 05 13.07.03 |  | Blinding Conc, & RC Base (85.00% Completed) | 82d | 2026-06-13 A | 2026-09-15 A | B6.33 05 13.07.02 SS | 100% |  |
| B6.33 05 13.07.04 |  | Manhole Installation (85.00% Completed) | 76d | 2026-06-20 A | 2026-09-15 A | B6.33 05 13.07.03 SS | 100% |  |
| B6.33 05 13.07.05 |  | Test, Internal Finishing, Benching & Cover (85.00% Completed) | 74d | 2026-06-22 A | 2026-09-15 A | B6.33 05 13.07.04 SS | 100% |  |
| B6.33 05 13.07.06 |  | Backfilling (85.00% Completed) | 73d | 2026-06-23 A | 2026-09-15 A | B6.33 05 13.045, B6.33 05 13.07.05 SS | 100% |  |
| B6.33 05 13.07.02_R |  | Excavation & Compaction(Rem) | 2d | 2026-09-24 A | 2026-09-26 A | B6.33 05 13.05.02, B6.33 05 13.07.02 | 100% |  |
| B6.33 05 13.07.03_R |  | Blinding Conc, & RC Base(Rem) | 2d | 2026-10-07 | 2026-10-08 | B6.33 05 13.07.02_R SS, B6.33 05 13.07.03 |  | 60.92d |
| B6.33 05 13.07.04_R |  | Manhole Installation(Rem) | 2d | 2026-10-07 | 2026-10-08 | B6.33 05 13.07.03_R SS, B6.33 05 13.07.04 |  | 60.92d |
| B6.33 05 13.07.05_R |  | Test, Internal Finishing, Benching & Cover(Rem) | 2d | 2026-10-07 | 2026-10-08 | B6.33 05 13.07.04_R SS, B6.33 05 13.07.05 |  | 60.92d |
| B6.33 05 13.07.06_R |  | Backfilling(Rem) | 2d | 2026-10-07 | 2026-10-08 | B6.33 05 13.045, B6.33 05 13.07.05_R SS, B6.33 05 13.07.06, B6.33 05 13.01.06_R |  | 60.92d |
|  | Catch Basins | **Catch Basins** |  | 2026-04-19 | 2026-10-10 |  |  |  |
|  | Sing | **Single** |  | 2026-05-03 | 2026-10-03 |  |  |  |
| B6.33 05 40.01.170 |  | Excavation, Compaction & Vapour Barrier | 10d | 2026-05-03 A | 2026-05-13 A | B6.33 05 13.05.02 | 100% |  |
| B6.33 05 40.01.180 |  | Blinding Conc. (90.00% Completed) | 110d | 2026-05-06 A | 2026-09-15 A | B6.33 05 40.01.170 | 100% |  |
| B6.33 05 40.01.200 |  | Backfilling, DI Frame & Grate Cover Fixing (90.00% Completed) | 93d | 2026-05-27 A | 2026-09-15 A | B6.33 42 11.35-102 SS, B6.33 05 63.072 SS | 100% |  |
| B6.33 05 40.01.190 |  | Catch Basin Installation (90.00% Completed) | 93d | 2026-05-30 A | 2026-09-15 A | B6.33 05 40.01.180 SS, B6.33 05 13.05.04 SS | 100% |  |
| B6.33 05 40.01.180_R |  | Blinding Conc.(Rem) | 2d | 2026-09-21 A | 2026-09-22 A | B6.33 05 40.01.170, B6.33 05 40.01.180 | 100% |  |
| B6.33 05 40.01.190_R |  | Catch Basin Installation(Rem) | 2d | 2026-09-24 A | 2026-09-27 A | B6.33 05 40.01.180_R SS, B6.33 05 13.05.04_R SS, B6.33 05 40.01.190 | 100% |  |
| B6.33 05 40.01.200_R |  | Backfilling, DI Frame & Grate Cover Fixing(Rem) | 2d | 2026-10-01 A | 2026-10-03 A | B6.33 42 11.35-102_R SS, B6.33 05 63.072_R SS, B6.33 05 40.01.200 | 100% |  |
|  | Dou | **Double** |  | 2026-05-11 | 2026-10-08 |  |  |  |
| B6.33 05 40.01.730 |  | Excavation, Compaction & Vapour Barrier (85.00% Completed) | 106d | 2026-05-11 A | 2026-09-15 A | B6.33 05 40.01.170 | 100% |  |
| B6.33 05 40.01.740 |  | Blinding Conc. (85.00% Completed) | 104d | 2026-05-13 A | 2026-09-15 A | B6.33 05 40.01.730 SS | 100% |  |
| B6.33 05 40.01.760 |  | Backfilling, DI Frame & Grate Cover Fixing (85.00% Completed) | 101d | 2026-05-17 A | 2026-09-15 A | B6.33 42 11.36-112 SS | 100% |  |
| B6.33 05 40.01.750 |  | Catch Basin Installation (85.00% Completed) | 93.67d | 2026-05-25 A | 2026-09-15 A | B6.33 05 40.01.740 SS | 100% |  |
| B6.33 05 40.01.730_R |  | Excavation, Compaction & Vapour Barrier(Rem) | 2d | 2026-10-07 | 2026-10-08 | B6.33 05 40.01.170, B6.33 05 40.01.730 |  | 6.32d |
| B6.33 05 40.01.740_R |  | Blinding Conc.(Rem) | 2d | 2026-10-07 | 2026-10-08 | B6.33 05 40.01.730_R SS, B6.33 05 40.01.740 |  | 6.32d |
| B6.33 05 40.01.750_R |  | Catch Basin Installation(Rem) | 2d | 2026-10-07 | 2026-10-08 | B6.33 05 40.01.740_R SS, B6.33 05 40.01.750 |  | 6.32d |
| B6.33 05 40.01.760_R |  | Backfilling, DI Frame & Grate Cover Fixing(Rem) | 2d | 2026-10-07 | 2026-10-08 | B6.33 42 11.36-112_R SS, B6.33 05 40.01.760 |  | 63.92d |
|  | UPVC | **UPVC** |  | 2026-04-19 | 2026-10-10 |  |  |  |
|  | UPVC300 | **?300 From 0.0 to 1.5m** |  | 2026-04-19 | 2026-10-10 |  |  |  |
| B6.33 42 11.35-102 |  | Fittings & Pipe Installation (50.00% Completed) | 125d | 2026-04-19 A | 2026-09-15 A | B6.33 42 11.35-101 SS | 100% |  |
| B6.33 42 11.35-101 |  | Catch Basin Opening Prep. (83.46% Completed) | 88d | 2026-06-06 A | 2026-09-15 A | B6.33 05 40.01.190 SS | 100% |  |
| B6.33 42 11.35-101_R |  | Catch Basin Opening Prep.(Rem) | 2.09d | 2026-10-07 | 2026-10-10 | B6.33 05 40.01.190_R SS, B6.33 42 11.35-101 |  | 111.23d |
| B6.33 42 11.35-102_R |  | Fittings & Pipe Installation(Rem) | 2d | 2026-10-07 | 2026-10-08 | B6.33 42 11.35-101_R SS, B6.33 42 11.35-102 |  | 111.32d |
|  | UPVC3001 | **?400 From 0.0 to 1.5m** |  | 2026-04-29 | 2026-10-10 |  |  |  |
| B6.33 42 11.36-112 |  | Fittings & Pipe Installation (83.46% Completed) | 116d | 2026-04-29 A | 2026-09-15 A | B6.33 42 11.36-111 SS | 100% |  |
| B6.33 42 11.36-111 |  | Catch Basin Opening Prep. (83.46% Completed) | 88d | 2026-06-06 A | 2026-09-15 A | B6.33 05 40.01.190 SS | 100% |  |
| B6.33 42 11.36-111_R |  | Catch Basin Opening Prep.(Rem) | 2.09d | 2026-10-07 | 2026-10-10 | B6.33 05 40.01.190_R SS, B6.33 42 11.36-111 |  | 63.92d |
| B6.33 42 11.36-112_R |  | Fittings & Pipe Installation(Rem) | 2.09d | 2026-10-07 | 2026-10-10 | B6.33 42 11.36-111_R SS, B6.33 42 11.36-112 |  | 63.92d |
|  | Dry Networks | **Dry Networks** |  | 2026-10-07 | 2026-12-02 |  |  |  |
|  | MV | **Medium Voltage Network** |  | 2026-10-07 | 2026-11-05 |  |  |  |
|  | Duct Banks | **Duct Banks** |  | 2026-10-07 | 2026-11-05 |  |  |  |
|  | 4 Way | **4 Way** |  | 2026-10-07 | 2026-11-05 |  |  |  |
| B2.31 23 00.602 |  | Excavation | 3d | 2026-10-07 | 2026-10-10 | B6.33 42 11.02.06, B6.33 42 11.04.06, B6.33 42 11.08.06, B6.33 42 11.11.06 |  | 32.32d |
| B2.33 71 00.212 |  | Shuttering, Steel Fixing Incl. UPVC Pipe & Conc. Cast | 7d | 2026-10-11 | 2026-10-18 | B2.31 23 00.602 |  | 32.32d |
| B2.33 71 00.213 |  | Backfilling & Warrning Tape | 6d | 2026-10-31 | 2026-11-05 | B2.33 71 00.212, B2.33 71 49.23.69, B2.33 71 49.23.70, B2.33 71 19 17_R |  | 32.32d |
|  | Cables | **Cables** |  | 2026-10-19 | 2026-10-29 |  |  |  |
|  | 3C,500mm2 | **3C,500mm2** |  | 2026-10-19 | 2026-10-29 |  |  |  |
| B2.33 71 49.23.68 |  | Cable 13.8 kV Unarmored | 4d | 2026-10-19 | 2026-10-22 | B2.33 71 00.212 |  | 32.32d |
| B2.33 71 49.23.69 |  | Straight joints cables | 3d | 2026-10-24 | 2026-10-26 | B2.33 71 49.23.68 |  | 32.32d |
| B2.33 71 49.23.70 |  | Cable Termination | 3d | 2026-10-27 | 2026-10-29 | B2.33 71 49.23.69 |  | 32.32d |
|  | LV Network | **Low Voltage Network** |  | 2026-11-07 | 2026-11-19 |  |  |  |
|  | Duct Banks | **Duct Banks** |  | 2026-11-07 | 2026-11-19 |  |  |  |
|  | 2 Way | **2 Way** |  | 2026-11-07 | 2026-11-15 |  |  |  |

| ID | WBS | Task | Duration | Start | Finish | Predecessors | Complete | Total float |
| --- | --- | --- | --- | --- | --- | --- | --- | --- |
| B2.33 71 00 02 46 |  | Excavation | 2d | 2026-11-07 | 2026-11-08 | B2.33 71 00.213 |  | 62.32d |
| B2.33 71 00 02 47 |  | Shuttering, Steel Fixing Incl. UPVC Pipe & Conc. Cast | 3d | 2026-11-09 | 2026-11-11 | B2.33 71 00 02 46 |  | 64.32d |
| B2.33 71 00 02 48 |  | Backfilling & Warrning Tape | 3d | 2026-11-12 | 2026-11-15 | B2.33 71 00 02 47 |  | 64.32d |
|  | 4 Way | **4 Way** |  | 2026-11-09 | 2026-11-19 |  |  |  |
| B2.33 71 00 02 49 |  | Excavation | 2d | 2026-11-09 | 2026-11-10 | B2.33 71 00 02 46, DMM2-Proc-Delv-4748_R, DMM2-Proc-Delv-7199_R |  | 62.32d |
| B2.33 71 00 02 50 |  | Shuttering, Steel Fixing Incl. UPVC Pipe & Conc. Cast | 3d | 2026-11-11 | 2026-11-14 | B2.33 71 00 02 49 |  | 63.32d |
| B2.33 71 00 02 51 |  | Backfilling & Warrning Tape | 3d | 2026-11-17 | 2026-11-19 | B2.33 71 00 02 50, B2.33 71 00 01 1, B2.33 71 00 02 48 |  | 63.32d |
|  | Cables | **Cables** |  | 2026-11-15 | 2026-11-16 |  |  |  |
|  | 4C,10+1C,10mm2 | **4C,10+1C,10mm2** |  | 2026-11-15 | 2026-11-16 |  |  |  |
| B2.33 71 00 01 1 |  | Cable Pulling | 2d | 2026-11-15 | 2026-11-16 | B2.33 71 00 02 50, B2.33 71 00 02 47 |  | 63.32d |
|  | Street Lighting | **Street Lighting** |  | 2026-11-07 | 2026-12-02 |  |  |  |
|  | Duct Banks | **Duct Banks** |  | 2026-11-11 | 2026-11-19 |  |  |  |
|  | 4 Way | **4 Way** |  | 2026-11-11 | 2026-11-19 |  |  |  |
| B2.33 71 00 02 52 |  | Excavation | 2d | 2026-11-11 | 2026-11-12 | B2.33 71 00 02 49 |  | 62.32d |
| B2.33 71 00 02 53 |  | Shuttering, Steel Fixing Incl. UPVC Pipe & Conc. Cast | 3d | 2026-11-14 | 2026-11-16 | B2.33 71 00 02 52 |  | 62.32d |
| B2.33 71 00 02 54 |  | Backfilling & Warrning Tape | 3d | 2026-11-17 | 2026-11-19 | B2.33 71 00 02 53, B2.33 71 16.54 |  | 67.32d |
|  | Drawpits | **Drawpits** |  | 2026-11-14 | 2026-11-23 |  |  |  |
| B2.33 71 00 02 55 |  | Excavation | 3d | 2026-11-14 | 2026-11-16 | B2.33 71 00 02 52 |  | 62.32d |
| B2.33 71 00 02 56 |  | Drawpits Installation | 3d | 2026-11-17 | 2026-11-19 | B2.33 71 00 02 55 |  | 62.32d |
| B2.33 71 00 02 57 |  | Backfilling & Warrning Tape | 3d | 2026-11-21 | 2026-11-23 | B2.33 71 00 02 56 |  | 62.32d |
|  | Cables | **Cables** |  | 2026-11-17 | 2026-11-25 |  |  |  |
|  | 4C,10+1C,10mm2 | **4C,10+1C,10mm2** |  | 2026-11-17 | 2026-11-25 |  |  |  |
| B2.33 71 19 82 |  | Land Adjustment | 3d | 2026-11-17 | 2026-11-19 | B2.33 71 00 02 53, B1.2.32 11 26.01.4 |  | 62.32d |
| B2.33 71 49.23.122 |  | Cable Pulling | 2d | 2026-11-21 | 2026-11-22 | B2.33 71 19 82 |  | 62.32d |
| B2.33 71 19 92 |  | Backfilling | 3d | 2026-11-23 | 2026-11-25 | B2.33 71 49.23.122 |  | 62.32d |
|  | SL Poles | **SL Poles** |  | 2026-11-07 | 2026-12-02 |  |  |  |
|  | Pole (10 M Sngl Arm) | **Pole (10 M Single Arm)** |  | 2026-11-07 | 2026-12-02 |  |  |  |
| B2.33 71 16.39 |  | Excavation | 3d | 2026-11-07 | 2026-11-09 | B2.33 71 00.213, B2.33 71 16.51, B1.2.32 11 26.01.4 |  | 69.32d |
| B2.33 71 16.40 |  | PC & RC Foundation | 3d | 2026-11-10 | 2026-11-12 | B2.33 71 16.39 |  | 69.32d |
| B2.33 71 16.41 |  | Lighting Poles Installation Incl power box, Cables | 3d | 2026-11-14 | 2026-11-16 | B2.33 71 16.40 |  | 69.32d |
| B2.26.56.19.3 |  | Lighting Luminares Inst | 2d | 2026-11-17 | 2026-11-18 | B2.33 71 16.41 |  | 69.32d |
| B2.33 71 16.42 |  | Backfilling, Grouting & Chamfering | 2d | 2026-12-01 | 2026-12-02 | B2.26.56.19.3, B2.33 71 16.70, B2.33 71 00 02 159 |  | 59.32d |
|  | Telecommunication | **Telecommunication Network** |  | 2026-11-21 | 2026-12-01 |  |  |  |
|  | Ducts | **Ducts** |  | 2026-11-21 | 2026-11-28 |  |  |  |
|  | (6*50mm) | **Size (6*50mm) HDPE ducts** |  | 2026-11-21 | 2026-11-25 |  |  |  |
| B2.1.33 81 26.69 |  | Excavation | 1d | 2026-11-21 | 2026-11-21 | B2.31 23 00.613 |  | 57.32d |
| B2.1.33 81 26.70 |  | HDPE Pipe, Shuttering, Steel Fixing & Conc. Cast | 2d | 2026-11-22 | 2026-11-23 | B2.1.33 81 26.69 |  | 62.32d |
| B2.1.33 81 26.71 |  | Backfilling & Warrning Tape | 2d | 2026-11-24 | 2026-11-25 | B2.1.33 81 26.70, B2.33 71 00.191, B2.33 71 00.171_R, B2.33 71 00.151_R |  | 62.32d |
|  | (2*32mm) | **Size (2*32mm) HDPE ducts** |  | 2026-11-22 | 2026-11-28 |  |  |  |
| B2.1.33 81 26.78 |  | Excavation | 1d | 2026-11-22 | 2026-11-22 | B2.1.33 81 26.69 |  | 57.32d |
| B2.1.33 81 26.79 |  | HDPE Pipe, Shuttering, Steel Fixing & Conc. Cast | 2d | 2026-11-23 | 2026-11-24 | B2.1.33 81 26.78 |  | 63.32d |
| B2.1.33 81 26.80 |  | Backfilling & Warrning Tape | 2d | 2026-11-26 | 2026-11-28 | B2.1.33 81 26.79, B2.1.33 81 26.71 |  | 62.32d |
|  | (4*32mm) | **Size (4*32mm) HDPE ducts** |  | 2026-11-23 | 2026-11-28 |  |  |  |
| B2.1.33 81 26.81 |  | Excavation | 1d | 2026-11-23 | 2026-11-23 | B2.1.33 81 26.78 |  | 62.32d |
| B2.1.33 81 26.82 |  | HDPE Pipe, Shuttering, Steel Fixing & Conc. Cast | 2d | 2026-11-24 | 2026-11-25 | B2.1.33 81 26.81 |  | 62.32d |
| B2.1.33 81 26.83 |  | Backfilling & Warrning Tape | 2d | 2026-11-26 | 2026-11-28 | B2.1.33 81 26.82 |  | 62.32d |
|  | Manholes | **Manholes** |  | 2026-11-23 | 2026-11-30 |  |  |  |
|  | Manhole Type 2 | **Manhole Type 2** |  | 2026-11-23 | 2026-11-30 |  |  |  |
| B2.31 23 00.607 |  | Excavation | 1d | 2026-11-23 | 2026-11-23 | B2.1.33 81 26.69, B2.1.33 81 26.78 |  | 57.32d |
| B2.33 71 00.222 |  | Manhole Installation | 1d | 2026-11-24 | 2026-11-24 | B2.31 23 00.607 |  | 65.32d |
| B2.33 71 00.223 |  | Backfilling & Warrning Tape | 2d | 2026-11-29 | 2026-11-30 | B2.33 71 00.222, B2.1.33 81 26.80, B2.1.33 81 26.83 |  | 62.32d |
|  | Crossing Ducts | **Road Crossing Ducts** |  | 2026-11-24 | 2026-12-01 |  |  |  |
|  | 1 | **Size (6*50mm) HDPE** |  | 2026-11-24 | 2026-11-29 |  |  |  |
| B2.31 23 00.608 |  | Excavation | 1d | 2026-11-24 | 2026-11-24 | B2.31 23 00.607 |  | 57.32d |
| B2.33 71 00.224 |  | Shuttering, Steel Fixing Incl. UPVC Pipe & Conc. Cast | 2d | 2026-11-25 | 2026-11-26 | B2.31 23 00.608 |  | 65.32d |
| B2.33 71 00.225 |  | Backfilling & Warrning Tape | 2d | 2026-11-28 | 2026-11-29 | B2.33 71 00.224, B2.1.33 81 26.176 |  | 65.32d |
|  | 2 | **Size (2*32mm) HDPE** |  | 2026-11-25 | 2026-12-01 |  |  |  |
| B2.31 23 00.609 |  | Excavation | 1d | 2026-11-25 | 2026-11-25 | B2.31 23 00.608 |  | 57.32d |
| B2.33 71 00.226 |  | Shuttering, Steel Fixing Incl. UPVC Pipe & Conc. Cast | 2d | 2026-11-26 | 2026-11-28 | B2.31 23 00.609 |  | 64.32d |
| B2.33 71 00.227 |  | Backfilling & Warrning Tape | 2d | 2026-11-30 | 2026-12-01 | B2.33 71 00.226, B2.1.33 81 26.68 |  | 63.32d |
|  | Earth & Road Works | **Earth & Road Works** |  | 2025-12-03 | 2026-12-09 |  |  |  |
|  | Earth Works | **Earth Works** |  | 2025-12-03 | 2026-03-08 |  |  |  |
| B1.2.31 23 16.01.4 |  | Roadway Excavation | 66.1d | 2025-12-03 A | 2026-02-18 A | DMM2-Eng-MS-78 | 100% |  |
| B1.2.31 23 23.01.4 |  | Embankment Backfiling | 74.52d | 2025-12-06 A | 2026-03-08 A | B1.2.31 23 16.01.4 | 100% |  |
|  | Earth Layers | **Earth Layers** |  | 2026-02-25 | 2026-10-08 |  |  |  |
| B1.2.32 11 13.01.4 |  | Subgrade (65.00% Completed) | 161.23d | 2026-02-25 A | 2026-09-15 A | B1.2.31 23 23.01.4 | 100% |  |
| B1.2.32 11 23.01.4 |  | Aggregate Base Course (59.00% Completed) | 84d | 2026-06-10 A | 2026-09-15 A | B1.2.32 11 13.01.4 FF | 100% |  |
| B1.2.32 11 13.01.4_R |  | Subgrade(Rem) | 1.05d | 2026-10-07 | 2026-10-08 | B1.2.31 23 23.01.4, B1.2.32 11 13.01.4 |  | 50.27d |
| B1.2.32 11 23.01.4_R |  | Aggregate Base Course(Rem) | 1.23d | 2026-10-07 | 2026-10-08 | B1.2.32 11 13.01.4_R FF, B1.2.32 11 23.01.4 |  | 50.09d |
|  | Interlock | **Interlock** |  | 2026-12-03 | 2026-12-05 |  |  |  |

| ID | WBS | Task | Duration | Start | Finish | Predecessors | Complete | Total float |
| --- | --- | --- | --- | --- | --- | --- | --- | --- |
| B1.2.32 14 13.13.4 |  | 60mm thick - Interlocking Block Pavers | 2d | 2026-12-03 | 2026-12-05 | B1.2.32 11 23.01.4_R, B2.33 71 16.42 |  | 59.32d |
|  | Curbstone | **Curbstone** |  | 2026-10-15 | 2026-11-01 |  |  |  |
|  | Pre Install | **Pre-Installation** |  | 2026-10-15 | 2026-10-22 |  |  |  |
| B2.31 23 00.91 |  | Excavation | 2d | 2026-10-15 | 2026-10-18 | B2.31 23 00.161 SS |  | 28d |
| B1.2.32 14 13.13.24 |  | PCC | 2d | 2026-10-18 | 2026-10-20 | B2.31 23 00.91 |  | 28d |
| 32 16 13.004 |  | Haunching | 2d | 2026-10-20 | 2026-10-22 | B1.2.32 14 13.13.24 |  | 28d |
|  | Installation | **Installation** |  | 2026-10-22 | 2026-10-29 |  |  |  |
| B1.2.32 16.13.01.4 |  | Curb Stone, Type K1 | 2d | 2026-10-22 | 2026-10-25 | 32 16 13.004 |  | 28d |
| B1.2.32 16.13.03.4 |  | Edge Curb, Type K4 | 2d | 2026-10-25 | 2026-10-27 | 32 16 13.004, B1.2.32 16.13.01.4 |  | 28d |
| B1.2.32 16.13.044 |  | Heel Curb, Type K5 | 2d | 2026-10-27 | 2026-10-29 | 32 16 13.004, B1.2.32 16.13.03.4 |  | 28d |
|  | Finishing | **Finishing** |  | 2026-10-29 | 2026-11-01 |  |  |  |
| 32 16 13.04 |  | Finishing, Fareface | 2d | 2026-10-29 | 2026-11-01 | B1.2.32 16.13.01.4, B1.2.32 16.13.03.4, B1.2.32 16.13.044, B1.2.10 14 14.01.18, B1.2.10 14 14.01.1 |  | 28d |
|  | Asphalt Layers | **Asphalt Layers** |  | 2026-10-12 | 2026-10-19 |  |  |  |
| B1.2.32 11 26.01.4 |  | Bituminous Base Course including Prime Coat (MC1) and tack coat (RC2) | 2d | 2026-10-12 | 2026-10-13 | B1.2.32 11 23.01.4_R, B1.2.32 11 26.01.5, B1.1.31 23 23.112 |  | 47.32d |
| B1.2.32 12 16.01.4 |  | Bituminous concrete Wearing Course, including tack coat (RC2) | 5d | 2026-10-14 | 2026-10-19 | B1.2.32 11 26.01.4 |  | 47.32d |
|  | Pavement Marking | **Pavement Marking** |  | 2026-10-20 | 2026-10-21 |  |  |  |
| B1.2.32 17 23.01.4 |  | Retroreflective Thermoplastic White Traffic lines | 2d | 2026-10-20 | 2026-10-21 | B1.2.32 12 16.01.4 |  | 97.32d |
| B1.2.32 17 23.02.4 |  | Retroreflective Thermoplastic Yellow, Traffic lines | 2d | 2026-10-20 | 2026-10-21 | B1.2.32 12 16.01.4 |  | 97.32d |
|  | Traffic Signs | **Traffic Signs** |  | 2026-10-15 | 2026-12-09 |  |  |  |
|  | Pre Install | **Pre-Installation** |  | 2026-10-15 | 2026-12-08 |  |  |  |
| B2.31 23 00.101 |  | Excavation | 2d | 2026-10-15 | 2026-10-18 | B2.31 23 00.91 SS |  | 28d |
| 10 14 53.04 |  | Foundation | 2d | 2026-12-07 | 2026-12-08 | B2.31 23 00.101, B7.31 32 19.23.3 |  | 6.32d |
|  | Installation | **Installation** |  | 2026-12-06 | 2026-12-09 |  |  |  |
| B1.2.10 14 53.014 |  | 1 Sheet Alumenium, Single post | 1d | 2026-12-06 | 2026-12-06 | B1.2.32 14 13.13.4, B1.2.32 17 23.02.4, B1.2.32 17 23.01.4 |  | 59.32d |
| B1.2.10 14 14.01.4 |  | Ground mounted, 1 Sheet Alumenium, Single post | 1d | 2026-12-09 | 2026-12-09 | B1.2.32 14 13.13.4, B1.2.32 17 23.02.4, B1.2.32 17 23.01.4, B1.2.10 14 14.026 |  | 56.32d |
|  | Landscape | **Landscape** |  | 2026-10-18 | 2027-01-04 |  |  |  |
|  | Fences | **Fences** |  | 2026-10-18 | 2027-01-04 |  |  |  |
|  | (ZATCA HCIS) | **Steel fence (ZATCA HCIS)** |  | 2026-10-18 | 2027-01-04 |  |  |  |
| B7.32 93 43.04.14 |  | Earthwork | 5d | 2026-10-18 | 2026-10-24 | B2.31 23 00.101 |  | 28d |
| B7.32 93 43.04.50 |  | Foundation | 6d | 2026-12-02 | 2026-12-08 | B7.32 93 43.04.14, 10 14 53.04 FF |  | 6.32d |
| B7.32 93 43.04.56 |  | Fence Installation | 5d | 2026-12-29 | 2027-01-04 | B7.32 93 43.04.50, DMM2-Proc-Delv-7335, DMM2-Proc-Delv-7328, B7.32 93 43.04.20 |  | 6d |
|  | (MODON) fence | **Steel fence (MODON)** |  | 2026-10-24 | 2026-12-27 |  |  |  |
| B7.32 93 43.04.12 |  | Earthwork | 6d | 2026-10-24 | 2026-10-31 | B7.32 93 43.04.14 |  | 28d |
| B7.32 93 43.04.48 |  | Foundation | 3d | 2026-12-09 | 2026-12-12 | B7.32 93 43.04.12, B7.32 93 43.04.50, B7.31 32 19.23.3 |  | 6.32d |
| B7.32 93 43.04.54 |  | Fence Installation | 3d | 2026-12-24 | 2026-12-27 | B7.32 93 43.04.48, DMM2-Proc-Delv-7336 |  | 10.32d |
|  | Gates | **Gates** |  | 2026-11-25 | 2026-12-19 |  |  |  |
|  | Size (4.35x 2.7)m | **Size (4.35x 2.7)m** |  | 2026-11-25 | 2026-12-19 |  |  |  |
| B7.32 93 43.04.10 |  | Earthwork | 5d | 2026-11-25 | 2026-11-30 | B7.32 93 43.04.12, DMM2-Proc-Delv-7338 |  | 6.32d |
| B7.32 93 43.04.46 |  | Foundation | 3d | 2026-12-13 | 2026-12-15 | B7.32 93 43.04.10, B7.32 93 43.04.48, B7.31 32 19.23.3 |  | 6.32d |
| B7.32 93 43.04.52 |  | Gate Installation | 3d | 2026-12-16 | 2026-12-19 | B7.32 93 43.04.46, DMM2-Proc-Delv-7337, B7.32 93 43.02.18, B7.32 93 43.02.24 |  | 6.32d |
|  | Geotextile | **Geotextile** |  | 2026-11-23 | 2026-12-06 |  |  |  |
| B7.31 32 19.23.2 |  | Geotextile to protect trees planting soil | 5d | 2026-11-23 | 2026-11-28 | DMM2-Proc-Delv-7330 |  | 30.32d |
| B7.31 32 19.23.3 |  | Geotextile below gravel bed | 5d | 2026-12-01 | 2026-12-06 | B7.32 93 43.04.10, DMM2-Proc-Delv-7330 |  | 6.32d |
|  | Trees | **Trees** |  | 2026-12-21 | 2026-12-27 |  |  |  |
| B7.32 93 43.01 |  | Azadirachta indica | 3d | 2026-12-21 | 2026-12-23 | B7.31 32 19.23.2 FF, DMM2-Proc-Delv-7333 FF |  | 8.32d |
| B7.32 93 43.04 |  | Delonix Regia | 3d | 2026-12-24 | 2026-12-27 | B1.2.32 11 13.01.4_R, B7.32 93 43.01, B1.2.32 12 16.01.4, DMM2-Proc-Delv-7333 |  | 8.32d |
| B7.32 93 43.06 |  | Schinus Molle | 3d | 2026-12-24 | 2026-12-27 | B1.2.32 11 13.01.4_R, B7.32 93 43.04 FF, B1.2.32 12 16.01.4, DMM2-Proc-Delv-7333 |  | 8.32d |
|  | Entrance Road 02 | **Entrance Road 02** |  | 2025-11-28 | 2027-01-09 |  |  |  |
|  | Wet Networks | **Wet Networks** |  | 2026-03-13 | 2026-11-26 |  |  |  |
|  | Sewerage Network | **Sewerage Network** |  | 2026-03-22 | 2026-11-17 |  |  |  |
|  | GRP | **GRP Pipes** |  | 2026-03-24 | 2026-10-12 |  |  |  |
|  | 200 | **?200** |  | 2026-03-24 | 2026-10-12 |  |  |  |
|  | 3 | **Depth From 1.5m to 2.5m** |  | 2026-03-24 | 2026-10-12 |  |  |  |
| B5.33 31 00.02.02 1 |  | Excavation | 6.76d | 2026-03-24 A | 2026-04-01 A | B5.33 31 00.01.2169, B1.1.31 23 23.62 | 100% |  |
| B5.33 31 00.02.02 2 |  | Sand Bedding | 7.58d | 2026-03-29 A | 2026-04-07 A | B5.33 31 00.02.02 1 | 100% |  |
| B5.33 31 00.02.02 3 |  | Pipe Laying | 7.58d | 2026-03-31 A | 2026-04-09 A | B5.33 31 00.02.02 2 | 100% |  |
| B5.33 31 00.02.02 4 |  | Embedment & Test | 26.48d | 2026-04-01 A | 2026-05-03 A | B5.33 31 00.02.02 3 | 100% |  |
| B5.33 31 00.02.02 5 |  | Backfilling & Warrning Tape (7.31% Completed) | 135.12d | 2026-04-06 A | 2026-09-15 A | B5.33 31 00.02.02 4 | 100% |  |
| B5.33 31 00.02.02 5_R |  | Backfilling & Warrning Tape(Rem) | 4.67d | 2026-10-07 | 2026-10-12 | B5.33 31 00.02.02 4, B5.33 31 00.02.02 5 |  | 105.24d |
|  | Manholes | **Manholes ?1200** |  | 2026-03-22 | 2026-10-11 |  |  |  |
|  | 2 | **Depth From 0.0m to 1.5m** |  | 2026-03-29 | 2026-10-11 |  |  |  |
| B5.33 05 13.01 1 |  | Excavation & Compaction | 2d | 2026-03-29 A | 2026-03-31 A | B5.33 31 00.02.02 1 | 100% |  |
| B5.33 05 13.01 2 |  | Blinding Conc, & RC Base | 21d | 2026-04-29 A | 2026-05-23 A | B5.33 05 13.01 1 | 100% |  |
| B5.33 05 13.01 3 |  | Manhole Installation | 2d | 2026-05-24 A | 2026-05-25 A | B5.33 05 13.01 2 | 100% |  |
| B5.33 05 13.01 4 |  | Test, Internal Finishing, Benching & Cover (41.14% Completed) | 78d | 2026-06-17 A | 2026-09-15 A | B5.33 05 13.01 3 | 100% |  |
| B5.33 05 13.01 5 |  | Backfilling (41.14% Completed) | 74.67d | 2026-06-21 A | 2026-09-15 A | B5.33 05 13.065, B5.33 05 13.01 4 SS, B5.33 31 00.02.02 5 SS | 100% |  |
| B5.33 05 13.01 4_R |  | Test, Internal Finishing, Benching & Cover(Rem) | 2.56d | 2026-10-07 | 2026-10-10 | B5.33 05 13.01 3, B5.33 05 13.01 4 |  | 105.24d |
| B5.33 05 13.01 5_R |  | Backfilling(Rem) | 3.08d | 2026-10-07 | 2026-10-11 | B5.33 05 13.065, B5.33 05 13.01 4_R SS, B5.33 31 00.02.02 5_R SS, B5.33 05 13.01 5 |  | 105.24d |
|  | 3 | **Depth From 1.5m to 2.5m** |  | 2026-03-22 | 2026-10-11 |  |  |  |
| B5.33 05 13.02 1 |  | Excavation & Compaction | 0.6d | 2026-03-22 A | 2026-03-24 A | B5.33 05 13.01 1 | 100% |  |

| ID | WBS | Task | Duration | Start | Finish | Predecessors | Complete | Total float |
| --- | --- | --- | --- | --- | --- | --- | --- | --- |
| B5.33 05 13.02 2 |  | Blinding Conc, & RC Base (41.14% Completed) | 116d | 2026-04-29 A | 2026-09-15 A | B5.33 05 13.02 1 | 100% |  |
| B5.33 05 13.02 3 |  | Manhole Installation (41.14% Completed) | 87d | 2026-06-07 A | 2026-09-15 A | B5.33 05 13.02 2 SS | 100% |  |
| B5.33 05 13.02 4 |  | Test, Internal Finishing, Benching & Cover (41.14% Completed) | 81d | 2026-06-14 A | 2026-09-15 A | B5.33 05 13.02 3 SS | 100% |  |
| B5.33 05 13.02 5 |  | Backfilling (41.14% Completed) | 74.67d | 2026-06-21 A | 2026-09-15 A | B5.33 05 13.02 4 SS, B5.33 05 13.01 5 SS | 100% |  |
| B5.33 05 13.02 2_R |  | Blinding Conc, & RC Base(Rem) | 2.04d | 2026-10-07 | 2026-10-10 | B5.33 05 13.02 1, B5.33 05 13.02 2 |  | 105.24d |
| B5.33 05 13.02 3_R |  | Manhole Installation(Rem) | 1.52d | 2026-10-07 | 2026-10-08 | B5.33 05 13.02 2_R SS, B5.33 05 13.02 3 |  | 105.24d |
| B5.33 05 13.02 4_R |  | Test, Internal Finishing, Benching & Cover(Rem) | 2.56d | 2026-10-07 | 2026-10-10 | B5.33 05 13.02 3_R SS, B5.33 05 13.02 4 |  | 105.24d |
| B5.33 05 13.02 5_R |  | Backfilling(Rem) | 3.08d | 2026-10-07 | 2026-10-11 | B5.33 05 13.02 4_R SS, B5.33 05 13.01 5_R SS, B5.33 05 13.02 5 |  | 105.24d |
|  | Sew Plot Connection | **Sewerage Plot Connection** |  | 2026-10-14 | 2026-11-17 |  |  |  |
| B5..33 31 16.011 |  | Excavation | 10d | 2026-10-14 | 2026-10-26 | B5.33 05 63.011, B1.1.31 23 23.2, B1.1.31 23 16.02_R |  | 74.1d |
| B5..33 31 16.012 |  | Sand Bedding | 2d | 2026-10-26 | 2026-10-28 | B5..33 31 16.011, B5.33 31 00.02.05.1 |  | 74.1d |
| B5..33 31 16.013 |  | Pipe Laying, Fittings | 3d | 2026-10-28 | 2026-11-01 | B5..33 31 16.012 |  | 74.1d |
| B5..33 31 16.014 |  | Embedment & Test | 4d | 2026-11-01 | 2026-11-05 | B5..33 31 16.013 |  | 74.1d |
| B5..33 31 16.015 |  | Backfilling & Warrning Tape | 10d | 2026-11-05 | 2026-11-17 | B5..33 31 16.014, B5.33 31 00.01.02.47 |  | 74.1d |
|  | Discharge Ch | **Discharge Chamber** |  | 2026-10-07 | 2026-11-04 |  |  |  |
| B5.33 05 63.011 |  | Excavation & Compaction | 3d | 2026-10-07 | 2026-10-10 | B5.33 05 13.02 1 |  | 77.32d |
| B5.33 05 63.012 |  | Blinding Conc, & RC Base | 3d | 2026-10-11 | 2026-10-13 | B5.33 05 63.011 |  | 92.32d |
| B5.33 05 63.013 |  | Chamber Installation | 6d | 2026-10-19 | 2026-10-25 | B5.33 05 63.012, DMM2-Proc-Delv-2328_R, DMM2-Proc-Delv-1888 |  | 88.32d |
| B5.33 05 63.014 |  | Test, Internal Finishing, Benching & Cover | 4d | 2026-10-26 | 2026-10-29 | B5.33 05 63.013 |  | 88.32d |
| B5.33 05 63.015 |  | Backfilling | 5d | 2026-10-31 | 2026-11-04 | B5.33 05 63.014, B5.33 05 13.02 5_R |  | 88.32d |
|  | Stormwater Network | **Stormwater Network** |  | 2026-03-13 | 2026-10-27 |  |  |  |
|  | GRP | **GRP** |  | 2026-03-13 | 2026-10-11 |  |  |  |
|  | ?400 | **?400** |  | 2026-03-13 | 2026-10-11 |  |  |  |
|  | 3 | **Depth From 1.5m to 2.5m** |  | 2026-03-13 | 2026-10-11 |  |  |  |
| B6.33 42 11.02 1 |  | Excavation | 22.01d | 2026-03-13 A | 2026-04-14 A | B1.2.31 23 16.01.4 | 100% |  |
| B6.33 42 11.02 2 |  | Sand Bedding | 26.89d | 2026-03-15 A | 2026-04-21 A | B6.33 42 11.02 1 | 100% |  |
| B6.33 42 11.02 3 |  | Pipe Laying | 32.14d | 2026-03-16 A | 2026-04-28 A | B6.33 42 11.02 2 | 100% |  |
| B6.33 42 11.02 4 |  | Embedment & Test | 25.67d | 2026-04-01 A | 2026-05-02 A | B6.33 42 11.02 3 | 100% |  |
| B6.33 42 11.02 5 |  | Backfilling & Warrning Tape (69.15% Completed) | 137d | 2026-04-05 A | 2026-09-15 A | B6.33 42 11.02 4 | 100% |  |
| B6.33 42 11.02 5_R |  | Backfilling & Warrning Tape(Rem) | 4d | 2026-10-07 | 2026-10-11 | B6.33 42 11.02 4, B6.33 42 11.02 5 |  | 106.38d |
|  | Strom Manholes | **Manholes** |  | 2026-04-01 | 2026-10-21 |  |  |  |
|  | 1 | **?1200** |  | 2026-04-01 | 2026-10-21 |  |  |  |
|  | 3 | **Depth From 1.5m to 2.5m** |  | 2026-04-01 | 2026-10-21 |  |  |  |
| B6.33 05 13.01 1 |  | Excavation & Compaction | 2d | 2026-04-01 A | 2026-04-04 A | B6.33 42 11.02 1 | 100% |  |
| B6.33 05 13.01 2 |  | Blinding Conc, & RC Base | 15.17d | 2026-05-04 A | 2026-05-21 A | B6.33 05 13.01 1 | 100% |  |
| B6.33 05 13.01 3 |  | Manhole Installation (78.85% Completed) | 85d | 2026-06-09 A | 2026-09-15 A | B6.33 05 13.01 2 | 100% |  |
| B6.33 05 13.01 4 |  | Test, Internal Finishing, Benching & Cover (78.85% Completed) | 83d | 2026-06-11 A | 2026-09-15 A | B6.33 05 13.01 3 SS | 100% |  |
| B6.33 05 13.01 5 |  | Backfilling (78.85% Completed) | 80d | 2026-06-15 A | 2026-09-15 A | B6.33 05 13.01 4 SS, B6.33 05 39.01.3717 SS | 100% |  |
| B6.33 05 13.01 3_R |  | Manhole Installation(Rem) | 2d | 2026-10-07 | 2026-10-08 | B6.33 05 13.01 2, B6.33 05 13.01 3 |  | 107.32d |
| B6.33 05 13.01 4_R |  | Test, Internal Finishing, Benching & Cover(Rem) | 2d | 2026-10-07 | 2026-10-08 | B6.33 05 13.01 3_R SS, B6.33 05 13.01 4 |  | 107.32d |
| B6.33 05 13.01 5_R |  | Backfilling(Rem) | 4d | 2026-10-17 | 2026-10-21 | B6.33 05 13.01 4_R SS, B6.33 05 39.01.3717_R SS, B6.33 05 13.01 5, B6.33 42 11.13.205_R |  | 99.08d |
|  | 3 | **?2000** |  | 2026-04-04 | 2026-10-08 |  |  |  |
|  | 4 | **Depth From 2.5m to 3.5m** |  | 2026-04-04 | 2026-10-08 |  |  |  |
| B6.33 05 13.07 1 |  | Excavation & Compaction | 2d | 2026-04-04 A | 2026-04-06 A | B6.33 05 13.01 1 | 100% |  |
| B6.33 05 13.07 2 |  | Blinding Conc, & RC Base (78.85% Completed) | 85d | 2026-06-09 A | 2026-09-15 A | B6.33 05 13.07 1 | 100% |  |
| B6.33 05 13.07 4 |  | Test, Internal Finishing, Benching & Cover (88.00% Completed) | 82d | 2026-06-13 A | 2026-09-15 A | B6.33 05 13.07 3 SS | 100% |  |
| B6.33 05 13.07 3 |  | Manhole Installation (80.00% Completed) | 81d | 2026-06-14 A | 2026-09-15 A | B6.33 05 13.07 2 SS | 100% |  |
| B6.33 05 13.07 5 |  | Backfilling (80.00% Completed) | 78d | 2026-06-17 A | 2026-09-15 A | B6.33 05 13.07 4 SS | 100% |  |
| B6.33 05 13.07 2_R |  | Blinding Conc, & RC Base(Rem) | 2d | 2026-09-20 A | 2026-09-21 A | B6.33 05 13.07 1, B6.33 05 13.07 2 | 100% |  |
| B6.33 05 13.07 3_R |  | Manhole Installation(Rem) | 2d | 2026-09-26 A | 2026-09-27 A | B6.33 05 13.07 2_R SS, B6.33 05 13.07 3 | 100% |  |
| B6.33 05 13.07 5_R |  | Backfilling(Rem) | 2d | 2026-09-30 A | 2026-10-01 A | B6.33 05 13.07 4_R SS, B6.33 05 13.07 5 | 100% |  |
| B6.33 05 13.07 4_R |  | Test, Internal Finishing, Benching & Cover(Rem) | 2d | 2026-10-07 | 2026-10-08 | B6.33 05 13.07 3_R SS, B6.33 05 13.07 4 |  | 111.32d |
|  | Catch Basins | **Catch Basins** |  | 2026-06-02 | 2026-10-27 |  |  |  |
|  | Sing | **Single** |  | 2026-06-07 | 2026-10-08 |  |  |  |
| B6.33 05 40.01.210 |  | Excavation, Compaction & Vapour Barrier (80.00% Completed) | 87d | 2026-06-07 A | 2026-09-15 A | B6.33 05 13.07 1 | 100% |  |
| B6.33 05 40.01.220 |  | Blinding Conc. (80.00% Completed) | 85d | 2026-06-09 A | 2026-09-15 A | B6.33 05 40.01.210 SS | 100% |  |
| B6.33 05 40.01.230 |  | Catch Basin Installation (80.00% Completed) | 82d | 2026-06-13 A | 2026-09-15 A | B6.33 05 40.01.220 SS | 100% |  |
| B6.33 05 40.01.240 |  | Backfilling, DI Frame & Grate Cover Fixing (80.00% Completed) | 77d | 2026-06-18 A | 2026-09-15 A | B6.33 42 11.35 2 SS | 100% |  |
| B6.33 05 40.01.220_R |  | Blinding Conc.(Rem) | 2d | 2026-09-19 A | 2026-09-21 A | B6.33 05 40.01.210_R SS, B6.33 05 40.01.220 | 100% |  |
| B6.33 05 40.01.230_R |  | Catch Basin Installation(Rem) | 2d | 2026-09-20 A | 2026-09-22 A | B6.33 05 40.01.220_R SS, B6.33 05 40.01.230 | 100% |  |
| B6.33 05 40.01.240_R |  | Backfilling, DI Frame & Grate Cover Fixing(Rem) | 2d | 2026-09-26 A | 2026-09-28 A | B6.33 42 11.35 2_R SS, B6.33 05 40.01.240 | 100% |  |
| B6.33 05 40.01.210_R |  | Excavation, Compaction & Vapour Barrier(Rem) | 2d | 2026-10-07 | 2026-10-08 | B6.33 05 13.07 1, B6.33 05 40.01.210 |  | 59.32d |
|  | Dou | **Double** |  | 2026-10-10 | 2026-10-27 |  |  |  |
| B6.33 05 40.01.770 |  | Excavation, Compaction & Vapour Barrier | 3d | 2026-10-10 | 2026-10-12 | B6.33 05 40.01.210_R |  | 59.32d |
| B6.33 05 40.01.780 |  | Blinding Conc. | 3d | 2026-10-13 | 2026-10-15 | B6.33 05 40.01.770 |  | 59.32d |
| B6.33 05 40.01.790 |  | Catch Basin Installation | 4d | 2026-10-17 | 2026-10-20 | B6.33 05 40.01.780 |  | 59.32d |
| B6.33 05 40.01.800 |  | Backfilling, DI Frame & Grate Cover Fixing | 6d | 2026-10-21 | 2026-10-27 | B6.33 42 11.36 2_R |  | 59.32d |
|  | UPVC | **UPVC** |  | 2026-06-02 | 2026-10-20 |  |  |  |
|  | UPVC300 | **?300 From 0.0 to 1.5m** |  | 2026-06-02 | 2026-10-10 |  |  |  |
| B6.33 42 11.35 1 |  | Catch Basin Opening Prep. (68.04% Completed) | 91d | 2026-06-02 A | 2026-09-15 A | B6.33 05 40.01.230 SS | 100% |  |

| ID | WBS | Task | Duration | Start | Finish | Predecessors | Complete | Total float |
| --- | --- | --- | --- | --- | --- | --- | --- | --- |
| B6.33 42 11.35 2 |  | Fittings & Pipe Installation (68.04% Completed) | 86d | 2026-06-08 A | 2026-09-15 A | B6.33 42 11.35 1 SS | 100% |  |
| B6.33 42 11.35 1_R |  | Catch Basin Opening Prep.(Rem) | 2.09d | 2026-10-07 | 2026-10-10 | B6.33 05 40.01.230_R SS, B6.33 42 11.35 1 |  | 111.23d |
| B6.33 42 11.35 2_R |  | Fittings & Pipe Installation(Rem) | 2.09d | 2026-10-07 | 2026-10-10 | B6.33 42 11.35 1_R SS, B6.33 42 11.35 2 |  | 111.23d |
|  | UPVC3001 | **?400 From 0.0 to 1.5m** |  | 2026-06-07 | 2026-10-20 |  |  |  |
| B6.33 42 11.36 2 |  | Fittings & Pipe Installation (68.04% Completed) | 87d | 2026-06-07 A | 2026-09-15 A | B6.33 42 11.36 1 SS | 100% |  |
| B6.33 42 11.36 1 |  | Catch Basin Opening Prep. (68.04% Completed) | 85d | 2026-06-09 A | 2026-09-15 A | B6.33 42 11.35 1 FF+1d | 100% |  |
| B6.33 42 11.36 1_R |  | Catch Basin Opening Prep.(Rem) | 2d | 2026-10-19 | 2026-10-20 | B6.33 05 40.01.790 FF, B6.33 42 11.36 1 |  | 59.32d |
| B6.33 42 11.36 2_R |  | Fittings & Pipe Installation(Rem) | 2d | 2026-10-19 | 2026-10-20 | B6.33 42 11.36 1_R SS, B6.33 42 11.36 2 |  | 59.32d |
|  | Potable Water | **Potable Water Network** |  | 2026-04-20 | 2026-11-26 |  |  |  |
|  | HDPE | **HDPE Pipes** |  | 2026-05-05 | 2026-05-24 |  |  |  |
|  | ?110mm | **?110mm** |  | 2026-05-05 | 2026-05-24 |  |  |  |
|  | Depth: 1.51m - 2.5m | **Depth: 1.51m - 2.5m** |  | 2026-05-05 | 2026-05-24 |  |  |  |
| B3.33 14 13.01.02 1 |  | Excavation | 5d | 2026-05-05 A | 2026-05-11 A | B3.33 14 13.02.22 | 100% |  |
| B3.33 14 13.01.02 2 |  | Sand Bedding | 3d | 2026-05-12 A | 2026-05-16 A | B3.33 14 13.01.02 1 | 100% |  |
| B3.33 14 13.01.02 3 |  | Pipe Laying | 1d | 2026-05-16 A | 2026-05-17 A | B3.33 14 13.01.02 2 | 100% |  |
| B3.33 14 13.01.02 4 |  | Embedment & Test | 1d | 2026-05-17 A | 2026-05-18 A | B3.33 14 13.01.02 3, B3.33 14 19.01.108 | 100% |  |
| B3.33 14 13.01.02 5 |  | Backfilling & Warrning Tape | 5.45d | 2026-05-18 A | 2026-05-24 A | B3.33 14 13.01.02 4 | 100% |  |
|  | Crossing | **Plots and Buildings Crossing** |  | 2026-10-26 | 2026-11-14 |  |  |  |
| B3.33 14 13.02.011 |  | Earthwork | 7d | 2026-10-26 | 2026-11-02 | B3.33 14 13.01.02 1, B3.33 14 13.02.16 |  | 64.32d |
| B3.33 14 13.02.012 |  | Sand Bedding | 3d | 2026-11-03 | 2026-11-05 | B3.33 14 13.02.011 |  | 80.32d |
| B3.33 14 13.02.013 |  | Tee, Pipe (Crossing) Installation & Backfilling | 7d | 2026-11-07 | 2026-11-14 | B3.33 14 13.02.012, B3.33 14 13.02.27 |  | 80.32d |
|  | Valves & Chambers | **Valves & Chambers** |  | 2026-04-20 | 2026-11-26 |  |  |  |
|  | GV | **Gate Valves** |  | 2026-04-20 | 2026-11-10 |  |  |  |
|  | 1 | **Gate valves dia (110) mm** |  | 2026-04-20 | 2026-11-10 |  |  |  |
| B3.33 14 19.01.108 |  | Burried Isolation Valve Installation | 16d | 2026-04-20 A | 2026-05-09 A | B3.33 14 13.01.02 3 | 100% |  |
| B3.33 14 19.01.109 |  | Spindle & Surface Box | 3d | 2026-11-08 | 2026-11-10 | B3.33 14 19.01.108, B3.33 05 63.01.19, B3.33 14 19.01.115, B3.33 14 19.01.113 |  | 83.32d |
|  | Washout Valves | **Washout Valves** |  | 2026-11-03 | 2026-11-26 |  |  |  |
|  | 4 | **Washout valves on 110-400 mm. (In Chamber)** |  | 2026-11-03 | 2026-11-26 |  |  |  |
| B3.33 05 63.01.011 |  | Land Adjustment & Compaction | 3d | 2026-11-03 | 2026-11-05 | B3.33 14 13.02.011 |  | 64.32d |
| B3.33 05 63.01.012 |  | Foundations | 4d | 2026-11-07 | 2026-11-10 | B3.33 05 63.01.011 |  | 64.32d |
| B3.33 05 63.01.013 |  | Chambers Walls Conc Cast In Situ | 4d | 2026-11-11 | 2026-11-15 | B3.33 05 63.01.012 |  | 64.32d |
| B3.33 05 63.01.014 |  | Chamber Curing, Finishing & Steel Cover | 5d | 2026-11-16 | 2026-11-21 | B3.33 05 63.01.013 |  | 64.32d |
| B3.33 05 63.01.015 |  | Valve & Fitting Installation | 5d | 2026-11-22 | 2026-11-26 | B3.33 05 63.01.014, B3.33 05 63.02.24, B3.33 05 63.01.24 |  | 64.32d |
|  | Fire Fighting | **Fire Fighting Network** |  | 2026-06-03 | 2026-11-15 |  |  |  |
|  | HDPE | **HDPE Pipes** |  | 2026-06-03 | 2026-10-11 |  |  |  |
|  | ?250mm | **?250mm** |  | 2026-06-03 | 2026-10-11 |  |  |  |
|  | Depth: 1.51m - 2.5m | **Depth: 1.51m - 2.5m** |  | 2026-06-03 | 2026-10-11 |  |  |  |
| B3.1. 33 14 13.01 1 |  | Excavation (89.00% Completed) | 89.62d | 2026-06-03 A | 2026-09-15 A | B3.1. 33 14 13.22 SS | 100% |  |
| B3.1. 33 14 13.01 2 |  | Sand Bedding (89.00% Completed) | 83.62d | 2026-06-10 A | 2026-09-15 A | B3.1. 33 14 13.01 1 FF | 100% |  |
| B3.1. 33 14 13.01 3 |  | Pipe Laying (89.00% Completed) | 77.62d | 2026-06-17 A | 2026-09-15 A | B3.1. 33 14 13.01 2 FF | 100% |  |
| B3.1. 33 14 13.01 4 |  | Embedment & Test (89.00% Completed) | 75.62d | 2026-06-20 A | 2026-09-15 A | B3.1. 33 14 13.01 3 FF, B3.33 14 19.01.124 SS | 100% |  |
| B3.1. 33 14 13.01 5 |  | Backfilling & Warrning Tape (89.00% Completed) | 73.62d | 2026-06-22 A | 2026-09-15 A | B3.1. 33 14 13.01 4 FF | 100% |  |
| B3.1. 33 14 13.01 1_R |  | Excavation(Rem) | 4d | 2026-10-07 | 2026-10-11 | B3.1. 33 14 13.22_R SS, B3.1. 33 14 13.01 1 |  | 61.32d |
| B3.1. 33 14 13.01 2_R |  | Sand Bedding(Rem) | 4d | 2026-10-07 | 2026-10-11 | B3.1. 33 14 13.01 1_R FF, B3.1. 33 14 13.01 2 |  | 61.32d |
| B3.1. 33 14 13.01 3_R |  | Pipe Laying(Rem) | 4d | 2026-10-07 | 2026-10-11 | B3.1. 33 14 13.01 2_R FF, B3.1. 33 14 13.01 3 |  | 61.32d |
| B3.1. 33 14 13.01 4_R |  | Embedment & Test(Rem) | 4d | 2026-10-07 | 2026-10-11 | B3.1. 33 14 13.01 3_R FF, B3.33 14 19.01.124_R SS, B3.1. 33 14 13.01 4 |  | 64.32d |
| B3.1. 33 14 13.01 5_R |  | Backfilling & Warrning Tape(Rem) | 4d | 2026-10-07 | 2026-10-11 | B3.1. 33 14 13.01 4_R FF, B3.1. 33 14 13.01 5 |  | 84.32d |
|  | Valves & Chambers | **Valves & Chambers** |  | 2026-06-17 | 2026-11-15 |  |  |  |
|  | GV | **Gate Valves** |  | 2026-06-17 | 2026-11-01 |  |  |  |
|  | 1 | **Gate valves dia (250) mm** |  | 2026-06-17 | 2026-11-01 |  |  |  |
| B3.33 14 19.01.124 |  | Burried Isolation Valve Installation (86.00% Completed) | 77.62d | 2026-06-17 A | 2026-09-15 A | B3.1. 33 14 13.01 3 SS | 100% |  |
| B3.33 14 19.01.124_R |  | Burried Isolation Valve Installation(Rem) | 4d | 2026-10-07 | 2026-10-11 | B3.1. 33 14 13.01 3_R SS, B3.33 14 19.01.124 |  | 64.32d |
| B3.33 14 19.01.125 |  | Spindle & Surface Box | 4d | 2026-10-28 | 2026-11-01 | B3.33 14 19.01.124_R, B3.33 14 19.01.123 |  | 60.32d |
|  | Washout Valves | **Washout Valves** |  | 2026-10-12 | 2026-11-15 |  |  |  |
|  | 4 | **Washout valves on 110-400 mm. (In Chamber)** |  | 2026-10-12 | 2026-11-15 |  |  |  |
| B3.33 05 63.01.42 |  | Land Adjustment & Compaction | 4d | 2026-10-12 | 2026-10-15 | B3.1. 33 14 13.01 4_R |  | 64.32d |
| B3.33 05 63.01.40 |  | Foundations | 5d | 2026-10-17 | 2026-10-21 | B3.33 05 63.01.42 |  | 64.32d |
| B3.33 05 63.01.43 |  | Chambers Walls Conc Cast In Situ | 5d | 2026-10-22 | 2026-10-27 | B3.33 05 63.01.40 |  | 64.32d |
| B3.33 05 63.01.41 |  | Chamber Curing, Finishing & Steel Cover | 6d | 2026-11-02 | 2026-11-08 | B3.33 05 63.01.43, B3.1. 33 14 13.26_R |  | 60.32d |
| B3.33 05 63.01.44 |  | Valve & Fitting Installation | 6d | 2026-11-09 | 2026-11-15 | B3.33 05 63.01.41, B3.1. 33 14 13.01 5_R, B3.33 05 63.02.54, B3.33 05 63.01.49, B3.1. 33 14 13-01102, B3.1. 33 14 13-01100, B3.33 14 19.01.132 |  | 60.32d |
|  | 3 | **Fire Hydrant** |  | 2026-10-12 | 2026-10-29 |  |  |  |
| B3.33 14 19.01.fh23 |  | Riser Pipe & Flanged Fittings Installation | 4d | 2026-10-12 | 2026-10-15 | B3.1. 33 14 13.01 3_R |  | 61.32d |
| B3.33 14 19.01.fh22 |  | Firehydrant Fixing/Installation | 5d | 2026-10-17 | 2026-10-21 | B3.33 14 19.01.fh23 |  | 61.32d |
| B3.33 14 19.01.fh24 |  | Backfilling & Compaction | 7d | 2026-10-22 | 2026-10-29 | B3.33 14 19.01.fh22 |  | 61.32d |
|  | Dry Networks | **Dry Networks** |  | 2026-10-12 | 2026-11-30 |  |  |  |
|  | MV | **Medium Voltage Network** |  | 2026-10-28 | 2026-11-17 |  |  |  |
|  | Duct Banks | **Duct Banks** |  | 2026-10-28 | 2026-11-16 |  |  |  |
|  | 4 Way | **2 Way** |  | 2026-10-28 | 2026-11-16 |  |  |  |
| B2.31 23 00.638 |  | Excavation | 4d | 2026-10-28 | 2026-11-01 | B6.33 05 40.01.240_R, B6.33 05 40.01.800 |  | 59.32d |
| B2.33 71 00.284 |  | Shuttering, Steel Fixing Incl. UPVC Pipe & Conc. Cast | 7d | 2026-11-02 | 2026-11-09 | B2.31 23 00.638 |  | 59.32d |

| ID | WBS | Task | Duration | Start | Finish | Predecessors | Total float |
| --- | --- | --- | --- | --- | --- | --- | --- |
| B2.33 71 00.285 |  | Backfilling & Warrning Tape | 6d | 2026-11-10 | 2026-11-16 | B2.33 71 00.284 | 59.32d |
|  | Cables | **Cables** |  | 2026-11-07 | 2026-11-17 |  |  |
|  | 3C,500mm2 | **3C,500mm2** |  | 2026-11-07 | 2026-11-17 |  |  |
| B2.33 71 49.23.71 |  | Cable 13.8 kV Unarmored | 4d | 2026-11-07 | 2026-11-10 | B2.33 71 00 01 9 SS | 68.32d |
| B2.33 71 49.23.72 |  | Straight joints cables | 3d | 2026-11-11 | 2026-11-14 | B2.33 71 49.23.71 | 68.32d |
| B2.33 71 49.23.73 |  | Cable Termination | 3d | 2026-11-15 | 2026-11-17 | B2.33 71 49.23.72 | 68.32d |
|  | LV Network | **Low Voltage Network** |  | 2026-11-07 | 2026-11-10 |  |  |
|  | Cables | **Cables** |  | 2026-11-07 | 2026-11-10 |  |  |
|  | 4C,10+1C,10mm2 | **4C,10+1C,10mm2** |  | 2026-11-07 | 2026-11-10 |  |  |
| B2.33 71 00 01 9 |  | Cable Pulling | 4d | 2026-11-07 | 2026-11-10 | B2.33 71 49.23.132 | 68.32d |
|  | Street Lighting | **Street Lighting** |  | 2026-10-12 | 2026-11-30 |  |  |
|  | Duct Banks | **Duct Banks** |  | 2026-11-17 | 2026-11-26 |  |  |
|  | 2 Way | **2 Way** |  | 2026-11-17 | 2026-11-26 |  |  |
| B2.33 71 00 02 58 |  | Excavation | 2d | 2026-11-17 | 2026-11-18 | B2.33 71 00.285 | 59.32d |
| B2.33 71 00 02 59 |  | Shuttering, Steel Fixing Incl. UPVC Pipe & Conc. Cast | 4d | 2026-11-19 | 2026-11-23 | B2.33 71 00 02 58 | 59.32d |
| B2.33 71 00 02 60 |  | Backfilling & Warrning Tape | 3d | 2026-11-24 | 2026-11-26 | B2.33 71 00 02 59, B2.33 71 00 02 87_R | 59.32d |
|  | Drawpits | **Drawpits** |  | 2026-11-19 | 2026-11-25 |  |  |
| B2.33 71 00 02 61 |  | Excavation | 2d | 2026-11-19 | 2026-11-21 | B2.33 71 00 02 58 | 60.32d |
| B2.33 71 00 02 62 |  | Drawpits Installation | 2d | 2026-11-22 | 2026-11-23 | B2.33 71 00 02 61 | 60.32d |
| B2.33 71 00 02 63 |  | Backfilling & Warrning Tape | 2d | 2026-11-24 | 2026-11-25 | B2.33 71 00 02 62 | 60.32d |
|  | Cables | **Cables** |  | 2026-10-28 | 2026-11-30 |  |  |
|  | 4C,10+1C,10mm2 | **4C,10+1C,10mm2** |  | 2026-10-28 | 2026-11-30 |  |  |
| B2.33 71 19 102 |  | Land Adjustment | 3d | 2026-10-28 | 2026-10-31 | B2.33 71 16.46 | 68.32d |
| B2.33 71 49.23.132 |  | Cable Pulling | 5d | 2026-11-01 | 2026-11-05 | B2.33 71 19 102 | 68.32d |
| B2.33 71 19 112 |  | Backfilling | 3d | 2026-11-28 | 2026-11-30 | B2.33 71 49.23.132, B2.33 71 19 72 | 62.32d |
|  | SL Poles | **SL Poles** |  | 2026-10-12 | 2026-11-02 |  |  |
|  | Pole (10 M Sngl Arm) | **Pole (10 M Single Arm)** |  | 2026-10-12 | 2026-10-27 |  |  |
| B2.33 71 16.43 |  | Excavation | 2d | 2026-10-12 | 2026-10-13 | B1.2.32 11 26.01.5 | 64.32d |
| B2.33 71 16.44 |  | PC & RC Foundation | 3d | 2026-10-14 | 2026-10-17 | B2.33 71 16.43 | 68.32d |
| B2.33 71 16.45 |  | Lighting Poles Installation Incl power box, Cables | 3d | 2026-10-18 | 2026-10-20 | B2.33 71 16.44 | 68.32d |
| B2.26.56.19.4 |  | Lighting Luminares Inst | 3d | 2026-10-21 | 2026-10-24 | B2.33 71 16.45 | 68.32d |
| B2.33 71 16.46 |  | Backfilling, Grouting & Chamfering | 3d | 2026-10-25 | 2026-10-27 | B2.26.56.19.4 | 68.32d |
|  | Pole (10 M Dbl Arm) | **Pole (10 M Double Arm)** |  | 2026-10-14 | 2026-11-02 |  |  |
| B2.33 71 16.47 |  | Excavation | 2d | 2026-10-14 | 2026-10-15 | B2.33 71 16.43 | 64.32d |
| B2.33 71 16.48 |  | PC & RC Foundation | 4d | 2026-10-17 | 2026-10-20 | B2.33 71 16.47 | 64.32d |
| B2.33 71 16.49 |  | Lighting Poles Installation Incl power box, Cables | 3d | 2026-10-21 | 2026-10-24 | B2.33 71 16.48 | 64.32d |
| B2.26.56.19.5 |  | Lighting Luminares Inst | 3d | 2026-10-25 | 2026-10-27 | B2.33 71 16.49 | 64.32d |
| B2.33 71 16.50 |  | Backfilling, Grouting & Chamfering | 5d | 2026-10-28 | 2026-11-02 | B2.26.56.19.5 | 64.32d |
|  | SL Pillars | **SL Pillars** |  | 2026-10-25 | 2026-10-28 |  |  |
| B2.33 71 26 031 |  | Pillars Installation (Internal Wiring) | 2d | 2026-10-25 | 2026-10-26 | B2.33 71 16.49, B2.33 71 16.45 | 92.32d |
| B2.33 71 26 042 |  | KWH meter mounting a frame installation | 2d | 2026-10-27 | 2026-10-28 | B2.33 71 26 031 | 92.32d |
|  | Telecommunication | **Telecommunication Network** |  | 2026-11-07 | 2026-11-24 |  |  |
|  | Ducts | **Ducts** |  | 2026-11-07 | 2026-11-22 |  |  |
|  | (6*50mm) | **Size (6*50mm) HDPE ducts** |  | 2026-11-07 | 2026-11-17 |  |  |
| B2.1.33 81 26.84 |  | Excavation | 2d | 2026-11-07 | 2026-11-08 | B2.33 71 00.219 | 30.32d |
| B2.1.33 81 26.85 |  | HDPE Pipe, Shuttering, Steel Fixing & Conc. Cast | 2d | 2026-11-09 | 2026-11-10 | B2.1.33 81 26.84 | 67.32d |
| B2.1.33 81 26.86 |  | Backfilling & Warrning Tape | 2d | 2026-11-16 | 2026-11-17 | B2.1.33 81 26.85, B2.1.33 81 26.95, B2.33 71 00.253 | 63.32d |
|  | (6*50mm+2*32mm) | **Size (6*50mm+2*32mm) HDPE ducts** |  | 2026-11-09 | 2026-11-15 |  |  |
| B2.1.33 81 26.87 |  | Excavation | 2d | 2026-11-09 | 2026-11-10 | B2.1.33 81 26.84 | 30.32d |
| B2.1.33 81 26.88 |  | HDPE Pipe, Shuttering, Steel Fixing & Conc. Cast | 2d | 2026-11-11 | 2026-11-12 | B2.1.33 81 26.87 | 63.32d |
| B2.1.33 81 26.89 |  | Backfilling & Warrning Tape | 2d | 2026-11-14 | 2026-11-15 | B2.1.33 81 26.88, B2.33 71 00.249 | 63.32d |
|  | (2*32mm) | **Size (2*32mm) HDPE ducts** |  | 2026-11-09 | 2026-11-15 |  |  |
| B2.1.33 81 26.93 |  | Excavation | 2d | 2026-11-09 | 2026-11-10 | B2.1.33 81 26.87 SS | 30.32d |
| B2.1.33 81 26.94 |  | HDPE Pipe, Shuttering, Steel Fixing & Conc. Cast | 2d | 2026-11-11 | 2026-11-12 | B2.1.33 81 26.93 | 63.32d |
| B2.1.33 81 26.95 |  | Backfilling & Warrning Tape | 2d | 2026-11-14 | 2026-11-15 | B2.1.33 81 26.94, B2.1.33 81 26.89 SS, B2.1.33 81 26.149 | 63.32d |
|  | (4*32mm) | **Size (4*32mm) HDPE ducts** |  | 2026-11-11 | 2026-11-19 |  |  |
| B2.1.33 81 26.96 |  | Excavation | 2d | 2026-11-11 | 2026-11-12 | B2.1.33 81 26.93 | 30.32d |
| B2.1.33 81 26.97 |  | HDPE Pipe, Shuttering, Steel Fixing & Conc. Cast | 2d | 2026-11-14 | 2026-11-15 | B2.1.33 81 26.96 | 65.32d |
| B2.1.33 81 26.98 |  | Backfilling & Warrning Tape | 2d | 2026-11-18 | 2026-11-19 | B2.1.33 81 26.97, B2.1.33 81 26.86 | 63.32d |
|  | (6*50mm+6*32mm) | **Size (6*50mm+6*32mm) HDPE ducts** |  | 2026-11-14 | 2026-11-19 |  |  |
| B2.1.33 81 26.99 |  | Excavation | 2d | 2026-11-14 | 2026-11-15 | B2.1.33 81 26.96 | 30.32d |
| B2.1.33 81 26.100 |  | HDPE Pipe, Shuttering, Steel Fixing & Conc. Cast | 2d | 2026-11-16 | 2026-11-17 | B2.1.33 81 26.99 | 65.32d |
| B2.1.33 81 26.101 |  | Backfilling & Warrning Tape | 2d | 2026-11-18 | 2026-11-19 | B2.1.33 81 26.100 | 65.32d |
|  | (6*32mm) | **Size (6*32mm) HDPE ducts** |  | 2026-11-16 | 2026-11-22 |  |  |
| B2.1.33 81 26.102 |  | Excavation | 2d | 2026-11-16 | 2026-11-17 | B2.1.33 81 26.99 | 30.32d |
| B2.1.33 81 26.103 |  | HDPE Pipe, Shuttering, Steel Fixing & Conc. Cast | 2d | 2026-11-18 | 2026-11-19 | B2.1.33 81 26.102 | 65.32d |
| B2.1.33 81 26.104 |  | Backfilling & Warrning Tape | 2d | 2026-11-21 | 2026-11-22 | B2.1.33 81 26.103 | 65.32d |
|  | Manholes | **Manholes** |  | 2026-11-16 | 2026-11-24 |  |  |
|  | Manhole Type 1 | **Manhole Type 1** |  | 2026-11-16 | 2026-11-22 |  |  |
| B2.31 23 00.610 |  | Excavation | 2d | 2026-11-16 | 2026-11-17 | B2.1.33 81 26.102 SS | 30.32d |

| ID | WBS | Task | Duration | Start | Finish | Predecessors | Complete | Total float |
| --- | --- | --- | --- | --- | --- | --- | --- | --- |
| B2.33 71 00.228 |  | Manhole Installation | 2d | 2026-11-18 | 2026-11-19 | B2.31 23 00.610 |  | 63.32d |
| B2.33 71 00.229 |  | Backfilling & Warrning Tape | 2d | 2026-11-21 | 2026-11-22 | B2.33 71 00.228, B2.1.33 81 26.98 |  | 63.32d |
|  | Manhole Type 2 | **Manhole Type 2** |  | 2026-11-18 | 2026-11-24 |  |  |  |
| B2.31 23 00.611 |  | Excavation | 2d | 2026-11-18 | 2026-11-19 | B2.31 23 00.610 |  | 30.32d |
| B2.33 71 00.230 |  | Manhole Installation | 2d | 2026-11-21 | 2026-11-22 | B2.31 23 00.611 |  | 63.32d |
| B2.33 71 00.231 |  | Backfilling & Warrning Tape | 2d | 2026-11-23 | 2026-11-24 | B2.33 71 00.230, B2.1.33 81 26.179, B2.33 71 00.275, B2.1.33 81 26.101, B2.33 71 00.229 |  | 63.32d |
|  | Crossing Ducts | **Road Crossing Ducts** |  | 2026-11-19 | 2026-11-24 |  |  |  |
|  | 2 | **Size (2*32mm) HDPE** |  | 2026-11-19 | 2026-11-24 |  |  |  |
| B2.31 23 00.613 |  | Excavation | 1d | 2026-11-19 | 2026-11-19 | B2.31 23 00.611 FF |  | 30.32d |
| B2.33 71 00.234 |  | Shuttering, Steel Fixing Incl. UPVC Pipe & Conc. Cast | 2d | 2026-11-21 | 2026-11-22 | B2.31 23 00.613 |  | 30.32d |
| B2.33 71 00.235 |  | Backfilling & Warrning Tape | 2d | 2026-11-23 | 2026-11-24 | B2.33 71 00.234 |  | 30.32d |
|  | Earth & Road Works | **Earth & Road Works** |  | 2025-11-28 | 2026-12-17 |  |  |  |
|  | Earth Works | **Earth Works** |  | 2025-11-28 | 2026-04-01 |  |  |  |
| B1.2.31 23 16.01.5 |  | Roadway Excavation | 95.1d | 2025-11-28 A | 2026-04-01 A | DMM2-Eng-MS-78 | 100% |  |
| B1.2.31 23 23.01.5 |  | Embankment Backfiling | 26.76d | 2025-11-30 A | 2025-12-31 A | B1.2.31 23 16.01.5 | 100% |  |
|  | Earth Layers | **Earth Layers** |  | 2026-02-28 | 2026-10-08 |  |  |  |
| B1.2.32 11 13.01.5 |  | Subgrade (65.00% Completed) | 159.75d | 2026-02-28 A | 2026-09-15 A | B1.2.31 23 23.01.5 | 100% |  |
| B1.2.32 11 23.01.5 |  | Aggregate Base Course (55.00% Completed) | 90d | 2026-06-03 A | 2026-09-15 A | B1.2.32 11 13.01.5 FF | 100% |  |
| B1.2.32 11 13.01.5_R |  | Subgrade(Rem) | 2d | 2026-10-07 | 2026-10-08 | B1.2.31 23 23.01.5, B1.2.32 11 13.01.5 |  | 44.32d |
| B1.2.32 11 23.01.5_R |  | Aggregate Base Course(Rem) | 2d | 2026-10-07 | 2026-10-08 | B1.2.32 11 13.01.5_R FF, B1.2.32 11 23.01.5 |  | 44.32d |
|  | Interlock | **Interlock** |  | 2026-11-15 | 2026-11-18 |  |  |  |
| B1.2.32 14 13.13.5 |  | 60mm thick - Interlocking Block Pavers | 3d | 2026-11-15 | 2026-11-18 | B2.33 71 16.50, B1.2.10 14 53.019 |  | 54d |
|  | Curbstone | **Curbstone** |  | 2026-11-10 | 2026-11-26 |  |  |  |
|  | Pre Install | **Pre-Installation** |  | 2026-11-10 | 2026-11-17 |  |  |  |
| B2.31 23 00.121 |  | Excavation | 2d | 2026-11-10 | 2026-11-12 | B2.31 23 00.251 |  | 0d |
| B1.2.32 14 13.13.25 |  | PCC | 2d | 2026-11-12 | 2026-11-15 | B2.31 23 00.121 |  | 0d |
| 32 16 13.005 |  | Haunching | 2d | 2026-11-15 | 2026-11-17 | B1.2.32 14 13.13.25 |  | 0d |
|  | Installation | **Installation** |  | 2026-11-16 | 2026-11-26 |  |  |  |
| B1.2.32 16.13.01.5 |  | Curb Stone, Type K1 | 3d | 2026-11-16 | 2026-11-19 | 32 16 13.005 SS+1d |  | 0d |
| B1.2.32 16.13.02.4 |  | Dropped Curb, Type K3 | 2d | 2026-11-17 | 2026-11-19 | B1.2.32 16.13.01.5 FF, 32 16 13.005 |  | 0d |
| B1.2.32 16.13.03.5 |  | Edge Curb, Type K4 | 2d | 2026-11-19 | 2026-11-22 | B1.2.32 16.13.02.4, 32 16 13.005 |  | 0d |
| B1.2.32 16.13.045 |  | Heel Curb, Type K5 | 2d | 2026-11-22 | 2026-11-24 | B1.2.32 16.13.03.5, 32 16 13.005 |  | 0d |
| B1.2.32 16.13.05.4 |  | Transition Curb | 2d | 2026-11-24 | 2026-11-26 | B1.2.32 16.13.045, 32 16 13.005 |  | 0d |
|  | Finishing | **Finishing** |  | 2026-11-24 | 2026-11-26 |  |  |  |
| 32 16 13.05 |  | Finishing, Fareface | 2d | 2026-11-24 | 2026-11-26 | B1.2.32 16.13.01.5, B1.2.32 16.13.02.4, B1.2.32 16.13.03.5, B1.2.32 16.13.045, B1.2.32 16.13.05.4 FF, B1.2.32 12 19.13.16 |  | 0d |
|  | Asphalt Layers | **Asphalt Layers** |  | 2026-10-10 | 2026-12-02 |  |  |  |
| B1.2.32 11 26.01.5 |  | Bituminous Base Course including Prime Coat (MC1) and tack coat (RC2) | 2d | 2026-10-10 | 2026-10-11 | B1.2.32 11 23.01.5_R, B1.1.31 23 23.112 |  | 44.32d |
| B1.2.32 12 16.01.5 |  | Bituminous concrete Wearing Course, including tack coat (RC2) | 5d | 2026-11-26 | 2026-12-02 | B1.2.32 11 26.01.5, B8.31 23 16.011, 32 16 13.05 |  | 5d |
|  | Pavement Marking | **Pavement Marking** |  | 2026-12-02 | 2026-12-05 |  |  |  |
| B1.2.32 17 23.02.5 |  | Retroreflective Thermoplastic Yellow, Traffic lines | 1d | 2026-12-02 | 2026-12-03 | B1.2.32 12 16.01.5 |  | 44d |
| B1.2.32 17 23.01.5 |  | Retroreflective Thermoplastic White Traffic lines | 1d | 2026-12-03 | 2026-12-05 | B1.2.32 12 16.01.5, B1.2.32 17 23.02.5 |  | 44d |
|  | Traffic Signs | **Traffic Signs** |  | 2026-11-24 | 2026-12-17 |  |  |  |
|  | Pre Install | **Pre-Installation** |  | 2026-11-24 | 2026-11-29 |  |  |  |
| B2.31 23 00.131 |  | Excavation | 2d | 2026-11-24 | 2026-11-26 | 32 16 13.05 SS |  | 0d |
| 10 14 53.05 |  | Foundation | 2d | 2026-11-26 | 2026-11-29 | B2.31 23 00.131 |  | 26d |
|  | Installation | **Installation** |  | 2026-12-10 | 2026-12-17 |  |  |  |
| B1.2.10 14 53.015 |  | 1 Sheet Alumenium, Single post | 2d | 2026-12-10 | 2026-12-13 | B1.2.32 14 13.13.5, B1.2.10 14 53.017 FF |  | 35d |
| B1.2.10 14 53.035 |  | 1 Sheet Alumenium, Double post | 2d | 2026-12-13 | 2026-12-15 | B1.2.32 14 13.13.5, B1.2.10 14 53.015 |  | 35d |
| B1.2.10 14 14.01.5 |  | Ground mounted, 1 Sheet Alumenium, Single post | 2d | 2026-12-15 | 2026-12-17 | B1.2.32 14 13.13.5, B1.2.10 14 53.035, B1.2.32 17 23.01.5 |  | 35d |
| B1.2.10 14 14.025 |  | Ground mounted, 1 Sheet Alumenium, Double post | 2d | 2026-12-15 | 2026-12-17 | B1.2.32 14 13.13.5, B1.2.10 14 14.01.5 SS |  | 35d |
|  | Landscape | **Landscape** |  | 2026-11-26 | 2027-01-09 |  |  |  |
|  | Fences | **Fences** |  | 2026-11-26 | 2026-12-29 |  |  |  |
|  | (MODON)l fence | **Steel fence (MODON)** |  | 2026-11-26 | 2026-12-29 |  |  |  |
| B7.32 93 43.04.16 |  | Earthwork | 3d | 2026-11-26 | 2026-11-30 | B2.31 23 00.131 |  | 0d |
| B7.32 93 43.04.18 |  | Foundation | 3d | 2026-12-19 | 2026-12-22 | B7.32 93 43.04.16, B7.31 32 19.23.5 |  | 0d |
| B7.32 93 43.04.20 |  | Fence Installation | 6d | 2026-12-22 | 2026-12-29 | B7.32 93 43.04.18, 10 14 53.05 |  | 6d |
|  | Gates | **Gates** |  | 2026-11-30 | 2027-01-09 |  |  |  |
|  | Size (4.1x 2.7)m | **Size (4.1x 2.7)m** |  | 2026-11-30 | 2026-12-31 |  |  |  |
| B7.32 93 43.04.22 |  | Earthwork | 4d | 2026-11-30 | 2026-12-05 | B7.32 93 43.04.16 |  | 0d |
| B7.32 93 43.04.24 |  | Foundation | 3d | 2026-12-22 | 2026-12-26 | B7.32 93 43.04.22, B7.31 32 19.23.5, B7.32 93 43.04.18 |  | 0d |
| B7.32 93 43.04.26 |  | Gate Installation | 5d | 2026-12-26 | 2026-12-31 | B7.32 93 43.04.24 |  | 1d |
|  | Size (3.35x 2.7)m | **Size (3.35x 2.7)m** |  | 2026-12-05 | 2027-01-04 |  |  |  |
| B7.32 93 43.04.28 |  | Earthwork | 3d | 2026-12-05 | 2026-12-08 | B7.32 93 43.04.22 |  | 0d |
| B7.32 93 43.04.30 |  | Foundation | 3d | 2026-12-26 | 2026-12-29 | B7.32 93 43.04.28, B7.31 32 19.23.5, B7.32 93 43.04.24 |  | 0d |
| B7.32 93 43.04.32 |  | Gate Installation | 5d | 2026-12-29 | 2027-01-04 | B7.32 93 43.04.30, B7.32 93 43.04.65, B7.32 93 43.04.68 |  | 1d |
|  | Size (4.35x 2.7)m | **Size (4.35x 2.7)m** |  | 2026-12-08 | 2027-01-05 |  |  |  |
| B7.32 93 43.04.34 |  | Earthwork | 3d | 2026-12-08 | 2026-12-12 | B7.32 93 43.04.28 |  | 0d |
| B7.32 93 43.04.36 |  | Foundation | 3d | 2026-12-29 | 2027-01-02 | B7.32 93 43.04.34, B7.31 32 19.23.5, B7.32 93 43.04.30 |  | 0d |
| B7.32 93 43.04.38 |  | Gate Installation | 3d | 2027-01-02 | 2027-01-05 | B7.32 93 43.04.36, B7.32 93 43.04.26 |  | 0d |
|  | Size (3.25x 2.7)m | **Size (3.25x 2.7)m** |  | 2026-12-12 | 2027-01-09 |  |  |  |

| ID | WBS | Task | Duration | Start | Finish | Predecessors | Complete | Total float |
| --- | --- | --- | --- | --- | --- | --- | --- | --- |
| B7.32 93 43.04.40 |  | Earthwork | 3d | 2026-12-12 | 2026-12-15 | B7.32 93 43.04.34 |  | 0d |
| B7.32 93 43.04.42 |  | Foundation | 3d | 2027-01-02 | 2027-01-05 | B7.32 93 43.04.40, B7.31 32 19.23.5, B7.32 93 43.04.36 |  | 0d |
| B7.32 93 43.04.44 |  | Gate Installation | 3d | 2027-01-05 | 2027-01-09 | B7.32 93 43.04.42, B7.32 93 43.04.71, B7.32 93 43.04.32, B7.32 93 43.04.38, B7.32 93 43.04.56 SS, B7.32 93 43.04.54 SS |  | 0d |
|  | Geotextile | **Geotextile** |  | 2026-12-15 | 2026-12-19 |  |  |  |
| B7.31 32 19.23.5 |  | Geotextile below gravel bed | 3d | 2026-12-15 | 2026-12-19 | B7.32 93 43.04.40 |  | 0d |
| B7.31 32 19.23.4 |  | Geotextile to protect trees planting soil | 3d | 2026-12-16 | 2026-12-19 | B1.2.32 12 16.01.5, B7.32 91 00.01 |  | 12.32d |
|  | Ornamental Grasses | **Ornamental Grasses** |  | 2026-12-30 | 2027-01-05 |  |  |  |
| B7.32 93 13.01 |  | Pennisetum setaceum | 5d | 2026-12-30 | 2027-01-05 | B7.31 32 19.23.4, B7.32 91 00.01.02, DMM2-Proc-Delv-7540, DMM2-Proc-Delv-7329, B7.32 93 43.06 SS, B7.32 93 43.03 SS, B7.32 93 33.03 FF |  | 3d |
|  | Large Shrubs | **Large Shrubs** |  | 2026-12-30 | 2027-01-05 |  |  |  |
| B7.32 93 33.03 |  | Tecomaria Capensis | 5d | 2026-12-30 | 2027-01-05 | B7.32 91 00.01.01, DMM2-Proc-Delv-7543, B7.32 91 00.02.02 |  | 3d |
|  | Miscellaneous | **Miscellaneous** |  | 2026-12-13 | 2026-12-30 |  |  |  |
| B7.32 91 00.01 |  | Plastic edge | 3d | 2026-12-13 | 2026-12-15 | B1.2.32 12 16.01.5, DMM2-Proc-Delv-7331 |  | 5.32d |
| B7.32 91 00.01.01 |  | 75mm thickness for shrubs and grasses | 5d | 2026-12-19 | 2026-12-24 | B7.32 91 00.01.02 SS, B7.32 91 00.02.01 SS |  | 3d |
| B7.32 91 00.01.02 |  | 75mm thickness for trees | 5d | 2026-12-19 | 2026-12-24 | B7.32 91 00.01 SS, B7.32 91 00.02.01 SS |  | 3d |
| B7.32 91 00.02.01 |  | Grey gravel bed - 30-50 mm diameter (G1) | 5d | 2026-12-19 | 2026-12-24 | B7.32 91 00.01, B7.31 32 19.23.5, DMM2-Proc-Delv-7334 |  | 3d |
| B7.32 91 00.02.02 |  | Grey gravel bed - 12-25 mm diameter (G2) | 5d | 2026-12-24 | 2026-12-30 | B7.32 91 00.02.01, B7.31 32 19.23.5, DMM2-Proc-Delv-7334 |  | 3d |
|  | Management Road 01 | **Management Road 01** |  | 2025-11-26 | 2026-12-10 |  |  |  |
|  | Wet Networks | **Wet Networks** |  | 2026-02-05 | 2026-11-05 |  |  |  |
|  | Stormwater Network | **Stormwater Network** |  | 2026-02-05 | 2026-10-11 |  |  |  |
|  | GRP | **GRP** |  | 2026-02-05 | 2026-10-11 |  |  |  |
|  | ?400 | **?400** |  | 2026-02-05 | 2026-04-18 |  |  |  |
|  | 3 | **Depth From 1.5m to 2.5m** |  | 2026-02-05 | 2026-04-18 |  |  |  |
| B6.33 42 11.01-101 |  | Excavation | 14.97d | 2026-02-05 A | 2026-02-25 A | B1.2.31 23 16.01.6 | 100% |  |
| B6.33 42 11.01-107 |  | Sand Bedding | 14.72d | 2026-02-07 A | 2026-02-26 A | B6.33 42 11.01-101 | 100% |  |
| B6.33 42 11.01-1013 |  | Pipe Laying | 12.47d | 2026-02-10 A | 2026-02-28 A | B6.33 42 11.01-107 | 100% |  |
| B6.33 42 11.01-1019 |  | Embedment & Test | 4d | 2026-04-08 A | 2026-04-12 A | B6.33 42 11.01-1013 | 100% |  |
| B6.33 42 11.01-1025 |  | Backfilling & Warrning Tape | 7d | 2026-04-11 A | 2026-04-18 A | B6.33 42 11.01-1019 | 100% |  |
|  | ?4001 | **?500** |  | 2026-02-08 | 2026-04-21 |  |  |  |
|  | 3 | **Depth From 1.5m to 2.5m** |  | 2026-02-08 | 2026-04-21 |  |  |  |
| B6.33 42 11.01-102 |  | Excavation | 14.36d | 2026-02-08 A | 2026-02-28 A | B6.33 42 11.01-101 | 100% |  |
| B6.33 42 11.01-108 |  | Sand Bedding | 13.11d | 2026-02-10 A | 2026-03-01 A | B6.33 42 11.01-102 | 100% |  |
| B6.33 42 11.01-1014 |  | Pipe Laying | 12.86d | 2026-02-11 A | 2026-03-02 A | B6.33 42 11.01-108 | 100% |  |
| B6.33 42 11.01-1020 |  | Embedment & Test | 3d | 2026-04-08 A | 2026-04-11 A | B6.33 42 11.01-1014 | 100% |  |
| B6.33 42 11.01-1026 |  | Backfilling & Warrning Tape | 5d | 2026-04-16 A | 2026-04-21 A | B6.33 42 11.01-1020 | 100% |  |
|  | ?4002 | **?600** |  | 2026-04-08 | 2026-05-04 |  |  |  |
|  | 4 | **Depth From 1.5m to 2.5m** |  | 2026-04-08 | 2026-05-04 |  |  |  |
| B6.33 42 11.01-103 |  | Excavation | 2d | 2026-04-08 A | 2026-04-09 A | B6.33 42 11.01-102 | 100% |  |
| B6.33 42 11.01-109 |  | Sand Bedding | 2d | 2026-04-11 A | 2026-04-12 A | B6.33 42 11.01-103 | 100% |  |
| B6.33 42 11.01-1015 |  | Pipe Laying | 2d | 2026-04-13 A | 2026-04-14 A | B6.33 42 11.01-109 | 100% |  |
| B6.33 42 11.01-1021 |  | Embedment & Test | 3d | 2026-04-29 A | 2026-05-02 A | B6.33 42 11.01-1015 | 100% |  |
| B6.33 42 11.01-1027 |  | Backfilling & Warrning Tape | 4d | 2026-04-30 A | 2026-05-04 A | B6.33 42 11.01-1021 | 100% |  |
|  | ?40021 | **?700** |  | 2026-02-26 | 2026-05-04 |  |  |  |
|  | 4 | **Depth From 1.5m to 2.5m** |  | 2026-02-26 | 2026-05-04 |  |  |  |
| B6.33 42 11.01-104 |  | Excavation | 1.25d | 2026-02-26 A | 2026-02-28 A | B6.33 42 11.01-103 | 100% |  |
| B6.33 42 11.01-1010 |  | Sand Bedding | 0.5d | 2026-02-28 A | 2026-03-01 A | B6.33 42 11.01-104 | 100% |  |
| B6.33 42 11.01-1016 |  | Pipe Laying | 0.5d | 2026-03-01 A | 2026-03-02 A | B6.33 42 11.01-1010 | 100% |  |
| B6.33 42 11.01-1022 |  | Embedment & Test | 4d | 2026-04-29 A | 2026-05-03 A | B6.33 42 11.01-1016 | 100% |  |
| B6.33 42 11.01-1028 |  | Backfilling & Warrning Tape | 3d | 2026-05-02 A | 2026-05-04 A | B6.33 42 11.01-1022 | 100% |  |
|  | ?400111 | **?1000** |  | 2026-02-26 | 2026-04-28 |  |  |  |
|  | 3 | **Depth From 1.5m to 2.5m** |  | 2026-02-26 | 2026-04-28 |  |  |  |
| B6.33 42 11.01-106 |  | Excavation | 0.75d | 2026-02-26 A | 2026-02-28 A | B6.33 42 11.01-104 | 100% |  |
| B6.33 42 11.01-1012 |  | Sand Bedding | 0.5d | 2026-02-28 A | 2026-03-01 A | B6.33 42 11.01-106 | 100% |  |
| B6.33 42 11.01-1018 |  | Pipe Laying | 0.75d | 2026-03-02 A | 2026-03-02 A | B6.33 42 11.01-1012 | 100% |  |
| B6.33 42 11.01-1024 |  | Embedment & Test | 4d | 2026-04-22 A | 2026-04-26 A | B6.33 42 11.01-1018 | 100% |  |
| B6.33 42 11.01-1030 |  | Backfilling & Warrning Tape | 5d | 2026-04-23 A | 2026-04-28 A | B6.33 42 11.01-1024, B6.33 42 11.01-1027 | 100% |  |
|  | ?40011 | **?1100** |  | 2026-04-15 | 2026-10-11 |  |  |  |
|  | 3 | **Depth From 2.5m to 3.5m** |  | 2026-04-15 | 2026-10-11 |  |  |  |
| B6.33 42 11.01-105 |  | Excavation | 50.23d | 2026-04-15 A | 2026-06-17 A | B6.33 42 11.01-104 | 100% |  |
| B6.33 42 11.01-1011 |  | Sand Bedding | 50.23d | 2026-04-18 A | 2026-06-20 A | B6.33 42 11.01-105 | 100% |  |
| B6.33 42 11.01-1017 |  | Pipe Laying (68.80% Completed) | 122.28d | 2026-04-21 A | 2026-09-15 A | B6.33 42 11.01-1011 | 100% |  |
| B6.33 42 11.01-1023 |  | Embedment & Test (68.80% Completed) | 89.28d | 2026-06-03 A | 2026-09-15 A | B6.33 42 11.01-1017 FF | 100% |  |
| B6.33 42 11.01-1029 |  | Backfilling & Warrning Tape (68.80% Completed) | 85.28d | 2026-06-08 A | 2026-09-15 A | B6.33 42 11.01-1025, B6.33 42 11.01-1023 SS | 100% |  |
| B6.33 42 11.01-1017_R |  | Pipe Laying(Rem) | 2.28d | 2026-10-07 | 2026-10-10 | B6.33 42 11.01-1011, B6.33 42 11.01-1017 |  | 44.96d |
| B6.33 42 11.01-1023_R |  | Embedment & Test(Rem) | 2.84d | 2026-10-07 | 2026-10-10 | B6.33 42 11.01-1017_R FF, B6.33 42 11.01-1023 |  | 44.4d |
| B6.33 42 11.01-1029_R |  | Backfilling & Warrning Tape(Rem) | 3.12d | 2026-10-07 | 2026-10-11 | B6.33 42 11.01-1025, B6.33 42 11.01-1023_R SS, B6.33 42 11.01-1029 |  | 44.4d |
|  | Strom Manholes | **Manholes** |  | 2026-02-08 | 2026-10-11 |  |  |  |
|  | 1 | **?1200** |  | 2026-02-08 | 2026-09-24 |  |  |  |
|  | 3 | **Depth From 1.5m to 2.5m** |  | 2026-02-08 | 2026-09-24 |  |  |  |
| B6.33 05 39.01.2927 |  | Excavation & Compaction | 13.93d | 2026-02-08 A | 2026-02-26 A | B6.33 42 11.01-105 | 100% |  |
| B6.33 05 39.01.2937 |  | Blinding Conc, & RC Base | 2d | 2026-04-08 A | 2026-04-09 A | B6.33 05 39.01.2927 | 100% |  |

| ID | WBS | Task | Duration | Start | Finish | Predecessors | Complete | Total float |
| --- | --- | --- | --- | --- | --- | --- | --- | --- |
| B6.33 05 39.01.2947 |  | Manhole Installation (91.00% Completed) | 91.62d | 2026-06-01 A | 2026-09-15 A | B6.33 05 39.01.2937 | 100% |  |
| B6.33 05 39.01.2957 |  | Test, Internal Finishing, Benching & Cover (91.00% Completed) | 89.62d | 2026-06-03 A | 2026-09-15 A | B6.33 05 39.01.2947 SS | 100% |  |
| B6.33 05 39.01.2967 |  | Backfilling (91.00% Completed) | 85.62d | 2026-06-08 A | 2026-09-15 A | B6.33 05 39.01.2957 SS, B6.33 42 11.01-1.46 SS | 100% |  |
| B6.33 05 39.01.2947_R |  | Manhole Installation(Rem) | 2d | 2026-09-16 A | 2026-09-17 A | B6.33 05 39.01.2937, B6.33 05 39.01.2947 | 100% |  |
| B6.33 05 39.01.2967_R |  | Backfilling(Rem) | 2d | 2026-09-19 A | 2026-09-21 A | B6.33 05 39.01.2957_R SS, B6.33 42 11.01-1.46_R SS, B6.33 05 39.01.2967, B6.33 42 11.361510_R | 100% |  |
| B6.33 05 39.01.2957_R |  | Test, Internal Finishing, Benching & Cover(Rem) | 2d | 2026-09-24 A | 2026-09-24 A | B6.33 05 39.01.2947_R SS, B6.33 05 39.01.2957 | 100% |  |
|  | 2 | **?1500** |  | 2026-02-09 | 2026-10-08 |  |  |  |
|  | 1 | **Depth From 2.5m to 3.5m** |  | 2026-02-09 | 2026-10-08 |  |  |  |
| B6.33 05 39.01.3027 |  | Excavation & Compaction | 12.59d | 2026-02-09 A | 2026-02-26 A | B6.33 05 39.01.2927 | 100% |  |
| B6.33 05 39.01.3037 |  | Blinding Conc, & RC Base (91.00% Completed) | 85.62d | 2026-06-08 A | 2026-09-15 A | B6.33 05 39.01.3027 | 100% |  |
| B6.33 05 39.01.3047 |  | Manhole Installation (91.00% Completed) | 80d | 2026-06-15 A | 2026-09-15 A | B6.33 05 39.01.3037 SS | 100% |  |
| B6.33 05 39.01.3057 |  | Test, Internal Finishing, Benching & Cover (91.00% Completed) | 74d | 2026-06-22 A | 2026-09-15 A | B6.33 05 39.01.3047 SS | 100% |  |
| B6.33 05 39.01.3067 |  | Backfilling (91.00% Completed) | 73d | 2026-06-23 A | 2026-09-15 A | B6.33 05 39.01.3057 SS, B6.33 05 39.01.4267 SS | 100% |  |
| B6.33 05 39.01.3037_R |  | Blinding Conc, & RC Base(Rem) | 2d | 2026-09-19 A | 2026-09-22 A | B6.33 05 39.01.3027, B6.33 05 39.01.3037 | 100% |  |
| B6.33 05 39.01.3047_R |  | Manhole Installation(Rem) | 2d | 2026-09-19 A | 2026-09-22 A | B6.33 05 39.01.3037_R SS, B6.33 05 39.01.3047 | 100% |  |
| B6.33 05 39.01.3067_R |  | Backfilling(Rem) | 4d | 2026-09-27 A | 2026-10-01 A | B6.33 05 39.01.3057_R SS, B6.33 05 39.01.4267_R SS, B6.33 05 39.01.3067 | 100% |  |
| B6.33 05 39.01.3057_R |  | Test, Internal Finishing, Benching & Cover(Rem) | 2d | 2026-10-07 | 2026-10-08 | B6.33 05 39.01.3047_R SS, B6.33 05 39.01.3057 |  | 111.32d |
|  | 3 | **?2000** |  | 2026-02-26 | 2026-10-11 |  |  |  |
|  | 1 | **Depth From 2.5m to 3.5m** |  | 2026-02-26 | 2026-10-11 |  |  |  |
| B6.33 05 39.01.3127 |  | Excavation & Compaction | 2d | 2026-02-26 A | 2026-03-01 A | B6.33 05 39.01.3027 | 100% |  |
| B6.33 05 39.01.3137 |  | Blinding Conc, & RC Base (88.33% Completed) | 85.62d | 2026-06-08 A | 2026-09-15 A | B6.33 05 39.01.3127 | 100% |  |
| B6.33 05 39.01.3147 |  | Manhole Installation (88.33% Completed) | 74d | 2026-06-22 A | 2026-09-15 A | B6.33 05 39.01.3137 SS | 100% |  |
| B6.33 05 39.01.3157 |  | Test, Internal Finishing, Benching & Cover (88.33% Completed) | 73d | 2026-06-23 A | 2026-09-15 A | B6.33 05 39.01.3147 SS | 100% |  |
| B6.33 05 39.01.3167 |  | Backfilling (88.33% Completed) | 73d | 2026-06-23 A | 2026-09-15 A | B6.33 05 39.01.3157 SS, B6.33 42 11.35-132 SS, B6.33 42 11.36-122 SS, B6.33 05 39.01.3067 SS | 100% |  |
| B6.33 05 39.01.3137_R |  | Blinding Conc, & RC Base(Rem) | 2d | 2026-10-07 | 2026-10-08 | B6.33 05 39.01.3127, B6.33 05 39.01.3137 |  | 48.92d |
| B6.33 05 39.01.3147_R |  | Manhole Installation(Rem) | 2d | 2026-10-07 | 2026-10-08 | B6.33 05 39.01.3137_R SS, B6.33 05 39.01.3147 |  | 48.92d |
| B6.33 05 39.01.3157_R |  | Test, Internal Finishing, Benching & Cover(Rem) | 2d | 2026-10-07 | 2026-10-08 | B6.33 05 39.01.3147_R SS, B6.33 05 39.01.3157 |  | 48.92d |
| B6.33 05 39.01.3167_R |  | Backfilling(Rem) | 4d | 2026-10-07 | 2026-10-11 | B6.33 05 39.01.3157_R SS, B6.33 42 11.35-132_R SS, B6.33 42 11.36-122_R SS, B6.33 05 39.01.3067_R SS, B6.33 05 39.01.3167 |  | 48.92d |
|  | Catch Basins | **Catch Basins** |  | 2026-04-02 | 2026-10-10 |  |  |  |
|  | Sing | **Single** |  | 2026-06-08 | 2026-10-08 |  |  |  |
| B6.33 05 40.01.250 |  | Excavation, Compaction & Vapour Barrier (91.00% Completed) | 85.62d | 2026-06-08 A | 2026-09-15 A | B6.33 05 39.01.3127 | 100% |  |
| B6.33 05 40.01.260 |  | Blinding Conc. (91.00% Completed) | 74d | 2026-06-22 A | 2026-09-15 A | B6.33 05 40.01.250 SS | 100% |  |
| B6.33 05 40.01.270 |  | Catch Basin Installation (91.00% Completed) | 73d | 2026-06-23 A | 2026-09-15 A | B6.33 05 40.01.260 SS | 100% |  |
| B6.33 05 40.01.280 |  | Backfilling, DI Frame & Grate Cover Fixing (91.00% Completed) | 73d | 2026-06-23 A | 2026-09-15 A | B6.33 05 40.01.270 SS | 100% |  |
| B6.33 05 40.01.250_R |  | Excavation, Compaction & Vapour Barrier(Rem) | 2d | 2026-10-07 | 2026-10-08 | B6.33 05 39.01.3127, B6.33 05 40.01.250 |  | 48.92d |
| B6.33 05 40.01.260_R |  | Blinding Conc.(Rem) | 2d | 2026-10-07 | 2026-10-08 | B6.33 05 40.01.250_R SS, B6.33 05 40.01.260 |  | 48.92d |
| B6.33 05 40.01.270_R |  | Catch Basin Installation(Rem) | 2d | 2026-10-07 | 2026-10-08 | B6.33 05 40.01.260_R SS, B6.33 05 40.01.270 |  | 48.92d |
| B6.33 05 40.01.280_R |  | Backfilling, DI Frame & Grate Cover Fixing(Rem) | 2d | 2026-10-07 | 2026-10-08 | B6.33 05 40.01.270_R SS, B6.33 05 40.01.280 |  | 111.32d |
|  | UPVC | **UPVC** |  | 2026-04-02 | 2026-10-10 |  |  |  |
|  | UPVC300 | **?300 From 0.0 to 1.5m** |  | 2026-04-02 | 2026-10-08 |  |  |  |
| B6.33 42 11.35-131 |  | Catch Basin Opening Prep. (50.00% Completed) | 139d | 2026-04-02 A | 2026-09-15 A | B6.33 05 40.01.270 SS | 100% |  |
| B6.33 42 11.35-132 |  | Fittings & Pipe Installation (50.00% Completed) | 137d | 2026-04-05 A | 2026-09-15 A | B6.33 42 11.35-131 SS | 100% |  |
| B6.33 42 11.35-131_R |  | Catch Basin Opening Prep.(Rem) | 2d | 2026-10-07 | 2026-10-08 | B6.33 05 40.01.270_R SS, B6.33 42 11.35-131 |  | 48.92d |
| B6.33 42 11.35-132_R |  | Fittings & Pipe Installation(Rem) | 2d | 2026-10-07 | 2026-10-08 | B6.33 42 11.35-131_R SS, B6.33 42 11.35-132 |  | 48.92d |
|  | UPVC3001 | **?400 From 0.0 to 1.5m** |  | 2026-06-08 | 2026-10-10 |  |  |  |
| B6.33 42 11.36-121 |  | Catch Basin Opening Prep. (82.56% Completed) | 85.62d | 2026-06-08 A | 2026-09-15 A | B6.33 05 40.01.270 SS | 100% |  |
| B6.33 42 11.36-122 |  | Fittings & Pipe Installation (67.00% Completed) | 73d | 2026-06-23 A | 2026-09-15 A | B6.33 42 11.36-121 SS | 100% |  |
| B6.33 42 11.36-121_R |  | Catch Basin Opening Prep.(Rem) | 2.09d | 2026-10-07 | 2026-10-10 | B6.33 05 40.01.270_R SS, B6.33 42 11.36-121 |  | 48.92d |
| B6.33 42 11.36-122_R |  | Fittings & Pipe Installation(Rem) | 3d | 2026-10-07 | 2026-10-10 | B6.33 42 11.36-121_R SS, B6.33 42 11.36-122 |  | 48.92d |
|  | Potable Water | **Potable Water Network** |  | 2026-04-09 | 2026-10-21 |  |  |  |
|  | HDPE | **HDPE Pipes** |  | 2026-04-09 | 2026-10-10 |  |  |  |
|  | ?110mm | **?110mm** |  | 2026-04-09 | 2026-10-10 |  |  |  |
|  | Depth: 1.51m - 2.5m | **Depth: 1.51m - 2.5m** |  | 2026-04-09 | 2026-10-10 |  |  |  |
| B3.33 14 11.01.0110 |  | Excavation | 54.47d | 2026-04-09 A | 2026-06-16 A | DMM2-Proc-Delv-5818 | 100% |  |
| B3.33 14 11.01.0112 |  | Sand Bedding | 54.47d | 2026-04-11 A | 2026-06-17 A | B3.33 14 11.01.0110 | 100% |  |
| B3.33 14 11.01.0114 |  | Pipe Laying | 124.47d | 2026-04-13 A | 2026-09-09 A | B3.33 14 11.01.0112 | 100% |  |
| B3.33 14 11.01.0116 |  | Embedment & Test | 114.77d | 2026-04-27 A | 2026-09-12 A | B3.33 14 11.01.0114, B3.33 14 19.01.110 | 100% |  |
| B3.33 14 11.01.0118 |  | Backfilling & Warrning Tape (76.45% Completed) | 116d | 2026-04-29 A | 2026-09-15 A | B3.33 14 11.01.0116, B3.33 14 13.01.01.5 SS | 100% |  |
| B3.33 14 11.01.0118_R |  | Backfilling & Warrning Tape(Rem) | 2.18d | 2026-10-07 | 2026-10-10 | B3.33 14 11.01.0116, B3.33 14 13.01.01.5_R SS, B3.33 14 11.01.0118 |  | 93.52d |
|  | Crossing | **Plots and Buildings Crossing** |  | 2026-10-07 | 2026-10-21 |  |  |  |
| B3.33 14 13.02.19 |  | Earthwork | 5d | 2026-10-07 | 2026-10-12 | B3.33 14 11.01.0110 |  | 86.32d |
| B3.33 14 13.02.20 |  | Sand Bedding | 3d | 2026-10-13 | 2026-10-15 | B3.33 14 13.02.19 |  | 86.32d |
| B3.33 14 13.02.21 |  | Tee, Pipe (Crossing) Installation & Backfilling | 5d | 2026-10-17 | 2026-10-21 | B3.33 14 13.02.20 |  | 86.32d |
|  | Valves & Chambers | **Valves & Chambers** |  | 2026-09-02 | 2026-10-10 |  |  |  |
|  | GV | **Gate Valves** |  | 2026-09-02 | 2026-10-10 |  |  |  |
|  | 1 | **Gate valves dia (110) mm** |  | 2026-09-02 | 2026-10-10 |  |  |  |
| B3.33 14 19.01.110 |  | Burried Isolation Valve Installation | 8d | 2026-09-02 A | 2026-09-12 A | B3.33 14 11.01.0114 | 100% |  |
| B3.33 14 19.01.111 |  | Spindle & Surface Box | 3d | 2026-10-07 | 2026-10-10 | B3.33 14 19.01.110, B3.33 14 19.01.105 FF |  | 104.32d |
|  | Fire Fighting | **Fire Fighting Network** |  | 2026-04-19 | 2026-10-21 |  |  |  |
|  | HDPE | **HDPE Pipes** |  | 2026-04-19 | 2026-09-14 |  |  |  |

| ID | WBS | Task | Duration | Start | Finish | Predecessors | Complete | Total float |
| --- | --- | --- | --- | --- | --- | --- | --- | --- |
|  | ?250mm | **?250mm** |  | 2026-04-19 | 2026-09-14 |  |  |  |
|  | Depth: 1.51m - 2.5m | **Depth: 1.51m - 2.5m** |  | 2026-04-19 | 2026-09-14 |  |  |  |
| B3.1. 33 14 13.0110 |  | Excavation | 44.24d | 2026-04-19 A | 2026-06-14 A | B3.33 14 11.01.0110 | 100% |  |
| B3.1. 33 14 13.0112 |  | Sand Bedding | 44.24d | 2026-04-21 A | 2026-06-16 A | B3.1. 33 14 13.0110 | 100% |  |
| B3.1. 33 14 13.0114 |  | Pipe Laying | 115.14d | 2026-04-23 A | 2026-09-09 A | B3.1. 33 14 13.0112 | 100% |  |
| B3.1. 33 14 13.0116 |  | Embedment & Test | 116.28d | 2026-04-25 A | 2026-09-12 A | B3.1. 33 14 13.0114 | 100% |  |
| B3.1. 33 14 13.0118 |  | Backfilling & Warrning Tape | 113.82d | 2026-04-30 A | 2026-09-14 A | B3.1. 33 14 13.0116 | 100% |  |
|  | Valves & Chambers | **Valves & Chambers** |  | 2026-08-17 | 2026-10-21 |  |  |  |
|  | GV | **Gate Valves** |  | 2026-08-17 | 2026-10-11 |  |  |  |
|  | 1 | **Gate valves dia (250) mm** |  | 2026-08-17 | 2026-10-11 |  |  |  |
| B3.33 14 19.01.127 |  | Spindle & Surface Box | 23d | 2026-08-17 A | 2026-09-13 A | B3.1. 33 14 13..19 | 100% |  |
| B3.33 14 19.01.126 |  | Burried Isolation Valve Installation | 4d | 2026-10-07 | 2026-10-11 | B3.1. 33 14 13.0114 |  | 86.32d |
|  | 2 | **Air Valves** |  | 2026-09-07 | 2026-10-17 |  |  |  |
|  | 4 | **Air valves on less than 315 mm. (In Chamber)** |  | 2026-09-07 | 2026-10-17 |  |  |  |
| B3.33 05 63.02.52 |  | Land Adjustment & Compaction (75.00% Completed) | 7.2d | 2026-09-07 A | 2026-09-15 A | B3.1. 33 14 13.0116 SS | 100% |  |
| B3.33 05 63.02.50 |  | Foundations (75.00% Completed) | 4.2d | 2026-09-10 A | 2026-09-15 A | B3.33 05 63.02.52 SS | 100% |  |
| B3.33 05 63.02.53 |  | Chambers Walls Conc Cast In Situ (75.00% Completed) | 3.2d | 2026-09-12 A | 2026-09-15 A | B3.33 05 63.02.50 SS | 100% |  |
| B3.33 05 63.02.51 |  | Chamber Curing, Finishing & Steel Cover (75.00% Completed) | 1.2d | 2026-09-14 A | 2026-09-15 A | B3.33 05 63.02.53 SS | 100% |  |
| B3.33 05 63.02.50_R |  | Foundations(Rem) | 3d | 2026-10-07 | 2026-10-10 | B3.33 05 63.02.52_R SS, B3.33 05 63.02.50 |  | 64.32d |
| B3.33 05 63.02.51_R |  | Chamber Curing, Finishing & Steel Cover(Rem) | 3d | 2026-10-07 | 2026-10-10 | B3.33 05 63.02.53_R SS, B3.33 05 63.02.51 |  | 64.32d |
| B3.33 05 63.02.52_R |  | Land Adjustment & Compaction(Rem) | 3d | 2026-10-07 | 2026-10-10 | B3.1. 33 14 13.0116 SS, B3.33 05 63.02.52 |  | 64.32d |
| B3.33 05 63.02.53_R |  | Chambers Walls Conc Cast In Situ(Rem) | 3d | 2026-10-07 | 2026-10-10 | B3.33 05 63.02.50_R SS, B3.33 05 63.02.53 |  | 64.32d |
| B3.33 05 63.02.54 |  | Valve & Fitting Installation | 6d | 2026-10-11 | 2026-10-17 | B3.33 05 63.02.51_R, B3.1. 33 14 13.0118, B3.1. 33 14 13-01102, B3.1. 33 14 13-01100 |  | 64.32d |
|  | Washout Valves | **Washout Valves** |  | 2026-09-07 | 2026-10-21 |  |  |  |
|  | 4 | **Washout valves on 110-400 mm. (In Chamber)** |  | 2026-09-07 | 2026-10-21 |  |  |  |
| B3.33 05 63.01.47 |  | Land Adjustment & Compaction | 1d | 2026-09-07 A | 2026-09-08 A | B3.1. 33 14 13.0116 SS | 100% |  |
| B3.33 05 63.01.45 |  | Foundations | 1d | 2026-09-10 A | 2026-09-12 A | B3.33 05 63.01.47 | 100% |  |
| B3.33 05 63.01.46 |  | Chamber Curing, Finishing & Steel Cover | 2d | 2026-09-12 A | 2026-09-14 A | B3.33 05 63.01.48 | 100% |  |
| B3.33 05 63.01.48 |  | Chambers Walls Conc Cast In Situ | 1d | 2026-09-12 A | 2026-09-13 A | B3.33 05 63.01.45 | 100% |  |
| B3.33 05 63.01.49 |  | Valve & Fitting Installation | 6d | 2026-10-14 | 2026-10-21 | B3.33 05 63.01.46, B3.33 14 19.01.fh27_R, B3.1. 33 14 13-01102, B3.1. 33 14 13-0196 |  | 75.37d |
|  | 3 | **Fire Hydrant** |  | 2026-06-09 | 2026-10-14 |  |  |  |
| B3.33 14 19.01.fh26 |  | Riser Pipe & Flanged Fittings Installation | 3d | 2026-06-09 A | 2026-06-13 A | B3.1. 33 14 13.0114 SS | 100% |  |
| B3.33 14 19.01.fh25 |  | Firehydrant Fixing/Installation (1.00% Completed) | 75.59d | 2026-06-20 A | 2026-09-15 A | B3.33 14 19.01.fh26 | 100% |  |
| B3.33 14 19.01.fh27 |  | Backfilling & Compaction (1.00% Completed) | 72.59d | 2026-06-23 A | 2026-09-15 A | B3.33 14 19.01.fh25 SS | 100% |  |
| B3.33 14 19.01.fh25_R |  | Firehydrant Fixing/Installation(Rem) | 4.97d | 2026-10-07 | 2026-10-12 | B3.33 14 19.01.fh26, B3.33 14 19.01.fh25 |  | 75.37d |
| B3.33 14 19.01.fh27_R |  | Backfilling & Compaction(Rem) | 6.95d | 2026-10-07 | 2026-10-14 | B3.33 14 19.01.fh25_R SS, B3.33 14 19.01.fh27 |  | 75.37d |
|  | TSE Network | **TSE Network** |  | 2026-06-04 | 2026-11-05 |  |  |  |
|  | HDPE | **HDPE Pipes** |  | 2026-06-04 | 2026-10-19 |  |  |  |
|  | ?125mm | **?125mm** |  | 2026-06-04 | 2026-10-19 |  |  |  |
|  | Depth: 0.0m - 1.5m | **Depth: 0.0m - 1.5m** |  | 2026-06-04 | 2026-10-19 |  |  |  |
| B4.33 14 13.0110 |  | Excavation (17.89% Completed) | 89d | 2026-06-04 A | 2026-09-15 A | B3.1. 33 14 13.0110 | 100% |  |
| B4.33 14 13.0112 |  | Sand Bedding (17.89% Completed) | 87d | 2026-06-07 A | 2026-09-15 A | B4.33 14 13.0110 FF | 100% |  |
| B4.33 14 13.0114 |  | Pipe Laying (17.89% Completed) | 85d | 2026-06-09 A | 2026-09-15 A | B4.33 14 13.0112 FF | 100% |  |
| B4.33 14 13.0116 |  | Embedment & Test (17.89% Completed) | 81d | 2026-06-14 A | 2026-09-15 A | B4.33 14 13.0114 FF, B3.33 14 19.01.142 SS | 100% |  |
| B4.33 14 13.0118 |  | Backfilling & Warrning Tape (17.89% Completed) | 76d | 2026-06-19 A | 2026-09-15 A | B4.33 14 13.0116 SS | 100% |  |
| B4.33 14 13.0110_R |  | Excavation(Rem) | 3.46d | 2026-10-12 | 2026-10-15 | B3.33 05 63.02.89 FF, B3.1. 33 14 13.0110, B4.33 14 13.0110 |  | 22.32d |
| B4.33 14 13.0112_R |  | Sand Bedding(Rem) | 2.64d | 2026-10-13 | 2026-10-15 | B4.33 14 13.0110_R FF, B4.33 14 13.0112 |  | 22.32d |
| B4.33 14 13.0114_R |  | Pipe Laying(Rem) | 2.64d | 2026-10-13 | 2026-10-15 | B4.33 14 13.0112_R FF, B4.33 14 13.0114 |  | 22.32d |
| B4.33 14 13.0116_R |  | Embedment & Test(Rem) | 4.29d | 2026-10-13 | 2026-10-18 | B4.33 14 13.0114_R FF, B3.33 14 19.01.142_R SS, B4.33 14 13.0116 |  | 90.86d |
| B4.33 14 13.0118_R |  | Backfilling & Warrning Tape(Rem) | 5.11d | 2026-10-13 | 2026-10-19 | B3.33 14 19.01.143 FF, B3.33 14 19.01.163 FF, B4.33 14 13.0116_R SS, B4.33 14 13.0118 |  | 90.86d |
|  | Valves & Chambers | **Valves & Chambers** |  | 2026-06-12 | 2026-11-05 |  |  |  |
|  | GV | **Gate Valves** |  | 2026-06-12 | 2026-10-19 |  |  |  |
|  | GV 100 | **Gate valves dia (100) mm** |  | 2026-06-12 | 2026-10-19 |  |  |  |
| B3.33 14 19.01.142 |  | Burried Isolation Valve Installation (50.00% Completed) | 82d | 2026-06-12 A | 2026-09-15 A | B4.33 14 13.0114 SS | 100% |  |
| B3.33 14 19.01.142_R |  | Burried Isolation Valve Installation(Rem) | 2d | 2026-10-13 | 2026-10-15 | B4.33 14 13.0114_R SS, B3.33 14 19.01.142 |  | 90.86d |
| B3.33 14 19.01.143 |  | Spindle & Surface Box | 3d | 2026-10-15 | 2026-10-19 | B3.33 14 19.01.142_R |  | 90.96d |
|  | GV 150 | **Gate valves dia (150) mm** |  | 2026-06-14 | 2026-10-19 |  |  |  |
| B3.33 14 19.01.153 |  | Burried Isolation Valve Installation (50.00% Completed) | 81d | 2026-06-14 A | 2026-09-15 A | B3.33 14 19.01.142 SS | 100% |  |
| B3.33 14 19.01.153_R |  | Burried Isolation Valve Installation(Rem) | 2d | 2026-10-13 | 2026-10-15 | B3.33 14 19.01.142_R SS, B3.33 14 19.01.153 |  | 90.96d |
| B3.33 14 19.01.163 |  | Spindle & Surface Box | 3d | 2026-10-15 | 2026-10-19 | B3.33 14 19.01.153_R |  | 90.96d |
|  | Solenoid valves | **Solenoid valves** |  | 2026-10-17 | 2026-11-05 |  |  |  |
|  | Solenoid valve ?1.0 | **1 Solenoid valve ?1.0 inch with box** |  | 2026-10-20 | 2026-10-29 |  |  |  |
| B4.32 84 13.71 |  | Cable Laying Two-Wire Decoder (12 AWG) | 3d | 2026-10-20 | 2026-10-22 | B4.32 84 13.68 |  | 22.32d |
| B4.32 84 13.72 |  | Solenoid Valve Box Installation | 3d | 2026-10-24 | 2026-10-26 | B4.32 84 13.71 |  | 25.32d |
| B4.32 84 13.73 |  | Bubblers Installation | 3d | 2026-10-27 | 2026-10-29 | B4.32 84 13.72, B4.32 84 13.79 |  | 25.32d |
| B4.32 84 13.77 |  | Pull Box Installation | 3d | 2026-10-27 | 2026-10-29 | B4.32 84 13.71, B4.32 84 13.70 |  | 28.32d |
|  | Solenoid valve ?1.5 | **1 Solenoid valve ?1.5 inch with box** |  | 2026-10-17 | 2026-11-05 |  |  |  |
| B4.33 14 13.09 |  | Extra flexible dripline with 3.0LPH | 3d | 2026-10-17 | 2026-10-19 | B4.33 14 13.0114_R |  | 28.32d |
| B4.32 84 13.04 |  | Dripper | 3d | 2026-10-20 | 2026-10-22 | B4.33 14 13.09 |  | 28.32d |
| B4.32 84 13.74 |  | Cable Laying Two-Wire Decoder (12 AWG) | 3d | 2026-10-24 | 2026-10-26 | B4.32 84 13.71 |  | 22.32d |

| ID | WBS | Task | Duration | Start | Finish | Predecessors | Total float |
| --- | --- | --- | --- | --- | --- | --- | --- |
| B4.32 84 13.78 |  | Pull Box Installation | 3d | 2026-10-27 | 2026-10-29 | B4.32 84 13.74 | 22.32d |
| B4.32 84 13.75 |  | Solenoid Valve Box Installation | 3d | 2026-10-31 | 2026-11-02 | B4.32 84 13.78 | 22.32d |
| B4.32 84 13.76 |  | Bubblers Installation | 3d | 2026-11-03 | 2026-11-05 | B4.32 84 13.75, B4.32 84 13.73 | 22.32d |
|  | Solenoid valve ?2.0 | **1 Solenoid valve ?2.0 inch with box** |  | 2026-10-17 | 2026-10-26 |  |  |
| B4.32 84 13.68 |  | Cable Laying Two-Wire Decoder (12 AWG) | 3d | 2026-10-17 | 2026-10-19 | B4.33 14 13.0114_R | 22.32d |
| B4.32 84 13.69 |  | Solenoid Valve Box Installation | 3d | 2026-10-20 | 2026-10-22 | B4.32 84 13.68 | 28.32d |
| B4.32 84 13.79 |  | Pull Box Installation | 3d | 2026-10-20 | 2026-10-22 | B4.32 84 13.68 | 28.32d |
| B4.32 84 13.70 |  | Bubblers Installation | 3d | 2026-10-24 | 2026-10-26 | B4.32 84 13.69, B4.32 84 13.04 | 28.32d |
|  | Dry Networks | **Dry Networks** |  | 2026-10-12 | 2026-12-10 |  |  |
|  | MV | **Medium Voltage Network** |  | 2026-10-12 | 2026-11-24 |  |  |
|  | Duct Banks | **Duct Banks** |  | 2026-10-19 | 2026-11-24 |  |  |
|  | 4 Way | **4 Way** |  | 2026-10-19 | 2026-11-24 |  |  |
| B2.31 23 00.639 |  | Excavation | 4d | 2026-10-19 | 2026-10-24 | B4.33 14 13.0118_R | 90.86d |
| B2.33 71 00.286 |  | Shuttering, Steel Fixing Incl. UPVC Pipe & Conc. Cast | 4d | 2026-10-24 | 2026-10-28 | B2.31 23 00.639 | 90.86d |
| B2.33 71 00.287 |  | Backfilling & Warrning Tape | 4d | 2026-11-21 | 2026-11-24 | B2.33 71 00.286, B2.33 71 00.289, B2.33 71 00 02 45 | 71.32d |
|  | Cables | **Cables** |  | 2026-10-12 | 2026-11-03 |  |  |
|  | 3C,500mm2 | **3C,500mm2** |  | 2026-10-12 | 2026-11-03 |  |  |
| B2.33 71 49.23.74 |  | Cable 13.8 kV Unarmored | 4d | 2026-10-12 | 2026-10-15 | B1.2.32 11 26.01.6 | 82.32d |
| B2.33 71 49.23.75 |  | Straight joints cables | 3d | 2026-10-17 | 2026-10-19 | B2.33 71 49.23.74 | 82.32d |
| B2.33 71 49.23.76 |  | Cable Termination | 3d | 2026-10-31 | 2026-11-03 | B2.33 71 49.23.75, B2.33 71 49.23.85 | 73.2d |
|  | Street Lighting | **Street Lighting** |  | 2026-10-12 | 2026-11-01 |  |  |
|  | SL Poles | **SL Poles** |  | 2026-10-12 | 2026-10-29 |  |  |
|  | Pole (10 M Sngl Arm) | **Pole (10 M Single Arm)** |  | 2026-10-12 | 2026-10-29 |  |  |
| B2.33 71 16.51 |  | Excavation | 3d | 2026-10-12 | 2026-10-14 | B1.2.32 11 26.01.6 | 81.32d |
| B2.33 71 16.52 |  | PC & RC Foundation | 3d | 2026-10-15 | 2026-10-18 | B2.33 71 16.51 | 81.32d |
| B2.33 71 16.53 |  | Lighting Poles Installation Incl power box, Cables | 3d | 2026-10-19 | 2026-10-21 | B2.33 71 16.52 | 81.32d |
| B2.26.56.19.6 |  | Lighting Luminares Inst | 2d | 2026-10-22 | 2026-10-24 | B2.33 71 16.53 | 84.32d |
| B2.33 71 16.54 |  | Backfilling, Grouting & Chamfering | 3d | 2026-10-27 | 2026-10-29 | B2.26.56.19.6, B2.33 71 16.025 | 82.32d |
|  | Earthing | **Earthing** |  | 2026-10-22 | 2026-11-01 |  |  |
| B2.33 71 19 26 |  | Land Adjustment | 3d | 2026-10-22 | 2026-10-25 | B2.33 71 16.53 | 81.32d |
| B2.33 71 19 27 |  | Earth Rods & Conduits | 3d | 2026-10-26 | 2026-10-28 | B2.33 71 19 26 | 81.32d |
| B2.33 71 19 28 |  | Backfilling | 3d | 2026-10-29 | 2026-11-01 | B2.33 71 19 27 | 81.32d |
|  | Telecommunication | **Telecommunication Network** |  | 2026-11-26 | 2026-12-10 |  |  |
|  | Ducts | **Ducts** |  | 2026-11-26 | 2026-12-09 |  |  |
|  | (6*50mm) | **Size (6*50mm) HDPE ducts** |  | 2026-11-26 | 2026-12-02 |  |  |
| B2.1.33 81 26.105 |  | Excavation | 2d | 2026-11-26 | 2026-11-28 | DMM2-Proc-Delv-6508, DMM2-Proc-Delv-6498, DMM2-Proc-Delv-6508 FF, B2.31 23 00.609 | 57.32d |
| B2.1.33 81 26.106 |  | HDPE Pipe, Shuttering, Steel Fixing & Conc. Cast | 2d | 2026-11-29 | 2026-11-30 | B2.1.33 81 26.105 | 62.32d |
| B2.1.33 81 26.107 |  | Backfilling & Warrning Tape | 2d | 2026-12-01 | 2026-12-02 | B2.1.33 81 26.106, B2.1.33 81 26.43_R | 62.32d |
|  | (6*50mm+2*32mm) | **Size (6*50mm+2*32mm) HDPE ducts** |  | 2026-11-29 | 2026-12-03 |  |  |
| B2.1.33 81 26.108 |  | Excavation | 1d | 2026-11-29 | 2026-11-29 | B2.1.33 81 26.105 | 57.32d |
| B2.1.33 81 26.109 |  | HDPE Pipe, Shuttering, Steel Fixing & Conc. Cast | 2d | 2026-11-30 | 2026-12-01 | B2.1.33 81 26.108 | 61.32d |
| B2.1.33 81 26.110 |  | Backfilling & Warrning Tape | 2d | 2026-12-02 | 2026-12-03 | B2.1.33 81 26.109, B2.33 71 00.223 | 61.32d |
|  | (6*50mm+4*32mm) | **Size (6*50mm+4*32mm) HDPE ducts** |  | 2026-11-30 | 2026-12-06 |  |  |
| B2.1.33 81 26.111 |  | Excavation | 2d | 2026-11-30 | 2026-12-01 | B2.1.33 81 26.108 | 57.32d |
| B2.1.33 81 26.112 |  | HDPE Pipe, Shuttering, Steel Fixing & Conc. Cast | 2d | 2026-12-02 | 2026-12-03 | B2.1.33 81 26.111 | 59.32d |
| B2.1.33 81 26.113 |  | Backfilling & Warrning Tape | 2d | 2026-12-05 | 2026-12-06 | B2.1.33 81 26.112 | 59.32d |
|  | (2*32mm) | **Size (2*32mm) HDPE ducts** |  | 2026-12-02 | 2026-12-07 |  |  |
| B2.1.33 81 26.114 |  | Excavation | 1d | 2026-12-02 | 2026-12-02 | B2.1.33 81 26.111 | 57.32d |
| B2.1.33 81 26.115 |  | HDPE Pipe, Shuttering, Steel Fixing & Conc. Cast | 2d | 2026-12-03 | 2026-12-05 | B2.1.33 81 26.114 | 58.32d |
| B2.1.33 81 26.116 |  | Backfilling & Warrning Tape | 2d | 2026-12-06 | 2026-12-07 | B2.1.33 81 26.115, B2.1.33 81 26.137, B2.1.33 81 26.140 | 58.32d |
|  | (4*32mm) | **Size (4*32mm) HDPE ducts** |  | 2026-12-03 | 2026-12-09 |  |  |
| B2.1.33 81 26.117 |  | Excavation | 2d | 2026-12-03 | 2026-12-05 | B2.1.33 81 26.114 | 57.32d |
| B2.1.33 81 26.118 |  | HDPE Pipe, Shuttering, Steel Fixing & Conc. Cast | 2d | 2026-12-06 | 2026-12-07 | B2.1.33 81 26.117 | 58.32d |
| B2.1.33 81 26.119 |  | Backfilling & Warrning Tape | 2d | 2026-12-08 | 2026-12-09 | B2.1.33 81 26.118, B2.1.33 81 26.146, B2.33 71 00.225, B2.33 71 00.227 | 58.32d |
|  | Manholes | **Manholes** |  | 2026-12-06 | 2026-12-10 |  |  |
|  | Manhole Type 1 | **Manhole Type 1** |  | 2026-12-06 | 2026-12-09 |  |  |
| B2.31 23 00.617 |  | Excavation | 1d | 2026-12-06 | 2026-12-06 | B2.1.33 81 26.117 | 57.32d |
| B2.33 71 00.242 |  | Manhole Installation | 1d | 2026-12-07 | 2026-12-07 | B2.31 23 00.617 | 58.32d |
| B2.33 71 00.243 |  | Backfilling & Warrning Tape | 2d | 2026-12-08 | 2026-12-09 | B2.33 71 00.242, B2.1.33 81 26.110, B2.1.33 81 26.113 | 58.32d |
|  | Manhole Type 2 | **Manhole Type 2** |  | 2026-12-07 | 2026-12-10 |  |  |
| B2.31 23 00.615 |  | Excavation | 1d | 2026-12-07 | 2026-12-07 | B2.31 23 00.617 | 57.32d |
| B2.33 71 00.238 |  | Manhole Installation | 1d | 2026-12-08 | 2026-12-08 | B2.31 23 00.615 | 57.32d |
| B2.33 71 00.239 |  | Backfilling & Warrning Tape | 2d | 2026-12-09 | 2026-12-10 | B2.33 71 00.238, B2.1.33 81 26.116, B2.1.33 81 26.107, B2.33 71 00.241 | 57.32d |
|  | Crossing Ducts | **Road Crossing Ducts** |  | 2026-11-29 | 2026-12-03 |  |  |
|  | 1 | **Size (6*50mm) HDPE** |  | 2026-11-29 | 2026-12-03 |  |  |
| B2.31 23 00.616 |  | Excavation | 1d | 2026-11-29 | 2026-11-29 | B2.1.33 81 26.105 | 61.32d |
| B2.33 71 00.240 |  | Shuttering, Steel Fixing Incl. UPVC Pipe & Conc. Cast | 2d | 2026-11-30 | 2026-12-01 | B2.31 23 00.616 | 61.32d |
| B2.33 71 00.241 |  | Backfilling & Warrning Tape | 2d | 2026-12-02 | 2026-12-03 | B2.33 71 00.240, B2.1.33 81 26.53_R, B2.33 71 00.273 | 61.32d |
|  | Earth & Road Works | **Earth & Road Works** |  | 2025-11-26 | 2026-12-08 |  |  |
|  | Earth Works | **Earth Works** |  | 2025-11-26 | 2025-12-08 |  |  |

| ID | WBS | Task | Duration | Start | Finish | Predecessors | Complete | Total float |
| --- | --- | --- | --- | --- | --- | --- | --- | --- |
| B1.2.31 23 16.01.6 |  | Roadway Excavation | 8.25d | 2025-11-26 A | 2025-12-06 A | DMM2-Eng-MS-78 | 100% |  |
| B1.2.31 23 23.01.6 |  | Embankment Backfiling | 9d | 2025-11-29 A | 2025-12-08 A | B1.2.31 23 16.01.6 | 100% |  |
|  | Earth Layers | **Earth Layers** |  | 2026-02-08 | 2026-10-08 |  |  |  |
| B1.2.32 11 13.01.6 |  | Subgrade (65.00% Completed) | 174d | 2026-02-08 A | 2026-09-15 A | B1.2.31 23 23.01.6 | 100% |  |
| B1.2.32 11 23.01.6 |  | Aggregate Base Course (14.00% Completed) | 6d | 2026-09-09 A | 2026-09-15 A | B1.2.32 11 13.01.6 FF | 100% |  |
| B1.2.32 11 13.01.6_R |  | Subgrade(Rem) | 2d | 2026-10-07 | 2026-10-08 | B1.2.31 23 23.01.6, B1.2.32 11 13.01.6 |  | 49.32d |
| B1.2.32 11 23.01.6_R |  | Aggregate Base Course(Rem) | 2d | 2026-10-07 | 2026-10-08 | B1.2.32 11 13.01.6_R FF, B1.2.32 11 23.01.6 |  | 49.32d |
|  | Interlock | **Interlock** |  | 2026-11-15 | 2026-11-17 |  |  |  |
| B1.2.32 14 13.13.6 |  | 60mm thick - Interlocking Block Pavers | 3d | 2026-11-15 | 2026-11-17 | B1.2.32 14 13.13.8 SS |  | 1.32d |
|  | Curbstone | **Curbstone** |  | 2026-10-15 | 2026-11-05 |  |  |  |
|  | Pre Install | **Pre-Installation** |  | 2026-10-15 | 2026-10-22 |  |  |  |
| B2.31 23 00.151 |  | Excavation | 2d | 2026-10-15 | 2026-10-18 | B1.2.32 11 23.01.9 SS |  | 15d |
| B1.2.32 14 13.13.26 |  | PCC | 2d | 2026-10-18 | 2026-10-20 | B2.31 23 00.151 |  | 26d |
| 32 16 13.006 |  | Haunching | 2d | 2026-10-20 | 2026-10-22 | B1.2.32 14 13.13.26 |  | 26d |
|  | Installation | **Installation** |  | 2026-10-22 | 2026-11-03 |  |  |  |
| B1.2.32 16.13.01.6 |  | Curb Stone, Type K1 | 2d | 2026-10-22 | 2026-10-25 | 32 16 13.006 |  | 26d |
| B1.2.32 16.13.02.5 |  | Dropped Curb, Type K3 | 2d | 2026-10-25 | 2026-10-27 | B1.2.32 16.13.01.6, 32 16 13.006 |  | 26d |
| B1.2.32 16.13.03.6 |  | Edge Curb, Type K4 | 2d | 2026-10-27 | 2026-10-29 | B1.2.32 16.13.02.5, 32 16 13.006 |  | 26d |
| B1.2.32 16.13.046 |  | Heel Curb, Type K5 | 2d | 2026-10-29 | 2026-11-01 | B1.2.32 16.13.03.6, 32 16 13.006 |  | 26d |
| B1.2.32 16.13.05.5 |  | Transition Curb | 2d | 2026-11-01 | 2026-11-03 | B1.2.32 16.13.046, 32 16 13.006 |  | 26d |
|  | Finishing | **Finishing** |  | 2026-11-03 | 2026-11-05 |  |  |  |
| 32 16 13.06 |  | Finishing, Fareface | 2d | 2026-11-03 | 2026-11-05 | B1.2.32 16.13.01.6, B1.2.32 16.13.02.5, B1.2.32 16.13.03.6, B1.2.32 16.13.046, B1.2.32 16.13.05.5, 32 16 13.04 |  | 26d |
|  | Asphalt Layers | **Asphalt Layers** |  | 2026-10-10 | 2026-11-26 |  |  |  |
| B1.2.32 11 26.01.6 |  | Bituminous Base Course including Prime Coat (MC1) and tack coat (RC2) | 2d | 2026-10-10 | 2026-10-11 | B1.2.32 11 23.01.6_R |  | 49.32d |
| B1.2.32 12 16.01.6 |  | Bituminous concrete Wearing Course, including tack coat (RC2) | 5d | 2026-11-21 | 2026-11-26 | B1.2.32 11 26.01.6, B7.32 93 43.04.44.14 |  | 15d |
|  | Pavement Marking | **Pavement Marking** |  | 2026-11-26 | 2026-11-29 |  |  |  |
| B1.2.32 17 23.01.6 |  | Retroreflective Thermoplastic White Traffic lines | 2d | 2026-11-26 | 2026-11-29 | B1.2.32 12 16.01.6 |  | 59d |
| B1.2.32 17 23.02.6 |  | Retroreflective Thermoplastic Yellow, Traffic lines | 2d | 2026-11-26 | 2026-11-29 | B1.2.32 12 16.01.6 |  | 59d |
|  | Traffic Signs | **Traffic Signs** |  | 2026-10-15 | 2026-12-08 |  |  |  |
|  | Pre Install | **Pre-Installation** |  | 2026-10-15 | 2026-11-09 |  |  |  |
| B2.31 23 00.161 |  | Excavation | 2d | 2026-10-15 | 2026-10-18 | B2.31 23 00.151 SS |  | 15d |
| 10 14 53.06 |  | Foundation | 2d | 2026-11-07 | 2026-11-09 | B2.31 23 00.161, B7.32 91 00.02.2, B7.32 91 00.02.12 |  | 74d |
|  | Installation | **Installation** |  | 2026-11-09 | 2026-12-08 |  |  |  |
| B1.2.10 14 53.016 |  | 1 Sheet Alumenium, Single post | 2d | 2026-11-09 | 2026-11-11 | 10 14 53.06 |  | 74d |
| B1.2.10 14 53.026 |  | 2 Sheet Alumenium, Single post | 2d | 2026-11-29 | 2026-12-01 | B1.2.10 14 53.016, 10 14 53.06, B1.2.32 17 23.01.6, B1.2.32 17 23.02.6 |  | 59d |
| B1.2.10 14 14.01.6 |  | Ground mounted, 1 Sheet Alumenium, Single post | 2d | 2026-12-05 | 2026-12-06 | B1.2.10 14 53.026, 10 14 53.06, B1.2.10 14 14.01.13 |  | 56.32d |
| B1.2.10 14 14.026 |  | Ground mounted, 1 Sheet Alumenium, Double post | 2d | 2026-12-07 | 2026-12-08 | B1.2.10 14 14.01.6, 10 14 53.06 |  | 56.32d |
|  | Landscape | **Landscape** |  | 2026-10-18 | 2026-11-25 |  |  |  |
|  | Large Shrubs | **Large Shrubs** |  | 2026-11-14 | 2026-11-25 |  |  |  |
| B7.32 93 33.01 |  | Dodonaea viscosa | 5d | 2026-11-14 | 2026-11-19 | B7.32 91 00.01.2, B7.32 91 00.1, DMM2-Proc-Delv-7543, DMM2-Proc-Delv-7332 |  | 20d |
| B7.32 93 33.02 |  | Leucophyllun Frutescens | 5d | 2026-11-19 | 2026-11-25 | B7.32 91 00.01.2, B7.32 93 33.01, B7.32 91 00.1, DMM2-Proc-Delv-7543, B7.32 91 00.01.12 |  | 20d |
|  | Fences | **Fences** |  | 2026-10-18 | 2026-11-21 |  |  |  |
|  | (ZATCA HCIS) | **Steel fence (ZATCA HCIS)** |  | 2026-10-18 | 2026-11-21 |  |  |  |
| B7.32 93 43.04.44.10 |  | Earthwork | 5d | 2026-10-18 | 2026-10-24 | B2.31 23 00.161 |  | 15d |
| B7.32 93 43.04.44.12 |  | Foundation | 6d | 2026-11-07 | 2026-11-14 | B7.32 93 43.04.44.10, B7.32 91 00.02.2, B7.32 91 00.02.12 |  | 15d |
| B7.32 93 43.04.44.14 |  | Fence Installation | 6d | 2026-11-14 | 2026-11-21 | B7.32 93 43.04.44.12 |  | 15d |
|  | Miscellaneous | **Miscellaneous** |  | 2026-10-24 | 2026-11-19 |  |  |  |
| B7.32 91 00.02.2 |  | Grey gravel bed - 30-50 mm diameter (G1) | 6d | 2026-10-24 | 2026-10-31 | B7.32 93 43.04.44.10 |  | 15d |
| B7.32 91 00.1 |  | Plastic edge | 5d | 2026-10-24 | 2026-10-29 | B7.32 93 43.04.44.10 |  | 33d |
| B7.32 91 00.02.12 |  | Grey gravel bed - 12-25 mm diameter (G2) | 6d | 2026-10-31 | 2026-11-07 | B7.32 91 00.02.2, B7.32 93 43.04.44.10 |  | 15d |
| B7.32 91 00.01.2 |  | 75mm thickness for shrubs and grasses | 6d | 2026-11-07 | 2026-11-14 | B7.32 91 00.02.12 |  | 20d |
| B7.32 91 00.01.12 |  | 75mm thickness for trees | 5d | 2026-11-14 | 2026-11-19 | B7.32 91 00.01.2 |  | 20d |
|  | Commercial Rd 01 | **Commercial Road 01** |  | 2025-12-07 | 2026-12-22 |  |  |  |
|  | Wet Networks | **Wet Networks** |  | 2026-02-23 | 2026-11-18 |  |  |  |
|  | Stormwater Network | **Stormwater Network** |  | 2026-02-23 | 2026-10-24 |  |  |  |
|  | GRP | **GRP** |  | 2026-02-23 | 2026-10-24 |  |  |  |
|  | ?400 | **?400** |  | 2026-04-04 | 2026-10-24 |  |  |  |
|  | 3 | **Depth From 0.0m to 1.5m** |  | 2026-04-08 | 2026-10-13 |  |  |  |
| B6.33 42 11.011 |  | Excavation | 27.12d | 2026-04-08 A | 2026-05-10 A | B6.33 05 13.115, B1.1.31 23 23.42 | 100% |  |
| B6.33 42 11.012 |  | Sand Bedding | 24.12d | 2026-04-15 A | 2026-05-13 A | B6.33 42 11.011 | 100% |  |
| B6.33 42 11.013 |  | Pipe Laying (71.16% Completed) | 126d | 2026-04-18 A | 2026-09-15 A | B6.33 42 11.012 | 100% |  |
| B6.33 42 11.014 |  | Embedment & Test (71.16% Completed) | 124d | 2026-04-20 A | 2026-09-15 A | B6.33 42 11.013 FF | 100% |  |
| B6.33 42 11.015 |  | Backfilling & Warrning Tape (71.16% Completed) | 122d | 2026-04-22 A | 2026-09-15 A | B6.33 42 11.014 FF, B6.33 42 11.01-134 SS, B6.33 42 11.31-1 9 SS | 100% |  |
| B6.33 42 11.013_R |  | Pipe Laying(Rem) | 2.28d | 2026-09-21 A | 2026-10-08 | B6.33 42 11.012, B6.33 42 11.013 | 46% | 48.84d |
| B6.33 42 11.014_R |  | Embedment & Test(Rem) | 2.56d | 2026-09-26 A | 2026-10-08 | B6.33 42 11.013_R FF, B6.33 42 11.014 | 46% | 48.69d |
| B6.33 42 11.015_R |  | Backfilling & Warrning Tape(Rem) | 2.56d | 2026-10-11 | 2026-10-13 | B6.33 42 11.014_R FF, B6.33 42 11.01-134_R SS, B6.33 42 11.31-1 9_R SS, B6.33 42 11.015 |  | 44.4d |
|  | 1 | **Depth From 1.5m to 2.5m** |  | 2026-04-04 | 2026-10-24 |  |  |  |
| B6.33 42 11.02.1 |  | Excavation | 30.26d | 2026-04-04 A | 2026-05-09 A | B6.33 42 11.011 | 100% |  |
| B6.33 42 11.02.2 |  | Sand Bedding | 26.26d | 2026-04-11 A | 2026-05-11 A | B6.33 42 11.02.1 | 100% |  |
| B6.33 42 11.02.3 |  | Pipe Laying | 22.26d | 2026-04-18 A | 2026-05-13 A | B6.33 42 11.02.2 | 100% |  |

| ID | WBS | Task | Duration | Start | Finish | Predecessors | Complete | Total float |
| --- | --- | --- | --- | --- | --- | --- | --- | --- |
| B6.33 42 11.02.4 |  | Embedment & Test (69.15% Completed) | 123d | 2026-04-21 A | 2026-09-15 A | B6.33 42 11.02.3 | 100% |  |
| B6.33 42 11.02.5 |  | Backfilling & Warrning Tape (69.15% Completed) | 122d | 2026-04-22 A | 2026-09-15 A | B6.33 42 11.01-1.42, B6.33 42 11.02.4 FF | 100% |  |
| B6.33 42 11.02.4_R |  | Embedment & Test(Rem) | 2.84d | 2026-10-13 | 2026-10-17 | B6.33 42 11.02.3, B6.33 42 11.02.4, B6.33 42 11.015_R |  | 44.4d |
| B6.33 42 11.02.5_R |  | Backfilling & Warrning Tape(Rem) | 4d | 2026-10-19 | 2026-10-24 | B6.33 42 11.01-1.42, B6.33 42 11.02.4_R FF, B6.33 42 11.02.5, B6.33 42 11.02.4_R, B6.33 42 11.13.105_R, B6.33 05 39.01.3167_R |  | 42.8d |
|  | ?500 | **?500** |  | 2026-04-06 | 2026-10-11 |  |  |  |
|  | 3 | **Depth From 0.0m to 1.5m** |  | 2026-04-06 | 2026-10-11 |  |  |  |
| B6.33 42 11.361020 |  | Excavation | 24.26d | 2026-04-06 A | 2026-05-04 A | B6.33 42 11.02.1 | 100% |  |
| B6.33 42 11.361030 |  | Sand Bedding | 20.26d | 2026-04-13 A | 2026-05-06 A | B6.33 42 11.361020 | 100% |  |
| B6.33 42 11.361040 |  | Pipe Laying | 17.26d | 2026-04-20 A | 2026-05-10 A | B6.33 42 11.361030 | 100% |  |
| B6.33 42 11.361050 |  | Embedment & Test | 16.26d | 2026-04-22 A | 2026-05-11 A | B6.33 42 11.361040 | 100% |  |
| B6.33 42 11.361060 |  | Backfilling & Warrning Tape (69.15% Completed) | 118d | 2026-04-27 A | 2026-09-15 A | B6.33 42 11.361050 | 100% |  |
| B6.33 42 11.361060_R |  | Backfilling & Warrning Tape(Rem) | 3.12d | 2026-10-07 | 2026-10-11 | B6.33 42 11.361050, B6.33 42 11.361060 |  | 49.8d |
|  | ?600 | **?600** |  | 2026-04-07 | 2026-10-10 |  |  |  |
|  | 3 | **Depth From 0.0m to 1.5m** |  | 2026-04-07 | 2026-10-10 |  |  |  |
| B6.33 42 11.361070 |  | Excavation (70.65% Completed) | 135d | 2026-04-07 A | 2026-09-15 A | B6.33 42 11.361020 | 100% |  |
| B6.33 42 11.361080 |  | Sand Bedding (70.65% Completed) | 129d | 2026-04-14 A | 2026-09-15 A | B6.33 42 11.361070 FF | 100% |  |
| B6.33 42 11.361090 |  | Pipe Laying (70.65% Completed) | 123d | 2026-04-21 A | 2026-09-15 A | B6.33 42 11.361080 FF | 100% |  |
| B6.33 42 11.361100 |  | Embedment & Test (70.65% Completed) | 122d | 2026-04-22 A | 2026-09-15 A | B6.33 42 11.361090 FF | 100% |  |
| B6.33 42 11.361110 |  | Backfilling & Warrning Tape (70.65% Completed) | 117d | 2026-04-28 A | 2026-09-15 A | B6.33 42 11.361100 FF | 100% |  |
| B6.33 42 11.361070_R |  | Excavation(Rem) | 2.28d | 2026-10-07 | 2026-10-10 | B6.33 42 11.361020, B6.33 42 11.361070 |  | 99.36d |
| B6.33 42 11.361080_R |  | Sand Bedding(Rem) | 2.28d | 2026-10-07 | 2026-10-10 | B6.33 42 11.361070_R FF, B6.33 42 11.361080 |  | 99.36d |
| B6.33 42 11.361090_R |  | Pipe Laying(Rem) | 2.28d | 2026-10-07 | 2026-10-10 | B6.33 42 11.361080_R FF, B6.33 42 11.361090 |  | 99.36d |
| B6.33 42 11.361100_R |  | Embedment & Test(Rem) | 2.56d | 2026-10-07 | 2026-10-10 | B6.33 42 11.361090_R FF, B6.33 42 11.361100 |  | 99.08d |
| B6.33 42 11.361110_R |  | Backfilling & Warrning Tape(Rem) | 2.56d | 2026-10-07 | 2026-10-10 | B6.33 42 11.361100_R FF, B6.33 42 11.361110 |  | 99.08d |
|  | ?700 | **?700** |  | 2026-04-02 | 2026-10-10 |  |  |  |
|  | 3 | **Depth From 0.0m to 1.5m** |  | 2026-04-02 | 2026-10-10 |  |  |  |
| B6.33 42 11.361120 |  | Excavation (65.09% Completed) | 139d | 2026-04-02 A | 2026-09-15 A | B6.33 42 11.361070 SS | 100% |  |
| B6.33 42 11.361130 |  | Sand Bedding (65.09% Completed) | 133d | 2026-04-09 A | 2026-09-15 A | B6.33 42 11.361120 FF | 100% |  |
| B6.33 42 11.361140 |  | Pipe Laying (65.09% Completed) | 127d | 2026-04-16 A | 2026-09-15 A | B6.33 42 11.361130 FF | 100% |  |
| B6.33 42 11.361150 |  | Embedment & Test (65.09% Completed) | 121d | 2026-04-23 A | 2026-09-15 A | B6.33 42 11.361140 FF | 100% |  |
| B6.33 42 11.361160 |  | Backfilling & Warrning Tape (65.09% Completed) | 115d | 2026-04-30 A | 2026-09-15 A | B6.33 42 11.361150 FF, B6.33 05 39.01.3467 SS | 100% |  |
| B6.33 42 11.361120_R |  | Excavation(Rem) | 2.28d | 2026-09-22 A | 2026-10-08 | B6.33 42 11.361070_R SS, B6.33 42 11.361120 | 49% | 51.19d |
| B6.33 42 11.361130_R |  | Sand Bedding(Rem) | 2.28d | 2026-09-26 A | 2026-10-08 | B6.33 42 11.361120_R FF, B6.33 42 11.361130 | 49% | 51.19d |
| B6.33 42 11.361140_R |  | Pipe Laying(Rem) | 2.28d | 2026-09-27 A | 2026-10-08 | B6.33 42 11.361130_R FF, B6.33 42 11.361140 | 49% | 51.19d |
| B6.33 42 11.361150_R |  | Embedment & Test(Rem) | 2.56d | 2026-10-01 A | 2026-10-08 | B6.33 42 11.361140_R FF, B6.33 42 11.361150 | 49% | 51.05d |
| B6.33 42 11.361160_R |  | Backfilling & Warrning Tape(Rem) | 2.56d | 2026-10-07 | 2026-10-10 | B6.33 42 11.361150_R FF, B6.33 05 39.01.3467_R SS, B6.33 42 11.361160 |  | 49.8d |
|  | ?800 | **?800** |  | 2026-04-01 | 2026-10-13 |  |  |  |
|  | 3 | **Depth From 0.0m to 1.5m** |  | 2026-04-01 | 2026-10-13 |  |  |  |
| B6.33 42 11.361170 |  | Excavation (65.09% Completed) | 140d | 2026-04-01 A | 2026-09-15 A | B6.33 42 11.361120 SS | 100% |  |
| B6.33 42 11.361180 |  | Sand Bedding (65.09% Completed) | 134d | 2026-04-08 A | 2026-09-15 A | B6.33 42 11.361170 FF | 100% |  |
| B6.33 42 11.361190 |  | Pipe Laying (65.09% Completed) | 128d | 2026-04-15 A | 2026-09-15 A | B6.33 42 11.361180 FF | 100% |  |
| B6.33 42 11.361200 |  | Embedment & Test (65.09% Completed) | 126d | 2026-04-18 A | 2026-09-15 A | B6.33 42 11.361190 FF | 100% |  |
| B6.33 42 11.361210 |  | Backfilling & Warrning Tape (65.09% Completed) | 116d | 2026-04-29 A | 2026-09-15 A | B6.33 42 11.01-1.44, B6.33 42 11.361200 FF | 100% |  |
| B6.33 42 11.361170_R |  | Excavation(Rem) | 2.28d | 2026-09-06 A | 2026-10-08 | B6.33 42 11.361120_R SS, B6.33 42 11.361170 | 49% | 103.03d |
| B6.33 42 11.361180_R |  | Sand Bedding(Rem) | 2.28d | 2026-09-10 A | 2026-10-08 | B6.33 42 11.361170_R FF, B6.33 42 11.361180 | 49% | 103.03d |
| B6.33 42 11.361190_R |  | Pipe Laying(Rem) | 2.28d | 2026-09-13 A | 2026-10-08 | B6.33 42 11.361180_R FF, B6.33 42 11.361190 | 49% | 103.03d |
| B6.33 42 11.361200_R |  | Embedment & Test(Rem) | 2.56d | 2026-09-15 A | 2026-10-08 | B6.33 42 11.361190_R FF, B6.33 42 11.361200 | 49% | 102.89d |
| B6.33 42 11.361210_R |  | Backfilling & Warrning Tape(Rem) | 2.56d | 2026-10-10 | 2026-10-13 | B6.33 42 11.01-1.44, B6.33 42 11.361200_R FF, B6.33 42 11.361210, B6.33 42 11.361110_R |  | 99.08d |
|  | 4 | **Depth From 1.5m to 2.5m** |  | 2026-04-12 | 2026-10-06 |  |  |  |
| B6.33 42 11.13.1 |  | Excavation (70.34% Completed) | 131d | 2026-04-12 A | 2026-09-15 A | B6.33 42 11.02.1 | 100% |  |
| B6.33 42 11.13.2 |  | Sand Bedding (70.34% Completed) | 125d | 2026-04-19 A | 2026-09-15 A | B6.33 42 11.13.1 FF | 100% |  |
| B6.33 42 11.13.3 |  | Pipe Laying (70.34% Completed) | 122d | 2026-04-22 A | 2026-09-15 A | B6.33 42 11.13.2 FF | 100% |  |
| B6.33 42 11.13.4 |  | Embedment & Test (70.34% Completed) | 120d | 2026-04-25 A | 2026-09-15 A | B6.33 42 11.13.3 FF | 100% |  |
| B6.33 42 11.13.5 |  | Backfilling & Warrning Tape (70.34% Completed) | 117d | 2026-04-28 A | 2026-09-15 A | B6.33 42 11.13.4 FF | 100% |  |
| B6.33 42 11.13.1_R |  | Excavation(Rem) | 2.28d | 2026-09-05 A | 2026-09-19 A | B6.33 42 11.02.1, B6.33 42 11.13.1 | 100% |  |
| B6.33 42 11.13.2_R |  | Sand Bedding(Rem) | 2.28d | 2026-09-12 A | 2026-09-24 A | B6.33 42 11.13.1_R FF, B6.33 42 11.13.2 | 100% |  |
| B6.33 42 11.13.3_R |  | Pipe Laying(Rem) | 2.28d | 2026-09-14 A | 2026-10-01 A | B6.33 42 11.13.2_R FF, B6.33 42 11.13.3 | 100% |  |
| B6.33 42 11.13.4_R |  | Embedment & Test(Rem) | 2.84d | 2026-09-26 A | 2026-10-05 A | B6.33 42 11.13.3_R FF, B6.33 42 11.13.4 | 100% |  |
| B6.33 42 11.13.5_R |  | Backfilling & Warrning Tape(Rem) | 3.12d | 2026-09-26 A | 2026-10-06 A | B6.33 42 11.13.4_R FF, B6.33 42 11.13.5 | 100% |  |
|  | ?900 | **?900** |  | 2026-04-01 | 2026-10-19 |  |  |  |
|  | 3 | **Depth From 0.0m to 1.5m** |  | 2026-04-06 | 2026-10-15 |  |  |  |
| B6.33 42 11.361320 |  | Excavation (70.34% Completed) | 136d | 2026-04-06 A | 2026-09-15 A | B6.33 42 11.361270 SS | 100% |  |
| B6.33 42 11.361330 |  | Sand Bedding (70.34% Completed) | 125d | 2026-04-19 A | 2026-09-15 A | B6.33 42 11.361320 FF | 100% |  |
| B6.33 42 11.361340 |  | Pipe Laying (70.34% Completed) | 122d | 2026-04-22 A | 2026-09-15 A | B6.33 42 11.361330 FF | 100% |  |
| B6.33 42 11.361350 |  | Embedment & Test (70.34% Completed) | 120d | 2026-04-25 A | 2026-09-15 A | B6.33 42 11.361340 FF | 100% |  |
| B6.33 42 11.361360 |  | Backfilling & Warrning Tape (70.34% Completed) | 117d | 2026-04-28 A | 2026-09-15 A | B6.33 42 11.361350 FF, B6.33 42 11.361260 SS | 100% |  |
| B6.33 42 11.361320_R |  | Excavation(Rem) | 2.28d | 2026-10-07 | 2026-10-10 | B6.33 42 11.361270_R SS, B6.33 42 11.361320 |  | 50.08d |
| B6.33 42 11.361330_R |  | Sand Bedding(Rem) | 2.28d | 2026-10-07 | 2026-10-10 | B6.33 42 11.361320_R FF, B6.33 42 11.361330 |  | 104.48d |
| B6.33 42 11.361340_R |  | Pipe Laying(Rem) | 2.28d | 2026-10-07 | 2026-10-10 | B6.33 42 11.361330_R FF, B6.33 42 11.361340 |  | 104.48d |
| B6.33 42 11.361350_R |  | Embedment & Test(Rem) | 2.56d | 2026-10-07 | 2026-10-10 | B6.33 42 11.361340_R FF, B6.33 42 11.361350 |  | 104.2d |

| ID | WBS | Task | Duration | Start | Finish | Predecessors | Complete | Total float |
| --- | --- | --- | --- | --- | --- | --- | --- | --- |
| B6.33 42 11.361360_R |  | Backfilling & Warrning Tape(Rem) | 2.56d | 2026-10-13 | 2026-10-15 | B6.33 42 11.361350_R FF, B6.33 42 11.361260_R SS, B6.33 42 11.361360 |  | 99.08d |
|  | 4 | **Depth From 1.5m to 2.5m** |  | 2026-04-01 | 2026-10-19 |  |  |  |
| B6.33 42 11.13.15 |  | Excavation | 31.23d | 2026-04-01 A | 2026-05-07 A | B1.2.31 23 23.01.3 | 100% |  |
| B6.33 42 11.13.25 |  | Sand Bedding | 27.23d | 2026-04-08 A | 2026-05-10 A | B6.33 42 11.13.15 | 100% |  |
| B6.33 42 11.13.35 |  | Pipe Laying | 22.23d | 2026-04-15 A | 2026-05-11 A | B6.33 42 11.13.25 | 100% |  |
| B6.33 42 11.13.45 |  | Embedment & Test | 25.23d | 2026-04-18 A | 2026-05-17 A | B6.33 42 11.13.35 | 100% |  |
| B6.33 42 11.13.55 |  | Backfilling & Warrning Tape (70.34% Completed) | 118d | 2026-04-27 A | 2026-09-15 A | B6.33 42 11.13.45, B6.33 42 11.361160 SS, B6.33 42 11.361060 SS | 100% |  |
| B6.33 42 11.13.55_R |  | Backfilling & Warrning Tape(Rem) | 3.12d | 2026-10-15 | 2026-10-19 | B6.33 42 11.13.45, B6.33 42 11.361160_R SS, B6.33 42 11.361060_R SS, B6.33 42 11.13.55, B6.33 05 39.01.3417_R |  | 42.8d |
|  | ?1000 | **?1000** |  | 2026-04-07 | 2026-10-18 |  |  |  |
|  | 3 | **Depth From 0.0m to 1.5m** |  | 2026-04-07 | 2026-10-18 |  |  |  |
| B6.33 42 11.361370 |  | Excavation (69.64% Completed) | 135d | 2026-04-07 A | 2026-09-15 A | B6.33 42 11.361320 SS | 100% |  |
| B6.33 42 11.361380 |  | Sand Bedding (69.64% Completed) | 128d | 2026-04-15 A | 2026-09-15 A | B6.33 42 11.361370 FF | 100% |  |
| B6.33 42 11.361400 |  | Embedment & Test (69.64% Completed) | 122d | 2026-04-22 A | 2026-09-15 A | B6.33 42 11.361390 FF | 100% |  |
| B6.33 42 11.361390 |  | Pipe Laying (69.64% Completed) | 121d | 2026-04-23 A | 2026-09-15 A | B6.33 42 11.361380 FF | 100% |  |
| B6.33 42 11.361410 |  | Backfilling & Warrning Tape (69.64% Completed) | 116d | 2026-04-29 A | 2026-09-15 A | B6.33 42 11.361400 FF, B6.33 42 11.13.55 SS | 100% |  |
| B6.33 42 11.361370_R |  | Excavation(Rem) | 2.28d | 2026-10-07 | 2026-10-10 | B6.33 42 11.361320_R SS, B6.33 42 11.361370 |  | 50.08d |
| B6.33 42 11.361380_R |  | Sand Bedding(Rem) | 2.28d | 2026-10-07 | 2026-10-10 | B6.33 42 11.361370_R FF, B6.33 42 11.361380 |  | 50.08d |
| B6.33 42 11.361390_R |  | Pipe Laying(Rem) | 2.28d | 2026-10-07 | 2026-10-10 | B6.33 42 11.361380_R FF, B6.33 42 11.361390 |  | 50.08d |
| B6.33 42 11.361400_R |  | Embedment & Test(Rem) | 2.56d | 2026-10-07 | 2026-10-10 | B6.33 42 11.361390_R FF, B6.33 42 11.361400 |  | 49.8d |
| B6.33 42 11.361410_R |  | Backfilling & Warrning Tape(Rem) | 2.56d | 2026-10-15 | 2026-10-18 | B6.33 42 11.361400_R FF, B6.33 42 11.13.55_R SS, B6.33 42 11.361410 |  | 42.8d |
|  | ?1100 | **?1100** |  | 2026-04-04 | 2026-10-19 |  |  |  |
|  | 3 | **Depth From 0.0m to 1.5m** |  | 2026-04-04 | 2026-10-15 |  |  |  |
| B6.33 42 11.361220 |  | Excavation (69.04% Completed) | 138d | 2026-04-04 A | 2026-09-15 A | B6.33 42 11.13.15 | 100% |  |
| B6.33 42 11.361230 |  | Sand Bedding (69.04% Completed) | 133d | 2026-04-09 A | 2026-09-15 A | B6.33 42 11.361220 FF | 100% |  |
| B6.33 42 11.361240 |  | Pipe Laying (69.04% Completed) | 127d | 2026-04-16 A | 2026-09-15 A | B6.33 42 11.361230 FF | 100% |  |
| B6.33 42 11.361250 |  | Embedment & Test (69.04% Completed) | 122d | 2026-04-22 A | 2026-09-15 A | B6.33 42 11.361240 FF | 100% |  |
| B6.33 42 11.361260 |  | Backfilling & Warrning Tape (69.04% Completed) | 117d | 2026-04-28 A | 2026-09-15 A | B6.33 42 11.361250 FF, B6.33 42 11.13.5 SS | 100% |  |
| B6.33 42 11.361220_R |  | Excavation(Rem) | 2.28d | 2026-10-07 | 2026-10-10 | B6.33 42 11.13.15, B6.33 42 11.361220 |  | 42.32d |
| B6.33 42 11.361230_R |  | Sand Bedding(Rem) | 2.28d | 2026-10-07 | 2026-10-10 | B6.33 42 11.361220_R FF, B6.33 42 11.361230 |  | 104.48d |
| B6.33 42 11.361240_R |  | Pipe Laying(Rem) | 2.28d | 2026-10-07 | 2026-10-10 | B6.33 42 11.361230_R FF, B6.33 42 11.361240 |  | 104.48d |
| B6.33 42 11.361250_R |  | Embedment & Test(Rem) | 2.56d | 2026-10-07 | 2026-10-10 | B6.33 42 11.361240_R FF, B6.33 42 11.361250 |  | 104.2d |
| B6.33 42 11.361260_R |  | Backfilling & Warrning Tape(Rem) | 2.56d | 2026-10-13 | 2026-10-15 | B6.33 42 11.361250_R FF, B6.33 42 11.13.5_R SS, B6.33 42 11.361260, B6.33 42 11.361210_R |  | 99.08d |
|  | 4 | **Depth From 1.5m to 2.5m** |  | 2026-04-07 | 2026-10-19 |  |  |  |
| B6.33 42 11.13.65 |  | Excavation | 26.18d | 2026-04-07 A | 2026-05-07 A | B1.2.31 23 23.01.3 | 100% |  |
| B6.33 42 11.13.75 |  | Sand Bedding | 25.18d | 2026-04-11 A | 2026-05-10 A | B6.33 42 11.13.65 | 100% |  |
| B6.33 42 11.13.85 |  | Pipe Laying | 25.18d | 2026-04-13 A | 2026-05-12 A | B6.33 42 11.13.75 | 100% |  |
| B6.33 42 11.13.95 |  | Embedment & Test | 24.35d | 2026-04-16 A | 2026-05-14 A | B6.33 42 11.13.85 | 100% |  |
| B6.33 42 11.13.105 |  | Backfilling & Warrning Tape (69.04% Completed) | 125d | 2026-04-19 A | 2026-09-15 A | B6.33 42 11.13.95, B6.33 42 11.361410 SS, B6.33 42 11.361310 SS | 100% |  |
| B6.33 42 11.13.105_R |  | Backfilling & Warrning Tape(Rem) | 3.12d | 2026-10-15 | 2026-10-19 | B6.33 42 11.13.95, B6.33 42 11.361410_R SS, B6.33 42 11.361310_R SS, B6.33 42 11.13.105 |  | 42.8d |
|  | ?1200 | **?1200** |  | 2026-04-01 | 2026-10-15 |  |  |  |
|  | 3 | **Depth From 0.0m to 1.5m** |  | 2026-04-01 | 2026-10-10 |  |  |  |
| B6.33 42 11.361270 |  | Excavation (53.98% Completed) | 140d | 2026-04-01 A | 2026-09-15 A | B6.33 42 11.361220 SS | 100% |  |
| B6.33 42 11.361280 |  | Sand Bedding (59.54% Completed) | 134d | 2026-04-08 A | 2026-09-15 A | B6.33 42 11.361270 FF | 100% |  |
| B6.33 42 11.361290 |  | Pipe Laying (53.87% Completed) | 128d | 2026-04-15 A | 2026-09-15 A | B6.33 42 11.361280 FF | 100% |  |
| B6.33 42 11.361300 |  | Embedment & Test (53.87% Completed) | 126d | 2026-04-18 A | 2026-09-15 A | B6.33 42 11.361290 FF | 100% |  |
| B6.33 42 11.361310 |  | Backfilling & Warrning Tape (53.87% Completed) | 119d | 2026-04-26 A | 2026-09-15 A | B6.33 42 11.361300 FF | 100% |  |
| B6.33 42 11.361270_R |  | Excavation(Rem) | 2.28d | 2026-10-07 | 2026-10-10 | B6.33 42 11.361220_R SS, B6.33 42 11.361270 |  | 50.08d |
| B6.33 42 11.361280_R |  | Sand Bedding(Rem) | 2.28d | 2026-10-07 | 2026-10-10 | B6.33 42 11.361270_R FF, B6.33 42 11.361280 |  | 50.36d |
| B6.33 42 11.361290_R |  | Pipe Laying(Rem) | 2.28d | 2026-10-07 | 2026-10-10 | B6.33 42 11.361280_R FF, B6.33 42 11.361290 |  | 50.36d |
| B6.33 42 11.361300_R |  | Embedment & Test(Rem) | 2.56d | 2026-10-07 | 2026-10-10 | B6.33 42 11.361290_R FF, B6.33 42 11.361300 |  | 50.08d |
| B6.33 42 11.361310_R |  | Backfilling & Warrning Tape(Rem) | 2.84d | 2026-10-07 | 2026-10-10 | B6.33 42 11.361300_R FF, B6.33 42 11.361310 |  | 49.8d |
|  | 4 | **Depth From 1.5m to 2.5m** |  | 2026-04-07 | 2026-10-15 |  |  |  |
| B6.33 42 11.13.115 |  | Excavation (70.34% Completed) | 135d | 2026-04-07 A | 2026-09-15 A | B6.33 42 11.13.65 | 100% |  |
| B6.33 42 11.13.125 |  | Sand Bedding (70.34% Completed) | 128d | 2026-04-15 A | 2026-09-15 A | B6.33 42 11.13.115 FF | 100% |  |
| B6.33 42 11.13.135 |  | Pipe Laying (70.34% Completed) | 126d | 2026-04-18 A | 2026-09-15 A | B6.33 42 11.13.125 FF | 100% |  |
| B6.33 42 11.13.145 |  | Embedment & Test (70.34% Completed) | 122d | 2026-04-22 A | 2026-09-15 A | B6.33 42 11.13.135 FF | 100% |  |
| B6.33 42 11.13.155 |  | Backfilling & Warrning Tape (70.34% Completed) | 118d | 2026-04-27 A | 2026-09-15 A | B6.33 42 11.13.145 FF, B6.33 42 11.03-113 SS | 100% |  |
| B6.33 42 11.13.115_R |  | Excavation(Rem) | 2.28d | 2026-09-24 A | 2026-10-08 | B6.33 42 11.13.65, B6.33 42 11.13.115 | 49% | 55.36d |
| B6.33 42 11.13.125_R |  | Sand Bedding(Rem) | 2.28d | 2026-09-26 A | 2026-10-08 | B6.33 42 11.13.115_R FF, B6.33 42 11.13.125 | 49% | 56.75d |
| B6.33 42 11.13.135_R |  | Pipe Laying(Rem) | 2.28d | 2026-09-28 A | 2026-10-08 | B6.33 42 11.13.125_R FF, B6.33 42 11.13.135 | 49% | 56.75d |
| B6.33 42 11.13.145_R |  | Embedment & Test(Rem) | 2.84d | 2026-09-30 A | 2026-10-08 | B6.33 42 11.13.135_R FF, B6.33 42 11.13.145 | 49% | 56.46d |
| B6.33 42 11.13.155_R |  | Backfilling & Warrning Tape(Rem) | 3.12d | 2026-10-11 | 2026-10-15 | B6.33 42 11.13.145_R FF, B6.33 42 11.03-113_R SS, B6.33 42 11.13.155 |  | 50.82d |
|  | ?1300 | **?1300** |  | 2026-04-07 | 2026-10-17 |  |  |  |
|  | 3 | **Depth From 0.0m to 1.5m** |  | 2026-04-07 | 2026-10-10 |  |  |  |
| B6.33 42 11.361420 |  | Excavation (70.13% Completed) | 135d | 2026-04-07 A | 2026-09-15 A | B6.33 42 11.13.115 SS | 100% |  |
| B6.33 42 11.361430 |  | Sand Bedding (70.13% Completed) | 132d | 2026-04-11 A | 2026-09-15 A | B6.33 42 11.361420 FF | 100% |  |
| B6.33 42 11.361440 |  | Pipe Laying (70.13% Completed) | 130d | 2026-04-13 A | 2026-09-15 A | B6.33 42 11.361430 FF | 100% |  |
| B6.33 42 11.361450 |  | Embedment & Test (70.13% Completed) | 127d | 2026-04-16 A | 2026-09-15 A | B6.33 42 11.361440 FF | 100% |  |
| B6.33 42 11.361460 |  | Backfilling & Warrning Tape (70.13% Completed) | 125d | 2026-04-19 A | 2026-09-15 A | B6.33 42 11.05-1.67, B6.33 42 11.361450 FF | 100% |  |
| B6.33 42 11.361420_R |  | Excavation(Rem) | 2.28d | 2026-10-07 | 2026-10-10 | B6.33 42 11.13.115_R SS, B6.33 42 11.361420 |  | 55.36d |

| ID | WBS | Task | Duration | Start | Finish | Predecessors | Complete | Total float |
| --- | --- | --- | --- | --- | --- | --- | --- | --- |
| B6.33 42 11.361430_R |  | Sand Bedding(Rem) | 2.28d | 2026-10-07 | 2026-10-10 | B6.33 42 11.361420_R FF, B6.33 42 11.361430 |  | 111.04d |
| B6.33 42 11.361440_R |  | Pipe Laying(Rem) | 2.28d | 2026-10-07 | 2026-10-10 | B6.33 42 11.361430_R FF, B6.33 42 11.361440 |  | 111.04d |
| B6.33 42 11.361450_R |  | Embedment & Test(Rem) | 2.56d | 2026-10-07 | 2026-10-10 | B6.33 42 11.361440_R FF, B6.33 42 11.361450 |  | 110.76d |
| B6.33 42 11.361460_R |  | Backfilling & Warrning Tape(Rem) | 2.84d | 2026-10-07 | 2026-10-10 | B6.33 42 11.05-1.67, B6.33 42 11.361450_R FF, B6.33 42 11.361460 |  | 110.48d |
|  | 4 | **Depth From 1.5m to 2.5m** |  | 2026-04-08 | 2026-10-17 |  |  |  |
| B6.33 42 11.13.165 |  | Excavation | 117.23d | 2026-04-08 A | 2026-08-27 A | B6.33 42 11.361420 SS+1d, B6.33 42 11.361420 FF+1d | 100% |  |
| B6.33 42 11.13.175 |  | Sand Bedding | 114.23d | 2026-04-14 A | 2026-08-30 A | B6.33 42 11.13.165 | 100% |  |
| B6.33 42 11.13.185 |  | Pipe Laying (70.34% Completed) | 124d | 2026-04-20 A | 2026-09-15 A | B6.33 42 11.13.175 | 100% |  |
| B6.33 42 11.13.195 |  | Embedment & Test (70.34% Completed) | 119d | 2026-04-26 A | 2026-09-15 A | B6.33 42 11.13.185 FF | 100% |  |
| B6.33 42 11.13.205 |  | Backfilling & Warrning Tape (70.34% Completed) | 118d | 2026-04-27 A | 2026-09-15 A | B6.33 42 11.13.195 FF, B6.33 42 11.01-1.9 SS, B6.33 42 11.05-1.69 SS, B6.33 42 11.03-115 SS | 100% |  |
| B6.33 42 11.13.185_R |  | Pipe Laying(Rem) | 2.28d | 2026-10-07 | 2026-10-10 | B6.33 42 11.13.175, B6.33 42 11.13.185 |  | 105.04d |
| B6.33 42 11.13.195_R |  | Embedment & Test(Rem) | 2.84d | 2026-10-07 | 2026-10-10 | B6.33 42 11.13.185_R FF, B6.33 42 11.13.195 |  | 104.48d |
| B6.33 42 11.13.205_R |  | Backfilling & Warrning Tape(Rem) | 3.12d | 2026-10-13 | 2026-10-17 | B6.33 42 11.13.195_R FF, B6.33 42 11.01-1.9_R SS, B6.33 42 11.05-1.69_R SS, B6.33 42 11.03-115_R SS, B6.33 42 11.13.205 |  | 99.08d |
|  | ?1400 | **?1400** |  | 2026-04-07 | 2026-10-15 |  |  |  |
|  | 3 | **Depth From 0.0m to 1.5m** |  | 2026-04-07 | 2026-10-10 |  |  |  |
| B6.33 42 11.361470 |  | Excavation (71.44% Completed) | 135d | 2026-04-07 A | 2026-09-15 A | B6.33 42 11.361420 SS | 100% |  |
| B6.33 42 11.361480 |  | Sand Bedding (71.44% Completed) | 132d | 2026-04-11 A | 2026-09-15 A | B6.33 42 11.361470 FF | 100% |  |
| B6.33 42 11.361490 |  | Pipe Laying (71.44% Completed) | 130d | 2026-04-13 A | 2026-09-15 A | B6.33 42 11.361480 FF | 100% |  |
| B6.33 42 11.361500 |  | Embedment & Test (71.44% Completed) | 127d | 2026-04-16 A | 2026-09-15 A | B6.33 42 11.361490 FF | 100% |  |
| B6.33 42 11.361510 |  | Backfilling & Warrning Tape (71.44% Completed) | 125d | 2026-04-19 A | 2026-09-15 A | B6.33 42 11.361500 FF | 100% |  |
| B6.33 42 11.361470_R |  | Excavation(Rem) | 2.28d | 2026-10-07 | 2026-10-10 | B6.33 42 11.361420_R SS, B6.33 42 11.361470 |  | 55.36d |
| B6.33 42 11.361480_R |  | Sand Bedding(Rem) | 2.28d | 2026-10-07 | 2026-10-10 | B6.33 42 11.361470_R FF, B6.33 42 11.361480 |  | 111.04d |
| B6.33 42 11.361490_R |  | Pipe Laying(Rem) | 2.28d | 2026-10-07 | 2026-10-10 | B6.33 42 11.361480_R FF, B6.33 42 11.361490 |  | 111.04d |
| B6.33 42 11.361500_R |  | Embedment & Test(Rem) | 2.56d | 2026-10-07 | 2026-10-10 | B6.33 42 11.361490_R FF, B6.33 42 11.361500 |  | 110.76d |
| B6.33 42 11.361510_R |  | Backfilling & Warrning Tape(Rem) | 2.84d | 2026-10-07 | 2026-10-10 | B6.33 42 11.361500_R FF, B6.33 42 11.361510 |  | 110.48d |
|  | 4 | **Depth From 1.5m to 2.5m** |  | 2026-04-18 | 2026-10-15 |  |  |  |
| B6.33 42 11.13.215 |  | Excavation (70.34% Completed) | 126d | 2026-04-18 A | 2026-09-15 A | B6.33 42 11.13.165 | 100% |  |
| B6.33 42 11.13.225 |  | Sand Bedding (70.34% Completed) | 121d | 2026-04-23 A | 2026-09-15 A | B6.33 42 11.13.215 FF | 100% |  |
| B6.33 42 11.13.235 |  | Pipe Laying (70.34% Completed) | 120d | 2026-04-25 A | 2026-09-15 A | B6.33 42 11.13.225 FF | 100% |  |
| B6.33 42 11.13.245 |  | Embedment & Test (70.34% Completed) | 119d | 2026-04-26 A | 2026-09-15 A | B6.33 42 11.13.235 FF | 100% |  |
| B6.33 42 11.13.255 |  | Backfilling & Warrning Tape (70.34% Completed) | 115d | 2026-04-30 A | 2026-09-15 A | B6.33 42 11.13.245 FF, B6.33 42 11.361560 SS | 100% |  |
| B6.33 42 11.13.215_R |  | Excavation(Rem) | 2.28d | 2026-10-07 | 2026-10-10 | B6.33 42 11.13.165, B6.33 42 11.13.215 |  | 55.64d |
| B6.33 42 11.13.225_R |  | Sand Bedding(Rem) | 2.28d | 2026-10-07 | 2026-10-10 | B6.33 42 11.13.215_R FF, B6.33 42 11.13.225 |  | 55.64d |
| B6.33 42 11.13.235_R |  | Pipe Laying(Rem) | 2.28d | 2026-10-07 | 2026-10-10 | B6.33 42 11.13.225_R FF, B6.33 42 11.13.235 |  | 55.64d |
| B6.33 42 11.13.245_R |  | Embedment & Test(Rem) | 2.84d | 2026-10-07 | 2026-10-10 | B6.33 42 11.13.235_R FF, B6.33 42 11.13.245 |  | 55.08d |
| B6.33 42 11.13.255_R |  | Backfilling & Warrning Tape(Rem) | 3.12d | 2026-10-11 | 2026-10-15 | B6.33 42 11.13.245_R FF, B6.33 42 11.361560_R SS, B6.33 42 11.13.255 |  | 50.82d |
|  | ?1500 | **?1500** |  | 2026-02-23 | 2026-10-14 |  |  |  |
|  | 3 | **Depth From 0.0m to 1.5m** |  | 2026-04-07 | 2026-10-14 |  |  |  |
| B6.33 42 11.361520 |  | Excavation (59.28% Completed) | 135d | 2026-04-07 A | 2026-09-15 A | B6.33 42 11.361470 SS | 100% |  |
| B6.33 42 11.361530 |  | Sand Bedding (59.28% Completed) | 132d | 2026-04-11 A | 2026-09-15 A | B6.33 42 11.361520 FF | 100% |  |
| B6.33 42 11.361540 |  | Pipe Laying (59.28% Completed) | 130d | 2026-04-13 A | 2026-09-15 A | B6.33 42 11.361530 FF | 100% |  |
| B6.33 42 11.361550 |  | Embedment & Test (59.28% Completed) | 127d | 2026-04-16 A | 2026-09-15 A | B6.33 42 11.361540 FF | 100% |  |
| B6.33 42 11.361560 |  | Backfilling & Warrning Tape (59.28% Completed) | 125d | 2026-04-19 A | 2026-09-15 A | B6.33 42 11.361550 FF, B6.33 42 11.13.155 SS | 100% |  |
| B6.33 42 11.361520_R |  | Excavation(Rem) | 2.28d | 2026-10-07 | 2026-10-10 | B6.33 42 11.361470_R SS, B6.33 42 11.361520 |  | 55.36d |
| B6.33 42 11.361530_R |  | Sand Bedding(Rem) | 2.28d | 2026-10-07 | 2026-10-10 | B6.33 42 11.361520_R FF, B6.33 42 11.361530 |  | 55.36d |
| B6.33 42 11.361540_R |  | Pipe Laying(Rem) | 2.28d | 2026-10-07 | 2026-10-10 | B6.33 42 11.361530_R FF, B6.33 42 11.361540 |  | 55.36d |
| B6.33 42 11.361550_R |  | Embedment & Test(Rem) | 2.56d | 2026-10-07 | 2026-10-10 | B6.33 42 11.361540_R FF, B6.33 42 11.361550 |  | 55.08d |
| B6.33 42 11.361560_R |  | Backfilling & Warrning Tape(Rem) | 2.84d | 2026-10-11 | 2026-10-14 | B6.33 42 11.361550_R FF, B6.33 42 11.13.155_R SS, B6.33 42 11.361560 |  | 50.82d |
|  | 4 | **Depth From 1.5m to 2.5m** |  | 2026-02-23 | 2026-03-10 |  |  |  |
| B6.33 42 11.13.265 |  | Excavation | 2d | 2026-02-23 A | 2026-02-26 A | B1.2.31 23 16.01.6 | 100% |  |
| B6.33 42 11.13.275 |  | Sand Bedding | 0.75d | 2026-02-28 A | 2026-03-01 A | B6.33 42 11.13.265 | 100% |  |
| B6.33 42 11.13.285 |  | Pipe Laying | 1.5d | 2026-03-02 A | 2026-03-04 A | B6.33 42 11.13.275, DMM2-Proc-Delv-5728 | 100% |  |
| B6.33 42 11.13.295 |  | Embedment & Test | 0.75d | 2026-03-04 A | 2026-03-05 A | B6.33 42 11.13.285 | 100% |  |
| B6.33 42 11.13.305 |  | Backfilling & Warrning Tape | 1.5d | 2026-03-08 A | 2026-03-10 A | B6.33 42 11.13.295 | 100% |  |
|  | Catch Basins | **Catch Basins** |  | 2026-06-06 | 2026-10-21 |  |  |  |
|  | Sing | **Single** |  | 2026-06-06 | 2026-10-05 |  |  |  |
| B6.33 05 40.01.130 |  | Excavation, Compaction & Vapour Barrier (75.00% Completed) | 87.84d | 2026-06-06 A | 2026-09-15 A | B6.33 42 11.361370 SS | 100% |  |
| B6.33 05 40.01.140 |  | Blinding Conc. (75.00% Completed) | 86.84d | 2026-06-07 A | 2026-09-15 A | B6.33 05 40.01.130 SS | 100% |  |
| B6.33 05 40.01.150 |  | Catch Basin Installation (75.00% Completed) | 83.84d | 2026-06-10 A | 2026-09-15 A | B6.33 05 40.01.140 SS | 100% |  |
| B6.33 05 40.01.160 |  | Backfilling, DI Frame & Grate Cover Fixing (75.00% Completed) | 75.84d | 2026-06-20 A | 2026-09-15 A | B6.33 42 11.35-12 SS, B6.33 05 39.01.2967 SS | 100% |  |
| B6.33 05 40.01.130_R |  | Excavation, Compaction & Vapour Barrier(Rem) | 2d | 2026-09-17 A | 2026-09-17 A | B6.33 42 11.361370_R SS, B6.33 05 40.01.130 | 100% |  |
| B6.33 05 40.01.140_R |  | Blinding Conc.(Rem) | 2d | 2026-09-19 A | 2026-09-27 A | B6.33 05 40.01.130_R SS, B6.33 05 40.01.140 | 100% |  |
| B6.33 05 40.01.150_R |  | Catch Basin Installation(Rem) | 2d | 2026-09-22 A | 2026-09-30 A | B6.33 05 40.01.140_R SS, B6.33 05 40.01.150 | 100% |  |
| B6.33 05 40.01.160_R |  | Backfilling, DI Frame & Grate Cover Fixing(Rem) | 2d | 2026-10-03 A | 2026-10-05 A | B6.33 42 11.35-12_R SS, B6.33 05 39.01.2967_R SS, B6.33 05 40.01.160 | 100% |  |
|  | Dou | **Double** |  | 2026-09-19 | 2026-10-21 |  |  |  |
| B6.33 05 40.01.690 |  | Excavation, Compaction & Vapour Barrier | 3d | 2026-09-19 A | 2026-09-21 A | B6.33 05 40.01.130_R | 100% |  |
| B6.33 05 40.01.700 |  | Blinding Conc. | 3d | 2026-10-07 | 2026-10-10 | B6.33 05 40.01.690 |  | 100.32d |
| B6.33 05 40.01.710 |  | Catch Basin Installation | 4d | 2026-10-11 | 2026-10-14 | B6.33 05 40.01.700 |  | 100.32d |
| B6.33 05 40.01.720 |  | Backfilling, DI Frame & Grate Cover Fixing | 6d | 2026-10-15 | 2026-10-21 | B6.33 42 11.36-12_R |  | 100.32d |
|  | UPVC | **UPVC** |  | 2026-06-07 | 2026-10-14 |  |  |  |

| ID | WBS | Task | Duration | Start | Finish | Predecessors | Complete | Total float |
| --- | --- | --- | --- | --- | --- | --- | --- | --- |
|  | UPVC300 | **?300 From 0.0 to 1.5m** |  | 2026-06-07 | 2026-10-10 |  |  |  |
| B6.33 42 11.35-11 |  | Catch Basin Opening Prep. (68.04% Completed) | 86.84d | 2026-06-07 A | 2026-09-15 A | B6.33 05 40.01.150 SS+1d | 100% |  |
| B6.33 42 11.35-12 |  | Fittings & Pipe Installation (68.04% Completed) | 86.84d | 2026-06-07 A | 2026-09-15 A | B6.33 42 11.35-11 SS | 100% |  |
| B6.33 42 11.35-11_R |  | Catch Basin Opening Prep.(Rem) | 2.09d | 2026-10-07 | 2026-10-10 | B6.33 05 40.01.150_R SS, B6.33 42 11.35-11 |  | 111.23d |
| B6.33 42 11.35-12_R |  | Fittings & Pipe Installation(Rem) | 2.09d | 2026-10-07 | 2026-10-10 | B6.33 42 11.35-11_R SS, B6.33 42 11.35-12 |  | 111.23d |
|  | UPVC3001 | **?400 From 0.0 to 1.5m** |  | 2026-06-07 | 2026-10-14 |  |  |  |
| B6.33 42 11.36-11 |  | Catch Basin Opening Prep. (68.04% Completed) | 86.84d | 2026-06-07 A | 2026-09-15 A | B6.33 05 40.01.150 FF+1d | 100% |  |
| B6.33 42 11.36-12 |  | Fittings & Pipe Installation (68.04% Completed) | 86.84d | 2026-06-07 A | 2026-09-15 A | B6.33 42 11.36-11 SS | 100% |  |
| B6.33 42 11.36-11_R |  | Catch Basin Opening Prep.(Rem) | 2d | 2026-10-13 | 2026-10-14 | B6.33 05 40.01.710 FF, B6.33 42 11.36-11 |  | 100.32d |
| B6.33 42 11.36-12_R |  | Fittings & Pipe Installation(Rem) | 2d | 2026-10-13 | 2026-10-14 | B6.33 42 11.36-11_R SS, B6.33 42 11.36-12 |  | 100.32d |
|  | Potable Water | **Potable Water Network** |  | 2026-04-03 | 2026-11-07 |  |  |  |
|  | HDPE | **HDPE Pipes** |  | 2026-04-03 | 2026-10-20 |  |  |  |
|  | ?110mm | **?110mm** |  | 2026-04-03 | 2026-10-20 |  |  |  |
|  | Depth: 0.0m - 1.5m | **Depth: 0.0m - 1.5m** |  | 2026-04-20 | 2026-10-10 |  |  |  |
| B3.33 14 13.01.01.2 |  | Sand Bedding (75.10% Completed) | 124d | 2026-04-20 A | 2026-09-15 A | B3.33 14 13.01.01.1 FF | 100% |  |
| B3.33 14 13.01.01.3 |  | Pipe Laying (72.50% Completed) | 121d | 2026-04-23 A | 2026-09-15 A | B3.33 14 13.01.01.2 FF | 100% |  |
| B3.33 14 13.01.01.4 |  | Embedment & Test (72.50% Completed) | 120d | 2026-04-25 A | 2026-09-15 A | B3.33 14 13.01.01.3 FF | 100% |  |
| B3.33 14 13.01.01.5 |  | Backfilling & Warrning Tape (72.50% Completed) | 113d | 2026-05-03 A | 2026-09-15 A | B3.33 14 13.01.01.4 FF | 100% |  |
| B3.33 14 13.01.01.1 |  | Excavation (72.50% Completed) | 100d | 2026-05-18 A | 2026-09-15 A | B6.33 42 11.361220 SS | 100% |  |
| B3.33 14 13.01.01.1_R |  | Excavation(Rem) | 3d | 2026-10-07 | 2026-10-10 | B6.33 42 11.361220_R SS, B3.33 14 13.01.01.1 |  | 42.32d |
| B3.33 14 13.01.01.2_R |  | Sand Bedding(Rem) | 3d | 2026-10-07 | 2026-10-10 | B3.33 14 13.01.01.1_R FF, B3.33 14 13.01.01.2 |  | 93.52d |
| B3.33 14 13.01.01.3_R |  | Pipe Laying(Rem) | 3d | 2026-10-07 | 2026-10-10 | B3.33 14 13.01.01.2_R FF, B3.33 14 13.01.01.3 |  | 93.52d |
| B3.33 14 13.01.01.5_R |  | Backfilling & Warrning Tape(Rem) | 2.38d | 2026-10-07 | 2026-10-10 | B3.33 14 13.01.01.4_R FF, B3.33 14 13.01.01.5 |  | 93.52d |
| B3.33 14 13.01.01.4_R |  | Embedment & Test(Rem) | 2.1d | 2026-10-07 | 2026-10-10 | B3.33 14 13.01.01.3_R FF, B3.33 14 13.01.01.4 |  | 93.52d |
|  | Depth: 1.51m - 2.5m | **Depth: 1.51m - 2.5m** |  | 2026-04-03 | 2026-10-20 |  |  |  |
| B3.33 14 13.01.02.4 |  | Embedment & Test (81.66% Completed) | 138d | 2026-04-03 A | 2026-09-15 A | B3.33 14 13.01.02.3 FF, B3.33 14 19.01.106 SS | 100% |  |
| B3.33 14 13.01.02.5 |  | Backfilling & Warrning Tape (81.66% Completed) | 134d | 2026-04-08 A | 2026-09-15 A | B3.33 14 13.01.02.4 FF | 100% |  |
| B3.33 14 13.01.02.1 |  | Excavation (81.66% Completed) | 124d | 2026-04-20 A | 2026-09-15 A | B3.33 14 13.01.01.1 SS | 100% |  |
| B3.33 14 13.01.02.2 |  | Sand Bedding (81.66% Completed) | 121d | 2026-04-23 A | 2026-09-15 A | B3.33 14 13.01.02.1 FF | 100% |  |
| B3.33 14 13.01.02.3 |  | Pipe Laying (81.66% Completed) | 120d | 2026-04-25 A | 2026-09-15 A | B3.33 14 13.01.02.2 FF | 100% |  |
| B3.33 14 13.01.02.1_R |  | Excavation(Rem) | 3d | 2026-10-07 | 2026-10-10 | B3.33 14 13.01.01.1_R SS, B3.33 14 13.01.02.1 |  | 42.32d |
| B3.33 14 13.01.02.2_R |  | Sand Bedding(Rem) | 3d | 2026-10-07 | 2026-10-10 | B3.33 14 13.01.02.1_R FF, B3.33 14 13.01.02.2 |  | 99.32d |
| B3.33 14 13.01.02.3_R |  | Pipe Laying(Rem) | 3d | 2026-10-07 | 2026-10-10 | B3.33 14 13.01.02.2_R FF, B3.33 14 13.01.02.3 |  | 99.32d |
| B3.33 14 13.01.02.4_R |  | Embedment & Test(Rem) | 3d | 2026-10-07 | 2026-10-10 | B3.33 14 13.01.02.3_R FF, B3.33 14 19.01.106_R SS, B3.33 14 13.01.02.4 |  | 102.32d |
| B3.33 14 13.01.02.5_R |  | Backfilling & Warrning Tape(Rem) | 3d | 2026-10-17 | 2026-10-20 | B3.33 14 19.01.107 FF, B3.33 14 13.01.02.4_R FF, B3.33 14 13.01.02.5, B3.33 14 11.01.025_R |  | 93.52d |
|  | Valves & Chambers | **Valves & Chambers** |  | 2026-05-01 | 2026-11-07 |  |  |  |
|  | GV | **Gate Valves** |  | 2026-05-01 | 2026-10-13 |  |  |  |
|  | 1 | **Gate valves dia (110) mm** |  | 2026-05-01 | 2026-10-13 |  |  |  |
| B3.33 14 19.01.106 |  | Burried Isolation Valve Installation (75.00% Completed) | 114d | 2026-05-01 A | 2026-09-15 A | B3.33 14 13.01.02.3 SS | 100% |  |
| B3.33 14 19.01.106_R |  | Burried Isolation Valve Installation(Rem) | 3d | 2026-10-07 | 2026-10-10 | B3.33 14 13.01.02.3_R SS, B3.33 14 19.01.106 |  | 99.32d |
| B3.33 14 19.01.107 |  | Spindle & Surface Box | 3d | 2026-10-11 | 2026-10-13 | B3.33 14 19.01.106_R |  | 99.32d |
|  | 2 | **Air Valves** |  | 2026-10-11 | 2026-11-03 |  |  |  |
|  | 4 | **Air valves on less than 315 mm. (In Chamber)** |  | 2026-10-11 | 2026-11-03 |  |  |  |
| B3.33 05 63.02.22 |  | Land Adjustment & Compaction | 3d | 2026-10-11 | 2026-10-13 | B3.33 14 13.01.02.1_R |  | 64.32d |
| B3.33 05 63.02.20 |  | Foundations | 4d | 2026-10-14 | 2026-10-18 | B3.33 05 63.02.22 |  | 79.32d |
| B3.33 05 63.02.23 |  | Chambers Walls Conc Cast In Situ | 4d | 2026-10-19 | 2026-10-22 | B3.33 05 63.02.20 |  | 79.32d |
| B3.33 05 63.02.21 |  | Chamber Curing, Finishing & Steel Cover | 5d | 2026-10-24 | 2026-10-28 | B3.33 05 63.02.23 |  | 79.32d |
| B3.33 05 63.02.24 |  | Valve & Fitting Installation | 5d | 2026-10-29 | 2026-11-03 | B3.33 05 63.02.21 |  | 79.32d |
|  | Washout Valves | **Washout Valves** |  | 2026-10-14 | 2026-11-07 |  |  |  |
|  | 4 | **Washout valves on 110-400 mm. (In Chamber)** |  | 2026-10-14 | 2026-11-07 |  |  |  |
| B3.33 05 63.01.17 |  | Land Adjustment & Compaction | 3d | 2026-10-14 | 2026-10-17 | B3.33 05 63.02.22 |  | 64.32d |
| B3.33 05 63.01.15 |  | Foundations | 4d | 2026-10-18 | 2026-10-21 | B3.33 05 63.01.17 |  | 83.32d |
| B3.33 05 63.01.18 |  | Chambers Walls Conc Cast In Situ | 4d | 2026-10-22 | 2026-10-26 | B3.33 05 63.01.15 |  | 83.32d |
| B3.33 05 63.01.16 |  | Chamber Curing, Finishing & Steel Cover | 5d | 2026-10-27 | 2026-11-01 | B3.33 05 63.01.18 |  | 83.32d |
| B3.33 05 63.01.19 |  | Valve & Fitting Installation | 5d | 2026-11-02 | 2026-11-07 | B3.33 05 63.01.16, B3.33 14 13.01.02.5_R |  | 83.32d |
|  | Crossing | **Plots and Buildings Crossing** |  | 2026-10-18 | 2026-11-05 |  |  |  |
| B3.33 14 13.02.16 |  | Earthwork | 7d | 2026-10-18 | 2026-10-25 | B3.33 05 63.02.22, B3.33 05 63.01.17 |  | 64.32d |
| B3.33 14 13.02.17 |  | Sand Bedding | 3d | 2026-10-26 | 2026-10-28 | B3.33 14 13.02.16, B3.33 14 13.01.02 1 |  | 87.32d |
| B3.33 14 13.02.18 |  | Tee, Pipe (Crossing) Installation & Backfilling | 7d | 2026-10-29 | 2026-11-05 | B3.33 14 13.02.17, B3.33 14 13.02.33 |  | 87.32d |
|  | Fire Fighting | **Fire Fighting Network** |  | 2026-04-23 | 2026-11-18 |  |  |  |
|  | HDPE | **HDPE Pipes** |  | 2026-04-23 | 2026-11-01 |  |  |  |
|  | ?250mm | **?250mm** |  | 2026-04-23 | 2026-10-27 |  |  |  |
|  | Depth: 0.0m - 1.5m | **Depth: 0.0m - 1.5m** |  | 2026-04-23 | 2026-10-22 |  |  |  |
| B3.1. 33 14 13.01 |  | Excavation (90.00% Completed) | 121d | 2026-04-23 A | 2026-09-15 A | B3.33 14 13.01.02.1 SS, B3.33 14 13.01.01.1 SS | 100% |  |
| B3.1. 33 14 13.02 |  | Sand Bedding (90.00% Completed) | 120d | 2026-04-25 A | 2026-09-15 A | B3.1. 33 14 13.01 FF | 100% |  |
| B3.1. 33 14 13.03 |  | Pipe Laying (90.00% Completed) | 114d | 2026-05-01 A | 2026-09-15 A | B3.1. 33 14 13.02 FF | 100% |  |
| B3.1. 33 14 13.04 |  | Embedment & Test (84.00% Completed) | 107d | 2026-05-10 A | 2026-09-15 A | B3.1. 33 14 13.03 FF | 100% |  |
| B3.1. 33 14 13.05 |  | Backfilling & Warrning Tape (84.00% Completed) | 102d | 2026-05-16 A | 2026-09-15 A | B3.1. 33 14 13.04 FF | 100% |  |
| B3.1. 33 14 13.01_R |  | Excavation(Rem) | 4d | 2026-10-07 | 2026-10-11 | B3.33 14 13.01.02.1_R SS, B3.33 14 13.01.01.1_R SS, B3.1. 33 14 13.01 |  | 42.32d |
| B3.1. 33 14 13.02_R |  | Sand Bedding(Rem) | 4d | 2026-10-07 | 2026-10-11 | B3.1. 33 14 13.01_R FF, B3.1. 33 14 13.02 |  | 66.32d |

| ID | WBS | Task | Duration | Start | Finish | Predecessors | Complete | Total float |
| --- | --- | --- | --- | --- | --- | --- | --- | --- |
| B3.1. 33 14 13.03_R |  | Pipe Laying(Rem) | 4d | 2026-10-07 | 2026-10-11 | B3.1. 33 14 13.02_R FF, B3.1. 33 14 13.03 |  | 66.32d |
| B3.1. 33 14 13.04_R |  | Embedment & Test(Rem) | 4d | 2026-10-19 | 2026-10-22 | B3.33 14 19.01.122 FF, B3.1. 33 14 13.03_R FF, B3.1. 33 14 13.04 |  | 63.25d |
| B3.1. 33 14 13.05_R |  | Backfilling & Warrning Tape(Rem) | 4d | 2026-10-19 | 2026-10-22 | B3.1. 33 14 13.04_R FF, B3.1. 33 14 13.05 |  | 63.25d |
|  | Depth: 1.51m - 2.5m | **Depth: 1.51m - 2.5m** |  | 2026-04-25 | 2026-10-27 |  |  |  |
| B3.1. 33 14 13.2 |  | Excavation (90.00% Completed) | 120d | 2026-04-25 A | 2026-09-15 A | B3.1. 33 14 13.01 SS | 100% |  |
| B3.1. 33 14 13.3 |  | Sand Bedding (90.00% Completed) | 118d | 2026-04-27 A | 2026-09-15 A | B3.1. 33 14 13.2 FF | 100% |  |
| B3.1. 33 14 13.4 |  | Pipe Laying (84.00% Completed) | 113d | 2026-05-03 A | 2026-09-15 A | B3.1. 33 14 13.3 FF | 100% |  |
| B3.1. 33 14 13.5 |  | Embedment & Test (84.00% Completed) | 107d | 2026-05-10 A | 2026-09-15 A | B3.1. 33 14 13.4 FF | 100% |  |
| B3.1. 33 14 13.6 |  | Backfilling & Warrning Tape (84.00% Completed) | 102d | 2026-05-15 A | 2026-09-15 A | B3.1. 33 14 13.5 FF | 100% |  |
| B3.1. 33 14 13.2_R |  | Excavation(Rem) | 4d | 2026-10-07 | 2026-10-11 | B3.1. 33 14 13.01_R SS, B3.1. 33 14 13.2 |  | 42.32d |
| B3.1. 33 14 13.3_R |  | Sand Bedding(Rem) | 4d | 2026-10-07 | 2026-10-11 | B3.1. 33 14 13.2_R FF, B3.1. 33 14 13.3 |  | 66.32d |
| B3.1. 33 14 13.4_R |  | Pipe Laying(Rem) | 4d | 2026-10-07 | 2026-10-11 | B3.1. 33 14 13.3_R FF, B3.1. 33 14 13.4 |  | 66.32d |
| B3.1. 33 14 13.5_R |  | Embedment & Test(Rem) | 4d | 2026-10-19 | 2026-10-22 | B3.33 14 19.01.122 FF, B3.1. 33 14 13.4_R FF, B3.1. 33 14 13.5 |  | 66.37d |
| B3.1. 33 14 13.6_R |  | Backfilling & Warrning Tape(Rem) | 3.12d | 2026-10-24 | 2026-10-27 | B3.1. 33 14 13.5_R FF, B3.1. 33 14 13.6, B3.1. 33 14 13.05_R |  | 63.25d |
|  | ?355mm | **?355mm** |  | 2026-05-01 | 2026-11-01 |  |  |  |
|  | Depth: 1.51m - 2.5m | **Depth: 0.0m - 1.5m** |  | 2026-05-01 | 2026-11-01 |  |  |  |
| B3.1. 33 14 13.22 |  | Excavation (0.00% Completed) | 114d | 2026-05-01 A | 2026-09-15 A | B3.1. 33 14 13.2 SS | 100% |  |
| B3.1. 33 14 13.23 |  | Sand Bedding (0.00% Completed) | 113d | 2026-05-03 A | 2026-09-15 A | B3.1. 33 14 13.22 FF | 100% |  |
| B3.1. 33 14 13.24 |  | Pipe Laying (0.00% Completed) | 110d | 2026-05-06 A | 2026-09-15 A | B3.1. 33 14 13.23 FF | 100% |  |
| B3.1. 33 14 13.25 |  | Embedment & Test (0.00% Completed) | 107d | 2026-05-10 A | 2026-09-15 A | B3.1. 33 14 13.24 FF | 100% |  |
| B3.1. 33 14 13.26 |  | Backfilling & Warrning Tape (0.00% Completed) | 102d | 2026-05-15 A | 2026-09-15 A | B3.1. 33 14 13.25 FF | 100% |  |
| B3.1. 33 14 13.22_R |  | Excavation(Rem) | 4d | 2026-10-07 | 2026-10-11 | B3.1. 33 14 13.2_R SS, B3.1. 33 14 13.22 |  | 42.32d |
| B3.1. 33 14 13.23_R |  | Sand Bedding(Rem) | 4d | 2026-10-07 | 2026-10-11 | B3.1. 33 14 13.22_R FF, B3.1. 33 14 13.23 |  | 66.32d |
| B3.1. 33 14 13.24_R |  | Pipe Laying(Rem) | 4d | 2026-10-07 | 2026-10-11 | B3.1. 33 14 13.23_R FF, B3.1. 33 14 13.24 |  | 66.32d |
| B3.1. 33 14 13.25_R |  | Embedment & Test(Rem) | 6d | 2026-10-17 | 2026-10-22 | B3.33 14 19.01.122 FF, B3.1. 33 14 13.24_R FF, B3.1. 33 14 13.25 |  | 68.32d |
| B3.1. 33 14 13.26_R |  | Backfilling & Warrning Tape(Rem) | 7d | 2026-10-25 | 2026-11-01 | B3.33 14 19.01.125 FF, B3.1. 33 14 13.25_R FF, B3.1. 33 14 13.26 |  | 60.32d |
|  | Valves & Chambers | **Valves & Chambers** |  | 2026-10-11 | 2026-11-15 |  |  |  |
|  | GV | **Gate Valves** |  | 2026-10-19 | 2026-10-27 |  |  |  |
|  | 1 | **Gate valves dia (250) mm** |  | 2026-10-19 | 2026-10-27 |  |  |  |
| B3.33 14 19.01.122 |  | Burried Isolation Valve Installation | 4d | 2026-10-19 | 2026-10-22 | B3.1. 33 14 13.24_R, B3.1. 33 14 13.4_R, B3.1. 33 14 13.03_R, B3.33 05 63.01.34, B3.33 05 63.02.44 |  | 60.32d |
| B3.33 14 19.01.123 |  | Spindle & Surface Box | 4d | 2026-10-24 | 2026-10-27 | B3.33 14 19.01.122 |  | 60.32d |
|  | 2 | **Air Valves** |  | 2026-10-11 | 2026-11-10 |  |  |  |
|  | 4 | **Air valves on less than 315 mm. (In Chamber)** |  | 2026-10-11 | 2026-11-10 |  |  |  |
| B3.33 05 63.02.47 |  | Land Adjustment & Compaction | 4d | 2026-10-11 | 2026-10-15 | B1.2.32 11 26.01.3 |  | 50.91d |
| B3.33 05 63.02.45 |  | Foundations | 5d | 2026-10-15 | 2026-10-21 | B3.33 05 63.02.47 |  | 79.88d |
| B3.33 05 63.02.48 |  | Chambers Walls Conc Cast In Situ | 5d | 2026-10-21 | 2026-10-27 | B3.33 05 63.02.45 |  | 79.88d |
| B3.33 05 63.02.46 |  | Chamber Curing, Finishing & Steel Cover | 6d | 2026-10-27 | 2026-11-03 | B3.33 05 63.02.48, B3.1. 33 14 13-16 |  | 79.88d |
| B3.33 05 63.02.49 |  | Valve & Fitting Installation | 6d | 2026-11-03 | 2026-11-10 | B3.33 05 63.02.46, B3.33 14 19.01.fm50, B3.1. 33 14 13-20 |  | 83.88d |
|  | Washout Valves | **Washout Valves** |  | 2026-10-15 | 2026-11-15 |  |  |  |
|  | 4 | **Washout valves on 110-400 mm. (In Chamber)** |  | 2026-10-15 | 2026-11-15 |  |  |  |
| B3.33 05 63.01.37 |  | Land Adjustment & Compaction | 4d | 2026-10-15 | 2026-10-20 | B3.33 05 63.02.47 |  | 50.91d |
| B3.33 05 63.01.35 |  | Foundations | 5d | 2026-10-20 | 2026-10-26 | B3.33 05 63.01.37 |  | 50.91d |
| B3.33 05 63.01.38 |  | Chambers Walls Conc Cast In Situ | 5d | 2026-10-26 | 2026-11-01 | B3.33 05 63.01.35 |  | 50.91d |
| B3.33 05 63.01.36 |  | Chamber Curing, Finishing & Steel Cover | 6d | 2026-11-01 | 2026-11-08 | B3.33 05 63.01.38 |  | 50.91d |
| B3.33 05 63.01.39 |  | Valve & Fitting Installation | 6d | 2026-11-08 | 2026-11-15 | B3.33 05 63.01.36 |  | 50.91d |
|  | 3 | **Fire Hydrant** |  | 2026-06-08 | 2026-11-18 |  |  |  |
| B3.33 14 19.01.fh20 |  | Riser Pipe & Flanged Fittings Installation (1.00% Completed) | 85.16d | 2026-06-08 A | 2026-09-15 A | B3.33 14 19.01.fh21 FF+1d, B3.33 14 19.01.fh21 SS+1d | 100% |  |
| B3.33 14 19.01.fh19 |  | Firehydrant Fixing/Installation (1.00% Completed) | 79.16d | 2026-06-15 A | 2026-09-15 A | B3.1. 33 14 13.24 | 100% |  |
| B3.33 14 19.01.fh21 |  | Backfilling & Compaction (1.00% Completed) | 85.62d | 2026-06-27 A | 2026-09-15 A | B3.33 14 19.01.fh19 SS | 100% |  |
| B3.33 14 19.01.fh19_R |  | Firehydrant Fixing/Installation(Rem) | 4.97d | 2026-11-10 | 2026-11-16 | B3.33 14 19.01.fh20_R SS, B3.33 14 19.01.fh19 |  | 50.91d |
| B3.33 14 19.01.fh20_R |  | Riser Pipe & Flanged Fittings Installation(Rem) | 3.98d | 2026-11-10 | 2026-11-15 | B3.33 05 63.01.39 FF, B3.33 14 19.01.fh20 |  | 50.91d |
| B3.33 14 19.01.fh21_R |  | Backfilling & Compaction(Rem) | 6.95d | 2026-11-10 | 2026-11-18 | B3.33 05 63.02.59 FF, B3.33 05 63.01.54 FF, B3.33 14 19.01.fh19_R SS, B3.33 14 19.01.fh21, B3.1. 33 14 13.6_R |  | 50.91d |
|  | Dry Networks | **Dry Networks** |  | 2026-10-26 | 2026-12-06 |  |  |  |
|  | MV | **Medium Voltage Network** |  | 2026-11-02 | 2026-12-01 |  |  |  |
|  | Duct Banks | **Duct Banks** |  | 2026-11-02 | 2026-11-19 |  |  |  |
|  | 4 Way | **4 Way** |  | 2026-11-02 | 2026-11-19 |  |  |  |
| B2.33 71 00 02 43 |  | Excavation | 8d | 2026-11-02 | 2026-11-10 | B3.1. 33 14 13.26_R |  | 71.32d |
| B2.33 71 00 02 44 |  | Shuttering, Steel Fixing Incl. UPVC Pipe & Conc. Cast | 4d | 2026-11-11 | 2026-11-15 | B2.33 71 00 02 43 |  | 71.32d |
| B2.33 71 00 02 45 |  | Backfilling & Warrning Tape | 4d | 2026-11-16 | 2026-11-19 | B2.33 71 00 02 44, B2 33 73 00.01.9, B2.33 71 49.23.94 |  | 71.32d |
|  | Cables | **Cables** |  | 2026-11-18 | 2026-12-01 |  |  |  |
|  | 3C,500mm2 | **3C,500mm2** |  | 2026-11-18 | 2026-12-01 |  |  |  |
| B2.33 71 49.23.65 |  | Cable 13.8 kV Unarmored | 5d | 2026-11-18 | 2026-11-24 | B3.33 14 19.01.fh21_R |  | 50.91d |
| B2.33 71 49.23.66 |  | Straight joints cables | 3d | 2026-11-24 | 2026-11-28 | B2.33 71 49.23.65 |  | 62.91d |
| B2.33 71 49.23.67 |  | Cable Termination | 3d | 2026-11-28 | 2026-12-01 | B2.33 71 49.23.66 |  | 62.91d |
|  | Street Lighting | **Street Lighting** |  | 2026-11-24 | 2026-12-06 |  |  |  |
|  | SL Poles | **SL Poles** |  | 2026-11-24 | 2026-12-06 |  |  |  |
|  | Pole (10 M Sngl Arm) | **Pole (10 M Single Arm)** |  | 2026-11-24 | 2026-12-06 |  |  |  |
| B2.33 71 16.35 |  | Excavation | 3d | 2026-11-24 | 2026-11-28 | B2.33 71 49.23.65 |  | 50.91d |
| B2.33 71 16.38 |  | Backfilling, Grouting & Chamfering | 3d | 2026-11-26 | 2026-11-29 | B2.33 71 19 92, B2.33 71 00 02 54 |  | 62.32d |
| B2.33 71 16.36 |  | PC & RC Foundation | 3d | 2026-11-28 | 2026-12-01 | B2.33 71 16.35 |  | 50.91d |

| ID | WBS | Task | Duration | Start | Finish | Predecessors | Complete | Total float |
| --- | --- | --- | --- | --- | --- | --- | --- | --- |
| B2.33 71 16.37 |  | Lighting Poles Installation Incl power box, Cables | 2d | 2026-12-01 | 2026-12-03 | B2.33 71 16.36 |  | 50.91d |
| B2.26.56.19.2 |  | Lighting Luminares Inst | 2d | 2026-12-03 | 2026-12-06 | B2.33 71 16.37 |  | 50.91d |
|  | Earthing | **Earthing** |  | 2026-11-26 | 2026-12-02 |  |  |  |
| B2.33 71 19 23 |  | Land Adjustment | 3d | 2026-11-26 | 2026-11-29 | B2.33 71 16.38 SS |  | 62.32d |
| B2.33 71 19 24 |  | Earth Rods & Conduits | 1d | 2026-11-30 | 2026-11-30 | B2.33 71 19 23 |  | 62.32d |
| B2.33 71 19 25 |  | Backfilling | 2d | 2026-12-01 | 2026-12-02 | B2.33 71 19 24 |  | 62.32d |
|  | Telecommunication | **Telecommunication Network** |  | 2026-10-26 | 2026-11-29 |  |  |  |
|  | Ducts | **Ducts** |  | 2026-10-26 | 2026-11-29 |  |  |  |
|  | (6*50mm) | **Size (6*50mm) HDPE ducts** |  | 2026-10-26 | 2026-11-01 |  |  |  |
| B2.1.33 81 26.54 |  | Excavation | 2d | 2026-10-26 | 2026-10-27 | B2.1.33 81 26.162_R |  | 30.32d |
| B2.1.33 81 26.55 |  | HDPE Pipe, Shuttering, Steel Fixing & Conc. Cast | 2d | 2026-10-28 | 2026-10-29 | B2.1.33 81 26.54 |  | 42.32d |
| B2.1.33 81 26.56 |  | Backfilling & Warrning Tape | 2d | 2026-10-31 | 2026-11-01 | B2.1.33 81 26.55 |  | 42.32d |
|  | (6*50mm+2*32mm) | **Size (6*50mm+2*32mm) HDPE ducts** |  | 2026-10-26 | 2026-11-26 |  |  |  |
| B2.1.33 81 26.57 |  | Excavation | 2d | 2026-10-26 | 2026-10-27 | B2.1.33 81 26.54 SS |  | 30.32d |
| B2.1.33 81 26.58 |  | HDPE Pipe, Shuttering, Steel Fixing & Conc. Cast | 2d | 2026-10-28 | 2026-10-29 | B2.1.33 81 26.57 |  | 85.32d |
| B2.1.33 81 26.59 |  | Backfilling & Warrning Tape | 2d | 2026-11-25 | 2026-11-26 | B2.1.33 81 26.58, B2.1.33 81 26.104, B2.1.33 81 26.182, B2.33 71 00.277, B2.33 71 00.231 |  | 63.32d |
|  | (6*50mm+4*32mm) | **Size (6*50mm+4*32mm) HDPE ducts** |  | 2026-10-26 | 2026-11-01 |  |  |  |
| B2.1.33 81 26.60 |  | Excavation | 2d | 2026-10-26 | 2026-10-27 | B2.1.33 81 26.57 SS |  | 30.32d |
| B2.1.33 81 26.61 |  | HDPE Pipe, Shuttering, Steel Fixing & Conc. Cast | 2d | 2026-10-28 | 2026-10-29 | B2.1.33 81 26.60 |  | 86.32d |
| B2.1.33 81 26.62 |  | Backfilling & Warrning Tape | 2d | 2026-10-31 | 2026-11-01 | B2.1.33 81 26.61 |  | 86.32d |
|  | (2*32mm) | **Size (2*32mm) HDPE ducts** |  | 2026-10-26 | 2026-11-01 |  |  |  |
| B2.1.33 81 26.63 |  | Excavation | 2d | 2026-10-26 | 2026-10-27 | B2.1.33 81 26.60 SS |  | 30.32d |
| B2.1.33 81 26.64 |  | HDPE Pipe, Shuttering, Steel Fixing & Conc. Cast | 2d | 2026-10-28 | 2026-10-29 | B2.1.33 81 26.63 |  | 32.32d |
| B2.1.33 81 26.65 |  | Backfilling & Warrning Tape | 2d | 2026-10-31 | 2026-11-01 | B2.1.33 81 26.64, B2.1.02 41 00.016 |  | 32.32d |
|  | (4*32mm) | **Size (4*32mm) HDPE ducts** |  | 2026-10-28 | 2026-11-29 |  |  |  |
| B2.1.33 81 26.66 |  | Excavation | 2d | 2026-10-28 | 2026-10-29 | B2.1.33 81 26.63 |  | 30.32d |
| B2.1.33 81 26.67 |  | HDPE Pipe, Shuttering, Steel Fixing & Conc. Cast | 2d | 2026-10-31 | 2026-11-01 | B2.1.33 81 26.66 |  | 85.32d |
| B2.1.33 81 26.68 |  | Backfilling & Warrning Tape | 2d | 2026-11-28 | 2026-11-29 | B2.1.33 81 26.67, B2.1.33 81 26.59 |  | 63.32d |
|  | Manholes | **Manholes** |  | 2026-10-28 | 2026-11-03 |  |  |  |
|  | Manhole Type 1 | **Manhole Type 1** |  | 2026-10-28 | 2026-11-03 |  |  |  |
| B2.31 23 00.603 |  | Excavation | 2d | 2026-10-28 | 2026-10-29 | B2.1.33 81 26.66 SS |  | 30.32d |
| B2.33 71 00.214 |  | Manhole Installation | 2d | 2026-10-31 | 2026-11-01 | B2.31 23 00.603 |  | 30.32d |
| B2.33 71 00.215 |  | Backfilling & Warrning Tape | 2d | 2026-11-02 | 2026-11-03 | B2.33 71 00.214 |  | 30.32d |
|  | Manhole Type 2 | **Manhole Type 2** |  | 2026-10-28 | 2026-11-03 |  |  |  |
| B2.31 23 00.604 |  | Excavation | 2d | 2026-10-28 | 2026-10-29 | B2.31 23 00.603 SS |  | 30.32d |
| B2.33 71 00.216 |  | Manhole Installation | 2d | 2026-10-31 | 2026-11-01 | B2.31 23 00.604 |  | 84.32d |
| B2.33 71 00.217 |  | Backfilling & Warrning Tape | 2d | 2026-11-02 | 2026-11-03 | B2.33 71 00.216 |  | 84.32d |
|  | Crossing Ducts | **Road Crossing Ducts** |  | 2026-10-31 | 2026-11-05 |  |  |  |
|  | 1 | **Size (6*50mm) HDPE** |  | 2026-10-31 | 2026-11-05 |  |  |  |
| B2.31 23 00.605 |  | Excavation | 2d | 2026-10-31 | 2026-11-01 | B2.31 23 00.604, B2.1.33 81 26.66 |  | 30.32d |
| B2.33 71 00.218 |  | Shuttering, Steel Fixing Incl. UPVC Pipe & Conc. Cast | 2d | 2026-11-02 | 2026-11-03 | B2.31 23 00.605 |  | 30.32d |
| B2.33 71 00.219 |  | Backfilling & Warrning Tape | 2d | 2026-11-04 | 2026-11-05 | B2.33 71 00.218, B2.1.33 81 26.65, B2.33 71 00.215 |  | 30.32d |
|  | Earth & Road Works | **Earth & Road Works** |  | 2025-12-07 | 2026-12-16 |  |  |  |
|  | Earth Works | **Earth Works** |  | 2025-12-07 | 2026-04-07 |  |  |  |
| B1.2.31 23 16.01.3 |  | Roadway Excavation | 3d | 2025-12-07 A | 2025-12-10 A | DMM2-Eng-MS-78 | 100% |  |
| B1.2.31 23 23.01.3 |  | Embankment Backfiling | 84.84d | 2025-12-16 A | 2026-04-07 A | B1.2.31 23 16.01.3 | 100% |  |
|  | Earth Layers | **Earth Layers** |  | 2026-04-29 | 2026-10-08 |  |  |  |
| B1.2.32 11 13.01.3 |  | Subgrade (71.00% Completed) | 115.97d | 2026-04-29 A | 2026-09-15 A | B1.2.31 23 23.01.3 | 100% |  |
| B1.2.32 11 23.01.3 |  | Aggregate Base Course (28.00% Completed) | 71.16d | 2026-06-24 A | 2026-09-15 A | B1.2.32 11 13.01.3 SS | 100% |  |
| B1.2.32 11 13.01.3_R |  | Subgrade(Rem) | 2d | 2026-10-07 | 2026-10-08 | B1.2.31 23 23.01.3, B1.2.32 11 13.01.3 |  | 49.88d |
| B1.2.32 11 23.01.3_R |  | Aggregate Base Course(Rem) | 1.44d | 2026-10-07 | 2026-10-08 | B1.2.32 11 13.01.3_R SS, B1.2.32 11 23.01.3 |  | 49.88d |
|  | Interlock | **Interlock** |  | 2026-12-14 | 2026-12-16 |  |  |  |
| B1.2.32 14 13.13.3 |  | 60mm thick - Interlocking Block Pavers | 2d | 2026-12-14 | 2026-12-16 | B1.2.32 14 13.13.7 |  | 50.91d |
|  | Curbstone | **Curbstone** |  | 2026-11-24 | 2026-12-06 |  |  |  |
|  | Pre Install | **Pre-Installation** |  | 2026-11-24 | 2026-12-01 |  |  |  |
| B2.31 23 00.61 |  | Excavation | 2d | 2026-11-24 | 2026-11-26 | B2.31 23 00.131 SS |  | 18d |
| B1.2.32 14 13.13.23 |  | PCC | 2d | 2026-11-26 | 2026-11-29 | B2.31 23 00.61 |  | 60d |
| 32 16 13.003 |  | Haunching | 2d | 2026-11-29 | 2026-12-01 | B1.2.32 14 13.13.23 |  | 60d |
|  | Installation | **Installation** |  | 2026-12-01 | 2026-12-03 |  |  |  |
| B1.2.32 16.13.01.3 |  | Curb Stone, Type K1 | 2d | 2026-12-01 | 2026-12-03 | 32 16 13.003 |  | 60d |
| B1.2.32 16.13.03.3 |  | Edge Curb, Type K4 | 2d | 2026-12-01 | 2026-12-03 | 32 16 13.003 |  | 60d |
|  | Finishing | **Finishing** |  | 2026-12-03 | 2026-12-06 |  |  |  |
| 32 16 13.03 |  | Finishing, Fareface | 2d | 2026-12-03 | 2026-12-06 | B1.2.32 16.13.01.3, B1.2.32 16.13.03.3, 10 14 53.07 |  | 60d |
|  | Asphalt Layers | **Asphalt Layers** |  | 2026-10-08 | 2026-12-08 |  |  |  |
| B1.2.32 11 26.01.3 |  | Bituminous Base Course including Prime Coat (MC1) and tack coat (RC2) | 2d | 2026-10-08 | 2026-10-11 | B1.2.32 11 23.01.3_R |  | 49.88d |
| B1.2.32 12 16.01.3 |  | Bituminous concrete Wearing Course, including tack coat (RC2) | 5d | 2026-12-02 | 2026-12-08 | B1.2.32 11 26.01.3, B1.2.32 12 16.01.5 |  | 5d |
|  | Pavement Marking | **Pavement Marking** |  | 2026-12-08 | 2026-12-13 |  |  |  |
| B1.2.32 17 23.02.3 |  | Retroreflective Thermoplastic Yellow, Traffic lines | 2d | 2026-12-08 | 2026-12-10 | B1.2.32 12 16.01.3 |  | 54d |
| B1.2.32 17 23.01.3 |  | Retroreflective Thermoplastic White Traffic lines | 2d | 2026-12-10 | 2026-12-13 | B1.2.32 12 16.01.3, B1.2.32 17 23.02.3 |  | 54d |
|  | Traffic Signs | **Traffic Signs** |  | 2026-11-24 | 2026-12-10 |  |  |  |

| ID | WBS | Task | Duration | Start | Finish | Predecessors | Complete | Total float |
| --- | --- | --- | --- | --- | --- | --- | --- | --- |
|  | Pre Install | **Pre-Installation** |  | 2026-11-24 | 2026-11-29 |  |  |  |
| B2.31 23 00.71 |  | Excavation | 2d | 2026-11-24 | 2026-11-26 | B2.31 23 00.61 SS |  | 18d |
| 10 14 53.03 |  | Foundation | 2d | 2026-11-26 | 2026-11-29 | B2.31 23 00.71 |  | 43d |
|  | Installation | **Installation** |  | 2026-12-08 | 2026-12-10 |  |  |  |
| B1.2.10 14 14.01.3 |  | Ground mounted, 1 Sheet Alumenium, Single post | 2d | 2026-12-08 | 2026-12-10 | 10 14 53.03, B1.2.10 14 53.023 FF |  | 35d |
| B1.2.10 14 53.013 |  | 1 Sheet Alumenium, Single post | 2d | 2026-12-08 | 2026-12-10 | 10 14 53.03, B1.2.32 12 16.01.3 |  | 35d |
| B1.2.10 14 53.023 |  | 2 Sheet Alumenium, Single post | 2d | 2026-12-08 | 2026-12-10 | 10 14 53.03, B1.2.10 14 53.013 FF |  | 35d |
|  | Landscape | **Landscape** |  | 2026-11-26 | 2026-12-22 |  |  |  |
|  | Gates | **Gates** |  | 2026-11-26 | 2026-12-22 |  |  |  |
|  | Size (6.1x 2.7)m | **Size (6.1x 2.7)m** |  | 2026-11-26 | 2026-12-22 |  |  |  |
| B7.32 93 43.04.63 |  | Earthwork | 5d | 2026-11-26 | 2026-12-02 | B2.31 23 00.71 |  | 18d |
| B7.32 93 43.04.64 |  | Foundation | 3d | 2026-12-02 | 2026-12-06 | B7.32 93 43.04.63 |  | 18d |
| B7.32 93 43.04.65 |  | Gate Installation | 3d | 2026-12-20 | 2026-12-22 | B7.32 93 43.04.64, B7.32 93 43.04.52 |  | 6.32d |
|  | Size (5.5x 2.7)m | **Size (5.5x 2.7)m** |  | 2026-11-26 | 2026-12-09 |  |  |  |
| B7.32 93 43.04.66 |  | Earthwork | 5d | 2026-11-26 | 2026-12-02 | B7.32 93 43.04.63 FF |  | 18d |
| B7.32 93 43.04.67 |  | Foundation | 3d | 2026-12-02 | 2026-12-06 | B7.32 93 43.04.66 |  | 18d |
| B7.32 93 43.04.68 |  | Gate Installation | 3d | 2026-12-06 | 2026-12-09 | B7.32 93 43.04.67 |  | 18d |
|  | Size (4.85x 2.7)m | **Size (4.85x 2.7)m** |  | 2026-12-02 | 2026-12-13 |  |  |  |
| B7.32 93 43.04.69 |  | Earthwork | 3d | 2026-12-02 | 2026-12-06 | B7.32 93 43.04.66 |  | 20d |
| B7.32 93 43.04.70 |  | Foundation | 3d | 2026-12-06 | 2026-12-09 | B7.32 93 43.04.69 |  | 20d |
| B7.32 93 43.04.71 |  | Gate Installation | 3d | 2026-12-09 | 2026-12-13 | B7.32 93 43.04.70 |  | 20d |
|  | Parking Roads | **Parking Roads** |  | 2025-11-29 | 2026-12-16 |  |  |  |
|  | Wet Networks | **Wet Networks** |  | 2026-07-22 | 2026-10-29 |  |  |  |
|  | Stormwater Network | **Stormwater Network** |  | 2026-07-22 | 2026-10-17 |  |  |  |
|  | GRP | **GRP** |  | 2026-08-10 | 2026-10-17 |  |  |  |
|  | ?4002 | **?500** |  | 2026-08-19 | 2026-10-15 |  |  |  |
|  | 3 | **Depth From 1.5m to 2.5m** |  | 2026-08-19 | 2026-10-15 |  |  |  |
| B6.33 42 11.03-11 |  | Excavation (59.54% Completed) | 24d | 2026-08-19 A | 2026-09-15 A | B6.33 05 39.01.3127 | 100% |  |
| B6.33 42 11.03-14 |  | Sand Bedding (59.54% Completed) | 22d | 2026-08-22 A | 2026-09-15 A | B6.33 42 11.03-11 FF | 100% |  |
| B6.33 42 11.03-17 |  | Pipe Laying (59.54% Completed) | 20d | 2026-08-24 A | 2026-09-15 A | B6.33 42 11.03-14 FF | 100% |  |
| B6.33 42 11.03-113 |  | Backfilling & Warrning Tape (59.54% Completed) | 19d | 2026-08-25 A | 2026-09-15 A | B6.33 42 11.05-1.57 | 100% |  |
| B6.33 42 11.03-11_R |  | Excavation(Rem) | 2.28d | 2026-10-07 | 2026-10-10 | B6.33 05 39.01.3127, B6.33 42 11.03-11 |  | 44.64d |
| B6.33 42 11.03-14_R |  | Sand Bedding(Rem) | 2.28d | 2026-10-07 | 2026-10-10 | B6.33 42 11.03-11_R FF, B6.33 42 11.03-14 |  | 50.82d |
| B6.33 42 11.03-17_R |  | Pipe Laying(Rem) | 2.28d | 2026-10-07 | 2026-10-10 | B6.33 42 11.03-14_R FF, B6.33 42 11.03-17 |  | 50.82d |
| B6.33 42 11.03-110 |  | Embedment & Test | 5d | 2026-10-10 | 2026-10-15 | B6.33 42 11.03-17_R |  | 50.82d |
| B6.33 42 11.03-113_R |  | Backfilling & Warrning Tape(Rem) | 3.3d | 2026-10-11 | 2026-10-15 | B6.33 42 11.03-110 FF, B6.33 42 11.05-1.57, B6.33 42 11.03-113 |  | 50.82d |
|  | ?4001 | **?600** |  | 2026-08-10 | 2026-10-15 |  |  |  |
|  | 3 | **Depth From 1.5m to 2.5m** |  | 2026-08-10 | 2026-10-15 |  |  |  |
| B6.33 42 11.03-12 |  | Excavation (59.54% Completed) | 32d | 2026-08-10 A | 2026-09-15 A | B6.33 42 11.03-11 SS | 100% |  |
| B6.33 42 11.03-15 |  | Sand Bedding (59.54% Completed) | 29d | 2026-08-13 A | 2026-09-15 A | B6.33 42 11.03-12 FF | 100% |  |
| B6.33 42 11.03-18 |  | Pipe Laying (59.54% Completed) | 28d | 2026-08-15 A | 2026-09-15 A | B6.33 42 11.03-15 FF | 100% |  |
| B6.33 42 11.03-114 |  | Backfilling & Warrning Tape (59.54% Completed) | 24d | 2026-08-19 A | 2026-09-15 A | B6.33 42 11.05-1.61 SS | 100% |  |
| B6.33 42 11.03-12_R |  | Excavation(Rem) | 2.28d | 2026-10-07 | 2026-10-10 | B6.33 42 11.03-11_R SS, B6.33 42 11.03-12 |  | 44.64d |
| B6.33 42 11.03-15_R |  | Sand Bedding(Rem) | 2.28d | 2026-10-07 | 2026-10-10 | B6.33 42 11.03-12_R FF, B6.33 42 11.03-15 |  | 44.64d |
| B6.33 42 11.03-18_R |  | Pipe Laying(Rem) | 2.28d | 2026-10-07 | 2026-10-10 | B6.33 42 11.03-15_R FF, B6.33 42 11.03-18 |  | 44.64d |
| B6.33 42 11.03-111 |  | Embedment & Test | 5d | 2026-10-10 | 2026-10-15 | B6.33 42 11.03-18_R |  | 44.64d |
| B6.33 42 11.03-114_R |  | Backfilling & Warrning Tape(Rem) | 3.12d | 2026-10-12 | 2026-10-15 | B6.33 42 11.03-111 FF, B6.33 42 11.05-1.61_R SS, B6.33 42 11.03-114 |  | 44.64d |
|  | ?400 | **?800** |  | 2026-08-12 | 2026-10-17 |  |  |  |
|  | 3 | **Depth From 1.5m to 2.5m** |  | 2026-08-12 | 2026-10-17 |  |  |  |
| B6.33 42 11.03-13 |  | Excavation (59.54% Completed) | 30d | 2026-08-12 A | 2026-09-15 A | B6.33 42 11.03-12 SS | 100% |  |
| B6.33 42 11.03-16 |  | Sand Bedding (59.54% Completed) | 27d | 2026-08-16 A | 2026-09-15 A | B6.33 42 11.03-13 FF | 100% |  |
| B6.33 42 11.03-19 |  | Pipe Laying (59.54% Completed) | 24d | 2026-08-19 A | 2026-09-15 A | B6.33 42 11.03-16 FF | 100% |  |
| B6.33 42 11.03-115 |  | Backfilling & Warrning Tape (59.54% Completed) | 21d | 2026-08-23 A | 2026-09-15 A | B6.33 42 11.361360 SS | 100% |  |
| B6.33 42 11.03-13_R |  | Excavation(Rem) | 2.28d | 2026-10-07 | 2026-10-10 | B6.33 42 11.03-12_R SS, B6.33 42 11.03-13 |  | 82.32d |
| B6.33 42 11.03-16_R |  | Sand Bedding(Rem) | 2.28d | 2026-10-07 | 2026-10-10 | B6.33 42 11.03-13_R FF, B6.33 42 11.03-16 |  | 100.04d |
| B6.33 42 11.03-19_R |  | Pipe Laying(Rem) | 2.28d | 2026-10-07 | 2026-10-10 | B6.33 42 11.03-16_R FF, B6.33 42 11.03-19 |  | 100.04d |
| B6.33 42 11.03-112 |  | Embedment & Test | 5d | 2026-10-10 | 2026-10-15 | B6.33 42 11.03-19_R |  | 100.04d |
| B6.33 42 11.03-115_R |  | Backfilling & Warrning Tape(Rem) | 3.12d | 2026-10-13 | 2026-10-17 | B6.33 42 11.03-112 FF, B6.33 42 11.361360_R SS, B6.33 42 11.03-115 |  | 99.08d |
|  | Strom Manholes | **Manholes** |  | 2026-08-15 | 2026-10-17 |  |  |  |
|  | 1 | **?1200** |  | 2026-08-15 | 2026-10-17 |  |  |  |
|  | 3 | **Depth From 1.5m to 2.5m** |  | 2026-08-15 | 2026-10-17 |  |  |  |
| B6.33 05 13.04-11 |  | Excavation & Compaction (50.00% Completed) | 28d | 2026-08-15 A | 2026-09-15 A | B6.33 42 11.03-13 SS | 100% |  |
| B6.33 05 13.04-14 |  | Blinding Conc, & RC Base (50.00% Completed) | 26d | 2026-08-17 A | 2026-09-15 A | B6.33 05 13.04-11 SS | 100% |  |
| B6.33 05 13.04-17 |  | Manhole Installation (50.00% Completed) | 24d | 2026-08-19 A | 2026-09-15 A | B6.33 05 13.04-14 SS | 100% |  |
| B6.33 05 13.04-113 |  | Backfilling (50.00% Completed) | 20d | 2026-08-24 A | 2026-09-15 A | B6.33 42 11.05-1.65 | 100% |  |
| B6.33 05 13.04-11_R |  | Excavation & Compaction(Rem) | 2d | 2026-10-07 | 2026-10-08 | B6.33 42 11.03-13_R SS, B6.33 05 13.04-11 |  | 82.32d |
| B6.33 05 13.04-14_R |  | Blinding Conc, & RC Base(Rem) | 2d | 2026-10-07 | 2026-10-08 | B6.33 05 13.04-11_R SS, B6.33 05 13.04-14 |  | 106.32d |
| B6.33 05 13.04-17_R |  | Manhole Installation(Rem) | 2d | 2026-10-07 | 2026-10-08 | B6.33 05 13.04-14_R SS, B6.33 05 13.04-17 |  | 106.32d |
| B6.33 05 13.04-110 |  | Test, Internal Finishing, Benching & Cover | 5d | 2026-10-10 | 2026-10-14 | B6.33 05 13.04-17_R |  | 106.32d |
| B6.33 05 13.04-113_R |  | Backfilling(Rem) | 3d | 2026-10-13 | 2026-10-17 | B6.33 05 13.04-110 FF, B6.33 42 11.05-1.65, B6.33 05 13.04-113, B6.33 42 11.015_R |  | 104.64d |

| ID | WBS | Task | Duration | Start | Finish | Predecessors | Complete | Total float |
| --- | --- | --- | --- | --- | --- | --- | --- | --- |
|  | Catch Basins | **Catch Basins** |  | 2026-07-22 | 2026-10-10 |  |  |  |
|  | Sing | **Single** |  | 2026-07-22 | 2026-10-10 |  |  |  |
| B6.33 05 40.01.290 |  | Excavation, Compaction & Vapour Barrier (67.00% Completed) | 48d | 2026-07-22 A | 2026-09-15 A | B6.33 05 13.04-11 SS | 100% |  |
| B6.33 05 40.01.300 |  | Blinding Conc. (67.00% Completed) | 46d | 2026-07-24 A | 2026-09-15 A | B6.33 05 40.01.290 SS | 100% |  |
| B6.33 05 40.01.310 |  | Catch Basin Installation (67.00% Completed) | 45d | 2026-07-26 A | 2026-09-15 A | B6.33 05 40.01.300 SS | 100% |  |
| B6.33 05 40.01.320 |  | Backfilling, DI Frame & Grate Cover Fixing (67.00% Completed) | 35d | 2026-08-06 A | 2026-09-15 A | B6.33 42 11.36-1 2 SS, B6.33 42 11.35-1 2 SS | 100% |  |
| B6.33 05 40.01.290_R |  | Excavation, Compaction & Vapour Barrier(Rem) | 2d | 2026-10-07 | 2026-10-08 | B6.33 05 13.04-11_R SS, B6.33 05 40.01.290 |  | 82.32d |
| B6.33 05 40.01.300_R |  | Blinding Conc.(Rem) | 2d | 2026-10-07 | 2026-10-08 | B6.33 05 40.01.290_R SS, B6.33 05 40.01.300 |  | 82.32d |
| B6.33 05 40.01.310_R |  | Catch Basin Installation(Rem) | 2d | 2026-10-07 | 2026-10-08 | B6.33 05 40.01.300_R SS, B6.33 05 40.01.310 |  | 82.32d |
| B6.33 05 40.01.320_R |  | Backfilling, DI Frame & Grate Cover Fixing(Rem) | 3d | 2026-10-07 | 2026-10-10 | B6.33 42 11.36-1 2_R SS, B6.33 42 11.35-1 2_R SS, B6.33 05 40.01.320 |  | 82.32d |
|  | UPVC | **UPVC** |  | 2026-07-30 | 2026-10-10 |  |  |  |
|  | UPVC300 | **?300 From 0.0 to 1.5m** |  | 2026-07-30 | 2026-10-10 |  |  |  |
| B6.33 42 11.35-1 1 |  | Catch Basin Opening Prep. (60.78% Completed) | 41d | 2026-07-30 A | 2026-09-15 A | B6.33 05 40.01.310 SS | 100% |  |
| B6.33 42 11.35-1 2 |  | Fittings & Pipe Installation (60.78% Completed) | 40d | 2026-08-01 A | 2026-09-15 A | B6.33 42 11.35-1 1 SS | 100% |  |
| B6.33 42 11.35-1 1_R |  | Catch Basin Opening Prep.(Rem) | 2.09d | 2026-10-07 | 2026-10-10 | B6.33 05 40.01.310_R SS, B6.33 42 11.35-1 1 |  | 82.32d |
| B6.33 42 11.35-1 2_R |  | Fittings & Pipe Installation(Rem) | 2.09d | 2026-10-07 | 2026-10-10 | B6.33 42 11.35-1 1_R SS, B6.33 42 11.35-1 2 |  | 82.32d |
|  | UPVC3001 | **?400 From 0.0 to 1.5m** |  | 2026-08-01 | 2026-10-10 |  |  |  |
| B6.33 42 11.36-1 1 |  | Catch Basin Opening Prep. (60.78% Completed) | 40d | 2026-08-01 A | 2026-09-15 A | B6.33 42 11.35-1 1 SS | 100% |  |
| B6.33 42 11.36-1 2 |  | Fittings & Pipe Installation (60.78% Completed) | 38d | 2026-08-03 A | 2026-09-15 A | B6.33 42 11.36-1 1 SS | 100% |  |
| B6.33 42 11.36-1 1_R |  | Catch Basin Opening Prep.(Rem) | 2.09d | 2026-10-07 | 2026-10-10 | B6.33 42 11.35-1 1_R SS, B6.33 42 11.36-1 1 |  | 82.32d |
| B6.33 42 11.36-1 2_R |  | Fittings & Pipe Installation(Rem) | 2.09d | 2026-10-07 | 2026-10-10 | B6.33 42 11.36-1 1_R SS, B6.33 42 11.36-1 2 |  | 82.32d |
|  | Fire Fighting | **Fire Fighting Network** |  | 2026-08-22 | 2026-10-29 |  |  |  |
|  | HDPE | **HDPE Pipes** |  | 2026-08-22 | 2026-10-19 |  |  |  |
|  | ?250mm | **?250mm** |  | 2026-08-22 | 2026-10-19 |  |  |  |
|  | Depth: 0.0m - 1.5m | **Depth: 0.0m - 1.5m** |  | 2026-08-22 | 2026-10-19 |  |  |  |
| B3.1. 33 14 13.01.10 |  | Excavation (94.50% Completed) | 22d | 2026-08-22 A | 2026-09-15 A | B3.1. 33 14 13.22 SS | 100% |  |
| B3.1. 33 14 13.01.14 |  | Sand Bedding (89.00% Completed) | 19d | 2026-08-25 A | 2026-09-15 A | B3.1. 33 14 13.01.10 FF | 100% |  |
| B3.1. 33 14 13.01.18 |  | Pipe Laying (89.00% Completed) | 16d | 2026-08-29 A | 2026-09-15 A | B3.1. 33 14 13.01.14 FF | 100% |  |
| B3.1. 33 14 13.01.22 |  | Embedment & Test (89.00% Completed) | 13d | 2026-09-01 A | 2026-09-15 A | B3.1. 33 14 13.01.18 FF | 100% |  |
| B3.1. 33 14 13.01.10_R |  | Excavation(Rem) | 4d | 2026-10-07 | 2026-10-11 | B3.1. 33 14 13.22_R SS, B3.1. 33 14 13.01.10 |  | 42.32d |
| B3.1. 33 14 13.01.14_R |  | Sand Bedding(Rem) | 4d | 2026-10-07 | 2026-10-11 | B3.1. 33 14 13.01.10_R FF, B3.1. 33 14 13.01.14 |  | 42.32d |
| B3.1. 33 14 13.01.18_R |  | Pipe Laying(Rem) | 4d | 2026-10-07 | 2026-10-11 | B3.1. 33 14 13.01.14_R FF, B3.1. 33 14 13.01.18 |  | 42.32d |
| B3.1. 33 14 13.01.22_R |  | Embedment & Test(Rem) | 4d | 2026-10-07 | 2026-10-11 | B3.1. 33 14 13.01.18_R FF, B3.1. 33 14 13.01.22 |  | 86.32d |
| B3.1. 33 14 13.01.26 |  | Backfilling & Warrning Tape | 7d | 2026-10-12 | 2026-10-19 | B3.1. 33 14 13.01.22_R, B3.33 14 19.01.126 |  | 86.32d |
|  | Depth: 1.51m - 2.5m | **Depth: 1.51m - 2.5m** |  | 2026-09-01 | 2026-10-19 |  |  |  |
| B3.1. 33 14 13.01.12 |  | Excavation (91.00% Completed) | 13d | 2026-09-01 A | 2026-09-15 A | B3.1. 33 14 13.01.10 SS | 100% |  |
| B3.1. 33 14 13.01.16 |  | Sand Bedding (89.00% Completed) | 11d | 2026-09-03 A | 2026-09-15 A | B3.1. 33 14 13.01.12 FF | 100% |  |
| B3.1. 33 14 13.01.20 |  | Pipe Laying (89.00% Completed) | 8d | 2026-09-07 A | 2026-09-15 A | B3.1. 33 14 13.01.16 FF | 100% |  |
| B3.1. 33 14 13.01.24 |  | Embedment & Test (89.00% Completed) | 5d | 2026-09-10 A | 2026-09-15 A | B3.1. 33 14 13.01.20 FF | 100% |  |
| B3.1. 33 14 13.01.12_R |  | Excavation(Rem) | 4d | 2026-10-07 | 2026-10-11 | B3.1. 33 14 13.01.10_R SS, B3.1. 33 14 13.01.12 |  | 42.32d |
| B3.1. 33 14 13.01.16_R |  | Sand Bedding(Rem) | 4d | 2026-10-07 | 2026-10-11 | B3.1. 33 14 13.01.12_R FF, B3.1. 33 14 13.01.16 |  | 42.32d |
| B3.1. 33 14 13.01.20_R |  | Pipe Laying(Rem) | 4d | 2026-10-07 | 2026-10-11 | B3.1. 33 14 13.01.16_R FF, B3.1. 33 14 13.01.20 |  | 42.32d |
| B3.1. 33 14 13.01.24_R |  | Embedment & Test(Rem) | 4d | 2026-10-07 | 2026-10-11 | B3.1. 33 14 13.01.20_R FF, B3.1. 33 14 13.01.24 |  | 86.32d |
| B3.1. 33 14 13.01.28 |  | Backfilling & Warrning Tape | 7d | 2026-10-12 | 2026-10-19 | B3.1. 33 14 13.01.24_R |  | 86.32d |
|  | 3 | **Fire Hydrant** |  | 2026-10-12 | 2026-10-29 |  |  |  |
| B3.33 14 19.01.fh29 |  | Riser Pipe & Flanged Fittings Installation | 4d | 2026-10-12 | 2026-10-15 | B3.1. 33 14 13.01.20_R, B3.1. 33 14 13.01.18_R |  | 42.32d |
| B3.33 14 19.01.fh28 |  | Firehydrant Fixing/Installation | 5d | 2026-10-17 | 2026-10-21 | B3.33 14 19.01.fh29 |  | 42.32d |
| B3.33 14 19.01.fh30 |  | Backfilling & Compaction | 7d | 2026-10-22 | 2026-10-29 | B3.33 14 19.01.fh28 |  | 42.32d |
|  | Dry Networks | **Dry Networks** |  | 2026-10-11 | 2026-12-16 |  |  |  |
|  | LV Network | **Low Voltage Network** |  | 2026-10-31 | 2026-11-01 |  |  |  |
|  | Cables | **Cables** |  | 2026-10-31 | 2026-11-01 |  |  |  |
|  | 4C,10+1C,10mm2 | **4C,10+1C,10mm2** |  | 2026-10-31 | 2026-11-01 |  |  |  |
| B2.33 71 00 01 10 |  | Cable Pulling | 2d | 2026-10-31 | 2026-11-01 | B3.33 14 19.01.fh30 |  | 42.32d |
|  | Street Lighting | **Street Lighting** |  | 2026-10-11 | 2026-12-16 |  |  |  |
|  | Duct Banks | **Duct Banks** |  | 2026-10-11 | 2026-12-02 |  |  |  |
|  | 2 Way | **2 Way** |  | 2026-10-11 | 2026-12-02 |  |  |  |
| B2.33 71 00 02 64 |  | Excavation | 2d | 2026-10-11 | 2026-10-12 | B6.33 05 40.01.320_R |  | 82.32d |
| B2.33 71 00 02 65 |  | Shuttering, Steel Fixing Incl. UPVC Pipe & Conc. Cast | 3d | 2026-10-13 | 2026-10-15 | B2.33 71 00 02 64 |  | 101.32d |
| B2.33 71 00 02 66 |  | Backfilling & Warrning Tape | 2d | 2026-12-01 | 2026-12-02 | B2.33 71 00 02 65, B2.33 71 00 02 69 SS, B2.33 71 19 112 |  | 62.32d |
|  | 6 Way | **6 Way** |  | 2026-10-13 | 2026-12-01 |  |  |  |
| B2.33 71 00 02 67 |  | Excavation | 2d | 2026-10-13 | 2026-10-14 | B2.33 71 00 02 64 |  | 82.32d |
| B2.33 71 00 02 68 |  | Shuttering, Steel Fixing Incl. UPVC Pipe & Conc. Cast | 3d | 2026-10-15 | 2026-10-18 | B2.33 71 00 02 67 |  | 99.32d |
| B2.33 71 00 02 69 |  | Backfilling & Warrning Tape | 2d | 2026-11-30 | 2026-12-01 | B2.33 71 00 02 68, B2.33 71 19 34, B2.33 71 19 013, B2.33 71 49.23.112_R |  | 63.32d |
|  | Drawpits | **Drawpits** |  | 2026-10-15 | 2026-10-22 |  |  |  |
| B2.33 71 00 02 70 |  | Excavation | 2d | 2026-10-15 | 2026-10-17 | B2.33 71 00 02 67, B2.33 71 00 02 64 |  | 82.32d |
| B2.33 71 00 02 71 |  | Drawpits Installation | 2d | 2026-10-18 | 2026-10-19 | B2.33 71 00 02 70 |  | 82.32d |
| B2.33 71 00 02 72 |  | Backfilling & Warrning Tape | 3d | 2026-10-20 | 2026-10-22 | B2.33 71 00 02 71 |  | 82.32d |
|  | Earthing | **Earthing** |  | 2026-12-09 | 2026-12-16 |  |  |  |
| B2.33 71 19 29 |  | Land Adjustment | 2d | 2026-12-09 | 2026-12-12 | B2.33 71 16.61, B2.33 71 16.57 |  | 52.91d |
| B2.33 71 19 30 |  | Earth Rods & Conduits | 2d | 2026-12-12 | 2026-12-14 | B2.33 71 19 29 |  | 52.91d |

| ID | WBS | Task | Duration | Start | Finish | Predecessors | Complete | Total float |
| --- | --- | --- | --- | --- | --- | --- | --- | --- |
| B2.33 71 19 31 |  | Backfilling | 2d | 2026-12-14 | 2026-12-16 | B2.33 71 19 30, B2.33 71 00 01 10, B2.33 71 16.86 |  | 52.91d |
|  | SL Poles | **SL Poles** |  | 2026-11-28 | 2026-12-14 |  |  |  |
|  | Pole (10 M Sngl Arm) | **Pole (10 M Single Arm)** |  | 2026-11-28 | 2026-12-09 |  |  |  |
| B2.33 71 16.55 |  | Excavation | 3d | 2026-11-28 | 2026-12-01 | B3.1. 33 14 13.01.26, B3.1. 33 14 13.01.28, B2.33 71 16.35, B1.2.32 11 26.01.7_R |  | 52.91d |
| B2.33 71 16.56 |  | PC & RC Foundation | 2d | 2026-12-01 | 2026-12-03 | B2.33 71 16.55 |  | 55.91d |
| B2.33 71 16.57 |  | Lighting Poles Installation Incl power box, Cables | 2d | 2026-12-03 | 2026-12-06 | B2.33 71 16.56 |  | 55.91d |
| B2.26.56.19.7 |  | Lighting Luminares Inst | 1d | 2026-12-06 | 2026-12-07 | B2.33 71 16.57 |  | 58.91d |
| B2.33 71 16.58 |  | Backfilling, Grouting & Chamfering | 2d | 2026-12-07 | 2026-12-09 | B2.26.56.19.7 |  | 58.91d |
|  | Pole (10 M Dbl Arm) | **Pole (10 M Double Arm)** |  | 2026-12-01 | 2026-12-14 |  |  |  |
| B2.33 71 16.59 |  | Excavation | 2d | 2026-12-01 | 2026-12-03 | B2.33 71 16.55, B2.33 71 00 02 58 |  | 52.91d |
| B2.33 71 16.60 |  | PC & RC Foundation | 3d | 2026-12-03 | 2026-12-07 | B2.33 71 16.59 |  | 52.91d |
| B2.33 71 16.61 |  | Lighting Poles Installation Incl power box, Cables | 2d | 2026-12-07 | 2026-12-09 | B2.33 71 16.60 |  | 52.91d |
| B2.26.56.19.8 |  | Lighting Luminares Inst | 2d | 2026-12-09 | 2026-12-12 | B2.33 71 16.61 |  | 52.91d |
| B2.33 71 16.62 |  | Backfilling, Grouting & Chamfering | 2d | 2026-12-12 | 2026-12-14 | B2.26.56.19.8 |  | 52.91d |
|  | Earth & Road Works | **Earth & Road Works** |  | 2025-11-29 | 2026-12-14 |  |  |  |
|  | Earth Works | **Earth Works** |  | 2025-11-29 | 2026-04-08 |  |  |  |
| B1.2.31 23 16.01.7 |  | Roadway Excavation | 101.2d | 2025-11-29 A | 2026-04-08 A | DMM2-Eng-MS-78 | 100% |  |
| B1.2.31 23 23.01.7 |  | Embankment Backfiling | 97.04d | 2025-12-03 A | 2026-04-08 A | B1.2.31 23 16.01.7 | 100% |  |
|  | Earth Layers | **Earth Layers** |  | 2026-03-10 | 2026-10-12 |  |  |  |
| B1.2.32 11 13.01.7 |  | Subgrade (65.00% Completed) | 152.96d | 2026-03-10 A | 2026-09-15 A | B1.2.31 23 23.01.7 | 100% |  |
| B1.2.32 11 23.01.7 |  | Aggregate Base Course (60.00% Completed) | 108.67d | 2026-05-07 A | 2026-09-15 A | B1.2.32 11 13.01.7 SS | 100% |  |
| B1.2.32 11 13.01.7_R |  | Subgrade(Rem) | 5d | 2026-10-07 | 2026-10-12 | B1.2.31 23 23.01.7, B1.2.32 11 13.01.7 |  | 108.32d |
| B1.2.32 11 23.01.7_R |  | Aggregate Base Course(Rem) | 2d | 2026-10-07 | 2026-10-08 | B1.2.32 11 13.01.7_R SS, B1.2.32 11 23.01.7 |  | 111.32d |
|  | Interlock | **Interlock** |  | 2026-12-12 | 2026-12-14 |  |  |  |
| B1.2.32 14 13.13.7 |  | 60mm thick - Interlocking Block Pavers | 2d | 2026-12-12 | 2026-12-14 | B1.2.32 14 13.13.14 |  | 50.91d |
|  | Curbstone | **Curbstone** |  | 2026-11-12 | 2026-11-26 |  |  |  |
|  | Pre Install | **Pre-Installation** |  | 2026-11-12 | 2026-11-19 |  |  |  |
| B2.31 23 00.181 |  | Excavation | 2d | 2026-11-12 | 2026-11-15 | B2.31 23 00.121 |  | 13d |
| B1.2.32 14 13.13.27 |  | PCC | 2d | 2026-11-15 | 2026-11-17 | B2.31 23 00.181 |  | 66d |
| 32 16 13.007 |  | Haunching | 2d | 2026-11-17 | 2026-11-19 | B1.2.32 14 13.13.27 |  | 66d |
|  | Installation | **Installation** |  | 2026-11-19 | 2026-11-25 |  |  |  |
| B1.2.32 16.13.01.7 |  | Curb Stone, Type K1 | 2d | 2026-11-19 | 2026-11-22 | 32 16 13.007 |  | 66d |
| B1.2.32 16.13.02.6 |  | Dropped Curb, Type K3 | 1d | 2026-11-22 | 2026-11-23 | B1.2.32 16.13.01.7, 32 16 13.007 |  | 66d |
| B1.2.32 16.13.03.7 |  | Edge Curb, Type K4 | 1d | 2026-11-23 | 2026-11-24 | B1.2.32 16.13.02.6, 32 16 13.007 |  | 66d |
| B1.2.32 16.13.047 |  | Heel Curb, Type K5 | 1d | 2026-11-23 | 2026-11-24 | B1.2.32 16.13.03.7 SS, 32 16 13.007 |  | 66d |
| B1.2.32 16.13.05.6 |  | Transition Curb | 1d | 2026-11-24 | 2026-11-25 | B1.2.32 16.13.047, 32 16 13.007 |  | 66d |
|  | Finishing | **Finishing** |  | 2026-11-25 | 2026-11-26 |  |  |  |
| 32 16 13.07 |  | Finishing, Fareface | 1d | 2026-11-25 | 2026-11-26 | B1.2.32 16.13.01.7, B1.2.32 16.13.02.6, B1.2.32 16.13.03.7, B1.2.32 16.13.047, B1.2.32 16.13.05.6 |  | 66d |
|  | Asphalt Layers | **Asphalt Layers** |  | 2026-06-15 | 2026-12-05 |  |  |  |
| B1.2.32 11 26.01.7 |  | Bituminous Base Course including Prime Coat (MC1) and tack coat (RC2) (60.00% Completed) | 79.38d | 2026-06-15 A | 2026-09-15 A | B1.2.32 11 23.01.7 SS | 100% |  |
| B1.2.32 11 26.01.7_R |  | Bituminous Base Course including Prime Coat (MC1) and tack coat (RC2)(Rem) | 2d | 2026-10-01 A | 2026-10-08 | B1.2.32 11 23.01.7_R SS, B1.2.32 11 26.01.7 | 20% | 54.73d |
| B1.2.32 12 16.01.7 |  | Bituminous concrete Wearing Course, including tack coat (RC2) | 2d | 2026-12-02 | 2026-12-05 | B1.2.32 11 26.01.7_R, B1.2.32 12 16.01.5 |  | 8d |
|  | Pavement Marking | **Pavement Marking** |  | 2026-12-05 | 2026-12-07 |  |  |  |
| B1.2.32 17 23.01.7 |  | Retroreflective Thermoplastic White Traffic lines | 2d | 2026-12-05 | 2026-12-07 | B1.2.32 12 16.01.7 |  | 38d |
| B1.2.32 17 23.02.7 |  | Retroreflective Thermoplastic Yellow, Traffic lines | 2d | 2026-12-05 | 2026-12-07 | B1.2.32 12 16.01.7 |  | 38d |
|  | Traffic Signs | **Traffic Signs** |  | 2026-11-15 | 2026-12-13 |  |  |  |
|  | Pre Install | **Pre-Installation** |  | 2026-11-15 | 2026-11-19 |  |  |  |
| B2.31 23 00.191 |  | Excavation | 2d | 2026-11-15 | 2026-11-17 | B2.31 23 00.181 |  | 13d |
| 10 14 53.07 |  | Foundation | 2d | 2026-11-17 | 2026-11-19 | B2.31 23 00.191 |  | 53d |
|  | Installation | **Installation** |  | 2026-12-10 | 2026-12-13 |  |  |  |
| B1.2.10 14 53.017 |  | 1 Sheet Alumenium, Single post | 2d | 2026-12-10 | 2026-12-13 | B1.2.32 17 23.01.7, B1.2.32 17 23.02.7, 10 14 53.07, B1.2.10 14 14.01.3 |  | 35d |
|  | Road Misc. | **Miscellaneous** |  | 2026-12-05 | 2026-12-07 |  |  |  |
| B1.2.32 12 19.13.6 |  | Wheels stoppers (precast concrete) | 2d | 2026-12-05 | 2026-12-07 | B1.2.32 12 16.01.7 |  | 15d |
|  | Landscape | **Landscape** |  | 2026-11-17 | 2026-12-10 |  |  |  |
|  | Fences | **Fences** |  | 2026-11-17 | 2026-12-08 |  |  |  |
|  | (ZATCA HCIS) | **Steel fence (ZATCA HCIS)** |  | 2026-11-17 | 2026-12-05 |  |  |  |
| B7.32 93 43.02.14 |  | Earthwork | 5d | 2026-11-17 | 2026-11-23 | B2.31 23 00.191 |  | 13d |
| B7.32 93 43.02.16 |  | Foundation | 5d | 2026-11-23 | 2026-11-29 | B7.32 93 43.02.14 |  | 16d |
| B7.32 93 43.02.18 |  | Fence Installation | 5d | 2026-11-29 | 2026-12-05 | B7.32 93 43.02.16 |  | 16d |
|  | (MODON) fence | **Steel fence (MODON)** |  | 2026-11-23 | 2026-12-08 |  |  |  |
| B7.32 93 43.02.20 |  | Earthwork | 5d | 2026-11-23 | 2026-11-29 | B7.32 93 43.02.14 |  | 13d |
| B7.32 93 43.02.22 |  | Foundation | 5d | 2026-11-29 | 2026-12-05 | B7.32 93 43.02.20 |  | 13d |
| B7.32 93 43.02.24 |  | Fence Installation | 3d | 2026-12-05 | 2026-12-08 | B7.32 93 43.02.22 |  | 13d |
|  | Trees | **Trees** |  | 2026-12-05 | 2026-12-10 |  |  |  |
| B7.32 93 43.02.10 |  | Ceratonia Siliqua | 3d | 2026-12-05 | 2026-12-08 | B1.2.32 12 16.01.7, B7.32 93 43.02 |  | 17d |
| B7.32 93 43.02.12 |  | Milettia pinnata/ Pongamia glabra | 3d | 2026-12-05 | 2026-12-08 | B7.32 93 43.02.10 FF, B1.2.32 12 16.01.7 |  | 17d |
| B7.32 93 43.7 |  | Azadirachta indica | 3d | 2026-12-07 | 2026-12-10 | B7.32 93 43.02.12 FF, B1.2.32 12 16.01.7, B1.2.32 12 19.13.6 |  | 15d |
|  | Arterial Road | **Arterial Road** |  | 2026-03-15 | 2026-11-22 |  |  |  |
|  | Wet Networks | **Wet Networks** |  | 2026-03-15 | 2026-11-22 |  |  |  |
|  | Sewerage Network | **Sewerage Network** |  | 2026-04-08 | 2026-11-22 |  |  |  |

| ID | WBS | Task | Duration | Start | Finish | Predecessors | Complete | Total float |
| --- | --- | --- | --- | --- | --- | --- | --- | --- |
|  | HDPE | **HDPE Pipes** |  | 2026-04-08 | 2026-10-12 |  |  |  |
|  | 1 | **?160** |  | 2026-04-08 | 2026-10-12 |  |  |  |
|  | 3 | **Depth From 1.5m to 2.5m** |  | 2026-04-08 | 2026-10-12 |  |  |  |
| B5.33 31 23.021 |  | Excavation (0.00% Completed) | 134d | 2026-04-08 A | 2026-09-15 A | B6. 33 42 13.011 SS | 100% |  |
| B5.33 31 23.022 |  | Sand Bedding (0.00% Completed) | 107.05d | 2026-05-09 A | 2026-09-15 A | B5.33 31 23.021 FF | 100% |  |
| B5.33 31 23.023 |  | Pipe Laying (0.00% Completed) | 80.05d | 2026-06-14 A | 2026-09-15 A | B5.33 31 23.022 FF | 100% |  |
| B5.33 31 23.024 |  | Embedment & Test (0.00% Completed) | 77.23d | 2026-06-17 A | 2026-09-15 A | B5.33 31 23.023 FF | 100% |  |
| B5.33 31 23.025 |  | Backfilling & Warrning Tape (0.00% Completed) | 73.23d | 2026-06-22 A | 2026-09-15 A | B5.33 31 00.01.02.59, B5.33 31 00.01.02119, B5.33 31 23.024 FF | 100% |  |
| B5.33 31 23.021_R |  | Excavation(Rem) | 3d | 2026-10-07 | 2026-10-10 | B6. 33 42 13.011 SS, B5.33 31 23.021 |  | 90.32d |
| B5.33 31 23.024_R |  | Embedment & Test(Rem) | 4d | 2026-10-07 | 2026-10-11 | B5.33 31 23.023_R FF, B5.33 31 23.024 |  | 89.32d |
| B5.33 31 23.025_R |  | Backfilling & Warrning Tape(Rem) | 5d | 2026-10-07 | 2026-10-12 | B5.33 31 00.01.02.59, B5.33 31 00.01.02119, B5.33 31 23.024_R FF, B5.33 31 23.025 |  | 108.32d |
| B5.33 31 23.022_R |  | Sand Bedding(Rem) | 2d | 2026-10-08 | 2026-10-10 | B5.33 31 23.021_R FF, B5.33 31 23.022 |  | 90.32d |
| B5.33 31 23.023_R |  | Pipe Laying(Rem) | 2d | 2026-10-08 | 2026-10-10 | B5.33 31 23.022_R FF, B5.33 31 23.023 |  | 90.32d |
|  | 2 | **Valves & Chambers** |  | 2026-06-14 | 2026-11-22 |  |  |  |
|  | Gate | **Gate Valves** |  | 2026-06-14 | 2026-10-12 |  |  |  |
| B3.33 14 19.01.1 |  | Burried Isolation Valve Installation (0.00% Completed) | 80.05d | 2026-06-14 A | 2026-09-15 A | B5.33 31 23.023 SS | 100% |  |
| B3.33 14 19.01.1_R |  | Burried Isolation Valve Installation(Rem) | 2d | 2026-10-08 | 2026-10-10 | B5.33 31 23.023_R SS, B3.33 14 19.01.1 |  | 104.32d |
| B3.33 14 19.01.7 |  | Spindle & Surface Box | 2d | 2026-10-11 | 2026-10-12 | B3.33 14 19.01.1_R |  | 104.32d |
|  | Air V in Ch1 | **Air Valves in Chambers** |  | 2026-10-12 | 2026-11-22 |  |  |  |
| B3.33 14 19.01.26 |  | Land Adjustment & Compaction | 3d | 2026-10-12 | 2026-10-15 | B5.33 31 23.024_R, B5.33 31 00.01.2209_R |  | 88.76d |
| B3.33 14 19.01.28 |  | Foundations | 4d | 2026-10-15 | 2026-10-20 | B3.33 14 19.01.26 |  | 90.76d |
| B3.33 14 19.01.30 |  | Chambers Walls Conc Cast In Situ | 3d | 2026-10-20 | 2026-10-24 | B3.33 14 19.01.28 |  | 90.76d |
| B3.33 14 19.01.32 |  | Chamber Curing, Finishing & Steel Cover | 4d | 2026-10-24 | 2026-10-28 | B3.33 14 19.01.30 |  | 90.76d |
| B3.33 14 19.01.33 |  | Valve & Fitting Installation | 4d | 2026-11-17 | 2026-11-22 | B3.33 14 19.01.32, B3.33 14 19.01.7, B5.33 31 00.01.0244, DMM2-Proc-Delv-2308, B5..33 31 16.015 |  | 74.1d |
|  | Stormwater Network | **Stormwater Network** |  | 2026-03-15 | 2026-10-31 |  |  |  |
|  | Box Cul. | **Box Cul.** |  | 2026-03-15 | 2026-10-31 |  |  |  |
| B6. 33 42 13.011 |  | Excavation | 125.75d | 2026-03-15 A | 2026-08-19 A | B6.33 42 11.31-1 2 | 100% |  |
| B6. 33 42 13.012 |  | Lean PC & RC Foundation | 105.5d | 2026-05-09 A | 2026-09-13 A | B6. 33 42 13.011, DMM2-Proc-PO-148 | 100% |  |
| B6. 33 42 13.013 |  | Box Reinforced Conc. Walls incl. Water Stop (92.00% Completed) | 85.56d | 2026-06-08 A | 2026-09-15 A | B6.33 05 63.061, B6. 33 42 13.012 SS | 100% |  |
| B6. 33 42 13.014 |  | Box Reinforced Conc. Slab (92.00% Completed) | 82.21d | 2026-06-11 A | 2026-09-15 A | B6. 33 42 13.013 SS | 100% |  |
| B6. 33 42 13.015 |  | Curing & Water Proofing (11.00% Completed) | 5.3d | 2026-09-09 A | 2026-09-15 A | B6. 33 42 13.014 SS | 100% |  |
| B6. 33 42 13.013_R |  | Box Reinforced Conc. Walls incl. Water Stop(Rem) | 3d | 2026-09-22 A | 2026-10-07 | B6.33 05 63.061, B6. 33 42 13.012 SS, B6. 33 42 13.013 | 90% | 113.02d |
| B6. 33 42 13.014_R |  | Box Reinforced Conc. Slab(Rem) | 3d | 2026-09-29 A | 2026-10-07 | B6. 33 42 13.013_R SS, B6. 33 42 13.014 | 75% | 112.57d |
| B6. 33 42 13.015_R |  | Curing & Water Proofing(Rem) | 4.56d | 2026-10-03 A | 2026-10-08 | B6. 33 42 13.014_R SS, B6. 33 42 13.015 | 75% | 42.78d |
| B6. 33 42 13.016 |  | Backfilling & Warrning Tape | 6d | 2026-10-18 | 2026-10-25 | B6. 33 42 13.015_R, B6.33 05 63.054, B6.33 05 63.064, B6.33 42 11.03-114_R |  | 42.78d |
|  | Conc. Ch | **Concrete Chambers** |  | 2026-09-07 | 2026-10-31 |  |  |  |
|  | Conc. Ch 2.53.5 | **Size 1.5 x 1.5 m, depth 2.5 to 3.5** |  | 2026-09-07 | 2026-10-31 |  |  |  |
| B6.33 05 63.051 |  | Shuttering, Steel Fixing, CJ & Water Stop | 4d | 2026-09-07 A | 2026-09-12 A | B6.33 05 63.062, B6.33 05 63.052 | 100% |  |
| B6.33 05 63.052 |  | Cocrete Cast for Chamber & Curing | 0.8d | 2026-09-12 A | 2026-09-13 A | B6. 33 42 13.012 SS | 100% |  |
| B6.33 05 63.054 |  | Waterproofing Tanking Membrane & Protection | 4d | 2026-10-08 | 2026-10-13 | B6. 33 42 13.015_R |  | 42.78d |
| B6.33 05 63.053 |  | Cast Iron Steps Installation, Epoxy Paint & Internal Finishing | 5d | 2026-10-25 | 2026-10-31 | B6.33 05 63.052, B6.33 05 63.064, B6.33 05 63.054, B6. 33 42 13.015_R, B6. 33 42 13.016, B6.33 42 11.13.305, B6.33 05 39.01.3967, B6.33 05 40.01.560_R |  | 42.78d |
|  | Conc. Ch 3.54.5 | **Size 1.5 x 1.5 m, depth 3.5 to 4.5** |  | 2026-09-09 | 2026-10-31 |  |  |  |
| B6.33 05 63.062 |  | Cocrete Cast for Chamber & Curing | 2.8d | 2026-09-09 A | 2026-09-13 A | B6.33 05 63.052, B6. 33 42 13.012 SS | 100% |  |
| B6.33 05 63.061 |  | Shuttering, Steel Fixing, CJ & Water Stop | 1d | 2026-09-14 A | 2026-09-15 A | B6.33 05 63.062, B6.33 05 63.052, B6.33 05 63.051 | 100% |  |
| B6.33 05 63.064 |  | Waterproofing Tanking Membrane & Protection | 4d | 2026-10-13 | 2026-10-18 | B6. 33 42 13.015_R, B6.33 05 63.054 |  | 42.78d |
| B6.33 05 63.063 |  | Cast Iron Steps Installation, Epoxy Paint & Internal Finishing | 5d | 2026-10-25 | 2026-10-31 | B6.33 05 63.062, B6.33 05 63.054, B6. 33 42 13.015_R, B6. 33 42 13.016, B6.33 05 40.01.440_R, B6.33 42 11.13.255_R, B1.2.31 23 16.01.8 |  | 42.78d |
|  | Potable Water | **Potable Water Network** |  | 2026-06-03 | 2026-10-18 |  |  |  |
|  | HDPE | **HDPE Pipes** |  | 2026-06-03 | 2026-10-17 |  |  |  |
|  | ?250mm | **?250mm** |  | 2026-06-03 | 2026-10-17 |  |  |  |
|  | Depth: 0.0m - 1.5m | **Depth: 0.0m - 1.5m** |  | 2026-06-03 | 2026-10-14 |  |  |  |
| B3.33 14 11.01.011 |  | Excavation (0.00% Completed) | 89.92d | 2026-06-03 A | 2026-09-15 A | B1.2.32 11 26.01.8 SS | 100% |  |
| B3.33 14 11.01.012 |  | Sand Bedding (0.00% Completed) | 83.92d | 2026-06-10 A | 2026-09-15 A | B3.33 14 11.01.011 FF | 100% |  |
| B3.33 14 11.01.013 |  | Pipe Laying (0.00% Completed) | 81.92d | 2026-06-13 A | 2026-09-15 A | B3.33 14 11.01.012 FF | 100% |  |
| B3.33 14 11.01.014 |  | Embedment & Test (0.00% Completed) | 79.92d | 2026-06-15 A | 2026-09-15 A | B3.33 14 11.01.013 FF | 100% |  |
| B3.33 14 11.01.015 |  | Backfilling & Warrning Tape (0.00% Completed) | 77d | 2026-06-18 A | 2026-09-15 A | B3.33 14 11.01.014 SS, B3.33 14 11.01.024 FF+2d | 100% |  |
| B3.33 14 11.01.011_R |  | Excavation(Rem) | 3d | 2026-10-07 | 2026-10-10 | B1.2.32 11 26.01.8_R SS, B3.33 14 11.01.011 |  | 96.32d |
| B3.33 14 11.01.012_R |  | Sand Bedding(Rem) | 3d | 2026-10-07 | 2026-10-10 | B3.33 14 11.01.011_R FF, B3.33 14 11.01.012 |  | 98.32d |
| B3.33 14 11.01.013_R |  | Pipe Laying(Rem) | 3d | 2026-10-07 | 2026-10-10 | B3.33 14 11.01.012_R FF, B3.33 14 11.01.013 |  | 98.32d |
| B3.33 14 11.01.014_R |  | Embedment & Test(Rem) | 5d | 2026-10-07 | 2026-10-12 | B3.33 14 11.01.013_R FF, B3.33 14 11.01.014 |  | 96.32d |
| B3.33 14 11.01.015_R |  | Backfilling & Warrning Tape(Rem) | 6d | 2026-10-08 | 2026-10-14 | B3.33 14 11.01.014_R SS, B3.33 14 11.01.024_R FF+2d, B3.33 14 11.01.015 |  | 95.32d |
|  | Depth: 1.51m - 2.5m | **Depth: 1.51m - 2.5m** |  | 2026-06-03 | 2026-10-17 |  |  |  |
| B3.33 14 11.01.021 |  | Excavation (0.00% Completed) | 89.92d | 2026-06-03 A | 2026-09-15 A | B3.33 14 11.01.011 SS | 100% |  |
| B3.33 14 11.01.022 |  | Sand Bedding (0.00% Completed) | 83.92d | 2026-06-10 A | 2026-09-15 A | B3.33 14 11.01.021 FF | 100% |  |
| B3.33 14 11.01.023 |  | Pipe Laying (0.00% Completed) | 81.92d | 2026-06-13 A | 2026-09-15 A | B3.33 14 11.01.022 FF | 100% |  |
| B3.33 14 11.01.024 |  | Embedment & Test (0.00% Completed) | 79.92d | 2026-06-15 A | 2026-09-15 A | B3.33 14 11.01.023 FF | 100% |  |
| B3.33 14 11.01.025 |  | Backfilling & Warrning Tape (0.00% Completed) | 77d | 2026-06-18 A | 2026-09-15 A | B3.33 14 11.01.015 SS | 100% |  |
| B3.33 14 11.01.021_R |  | Excavation(Rem) | 4d | 2026-10-07 | 2026-10-11 | B3.33 14 11.01.011_R SS, B3.33 14 11.01.021 |  | 96.32d |
| B3.33 14 11.01.023_R |  | Pipe Laying(Rem) | 4d | 2026-10-07 | 2026-10-11 | B3.33 14 11.01.022_R FF, B3.33 14 11.01.023 |  | 96.32d |
| B3.33 14 11.01.024_R |  | Embedment & Test(Rem) | 5d | 2026-10-07 | 2026-10-12 | B3.33 14 11.01.023_R FF, B3.33 14 11.01.024 |  | 95.32d |
| B3.33 14 11.01.022_R |  | Sand Bedding(Rem) | 3d | 2026-10-08 | 2026-10-11 | B3.33 14 11.01.021_R FF, B3.33 14 11.01.022 |  | 96.32d |

| ID | WBS | Task | Duration | Start | Finish | Predecessors | Complete | Total float |
| --- | --- | --- | --- | --- | --- | --- | --- | --- |
| B3.33 14 11.01.025_R |  | Backfilling & Warrning Tape(Rem) | 6d | 2026-10-10 | 2026-10-17 | B3.33 14 11.01.015_R SS, B3.33 14 11.01.025, B3.33 14 11.01.0118_R |  | 93.52d |
|  | Valves & Chambers | **Valves & Chambers** |  | 2026-06-08 | 2026-10-12 |  |  |  |
|  | Air Valves | **Air Valves** |  | 2026-06-08 | 2026-10-12 |  |  |  |
|  | 4 | **Air valves on less than 315 mm. (In Chamber)** |  | 2026-06-08 | 2026-10-12 |  |  |  |
| B3.33 05 63.02.17 |  | Land Adjustment & Compaction | 16.62d | 2026-06-08 A | 2026-06-27 A | B3.33 14 11.01.011 FF, B6. 33 42 13.011 | 100% |  |
| B3.33 05 63.02.15 |  | Foundations | 3d | 2026-09-09 A | 2026-09-12 A | B3.33 05 63.02.17 | 100% |  |
| B3.33 05 63.02.18 |  | Chambers Walls Conc Cast In Situ | 1d | 2026-09-13 A | 2026-09-13 A | B3.33 05 63.02.15 | 100% |  |
| B3.33 05 63.02.16 |  | Chamber Curing, Finishing & Steel Cover | 2d | 2026-09-14 A | 2026-09-15 A | B3.33 05 63.02.18 | 100% |  |
| B3.33 05 63.02.19 |  | Valve & Fitting Installation | 5d | 2026-10-07 | 2026-10-12 | B3.33 05 63.02.16 |  | 67.32d |
|  | 3 | **Flow Meter (On Chamber)** |  | 2026-10-07 | 2026-10-18 |  |  |  |
| B3.33 14 19.01.fm16 |  | RC Conc. Works | 4d | 2026-10-07 | 2026-10-11 | B3.33 05 63.02.18 |  | 58.32d |
| B3.33 14 19.01.fm17 |  | Fixing Flange/Connections | 3d | 2026-10-12 | 2026-10-14 | B3.33 14 19.01.fm16 |  | 65.32d |
| B3.33 14 19.01.fm18 |  | Flow Meter Installation | 3d | 2026-10-15 | 2026-10-18 | B3.33 14 19.01.fm16, B3.33 14 19.01.fm17, B3.33 05 63.02.19, DMM2-Proc-Delv-3648 |  | 65.32d |
|  | Fire Fighting | **Fire Fighting Network** |  | 2026-10-12 | 2026-10-26 |  |  |  |
|  | 3 | **Flow Meter (On Chamber)** |  | 2026-10-12 | 2026-10-26 |  |  |  |
| B3.33 14 19.01.fm50 |  | RC Conc. Works | 5d | 2026-10-12 | 2026-10-17 | B3.33 14 19.01.fm16 |  | 58.32d |
| B3.33 14 19.01.fm49 |  | Fixing Flange/Connections | 4d | 2026-10-18 | 2026-10-21 | B3.33 14 19.01.fm50 |  | 58.32d |
| B3.33 14 19.01.fm51 |  | Flow Meter Installation | 4d | 2026-10-22 | 2026-10-26 | B3.33 14 19.01.fm50, B3.33 14 19.01.fm49 |  | 58.32d |
|  | TSE Network | **TSE Network** |  | 2026-09-09 | 2026-10-19 |  |  |  |
|  | HDPE | **HDPE Pipes** |  | 2026-09-09 | 2026-10-19 |  |  |  |
|  | ?125mm | **?125mm** |  | 2026-09-09 | 2026-10-19 |  |  |  |
|  | Depth: 0.0m - 1.5m | **Depth: 0.0m - 1.5m** |  | 2026-09-09 | 2026-10-19 |  |  |  |
| B4.33 14 13.081 |  | Excavation (21.50% Completed) | 6d | 2026-09-09 A | 2026-09-15 A | B3.33 05 63.02.17 | 100% |  |
| B4.33 14 13.082 |  | Sand Bedding (21.50% Completed) | 4d | 2026-09-12 A | 2026-09-15 A | B4.33 14 13.081 FF | 100% |  |
| B4.33 14 13.083 |  | Pipe Laying (21.50% Completed) | 2d | 2026-09-14 A | 2026-09-15 A | B4.33 14 13.082 FF | 100% |  |
| B4.33 14 13.084 |  | Embedment & Test (21.50% Completed) | 1d | 2026-09-15 A | 2026-09-15 A | B4.33 14 13.083 FF | 100% |  |
| B4.33 14 13.081_R |  | Excavation(Rem) | 2.57d | 2026-10-07 | 2026-10-10 | B3.33 05 63.02.17, B4.33 14 13.081 |  | 32.75d |
| B4.33 14 13.082_R |  | Sand Bedding(Rem) | 2.57d | 2026-10-07 | 2026-10-10 | B4.33 14 13.081_R FF, B4.33 14 13.082 |  | 32.75d |
| B4.33 14 13.083_R |  | Pipe Laying(Rem) | 2.57d | 2026-10-07 | 2026-10-10 | B4.33 14 13.082_R FF, B4.33 14 13.083 |  | 32.75d |
| B4.33 14 13.084_R |  | Embedment & Test(Rem) | 4.14d | 2026-10-07 | 2026-10-12 | B4.33 14 13.083_R FF, B4.33 14 13.084 |  | 31.18d |
| B4.33 14 13.085 |  | Backfilling & Warrning Tape | 6d | 2026-10-12 | 2026-10-19 | B4.33 14 13.084_R, B3.33 14 19.01.141 |  | 31.18d |
|  | Dry Networks | **Dry Networks** |  | 2026-08-26 | 2026-11-14 |  |  |  |
|  | MV | **Medium Voltage Network** |  | 2026-09-06 | 2026-11-08 |  |  |  |
|  | Cables | **Cables** |  | 2026-09-06 | 2026-11-08 |  |  |  |
|  | 3C,500mm2 | **3C,500mm2** |  | 2026-09-06 | 2026-10-21 |  |  |  |
| B2.33 71 19 16 |  | Land Adjustment (68.00% Completed) | 9d | 2026-09-06 A | 2026-09-15 A | B6. 33 42 13.011 | 100% |  |
| B2.33 71 49.23.010 |  | Cable Pulling (60.00% Completed) | 6d | 2026-09-09 A | 2026-09-15 A | B2.33 71 19 16 SS | 100% |  |
| B2.33 71 19 17 |  | Backfilling (20.00% Completed) | 2d | 2026-09-14 A | 2026-09-15 A | B2.33 71 49.23.010 SS | 100% |  |
| B2.33 71 19 16_R |  | Land Adjustment(Rem) | 3d | 2026-10-15 | 2026-10-19 | B4.33 14 13.085 FF, B2.33 71 19 16 |  | 31.18d |
| B2.33 71 19 17_R |  | Backfilling(Rem) | 5d | 2026-10-15 | 2026-10-21 | B2.33 71 49.23.010_R SS, B2.33 71 19 17 |  | 40.18d |
| B2.33 71 49.23.010_R |  | Cable Pulling(Rem) | 2.6d | 2026-10-15 | 2026-10-18 | B2.33 71 19 16_R SS, B2.33 71 49.23.010 |  | 40.18d |
|  | MV Replacing | **Cable Replacement** |  | 2026-10-19 | 2026-11-08 |  |  |  |
| B2.33 71 49.23.061 |  | Excavation | 3d | 2026-10-19 | 2026-10-22 | B2.33 71 19 16_R |  | 31.18d |
| B2.33 71 49.23.062 |  | Old Cable Grubbing | 4d | 2026-10-22 | 2026-10-27 | B2.33 71 49.23.061 |  | 31.18d |
| B2.33 71 49.23.063 |  | New Cable Installation | 4d | 2026-10-27 | 2026-11-01 | B2.33 71 49.23.062 |  | 31.18d |
| B2.33 71 49.23.064 |  | Backfilling & Warrning Tape | 6d | 2026-11-01 | 2026-11-08 | B2.33 71 49.23.063, B3.33 05 63.02.17 |  | 31.18d |
|  | Street Lighting | **Street Lighting** |  | 2026-08-26 | 2026-11-14 |  |  |  |
|  | Cables | **Cables** |  | 2026-09-10 | 2026-10-21 |  |  |  |
|  | 4C,10+1C,10mm2 | **4C,10+1C,10mm2** |  | 2026-09-10 | 2026-10-21 |  |  |  |
| B2.33 71 19 18 |  | Land Adjustment (50.00% Completed) | 5d | 2026-09-10 A | 2026-09-15 A | B2.33 71 19 16 SS | 100% |  |
| B2.33 71 49.23.64 |  | Cable Pulling (50.00% Completed) | 3d | 2026-09-13 A | 2026-09-15 A | B2.33 71 19 18 SS | 100% |  |
| B2.33 71 19 18_R |  | Land Adjustment(Rem) | 1.5d | 2026-10-15 | 2026-10-17 | B2.33 71 19 16_R SS, B2.33 71 19 18 |  | 39.68d |
| B2.33 71 49.23.64_R |  | Cable Pulling(Rem) | 2.5d | 2026-10-15 | 2026-10-18 | B2.33 71 19 18_R SS, B2.33 71 49.23.64 |  | 39.68d |
| B2.33 71 19 19 |  | Backfilling | 3d | 2026-10-18 | 2026-10-21 | B2.33 71 49.23.64_R |  | 39.68d |
|  | SL Poles | **SL Poles** |  | 2026-08-26 | 2026-10-15 |  |  |  |
|  | Pole (12 M Sngl Arm) | **Pole (12 M Single Arm)** |  | 2026-08-26 | 2026-10-15 |  |  |  |
| B2.33 71 16.031 |  | Excavation | 12d | 2026-08-26 A | 2026-09-08 A | B6. 33 42 13.011 | 100% |  |
| B2.33 71 16.032 |  | PC & RC Foundation | 11d | 2026-08-29 A | 2026-09-09 A | B2.33 71 16.031 SS | 100% |  |
| B2.33 71 16.033 |  | Lighting Poles Installation Incl power box, Cables (84.00% Completed) | 7.3d | 2026-09-07 A | 2026-09-15 A | B2.33 71 16.032 SS, DMM2-Proc-Delv-6538 SS | 100% |  |
| B2.33 71 16.034 |  | Lighting Luminares Inst (84.00% Completed) | 2.3d | 2026-09-13 A | 2026-09-15 A | B2.33 71 16.033 SS | 100% |  |
| B2.33 71 16.033_R |  | Lighting Poles Installation Incl power box, Cables(Rem) | 2d | 2026-10-07 | 2026-10-08 | B2.33 71 16.032 SS, DMM2-Proc-Delv-6538_R SS, B2.33 71 16.033 |  | 23.32d |
| B2.33 71 16.034_R |  | Lighting Luminares Inst(Rem) | 2d | 2026-10-07 | 2026-10-08 | B2.33 71 16.033_R SS, B2.33 71 16.034 |  | 62.32d |
| B2.33 71 16.035 |  | Backfilling, Grouting & Chamfering | 6d | 2026-10-10 | 2026-10-15 | B2.33 71 16.034_R |  | 62.32d |
|  | Earthing | **Earthing** |  | 2026-10-10 | 2026-11-14 |  |  |  |
| B2.33 71 19 20 |  | Land Adjustment | 3d | 2026-10-10 | 2026-10-12 | B2.33 71 16.033_R |  | 23.32d |
| B2.33 71 19 21 |  | Earth Rods & Conduits | 3d | 2026-10-13 | 2026-10-15 | B2.33 71 19 20 |  | 23.32d |
| B2.33 71 19 22 |  | Backfilling | 3d | 2026-11-11 | 2026-11-14 | B2.33 71 19 21, B2.33 71 16.146 |  | 1.32d |
|  | SL Pillars | **SL Pillars** |  | 2026-10-31 | 2026-11-03 |  |  |  |
| B2.33 71 26 03 |  | Pillars Installation (Internal Wiring) | 2d | 2026-10-31 | 2026-11-01 | B2.33 71 16.033_R, B2.33 71 49.23.64_R, DMM2-Proc-Delv-6518_R |  | 87.32d |
| B2.33 71 26 041 |  | KWH meter mounting a frame installation | 2d | 2026-11-02 | 2026-11-03 | B2.33 71 26 03 |  | 87.32d |

| ID | WBS | Task | Duration | Start | Finish | Predecessors | Complete | Total float |
| --- | --- | --- | --- | --- | --- | --- | --- | --- |
|  | Earth & Road Works | **Earth & Road Works** |  | 2026-03-24 | 2026-11-19 |  |  |  |
|  | Earth Works | **Earth Works** |  | 2026-03-24 | 2026-04-06 |  |  |  |
| B1.2.31 23 16.01.8 |  | Roadway Excavation | 2d | 2026-03-24 A | 2026-03-26 A | DMM2-Eng-MS-78, B1.2.31 23 16.01.12 | 100% |  |
| B1.2.31 23 23.01.8 |  | Embankment Backfiling | 5.5d | 2026-03-30 A | 2026-04-06 A | B1.2.31 23 16.01.8 | 100% |  |
|  | Earth Layers | **Earth Layers** |  | 2026-04-08 | 2026-10-13 |  |  |  |
| B1.2.32 11 13.01.8 |  | Subgrade (80.00% Completed) | 134d | 2026-04-08 A | 2026-09-15 A | B1.2.31 23 23.01.8 | 100% |  |
| B1.2.32 11 23.01.8 |  | Aggregate Base Course (60.58% Completed) | 109.52d | 2026-05-06 A | 2026-09-15 A | B1.2.32 11 13.01.8 SS | 100% |  |
| B1.2.32 11 13.01.8_R |  | Subgrade(Rem) | 6d | 2026-09-30 A | 2026-10-13 | B1.2.31 23 23.01.8, B1.2.32 11 13.01.8 | 10% | 107.92d |
| B1.2.32 11 23.01.8_R |  | Aggregate Base Course(Rem) | 1.95d | 2026-10-07 | 2026-10-08 | B1.2.32 11 13.01.8_R SS, B1.2.32 11 23.01.8 |  | 111.37d |
|  | Interlock | **Interlock** |  | 2026-11-15 | 2026-11-17 |  |  |  |
| B1.2.32 14 13.13.8 |  | 60mm thick - Interlocking Block Pavers | 3d | 2026-11-15 | 2026-11-17 | B2.33 71 19 22 |  | 1.32d |
|  | Curbstone | **Curbstone** |  | 2026-09-10 | 2026-10-08 |  |  |  |
|  | Pre Install | **Pre-Installation** |  | 2026-09-10 | 2026-10-08 |  |  |  |
| 32 16 13.031 |  | Excavation (10.00% Completed) | 4.3d | 2026-09-10 A | 2026-09-15 A | B1.2.32 11 23.01.3 SS | 100% |  |
| 32 16 13.032 |  | PCC (10.00% Completed) | 3.3d | 2026-09-12 A | 2026-09-15 A | 32 16 13.031 SS | 100% |  |
| 32 16 13.033 |  | Haunching (10.00% Completed) | 2.3d | 2026-09-13 A | 2026-09-15 A | 32 16 13.032 SS | 100% |  |
| 32 16 13.031_R |  | Excavation(Rem) | 2d | 2026-10-07 | 2026-10-08 | B1.2.32 11 23.01.3_R SS, 32 16 13.031 |  | 51.52d |
| 32 16 13.032_R |  | PCC(Rem) | 2d | 2026-10-07 | 2026-10-08 | 32 16 13.031_R SS, 32 16 13.032 |  | 51.52d |
| 32 16 13.033_R |  | Haunching(Rem) | 1.8d | 2026-10-07 | 2026-10-08 | 32 16 13.032_R SS, 32 16 13.033 |  | 51.52d |
|  | Installation | **Installation** |  | 2026-09-13 | 2026-10-08 |  |  |  |
| B1.2.32 16.13.01.8 |  | Curb Stone, Type K1 (10.00% Completed) | 2.3d | 2026-09-13 A | 2026-09-15 A | 32 16 13.033 SS | 100% |  |
| B1.2.32 16.13.01.8_R |  | Curb Stone, Type K1(Rem) | 1.8d | 2026-10-07 | 2026-10-08 | 32 16 13.033_R SS, B1.2.32 16.13.01.8 |  | 51.52d |
|  | Finishing | **Finishing** |  | 2026-09-15 | 2026-10-08 |  |  |  |
| 32 16 13.08 |  | Finishing, Fareface (10.00% Completed) | 0.3d | 2026-09-15 A | 2026-09-15 A | B1.2.32 16.13.01.8 SS | 100% |  |
| 32 16 13.08_R |  | Finishing, Fareface(Rem) | 1.8d | 2026-10-07 | 2026-10-08 | B1.2.32 16.13.01.8_R SS, 32 16 13.08 |  | 51.52d |
|  | Asphalt Layers | **Asphalt Layers** |  | 2026-06-07 | 2026-10-20 |  |  |  |
| B1.2.32 11 26.01.8 |  | Bituminous Base Course including Prime Coat (MC1) and tack coat (RC2) (72.00% Completed) | 86.08d | 2026-06-07 A | 2026-09-15 A | B1.2.32 11 23.01.8 SS | 100% |  |
| B1.2.32 11 26.01.8_R |  | Bituminous Base Course including Prime Coat (MC1) and tack coat (RC2)(Rem) | 2.24d | 2026-09-26 A | 2026-10-08 | B1.2.32 11 23.01.8_R SS, B1.2.32 11 26.01.8 | 41% | 0d |
| B1.2.32 12 16.01.8 |  | Bituminous concrete Wearing Course, including tack coat (RC2) | 5d | 2026-10-14 | 2026-10-20 | B1.2.32 11 26.01.8_R, 10 14 53.08, 32 16 13.08_R |  | 47d |
|  | Pavement Marking | **Pavement Marking** |  | 2026-10-20 | 2026-10-26 |  |  |  |
| B1.2.32 17 23.02.8 |  | Retroreflective Thermoplastic Yellow, Traffic lines | 2d | 2026-10-20 | 2026-10-22 | B1.2.32 12 16.01.8 |  | 93d |
| B1.2.32 17 23.01.8 |  | Retroreflective Thermoplastic White Traffic lines | 3d | 2026-10-22 | 2026-10-26 | B1.2.32 12 16.01.8, B1.2.32 17 23.02.8 |  | 93d |
|  | Traffic Signs | **Traffic Signs** |  | 2026-10-08 | 2026-11-19 |  |  |  |
|  | Pre Install | **Pre-Installation** |  | 2026-10-08 | 2026-10-14 |  |  |  |
| B2.31 23 00.221 |  | Excavation | 2d | 2026-10-08 | 2026-10-11 | B1.2.32 11 26.01.8_R |  | 0d |
| 10 14 53.08 |  | Foundation | 3d | 2026-10-11 | 2026-10-14 | B2.31 23 00.221 |  | 22d |
|  | Installation | **Installation** |  | 2026-11-18 | 2026-11-19 |  |  |  |
| B1.2.10 14 53.018 |  | 1 Sheet Alumenium, Single post | 2d | 2026-11-18 | 2026-11-19 | B1.2.32 14 13.13.8, 10 14 53.08, B1.2.32 17 23.02.8, B1.2.32 17 23.01.8 SS |  | 73.32d |
| B1.2.10 14 53.028 |  | 2 Sheet Alumenium, Single post | 2d | 2026-11-18 | 2026-11-19 | B1.2.32 14 13.13.8, 10 14 53.08, B1.2.32 17 23.02.8, B1.2.32 17 23.01.8 |  | 73.32d |
|  | Guard Rooms | **Guard Rooms** |  | 2026-02-09 | 2026-12-15 |  |  |  |
|  | Foundation | **Substructure & Foundation** |  | 2026-02-09 | 2026-09-05 |  |  |  |
| B8.31 23 16.011 |  | Excavation | 95.2d | 2026-02-09 A | 2026-06-18 A | B1.1.31 23 23.112 | 100% |  |
| B8.31 23 16.0111 |  | Vapor retarders | 2.88d | 2026-06-29 A | 2026-07-01 A | B8.31 23 16.019, DMM2-Proc-PO-0112 | 100% |  |
| B8.31 23 16.017 |  | 100 mm thickness lean concrete under the foundation | 1d | 2026-07-02 A | 2026-07-04 A | B8.31 23 16.015, DMM2-Proc-PO-0107 | 100% |  |
| B8.31 23 16.015 |  | Water proofing Paint below slab on grade | 2d | 2026-07-04 A | 2026-07-06 A | B8.31 23 16.013 | 100% |  |
| B8.31 23 16.019 |  | Footings | 1d | 2026-07-06 A | 2026-07-06 A | B8.31 23 16.017 | 100% |  |
| B8.31 23 16.013 |  | Aggregate base course | 3d | 2026-09-02 A | 2026-09-05 A | B8.31 23 16.011 | 100% |  |
|  | Slab on Grade | **Slab on Grade** |  | 2026-07-05 | 2026-08-27 |  |  |  |
| B8.31 23 16.0113 |  | 50 mm thickness lean concrete under slab on grade | 1d | 2026-07-05 A | 2026-07-05 A | B8.31 23 16.0111, DMM2-Proc-PO-0107 | 100% |  |
| B8.31 23 16.0139 |  | Slab on grade | 6d | 2026-08-22 A | 2026-08-27 A | B8.31 23 16.0113 | 100% |  |
|  | Utilities | **Underground Utilities** |  | 2026-10-07 | 2026-11-01 |  |  |  |
| B8.31 23 16.0115 |  | Gravel | 2d | 2026-10-07 | 2026-10-08 | B8.31 23 16.0113 |  | 6.32d |
| B8.31 23 16.0117 |  | uPVC pipes ?160mm | 2d | 2026-10-10 | 2026-10-11 | B8.31 23 16.0113, B8.31 23 16.0115, DMM2-Proc-Delv-7353 |  | 6.32d |
| B8.31 23 16.0119 |  | uPVC pipes ?110mm | 2d | 2026-10-12 | 2026-10-13 | B8.31 23 16.0113, B8.31 23 16.0115, B8.31 23 16.0117, DMM2-Proc-Delv-7353 |  | 6.32d |
| B8.31 23 16.0121 |  | uPVC pipes ?75mm | 2d | 2026-10-14 | 2026-10-15 | B8.31 23 16.0113, B8.31 23 16.0115, B8.31 23 16.0119, DMM2-Proc-Delv-7353 |  | 6.32d |
| B8.31 23 16.0123 |  | uPVC pipes ?50mm | 2d | 2026-10-17 | 2026-10-18 | B8.31 23 16.0113, B8.31 23 16.0115, B8.31 23 16.0121, DMM2-Proc-Delv-7353 |  | 6.32d |
| B8.31 23 16.0125 |  | PPR pipes ?32mm | 2d | 2026-10-19 | 2026-10-20 | B8.31 23 16.0113, B8.31 23 16.0115, B8.31 23 16.0123, DMM2-Proc-Delv-7354 |  | 6.32d |
| B8.31 23 16.0127 |  | PPR pipes ?25mm | 2d | 2026-10-21 | 2026-10-22 | B8.31 23 16.0113, B8.31 23 16.0115, B8.31 23 16.0125, DMM2-Proc-Delv-7354 |  | 6.32d |
| B8.31 23 16.0129 |  | PPR pipes ?20mm | 2d | 2026-10-21 | 2026-10-22 | B8.31 23 16.0113, B8.31 23 16.0115, B8.31 23 16.0127 SS, DMM2-Proc-Delv-7354 |  | 6.32d |
| B8.31 23 16.0131 |  | Scupper ?110mm | 2d | 2026-10-24 | 2026-10-25 | B8.31 23 16.0113, B8.31 23 16.0115, B8.31 23 16.0129, DMM2-Proc-Delv-7356 |  | 6.32d |
| B8.31 23 16.0133 |  | Clean out ?110mm | 2d | 2026-10-26 | 2026-10-27 | B8.31 23 16.0113, B8.31 23 16.0115, B8.31 23 16.0131, DMM2-Proc-Delv-7357 |  | 6.32d |
| B8.31 23 16.0135 |  | Floor drain | 2d | 2026-10-28 | 2026-10-29 | B8.31 23 16.0113, B8.31 23 16.0115, B8.31 23 16.0133, DMM2-Proc-Delv-7358, DMM2-Proc-Delv-4018 |  | 6.32d |
| B8.31 23 16.0137 |  | Manhole, dimensions 600mmX600mm | 2d | 2026-10-31 | 2026-11-01 | B8.31 23 16.0113, B8.31 23 16.0115, B8.31 23 16.0135, DMM2-Proc-Delv-7360 |  | 6.32d |
|  | Walls & Columns | **Superstructure - Walls & Columns** |  | 2026-09-09 | 2026-11-05 |  |  |  |
| B8.31 23 16.0141 |  | Reinforced Concrete columns | 3d | 2026-09-09 A | 2026-09-12 A | B8.31 23 16.0139, B8.31 23 16.019, DMM2-Eng-PQ-1248 | 100% |  |
| B8.31 23 16.0143 |  | Concrete masonry unit, 200mm thick wall | 2d | 2026-11-02 | 2026-11-03 | B8.31 23 16.0139, B8.31 23 16.0141, DMM2-Proc-PO-0116, DMM2-Proc-Delv-7344, B8.31 23 16.0117, B8.31 23 16.0119, B8.31 23 16.0121, B8.31 23 16.0123, B8.31 23 16.0125, B8.31 23 16.0127, B8.31 23 16.0129, B8.31 23 16.0131, B8.31 23 16.0133, B8.31 23 16.0135, B8.31 23 16.0137, B8.31 23 16.0115 |  | 6.32d |
| B8.31 23 16.0145 |  | Concrete masonry unit, 150mm thick wall | 2d | 2026-11-04 | 2026-11-05 | B8.31 23 16.0139, B8.31 23 16.0143, DMM2-Proc-PO-0116, DMM2-Proc-Delv-7344 |  | 6.32d |
|  | Roof | **Superstructure - Roof** |  | 2026-10-12 | 2026-12-06 |  |  |  |
| B8.31 23 16.0147 |  | Roof Slab and beams | 2d | 2026-10-12 | 2026-10-13 | B8.31 23 16.0141, DMM2-Proc-PO-0111 |  | 41.32d |
| B8.31 23 16.0153 |  | Sloped screed for roof | 2d | 2026-10-14 | 2026-10-15 | B8.31 23 16.0147, DMM2-Proc-PO-0109, DMM2-Proc-PO-0114 |  | 41.32d |

| ID | WBS | Task | Duration | Start | Finish | Predecessors | Complete | Total float |
| --- | --- | --- | --- | --- | --- | --- | --- | --- |
| B8.31 23 16.0187 |  | Water proofing Membrane for roof | 2d | 2026-10-17 | 2026-10-18 | B8.31 23 16.0153, DMM2-Proc-PO-0115, DMM2-Proc-Delv-7343 |  | 41.32d |
| B8.31 23 16.01111 |  | 50mm Extruded polystyrene insulation for roof | 2d | 2026-10-19 | 2026-10-20 | B8.31 23 16.0187 |  | 41.32d |
| B8.31 23 16.01135 |  | Water proofing Membrane with protection board | 1d | 2026-12-01 | 2026-12-01 | B8.31 23 16.01111, B8.31 23 16.01123, DMM2-Proc-PO-0115, DMM2-Proc-Delv-7341 |  | 6.32d |
| B8.31 23 16.01145 |  | 50mm foam concrete for roof layers | 2d | 2026-12-02 | 2026-12-03 | B8.31 23 16.01135, DMM2-Proc-PO-0110, DMM2-Proc-PO-0108 |  | 6.32d |
| B8.31 23 16.01149 |  | Stone coping 30mm thickness | 2d | 2026-12-05 | 2026-12-06 | B8.31 23 16.01145, B8.31 23 16.01147, DMM2-Proc-Delv-7339 |  | 6.32d |
|  | Enclosure | **Enclosure & Weatherproofing** |  | 2026-11-07 | 2026-11-19 |  |  |  |
| B8.31 23 16.0149 |  | Aluminum window W01 size (1.3m x 1.4m) | 1d | 2026-11-07 | 2026-11-07 | B8.31 23 16.0143, B8.31 23 16.0145, DMM2-Proc-Delv-7351 |  | 16.32d |
| B8.31 23 16.0155 |  | Aluminum window W02 size (0.6m x 0.9m) | 2d | 2026-11-08 | 2026-11-09 | B8.31 23 16.0149, B8.31 23 16.0143, B8.31 23 16.0145, DMM2-Proc-Delv-7351 |  | 16.32d |
| B8.31 23 16.0189 |  | External plastering | 4d | 2026-11-10 | 2026-11-14 | B8.31 23 16.0155, B8.31 23 16.0143, B8.31 23 16.0145, B8.31 23 16.0149 |  | 16.32d |
| B8.31 23 16.01113 |  | Water proofing Membrane with 50mm screed protection | 2d | 2026-11-15 | 2026-11-16 | B8.31 23 16.0189, DMM2-Proc-PO-0115 |  | 16.32d |
| B8.31 23 16.01137 |  | External painting | 3d | 2026-11-17 | 2026-11-19 | B8.31 23 16.01113, DMM2-Proc-PO-0119, DMM2-Proc-Delv-7347 |  | 16.32d |
|  | Interior & MEP | **Interior & MEP** |  | 2026-11-07 | 2026-12-15 |  |  |  |
| B8.31 23 16.0151 |  | Internal plastering | 2d | 2026-11-07 | 2026-11-08 | B8.31 23 16.0143, B8.31 23 16.0145 |  | 6.32d |
| B8.31 23 16.0157 |  | Cementitious Water proofing for wet areas | 2d | 2026-11-09 | 2026-11-10 | B8.31 23 16.0151 |  | 6.32d |
|  | Mechanical | **Mechanical** |  | 2026-11-09 | 2026-11-12 |  |  |  |
| B8.31 23 16.0159 |  | DX wall mounted Split/AC | 2d | 2026-11-09 | 2026-11-10 | B8.31 23 16.0151, DMM2-Proc-Delv-7355 |  | 18.32d |
| B8.31 23 16.0191 |  | EF-01 Exhaust axial fan | 2d | 2026-11-11 | 2026-11-12 | B8.31 23 16.0159, DMM2-Proc-Delv-7352 |  | 18.32d |
|  | Plumb & Elec | **Plumbing & Electrical** |  | 2026-11-09 | 2026-12-15 |  |  |  |
| B8.31 23 16.0177 |  | 20A DOUBLE POLE SWITCH | 2d | 2026-11-09 | 2026-11-10 | B8.31 23 16.0151, DMM2-Proc-Delv-7368 |  | 11.32d |
| B8.31 23 16.0179 |  | 13A SPUR OUTLET, For guard room 1&2 | 2d | 2026-11-11 | 2026-11-12 | B8.31 23 16.0151, B8.31 23 16.0177, DMM2-Proc-Delv-7368 |  | 11.32d |
| B8.31 23 16.0161 |  | Electrical Water Heater 50L | 2d | 2026-11-14 | 2026-11-15 | B8.31 23 16.0151, B8.31 23 16.0159, B8.31 23 16.0191, DMM2-Proc-Delv-7359 |  | 18.32d |
| B8.31 23 16.0163 |  | DB-MGR Panel | 2d | 2026-11-17 | 2026-11-18 | B8.31 23 16.0151, B8.31 23 16.0161, DMM2-Proc-Delv-7365 |  | 17.32d |
| B8.31 23 16.0181 |  | 13A SINGLE SWITCH SOCKET OUTLET | 2d | 2026-11-17 | 2026-11-18 | B8.31 23 16.0151, B8.31 23 16.0179, DMM2-Proc-Delv-7368, DMM2-Proc-Delv-7365 |  | 8.32d |
| B8.31 23 16.0165 |  | Grounding and lightning system | 2d | 2026-11-19 | 2026-11-21 | B8.31 23 16.0151, B8.31 23 16.0163, DMM2-Proc-Delv-7369 |  | 17.32d |
| B8.31 23 16.0183 |  | 13A DOUBLE SWITCH SOCKET OUTLET | 2d | 2026-11-19 | 2026-11-21 | B8.31 23 16.0151, B8.31 23 16.0181, DMM2-Proc-Delv-7368 |  | 8.32d |
| B8.31 23 16.0167 |  | Fire alarm system | 2d | 2026-11-22 | 2026-11-23 | B8.31 23 16.0151, B8.31 23 16.0165, DMM2-Proc-Delv-7371 |  | 17.32d |
| B8.31 23 16.0169 |  | Data/ voice RJ45 outlet include CAT6A cable | 2d | 2026-12-07 | 2026-12-08 | B8.31 23 16.0151, B8.31 23 16.0167, B8.31 23 16.01149, DMM2-Proc-Delv-7374 |  | 6.32d |
| B8.31 23 16.0171 |  | RJ45 connector include CAT6A cable for security cameras | 2d | 2026-12-09 | 2026-12-10 | B8.31 23 16.0151, B8.31 23 16.0169, B8.31 23 16.01105 |  | 6.32d |
| B8.31 23 16.0173 |  | Switch 20A, 1P, 60Hz Isolator/disconnect switches | 2d | 2026-12-12 | 2026-12-13 | B8.31 23 16.0151, B8.31 23 16.0171, B8.31 23 16.01129, DMM2-Proc-Delv-7396, DMM2-Proc-Delv-7370 |  | 6.32d |
| B8.31 23 16.0175 |  | DB-GR Panel | 2d | 2026-12-14 | 2026-12-15 | B8.31 23 16.0151, B8.31 23 16.0173, DMM2-Proc-Delv-7365 |  | 6.32d |
| B8.31 23 16.0193 |  | 4Cx 6mm2 + 1Cx6mm2 Cu/XLPE/PVC FROM KWHM to DB-MGR | 2d | 2026-12-14 | 2026-12-15 | B8.31 23 16.0163, B8.31 23 16.0175 SS, DMM2-Proc-Delv-7366, DMM2-Proc-Delv-4588 |  | 6.32d |
|  | Interior Finishes | **Interior Finishes** |  | 2026-11-11 | 2026-11-28 |  |  |  |
| B8.31 23 16.0195 |  | Porcelain flooring tiles size (600x600) | 3d | 2026-11-11 | 2026-11-14 | B8.31 23 16.0157, DMM2-Proc-Delv-7345 |  | 6.32d |
| B8.31 23 16.01117 |  | Raised floor finish | 3d | 2026-11-15 | 2026-11-17 | B8.31 23 16.0195, DMM2-Proc-Delv-7348 |  | 16.32d |
| B8.31 23 16.0197 |  | Ceramic wall tiles size (300x300) mm | 3d | 2026-11-15 | 2026-11-17 | B8.31 23 16.0157, B8.31 23 16.0195 |  | 6.32d |
| B8.31 23 16.01107 |  | Porcelain flooring tiles size (300x300) | 3d | 2026-11-18 | 2026-11-21 | B8.31 23 16.0157, B8.31 23 16.0197, DMM2-Proc-Delv-7345 |  | 6.32d |
| B8.31 23 16.01109 |  | Porcelain flooring tiles size (500x500) | 3d | 2026-11-22 | 2026-11-24 | B8.31 23 16.0157, B8.31 23 16.01107, DMM2-Proc-Delv-7345 |  | 6.32d |
| B8.31 23 16.0185 |  | Internal painting | 3d | 2026-11-22 | 2026-11-24 | B8.31 23 16.0151, B8.31 23 16.0183, DMM2-Proc-PO-0119, DMM2-Proc-Delv-7342 |  | 8.32d |
| B8.31 23 16.01115 |  | Porcelain skirting 100mm height | 3d | 2026-11-25 | 2026-11-28 | B8.31 23 16.0195, B8.31 23 16.01107, B8.31 23 16.01109 |  | 7.32d |
| B8.31 23 16.0199 |  | Gypsum board ceiling, including paint | 2d | 2026-11-25 | 2026-11-26 | B8.31 23 16.0185, DMM2-Proc-Delv-7346 |  | 8.32d |
|  | Fixtures, Equipment | **Fixtures, Equipment & Final Connections** |  | 2026-11-21 | 2026-12-09 |  |  |  |
|  | Doors | **Install Doors** |  | 2026-11-29 | 2026-12-05 |  |  |  |
| B8.31 23 16.01139 |  | Steel Door SD1 | 2d | 2026-11-29 | 2026-11-30 | B8.31 23 16.0185, B8.31 23 16.0195, B8.31 23 16.0197, B8.31 23 16.01115, B8.31 23 16.01117, B8.31 23 16.0199, B8.31 23 16.01107, B8.31 23 16.01109, DMM2-Proc-Delv-7349 |  | 7.32d |
| B8.31 23 16.01141 |  | Wood Door TD1 | 2d | 2026-12-01 | 2026-12-02 | B8.31 23 16.0185, B8.31 23 16.0195, B8.31 23 16.0197, B8.31 23 16.01115, B8.31 23 16.01117, B8.31 23 16.0199, B8.31 23 16.01107, B8.31 23 16.01109, B8.31 23 16.01139, DMM2-Proc-Delv-7350 |  | 7.32d |
| B8.31 23 16.01143 |  | Wood Door TD2 | 2d | 2026-12-03 | 2026-12-05 | B8.31 23 16.0185, B8.31 23 16.0195, B8.31 23 16.0197, B8.31 23 16.01115, B8.31 23 16.01117, B8.31 23 16.0199, B8.31 23 16.01107, B8.31 23 16.01109, B8.31 23 16.01141, DMM2-Proc-Delv-7350 |  | 7.32d |
|  | Sanitarywares | **Install Sanitarywares** |  | 2026-11-25 | 2026-11-30 |  |  |  |
| B8.31 23 16.01119 |  | Toilet | 2d | 2026-11-25 | 2026-11-26 | B8.31 23 16.0195, B8.31 23 16.01107, B8.31 23 16.01109, DMM2-Proc-Delv-7362 |  | 6.32d |
| B8.31 23 16.01121 |  | Shower | 2d | 2026-11-28 | 2026-11-29 | B8.31 23 16.0195, B8.31 23 16.0197, B8.31 23 16.01107, B8.31 23 16.01109, B8.31 23 16.01119, DMM2-Proc-Delv-7361 |  | 6.32d |
| B8.31 23 16.01123 |  | Semi pedestal sink | 1d | 2026-11-30 | 2026-11-30 | B8.31 23 16.0195, B8.31 23 16.01107, B8.31 23 16.01109, B8.31 23 16.01121, DMM2-Proc-Delv-7363 |  | 6.32d |
|  | Tech | **Install Final Electrical & Tech Components** |  | 2026-11-21 | 2026-12-09 |  |  |  |
| B8.31 23 16.01147 |  | WALL MOUNTED BULK HEAD OUTDOOR LED 15 WATTS, IP65 | 2d | 2026-11-21 | 2026-11-22 | B8.31 23 16.01137, DMM2-Proc-Delv-7367 |  | 16.32d |
| B8.31 23 16.01131 |  | Data Cabinet including all devices 12U | 2d | 2026-11-25 | 2026-11-26 | B8.31 23 16.0195, B8.31 23 16.01107, B8.31 23 16.01109, B8.31 23 16.0185, DMM2-Proc-Delv-7373 |  | 8.32d |
| B8.31 23 16.01101 |  | 50-inch screen | 2d | 2026-11-28 | 2026-11-29 | B8.31 23 16.0185, B8.31 23 16.01131, DMM2-Proc-Delv-7376 |  | 8.32d |
| B8.31 23 16.01133 |  | PC workstation | 2d | 2026-11-30 | 2026-12-01 | B8.31 23 16.0195, B8.31 23 16.01107, B8.31 23 16.01109, B8.31 23 16.0185, B8.31 23 16.01101, DMM2-Proc-Delv-7375 |  | 8.32d |
| B8.31 23 16.01125 |  | ROUND RECESSED LED 11.5 WATTS, IP20 | 2d | 2026-12-06 | 2026-12-07 | B8.31 23 16.0199, B8.31 23 16.01143, DMM2-Proc-Delv-7367 |  | 7.32d |
| B8.31 23 16.01127 |  | ROUND RECESSED LED 11.5 WATTS, IP20, with Emergency | 2d | 2026-12-08 | 2026-12-09 | B8.31 23 16.0199, B8.31 23 16.01125, DMM2-Proc-Delv-7367 |  | 7.32d |
| B8.31 23 16.01129 |  | ROUND RECESSED LED 11.5 WATTS, IP44 | 2d | 2026-12-08 | 2026-12-09 | B8.31 23 16.0199, B8.31 23 16.01127 SS, DMM2-Proc-Delv-7367 |  | 7.32d |
|  | Fire | **Install Fire Equipments** |  | 2026-12-02 | 2026-12-06 |  |  |  |
| B8.31 23 16.01103 |  | CO2 fire extinguishers | 2d | 2026-12-02 | 2026-12-03 | B8.31 23 16.0185, B8.31 23 16.01133, DMM2-Proc-Delv-7364 |  | 8.32d |
| B8.31 23 16.01105 |  | Powder fire extinguishers | 2d | 2026-12-05 | 2026-12-06 | B8.31 23 16.0185, B8.31 23 16.01103, DMM2-Proc-Delv-7364 |  | 8.32d |
|  | Potable Water PumpST | **Potable Water Pump Station** |  | 2025-12-07 | 2026-12-16 |  |  |  |
|  | Earthworks | **Earthworks & Substructure** |  | 2025-12-07 | 2026-08-04 |  |  |  |
| B3.2.31 23 16.01 |  | Excavation | 60.71d | 2025-12-07 A | 2026-02-15 A | B3.33 14 11.01.0114, B1.1.31 23 23.102 | 100% |  |
| B3.2.03 30 00.01 |  | Footings & Ground Beams Construction | 48.8d | 2026-02-24 A | 2026-05-02 A | B3.2.31 23 16.01 | 100% |  |
| B3.2.32 11 23.01.5 |  | Aggregate Base Course below Slab on Grade | 4d | 2026-05-02 A | 2026-05-05 A | B3.2.31 23 16.01 | 100% |  |
| B3.2.32 11 23.01.7 |  | 100mm Lean Concrete under Foundations | 8d | 2026-05-07 A | 2026-05-17 A | B3.2.03 30 00.01 | 100% |  |
| B3.2.32 11 23.01.9 |  | 50mm Lean Concrete under Slab on Grade | 3d | 2026-05-20 A | 2026-05-23 A | B3.2.32 11 23.01.5 | 100% |  |
| B3.2.32 11 23.01.11 |  | Vapor Retarders below Slab on Grade | 2d | 2026-07-29 A | 2026-07-30 A | B3.2.32 11 23.01.9 | 100% |  |
| B3.2.32 11 23.01.15 |  | Waterproofing Paint below Slab on Grade | 3d | 2026-08-01 A | 2026-08-03 A | B3.2.32 11 23.01.11 | 100% |  |
| B3.2.32 11 23.01.19 |  | Slab on Grade & Ground Beams Pouring | 3d | 2026-08-02 A | 2026-08-04 A | B3.2.32 11 23.01.15 | 100% |  |

| ID | WBS | Task | Duration | Start | Finish | Predecessors | Complete | Total float |
| --- | --- | --- | --- | --- | --- | --- | --- | --- |
|  | Superstructure | **Superstructure** |  | 2026-06-24 | 2026-10-10 |  |  |  |
| B3.2.32 11 23.01.25 |  | Reinforced Concrete Walls & Columns | 26.4d | 2026-06-24 A | 2026-07-25 A | B3.2.32 11 23.01.19 | 100% |  |
| B3.2.32 11 23.01.39 |  | Roof Slab & Beams Construction (75.00% Completed) | 36d | 2026-08-05 A | 2026-09-15 A | B3.2.32 11 23.01.19 | 100% |  |
| B3.2.32 11 23.01.27 |  | CMU (Concrete Masonry Unit) Walls Construction (75.00% Completed) | 17d | 2026-08-27 A | 2026-09-15 A | B3.2.32 11 23.01.19 | 100% |  |
| B3.2.32 11 23.01.27_R |  | CMU (Concrete Masonry Unit) Walls Construction(Rem) | 2.5d | 2026-10-07 | 2026-10-10 | DMM2-Proc-Delv-7293 FF, B3.2.32 11 23.01.19, B3.2.32 11 23.01.27 |  | 35.82d |
| B3.2.32 11 23.01.39_R |  | Roof Slab & Beams Construction(Rem) | 2d | 2026-10-07 | 2026-10-08 | B3.2.32 11 23.01.19, B3.2.32 11 23.01.39 |  | 26.32d |
|  | 1 | **Building Envelope & Waterproofing** |  | 2026-10-07 | 2026-12-14 |  |  |  |
| B3.2.32 11 23.01.21 |  | Sloped Screed for Roof | 4d | 2026-10-07 | 2026-10-11 | B3.2.32 11 23.01.15 |  | 46.32d |
| B3.2.32 11 23.01.43 |  | External Plastering | 4d | 2026-10-07 | 2026-10-11 | B3.2.32 11 23.01.25 |  | 28.32d |
| B3.2.32 11 23.01.49 |  | Waterproofing Membrane for Roof | 2d | 2026-10-10 | 2026-10-11 | B3.2.32 11 23.01.39_R |  | 44.32d |
| B3.2.32 11 23.01.29 |  | Geotextile Membrane for Roof | 2d | 2026-10-12 | 2026-10-13 | B3.2.32 11 23.01.21 |  | 46.32d |
| B3.2.32 11 23.01.65 |  | Water proofing with 50mm screed protection | 2d | 2026-10-12 | 2026-10-13 | B3.2.32 11 23.01.43 |  | 42.32d |
| B3.2.32 11 23.01.41 |  | 50mm Foam Concrete for Roof | 2d | 2026-10-14 | 2026-10-15 | B3.2.32 11 23.01.29 |  | 46.32d |
| B3.2.32 11 23.01.79 |  | Stainless steel at top of tank size of 950x950mm | 2d | 2026-10-14 | 2026-10-15 | B3.2.32 11 23.01.49, B3.2.32 11 23.01.65, B3.2.32 11 23.01.39_R |  | 42.32d |
| B3.2.32 11 23.01.51 |  | Gravel for Roof | 2d | 2026-10-17 | 2026-10-18 | B3.2.32 11 23.01.41, DMM2-Proc-Delv-7297, B6.33 42 11.052 |  | 46.32d |
| B3.2.32 11 23.01.69 |  | Stone Copping Installation | 2d | 2026-10-19 | 2026-10-20 | B3.2.32 11 23.01.51 |  | 46.32d |
| B3.2.32 11 23.01.250 |  | External Painting | 2d | 2026-12-13 | 2026-12-14 | B3.2.32 11 23.01.143, B3.2.32 11 23.01.59, B3.2.32 11 23.01.75, B3.2.32 11 23.01.95, B3.2.32 11 23.01.109, B3.2.32 11 23.01.121, B3.2.32 11 23.01.61, B3.2.32 11 23.01.77, B3.2.32 11 23.01.97, B3.2.32 11 23.01.135, B3.2.32 11 23.01.233 |  | 3.32d |
|  | 2 | **Interior Finishes & Fixed Installations** |  | 2026-10-07 | 2026-11-24 |  |  |  |
| B3.2.32 11 23.01.31 |  | Lean Concrete for Equipment Pads | 3d | 2026-10-07 | 2026-10-10 | B3.2.32 11 23.01.19 |  | 27.32d |
| B3.2.32 11 23.01.33 |  | Stairs Construction | 3d | 2026-11-02 | 2026-11-04 | B3.2.32 11 23.01.19, DMM2-Proc-Delv-7292 |  | 16.32d |
| B3.2.32 11 23.01.45 |  | Internal Plastering | 3d | 2026-11-05 | 2026-11-08 | B3.2.32 11 23.01.25, B3.2.32 11 23.01.33 |  | 16.32d |
| B3.2.32 11 23.01.63 |  | Water proofing Membrane with protection board | 3d | 2026-11-09 | 2026-11-11 | B3.2.32 11 23.01.45 |  | 19.32d |
| B3.2.32 11 23.01.71 |  | Internal Painting (Acrylic/Emulsion) | 2d | 2026-11-23 | 2026-11-24 | B3.2.32 11 23.01.45, B3.2.32 11 23.01.63, B3.2. 26 28 16 .01, B3.2. 26 28 16 .02, B3.2. 26 28 16 .03, B3.2.32 11 23.01.290, B3.2. 26 24 16 .01, B3.2. 26 24 16 .02, B3.2. 26 24 16 .03 |  | 10.32d |
| B3.2.32 11 23.01.91 |  | Epoxy Paint for Floors & Non-Toxic Epoxy for Tank | 2d | 2026-11-23 | 2026-11-24 | B3.2.32 11 23.01.71 SS, B3.2.32 11 23.01.89, B3.2.32 11 23.01.79 |  | 10.32d |
|  | 3 | **Mechanical & Piping Rough-In** |  | 2026-10-14 | 2026-12-05 |  |  |  |
| B3.2.32 11 23.01.53 |  | Overhead Crane Installation | 2d | 2026-10-21 | 2026-10-22 | B3.2.32 11 23.01.39_R, DMM2-Proc-Delv-2538_R |  | 16.32d |
| B3.2.32 11 23.01.73 |  | Surge Tank | 2d | 2026-11-05 | 2026-11-07 | B3.2.32 11 23.01.53, B3.2.32 11 23.01.31, DMM2-Proc-Delv-3778 |  | 11.32d |
| B3.2.32 11 23.01.93 |  | Control Panel | 2d | 2026-11-05 | 2026-11-07 | B3.2.32 11 23.01.53, B3.2.32 11 23.01.73 SS, DMM2-Proc-Delv-3828_R |  | 11.32d |
|  | 1 | **Major Equipment** |  | 2026-10-24 | 2026-11-18 |  |  |  |
|  | 5 | **Pumps** |  | 2026-10-24 | 2026-11-01 |  |  |  |
| B3.2.32 11 23.01.81 |  | Water Pump - Vertical multistage cintrifugal pump | 2d | 2026-10-24 | 2026-10-25 | B3.2.32 11 23.01.31, B3.2.32 11 23.01.53, DMM2-Proc-Delv-2508 |  | 20.32d |
| B3.2.32 11 23.01.123 |  | Submersible pump | 3d | 2026-10-25 | 2026-10-27 | B3.2.32 11 23.01.31, B3.2.32 11 23.01.53, B3.2.32 11 23.01.111 FF, DMM2-Proc-Delv-3728 |  | 20.32d |
| B3.2.32 11 23.01.111 |  | Fire Pump - Vertical multistage cintrifugal (jockey) pump | 2d | 2026-10-26 | 2026-10-27 | B3.2.32 11 23.01.31, B3.2.32 11 23.01.53, B3.2.32 11 23.01.99 FF, DMM2-Proc-Delv-2518_R |  | 20.32d |
| B3.2.32 11 23.01.99 |  | Fire Pump - split case cintrifugal pump | 2d | 2026-10-26 | 2026-10-27 | B3.2.32 11 23.01.31, B3.2.32 11 23.01.53, B3.2.32 11 23.01.81, DMM2-Proc-Delv-2518_R |  | 20.32d |
| B3.2.32 11 23.01.139 |  | Manually Operated Fuel Pump | 2d | 2026-10-28 | 2026-10-29 | B3.2.32 11 23.01.31, B3.2.32 11 23.01.53, B3.2.32 11 23.01.123 |  | 32.32d |
| B3.2.32 11 23.01.149 |  | Positive Displacement Rotary Type Pump | 2d | 2026-10-31 | 2026-11-01 | B3.2.32 11 23.01.31, B3.2.32 11 23.01.53, B3.2.32 11 23.01.139 |  | 32.32d |
|  | 1 | **Chlorination System** |  | 2026-11-09 | 2026-11-18 |  |  |  |
| B3.2.32 11 23.01.83 |  | Chlorine Cylinder racks | 2d | 2026-11-09 | 2026-11-10 | B3.2.32 11 23.01.31, B3.2.32 11 23.01.53, DMM2-Proc-Delv-7308 |  | 2.32d |
| B3.2.32 11 23.01.101 |  | Chlorinators | 2d | 2026-11-11 | 2026-11-12 | B3.2.32 11 23.01.31, B3.2.32 11 23.01.53, B3.2.32 11 23.01.83, DMM2-Proc-Delv-7309 |  | 2.32d |
| B3.2.32 11 23.01.113 |  | Discharge Line Analyzer | 2d | 2026-11-11 | 2026-11-12 | B3.2.32 11 23.01.31, B3.2.32 11 23.01.53, B3.2.32 11 23.01.101 FF, DMM2-Proc-Delv-7310 |  | 2.32d |
| B3.2.32 11 23.01.125 |  | Motive Water Pumps (Injection) | 2d | 2026-11-14 | 2026-11-15 | B3.2.32 11 23.01.31, B3.2.32 11 23.01.53, B3.2.32 11 23.01.83, B3.2.32 11 23.01.101, B3.2.32 11 23.01.113 SS, DMM2-Proc-Delv-2508 |  | 2.32d |
| B3.2.32 11 23.01.127 |  | Motive Water Pumps (Water) | 2d | 2026-11-14 | 2026-11-15 | B3.2.32 11 23.01.31, B3.2.32 11 23.01.53, B3.2.32 11 23.01.83, B3.2.32 11 23.01.101, B3.2.32 11 23.01.113, DMM2-Proc-Delv-2508 |  | 2.32d |
| B3.2.32 11 23.01.137 |  | Control Panel | 2d | 2026-11-17 | 2026-11-18 | B3.2.32 11 23.01.31, B3.2.32 11 23.01.53, B3.2.32 11 23.01.83, B3.2.32 11 23.01.101, B3.2.32 11 23.01.113, B3.2.32 11 23.01.125, B3.2.32 11 23.01.127, DMM2-Proc-Delv-3828_R, B3.2.32 11 23.01.3 |  | 1.32d |
|  | 2 | **Internal Piping & Valves Installation** |  | 2026-11-17 | 2026-12-05 |  |  |  |
|  | 1 | **Pipes** |  | 2026-11-17 | 2026-12-05 |  |  |  |
|  | 1 | **Double Flanged DI Pipes** |  | 2026-11-17 | 2026-11-23 |  |  |  |
| B3.2.32 11 23.01.147 |  | Double Flanged DI Pipe ?60 mm | 2d | 2026-11-17 | 2026-11-18 | B3.2.32 11 23.01.101, B3.2.32 11 23.01.137 SS, B3.2.32 11 23.01.73, B3.2.32 11 23.01.93, B3.2.32 11 23.01.123, DMM2-Proc-Delv-3738_R |  | 7.32d |
| B3.2.32 11 23.01.155 |  | Double Flanged DI Pipe ?80 mm | 2d | 2026-11-19 | 2026-11-21 | B3.2.32 11 23.01.101, B3.2.32 11 23.01.137, B3.2.32 11 23.01.73, B3.2.32 11 23.01.93, B3.2.32 11 23.01.123, B3.2.32 11 23.01.147 SS, DMM2-Proc-Delv-3738_R |  | 5.32d |
| B3.2.32 11 23.01.161 |  | Double Flanged DI Pipe ?100 mm | 2d | 2026-11-19 | 2026-11-21 | B3.2.32 11 23.01.101, B3.2.32 11 23.01.137, B3.2.32 11 23.01.73, B3.2.32 11 23.01.93, B3.2.32 11 23.01.123, B3.2.32 11 23.01.155 SS, DMM2-Proc-Delv-3738_R |  | 5.32d |
| B3.2.32 11 23.01.169 |  | Double Flanged DI Pipe ?200 mm | 2d | 2026-11-19 | 2026-11-21 | B3.2.32 11 23.01.101, B3.2.32 11 23.01.137, B3.2.32 11 23.01.73, B3.2.32 11 23.01.93, B3.2.32 11 23.01.123, B3.2.32 11 23.01.161 SS, DMM2-Proc-Delv-3738_R |  | 5.32d |
| B3.2.32 11 23.01.179 |  | Double Flanged DI Pipe ?300 mm | 2d | 2026-11-22 | 2026-11-23 | B3.2.32 11 23.01.101, B3.2.32 11 23.01.137, B3.2.32 11 23.01.73, B3.2.32 11 23.01.93, B3.2.32 11 23.01.123, B3.2.32 11 23.01.169, DMM2-Proc-Delv-3738_R |  | 5.32d |
| B3.2.32 11 23.01.185 |  | Double Flanged DI Pipe ?350 mm | 2d | 2026-11-22 | 2026-11-23 | B3.2.32 11 23.01.101, B3.2.32 11 23.01.137, B3.2.32 11 23.01.73, B3.2.32 11 23.01.93, B3.2.32 11 23.01.123, B3.2.32 11 23.01.179 FF, DMM2-Proc-Delv-3738_R |  | 5.32d |
|  | 2 | **PPR Pipes** |  | 2026-11-24 | 2026-12-05 |  |  |  |
| B3.2.32 11 23.01.199 |  | PPR Pipes with ?25mm | 2d | 2026-11-24 | 2026-11-25 | B3.2.32 11 23.01.185 |  | 5.32d |
| B3.2.32 11 23.01.203 |  | PPR Pipes with ?32mm | 2d | 2026-11-26 | 2026-11-28 | B3.2.32 11 23.01.185, B3.2.32 11 23.01.199 |  | 5.32d |
| B3.2.32 11 23.01.209 |  | PPR Pipes with ?40mm | 2d | 2026-11-29 | 2026-11-30 | B3.2.32 11 23.01.185, B3.2.32 11 23.01.203 |  | 5.32d |
| B3.2.32 11 23.01.213 |  | Hose Bibb Installation | 2d | 2026-12-01 | 2026-12-02 | B3.2.32 11 23.01.199, B3.2.32 11 23.01.203, B3.2.32 11 23.01.209, DMM2-Proc-Delv-7306 |  | 5.32d |
| B3.2.32 11 23.01.217 |  | Emergency Shower Installation | 2d | 2026-12-03 | 2026-12-05 | B3.2.32 11 23.01.213, DMM2-Proc-Delv-7311, DMM2-Proc-Delv-2278 |  | 5.32d |
|  | 2 | **Valves** |  | 2026-11-17 | 2026-11-28 |  |  |  |
|  | 1 | **Gate Valves** |  | 2026-11-17 | 2026-11-25 |  |  |  |
| B3.2.32 11 23.01.157 |  | Manually operated Gate Valve DN60 | 2d | 2026-11-17 | 2026-11-18 | B3.2.32 11 23.01.147 SS, DMM2-Proc-Delv-3748 |  | 17.32d |
| B3.2.32 11 23.01.163 |  | Manually operated Gate Valve DN80 | 2d | 2026-11-22 | 2026-11-23 | B3.2.32 11 23.01.155, DMM2-Proc-Delv-3748 |  | 11.32d |
| B3.2.32 11 23.01.171 |  | Manually operated Gate Valve DN100 | 2d | 2026-11-22 | 2026-11-23 | B3.2.32 11 23.01.161, DMM2-Proc-Delv-3748 |  | 15.32d |
| B3.2.32 11 23.01.181 |  | Manually operated Gate Valve DN200 | 2d | 2026-11-22 | 2026-11-23 | B3.2.32 11 23.01.169, DMM2-Proc-Delv-3748 |  | 11.32d |
| B3.2.32 11 23.01.193 |  | Manually operated Gate Valve DN350 | 2d | 2026-11-24 | 2026-11-25 | B3.2.32 11 23.01.179, B3.2.32 11 23.01.185, DMM2-Proc-Delv-3748 |  | 13.32d |
|  | 2 | **Non Return Valves** |  | 2026-11-19 | 2026-11-25 |  |  |  |
| B3.2.32 11 23.01.165 |  | Non return Valve DN60 | 2d | 2026-11-19 | 2026-11-21 | B3.2.32 11 23.01.157, B3.2.32 11 23.01.147, DMM2-Proc-Delv-3758_R |  | 17.32d |
| B3.2.32 11 23.01.187 |  | Non return Valve DN300 | 2d | 2026-11-24 | 2026-11-25 | B3.2.32 11 23.01.179, DMM2-Proc-Delv-3758_R |  | 13.32d |
|  | 3 | **Butterfly Valves** |  | 2026-11-24 | 2026-11-28 |  |  |  |
| B3.2.32 11 23.01.189 |  | Butterfly Valve DN200 | 2d | 2026-11-24 | 2026-11-25 | B3.2.32 11 23.01.169, B3.2.32 11 23.01.181, DMM2-Proc-Delv-2528_R |  | 11.32d |

| ID | WBS | Task | Duration | Start | Finish | Predecessors | Total float |
| --- | --- | --- | --- | --- | --- | --- | --- |
| B3.2.32 11 23.01.195 |  | Butterfly Valve DN300 | 2d | 2026-11-26 | 2026-11-28 | B3.2.32 11 23.01.179, B3.2.32 11 23.01.189, DMM2-Proc-Delv-2528_R | 11.32d |
|  | 3 | **Flowmeters** |  | 2026-11-24 | 2026-11-28 |  |  |
| B3.2.32 11 23.01.173 |  | Electromagnetic Flowmeter DN80, PN16 | 2d | 2026-11-24 | 2026-11-25 | B3.2.32 11 23.01.163, B3.2.32 11 23.01.155, DMM2-Proc-Delv-3768_R | 11.32d |
| B3.2.32 11 23.01.197 |  | Electromagnetic Flowmeter DN200, PN16 | 2d | 2026-11-26 | 2026-11-28 | B3.2.32 11 23.01.169, B3.2.32 11 23.01.181, B3.2.32 11 23.01.189, DMM2-Proc-Delv-3768_R, B3.2.32 11 23.01.173 | 11.32d |
|  | Strainers | **Strainers** |  | 2026-12-01 | 2026-12-02 |  |  |
| B3.2. 22 05 23 .11 |  | Strainer DN80 | 2d | 2026-12-01 | 2026-12-02 | B3.2.32 11 23.01.111, B3.2.32 11 23.01.123, B3.2.32 11 23.01.139, B3.2.32 11 23.01.149, B3.2.32 11 23.01.81, B3.2.32 11 23.01.99, B3.2.32 11 23.01.147, B3.2.32 11 23.01.155, B3.2.32 11 23.01.161, B3.2.32 11 23.01.169, B3.2.32 11 23.01.179, B3.2.32 11 23.01.185, B3.2.32 11 23.01.199, B3.2.32 11 23.01.203, B3.2.32 11 23.01.209, DMM2-Proc-Delv-7303 | 7.32d |
| B3.2. 22 05 23 .12 |  | Strainer DN350 | 2d | 2026-12-01 | 2026-12-02 | B3.2.32 11 23.01.111, B3.2.32 11 23.01.123, B3.2.32 11 23.01.139, B3.2.32 11 23.01.149, B3.2.32 11 23.01.81, B3.2.32 11 23.01.99, B3.2.32 11 23.01.147, B3.2.32 11 23.01.155, B3.2.32 11 23.01.161, B3.2.32 11 23.01.169, B3.2.32 11 23.01.179, B3.2.32 11 23.01.185, B3.2.32 11 23.01.199, B3.2.32 11 23.01.203, B3.2.32 11 23.01.209, DMM2-Proc-Delv-7303 | 7.32d |
|  | 3 | **HVAC & Fire Suppression Fixture Installation** |  | 2026-10-21 | 2026-11-26 |  |  |
|  | Fans | **Fans** |  | 2026-10-21 | 2026-11-14 |  |  |
| B3.2.32 11 23.01.55 |  | Roof Mounted Fans | 2d | 2026-10-21 | 2026-10-22 | B3.2.32 11 23.01.39_R, B3.2.32 11 23.01.43, DMM2-Proc-Delv-7393 | 20.32d |
| B3.2.32 11 23.01.85 |  | Exhaust Axial Fan | 2d | 2026-11-12 | 2026-11-14 | B3.2.32 11 23.01.39_R, B3.2.32 11 23.01.43, B3.2.32 11 23.01.55 FF, DMM2-Proc-Delv-7307 | 1.32d |
|  | AC Units | **AC Units** |  | 2026-11-12 | 2026-11-14 |  |  |
| B3.2.32 11 23.01.103 |  | DX wall mounted Split/AC | 2d | 2026-11-12 | 2026-11-14 | B3.2.32 11 23.01.39_R, B3.2.32 11 23.01.43, B3.2.32 11 23.01.85 SS | 1.32d |
|  | FM200 System | **FM200 System** |  | 2026-11-15 | 2026-11-16 |  |  |
| B3.2.32 11 23.01.1 |  | FM200 system for Electrcal Room - Second Fix | 2d | 2026-11-15 | 2026-11-16 | B3.2.32 11 23.01.115 SS | 1.32d |
| B3.2.32 11 23.01.115 |  | FM200 system for Electrcal Room - First Fix | 2d | 2026-11-15 | 2026-11-16 | B3.2.32 11 23.01.39_R, B3.2.32 11 23.01.43, B3.2.32 11 23.01.103, DMM2-Proc-Delv-7305 | 1.32d |
| B3.2.32 11 23.01.3 |  | FM200 system for Electrcal Room - Final Fix | 2d | 2026-11-15 | 2026-11-16 | B3.2.32 11 23.01.1 SS | 1.32d |
|  | Fire Extinguishers | **Fire Extinguishers** |  | 2026-11-25 | 2026-11-26 |  |  |
| B3.2.32 11 23.01.270 |  | CO2 fire extinguishers | 2d | 2026-11-25 | 2026-11-26 | B3.2.32 11 23.01.71 | 14.32d |
| B3.2.32 11 23.01.280 |  | Powder fire extinguishers | 2d | 2026-11-25 | 2026-11-26 | B3.2.32 11 23.01.71 | 14.32d |
|  | 4 | **External & Underground Piping** |  | 2026-10-14 | 2026-11-04 |  |  |
|  | 1 | **Buried Pipes** |  | 2026-10-14 | 2026-10-25 |  |  |
| B3.2.32 11 23.01.13 |  | Buried DI Pipe ?80 mm | 2d | 2026-10-14 | 2026-10-15 | B3.2.31 23 16.01, B3.2.32 11 23.01.7, DMM2-Proc-Delv-3738_R | 33.32d |
| B3.2.32 11 23.01.17 |  | Buried DI Pipe ?100 mm | 2d | 2026-10-17 | 2026-10-18 | B3.2.31 23 16.01, B3.2.32 11 23.01.7, B3.2.32 11 23.01.13, DMM2-Proc-Delv-3738_R | 33.32d |
| B3.2.32 11 23.01.23 |  | Buried DI Pipe ?200 mm | 2d | 2026-10-19 | 2026-10-20 | B3.2.31 23 16.01, B3.2.32 11 23.01.7, B3.2.32 11 23.01.17, DMM2-Proc-Delv-3738_R | 33.32d |
| B3.2.32 11 23.01.37 |  | Buried DI Pipe ?300 mm | 2d | 2026-10-21 | 2026-10-22 | B3.2.31 23 16.01, B3.2.32 11 23.01.7, B3.2.32 11 23.01.23, DMM2-Proc-Delv-3738_R | 33.32d |
| B3.2.32 11 23.01.57 |  | Buried DI Pipe ?350 mm | 2d | 2026-10-24 | 2026-10-25 | B3.2.31 23 16.01, B3.2.32 11 23.01.7, B3.2.32 11 23.01.37, DMM2-Proc-Delv-3738_R | 33.32d |
|  | 2 | **uPVC** |  | 2026-10-26 | 2026-10-27 |  |  |
| B3.2.32 11 23.01.87 |  | uPVC Pipes ?110mm | 2d | 2026-10-26 | 2026-10-27 | B3.2.31 23 16.01, B3.2.32 11 23.01.7, B3.2.32 11 23.01.57 | 33.32d |
|  | 3 | **Drains** |  | 2026-10-28 | 2026-11-04 |  |  |
| B3.2.32 11 23.01.105 |  | Trench drain | 2d | 2026-10-28 | 2026-10-29 | B3.2.31 23 16.01, B3.2.32 11 23.01.7, B3.2.32 11 23.01.87, DMM2-Proc-Delv-7312 | 33.32d |
| B3.2.32 11 23.01.117 |  | Scupper ?110mm | 2d | 2026-10-31 | 2026-11-01 | B3.2.31 23 16.01, B3.2.32 11 23.01.7, B3.2.32 11 23.01.105 | 33.32d |
| B3.2.32 11 23.01.129 |  | Manholes | 3d | 2026-11-02 | 2026-11-04 | B3.2.31 23 16.01, B3.2.32 11 23.01.7, B3.2.32 11 23.01.117 | 33.32d |
|  | 4 | **Electrical & Control Systems** |  | 2026-10-07 | 2026-12-16 |  |  |
|  | 5 | **Primary Power Installation** |  | 2026-10-07 | 2026-10-31 |  |  |
|  | 1 | **Generator** |  | 2026-10-07 | 2026-10-12 |  |  |
| B3.2.32 11 23.01.35 |  | Standby Diesel Generator | 5d | 2026-10-07 | 2026-10-12 | B3.2.32 11 23.01.19, DMM2-Proc-Delv-3848 | 41.32d |
|  | 2 | **Fuel Tank** |  | 2026-10-13 | 2026-10-14 |  |  |
| B3.2.32 11 23.01.47 |  | Underground Fuel Tank | 2d | 2026-10-13 | 2026-10-14 | B3.2.32 11 23.01.19, B3.2.32 11 23.01.35 | 41.32d |
|  | 3 | **ATS** |  | 2026-10-29 | 2026-10-31 |  |  |
| B3.2.32 11 23.01.67 |  | Automatic Transfer Switch ATS | 2d | 2026-10-29 | 2026-10-31 | B3.2.32 11 23.01.19, B3.2.32 11 23.01.47, DMM2-Proc-Delv-3878 | 29.32d |
|  | 4 | **Motor Control Center (MCC)** |  | 2026-10-29 | 2026-10-31 |  |  |
| B3.2.32 11 23.01.89 |  | MCC Installation | 2d | 2026-10-29 | 2026-10-31 | B3.2.32 11 23.01.19, B3.2.32 11 23.01.67 FF, DMM2-Proc-Delv-3808_R | 29.32d |
|  | Hand Holes | **Hand Holes** |  | 2026-10-10 | 2026-10-15 |  |  |
| B3.2. 26 05 43 .02 |  | Hand Hole (EHH-2) 400mm x 400mm x 600mm | 3d | 2026-10-10 | 2026-10-12 | B3.2.32 11 23.01.39_R, B3.2.31 23 16.01 | 30.32d |
| B3.2. 26 05 43 .01 |  | Hand Hole (EHH-1) 600mm x 600mm x 800mm | 3d | 2026-10-13 | 2026-10-15 | B3.2.32 11 23.01.39_R, B3.2.31 23 16.01, B3.2. 26 05 43 .02 | 30.32d |
|  | 2 | **Cable Tray, Conduit Installation & Power Cable Pulling** |  | 2026-11-19 | 2026-12-05 |  |  |
| B3.2.32 11 23.01.145 |  | 4x1Cx 630mm2 Cu/XLPE//PVC | 2d | 2026-11-19 | 2026-11-21 | B3.2.32 11 23.01.25, B3.2.32 11 23.01.27_R, B3.2.32 11 23.01.93, B3.2.32 11 23.01.73, B3.2.32 11 23.01.123, B3.2.32 11 23.01.137, B3.2. 26 05 43 .02, B3.2. 26 05 43 .01 | 1.32d |
| B3.2.32 11 23.01.153 |  | 4Cx 10mm2 Cu/XLPE/SWA/PVC | 2d | 2026-11-22 | 2026-11-23 | B3.2.32 11 23.01.25, B3.2.32 11 23.01.27_R, B3.2.32 11 23.01.93, B3.2.32 11 23.01.73, B3.2.32 11 23.01.123, B3.2.32 11 23.01.137, B3.2.32 11 23.01.145, B3.2. 26 05 43 .02, B3.2. 26 05 43 .01 | 1.32d |
| B3.2.32 11 23.01.159 |  | 4/Cx35mm²+1Cx16mm² | 2d | 2026-11-24 | 2026-11-25 | B3.2.32 11 23.01.25, B3.2.32 11 23.01.27_R, B3.2.32 11 23.01.93, B3.2.32 11 23.01.73, B3.2.32 11 23.01.123, B3.2.32 11 23.01.137, B3.2.32 11 23.01.153, B3.2. 26 05 43 .02, B3.2. 26 05 43 .01 | 1.32d |
| B3.2.32 11 23.01.167 |  | 4/Cx6mm² Cu/XLPE/PVC + 1Cx6mm² Cu/PVC | 2d | 2026-11-26 | 2026-11-28 | B3.2.32 11 23.01.25, B3.2.32 11 23.01.27_R, B3.2.32 11 23.01.93, B3.2.32 11 23.01.73, B3.2.32 11 23.01.123, B3.2.32 11 23.01.137, B3.2.32 11 23.01.159, B3.2. 26 05 43 .02, B3.2. 26 05 43 .01 | 1.32d |
| B3.2.32 11 23.01.175 |  | 4Cx 25mm2 + 1Cx16mm2 Cu/XLPE/PVC | 2d | 2026-11-29 | 2026-11-30 | B3.2.32 11 23.01.25, B3.2.32 11 23.01.27_R, B3.2.32 11 23.01.93, B3.2.32 11 23.01.73, B3.2.32 11 23.01.123, B3.2.32 11 23.01.137, B3.2.32 11 23.01.167, B3.2. 26 05 43 .02, B3.2. 26 05 43 .01 | 1.32d |
| B3.2.32 11 23.01.177 |  | 3Cx 6mm2 Cu/XLPE/PVC | 2d | 2026-12-01 | 2026-12-02 | B3.2.32 11 23.01.25, B3.2.32 11 23.01.27_R, B3.2.32 11 23.01.93, B3.2.32 11 23.01.73, B3.2.32 11 23.01.123, B3.2.32 11 23.01.137, B3.2.32 11 23.01.175, B3.2. 26 05 43 .02, B3.2. 26 05 43 .01 | 1.32d |
| B3.2.32 11 23.01.183 |  | 4Cx 25mm2 + 1Cx11mm2 Cu/XLPE/PVC | 2d | 2026-12-03 | 2026-12-05 | B3.2.32 11 23.01.25, B3.2.32 11 23.01.27_R, B3.2.32 11 23.01.93, B3.2.32 11 23.01.73, B3.2.32 11 23.01.123, B3.2.32 11 23.01.137, B3.2.32 11 23.01.177, B3.2. 26 05 43 .02, B3.2. 26 05 43 .01 | 1.32d |
| B3.2.32 11 23.01.191 |  | 3Cx 6mm2 Cu/XLPE/PVC | 2d | 2026-12-03 | 2026-12-05 | B3.2.32 11 23.01.25, B3.2.32 11 23.01.27_R, B3.2.32 11 23.01.93, B3.2.32 11 23.01.73, B3.2.32 11 23.01.123, B3.2.32 11 23.01.137, B3.2.32 11 23.01.183 SS, B3.2. 26 05 43 .02, B3.2. 26 05 43 .01 | 1.32d |
| B3.2.32 11 23.01.201 |  | 4Cx 10mm2 + 1Cx10mm2 Cu/XLPE/PVC | 2d | 2026-12-03 | 2026-12-05 | B3.2.32 11 23.01.25, B3.2.32 11 23.01.27_R, B3.2.32 11 23.01.93, B3.2.32 11 23.01.73, B3.2.32 11 23.01.123, B3.2.32 11 23.01.137, B3.2.32 11 23.01.191 SS, B3.2. 26 05 43 .02, B3.2. 26 05 43 .01 | 1.32d |
| B3.2.32 11 23.01.205 |  | 4Cx 6mm2 Cu/XLPE/SWA/PVC | 2d | 2026-12-03 | 2026-12-05 | B3.2.32 11 23.01.25, B3.2.32 11 23.01.27_R, B3.2.32 11 23.01.93, B3.2.32 11 23.01.73, B3.2.32 11 23.01.123, B3.2.32 11 23.01.137, B3.2.32 11 23.01.201 SS, B3.2. 26 05 43 .02, B3.2. 26 05 43 .01 | 1.32d |
|  | 1 | **Enclosed Switches and Circuit Breakers** |  | 2026-11-05 | 2026-11-10 |  |  |
| B3.2. 26 28 16 .02 |  | 40A, 3P, 60Hz Isolator/disconnect switches IP65 | 2d | 2026-11-05 | 2026-11-07 | B3.2.32 11 23.01.45 SS | 23.32d |
| B3.2. 26 28 16 .03 |  | 20A, 1P, 60Hz Isolator/disconnect switches IP65 | 2d | 2026-11-05 | 2026-11-07 | B3.2.32 11 23.01.45 SS | 23.32d |
| B3.2. 26 28 16 .01 |  | 630A, 3P, 60Hz Isolator/disconnect switches IP65 | 2d | 2026-11-09 | 2026-11-10 | B3.2.32 11 23.01.45 | 20.32d |
|  | Panelboards | **Panelboards** |  | 2026-11-16 | 2026-11-22 |  |  |
| B3.2. 26 24 16 .01 |  | DB-PW Panel: 100 Ampere, 3P, IP66,60Hz | 2d | 2026-11-16 | 2026-11-17 | B3.2.32 11 23.01.45, DMM2-Proc-Delv-3838 | 10.32d |
| B3.2. 26 24 16 .02 |  | DB-CL Panel: 100 Ampere, 3P, IP66,60Hz | 2d | 2026-11-18 | 2026-11-19 | B3.2.32 11 23.01.45, B3.2. 26 24 16 .01, DMM2-Proc-Delv-3838 | 10.32d |
| B3.2. 26 24 16 .03 |  | ELP Panel: phtocell , timer,40 Ampere, 3P, IP66,60Hz | 2d | 2026-11-21 | 2026-11-22 | B3.2.32 11 23.01.45, B3.2. 26 24 16 .02, DMM2-Proc-Delv-3838 | 10.32d |
|  | 3 | **Lighting** |  | 2026-11-09 | 2026-12-14 |  |  |
|  | 1 | **Poles** |  | 2026-12-06 | 2026-12-07 |  |  |
| B3.2.32 11 23.01.207 |  | 7m Single Arm Galvanized Steel Pole | 2d | 2026-12-06 | 2026-12-07 | B3.2.32 11 23.01.71, B3.2.32 11 23.01.145 SS, B3.2.32 11 23.01.153, B3.2.32 11 23.01.159, B3.2.32 11 23.01.167, B3.2.32 11 23.01.175, B3.2.32 11 23.01.177, B3.2.32 11 23.01.183, B3.2.32 11 23.01.191, B3.2.32 11 23.01.201, B3.2.32 11 23.01.205 | 1.32d |
|  | 2 | **Fixtures (LEDs)** |  | 2026-11-09 | 2026-12-12 |  |  |
| B3.2.32 11 23.01.290 |  | Install addressable fire alarm system including smoke detector | 2d | 2026-11-09 | 2026-11-10 | B3.2.32 11 23.01.45, DMM2-Proc-Delv-3858 | 20.32d |

| ID | WBS | Task | Duration | Start | Finish | Predecessors | Complete | Total float |
| --- | --- | --- | --- | --- | --- | --- | --- | --- |
| B3.2.32 11 23.01.211 |  | HIGHBAY LED 76 WATTS, IP65, 230V, 60HZ, 12000 LUMENS | 2d | 2026-12-08 | 2026-12-09 | B3.2.32 11 23.01.71, B3.2.32 11 23.01.145, B3.2.32 11 23.01.153, B3.2.32 11 23.01.159, B3.2.32 11 23.01.167, B3.2.32 11 23.01.175, B3.2.32 11 23.01.177, B3.2.32 11 23.01.183, B3.2.32 11 23.01.191, B3.2.32 11 23.01.201, B3.2.32 11 23.01.205, B3.2.32 11 23.01.207, B3.2.32 11 23.01.151 |  | 1.32d |
| B3.2.32 11 23.01.215 |  | HIGHBAY LED 76 WATTS, IP65, 230V, 60HZ, 12000 LUMENS | 2d | 2026-12-08 | 2026-12-09 | B3.2.32 11 23.01.71, B3.2.32 11 23.01.145, B3.2.32 11 23.01.153, B3.2.32 11 23.01.159, B3.2.32 11 23.01.167, B3.2.32 11 23.01.175, B3.2.32 11 23.01.177, B3.2.32 11 23.01.183, B3.2.32 11 23.01.191, B3.2.32 11 23.01.201, B3.2.32 11 23.01.205, B3.2.32 11 23.01.211 SS |  | 1.32d |
| B3.2.32 11 23.01.221 |  | Surfaced Mounted Light, IP65, 230V, 60Hz, 4200 Lumens | 2d | 2026-12-10 | 2026-12-12 | B3.2.32 11 23.01.71, B3.2.32 11 23.01.145, B3.2.32 11 23.01.153, B3.2.32 11 23.01.159, B3.2.32 11 23.01.167, B3.2.32 11 23.01.175, B3.2.32 11 23.01.177, B3.2.32 11 23.01.183, B3.2.32 11 23.01.191, B3.2.32 11 23.01.201, B3.2.32 11 23.01.205, B3.2.32 11 23.01.215 |  | 1.32d |
| B3.2.32 11 23.01.225 |  | Surfaced Mounted Light, IP65, 230V, 60Hz, 4200 lumens | 2d | 2026-12-10 | 2026-12-12 | B3.2.32 11 23.01.71, B3.2.32 11 23.01.145, B3.2.32 11 23.01.153, B3.2.32 11 23.01.159, B3.2.32 11 23.01.167, B3.2.32 11 23.01.175, B3.2.32 11 23.01.177, B3.2.32 11 23.01.183, B3.2.32 11 23.01.191, B3.2.32 11 23.01.201, B3.2.32 11 23.01.205, B3.2.32 11 23.01.221 SS |  | 1.32d |
| B3.2.32 11 23.01.229 |  | WALL MOUNTED LED FLOODLIGHT, IP65, 230V, 60HZ, 4300 LUMENS | 2d | 2026-12-10 | 2026-12-12 | B3.2.32 11 23.01.71, B3.2.32 11 23.01.145, B3.2.32 11 23.01.153, B3.2.32 11 23.01.159, B3.2.32 11 23.01.167, B3.2.32 11 23.01.175, B3.2.32 11 23.01.177, B3.2.32 11 23.01.183, B3.2.32 11 23.01.191, B3.2.32 11 23.01.201, B3.2.32 11 23.01.205, B3.2.32 11 23.01.225 SS |  | 1.32d |
| B3.2.32 11 23.01.233 |  | WALL MOUNTED BULK HEAD OUTDOOR LED, IP65,230V 60 HZ | 2d | 2026-12-10 | 2026-12-12 | B3.2.32 11 23.01.145, B3.2.32 11 23.01.153, B3.2.32 11 23.01.159, B3.2.32 11 23.01.167, B3.2.32 11 23.01.175, B3.2.32 11 23.01.177, B3.2.32 11 23.01.183, B3.2.32 11 23.01.191, B3.2.32 11 23.01.201, B3.2.32 11 23.01.205, B3.2.32 11 23.01.229 SS |  | 1.32d |
| B3.2.32 11 23.01.237 |  | EMERGENCY EXIT SIGN (CEILING OR WALL MOUNTED) IP65,230V 60 HZ | 2d | 2026-12-10 | 2026-12-12 | B3.2.32 11 23.01.71, B3.2.32 11 23.01.145, B3.2.32 11 23.01.153, B3.2.32 11 23.01.159, B3.2.32 11 23.01.167, B3.2.32 11 23.01.175, B3.2.32 11 23.01.177, B3.2.32 11 23.01.183, B3.2.32 11 23.01.191, B3.2.32 11 23.01.201, B3.2.32 11 23.01.205, B3.2.32 11 23.01.233 SS |  | 1.32d |
|  | 3 | **Wiring Devices** |  | 2026-12-13 | 2026-12-14 |  |  |  |
| B3.2.32 11 23.01.239 |  | 13A SINGLE SWITCH SOCKET OUTLET (WEATHER PROOF) | 2d | 2026-12-13 | 2026-12-14 | B3.2.32 11 23.01.71, B3.2.32 11 23.01.145, B3.2.32 11 23.01.153, B3.2.32 11 23.01.159, B3.2.32 11 23.01.167, B3.2.32 11 23.01.175, B3.2.32 11 23.01.177, B3.2.32 11 23.01.183, B3.2.32 11 23.01.191, B3.2.32 11 23.01.201, B3.2.32 11 23.01.205, B3.2.32 11 23.01.237 |  | 1.32d |
| B3.2.32 11 23.01.241 |  | 13A DOUBLE SWITCH SOCKET OUTLET | 2d | 2026-12-13 | 2026-12-14 | B3.2.32 11 23.01.71, B3.2.32 11 23.01.145, B3.2.32 11 23.01.153, B3.2.32 11 23.01.159, B3.2.32 11 23.01.167, B3.2.32 11 23.01.175, B3.2.32 11 23.01.177, B3.2.32 11 23.01.183, B3.2.32 11 23.01.191, B3.2.32 11 23.01.201, B3.2.32 11 23.01.205, B3.2.32 11 23.01.239 FF |  | 1.32d |
| B3.2.32 11 23.01.243 |  | 13A SINGLE SWITCH SOCKET OUTLET | 2d | 2026-12-13 | 2026-12-14 | B3.2.32 11 23.01.71, B3.2.32 11 23.01.145, B3.2.32 11 23.01.153, B3.2.32 11 23.01.159, B3.2.32 11 23.01.167, B3.2.32 11 23.01.175, B3.2.32 11 23.01.177, B3.2.32 11 23.01.183, B3.2.32 11 23.01.191, B3.2.32 11 23.01.201, B3.2.32 11 23.01.205, B3.2.32 11 23.01.241 FF |  | 1.32d |
| B3.2.32 11 23.01.245 |  | 13A SPUR OUTLET | 2d | 2026-12-13 | 2026-12-14 | B3.2.32 11 23.01.71, B3.2.32 11 23.01.145, B3.2.32 11 23.01.153, B3.2.32 11 23.01.159, B3.2.32 11 23.01.167, B3.2.32 11 23.01.175, B3.2.32 11 23.01.177, B3.2.32 11 23.01.183, B3.2.32 11 23.01.191, B3.2.32 11 23.01.201, B3.2.32 11 23.01.205, B3.2.32 11 23.01.243 FF |  | 1.32d |
| B3.2.32 11 23.01.247 |  | INDUSTRIAL SOCKET OUTLET, 400V, 3P, 60HZ, WITH GROUNDING | 2d | 2026-12-13 | 2026-12-14 | B3.2.32 11 23.01.245 FF |  | 1.32d |
|  | 4 | **Grounding & Lightning System** |  | 2026-12-15 | 2026-12-16 |  |  |  |
| B3.2.32 11 23.01.249 |  | Install Grounding and Lightning System | 2d | 2026-12-15 | 2026-12-16 | B3.2.31 23 16.01, B3.2.32 11 23.01.19, B3.2.32 11 23.01.247 |  | 1.32d |
|  | 6 | **Control & Instrumentation** |  | 2026-12-06 | 2026-12-09 |  |  |  |
| B3.2.32 11 23.01.219 |  | PLC Installation | 3d | 2026-12-06 | 2026-12-08 | B3.2.32 11 23.01.147, B3.2.32 11 23.01.155, B3.2.32 11 23.01.161, B3.2.32 11 23.01.169, B3.2.32 11 23.01.179, B3.2.32 11 23.01.185, B3.2.32 11 23.01.199, B3.2.32 11 23.01.203, B3.2.32 11 23.01.209, B3.2.32 11 23.01.213, B3.2.32 11 23.01.217, B3.2.32 11 23.01.157, B3.2.32 11 23.01.163, B3.2.32 11 23.01.171, B3.2.32 11 23.01.181, B3.2.32 11 23.01.193, B3.2.32 11 23.01.165, B3.2.32 11 23.01.187, B3.2.32 11 23.01.189, B3.2.32 11 23.01.195, B3.2.32 11 23.01.145, B3.2.32 11 23.01.153, B3.2.32 11 23.01.159, B3.2.32 11 23.01.167, B3.2.32 11 23.01.175, B3.2.32 11 23.01.177, B3.2.32 11 23.01.183, B3.2.32 11 23.01.191, B3.2.32 11 23.01.201, B3.2.32 11 23.01.205, B3.2. 22 05 23 .11, DMM2-Proc-Delv-3868_R, B3.2. 22 05 23 .12, B3.2.32 11 23.01.197 |  | 5.32d |
| B3.2.32 11 23.01.223 |  | Data Cabinet including all devices 12U | 2d | 2026-12-06 | 2026-12-07 | B3.2.32 11 23.01.147, B3.2.32 11 23.01.155, B3.2.32 11 23.01.161, B3.2.32 11 23.01.169, B3.2.32 11 23.01.179, B3.2.32 11 23.01.185, B3.2.32 11 23.01.199, B3.2.32 11 23.01.203, B3.2.32 11 23.01.209, B3.2.32 11 23.01.213, B3.2.32 11 23.01.217, B3.2.32 11 23.01.157, B3.2.32 11 23.01.163, B3.2.32 11 23.01.171, B3.2.32 11 23.01.181, B3.2.32 11 23.01.193, B3.2.32 11 23.01.165, B3.2.32 11 23.01.187, B3.2.32 11 23.01.189, B3.2.32 11 23.01.195, B3.2.32 11 23.01.145, B3.2.32 11 23.01.153, B3.2.32 11 23.01.159, B3.2.32 11 23.01.167, B3.2.32 11 23.01.175, B3.2.32 11 23.01.177, B3.2.32 11 23.01.183, B3.2.32 11 23.01.191, B3.2.32 11 23.01.201, B3.2.32 11 23.01.205, B3.2.32 11 23.01.219 SS |  | 5.32d |
| B3.2.32 11 23.01.227 |  | Data/ voice RJ45 outlet include CAT6A cable | 2d | 2026-12-06 | 2026-12-07 | B3.2.32 11 23.01.147, B3.2.32 11 23.01.155, B3.2.32 11 23.01.161, B3.2.32 11 23.01.169, B3.2.32 11 23.01.179, B3.2.32 11 23.01.185, B3.2.32 11 23.01.199, B3.2.32 11 23.01.203, B3.2.32 11 23.01.209, B3.2.32 11 23.01.213, B3.2.32 11 23.01.217, B3.2.32 11 23.01.157, B3.2.32 11 23.01.163, B3.2.32 11 23.01.171, B3.2.32 11 23.01.181, B3.2.32 11 23.01.193, B3.2.32 11 23.01.165, B3.2.32 11 23.01.187, B3.2.32 11 23.01.189, B3.2.32 11 23.01.195, B3.2.32 11 23.01.145, B3.2.32 11 23.01.153, B3.2.32 11 23.01.159, B3.2.32 11 23.01.167, B3.2.32 11 23.01.175, B3.2.32 11 23.01.177, B3.2.32 11 23.01.183, B3.2.32 11 23.01.191, B3.2.32 11 23.01.201, B3.2.32 11 23.01.205, B3.2.32 11 23.01.223 FF |  | 5.32d |
| B3.2.32 11 23.01.231 |  | Instrumentation for Process Systems (Field Instruments) | 2d | 2026-12-08 | 2026-12-09 | B3.2.32 11 23.01.147, B3.2.32 11 23.01.155, B3.2.32 11 23.01.161, B3.2.32 11 23.01.169, B3.2.32 11 23.01.179, B3.2.32 11 23.01.185, B3.2.32 11 23.01.199, B3.2.32 11 23.01.203, B3.2.32 11 23.01.209, B3.2.32 11 23.01.213, B3.2.32 11 23.01.217, B3.2.32 11 23.01.157, B3.2.32 11 23.01.163, B3.2.32 11 23.01.171, B3.2.32 11 23.01.181, B3.2.32 11 23.01.193, B3.2.32 11 23.01.165, B3.2.32 11 23.01.187, B3.2.32 11 23.01.189, B3.2.32 11 23.01.195, B3.2.32 11 23.01.145, B3.2.32 11 23.01.153, B3.2.32 11 23.01.159, B3.2.32 11 23.01.167, B3.2.32 11 23.01.175, B3.2.32 11 23.01.177, B3.2.32 11 23.01.183, B3.2.32 11 23.01.191, B3.2.32 11 23.01.201, B3.2.32 11 23.01.205, B3.2.32 11 23.01.227, B3.2. 22 05 23 .11, B3.2.32 11 23.01.270, B3.2.32 11 23.01.280, B3.2. 22 05 23 .12 |  | 5.32d |
|  | 7 | **Control Cable Pulling & Termination** |  | 2026-12-10 | 2026-12-12 |  |  |  |
| B3.2.32 11 23.01.235 |  | Process Control Wiring | 2d | 2026-12-10 | 2026-12-12 | B3.2.32 11 23.01.219, B3.2.32 11 23.01.223, B3.2.32 11 23.01.227, B3.2.32 11 23.01.231, B3.2.32 11 23.01.173 |  | 5.32d |
|  | 6 | **Final Fixtures** |  | 2026-10-31 | 2026-11-26 |  |  |  |
|  | 1 | **Door & Louver Installation** |  | 2026-11-05 | 2026-11-15 |  |  |  |
| B3.2.32 11 23.01.59 |  | Steel Door SD1 For chlorination size (2000x2300)mm | 2d | 2026-11-05 | 2026-11-07 | B3.2.32 11 23.01.43, B3.2.32 11 23.01.45 SS |  | 27.32d |
| B3.2.32 11 23.01.75 |  | Steel Door SD1 size (2000x2550)mm | 2d | 2026-11-08 | 2026-11-09 | B3.2.32 11 23.01.43, B3.2.32 11 23.01.45 SS, B3.2.32 11 23.01.59 |  | 27.32d |
| B3.2.32 11 23.01.95 |  | Steel Door SD2 size (900x2200)mm | 2d | 2026-11-09 | 2026-11-10 | B3.2.32 11 23.01.43, B3.2.32 11 23.01.45, B3.2.32 11 23.01.75 SS |  | 26.32d |
| B3.2.32 11 23.01.107 |  | 90 mins fire rated Steel Door SD3 size (1000x2200)mm | 2d | 2026-11-11 | 2026-11-12 | B3.2.32 11 23.01.43, B3.2.32 11 23.01.45, B3.2.32 11 23.01.95 |  | 26.32d |
| B3.2.32 11 23.01.119 |  | Sand trap louver 1500mm x 1500mm | 2d | 2026-11-11 | 2026-11-12 | B3.2.32 11 23.01.43, B3.2.32 11 23.01.45, B3.2.32 11 23.01.107 FF, DMM2-Proc-Delv-7304 |  | 26.32d |
| B3.2.32 11 23.01.131 |  | Louver 3400mm x 2800mm | 2d | 2026-11-14 | 2026-11-15 | B3.2.32 11 23.01.43, B3.2.32 11 23.01.45, B3.2.32 11 23.01.119, DMM2-Proc-Delv-7394 |  | 26.32d |
| B3.2.32 11 23.01.143 |  | Steel shutter Door SD4 size (3200x3000)mm | 2d | 2026-11-14 | 2026-11-15 | B3.2.32 11 23.01.43, B3.2.32 11 23.01.45, B3.2.32 11 23.01.131 FF, DMM2-Proc-Delv-7295 |  | 26.32d |
|  | 7 | **Ladders** |  | 2026-10-31 | 2026-11-10 |  |  |  |
| B3.2.32 11 23.01.61 |  | 5m External Galvanized Steel Ladder | 2d | 2026-10-31 | 2026-11-01 | B3.2.32 11 23.01.43, DMM2-Proc-Delv-7294 |  | 18.32d |
| B3.2.32 11 23.01.77 |  | 3m External Galvanized Steel Ladder | 2d | 2026-11-02 | 2026-11-03 | B3.2.32 11 23.01.43, B3.2.32 11 23.01.61, DMM2-Proc-Delv-7294 |  | 18.32d |
| B3.2.32 11 23.01.97 |  | 4.3m External Galvanized Steel Ladder - Potable Water Tank | 2d | 2026-11-04 | 2026-11-05 | B3.2.32 11 23.01.43, B3.2.32 11 23.01.77, DMM2-Proc-Delv-7294 |  | 18.32d |
| B3.2.32 11 23.01.109 |  | 4.5m External Stainless Steel A36 Ladder | 2d | 2026-11-07 | 2026-11-08 | B3.2.32 11 23.01.43, B3.2.32 11 23.01.97 |  | 18.32d |
| B3.2.32 11 23.01.121 |  | 4.3m External Galvanized Steel Ladder - Chlorination | 2d | 2026-11-09 | 2026-11-10 | B3.2.32 11 23.01.43, B3.2.32 11 23.01.109, DMM2-Proc-Delv-7294 |  | 18.32d |
|  | 2 | **Handrails** |  | 2026-11-11 | 2026-11-12 |  |  |  |
| B3.2.32 11 23.01.133 |  | Handrail with approximate height 1.1m | 2d | 2026-11-11 | 2026-11-12 | B3.2.32 11 23.01.43, B3.2.32 11 23.01.121, DMM2-Proc-Delv-7296, DMM2-Proc-Delv-7298 |  | 18.32d |
|  | 6 | **Signage** |  | 2026-11-14 | 2026-11-26 |  |  |  |
| B3.2.32 11 23.01.141 |  | Aluminum exterior signage size (300x150)mm | 2d | 2026-11-14 | 2026-11-15 | B3.2.32 11 23.01.43, B3.2.32 11 23.01.133 |  | 18.32d |
| B3.2.32 11 23.01.151 |  | Aluminum interior signage size (300x150)mm | 2d | 2026-11-25 | 2026-11-26 | B3.2.32 11 23.01.43, B3.2.32 11 23.01.141, B3.2.32 11 23.01.91 |  | 10.32d |
|  | 5 | **Engineering Backfilling** |  | 2026-11-05 | 2026-11-07 |  |  |  |
| B3.2.32 11 23.01.135 |  | Backfilling around structures | 2d | 2026-11-05 | 2026-11-07 | B3.2.32 11 23.01.13, B3.2.32 11 23.01.17, B3.2.32 11 23.01.23, B3.2.32 11 23.01.37, B3.2.32 11 23.01.57, B3.2.32 11 23.01.87, B3.2.32 11 23.01.105, B3.2.32 11 23.01.117, B3.2.32 11 23.01.129, B3.2.32 11 23.01.69 |  | 33.32d |
|  | Demolishion | **Demolishing and Site Clearing** |  | 2026-03-06 | 2026-06-22 |  |  |  |
| B1.1.02 41 00.60 |  | Removal of culvert's wing walls | 4.5d | 2026-03-06 A | 2026-03-12 A | B1.1.02 41 00.50 | 100% |  |
| B1.1.02 41 00.90 |  | Dismantling and relocation of existing inlets | 26.25d | 2026-03-07 A | 2026-04-13 A | B1.1.02 41 00.80 | 100% |  |
| B1.1.02 41 00.50 |  | Removal of riprap | 6d | 2026-04-22 A | 2026-04-28 A | B1.1.02 41 00.40 | 100% |  |
| B1.1.02 41 00.20 |  | Removal of curbstone | 4d | 2026-05-16 A | 2026-05-19 A | B1.1.02 41 00.01 | 100% |  |
| B1.1.02 41 00.30 |  | Removal of bituminous concrete wearing course | 4d | 2026-05-20 A | 2026-05-24 A | B1.1.02 41 00.20 | 100% |  |
| B1.1.02 41 00.40 |  | Removal of concrete protection | 6d | 2026-05-21 A | 2026-06-01 A | B1.1.02 41 00.30 | 100% |  |
| B1.1.02 41 00.100 |  | Dismantling and level adjustment for storm manholes | 5d | 2026-06-17 A | 2026-06-22 A | B1.1.02 41 00.90 | 100% |  |
| B1.1.02 41 00.70 |  | Selective Tree Removal | 3d | 2026-06-17 A | 2026-06-20 A | B1.1.02 41 00.60 | 100% |  |
| B1.1.02 41 00.80 |  | Removal of traffic signs | 2d | 2026-06-21 A | 2026-06-22 A | B1.1.02 41 00.70 | 100% |  |
|  | Zone 03 | **Zone 03** |  | 2025-09-22 | 2026-12-16 |  |  |  |
|  | Dewatering | **Earthworks & Site Grading** |  | 2025-09-22 | 2026-04-04 |  |  |  |
| B1.1.31 23 19.2 |  | Dewatering | 27d | 2025-09-22 A | 2025-10-23 A | B1.1.31 23 19.02 | 100% |  |
| B1.1.31 23 16.2 |  | Excavation (all types of soil) | 93.08d | 2025-10-19 A | 2026-02-04 A | B1.1.31 23 19.2 | 100% |  |
| B1.1.31 23 23.2 |  | Engineering Backfiling - Road 02 | 95.6d | 2025-10-20 A | 2026-02-09 A | B1.1.31 23 16.2 | 100% |  |
| B1.1.31 23 23.142 |  | Engineering Backfiling - Customs Road 04 & Road 05 | 90.6d | 2025-10-29 A | 2026-02-12 A | B1.1.31 23 23.2 | 100% |  |
| B1.1.31 23 23.152 |  | Engineering Backfiling - Customs Road 06 | 89.6d | 2025-11-03 A | 2026-02-16 A | B1.1.31 23 23.142 | 100% |  |
| B1.1.31 23 23.122 |  | Engineering Backfiling - Customs Road 01 | 89.1d | 2025-11-08 A | 2026-02-21 A | B1.1.31 23 23.132 | 100% |  |
| B1.1.31 23 23.132 |  | Engineering Backfiling - Customs Road 02 | 85.6d | 2025-11-13 A | 2026-02-24 A | B1.1.31 23 23.152 | 100% |  |
| B1.1.31 23 23.162 |  | Engineering Backfiling - Sewerage Lift Station | 18.1d | 2026-03-05 A | 2026-04-04 A | B1.1.31 23 23.122, B1.1.31 23 23.72 | 100% |  |
|  | Road 02 | **Road 02** |  | 2025-11-28 | 2026-12-06 |  |  |  |
|  | Wet Networks | **Wet Networks** |  | 2026-02-01 | 2026-12-03 |  |  |  |
|  | Sewerage Network | **Sewerage Network** |  | 2026-02-04 | 2026-10-12 |  |  |  |
|  | GRP | **GRP Pipes** |  | 2026-02-04 | 2026-10-12 |  |  |  |
|  | 200 | **?200** |  | 2026-02-04 | 2026-10-12 |  |  |  |
|  | 3 | **Depth From 4.5m to 5.5m** |  | 2026-02-04 | 2026-10-12 |  |  |  |

| ID | WBS | Task | Duration | Start | Finish | Predecessors | Complete | Total float |
| --- | --- | --- | --- | --- | --- | --- | --- | --- |
| B5.33 31 00.02.05.1 |  | Excavation | 30.84d | 2026-02-04 A | 2026-03-22 A | B1.1.31 23 23.2 | 100% |  |
| B5.33 31 00.02.05.2 |  | Sand Bedding | 28.99d | 2026-02-07 A | 2026-03-25 A | B5.33 31 00.02.05.1 | 100% |  |
| B5.33 31 00.02.05.3 |  | Pipe Laying | 29.99d | 2026-02-08 A | 2026-03-28 A | B5.33 31 00.02.05.2 | 100% |  |
| B5.33 31 00.02.05.4 |  | Embedment & Test | 35.65d | 2026-04-02 A | 2026-05-13 A | B5.33 31 00.02.05.3 | 100% |  |
| B5.33 31 00.02.05.5 |  | Backfilling & Warrning Tape (8.86% Completed) | 136.85d | 2026-04-05 A | 2026-09-15 A | B5.33 31 00.02.05.4 | 100% |  |
| B5.33 31 00.02.05.5_R |  | Backfilling & Warrning Tape(Rem) | 4.56d | 2026-09-24 A | 2026-10-12 | B5.33 31 00.02.05.4, B5.33 31 00.02.05.5 | 12% | 109.31d |
|  | Manholes | **Manholes ?1200** |  | 2026-02-07 | 2026-10-10 |  |  |  |
|  | 4 | **Depth From 4.5m to 5.5m** |  | 2026-02-07 | 2026-10-08 |  |  |  |
| B6.33 05 39.01.577 |  | Excavation & Compaction | 1d | 2026-02-07 A | 2026-02-08 A | B5.33 31 00.02.05.1 | 100% |  |
| B6.33 05 39.01.587 |  | Blinding Conc, & RC Base | 32.57d | 2026-04-13 A | 2026-05-20 A | B6.33 05 39.01.577 | 100% |  |
| B6.33 05 39.01.597 |  | Manhole Installation | 28.38d | 2026-04-20 A | 2026-05-23 A | B6.33 05 39.01.587 | 100% |  |
| B6.33 05 39.01.607 |  | Test, Internal Finishing, Benching & Cover (40.32% Completed) | 88d | 2026-06-06 A | 2026-09-15 A | B6.33 05 39.01.597 | 100% |  |
| B6.33 05 39.01.617 |  | Backfilling (40.32% Completed) | 75.33d | 2026-06-20 A | 2026-09-15 A | B6.33 05 39.01.607 SS, B5.33 31 00.02.05.5 SS | 100% |  |
| B6.33 05 39.01.607_R |  | Test, Internal Finishing, Benching & Cover(Rem) | 2.56d | 2026-09-22 A | 2026-10-08 | B6.33 05 39.01.597, B6.33 05 39.01.607 | 40% | 111.79d |
| B6.33 05 39.01.617_R |  | Backfilling(Rem) | 3.08d | 2026-09-26 A | 2026-10-08 | B6.33 05 39.01.607_R SS, B5.33 31 00.02.05.5_R SS, B6.33 05 39.01.617 | 40% | 111.47d |
|  | 1 | **Depth From 5.5m to 6.5m** |  | 2026-03-02 | 2026-10-10 |  |  |  |
| B6.33 05 39.01.627 |  | Excavation & Compaction | 2.5d | 2026-03-02 A | 2026-03-05 A | B6.33 05 39.01.577 | 100% |  |
| B6.33 05 39.01.637 |  | Blinding Conc, & RC Base | 3d | 2026-04-29 A | 2026-05-02 A | B6.33 05 39.01.627 | 100% |  |
| B6.33 05 39.01.647 |  | Manhole Installation | 7.5d | 2026-05-03 A | 2026-05-11 A | B6.33 05 39.01.637 | 100% |  |
| B6.33 05 39.01.657 |  | Test, Internal Finishing, Benching & Cover (24.00% Completed) | 88d | 2026-06-06 A | 2026-09-15 A | B6.33 05 39.01.647 | 100% |  |
| B6.33 05 39.01.667 |  | Backfilling (38.40% Completed) | 74.8d | 2026-06-21 A | 2026-09-15 A | B6.33 05 39.01.1467, B6.33 05 39.01.657 SS, B6.33 05 39.01.617 SS | 100% |  |
| B6.33 05 39.01.657_R |  | Test, Internal Finishing, Benching & Cover(Rem) | 3.04d | 2026-09-28 A | 2026-10-08 | B6.33 05 39.01.647, B6.33 05 39.01.657 | 40% | 111.5d |
| B6.33 05 39.01.667_R |  | Backfilling(Rem) | 3.08d | 2026-09-30 A | 2026-10-08 | B6.33 05 39.01.1467, B6.33 05 39.01.657_R SS, B6.33 05 39.01.617_R SS, B6.33 05 39.01.667 | 40% | 111.47d |
|  | 1 | **Depth From 5.5m to 6.5m Backdrop** |  | 2026-05-20 | 2026-10-10 |  |  |  |
| B6.33 05 39.01.677 |  | Excavation & Compaction | 2d | 2026-05-20 A | 2026-05-21 A | B6.33 05 39.01.627 | 100% |  |
| B6.33 05 39.01.687 |  | Blinding Conc, & RC Base (36.00% Completed) | 96d | 2026-05-23 A | 2026-09-15 A | B6.33 05 39.01.677 | 100% |  |
| B6.33 05 39.01.697 |  | Manhole Installation (36.00% Completed) | 93d | 2026-05-31 A | 2026-09-15 A | B6.33 05 39.01.687 SS | 100% |  |
| B6.33 05 39.01.707 |  | Test, Internal Finishing, Benching & Cover (36.00% Completed) | 76.84d | 2026-06-18 A | 2026-09-15 A | B6.33 05 39.01.697 SS | 100% |  |
| B6.33 05 39.01.717 |  | Backfilling (36.00% Completed) | 75.8d | 2026-06-20 A | 2026-09-15 A | B6.33 05 39.01.1667, B6.33 05 39.01.707 SS, B6.33 05 39.01.667 SS | 100% |  |
| B6.33 05 39.01.687_R |  | Blinding Conc, & RC Base(Rem) | 2.04d | 2026-09-20 A | 2026-10-08 | B6.33 05 39.01.677, B6.33 05 39.01.687 | 40% | 112.1d |
| B6.33 05 39.01.697_R |  | Manhole Installation(Rem) | 1.52d | 2026-09-24 A | 2026-10-07 | B6.33 05 39.01.687_R SS, B6.33 05 39.01.697 | 40% | 112.41d |
| B6.33 05 39.01.707_R |  | Test, Internal Finishing, Benching & Cover(Rem) | 3.52d | 2026-09-30 A | 2026-10-10 | B6.33 05 39.01.697_R SS, B6.33 05 39.01.707 | 40% | 111.21d |
| B6.33 05 39.01.717_R |  | Backfilling(Rem) | 4.04d | 2026-10-03 A | 2026-10-10 | B6.33 05 39.01.1667, B6.33 05 39.01.707_R SS, B6.33 05 39.01.667_R SS, B6.33 05 39.01.717 | 40% | 110.9d |
|  | Stormwater Network | **Stormwater Network** |  | 2026-02-06 | 2026-10-21 |  |  |  |
|  | GRP | **GRP** |  | 2026-02-06 | 2026-05-21 |  |  |  |
|  | ?40011 | **?1400** |  | 2026-02-06 | 2026-05-21 |  |  |  |
|  | 3 | **Depth From 2.5m to 3.5m** |  | 2026-02-06 | 2026-05-21 |  |  |  |
| B6.33 42 11.27-1.1 |  | Excavation | 19.55d | 2026-02-06 A | 2026-03-05 A | B6.33 05 39.01.677 | 100% |  |
| B6.33 42 11.27-1.3 |  | Sand Bedding | 18.4d | 2026-02-08 A | 2026-03-05 A | B6.33 42 11.27-1.1 | 100% |  |
| B6.33 42 11.27-1.5 |  | Pipe Laying | 15.4d | 2026-02-11 A | 2026-03-05 A | B6.33 42 11.27-1.3 | 100% |  |
| B6.33 42 11.27-1.7 |  | Embedment & Test | 58.33d | 2026-03-05 A | 2026-05-20 A | B6.33 42 11.27-1.5 | 100% |  |
| B6.33 42 11.27-1.9 |  | Backfilling & Warrning Tape | 47.1d | 2026-03-28 A | 2026-05-21 A | B6.33 42 11.27-1.7, B6.33 42 11.34-1.9 | 100% |  |
|  | ?400111 | **?1500** |  | 2026-02-08 | 2026-05-20 |  |  |  |
|  | 3 | **Depth From 2.5m to 3.5m** |  | 2026-02-08 | 2026-05-20 |  |  |  |
| B6.33 42 11.27-1.2 |  | Excavation | 17.72d | 2026-02-08 A | 2026-03-04 A | B6.33 42 11.27-1.1 | 100% |  |
| B6.33 42 11.27-1.4 |  | Sand Bedding | 14.72d | 2026-02-11 A | 2026-03-04 A | B6.33 42 11.27-1.2 | 100% |  |
| B6.33 42 11.27-1.6 |  | Pipe Laying | 12.87d | 2026-02-13 A | 2026-03-04 A | B6.33 42 11.27-1.4 | 100% |  |
| B6.33 42 11.27-1.8 |  | Embedment & Test | 58.39d | 2026-03-04 A | 2026-05-20 A | B6.33 42 11.27-1.6 | 100% |  |
| B6.33 42 11.27-1.10 |  | Backfilling & Warrning Tape | 51.58d | 2026-03-16 A | 2026-05-20 A | B6.33 42 11.27-1.8, B6.33 42 11.27-1.9 | 100% |  |
|  | Strom Manholes | **Manholes** |  | 2026-02-11 | 2026-09-24 |  |  |  |
|  | 3 | **?2000** |  | 2026-02-11 | 2026-09-24 |  |  |  |
|  | 3 | **Depth From 2.5m to 3.5m** |  | 2026-02-11 | 2026-09-24 |  |  |  |
| B6.33 05 39.01.3527 |  | Excavation & Compaction | 1d | 2026-02-11 A | 2026-02-12 A | B6.33 42 11.27-1.2 | 100% |  |
| B6.33 05 39.01.3537 |  | Blinding Conc, & RC Base | 3d | 2026-05-20 A | 2026-05-23 A | B6.33 05 39.01.3527 | 100% |  |
| B6.33 05 39.01.3547 |  | Manhole Installation (80.11% Completed) | 95d | 2026-05-24 A | 2026-09-15 A | B6.33 05 39.01.3537 | 100% |  |
| B6.33 05 39.01.3557 |  | Test, Internal Finishing, Benching & Cover (80.00% Completed) | 77.6d | 2026-06-17 A | 2026-09-15 A | B6.33 05 39.01.3547 SS | 100% |  |
| B6.33 05 39.01.3567 |  | Backfilling (80.11% Completed) | 73.6d | 2026-06-22 A | 2026-09-15 A | B6.33 42 11.27-1.10, B6.33 05 39.01.3557 SS | 100% |  |
| B6.33 05 39.01.3547_R |  | Manhole Installation(Rem) | 3d | 2026-09-13 A | 2026-09-15 A | B6.33 05 39.01.3537, B6.33 05 39.01.3547 | 100% |  |
| B6.33 05 39.01.3557_R |  | Test, Internal Finishing, Benching & Cover(Rem) | 3d | 2026-09-20 A | 2026-09-22 A | B6.33 05 39.01.3547_R SS, B6.33 05 39.01.3557 | 100% |  |
| B6.33 05 39.01.3567_R |  | Backfilling(Rem) | 3d | 2026-09-20 A | 2026-09-24 A | B6.33 42 11.27-1.10, B6.33 05 39.01.3557_R SS, B6.33 05 39.01.3567 | 100% |  |
|  | Catch Basins | **Catch Basins** |  | 2026-03-05 | 2026-10-21 |  |  |  |
|  | Sing | **Single** |  | 2026-06-10 | 2026-10-10 |  |  |  |
| B6.33 05 40.01.370 |  | Excavation, Compaction & Vapour Barrier (80.00% Completed) | 84d | 2026-06-10 A | 2026-09-15 A | B6.33 05 39.01.3527 | 100% |  |
| B6.33 05 40.01.380 |  | Blinding Conc. (80.00% Completed) | 80d | 2026-06-15 A | 2026-09-15 A | B6.33 05 40.01.370 SS | 100% |  |
| B6.33 05 40.01.390 |  | Catch Basin Installation (80.00% Completed) | 79d | 2026-06-16 A | 2026-09-15 A | B6.33 05 40.01.380 SS | 100% |  |
| B6.33 05 40.01.400 |  | Backfilling, DI Frame & Grate Cover Fixing (80.00% Completed) | 77d | 2026-06-18 A | 2026-09-15 A | B6.33 42 11.36-1.22, B6.33 42 11.35-1.22, B6.33 05 40.01.390 SS | 100% |  |
| B6.33 05 40.01.370_R |  | Excavation, Compaction & Vapour Barrier(Rem) | 3d | 2026-10-07 | 2026-10-10 | B6.33 05 39.01.3527, B6.33 05 40.01.370 |  | 5.32d |
| B6.33 05 40.01.380_R |  | Blinding Conc.(Rem) | 3d | 2026-10-07 | 2026-10-10 | B6.33 05 40.01.370_R SS, B6.33 05 40.01.380 |  | 5.32d |
| B6.33 05 40.01.390_R |  | Catch Basin Installation(Rem) | 3d | 2026-10-07 | 2026-10-10 | B6.33 05 40.01.380_R SS, B6.33 05 40.01.390 |  | 5.32d |
| B6.33 05 40.01.400_R |  | Backfilling, DI Frame & Grate Cover Fixing(Rem) | 2d | 2026-10-07 | 2026-10-08 | B6.33 42 11.36-1.22, B6.33 42 11.35-1.22, B6.33 05 40.01.390_R SS, B6.33 05 40.01.400 |  | 5.32d |

| ID | WBS | Task | Duration | Start | Finish | Predecessors | Complete | Total float |
| --- | --- | --- | --- | --- | --- | --- | --- | --- |
|  | Dou | **Double** |  | 2026-10-07 | 2026-10-21 |  |  |  |
| B6.33 05 40.01.880 |  | Backfilling, DI Frame & Grate Cover Fixing | 6d | 2026-10-07 | 2026-10-13 | B6.33 42 11.35-1.22, B6.33 42 11.36-1.22 |  | 1.32d |
| B6.33 05 40.01.850 |  | Excavation, Compaction & Vapour Barrier | 3d | 2026-10-11 | 2026-10-13 | B6.33 05 40.01.370_R |  | 100.32d |
| B6.33 05 40.01.860 |  | Blinding Conc. | 3d | 2026-10-14 | 2026-10-17 | B6.33 05 40.01.850 |  | 100.32d |
| B6.33 05 40.01.870 |  | Catch Basin Installation | 4d | 2026-10-18 | 2026-10-21 | B6.33 05 40.01.860 |  | 100.32d |
|  | UPVC | **UPVC** |  | 2026-03-05 | 2026-10-01 |  |  |  |
|  | UPVC300 | **?300 From 0.0 to 1.5m** |  | 2026-03-05 | 2026-10-01 |  |  |  |
| B6.33 42 11.35-1.22 |  | Fittings & Pipe Installation | 4.5d | 2026-03-05 A | 2026-03-12 A | B6.33 05 39.01.3527 | 100% |  |
| B6.33 42 11.35-1.20 |  | Catch Basin Opening Prep. (68.04% Completed) | 87d | 2026-06-07 A | 2026-09-15 A | B6.33 42 11.35-1.22 | 100% |  |
| B6.33 42 11.35-1.20_R |  | Catch Basin Opening Prep.(Rem) | 3d | 2026-09-29 A | 2026-10-01 A | B6.33 05 40.01.870 FF, B6.33 42 11.35-1.20 | 100% |  |
|  | UPVC3001 | **?400 From 0.0 to 1.5m** |  | 2026-03-07 | 2026-10-01 |  |  |  |
| B6.33 42 11.36-1.22 |  | Fittings & Pipe Installation | 5.25d | 2026-03-07 A | 2026-03-15 A | B6.33 42 11.35-1.22 | 100% |  |
| B6.33 42 11.36-1.20 |  | Catch Basin Opening Prep. (68.04% Completed) | 87d | 2026-06-07 A | 2026-09-15 A | B6.33 42 11.35-1.20 SS | 100% |  |
| B6.33 42 11.36-1.20_R |  | Catch Basin Opening Prep.(Rem) | 3d | 2026-09-29 A | 2026-10-01 A | B6.33 42 11.35-1.20_R SS, B6.33 42 11.36-1.20 | 100% |  |
|  | Potable Water | **Potable Water Network** |  | 2026-02-01 | 2026-11-12 |  |  |  |
|  | HDPE | **HDPE Pipes** |  | 2026-02-01 | 2026-10-10 |  |  |  |
|  | ?110mm | **?110mm** |  | 2026-02-01 | 2026-10-10 |  |  |  |
|  | Depth: 0.0m - 1.5m | **Depth: 0.0m - 1.5m** |  | 2026-02-05 | 2026-10-10 |  |  |  |
| B3.33 14 13.01.0101 |  | Excavation | 0.5d | 2026-02-05 A | 2026-02-07 A | B1.1.31 23 23.132 | 100% |  |
| B3.33 14 13.01.0105 |  | Sand Bedding | 0.5d | 2026-02-07 A | 2026-02-08 A | B3.33 14 13.01.0101 | 100% |  |
| B3.33 14 13.01.0109 |  | Pipe Laying | 30.66d | 2026-04-15 A | 2026-05-20 A | B3.33 14 13.01.0105 | 100% |  |
| B3.33 14 13.01.01013 |  | Embedment & Test | 24.66d | 2026-04-22 A | 2026-05-21 A | B3.33 14 13.01.0109 | 100% |  |
| B3.33 14 13.01.01017 |  | Backfilling & Warrning Tape (66.86% Completed) | 119.45d | 2026-04-25 A | 2026-09-15 A | B3.33 14 13.01.01013 | 100% |  |
| B3.33 14 13.01.01017_R |  | Backfilling & Warrning Tape(Rem) | 2.66d | 2026-10-07 | 2026-10-10 | B3.33 14 13.01.01013, B3.33 14 13.01.01017 |  | 92.66d |
|  | Depth: 1.51m - 2.5m | **Depth: 1.51m - 2.5m** |  | 2026-02-01 | 2026-10-08 |  |  |  |
| B3.33 14 13.01.0103 |  | Excavation | 82.04d | 2026-02-01 A | 2026-05-20 A | B3.33 14 13.01.0101 | 100% |  |
| B3.33 14 13.01.0107 |  | Sand Bedding | 79.29d | 2026-02-03 A | 2026-05-20 A | B3.33 14 13.01.0103 | 100% |  |
| B3.33 14 13.01.01011 |  | Pipe Laying (91.12% Completed) | 126.65d | 2026-04-16 A | 2026-09-15 A | B3.33 14 13.01.0107 | 100% |  |
| B3.33 14 13.01.01015 |  | Embedment & Test (91.12% Completed) | 125.82d | 2026-04-18 A | 2026-09-15 A | B3.33 14 13.01.01011 FF, B3.33 14 19.01.112 SS | 100% |  |
| B3.33 14 13.01.01019 |  | Backfilling & Warrning Tape (91.12% Completed) | 117d | 2026-04-28 A | 2026-09-15 A | B3.33 14 13.01.01015 FF | 100% |  |
| B3.33 14 13.01.01011_R |  | Pipe Laying(Rem) | 2d | 2026-10-07 | 2026-10-08 | B3.33 14 13.01.0107, B3.33 14 13.01.01011 |  | 93.32d |
| B3.33 14 13.01.01015_R |  | Embedment & Test(Rem) | 2d | 2026-10-07 | 2026-10-08 | B3.33 14 13.01.01011_R FF, B3.33 14 19.01.112_R SS, B3.33 14 13.01.01015 |  | 93.32d |
| B3.33 14 13.01.01019_R |  | Backfilling & Warrning Tape(Rem) | 2d | 2026-10-07 | 2026-10-08 | B3.33 14 13.01.01015_R FF, B3.33 14 13.01.01019 |  | 93.32d |
|  | Crossing | **Plots and Buildings Crossing** |  | 2026-04-12 | 2026-10-21 |  |  |  |
| B3.33 14 13.02.22 |  | Earthwork | 6d | 2026-04-12 A | 2026-04-19 A | B3.33 14 13.01.0103 | 100% |  |
| B3.33 14 13.02.23 |  | Sand Bedding | 3d | 2026-10-11 | 2026-10-13 | B3.33 14 13.02.22, B3.33 05 63.02.27 |  | 82.32d |
| B3.33 14 13.02.24 |  | Tee, Pipe (Crossing) Installation & Backfilling | 7d | 2026-10-14 | 2026-10-21 | B3.33 14 13.02.23 |  | 82.32d |
|  | Valves & Chambers | **Valves & Chambers** |  | 2026-06-29 | 2026-11-12 |  |  |  |
|  | GV | **Gate Valves** |  | 2026-06-29 | 2026-10-28 |  |  |  |
|  | 1 | **Gate valves dia (110) mm** |  | 2026-06-29 | 2026-10-28 |  |  |  |
| B3.33 14 19.01.112 |  | Burried Isolation Valve Installation (75.00% Completed) | 67.82d | 2026-06-29 A | 2026-09-15 A | B3.33 14 13.01.01011 SS | 100% |  |
| B3.33 14 19.01.112_R |  | Burried Isolation Valve Installation(Rem) | 3d | 2026-10-07 | 2026-10-10 | B3.33 14 13.01.01011_R SS, B3.33 14 19.01.112 |  | 93.32d |
| B3.33 14 19.01.113 |  | Spindle & Surface Box | 3d | 2026-10-26 | 2026-10-28 | B3.33 14 19.01.112_R, B3.33 05 63.02.39 |  | 91.32d |
|  | 2 | **Air Valves** |  | 2026-10-07 | 2026-10-29 |  |  |  |
|  | 4 | **Air valves on less than 315 mm. (In Chamber)** |  | 2026-10-07 | 2026-10-29 |  |  |  |
| B3.33 05 63.02.27 |  | Land Adjustment & Compaction | 3d | 2026-10-07 | 2026-10-10 | B3.33 14 13.01.0103 |  | 79.32d |
| B3.33 05 63.02.25 |  | Foundations | 4d | 2026-10-11 | 2026-10-14 | B3.33 05 63.02.27, B3.33 14 13.02.22 |  | 79.32d |
| B3.33 05 63.02.28 |  | Chambers Walls Conc Cast In Situ | 4d | 2026-10-15 | 2026-10-19 | B3.33 05 63.02.25 |  | 79.32d |
| B3.33 05 63.02.26 |  | Chamber Curing, Finishing & Steel Cover | 5d | 2026-10-20 | 2026-10-25 | B3.33 05 63.02.28 |  | 79.32d |
| B3.33 05 63.02.29 |  | Valve & Fitting Installation | 4d | 2026-10-26 | 2026-10-29 | B3.33 05 63.02.26, B3.33 14 13.02.24 |  | 79.32d |
|  | Washout Valves | **Washout Valves** |  | 2026-10-07 | 2026-11-12 |  |  |  |
|  | 4 | **Washout valves on 110-400 mm. (In Chamber)** |  | 2026-10-07 | 2026-11-12 |  |  |  |
| B3.33 05 63.01.22 |  | Land Adjustment & Compaction | 3d | 2026-10-07 | 2026-10-10 | B3.33 14 13.02.22 |  | 84.32d |
| B3.33 05 63.01.20 |  | Foundations | 4d | 2026-10-11 | 2026-10-14 | B3.33 05 63.01.22 |  | 84.32d |
| B3.33 05 63.01.23 |  | Chambers Walls Conc Cast In Situ | 4d | 2026-10-15 | 2026-10-19 | B3.33 05 63.01.20 |  | 84.32d |
| B3.33 05 63.01.21 |  | Chamber Curing, Finishing & Steel Cover | 4d | 2026-10-20 | 2026-10-24 | B3.33 05 63.01.23, B3.33 14 13.01.01019_R |  | 84.32d |
| B3.33 05 63.01.24 |  | Valve & Fitting Installation | 4d | 2026-11-09 | 2026-11-12 | B3.33 05 63.01.21, B3.33 14 13-199, B3.33 05 63.02.29 |  | 71.32d |
|  | Fire Fighting | **Fire Fighting Network** |  | 2026-02-03 | 2026-11-05 |  |  |  |
|  | HDPE | **HDPE Pipes** |  | 2026-02-03 | 2026-06-15 |  |  |  |
|  | ?250mm | **?250mm** |  | 2026-02-03 | 2026-06-15 |  |  |  |
|  | Depth: 0.0m - 1.5m | **Depth: 0.0m - 1.5m** |  | 2026-02-04 | 2026-06-15 |  |  |  |
| B3.1. 33 14 13-4 |  | Excavation | 31.95d | 2026-02-04 A | 2026-03-26 A | B3.33 14 13.01.0101, B3.33 14 13.01.0103 | 100% |  |
| B3.1. 33 14 13-8 |  | Sand Bedding | 30.2d | 2026-02-08 A | 2026-03-28 A | B3.1. 33 14 13-4 | 100% |  |
| B3.1. 33 14 13-12 |  | Pipe Laying | 29.7d | 2026-02-11 A | 2026-03-30 A | B3.1. 33 14 13-8 | 100% |  |
| B3.1. 33 14 13-16 |  | Embedment & Test | 3d | 2026-04-05 A | 2026-04-07 A | B3.1. 33 14 13-12, B3.33 14 19.01.128 | 100% |  |
| B3.1. 33 14 13-20 |  | Backfilling & Warrning Tape | 5d | 2026-06-09 A | 2026-06-15 A | B3.1. 33 14 13-16, B3.1. 33 14 13..19 | 100% |  |
|  | Depth: 1.51m - 2.5m | **Depth: 1.51m - 2.5m** |  | 2026-02-03 | 2026-06-01 |  |  |  |
| B3.1. 33 14 13-6 |  | Excavation | 79.61d | 2026-02-03 A | 2026-05-20 A | B3.33 14 13.01.0101, B3.33 14 13.01.0103 | 100% |  |
| B3.1. 33 14 13-10 |  | Sand Bedding | 78.86d | 2026-02-07 A | 2026-05-23 A | B3.1. 33 14 13-6 | 100% |  |
| B3.1. 33 14 13-14 |  | Pipe Laying | 78.36d | 2026-02-10 A | 2026-05-25 A | B3.1. 33 14 13-10 | 100% |  |

| ID | WBS | Task | Duration | Start | Finish | Predecessors | Complete | Total float |
| --- | --- | --- | --- | --- | --- | --- | --- | --- |
| B3.1. 33 14 13-18 |  | Embedment & Test | 21.5d | 2026-05-02 A | 2026-05-31 A | B3.1. 33 14 13-14, B3.33 14 19.01.128 | 100% |  |
| B3.1. 33 14 13-22 |  | Backfilling & Warrning Tape | 15.25d | 2026-05-10 A | 2026-06-01 A | B3.1. 33 14 13-18, B3.33 05 63.01.34 | 100% |  |
|  | Valves & Chambers | **Valves & Chambers** |  | 2026-04-29 | 2026-11-05 |  |  |  |
|  | GV | **Gate Valves** |  | 2026-04-29 | 2026-10-11 |  |  |  |
|  | 1 | **Gate valves dia (250) mm** |  | 2026-04-29 | 2026-10-11 |  |  |  |
| B3.33 14 19.01.128 |  | Burried Isolation Valve Installation | 21d | 2026-04-29 A | 2026-05-24 A | B3.1. 33 14 13-12, B3.1. 33 14 13-14 | 100% |  |
| B3.33 14 19.01.129 |  | Spindle & Surface Box | 4d | 2026-10-07 | 2026-10-11 | B3.33 14 19.01.128 |  | 94.32d |
|  | 2 | **Air Valves** |  | 2026-10-07 | 2026-11-05 |  |  |  |
|  | 4 | **Air valves on less than 315 mm. (In Chamber)** |  | 2026-10-07 | 2026-11-05 |  |  |  |
| B3.33 05 63.02.57 |  | Land Adjustment & Compaction | 4d | 2026-10-07 | 2026-10-11 | B3.1. 33 14 13-18, B3.1. 33 14 13-16 |  | 61.32d |
| B3.33 05 63.02.55 |  | Foundations | 5d | 2026-10-12 | 2026-10-17 | B3.33 05 63.02.57 |  | 61.32d |
| B3.33 05 63.02.58 |  | Chambers Walls Conc Cast In Situ | 5d | 2026-10-18 | 2026-10-22 | B3.33 05 63.02.55 |  | 61.32d |
| B3.33 05 63.02.56 |  | Chamber Curing, Finishing & Steel Cover | 6d | 2026-10-24 | 2026-10-29 | B3.33 05 63.02.58 |  | 61.32d |
| B3.33 05 63.02.59 |  | Valve & Fitting Installation | 6d | 2026-10-31 | 2026-11-05 | B3.33 05 63.02.56 |  | 61.32d |
|  | Washout Valves | **Washout Valves** |  | 2026-10-07 | 2026-11-05 |  |  |  |
|  | 4 | **Washout valves on 110-400 mm. (In Chamber)** |  | 2026-10-07 | 2026-11-05 |  |  |  |
| B3.33 05 63.01.52 |  | Land Adjustment & Compaction | 4d | 2026-10-07 | 2026-10-11 | B3.1. 33 14 13-18, B3.1. 33 14 13-16 |  | 61.32d |
| B3.33 05 63.01.50 |  | Foundations | 5d | 2026-10-12 | 2026-10-17 | B3.33 05 63.01.52 |  | 61.32d |
| B3.33 05 63.01.53 |  | Chambers Walls Conc Cast In Situ | 5d | 2026-10-18 | 2026-10-22 | B3.33 05 63.01.50 |  | 61.32d |
| B3.33 05 63.01.51 |  | Chamber Curing, Finishing & Steel Cover | 6d | 2026-10-24 | 2026-10-29 | B3.33 05 63.01.53 |  | 61.32d |
| B3.33 05 63.01.54 |  | Valve & Fitting Installation | 6d | 2026-10-31 | 2026-11-05 | B3.33 05 63.01.51 |  | 61.32d |
|  | 3 | **Fire Hydrant** |  | 2026-10-07 | 2026-10-22 |  |  |  |
| B3.33 14 19.01.fh32 |  | Riser Pipe & Flanged Fittings Installation | 4d | 2026-10-07 | 2026-10-11 | B3.1. 33 14 13-14, B3.1. 33 14 13-12 |  | 84.32d |
| B3.33 14 19.01.fh31 |  | Firehydrant Fixing/Installation | 5d | 2026-10-12 | 2026-10-17 | B3.33 14 19.01.fh32 |  | 84.32d |
| B3.33 14 19.01.fh33 |  | Backfilling & Compaction | 5d | 2026-10-18 | 2026-10-22 | B3.33 14 19.01.fh31, B3.1. 33 14 13..17 |  | 84.32d |
|  | TSE Network | **TSE Network** |  | 2026-02-09 | 2026-12-03 |  |  |  |
|  | HDPE | **HDPE Pipes** |  | 2026-02-09 | 2026-10-15 |  |  |  |
|  | ?110mm | **?110mm** |  | 2026-02-09 | 2026-10-15 |  |  |  |
|  | Depth: 0.0m - 1.5m | **Depth: 0.0m - 1.5m** |  | 2026-02-09 | 2026-10-15 |  |  |  |
| B4.33 14 13.01-0190 |  | Excavation | 14.36d | 2026-02-09 A | 2026-03-01 A | B3.1. 33 14 13-4, B3.1. 33 14 13-6 | 100% |  |
| B4.33 14 13.01-0192 |  | Sand Bedding | 5.84d | 2026-02-19 A | 2026-03-02 A | B4.33 14 13.01-0190 | 100% |  |
| B4.33 14 13.01-0194 |  | Pipe Laying | 6.84d | 2026-02-24 A | 2026-03-07 A | B4.33 14 13.01-0192 | 100% |  |
| B4.33 14 13.01-0196 |  | Embedment & Test (18.77% Completed) | 158.58d | 2026-03-01 A | 2026-09-15 A | B4.33 14 13.01-0194 | 100% |  |
| B4.33 14 13.01-0198 |  | Backfilling & Warrning Tape (18.77% Completed) | 156.33d | 2026-03-04 A | 2026-09-15 A | B4.33 14 13.075, B4.33 14 13.01-0196 FF | 100% |  |
| B4.33 14 13.01-0196_R |  | Embedment & Test(Rem) | 4.25d | 2026-10-07 | 2026-10-12 | B4.33 14 13.01-0194, B4.33 14 13.01-0196 |  | 10.07d |
| B4.33 14 13.01-0198_R |  | Backfilling & Warrning Tape(Rem) | 5.06d | 2026-10-10 | 2026-10-15 | B3.33 05 63.02.89 FF, B4.33 14 13.075, B4.33 14 13.01-0196_R FF, B4.33 14 13.01-0198 |  | 6.32d |
|  | ?25mm | **?25mm** |  | 2026-02-09 | 2026-10-13 |  |  |  |
|  | Depth: 0.0m - 1.5m | **Depth: 0.0m - 1.5m** |  | 2026-02-09 | 2026-10-13 |  |  |  |
| B4.33 14 13.01-199 |  | Excavation (0.00% Completed) | 172.87d | 2026-02-09 A | 2026-09-15 A | B4.33 14 13.01-0190 | 100% |  |
| B4.33 14 13.01-209 |  | Sand Bedding (0.00% Completed) | 163.49d | 2026-02-21 A | 2026-09-15 A | B4.33 14 13.01-199 FF | 100% |  |
| B4.33 14 13.01-219 |  | Pipe Laying (0.00% Completed) | 161.49d | 2026-02-24 A | 2026-09-15 A | B4.33 14 13.01-209 FF, DMM2-Proc-Delv-5858 FF | 100% |  |
| B4.33 14 13.01-229 |  | Embedment & Test (0.00% Completed) | 150.75d | 2026-03-13 A | 2026-09-15 A | B4.33 14 13.01-219 FF | 100% |  |
| B4.33 14 13.01-239 |  | Backfilling & Warrning Tape (0.00% Completed) | 147.33d | 2026-03-18 A | 2026-09-15 A | B4.33 14 13.01-229 FF | 100% |  |
| B4.33 14 13.01-199_R |  | Excavation(Rem) | 3d | 2026-10-07 | 2026-10-10 | B4.33 14 13.01-0190, B4.33 14 13.01-199 |  | 11.32d |
| B4.33 14 13.01-209_R |  | Sand Bedding(Rem) | 3d | 2026-10-07 | 2026-10-10 | B4.33 14 13.01-199_R FF, B4.33 14 13.01-209 |  | 11.32d |
| B4.33 14 13.01-219_R |  | Pipe Laying(Rem) | 3d | 2026-10-07 | 2026-10-10 | B4.33 14 13.01-209_R FF, DMM2-Proc-Delv-5858_R FF, B4.33 14 13.01-219 |  | 11.32d |
| B4.33 14 13.01-229_R |  | Embedment & Test(Rem) | 5d | 2026-10-07 | 2026-10-12 | B4.33 14 13.01-219_R FF, B4.33 14 13.01-229 |  | 9.32d |
| B4.33 14 13.01-239_R |  | Backfilling & Warrning Tape(Rem) | 6d | 2026-10-07 | 2026-10-13 | B4.33 14 13.01-229_R FF, B4.33 14 13.01-239 |  | 8.32d |
|  | ?32mm | **?32mm** |  | 2026-02-09 | 2026-10-13 |  |  |  |
|  | Depth: 0.0m - 1.5m | **Depth: 0.0m - 1.5m** |  | 2026-02-09 | 2026-10-13 |  |  |  |
| B4.33 14 13.01-249 |  | Excavation (0.00% Completed) | 172.87d | 2026-02-09 A | 2026-09-15 A | B4.33 14 13.01-199 FF | 100% |  |
| B4.33 14 13.01-259 |  | Sand Bedding (0.00% Completed) | 163.31d | 2026-02-21 A | 2026-09-15 A | B4.33 14 13.01-249 FF | 100% |  |
| B4.33 14 13.01-269 |  | Pipe Laying (0.00% Completed) | 161.31d | 2026-02-24 A | 2026-09-15 A | B4.33 14 13.01-259 FF | 100% |  |
| B4.33 14 13.01-279 |  | Embedment & Test (0.00% Completed) | 109.81d | 2026-05-06 A | 2026-09-15 A | B4.33 14 13.01-269 FF | 100% |  |
| B4.33 14 13.01-289 |  | Backfilling & Warrning Tape (0.00% Completed) | 105.81d | 2026-05-11 A | 2026-09-15 A | B4.33 14 13.01-279 FF | 100% |  |
| B4.33 14 13.01-249_R |  | Excavation(Rem) | 3d | 2026-10-07 | 2026-10-10 | B4.33 14 13.01-199_R FF, B4.33 14 13.01-249 |  | 11.32d |
| B4.33 14 13.01-259_R |  | Sand Bedding(Rem) | 3d | 2026-10-07 | 2026-10-10 | B4.33 14 13.01-249_R FF, B4.33 14 13.01-259 |  | 11.32d |
| B4.33 14 13.01-269_R |  | Pipe Laying(Rem) | 3d | 2026-10-07 | 2026-10-10 | B4.33 14 13.01-259_R FF, B4.33 14 13.01-269 |  | 11.32d |
| B4.33 14 13.01-279_R |  | Embedment & Test(Rem) | 5d | 2026-10-07 | 2026-10-12 | B4.33 14 13.01-269_R FF, B4.33 14 13.01-279 |  | 9.32d |
| B4.33 14 13.01-289_R |  | Backfilling & Warrning Tape(Rem) | 6d | 2026-10-07 | 2026-10-13 | B4.33 14 13.01-279_R FF, B4.33 14 13.01-289 |  | 8.32d |
|  | ?50mm | **?50mm** |  | 2026-03-24 | 2026-10-13 |  |  |  |
|  | Depth: 0.0m - 1.5m | **Depth: 0.0m - 1.5m** |  | 2026-03-24 | 2026-10-13 |  |  |  |
| B4.33 14 13.01-299 |  | Excavation (0.00% Completed) | 147d | 2026-03-24 A | 2026-09-15 A | B4.33 14 13.01-249 FF, DMM2-Proc-Delv-5878 SS | 100% |  |
| B4.33 14 13.01-309 |  | Sand Bedding (0.00% Completed) | 146d | 2026-03-25 A | 2026-09-15 A | B4.33 14 13.01-299 FF | 100% |  |
| B4.33 14 13.01-319 |  | Pipe Laying (0.00% Completed) | 142d | 2026-03-30 A | 2026-09-15 A | B4.33 14 13.01-309 FF | 100% |  |
| B4.33 14 13.01-329 |  | Embedment & Test (0.00% Completed) | 136d | 2026-04-06 A | 2026-09-15 A | B4.33 14 13.01-319 FF | 100% |  |
| B4.33 14 13.01-339 |  | Backfilling & Warrning Tape (0.00% Completed) | 131d | 2026-04-12 A | 2026-09-15 A | B4.33 14 13.01-329 FF | 100% |  |
| B4.33 14 13.01-299_R |  | Excavation(Rem) | 3d | 2026-10-07 | 2026-10-10 | B4.33 14 13.01-249_R FF, DMM2-Proc-Delv-5878_R SS, B4.33 14 13.01-299 |  | 11.32d |
| B4.33 14 13.01-309_R |  | Sand Bedding(Rem) | 3d | 2026-10-07 | 2026-10-10 | B4.33 14 13.01-299_R FF, B4.33 14 13.01-309 |  | 11.32d |
| B4.33 14 13.01-319_R |  | Pipe Laying(Rem) | 3d | 2026-10-07 | 2026-10-10 | B4.33 14 13.01-309_R FF, B4.33 14 13.01-319 |  | 11.32d |

| ID | WBS | Task | Duration | Start | Finish | Predecessors | Complete | Total float |
| --- | --- | --- | --- | --- | --- | --- | --- | --- |
| B4.33 14 13.01-329_R |  | Embedment & Test(Rem) | 5d | 2026-10-07 | 2026-10-12 | B4.33 14 13.01-319_R FF, B4.33 14 13.01-329 |  | 9.32d |
| B4.33 14 13.01-339_R |  | Backfilling & Warrning Tape(Rem) | 6d | 2026-10-07 | 2026-10-13 | B4.33 14 13.01-329_R FF, B4.33 14 13.01-339 |  | 8.32d |
|  | ?63mm | **?63mm** |  | 2026-06-29 | 2026-10-13 |  |  |  |
|  | Depth: 0.0m - 1.5m | **Depth: 0.0m - 1.5m** |  | 2026-06-29 | 2026-10-13 |  |  |  |
| B4.33 14 13.01-349 |  | Excavation (0.00% Completed) | 68d | 2026-06-29 A | 2026-09-15 A | B4.33 14 13.01-299 FF, B1.1.31 23 23.162 | 100% |  |
| B4.33 14 13.01-359 |  | Sand Bedding (0.00% Completed) | 66d | 2026-07-01 A | 2026-09-15 A | B4.33 14 13.01-349 FF | 100% |  |
| B4.33 14 13.01-369 |  | Pipe Laying (0.00% Completed) | 64d | 2026-07-03 A | 2026-09-15 A | B4.33 14 13.01-359 FF | 100% |  |
| B4.33 14 13.01-379 |  | Embedment & Test (0.00% Completed) | 57d | 2026-07-12 A | 2026-09-15 A | B4.33 14 13.01-369 FF, B3.33 14 19.01.138 SS | 100% |  |
| B4.33 14 13.01-389 |  | Backfilling & Warrning Tape (0.00% Completed) | 52d | 2026-07-17 A | 2026-09-15 A | B4.33 14 13.01-289 FF, B4.33 14 13.01-379 FF | 100% |  |
| B4.33 14 13.01-349_R |  | Excavation(Rem) | 3d | 2026-09-22 A | 2026-09-28 A | B4.33 14 13.01-299_R FF, B1.1.31 23 23.162, B4.33 14 13.01-349 | 100% |  |
| B4.33 14 13.01-359_R |  | Sand Bedding(Rem) | 3d | 2026-10-07 | 2026-10-10 | B4.33 14 13.01-349_R FF, B4.33 14 13.01-359 |  | 11.32d |
| B4.33 14 13.01-369_R |  | Pipe Laying(Rem) | 3d | 2026-10-07 | 2026-10-10 | B4.33 14 13.01-359_R FF, B4.33 14 13.01-369 |  | 11.32d |
| B4.33 14 13.01-379_R |  | Embedment & Test(Rem) | 5d | 2026-10-07 | 2026-10-12 | B4.33 14 13.01-369_R FF, B3.33 14 19.01.138_R SS, B4.33 14 13.01-379 |  | 9.32d |
| B4.33 14 13.01-389_R |  | Backfilling & Warrning Tape(Rem) | 6d | 2026-10-07 | 2026-10-13 | B3.33 14 19.01.139 FF, B4.33 14 13.01-289_R FF, B4.33 14 13.01-379_R FF, B4.33 14 13.01-389 |  | 8.32d |
|  | ?75mm | **?75mm** |  | 2026-07-01 | 2026-10-13 |  |  |  |
|  | Depth: 0.0m - 1.5m | **Depth: 0.0m - 1.5m** |  | 2026-07-01 | 2026-10-13 |  |  |  |
| B4.33 14 13.01-399 |  | Excavation (0.00% Completed) | 66d | 2026-07-01 A | 2026-09-15 A | B4.33 14 13.01-349 SS | 100% |  |
| B4.33 14 13.01-409 |  | Sand Bedding (0.00% Completed) | 63d | 2026-07-05 A | 2026-09-15 A | B4.33 14 13.01-399 FF | 100% |  |
| B4.33 14 13.01-419 |  | Pipe Laying (0.00% Completed) | 60d | 2026-07-08 A | 2026-09-15 A | B4.33 14 13.01-409 FF | 100% |  |
| B4.33 14 13.01-429 |  | Embedment & Test (0.00% Completed) | 57d | 2026-07-12 A | 2026-09-15 A | B4.33 14 13.01-419 FF, B3.33 14 19.01.138 SS | 100% |  |
| B4.33 14 13.01-439 |  | Backfilling & Warrning Tape (0.00% Completed) | 52d | 2026-07-17 A | 2026-09-15 A | B4.33 14 13.01-429 FF | 100% |  |
| B4.33 14 13.01-399_R |  | Excavation(Rem) | 3d | 2026-10-07 | 2026-10-10 | B4.33 14 13.01-349_R SS, B4.33 14 13.01-399 |  | 2.32d |
| B4.33 14 13.01-409_R |  | Sand Bedding(Rem) | 3d | 2026-10-07 | 2026-10-10 | B4.33 14 13.01-399_R FF, B4.33 14 13.01-409 |  | 2.32d |
| B4.33 14 13.01-419_R |  | Pipe Laying(Rem) | 3d | 2026-10-07 | 2026-10-10 | B4.33 14 13.01-409_R FF, B4.33 14 13.01-419 |  | 2.32d |
| B4.33 14 13.01-429_R |  | Embedment & Test(Rem) | 5d | 2026-10-07 | 2026-10-12 | B4.33 14 13.01-419_R FF, B3.33 14 19.01.138_R SS, B4.33 14 13.01-429 |  | 2.32d |
| B4.33 14 13.01-439_R |  | Backfilling & Warrning Tape(Rem) | 6d | 2026-10-07 | 2026-10-13 | B4.33 14 13.01-429_R FF, B4.33 14 13.01-439 |  | 1.32d |
|  | Valves & Chambers | **Valves & Chambers** |  | 2026-07-10 | 2026-12-03 |  |  |  |
|  | GV | **Gate Valves** |  | 2026-07-10 | 2026-10-12 |  |  |  |
|  | 1 | **Gate valves dia (250) mm** |  | 2026-07-10 | 2026-10-12 |  |  |  |
| B3.33 14 19.01.138 |  | Burried Isolation Valve Installation (50.00% Completed) | 58d | 2026-07-10 A | 2026-09-15 A | B4.33 14 13.01-419 SS | 100% |  |
| B3.33 14 19.01.138_R |  | Burried Isolation Valve Installation(Rem) | 2d | 2026-10-07 | 2026-10-08 | B4.33 14 13.01-419_R SS, B3.33 14 19.01.138 |  | 2.32d |
| B3.33 14 19.01.139 |  | Spindle & Surface Box | 3d | 2026-10-10 | 2026-10-12 | B3.33 14 19.01.138_R |  | 9.32d |
|  | 2 | **Air Valves** |  | 2026-11-14 | 2026-12-03 |  |  |  |
|  | 4 | **Air valves on less than 315 mm. (In Chamber)** |  | 2026-11-14 | 2026-12-03 |  |  |  |
| B3.33 05 63.02.92 |  | Land Adjustment & Compaction | 3d | 2026-11-14 | 2026-11-16 | B4.33 14 13.01-0190, DMM2-Proc-Delv-7490 |  | 23.32d |
| B3.33 05 63.02.90 |  | Foundations | 4d | 2026-11-17 | 2026-11-21 | B3.33 05 63.02.92 |  | 23.32d |
| B3.33 05 63.02.93 |  | Chambers Walls Conc Cast In Situ | 4d | 2026-11-22 | 2026-11-25 | B3.33 05 63.02.90 |  | 23.32d |
| B3.33 05 63.02.91 |  | Chamber Curing, Finishing & Steel Cover | 3d | 2026-11-26 | 2026-11-29 | B3.33 05 63.02.93 |  | 23.32d |
| B3.33 05 63.02.94 |  | Valve & Fitting Installation | 3d | 2026-12-01 | 2026-12-03 | B3.33 05 63.02.91, B3.33 05 63.01.69 |  | 22.32d |
|  | Solenoid valves | **Solenoid valves** |  | 2026-10-11 | 2026-10-27 |  |  |  |
|  | Solenoid valve ?1.0 | **1 Solenoid valve ?1.0 inch with box** |  | 2026-10-11 | 2026-10-20 |  |  |  |
| B4.32 84 13.065 |  | Pull Box Installation | 7d | 2026-10-11 | 2026-10-18 | B4.33 14 13.01-419_R |  | 35.32d |
| B4.32 84 13.23 |  | Solenoid Valve Box Installation | 3d | 2026-10-11 | 2026-10-13 | B4.33 14 13.01-419_R |  | 51.32d |
| B4.32 84 13.22 |  | Cable Laying Two-Wire Decoder (12 AWG) | 3d | 2026-10-14 | 2026-10-17 | B4.32 84 13.23 |  | 51.32d |
| B4.32 84 13.24 |  | Bubblers Installation | 3d | 2026-10-18 | 2026-10-20 | B4.32 84 13.22 |  | 51.32d |
|  | Solenoid valve ?1.5 | **1 Solenoid valve ?1.5 inch with box** |  | 2026-10-14 | 2026-10-24 |  |  |  |
| B4.32 84 13.26 |  | Solenoid Valve Box Installation | 3d | 2026-10-14 | 2026-10-17 | B4.32 84 13.23 |  | 51.32d |
| B4.32 84 13.25 |  | Cable Laying Two-Wire Decoder (12 AWG) | 3d | 2026-10-18 | 2026-10-20 | B4.32 84 13.26 |  | 51.32d |
| B4.32 84 13.064 |  | Pull Box Installation | 3d | 2026-10-19 | 2026-10-21 | B4.32 84 13.065 |  | 35.32d |
| B4.32 84 13.27 |  | Bubblers Installation | 3d | 2026-10-21 | 2026-10-24 | B4.32 84 13.25, B4.32 84 13.24 |  | 51.32d |
|  | Solenoid valve ?2.0 | **1 Solenoid valve ?2.0 inch with box** |  | 2026-10-18 | 2026-10-27 |  |  |  |
| B4.32 84 13.20 |  | Solenoid Valve Box Installation | 3d | 2026-10-18 | 2026-10-20 | B4.32 84 13.26 |  | 51.32d |
| B4.32 84 13.19 |  | Cable Laying Two-Wire Decoder (12 AWG) | 3d | 2026-10-21 | 2026-10-24 | B4.32 84 13.20 |  | 51.32d |
| B4.32 84 13.063 |  | Pull Box Installation | 3d | 2026-10-22 | 2026-10-25 | B4.32 84 13.064 |  | 35.32d |
| B4.32 84 13.21 |  | Bubblers Installation | 3d | 2026-10-25 | 2026-10-27 | B4.32 84 13.19, B4.32 84 13.27 |  | 51.32d |
|  | Dry Networks | **Dry Networks** |  | 2026-10-14 | 2026-12-06 |  |  |  |
|  | MV | **Medium Voltage Network** |  | 2026-10-14 | 2026-12-05 |  |  |  |
|  | Cables | **Cables** |  | 2026-10-14 | 2026-11-07 |  |  |  |
|  | 3C,500mm2 | **3C,500mm2** |  | 2026-10-14 | 2026-11-07 |  |  |  |
| B2.33 71 49.23.77 |  | Cable 13.8 kV Unarmored | 4d | 2026-10-14 | 2026-10-18 | B6.33 05 40.01.400_R, B6.33 05 40.01.880, B4.33 14 13.01-439_R |  | 1.32d |
| B2.33 71 49.23.78 |  | Straight joints cables | 3d | 2026-10-19 | 2026-10-21 | B2.33 71 49.23.77 |  | 83.32d |
| B2.33 71 49.23.79 |  | Cable Termination | 3d | 2026-11-03 | 2026-11-07 | B2.33 71 49.23.78, B2.33 71 49.23.76 |  | 73.2d |
|  | RMU | **RMU** |  | 2026-10-17 | 2026-11-15 |  |  |  |
| B2 33 73 00.02.81 |  | Land Adjustment | 3d | 2026-10-17 | 2026-10-19 | B4.33 14 13.01-439_R, B4.33 14 13.01-389_R, B4.33 14 13.01-339_R, B4.33 14 13.01-289_R, B4.33 14 13.01-239_R, B4.33 14 13.01-0198_R |  | 6.32d |
| B2 33 73 00.02.83 |  | Foundation Works & Curing | 7d | 2026-10-20 | 2026-10-27 | B2 33 73 00.02.81 |  | 26.32d |
| B2 33 73 00.02.85 |  | Installation of Ring Main Unit RMU, 13.8KV | 7d | 2026-10-31 | 2026-11-07 | B2 33 73 00.02.83, DMM2-Proc-Delv-6468_R |  | 24.32d |
| B2.33 71 49.23.05 |  | Normally Open Point 13.8 KV | 7d | 2026-11-08 | 2026-11-15 | B2 33 73 00.02.85 |  | 24.32d |
|  | Units Substation | **Units Substation** |  | 2026-10-20 | 2026-12-05 |  |  |  |
| B2 33 73 00.01.81 |  | Land Adjustment | 3d | 2026-10-20 | 2026-10-22 | B2 33 73 00.02.81 |  | 6.32d |
| B2 33 73 00.01.83 |  | Foundation Works & Curing | 7d | 2026-10-28 | 2026-11-04 | B2 33 73 00.01.81, B2 33 73 00.02.83 |  | 85.32d |

| ID | WBS | Task | Duration | Start | Finish | Predecessors | Total float |
| --- | --- | --- | --- | --- | --- | --- | --- |
| B2 33 73 00.01.85 |  | Installation of Unit Substation 13.8/0.4 K V | 3d | 2026-12-01 | 2026-12-05 | B2 33 73 00.01.83, B2 33 73 00.02.85, DMM2-Proc-Delv-6458_R, B2.33 71 49.23.67, B2.33 71 49.23.102 | 62.91d |
|  | LV Network | **Low Voltage Network** |  | 2026-10-14 | 2026-11-30 |  |  |
|  | Duct Banks | **Duct Banks** |  | 2026-10-14 | 2026-11-30 |  |  |
|  | 2 Way | **2 Way** |  | 2026-10-14 | 2026-11-26 |  |  |
| B2.33 71 00 02 103 |  | Excavation | 2d | 2026-10-14 | 2026-10-15 | B6.33 05 40.01.880 | 89.32d |
| B2.33 71 00 02 104 |  | Shuttering, Steel Fixing Incl. UPVC Pipe & Conc. Cast | 3d | 2026-10-17 | 2026-10-19 | B2.33 71 00 02 103 | 93.32d |
| B2.33 71 00 02 105 |  | Backfilling & Warrning Tape | 3d | 2026-11-24 | 2026-11-26 | B2.33 71 00 02 104, B2.33 71 00 02 129 | 63.32d |
|  | 4 Way | **4 Way** |  | 2026-10-17 | 2026-11-30 |  |  |
| B2.33 71 00 02 106 |  | Excavation | 2d | 2026-10-17 | 2026-10-18 | B2.33 71 00 02 103 | 89.32d |
| B2.33 71 00 02 107 |  | Shuttering, Steel Fixing Incl. UPVC Pipe & Conc. Cast | 3d | 2026-10-19 | 2026-10-21 | B2.33 71 00 02 106 | 94.32d |
| B2.33 71 00 02 108 |  | Backfilling & Warrning Tape | 3d | 2026-11-28 | 2026-11-30 | B2.33 71 00 02 107, B2.33 71 00 02 105 | 63.32d |
|  | 6 Way | **6 Way** |  | 2026-10-19 | 2026-10-27 |  |  |
| B2.33 71 00 02 109 |  | Excavation | 2d | 2026-10-19 | 2026-10-20 | B2.33 71 00 02 106 | 89.32d |
| B2.33 71 00 02 110 |  | Shuttering, Steel Fixing Incl. UPVC Pipe & Conc. Cast | 3d | 2026-10-21 | 2026-10-24 | B2.33 71 00 02 109 | 89.32d |
| B2.33 71 00 02 111 |  | Backfilling & Warrning Tape | 3d | 2026-10-25 | 2026-10-27 | B2.33 71 00 02 110 | 89.32d |
|  | Cables | **Cables** |  | 2026-10-19 | 2026-10-20 |  |  |
|  | 4C,10+1C,10mm2 | **4C,10+1C,10mm2** |  | 2026-10-19 | 2026-10-20 |  |  |
| B2.33 71 00 01 11 |  | Cable Pulling | 2d | 2026-10-19 | 2026-10-20 | B2.33 71 49.23.77 | 6.32d |
|  | LV Panels | **0.6/1 KV Low Voltage Distribution Panels** |  | 2026-10-24 | 2026-11-07 |  |  |
| B2.33 71 26 24 |  | Land Adjustment | 2d | 2026-10-24 | 2026-10-25 | B2 33 73 00.01.81 | 6.32d |
| B2.33 71 26 25 |  | Foundation Works & Curing | 3d | 2026-11-01 | 2026-11-03 | B2.33 71 26 24, B2.33 71 26 28 | 33.32d |
| B2.33 71 26 23 |  | Installation of 0.6/1 KV Low Voltage Distribution Panels | 3d | 2026-11-04 | 2026-11-07 | B2.33 71 26 25, B2.33 71 26 26 | 33.32d |
|  | LV Pillars | **0.6/1 KV Low Voltage Distribution Pillars** |  | 2026-10-26 | 2026-11-03 |  |  |
| B2.33 71 26 27 |  | Land Adjustment | 2d | 2026-10-26 | 2026-10-27 | B2.33 71 26 24 | 6.32d |
| B2.33 71 26 28 |  | Foundation Works & Curing | 3d | 2026-10-28 | 2026-10-31 | B2.33 71 26 27 | 33.32d |
| B2.33 71 26 26 |  | Installation of 0.6/1 KV Low Voltage Distribution Pillars | 3d | 2026-11-01 | 2026-11-03 | B2.33 71 26 28 | 33.32d |
|  | Street Lighting | **Street Lighting** |  | 2026-10-28 | 2026-12-06 |  |  |
|  | Cables | **Cables** |  | 2026-10-28 | 2026-12-06 |  |  |
|  | 4C,10+1C,10mm2 | **4C,10+1C,10mm2** |  | 2026-10-28 | 2026-12-06 |  |  |
| B2.33 71 19 122 |  | Land Adjustment | 3d | 2026-10-28 | 2026-10-31 | B2.33 71 26 27 | 6.32d |
| B2.33 71 49.23.142 |  | Cable Pulling | 2d | 2026-11-01 | 2026-11-02 | B2.33 71 19 122 | 82.32d |
| B2.33 71 19 132 |  | Backfilling | 3d | 2026-12-03 | 2026-12-06 | B2.33 71 49.23.142, B2.33 71 16.78, B2.33 71 16.82 | 56.32d |
|  | SL Poles | **SL Poles** |  | 2026-11-01 | 2026-11-17 |  |  |
|  | Pole (10 M Sngl Arm) | **Pole (10 M Single Arm)** |  | 2026-11-01 | 2026-11-17 |  |  |
| B2.33 71 16.67 |  | Excavation | 3d | 2026-11-01 | 2026-11-03 | B1.2.32 11 26.01.10_R, B2.33 71 19 122 | 6.32d |
| B2.33 71 16.68 |  | PC & RC Foundation | 3d | 2026-11-04 | 2026-11-07 | B2.33 71 16.67 | 64.32d |
| B2.33 71 16.69 |  | Lighting Poles Installation Incl power box, Cables | 3d | 2026-11-08 | 2026-11-10 | B2.33 71 16.68 | 64.32d |
| B2.26.56.19.10 |  | Lighting Luminares Inst | 3d | 2026-11-11 | 2026-11-14 | B2.33 71 16.69, DMM2-Proc-Delv-6548_R | 70.32d |
| B2.33 71 16.70 |  | Backfilling, Grouting & Chamfering | 3d | 2026-11-15 | 2026-11-17 | B2.26.56.19.10 | 70.32d |
|  | Earthing | **Earthing** |  | 2026-11-21 | 2026-11-29 |  |  |
| B2.33 71 19 35 |  | Land Adjustment | 3d | 2026-11-21 | 2026-11-23 | B2.33 71 16.69, B2.33 71 16.103 SS | 56.32d |
| B2.33 71 19 36 |  | Earth Rods & Conduits | 3d | 2026-11-24 | 2026-11-26 | B2.33 71 19 35 | 56.32d |
| B2.33 71 19 37 |  | Backfilling | 2d | 2026-11-28 | 2026-11-29 | B2.33 71 19 36 | 56.32d |
|  | Telecommunication | **Telecommunication Network** |  | 2026-10-14 | 2026-11-18 |  |  |
|  | Ducts | **Ducts** |  | 2026-10-14 | 2026-11-04 |  |  |
|  | (6*50mm+2*32mm) | **Size (6*50mm+2*32mm) HDPE ducts** |  | 2026-10-14 | 2026-10-22 |  |  |
| B2.1.33 81 26.123 |  | Excavation | 3d | 2026-10-14 | 2026-10-17 | B6.33 05 40.01.880 | 47.32d |
| B2.1.33 81 26.124 |  | HDPE Pipe, Shuttering, Steel Fixing & Conc. Cast | 3d | 2026-10-18 | 2026-10-20 | B2.1.33 81 26.123 | 50.32d |
| B2.1.33 81 26.125 |  | Backfilling & Warrning Tape | 2d | 2026-10-21 | 2026-10-22 | B2.1.33 81 26.124 | 50.32d |
|  | (6*50mm) | **Size (6*50mm) HDPE ducts** |  | 2026-10-14 | 2026-10-24 |  |  |
| B2.1.33 81 26.120 |  | Excavation | 3d | 2026-10-14 | 2026-10-17 | B2.1.33 81 26.123 SS | 47.32d |
| B2.1.33 81 26.121 |  | HDPE Pipe, Shuttering, Steel Fixing & Conc. Cast | 3d | 2026-10-18 | 2026-10-20 | B2.1.33 81 26.120 | 52.32d |
| B2.1.33 81 26.122 |  | Backfilling & Warrning Tape | 3d | 2026-10-21 | 2026-10-24 | B2.1.33 81 26.121 | 52.32d |
|  | (6*50mm+4*32mm) | **Size (6*50mm+4*32mm) HDPE ducts** |  | 2026-10-14 | 2026-10-24 |  |  |
| B2.1.33 81 26.126 |  | Excavation | 3d | 2026-10-14 | 2026-10-17 | B2.1.33 81 26.120 SS | 47.32d |
| B2.1.33 81 26.127 |  | HDPE Pipe, Shuttering, Steel Fixing & Conc. Cast | 3d | 2026-10-18 | 2026-10-20 | B2.1.33 81 26.126 | 52.32d |
| B2.1.33 81 26.128 |  | Backfilling & Warrning Tape | 3d | 2026-10-21 | 2026-10-24 | B2.1.33 81 26.127 | 52.32d |
|  | (2*32mm) | **Size (2*32mm) HDPE ducts** |  | 2026-10-18 | 2026-11-04 |  |  |
| B2.1.33 81 26.129 |  | Excavation | 2d | 2026-10-18 | 2026-10-19 | B2.1.33 81 26.126 | 47.32d |
| B2.1.33 81 26.130 |  | HDPE Pipe, Shuttering, Steel Fixing & Conc. Cast | 3d | 2026-10-20 | 2026-10-22 | B2.1.33 81 26.129 | 50.32d |
| B2.1.33 81 26.131 |  | Backfilling & Warrning Tape | 3d | 2026-11-02 | 2026-11-04 | B2.1.33 81 26.130, B2.1.33 81 26.56 | 42.32d |
|  | Manholes | **Manholes** |  | 2026-10-22 | 2026-10-29 |  |  |
|  | Manhole Type 1 | **Manhole Type 1** |  | 2026-10-22 | 2026-10-29 |  |  |
| B2.31 23 00.620 |  | Excavation | 2d | 2026-10-22 | 2026-10-24 | B2.1.33 81 26.129, B2.1.33 81 26.126, B2.1.33 81 26.120, B2.31 23 00.619 | 47.32d |
| B2.33 71 00.248 |  | Manhole Installation | 2d | 2026-10-25 | 2026-10-26 | B2.31 23 00.620 | 75.32d |
| B2.33 71 00.249 |  | Backfilling & Warrning Tape | 3d | 2026-10-27 | 2026-10-29 | B2.33 71 00.248 | 75.32d |
|  | Crossing Ducts | **Road Crossing Ducts** |  | 2026-10-20 | 2026-11-18 |  |  |
|  | 1 | **Size (6X50mm+4X32mm) HDPE** |  | 2026-10-20 | 2026-10-28 |  |  |
| B2.31 23 00.619 |  | Excavation | 2d | 2026-10-20 | 2026-10-21 | B2.1.33 81 26.129 | 47.32d |
| B2.33 71 00.246 |  | Shuttering, Steel Fixing Incl. UPVC Pipe & Conc. Cast | 3d | 2026-10-22 | 2026-10-25 | B2.31 23 00.619 | 48.32d |

| ID | WBS | Task | Duration | Start | Finish | Predecessors | Complete | Total float |
| --- | --- | --- | --- | --- | --- | --- | --- | --- |
| B2.33 71 00.247 |  | Backfilling & Warrning Tape | 3d | 2026-10-26 | 2026-10-28 | B2.33 71 00.246, B2.1.33 81 26.125 |  | 48.32d |
|  | 2 | **Size (2*32mm) HDPE** |  | 2026-10-25 | 2026-11-18 |  |  |  |
| B2.31 23 00.621 |  | Excavation | 2d | 2026-10-25 | 2026-10-26 | B2.31 23 00.619, B2.31 23 00.620 |  | 47.32d |
| B2.33 71 00.250 |  | Shuttering, Steel Fixing Incl. UPVC Pipe & Conc. Cast | 3d | 2026-10-27 | 2026-10-29 | B2.31 23 00.621 |  | 47.32d |
| B2.33 71 00.251 |  | Backfilling & Warrning Tape | 3d | 2026-11-16 | 2026-11-18 | B2.33 71 00.250, B2.33 71 00.265, B2.1.33 81 26.122, B2.1.33 81 26.128, B2.1.33 81 26.131, B2.33 71 00.247, B2.33 71 00.261 |  | 33.32d |
|  | Earth & Road Works | **Earth & Road Works** |  | 2025-11-28 | 2026-11-30 |  |  |  |
|  | Earth Works | **Earth Works** |  | 2025-11-28 | 2026-02-01 |  |  |  |
| B1.2.31 23 16.01.10 |  | Roadway Excavation | 3d | 2025-11-28 A | 2025-12-01 A | DMM2-Eng-MS-78 | 100% |  |
| B1.2.31 23 23.01.10 |  | Embankment Backfiling | 52.02d | 2025-12-02 A | 2026-02-01 A | B1.2.31 23 16.01.10 | 100% |  |
|  | Earth Layers | **Earth Layers** |  | 2026-01-19 | 2026-10-10 |  |  |  |
| B1.2.32 11 13.01.10 |  | Subgrade (65.00% Completed) | 190.77d | 2026-01-19 A | 2026-09-15 A | B1.2.31 23 23.01.10 | 100% |  |
| B1.2.32 11 23.01.10 |  | Aggregate Base Course (60.00% Completed) | 98d | 2026-05-20 A | 2026-09-15 A | B1.2.32 11 13.01.10 FF | 100% |  |
| B1.2.32 11 13.01.10_R |  | Subgrade(Rem) | 2.1d | 2026-09-19 A | 2026-10-10 | B1.2.31 23 23.01.10, B1.2.32 11 13.01.10 |  | 111.22d |
| B1.2.32 11 23.01.10_R |  | Aggregate Base Course(Rem) | 2.8d | 2026-10-07 | 2026-10-10 | B1.2.32 11 13.01.10_R FF, B1.2.32 11 23.01.10 |  | 110.52d |
|  | Interlock | **Interlock** |  | 2026-10-27 | 2026-10-29 |  |  |  |
| B1.2.32 14 13.13.10 |  | 60mm thick - Interlocking Block Pavers | 3d | 2026-10-27 | 2026-10-29 | DMM2-Proc-Delv-7408 FS+2d |  | 5.32d |
|  | Curbstone | **Curbstone** |  | 2026-10-31 | 2026-11-19 |  |  |  |
|  | Pre Install | **Pre-Installation** |  | 2026-10-31 | 2026-11-05 |  |  |  |
| B2.31 23 00.271 |  | Excavation | 2d | 2026-10-31 | 2026-11-01 | B1.2.32 14 13.13.10 |  | 5.32d |
| B1.2.32 14 13.13.210 |  | PCC | 2d | 2026-11-02 | 2026-11-03 | B2.31 23 00.271 |  | 15.32d |
| 32 16 13.0010 |  | Haunching | 2d | 2026-11-04 | 2026-11-05 | B1.2.32 14 13.13.210 |  | 15.32d |
|  | Installation | **Installation** |  | 2026-11-07 | 2026-11-17 |  |  |  |
| B1.2.32 16.13.01.10 |  | Curb Stone, Type K1 | 2d | 2026-11-07 | 2026-11-08 | 32 16 13.0010 |  | 15.32d |
| B1.2.32 16.13.02.9 |  | Dropped Curb, Type K3 | 2d | 2026-11-09 | 2026-11-10 | B1.2.32 16.13.01.10, 32 16 13.0010 |  | 15.32d |
| B1.2.32 16.13.03.10 |  | Edge Curb, Type K4 | 2d | 2026-11-11 | 2026-11-12 | B1.2.32 16.13.02.9, 32 16 13.0010 |  | 15.32d |
| B1.2.32 16.13.0410 |  | Heel Curb, Type K5 | 2d | 2026-11-14 | 2026-11-15 | B1.2.32 16.13.03.10, 32 16 13.0010 |  | 15.32d |
| B1.2.32 16.13.05.9 |  | Transition Curb | 2d | 2026-11-16 | 2026-11-17 | B1.2.32 16.13.0410, 32 16 13.0010 |  | 15.32d |
|  | Finishing | **Finishing** |  | 2026-11-18 | 2026-11-19 |  |  |  |
| 32 16 13.010 |  | Finishing, Fareface | 2d | 2026-11-18 | 2026-11-19 | B1.2.32 16.13.01.10, B1.2.32 16.13.02.9, B1.2.32 16.13.03.10, B1.2.32 16.13.0410, B1.2.32 16.13.05.9 |  | 15.32d |
|  | Asphalt Layers | **Asphalt Layers** |  | 2026-06-02 | 2026-11-25 |  |  |  |
| B1.2.32 11 26.01.10 |  | Bituminous Base Course including Prime Coat (MC1) and tack coat (RC2) (71.00% Completed) | 91d | 2026-06-02 A | 2026-09-15 A | B1.2.32 11 23.01.10 SS | 100% |  |
| B1.2.32 11 26.01.10_R |  | Bituminous Base Course including Prime Coat (MC1) and tack coat (RC2)(Rem) | 2d | 2026-09-24 A | 2026-10-08 | B1.2.32 11 23.01.10_R SS, B1.2.32 11 26.01.10 | 28% | 25.88d |
| B1.2.32 12 16.01.10 |  | Bituminous concrete Wearing Course, including tack coat (RC2) | 5d | 2026-11-21 | 2026-11-25 | B1.2.32 11 26.01.10_R SS, 32 16 13.010 |  | 15.32d |
|  | Pavement Marking | **Pavement Marking** |  | 2026-11-26 | 2026-11-28 |  |  |  |
| B1.2.32 17 23.02.10 |  | Retroreflective Thermoplastic Yellow, Traffic lines | 1d | 2026-11-26 | 2026-11-26 | B1.2.32 12 16.01.10 |  | 64.32d |
| B1.2.32 17 23.01.10 |  | Retroreflective Thermoplastic White Traffic lines | 1d | 2026-11-28 | 2026-11-28 | B1.2.32 12 16.01.10, B1.2.32 17 23.02.10 |  | 64.32d |
|  | Traffic Signs | **Traffic Signs** |  | 2026-11-02 | 2026-11-30 |  |  |  |
|  | Pre Install | **Pre-Installation** |  | 2026-11-02 | 2026-11-05 |  |  |  |
| B2.31 23 00.281 |  | Excavation | 2d | 2026-11-02 | 2026-11-03 | B2.31 23 00.271 |  | 5.32d |
| 10 14 53.010 |  | Foundation | 2d | 2026-11-04 | 2026-11-05 | B2.31 23 00.281 |  | 83.32d |
|  | Installation | **Installation** |  | 2026-11-29 | 2026-11-30 |  |  |  |
| B1.2.10 14 53.0110 |  | 1 Sheet Alumenium, Single post | 2d | 2026-11-29 | 2026-11-30 | 10 14 53.010, B1.2.32 17 23.02.10, B1.2.32 17 23.01.10, B1.2.10 14 53.0111 SS |  | 64.32d |
|  | Guard Rail | **Guard Rail** |  | 2026-10-13 | 2026-10-21 |  |  |  |
| B2.31 23 00.654 |  | Excavation | 3d | 2026-10-13 | 2026-10-15 | B2.31 23 00.664 FS+2d |  | 45.32d |
| 10 14 53.15 |  | Foundation | 2d | 2026-10-15 | 2026-10-17 | B2.31 23 00.654 SS+2d |  | 45.32d |
| B1.2.10 14 53.328 |  | W-Beam Guard Rail Installation | 4d | 2026-10-18 | 2026-10-21 | 10 14 53.15 SS+2d, B1.2.10 14 53.338 SS |  | 45.32d |
|  | Landscape | **Landscape** |  | 2026-11-04 | 2026-11-25 |  |  |  |
|  | Fences | **Fences** |  | 2026-11-04 | 2026-11-25 |  |  |  |
|  | (ZATCA HCIS) | **Steel fence (ZATCA HCIS)** |  | 2026-11-04 | 2026-11-25 |  |  |  |
| B7.32 31 26.01-4 |  | Earthwork | 6d | 2026-11-04 | 2026-11-10 | B2.31 23 00.281 |  | 5.32d |
| B7.32 31 26.01-6 |  | Foundation | 6d | 2026-11-11 | 2026-11-17 | B7.32 31 26.01-4 |  | 5.32d |
| B7.32 31 26.01-8 |  | Fence Installation | 7d | 2026-11-18 | 2026-11-25 | B7.32 31 26.01-6 |  | 5.32d |
|  | Customs Road 04&RD05 | **Customs Road 04 & Road 05** |  | 2025-12-05 | 2026-12-16 |  |  |  |
|  | Wet Networks | **Wet Networks** |  | 2026-02-11 | 2026-11-19 |  |  |  |
|  | Stormwater Network | **Stormwater Network** |  | 2026-02-11 | 2026-10-18 |  |  |  |
|  | GRP | **GRP** |  | 2026-02-11 | 2026-05-17 |  |  |  |
|  | ?40011 | **?1500** |  | 2026-02-11 | 2026-05-17 |  |  |  |
|  | 3 | **Depth From 2.5m to 3.5m** |  | 2026-02-11 | 2026-05-17 |  |  |  |
| B6.33 42 11.34-1.1 |  | Excavation | 2d | 2026-02-11 A | 2026-02-14 A | B1.1.31 23 23.142 | 100% |  |
| B6.33 42 11.34-1.3 |  | Sand Bedding | 2d | 2026-02-15 A | 2026-02-17 A | B6.33 42 11.34-1.1 | 100% |  |
| B6.33 42 11.34-1.5 |  | Pipe Laying | 1.5d | 2026-02-16 A | 2026-02-17 A | B6.33 42 11.34-1.3 | 100% |  |
| B6.33 42 11.34-1.7 |  | Embedment & Test | 1d | 2026-02-21 A | 2026-02-23 A | B6.33 42 11.34-1.5 | 100% |  |
| B6.33 42 11.34-1.9 |  | Backfilling & Warrning Tape | 29.6d | 2026-04-13 A | 2026-05-17 A | B6.33 42 11.34-1.7 | 100% |  |
|  | Strom Manholes | **Manholes** |  | 2026-02-15 | 2026-10-13 |  |  |  |
|  | 3 | **?2000** |  | 2026-02-15 | 2026-10-13 |  |  |  |
|  | 3 | **Depth From 2.5m to 3.5m** |  | 2026-02-15 | 2026-10-13 |  |  |  |
| B6.33 05 39.01.3677 |  | Excavation & Compaction | 2d | 2026-02-15 A | 2026-02-17 A | B6.33 42 11.34-1.1 | 100% |  |
| B6.33 05 39.01.3687 |  | Blinding Conc, & RC Base (83.00% Completed) | 36d | 2026-08-05 A | 2026-09-15 A | B6.33 05 39.01.3677 | 100% |  |
| B6.33 05 39.01.3697 |  | Manhole Installation (83.00% Completed) | 33d | 2026-08-09 A | 2026-09-15 A | B6.33 05 39.01.3687 SS | 100% |  |
| B6.33 05 39.01.3717 |  | Backfilling (83.00% Completed) | 26d | 2026-08-17 A | 2026-09-15 A | B6.33 42 11.34-1.9 | 100% |  |

| ID | WBS | Task | Duration | Start | Finish | Predecessors | Complete | Total float |
| --- | --- | --- | --- | --- | --- | --- | --- | --- |
| B6.33 05 39.01.3687_R |  | Blinding Conc, & RC Base(Rem) | 3d | 2026-09-12 A | 2026-09-19 A | B6.33 05 39.01.3677, B6.33 05 39.01.3687 | 100% |  |
| B6.33 05 39.01.3697_R |  | Manhole Installation(Rem) | 3d | 2026-09-22 A | 2026-09-26 A | B6.33 05 39.01.3687_R SS, B6.33 05 39.01.3697 | 100% |  |
| B6.33 05 39.01.3707 |  | Test, Internal Finishing, Benching & Cover | 5d | 2026-10-07 | 2026-10-12 | B6.33 05 39.01.3697_R |  | 105.32d |
| B6.33 05 39.01.3717_R |  | Backfilling(Rem) | 3d | 2026-10-11 | 2026-10-13 | B6.33 05 39.01.3707 FF, B6.33 05 39.01.3717, B6.33 05 39.01.3767_R |  | 104.32d |
|  | Catch Basins | **Catch Basins** |  | 2026-03-11 | 2026-10-18 |  |  |  |
|  | Sing | **Single** |  | 2026-06-10 | 2026-10-18 |  |  |  |
| B6.33 05 40.01.450 |  | Excavation, Compaction & Vapour Barrier (67.00% Completed) | 84d | 2026-06-10 A | 2026-09-15 A | B6.33 05 39.01.3677 | 100% |  |
| B6.33 05 40.01.460 |  | Blinding Conc. (67.00% Completed) | 82d | 2026-06-13 A | 2026-09-15 A | B6.33 05 40.01.450 SS | 100% |  |
| B6.33 05 40.01.470 |  | Catch Basin Installation (67.00% Completed) | 79.67d | 2026-06-15 A | 2026-09-15 A | B6.33 05 40.01.460 SS, B6.33 05 40.01.750 SS | 100% |  |
| B6.33 05 40.01.450_R |  | Excavation, Compaction & Vapour Barrier(Rem) | 3d | 2026-10-07 | 2026-10-10 | B6.33 05 39.01.3677, B6.33 05 40.01.450 |  | 2.32d |
| B6.33 05 40.01.460_R |  | Blinding Conc.(Rem) | 3d | 2026-10-08 | 2026-10-11 | B6.33 05 40.01.450_R SS+1d, B6.33 05 40.01.460 |  | 2.32d |
| B6.33 05 40.01.470_R |  | Catch Basin Installation(Rem) | 3d | 2026-10-12 | 2026-10-14 | B6.33 05 40.01.460_R, B6.33 05 40.01.750_R SS, B6.33 05 40.01.470 |  | 2.32d |
| B6.33 05 40.01.480 |  | Backfilling, DI Frame & Grate Cover Fixing | 3d | 2026-10-15 | 2026-10-18 | B6.33 42 11.36-195, B6.33 05 63.082_R, B6.33 05 40.01.200_R, B6.33 05 40.01.470_R |  | 2.32d |
|  | UPVC | **UPVC** |  | 2026-03-11 | 2026-10-01 |  |  |  |
|  | UPVC300 | **?300 From 0.0 to 1.5m** |  | 2026-03-11 | 2026-10-01 |  |  |  |
| B6.33 42 11.35-122 |  | Fittings & Pipe Installation | 2d | 2026-03-11 A | 2026-03-13 A | B6.33 05 39.01.3677 | 100% |  |
| B6.33 42 11.35-110 |  | Catch Basin Opening Prep. (67.00% Completed) | 79.67d | 2026-06-15 A | 2026-09-15 A | B6.33 05 40.01.470 SS | 100% |  |
| B6.33 42 11.35-110_R |  | Catch Basin Opening Prep.(Rem) | 3d | 2026-09-27 A | 2026-10-01 A | B6.33 05 40.01.470_R, B6.33 42 11.35-110 | 100% |  |
|  | UPVC3001 | **?400 From 0.0 to 1.5m** |  | 2026-03-11 | 2026-09-27 |  |  |  |
| B6.33 42 11.36-195 |  | Fittings & Pipe Installation | 2d | 2026-03-11 A | 2026-03-13 A | B6.33 42 11.35-122 | 100% |  |
| B6.33 42 11.36-183 |  | Catch Basin Opening Prep. (67.00% Completed) | 79.67d | 2026-06-15 A | 2026-09-15 A | B6.33 42 11.35-110 SS | 100% |  |
| B6.33 42 11.36-183_R |  | Catch Basin Opening Prep.(Rem) | 3d | 2026-09-24 A | 2026-09-27 A | B6.33 42 11.35-110_R SS, B6.33 42 11.36-183, B6.33 42 11.36-181_R | 100% |  |
|  | TSE Network | **TSE Network** |  | 2026-04-05 | 2026-11-19 |  |  |  |
|  | HDPE | **HDPE Pipes** |  | 2026-04-05 | 2026-10-12 |  |  |  |
|  | ?125mm | **?125mm** |  | 2026-04-05 | 2026-10-12 |  |  |  |
|  | Depth: 0.0m - 1.5m | **Depth: 0.0m - 1.5m** |  | 2026-04-05 | 2026-10-12 |  |  |  |
| B4.33 14 13.01-0191 |  | Excavation | 4d | 2026-04-05 A | 2026-04-09 A | B6.33 05 39.01.3677 | 100% |  |
| B4.33 14 13.01-0193 |  | Sand Bedding | 39.02d | 2026-04-06 A | 2026-05-21 A | B4.33 14 13.01-0191 | 100% |  |
| B4.33 14 13.01-0195 |  | Pipe Laying (20.75% Completed) | 131d | 2026-04-12 A | 2026-09-15 A | B4.33 14 13.01-0193 | 100% |  |
| B4.33 14 13.01-0197 |  | Embedment & Test (20.75% Completed) | 111d | 2026-05-05 A | 2026-09-15 A | B4.33 14 13.01-0195 FF | 100% |  |
| B4.33 14 13.01-0199 |  | Backfilling & Warrning Tape (20.75% Completed) | 108d | 2026-05-09 A | 2026-09-15 A | B4.33 14 13.01-0197 FF | 100% |  |
| B4.33 14 13.01-0195_R |  | Pipe Laying(Rem) | 2.59d | 2026-10-07 | 2026-10-10 | B4.33 14 13.01-0193, B4.33 14 13.01-0195 |  | 39.74d |
| B4.33 14 13.01-0197_R |  | Embedment & Test(Rem) | 4.17d | 2026-10-07 | 2026-10-12 | B4.33 14 13.01-0195_R FF, B4.33 14 13.01-0197 |  | 94.15d |
| B4.33 14 13.01-0199_R |  | Backfilling & Warrning Tape(Rem) | 4.96d | 2026-10-07 | 2026-10-12 | B4.33 14 13.01-0197_R FF, B4.33 14 13.01-0199 |  | 93.36d |
|  | Valves | **Valves** |  | 2026-10-10 | 2026-11-19 |  |  |  |
|  | Solenoid valves | **Solenoid valves** |  | 2026-10-10 | 2026-11-19 |  |  |  |
|  | Solenoid valve ?1.0 | **1 Solenoid valve ?1.0 inch with box** |  | 2026-10-10 | 2026-11-12 |  |  |  |
| B4.32 84 13.062 |  | Pull Box Installation | 3d | 2026-10-10 | 2026-10-13 | B4.33 14 13.01-0195_R |  | 39.74d |
| B4.32 84 13.40 |  | Cable Laying Two-Wire Decoder (12 AWG) | 3d | 2026-10-13 | 2026-10-17 | B4.33 14 13.01-0195_R, B4.32 84 13.062 |  | 39.74d |
| B4.32 84 13.41 |  | Solenoid Valve Box Installation | 3d | 2026-10-17 | 2026-10-20 | B4.32 84 13.40 |  | 39.74d |
| B4.32 84 13.42 |  | Bubblers Installation | 3d | 2026-11-10 | 2026-11-12 | B4.32 84 13.41, B4.32 84 13.06 |  | 22.32d |
|  | Solenoid valve ?1.5 | **1 Solenoid valve ?1.5 inch with box** |  | 2026-10-13 | 2026-11-16 |  |  |  |
| B4.32 84 13.061 |  | Pull Box Installation | 3d | 2026-10-13 | 2026-10-17 | B4.32 84 13.062 |  | 39.74d |
| B4.32 84 13.43 |  | Cable Laying Two-Wire Decoder (12 AWG) | 3d | 2026-10-17 | 2026-10-20 | B4.32 84 13.40 |  | 39.74d |
| B4.32 84 13.44 |  | Solenoid Valve Box Installation | 3d | 2026-10-20 | 2026-10-24 | B4.32 84 13.43 |  | 39.74d |
| B4.32 84 13.45 |  | Bubblers Installation | 3d | 2026-11-14 | 2026-11-16 | B4.32 84 13.44, B4.32 84 13.42 |  | 22.32d |
|  | Solenoid valve ?2.0 | **1 Solenoid valve ?2.0 inch with box** |  | 2026-10-20 | 2026-11-19 |  |  |  |
| B4.32 84 13.37 |  | Cable Laying Two-Wire Decoder (12 AWG) | 3d | 2026-10-20 | 2026-10-24 | B4.32 84 13.43 |  | 39.74d |
| B4.32 84 13.38 |  | Solenoid Valve Box Installation | 3d | 2026-10-24 | 2026-10-27 | B4.32 84 13.37 |  | 39.74d |
| B4.32 84 13.06 |  | Pull Box Installation | 3d | 2026-11-07 | 2026-11-09 | B4.32 84 13.061, B4.32 84 13.76, B4.32 84 13.77 |  | 22.32d |
| B4.32 84 13.39 |  | Bubblers Installation | 3d | 2026-11-17 | 2026-11-19 | B4.32 84 13.38, B4.32 84 13.45 |  | 22.32d |
|  | Dry Networks | **Dry Networks** |  | 2026-07-02 | 2026-12-16 |  |  |  |
|  | MV | **Medium Voltage Network** |  | 2026-10-19 | 2026-12-05 |  |  |  |
|  | Duct Banks | **Duct Banks** |  | 2026-10-19 | 2026-11-09 |  |  |  |
|  | 4 Way | **2 Way** |  | 2026-10-19 | 2026-11-09 |  |  |  |
| B2.31 23 00.641 |  | Excavation | 4d | 2026-10-19 | 2026-10-22 | B6.33 05 40.01.480 |  | 2.32d |
| B2.33 71 00.290 |  | Shuttering, Steel Fixing Incl. UPVC Pipe & Conc. Cast | 8d | 2026-10-24 | 2026-11-01 | B2.31 23 00.641 |  | 2.32d |
| B2.33 71 00.291 |  | Backfilling & Warrning Tape | 7d | 2026-11-02 | 2026-11-09 | B2.33 71 00.290 |  | 2.32d |
|  | Cables | **Cables** |  | 2026-10-19 | 2026-11-10 |  |  |  |
|  | 3C,500mm2 | **3C,500mm2** |  | 2026-10-19 | 2026-11-10 |  |  |  |
| B2.33 71 49.23.86 |  | Cable 13.8 kV Unarmored | 4d | 2026-10-19 | 2026-10-22 | B2.33 71 49.23.77 |  | 4.32d |
| B2.33 71 49.23.87 |  | Straight joints cables | 3d | 2026-10-24 | 2026-10-26 | B2.33 71 49.23.86 |  | 82.32d |
| B2.33 71 49.23.88 |  | Cable Termination | 3d | 2026-11-07 | 2026-11-10 | B2.33 71 49.23.87, B2.33 71 49.23.79 |  | 73.2d |
|  | RMU | **RMU** |  | 2026-10-24 | 2026-11-03 |  |  |  |
| B2 33 73 00.02.15 |  | Land Adjustment | 3d | 2026-10-24 | 2026-10-26 | B4.33 14 13.01-0199_R, B2.31 23 00.641, B2.33 71 49.23.86 |  | 84.32d |
| B2 33 73 00.02.17 |  | Foundation Works & Curing | 4d | 2026-10-27 | 2026-10-31 | B2 33 73 00.02.15 |  | 85.32d |
| B2 33 73 00.02.19 |  | Installation of Ring Main Unit RMU, 13.8KV | 3d | 2026-11-01 | 2026-11-03 | B2 33 73 00.02.17 |  | 86.32d |
|  | Units Substation | **Units Substation** |  | 2026-10-27 | 2026-12-05 |  |  |  |
| B2 33 73 00.01.15 |  | Land Adjustment | 3d | 2026-10-27 | 2026-10-29 | B2 33 73 00.02.15 |  | 84.32d |
| B2 33 73 00.01.17 |  | Foundation Works & Curing | 4d | 2026-11-01 | 2026-11-04 | B2 33 73 00.01.15, B2 33 73 00.02.17 |  | 85.32d |

| ID | WBS | Task | Duration | Start | Finish | Predecessors | Complete | Total float |
| --- | --- | --- | --- | --- | --- | --- | --- | --- |
| B2 33 73 00.01.19 |  | Installation of Unit Substation 13.8/0.4 K V | 3d | 2026-12-01 | 2026-12-05 | B2 33 73 00.01.17, B2 33 73 00.02.19, B2 33 73 00.01.85 SS |  | 62.91d |
|  | LV Network | **Low Voltage Network** |  | 2026-10-24 | 2026-11-23 |  |  |  |
|  | Duct Banks | **Duct Banks** |  | 2026-10-24 | 2026-11-23 |  |  |  |
|  | 4 Way | **4 Way** |  | 2026-10-24 | 2026-11-23 |  |  |  |
| B2.33 71 00 02 127 |  | Excavation | 3d | 2026-10-24 | 2026-10-26 | B2.31 23 00.641 |  | 8.32d |
| B2.33 71 00 02 128 |  | Shuttering, Steel Fixing Incl. UPVC Pipe & Conc. Cast | 3d | 2026-10-27 | 2026-10-29 | B2.33 71 00 02 127 |  | 81.32d |
| B2.33 71 00 02 129 |  | Backfilling & Warrning Tape | 3d | 2026-11-21 | 2026-11-23 | B2.33 71 00 02 128, B2.33 71 00 02 51 |  | 63.32d |
|  | Cables | **Cables** |  | 2026-10-24 | 2026-10-25 |  |  |  |
|  | 4C,10+1C,10mm2 | **4C,10+1C,10mm2** |  | 2026-10-24 | 2026-10-25 |  |  |  |
| B2.33 71 00 01 14 |  | Cable Pulling | 2d | 2026-10-24 | 2026-10-25 | B2.33 71 49.23.86, B2.33 71 00 01 11 |  | 4.32d |
|  | LV Panels | **0.6/1 KV Low Voltage Distribution Panels** |  | 2026-10-26 | 2026-11-11 |  |  |  |
| B2.33 71 26 30 |  | Land Adjustment | 2d | 2026-10-26 | 2026-10-27 | B2.33 71 00 01 14 |  | 4.32d |
| B2.33 71 26 31 |  | Foundation Works & Curing | 3d | 2026-11-03 | 2026-11-05 | B2.33 71 26 30, B2.33 71 26 34 |  | 4.32d |
| B2.33 71 26 29 |  | Installation of 0.6/1 KV Low Voltage Distribution Panels | 2d | 2026-11-10 | 2026-11-11 | B2.33 71 26 31, B2.33 71 26 32, B2.33 71 00 01 20 |  | 33.32d |
|  | LV Pillars | **0.6/1 KV Low Voltage Distribution Pillars** |  | 2026-10-28 | 2026-11-09 |  |  |  |
| B2.33 71 26 33 |  | Land Adjustment | 2d | 2026-10-28 | 2026-10-29 | B2.33 71 26 30 |  | 4.32d |
| B2.33 71 26 34 |  | Foundation Works & Curing | 3d | 2026-10-31 | 2026-11-02 | B2.33 71 26 33 |  | 4.32d |
| B2.33 71 26 32 |  | Installation of 0.6/1 KV Low Voltage Distribution Pillars | 2d | 2026-11-08 | 2026-11-09 | B2.33 71 26 34, B2.33 71 26 23 |  | 33.32d |
|  | Street Lighting | **Street Lighting** |  | 2026-10-27 | 2026-12-16 |  |  |  |
|  | Duct Banks | **Duct Banks** |  | 2026-10-27 | 2026-11-07 |  |  |  |
|  | 2 Way | **2 Way** |  | 2026-10-27 | 2026-11-07 |  |  |  |
| B2.33 71 00 02 73 |  | Excavation | 3d | 2026-10-27 | 2026-10-29 | B2.33 71 00 02 127 |  | 8.32d |
| B2.33 71 00 02 74 |  | Shuttering, Steel Fixing Incl. UPVC Pipe & Conc. Cast | 3d | 2026-10-31 | 2026-11-02 | B2.33 71 00 02 73 |  | 9.32d |
| B2.33 71 00 02 75 |  | Backfilling & Warrning Tape | 3d | 2026-11-04 | 2026-11-07 | B2.33 71 00 02 74, B2.33 71 00 02 78 |  | 8.32d |
|  | Drawpits | **Drawpits** |  | 2026-10-27 | 2026-11-03 |  |  |  |
| B2.33 71 00 02 76 |  | Excavation | 2d | 2026-10-27 | 2026-10-28 | B2.33 71 00 02 73 SS |  | 8.32d |
| B2.33 71 00 02 77 |  | Drawpits Installation | 2d | 2026-10-29 | 2026-10-31 | B2.33 71 00 02 76 |  | 8.32d |
| B2.33 71 00 02 78 |  | Backfilling & Warrning Tape | 3d | 2026-11-01 | 2026-11-03 | B2.33 71 00 02 77 |  | 8.32d |
|  | Cables | **Cables** |  | 2026-11-17 | 2026-12-16 |  |  |  |
|  | 4C,10+1C,10mm2 | **4C,10+1C,10mm2** |  | 2026-11-17 | 2026-12-16 |  |  |  |
| B2.33 71 19 162 |  | Land Adjustment | 2d | 2026-11-17 | 2026-11-18 | B2 33 73 00.01.15, B2.33 71 16.88 |  | 69.32d |
| B2.33 71 49.23.162 |  | Cable Pulling | 5d | 2026-11-19 | 2026-11-24 | B2.33 71 19 162 |  | 69.32d |
| B2.33 71 19 172 |  | Backfilling | 2d | 2026-12-14 | 2026-12-16 | B2.33 71 49.23.162, B2.33 71 16.62 |  | 52.91d |
|  | SL Poles | **SL Poles** |  | 2026-11-10 | 2026-11-22 |  |  |  |
|  | Pole (10 M Sngl Arm) | **Pole (10 M Single Arm)** |  | 2026-11-10 | 2026-11-22 |  |  |  |
| B2.33 71 16.87 |  | Excavation | 3d | 2026-11-10 | 2026-11-12 | B2.33 71 00.291, B2.33 71 16.116_R |  | 2.32d |
| B2.33 71 16.88 |  | PC & RC Foundation | 3d | 2026-11-14 | 2026-11-16 | B2.33 71 16.87 |  | 2.32d |
| B2.33 71 16.89 |  | Lighting Poles Installation Incl power box, Cables | 3d | 2026-11-17 | 2026-11-19 | B2.33 71 16.88 |  | 2.32d |
| B2.26.56.19.15 |  | Lighting Luminares Inst | 2d | 2026-11-21 | 2026-11-22 | B2.33 71 16.89 |  | 2.32d |
| B2.33 71 16.90 |  | Backfilling, Grouting & Chamfering | 2d | 2026-11-21 | 2026-11-22 | B2.26.56.19.15 SS |  | 2.32d |
|  | Telecommunication | **Telecommunication Network** |  | 2026-07-02 | 2026-11-15 |  |  |  |
|  | Ducts | **Ducts** |  | 2026-07-02 | 2026-11-11 |  |  |  |
|  | (6*50mm) | **Size (6*50mm) HDPE ducts** |  | 2026-10-31 | 2026-11-08 |  |  |  |
| B2.1.33 81 26.150 |  | Excavation | 2d | 2026-10-31 | 2026-11-01 | B2.33 71 00 02 76, B2.33 71 00 02 73 |  | 33.32d |
| B2.1.33 81 26.151 |  | HDPE Pipe, Shuttering, Steel Fixing & Conc. Cast | 3d | 2026-11-02 | 2026-11-04 | B2.1.33 81 26.150 |  | 37.32d |
| B2.1.33 81 26.152 |  | Backfilling & Warrning Tape | 3d | 2026-11-05 | 2026-11-08 | B2.1.33 81 26.151 |  | 37.32d |
|  | (6*50mm+2*32mm) | **Size (6*50mm+2*32mm) HDPE ducts** |  | 2026-11-02 | 2026-11-10 |  |  |  |
| B2.1.33 81 26.153 |  | Excavation | 2d | 2026-11-02 | 2026-11-03 | B2.1.33 81 26.150 |  | 33.32d |
| B2.1.33 81 26.154 |  | HDPE Pipe, Shuttering, Steel Fixing & Conc. Cast | 3d | 2026-11-04 | 2026-11-07 | B2.1.33 81 26.153 |  | 35.32d |
| B2.1.33 81 26.155 |  | Backfilling & Warrning Tape | 3d | 2026-11-08 | 2026-11-10 | B2.1.33 81 26.154 |  | 35.32d |
|  | (6*50mm+4*32mm) | **Size (6*50mm+4*32mm) HDPE ducts** |  | 2026-11-04 | 2026-11-11 |  |  |  |
| B2.1.33 81 26.156 |  | Excavation | 2d | 2026-11-04 | 2026-11-05 | B2.1.33 81 26.153 |  | 33.32d |
| B2.1.33 81 26.157 |  | HDPE Pipe, Shuttering, Steel Fixing & Conc. Cast | 2d | 2026-11-07 | 2026-11-08 | B2.1.33 81 26.156, B2.1.33 81 26.159 |  | 34.32d |
| B2.1.33 81 26.158 |  | Backfilling & Warrning Tape | 3d | 2026-11-09 | 2026-11-11 | B2.1.33 81 26.157 |  | 34.32d |
|  | (2*32mm) | **Size (2*32mm) HDPE ducts** |  | 2026-07-02 | 2026-07-11 |  |  |  |
| B2.1.33 81 26.159 |  | Excavation | 3d | 2026-07-02 A | 2026-07-05 A | B2.31 23 00.591 | 100% |  |
| B2.1.33 81 26.160 |  | HDPE Pipe, Shuttering, Steel Fixing & Conc. Cast | 4d | 2026-07-04 A | 2026-07-07 A | B2.1.33 81 26.159 | 100% |  |
| B2.1.33 81 26.161 |  | Backfilling & Warrning Tape | 6d | 2026-07-05 A | 2026-07-11 A | B2.1.33 81 26.160 | 100% |  |
|  | Manholes | **Manholes** |  | 2026-11-04 | 2026-11-14 |  |  |  |
|  | Manhole Type 1 | **Manhole Type 1** |  | 2026-11-04 | 2026-11-11 |  |  |  |
| B2.31 23 00.627 |  | Excavation | 2d | 2026-11-04 | 2026-11-05 | B2.1.33 81 26.159, B2.1.33 81 26.156 SS |  | 33.32d |
| B2.33 71 00.262 |  | Manhole Installation | 2d | 2026-11-07 | 2026-11-08 | B2.31 23 00.627 |  | 34.32d |
| B2.33 71 00.263 |  | Backfilling & Warrning Tape | 3d | 2026-11-09 | 2026-11-11 | B2.33 71 00.262 |  | 34.32d |
|  | Manhole Type 2 | **Manhole Type 2** |  | 2026-11-07 | 2026-11-14 |  |  |  |
| B2.31 23 00.628 |  | Excavation | 2d | 2026-11-07 | 2026-11-08 | B2.31 23 00.627 |  | 33.32d |
| B2.33 71 00.264 |  | Manhole Installation | 2d | 2026-11-09 | 2026-11-10 | B2.31 23 00.628 |  | 35.32d |
| B2.33 71 00.265 |  | Backfilling & Warrning Tape | 2d | 2026-11-12 | 2026-11-14 | B2.33 71 00.264, B2.1.33 81 26.152, B2.1.33 81 26.158, B2.1.33 81 26.161 |  | 34.32d |
|  | Crossing Ducts | **Road Crossing Ducts** |  | 2026-11-09 | 2026-11-15 |  |  |  |
|  | 1 | **Size (6X50mm) HDPE** |  | 2026-11-09 | 2026-11-15 |  |  |  |
| B2.31 23 00.626 |  | Excavation | 2d | 2026-11-09 | 2026-11-10 | B2.31 23 00.628 |  | 33.32d |

| ID | WBS | Task | Duration | Start | Finish | Predecessors | Complete | Total float |
| --- | --- | --- | --- | --- | --- | --- | --- | --- |
| B2.33 71 00.260 |  | Shuttering, Steel Fixing Incl. UPVC Pipe & Conc. Cast | 2d | 2026-11-11 | 2026-11-12 | B2.31 23 00.626 |  | 33.32d |
| B2.33 71 00.261 |  | Backfilling & Warrning Tape | 2d | 2026-11-14 | 2026-11-15 | B2.33 71 00.260, B2.33 71 00.263, B2.33 71 00.255, B2.1.33 81 26.155 |  | 33.32d |
|  | Earth & Road Works | **Earth & Road Works** |  | 2025-12-05 | 2026-12-06 |  |  |  |
|  | Earth Works | **Earth Works** |  | 2025-12-05 | 2026-05-07 |  |  |  |
| B1.2.31 23 16.01.11 |  | Roadway Excavation | 121d | 2025-12-05 A | 2026-05-07 A | DMM2-Eng-MS-78 | 100% |  |
| B1.2.31 23 23.01.11 |  | Embankment Backfiling | 118.03d | 2025-12-07 A | 2026-05-06 A | B1.2.31 23 16.01.11 | 100% |  |
|  | Earth Layers | **Earth Layers** |  | 2026-02-18 | 2026-10-08 |  |  |  |
| B1.2.32 11 13.01.11 |  | Subgrade (65.00% Completed) | 164.9d | 2026-02-18 A | 2026-09-15 A | B1.2.31 23 23.01.11 | 100% |  |
| B1.2.32 11 23.01.11 |  | Aggregate Base Course (52.00% Completed) | 98d | 2026-05-20 A | 2026-09-15 A | B1.2.32 11 13.01.11 FF | 100% |  |
| B1.2.32 11 13.01.11_R |  | Subgrade(Rem) | 2d | 2026-10-07 | 2026-10-08 | B1.2.31 23 23.01.11, B1.2.32 11 13.01.11 |  | 111.32d |
| B1.2.32 11 23.01.11_R |  | Aggregate Base Course(Rem) | 2d | 2026-10-07 | 2026-10-08 | B1.2.32 11 13.01.11_R FF, B1.2.32 11 23.01.11 |  | 111.32d |
|  | Interlock | **Interlock** |  | 2026-11-21 | 2026-11-22 |  |  |  |
| B1.2.32 14 13.13.11 |  | 60mm thick - Interlocking Block Pavers | 2d | 2026-11-21 | 2026-11-22 | B2.33 71 16.90 SS, DMM2-Proc-Delv-7268 |  | 2.32d |
|  | Curbstone | **Curbstone** |  | 2026-11-21 | 2026-12-06 |  |  |  |
|  | Pre Install | **Pre-Installation** |  | 2026-11-21 | 2026-11-25 |  |  |  |
| B2.31 23 00.301 |  | Excavation | 2d | 2026-11-21 | 2026-11-22 | B1.2.32 14 13.13.11 SS |  | 2.32d |
| B1.2.32 14 13.13.211 |  | PCC | 2d | 2026-11-22 | 2026-11-23 | B2.31 23 00.301 SS+1d |  | 6.32d |
| 32 16 13.0011 |  | Haunching | 2d | 2026-11-24 | 2026-11-25 | B1.2.32 14 13.13.211 |  | 6.32d |
|  | Installation | **Installation** |  | 2026-11-26 | 2026-12-03 |  |  |  |
| B1.2.32 16.13.01.11 |  | Curb Stone, Type K1 | 3d | 2026-11-26 | 2026-11-29 | 32 16 13.0011 |  | 6.32d |
| B1.2.32 16.13.02.10 |  | Dropped Curb, Type K3 | 1d | 2026-11-30 | 2026-11-30 | B1.2.32 16.13.01.11, 32 16 13.0011 |  | 6.32d |
| B1.2.32 16.13.03.11 |  | Edge Curb, Type K4 | 1d | 2026-12-01 | 2026-12-01 | B1.2.32 16.13.02.10, 32 16 13.0011 |  | 6.32d |
| B1.2.32 16.13.0411 |  | Heel Curb, Type K5 | 1d | 2026-12-02 | 2026-12-02 | B1.2.32 16.13.03.11, 32 16 13.0011 |  | 6.32d |
| B1.2.32 16.13.05.10 |  | Transition Curb | 1d | 2026-12-03 | 2026-12-03 | B1.2.32 16.13.0411, 32 16 13.0011 |  | 6.32d |
|  | Finishing | **Finishing** |  | 2026-12-05 | 2026-12-06 |  |  |  |
| 32 16 13.011 |  | Finishing, Fareface | 2d | 2026-12-05 | 2026-12-06 | B1.2.32 16.13.01.11, B1.2.32 16.13.02.10, B1.2.32 16.13.03.11, B1.2.32 16.13.0411, B1.2.32 16.13.05.10, 32 16 134 |  | 6.32d |
|  | Asphalt Layers | **Asphalt Layers** |  | 2026-05-23 | 2026-10-11 |  |  |  |
| B1.2.32 11 26.01.11 |  | Bituminous Base Course including Prime Coat (MC1) and tack coat (RC2) (69.00% Completed) | 96d | 2026-05-23 A | 2026-09-15 A | B1.2.32 11 23.01.11 SS | 100% |  |
| B1.2.32 11 26.01.11_R |  | Bituminous Base Course including Prime Coat (MC1) and tack coat (RC2)(Rem) | 2d | 2026-09-22 A | 2026-10-08 | B1.2.32 11 23.01.11_R SS, B1.2.32 11 26.01.11 | 21% | 54.74d |
| B1.2.32 12 16.01.11 |  | Bituminous concrete Wearing Course, including tack coat (RC2) | 2d | 2026-10-08 | 2026-10-11 | B1.2.32 11 26.01.11_R |  | 54.74d |
|  | Pavement Marking | **Pavement Marking** |  | 2026-10-11 | 2026-10-24 |  |  |  |
| B1.2.32 17 23.02.11 |  | Retroreflective Thermoplastic Yellow, Traffic lines | 2d | 2026-10-11 | 2026-10-13 | B1.2.32 12 16.01.11 |  | 103.74d |
| B1.2.32 17 23.01.11 |  | Retroreflective Thermoplastic White Traffic lines | 2d | 2026-10-22 | 2026-10-24 | B1.2.32 12 16.01.11, B1.2.32 17 23.01.1 |  | 94.32d |
|  | Traffic Signs | **Traffic Signs** |  | 2026-11-21 | 2026-11-26 |  |  |  |
|  | Pre Install | **Pre-Installation** |  | 2026-11-21 | 2026-11-24 |  |  |  |
| B2.31 23 00.311 |  | Excavation | 2d | 2026-11-21 | 2026-11-22 | B2.31 23 00.301 SS |  | 2.32d |
| 10 14 53.011 |  | Foundation | 2d | 2026-11-23 | 2026-11-24 | B2.31 23 00.311 |  | 67.32d |
|  | Installation | **Installation** |  | 2026-11-25 | 2026-11-26 |  |  |  |
| B1.2.10 14 14.0211 |  | Ground mounted, 1 Sheet Alumenium, Double post | 2d | 2026-11-25 | 2026-11-26 | 10 14 53.011, B1.2.32 17 23.02.11, B1.2.32 17 23.01.11, DMM2-Proc-Delv-7272 |  | 67.32d |
| B1.2.10 14 53.0111 |  | 1 Sheet Alumenium, Single post | 2d | 2026-11-25 | 2026-11-26 | 10 14 53.011, B1.2.32 17 23.02.11, B1.2.32 17 23.01.11 |  | 67.32d |
|  | Customs Road 06 | **Customs Road 06** |  | 2025-12-07 | 2026-12-13 |  |  |  |
|  | Wet Networks | **Wet Networks** |  | 2026-03-04 | 2026-10-11 |  |  |  |
|  | Stormwater Network | **Stormwater Network** |  | 2026-03-04 | 2026-10-11 |  |  |  |
|  | GRP | **GRP** |  | 2026-03-04 | 2026-05-24 |  |  |  |
|  | ?40011 | **?1400** |  | 2026-03-04 | 2026-05-24 |  |  |  |
|  | 1 | **Depth From 2.5m to 3.5m** |  | 2026-03-04 | 2026-05-24 |  |  |  |
| B6.33 42 11.34-1.11 |  | Excavation | 1.25d | 2026-03-04 A | 2026-03-05 A | B1.1.31 23 23.152 | 100% |  |
| B6.33 42 11.34-1.13 |  | Sand Bedding | 0.5d | 2026-03-07 A | 2026-03-08 A | B6.33 42 11.34-1.11 | 100% |  |
| B6.33 42 11.34-1.15 |  | Pipe Laying | 5.48d | 2026-03-08 A | 2026-03-16 A | B6.33 42 11.34-1.13 | 100% |  |
| B6.33 42 11.34-1.17 |  | Embedment & Test | 12.52d | 2026-05-06 A | 2026-05-20 A | B6.33 42 11.34-1.15 | 100% |  |
| B6.33 42 11.34-1.19 |  | Backfilling & Warrning Tape | 11.65d | 2026-05-11 A | 2026-05-24 A | B6.33 42 11.34-1.17 | 100% |  |
|  | Strom Manholes | **Manholes** |  | 2026-05-20 | 2026-10-11 |  |  |  |
|  | 3 | **?2000** |  | 2026-05-20 | 2026-10-11 |  |  |  |
|  | 3 | **Depth From 2.5m to 3.5m** |  | 2026-05-20 | 2026-10-11 |  |  |  |
| B6.33 05 39.01.3727 |  | Excavation & Compaction | 2d | 2026-05-20 A | 2026-05-21 A | B6.33 42 11.34-1.11 | 100% |  |
| B6.33 05 39.01.3737 |  | Blinding Conc, & RC Base | 3d | 2026-05-23 A | 2026-05-25 A | B6.33 05 39.01.3727 | 100% |  |
| B6.33 05 39.01.3747 |  | Manhole Installation (54.00% Completed) | 87d | 2026-06-07 A | 2026-09-15 A | B6.33 05 39.01.3737 | 100% |  |
| B6.33 05 39.01.3757 |  | Test, Internal Finishing, Benching & Cover (33.33% Completed) | 86d | 2026-06-08 A | 2026-09-15 A | B6.33 05 39.01.3747 SS | 100% |  |
| B6.33 05 39.01.3767 |  | Backfilling (83.00% Completed) | 34.33d | 2026-08-06 A | 2026-09-15 A | B6.33 05 39.01.3757 SS | 100% |  |
| B6.33 05 39.01.3747_R |  | Manhole Installation(Rem) | 3d | 2026-10-07 | 2026-10-10 | B6.33 05 39.01.3737, B6.33 05 39.01.3747 |  | 104.32d |
| B6.33 05 39.01.3757_R |  | Test, Internal Finishing, Benching & Cover(Rem) | 3.67d | 2026-10-07 | 2026-10-11 | B6.33 05 39.01.3747_R SS, B6.33 05 39.01.3757 |  | 104.32d |
| B6.33 05 39.01.3767_R |  | Backfilling(Rem) | 3d | 2026-10-07 | 2026-10-10 | B6.33 05 39.01.3757_R SS, B6.33 05 39.01.3767, B6.33 05 39.01.3567_R |  | 104.32d |
|  | Catch Basins | **Catch Basins** |  | 2026-03-09 | 2026-10-08 |  |  |  |
|  | Sing | **Single** |  | 2026-06-10 | 2026-10-07 |  |  |  |
| B6.33 05 40.01.490 |  | Excavation, Compaction & Vapour Barrier (80.00% Completed) | 84d | 2026-06-10 A | 2026-09-15 A | B6.33 05 39.01.3727 | 100% |  |
| B6.33 05 40.01.520 |  | Backfilling, DI Frame & Grate Cover Fixing (80.00% Completed) | 84d | 2026-06-10 A | 2026-09-15 A | B6.33 42 11.36-197 | 100% |  |
| B6.33 05 40.01.500 |  | Blinding Conc. (80.00% Completed) | 82d | 2026-06-13 A | 2026-09-15 A | B6.33 05 40.01.490 SS | 100% |  |
| B6.33 05 40.01.510 |  | Catch Basin Installation (80.00% Completed) | 80d | 2026-06-15 A | 2026-09-15 A | B6.33 05 40.01.500 SS | 100% |  |
| B6.33 05 40.01.490_R |  | Excavation, Compaction & Vapour Barrier(Rem) | 3d | 2026-09-20 A | 2026-10-07 | B6.33 05 39.01.3727, B6.33 05 40.01.490 | 67% | 112.32d |
| B6.33 05 40.01.500_R |  | Blinding Conc.(Rem) | 3d | 2026-09-24 A | 2026-10-07 | B6.33 05 40.01.490_R SS, B6.33 05 40.01.500 | 67% | 112.32d |

| ID | WBS | Task | Duration | Start | Finish | Predecessors | Complete | Total float |
| --- | --- | --- | --- | --- | --- | --- | --- | --- |
| B6.33 05 40.01.510_R |  | Catch Basin Installation(Rem) | 3d | 2026-09-26 A | 2026-10-07 | B6.33 05 40.01.500_R SS, B6.33 05 40.01.510 | 67% | 35.2d |
| B6.33 05 40.01.520_R |  | Backfilling, DI Frame & Grate Cover Fixing(Rem) | 2d | 2026-10-01 A | 2026-10-07 | B6.33 42 11.36-197, B6.33 05 40.01.520 | 67% | 10.65d |
|  | Dou | **Double** |  | 2026-09-09 | 2026-10-08 |  |  |  |
| B6.33 05 40.01.930 |  | Excavation, Compaction & Vapour Barrier (44.00% Completed) | 5.6d | 2026-09-09 A | 2026-09-15 A | B6.33 05 40.01.490 SS | 100% |  |
| B6.33 05 40.01.940 |  | Blinding Conc. (44.00% Completed) | 3.6d | 2026-09-12 A | 2026-09-15 A | B6.33 05 40.01.930 SS | 100% |  |
| B6.33 05 40.01.950 |  | Catch Basin Installation (44.00% Completed) | 1.6d | 2026-09-14 A | 2026-09-15 A | B6.33 05 40.01.940 SS | 100% |  |
| B6.33 05 40.01.930_R |  | Excavation, Compaction & Vapour Barrier(Rem) | 2.12d | 2026-09-19 A | 2026-10-07 | B6.33 05 40.01.490_R SS, B6.33 05 40.01.930 | 67% | 112.61d |
| B6.33 05 40.01.940_R |  | Blinding Conc.(Rem) | 2.12d | 2026-09-22 A | 2026-10-07 | B6.33 05 40.01.930_R SS, B6.33 05 40.01.940 | 67% | 112.61d |
| B6.33 05 40.01.950_R |  | Catch Basin Installation(Rem) | 2.68d | 2026-09-27 A | 2026-10-07 | B6.33 05 40.01.940_R SS, B6.33 05 40.01.950 | 67% | 112.43d |
| B6.33 05 40.01.960 |  | Backfilling, DI Frame & Grate Cover Fixing | 6d | 2026-09-30 A | 2026-10-08 | B6.33 42 11.35-124, B6.33 42 11.36-197 | 67% | 9.32d |
|  | UPVC | **UPVC** |  | 2026-03-09 | 2026-09-30 |  |  |  |
|  | UPVC300 | **?300 From 0.0 to 1.5m** |  | 2026-03-09 | 2026-06-08 |  |  |  |
| B6.33 42 11.35-124 |  | Fittings & Pipe Installation | 4.5d | 2026-03-09 A | 2026-03-16 A | B6.33 42 11.35-112, B6.33 05 39.01.3677 | 100% |  |
| B6.33 42 11.35-112 |  | Catch Basin Opening Prep. | 2d | 2026-06-07 A | 2026-06-08 A | B6.33 05 39.01.3677 | 100% |  |
|  | UPVC3001 | **?400 From 0.0 to 1.5m** |  | 2026-03-09 | 2026-09-30 |  |  |  |
| B6.33 42 11.36-197 |  | Fittings & Pipe Installation | 4.5d | 2026-03-09 A | 2026-03-16 A | B6.33 05 39.01.3677 | 100% |  |
| B6.33 42 11.36-185 |  | Catch Basin Opening Prep. (60.78% Completed) | 12d | 2026-09-02 A | 2026-09-15 A | B6.33 42 11.35-112 | 100% |  |
| B6.33 42 11.36-185_R |  | Catch Basin Opening Prep.(Rem) | 3d | 2026-09-28 A | 2026-09-30 A | B6.33 42 11.35-112, B6.33 42 11.36-185, B6.33 42 11.36-183_R | 100% |  |
|  | Dry Networks | **Dry Networks** |  | 2026-10-10 | 2026-12-09 |  |  |  |
|  | MV Network | **Medium Voltage Network** |  | 2026-10-19 | 2026-11-24 |  |  |  |
|  | Cables | **Cables** |  | 2026-10-19 | 2026-11-21 |  |  |  |
|  | 3C,500mm2 | **3C,500mm2** |  | 2026-10-19 | 2026-11-14 |  |  |  |
| B2.33 71 49.23.92 |  | Cable 13.8 kV Unarmored | 4d | 2026-10-19 | 2026-10-22 | B2.33 71 49.23.77, B6.33 05 40.01.960, B6.33 05 40.01.520_R |  | 1.32d |
| B2.33 71 49.23.93 |  | Straight joints cables | 3d | 2026-10-24 | 2026-10-26 | B2.33 71 49.23.92 |  | 85.32d |
| B2.33 71 49.23.94 |  | Cable Termination | 3d | 2026-11-10 | 2026-11-14 | B2.33 71 49.23.93, B2.33 71 49.23.88 |  | 73.2d |
|  | 3C,50mm2 | **3C,50mm2** |  | 2026-10-24 | 2026-11-21 |  |  |  |
| B2.33 71 49.23.95 |  | Cable 13.8 kV Unarmored | 4d | 2026-10-24 | 2026-10-27 | B2.33 71 49.23.92 |  | 1.32d |
| B2.33 71 49.23.96 |  | Straight joints cables | 3d | 2026-10-28 | 2026-10-31 | B2.33 71 49.23.95 |  | 83.32d |
| B2.33 71 49.23.97 |  | Cable Termination | 3d | 2026-11-18 | 2026-11-21 | B2.33 71 49.23.96, B2.33 71 49.23.73 |  | 68.32d |
|  | RMU | **RMU** |  | 2026-10-28 | 2026-11-24 |  |  |  |
| B2 33 73 00.02.5 |  | Land Adjustment | 3d | 2026-10-28 | 2026-10-31 | B2.33 71 49.23.95 |  | 28.32d |
| B2 33 73 00.02.7 |  | Foundation Works & Curing | 4d | 2026-11-01 | 2026-11-04 | B2 33 73 00.02.5 |  | 73.32d |
| B2 33 73 00.02.9 |  | Installation of Ring Main Unit RMU, 13.8KV | 3d | 2026-11-05 | 2026-11-08 | B2 33 73 00.02.7 |  | 74.32d |
| B2.33 71 49.23.102 |  | Normally Open Point 13.8 KV | 3d | 2026-11-22 | 2026-11-24 | B2 33 73 00.02.9, B2.33 71 49.23.97, B2.33 71 49.23.05 |  | 68.32d |
|  | Units Substation | **Units Substation** |  | 2026-11-01 | 2026-11-12 |  |  |  |
| B2 33 73 00.01.5 |  | Land Adjustment | 3d | 2026-11-01 | 2026-11-03 | B2 33 73 00.02.5 |  | 28.32d |
| B2 33 73 00.01.7 |  | Foundation Works & Curing | 4d | 2026-11-05 | 2026-11-09 | B2 33 73 00.01.5, B2 33 73 00.02.7 |  | 73.32d |
| B2 33 73 00.01.9 |  | Installation of Unit Substation 13.8/0.4 K V | 3d | 2026-11-10 | 2026-11-12 | B2 33 73 00.01.7, B2 33 73 00.02.9 |  | 73.32d |
|  | LV Network | **Low Voltage Network** |  | 2026-10-10 | 2026-12-01 |  |  |  |
|  | Duct Banks | **Duct Banks** |  | 2026-10-10 | 2026-12-01 |  |  |  |
|  | 2 Way | **2 Way** |  | 2026-10-10 | 2026-12-01 |  |  |  |
| B2.33 71 00 02 142 |  | Excavation | 2d | 2026-10-10 | 2026-10-11 | B6.33 05 40.01.520_R, B6.33 05 40.01.960 |  | 11.32d |
| B2.33 71 00 02 143 |  | Shuttering, Steel Fixing Incl. UPVC Pipe & Conc. Cast | 3d | 2026-10-12 | 2026-10-14 | B2.33 71 00 02 142 |  | 100.32d |
| B2.33 71 00 02 144 |  | Backfilling & Warrning Tape | 3d | 2026-11-29 | 2026-12-01 | B2.33 71 00 02 143, B2.33 71 00 02 111, B2.33 71 00 02 108 SS, B2.33 71 00 02 102 |  | 62.32d |
|  | 6 Way | **6 Way** |  | 2026-10-12 | 2026-10-20 |  |  |  |
| B2.33 71 00 02 130 |  | Excavation | 2d | 2026-10-12 | 2026-10-13 | B2.33 71 00 02 142 |  | 11.32d |
| B2.33 71 00 02 131 |  | Shuttering, Steel Fixing Incl. UPVC Pipe & Conc. Cast | 3d | 2026-10-14 | 2026-10-17 | B2.33 71 00 02 130 |  | 98.32d |
| B2.33 71 00 02 132 |  | Backfilling & Warrning Tape | 3d | 2026-10-18 | 2026-10-20 | B2.33 71 00 02 131 |  | 98.32d |
|  | 8 Way | **8 Way** |  | 2026-10-14 | 2026-10-22 |  |  |  |
| B2.33 71 00 02 133 |  | Excavation | 2d | 2026-10-14 | 2026-10-15 | B2.33 71 00 02 130 |  | 11.32d |
| B2.33 71 00 02 134 |  | Shuttering, Steel Fixing Incl. UPVC Pipe & Conc. Cast | 3d | 2026-10-17 | 2026-10-19 | B2.33 71 00 02 133 |  | 96.32d |
| B2.33 71 00 02 135 |  | Backfilling & Warrning Tape | 3d | 2026-10-20 | 2026-10-22 | B2.33 71 00 02 134 |  | 96.32d |
|  | Cables | **Cables** |  | 2026-10-28 | 2026-11-01 |  |  |  |
|  | 4C,10+1C,10mm2 | **4C,10+1C,10mm2** |  | 2026-10-28 | 2026-10-29 |  |  |  |
| B2.33 71 00 01 17 |  | Cable Pulling | 2d | 2026-10-28 | 2026-10-29 | B2.33 71 49.23.95 |  | 1.32d |
|  | 4C,50+1C,25mm2 | **4C,50+1C,25mm2** |  | 2026-10-31 | 2026-11-01 |  |  |  |
| B2.33 71 00 01 18 |  | Cable Pulling | 2d | 2026-10-31 | 2026-11-01 | B2.33 71 00 01 17 |  | 1.32d |
|  | LV Panels | **0.6/1 KV Low Voltage Distribution Panels** |  | 2026-11-04 | 2026-11-17 |  |  |  |
| B2.33 71 26 021 |  | Land Adjustment | 2d | 2026-11-04 | 2026-11-05 | B2 33 73 00.01.5 |  | 28.32d |
| B2.33 71 26 022 |  | Foundation Works & Curing | 3d | 2026-11-12 | 2026-11-15 | B2.33 71 26 021, B2.33 71 26 012, B2.33 71 26 25 |  | 28.32d |
| B2.33 71 26 023 |  | Installation of 0.6/1 KV Low Voltage Distribution Panels | 2d | 2026-11-16 | 2026-11-17 | B2.33 71 26 022, B2.33 71 26 013, B2.33 71 00 01 20 |  | 28.32d |
|  | LV Pillars | **0.6/1 KV Low Voltage Distribution Pillars** |  | 2026-11-07 | 2026-11-14 |  |  |  |
| B2.33 71 26 011 |  | Land Adjustment | 2d | 2026-11-07 | 2026-11-08 | B2.33 71 26 021 |  | 28.32d |
| B2.33 71 26 012 |  | Foundation Works & Curing | 3d | 2026-11-09 | 2026-11-11 | B2.33 71 26 011 |  | 28.32d |
| B2.33 71 26 013 |  | Installation of 0.6/1 KV Low Voltage Distribution Pillars | 2d | 2026-11-12 | 2026-11-14 | B2.33 71 26 012, B2.33 71 00 01 20 |  | 29.32d |
|  | Street Lighting | **Street Lighting** |  | 2026-10-17 | 2026-12-09 |  |  |  |
|  | Duct Banks | **Duct Banks** |  | 2026-10-17 | 2026-10-25 |  |  |  |
|  | 4 Way | **4 Way** |  | 2026-10-17 | 2026-10-25 |  |  |  |
| B2.33 71 00 02 154 |  | Excavation | 2d | 2026-10-17 | 2026-10-18 | B2.33 71 00 02 133, B6.33 05 40.01.960, B6.33 05 40.01.520_R |  | 11.32d |
| B2.33 71 00 02 155 |  | Shuttering, Steel Fixing Incl. UPVC Pipe & Conc. Cast | 3d | 2026-10-19 | 2026-10-21 | B2.33 71 00 02 154 |  | 87.32d |

| ID | WBS | Task | Duration | Start | Finish | Predecessors | Complete | Total float |
| --- | --- | --- | --- | --- | --- | --- | --- | --- |
| B2.33 71 00 02 156 |  | Backfilling & Warrning Tape | 3d | 2026-10-22 | 2026-10-25 | B2.33 71 00 02 155 |  | 87.32d |
|  | Drawpits | **Drawpits** |  | 2026-10-19 | 2026-11-30 |  |  |  |
| B2.33 71 00 02 157 |  | Excavation | 2d | 2026-10-19 | 2026-10-20 | B2.33 71 00 02 154 |  | 87.32d |
| B2.33 71 00 02 158 |  | Drawpits Installation | 2d | 2026-10-21 | 2026-10-22 | B2.33 71 00 02 157 |  | 89.32d |
| B2.33 71 00 02 159 |  | Backfilling & Warrning Tape | 3d | 2026-11-28 | 2026-11-30 | B2.33 71 00 02 158, B2.33 71 00 02 60, B2.33 71 00 02 63, B2.33 71 00 02 156 |  | 59.32d |
|  | Cables | **Cables** |  | 2026-11-02 | 2026-12-06 |  |  |  |
|  | 4C,16+1C,16mm2 | **4C,16+1C,16mm2** |  | 2026-11-02 | 2026-12-06 |  |  |  |
| B2.33 71 19 182 |  | Land Adjustment | 3d | 2026-11-02 | 2026-11-04 | B2.33 71 00 01 18 |  | 1.32d |
| B2.33 71 49.23.172 |  | Cable Pulling | 3d | 2026-11-05 | 2026-11-08 | B2.33 71 19 182 |  | 77.32d |
| B2.33 71 19 192 |  | Backfilling | 3d | 2026-12-03 | 2026-12-06 | B2.33 71 49.23.172, B2.33 71 19 132 SS |  | 56.32d |
|  | SL Poles | **SL Poles** |  | 2026-11-21 | 2026-12-09 |  |  |  |
|  | Pole (16 M Dbl Arm) | **Pole (16 M Double Arm)** |  | 2026-11-21 | 2026-12-09 |  |  |  |
| B2.33 71 16.103 |  | Excavation | 3d | 2026-11-21 | 2026-11-23 | B2.33 71 16.90 SS |  | 56.32d |
| B2.33 71 16.104 |  | PC & RC Foundation | 3d | 2026-11-24 | 2026-11-26 | B2.33 71 16.103 |  | 56.32d |
| B2.33 71 16.105 |  | Lighting Poles Installation Incl power box, Cables | 2d | 2026-11-28 | 2026-11-29 | B2.33 71 16.104 |  | 56.32d |
| B2.26.56.19.19 |  | Lighting Luminares Inst | 2d | 2026-12-06 | 2026-12-08 | B2.33 71 16.105, B2.26.56.19.2 |  | 50.91d |
| B2.33 71 16.106 |  | Backfilling, Grouting & Chamfering | 3d | 2026-12-06 | 2026-12-09 | B2.26.56.19.19 SS, B2.33 71 19 37 |  | 50.91d |
|  | SL Pillars | **SL Pillars** |  | 2026-11-30 | 2026-12-05 |  |  |  |
| B2.33 71 26 033 |  | Pillars Installation (Internal Wiring) | 2d | 2026-11-30 | 2026-12-01 | B2.33 71 16.105, B2.33 71 26 013 |  | 64.32d |
| B2.33 71 26 044 |  | KWH meter mounting a frame installation | 1d | 2026-12-05 | 2026-12-05 | B2.33 71 26 033, B2.33 71 26 043 |  | 62.32d |
|  | Earth & Road Works | **Earth & Road Works** |  | 2025-12-07 | 2026-12-13 |  |  |  |
|  | Earth Works | **Earth Works** |  | 2025-12-07 | 2025-12-14 |  |  |  |
| B1.2.31 23 16.01.14 |  | Roadway Excavation | 5.61d | 2025-12-07 A | 2025-12-12 A | DMM2-Eng-MS-78 | 100% |  |
| B1.2.31 23 23.01.14 |  | Embankment Backfiling | 6d | 2025-12-07 A | 2025-12-14 A | B1.2.31 23 16.01.14 | 100% |  |
|  | Earth Layers | **Earth Layers** |  | 2026-04-01 | 2026-10-08 |  |  |  |
| B1.2.32 11 13.01.14 |  | Subgrade (65.00% Completed) | 140d | 2026-04-01 A | 2026-09-15 A | B1.2.31 23 23.01.14 | 100% |  |
| B1.2.32 11 23.01.14 |  | Aggregate Base Course (49.00% Completed) | 96.94d | 2026-05-21 A | 2026-09-15 A | B1.2.32 11 13.01.14 FF | 100% |  |
| B1.2.32 11 13.01.14_R |  | Subgrade(Rem) | 1.05d | 2026-10-07 | 2026-10-08 | B1.2.31 23 23.01.14, B1.2.32 11 13.01.14 |  | 112.27d |
| B1.2.32 11 23.01.14_R |  | Aggregate Base Course(Rem) | 1.53d | 2026-10-07 | 2026-10-08 | B1.2.32 11 13.01.14_R FF, B1.2.32 11 23.01.14 |  | 111.79d |
|  | Interlock | **Interlock** |  | 2026-12-09 | 2026-12-12 |  |  |  |
| B1.2.32 14 13.13.14 |  | 60mm thick - Interlocking Block Pavers | 2d | 2026-12-09 | 2026-12-12 | B2.33 71 16.106 |  | 50.91d |
|  | Curbstone | **Curbstone** |  | 2026-11-21 | 2026-12-06 |  |  |  |
|  | Pre Install | **Pre-Installation** |  | 2026-11-21 | 2026-11-26 |  |  |  |
| B2.31 23 00.391 |  | Excavation | 2d | 2026-11-21 | 2026-11-22 | B2.31 23 00.311 SS |  | 2.32d |
| B1.2.32 14 13.13.214 |  | PCC | 2d | 2026-11-23 | 2026-11-24 | B2.31 23 00.391 |  | 2.32d |
| 32 16 13.0014 |  | Haunching | 2d | 2026-11-25 | 2026-11-26 | B1.2.32 14 13.13.214 |  | 2.32d |
|  | Installation | **Installation** |  | 2026-11-28 | 2026-12-06 |  |  |  |
| B1.2.32 16.13.01.14 |  | Curb Stone, Type K1 | 2d | 2026-11-28 | 2026-11-29 | 32 16 13.0014 |  | 2.32d |
| B1.2.32 16.13.02.13 |  | Dropped Curb, Type K3 | 2d | 2026-11-30 | 2026-12-01 | B1.2.32 16.13.01.14, 32 16 13.0014 |  | 2.32d |
| B1.2.32 16.13.03.14 |  | Edge Curb, Type K4 | 2d | 2026-12-02 | 2026-12-03 | B1.2.32 16.13.02.13, 32 16 13.0014 |  | 2.32d |
| B1.2.32 16.13.0414 |  | Heel Curb, Type K5 | 2d | 2026-12-05 | 2026-12-06 | B1.2.32 16.13.03.14, 32 16 13.0014 |  | 2.32d |
| B1.2.32 16.13.05.13 |  | Transition Curb | 2d | 2026-12-05 | 2026-12-06 | B1.2.32 16.13.0414 SS, 32 16 13.0014 |  | 2.32d |
|  | Finishing | **Finishing** |  | 2026-12-05 | 2026-12-06 |  |  |  |
| 32 16 13.014 |  | Finishing, Fareface | 2d | 2026-12-05 | 2026-12-06 | B1.2.32 16.13.01.14, B1.2.32 16.13.02.13, B1.2.32 16.13.03.14 SS, B1.2.32 16.13.0414 SS, B1.2.32 16.13.05.13 SS |  | 2.32d |
|  | Asphalt Layers | **Asphalt Layers** |  | 2026-05-25 | 2026-12-10 |  |  |  |
| B1.2.32 11 26.01.14 |  | Bituminous Base Course including Prime Coat (MC1) and tack coat (RC2) (74.00% Completed) | 93.94d | 2026-05-25 A | 2026-09-15 A | B1.2.32 11 23.01.14 SS | 100% |  |
| B1.2.32 11 26.01.14_R |  | Bituminous Base Course including Prime Coat (MC1) and tack coat (RC2)(Rem) | 2d | 2026-09-24 A | 2026-10-08 | B1.2.32 11 23.01.14_R SS, B1.2.32 11 26.01.14 | 11% | 52.54d |
| B1.2.32 12 16.01.14 |  | Bituminous concrete Wearing Course, including tack coat (RC2) | 4d | 2026-12-07 | 2026-12-10 | B1.2.32 11 26.01.14_R, B7.32 31 26.01-194, 32 16 13.014, DMM2-Proc-Delv-7265 FF |  | 2.32d |
|  | Pavement Marking | **Pavement Marking** |  | 2026-12-12 | 2026-12-13 |  |  |  |
| B1.2.32 17 23.01.14 |  | Retroreflective Thermoplastic White Traffic lines | 2d | 2026-12-12 | 2026-12-13 | B1.2.32 12 16.01.14, B1.2.32 17 23.02.14 FF |  | 55.32d |
| B1.2.32 17 23.02.14 |  | Retroreflective Thermoplastic Yellow, Traffic lines | 2d | 2026-12-12 | 2026-12-13 | B1.2.32 12 16.01.14 |  | 55.32d |
|  | Traffic Signs | **Traffic Signs** |  | 2026-11-21 | 2026-12-13 |  |  |  |
|  | Pre Install | **Pre-Installation** |  | 2026-11-21 | 2026-11-24 |  |  |  |
| B2.31 23 00.401 |  | Excavation | 2d | 2026-11-21 | 2026-11-22 | B2.31 23 00.391 SS |  | 69.32d |
| 10 14 53.014 |  | Foundation | 2d | 2026-11-23 | 2026-11-24 | B2.31 23 00.401 |  | 69.32d |
|  | Installation | **Installation** |  | 2026-12-12 | 2026-12-13 |  |  |  |
| B1.2.10 14 53.0114 |  | 1 Sheet Alumenium, Single post | 2d | 2026-12-12 | 2026-12-13 | 10 14 53.014, B1.2.32 17 23.02.14 FF, B1.2.32 17 23.01.14 FF, B1.2.10 14 53.018, B1.2.10 14 53.028 |  | 55.32d |
|  | Landscape | **Landscape** |  | 2026-11-09 | 2026-11-30 |  |  |  |
|  | Fences | **Fences** |  | 2026-11-09 | 2026-11-30 |  |  |  |
|  | (ZATCA HCIS) | **Steel fence (ZATCA HCIS)** |  | 2026-11-09 | 2026-11-30 |  |  |  |
| B7.32 31 26.01-190 |  | Earthwork | 6d | 2026-11-09 | 2026-11-15 | B7.32 31 26.01-19 |  | 7.32d |
| B7.32 31 26.01-192 |  | Foundation | 6d | 2026-11-16 | 2026-11-22 | B7.32 31 26.01-190 |  | 7.32d |
| B7.32 31 26.01-194 |  | Fence Installation | 7d | 2026-11-23 | 2026-11-30 | B7.32 31 26.01-192 |  | 7.32d |
|  | Customs Rd 02 | **Customs Road 02** |  | 2025-12-12 | 2026-12-15 |  |  |  |
|  | Wet Networks | **Wet Networks** |  | 2026-02-08 | 2026-12-15 |  |  |  |
|  | Sewerage Network | **Sewerage Network** |  | 2026-02-08 | 2026-10-26 |  |  |  |
|  | GRP | **GRP Pipes** |  | 2026-02-08 | 2026-10-12 |  |  |  |
|  | 200 | **?150** |  | 2026-02-11 | 2026-10-12 |  |  |  |
|  | 1 | **Depth From 1.5m to 2.5m** |  | 2026-02-11 | 2026-10-12 |  |  |  |
| B5.33 31 00.01.1 |  | Excavation | 2d | 2026-02-11 A | 2026-02-12 A | B1.1.31 23 23.132 SS | 100% |  |

| ID | WBS | Task | Duration | Start | Finish | Predecessors | Complete | Total float |
| --- | --- | --- | --- | --- | --- | --- | --- | --- |
| B5.33 31 00.01.9 |  | Sand Bedding | 2d | 2026-02-14 A | 2026-02-15 A | B5.33 31 00.01.1 | 100% |  |
| B5.33 31 00.01.17 |  | Pipe Laying | 1d | 2026-02-16 A | 2026-02-16 A | B5.33 31 00.01.9 | 100% |  |
| B5.33 31 00.01.25 |  | Embedment & Test (9.95% Completed) | 113d | 2026-05-03 A | 2026-09-15 A | B5.33 31 00.01.17 | 100% |  |
| B5.33 31 00.01.33 |  | Backfilling & Warrning Tape (9.95% Completed) | 110.05d | 2026-05-05 A | 2026-09-15 A | B5.33 31 00.01.25 FF, B5.33 31 23.025 SS | 100% |  |
| B5.33 31 00.01.25_R |  | Embedment & Test(Rem) | 3.67d | 2026-09-24 A | 2026-10-11 | B5.33 31 00.01.17, B5.33 31 00.01.25 | 12% | 110.1d |
| B5.33 31 00.01.33_R |  | Backfilling & Warrning Tape(Rem) | 4.56d | 2026-09-26 A | 2026-10-12 | B5.33 31 00.01.25_R FF, B5.33 31 23.025_R SS, B5.33 31 00.01.33 | 17% | 109.31d |
|  | 1 | **?200** |  | 2026-02-08 | 2026-10-12 |  |  |  |
|  | 4 | **Depth From 2.5m to 3.5m** |  | 2026-02-08 | 2026-10-12 |  |  |  |
| B5.33 31 00.01.3 |  | Excavation | 3d | 2026-02-08 A | 2026-02-10 A | B5.33 31 00.01.1 | 100% |  |
| B5.33 31 00.01.11 |  | Sand Bedding | 1d | 2026-02-11 A | 2026-02-11 A | B5.33 31 00.01.3 | 100% |  |
| B5.33 31 00.01.19 |  | Pipe Laying | 1.75d | 2026-02-12 A | 2026-02-14 A | B5.33 31 00.01.11 | 100% |  |
| B5.33 31 00.01.27 |  | Embedment & Test (9.95% Completed) | 113d | 2026-05-03 A | 2026-09-15 A | B5.33 31 00.01.19 | 100% |  |
| B5.33 31 00.01.35 |  | Backfilling & Warrning Tape (9.95% Completed) | 106d | 2026-05-11 A | 2026-09-15 A | B5.33 31 00.01.27 FF | 100% |  |
| B5.33 31 00.01.27_R |  | Embedment & Test(Rem) | 3.67d | 2026-09-24 A | 2026-10-11 | B5.33 31 00.01.19, B5.33 31 00.01.27 | 17% | 110.1d |
| B5.33 31 00.01.35_R |  | Backfilling & Warrning Tape(Rem) | 4.56d | 2026-09-26 A | 2026-10-12 | B5.33 31 00.01.27_R FF, B5.33 31 00.01.35 | 17% | 109.31d |
|  | 3 | **Depth From 3.5m to 4.5m** |  | 2026-02-10 | 2026-10-11 |  |  |  |
| B5.33 31 00.01.5 |  | Excavation | 3d | 2026-02-10 A | 2026-02-12 A | B5.33 31 00.01.3 | 100% |  |
| B5.33 31 00.01.13 |  | Sand Bedding | 1.75d | 2026-02-12 A | 2026-02-14 A | B5.33 31 00.01.5 | 100% |  |
| B5.33 31 00.01.21 |  | Pipe Laying | 0.5d | 2026-02-15 A | 2026-02-16 A | B5.33 31 00.01.13 | 100% |  |
| B5.33 31 00.01.29 |  | Embedment & Test (9.95% Completed) | 112d | 2026-05-04 A | 2026-09-15 A | B5.33 31 00.01.21 | 100% |  |
| B5.33 31 00.01.37 |  | Backfilling & Warrning Tape | 3d | 2026-08-15 A | 2026-08-18 A | B6.33 05 39.01.1617 | 100% |  |
| B5.33 31 00.01.29_R |  | Embedment & Test(Rem) | 3.67d | 2026-09-24 A | 2026-10-11 | B5.33 31 00.01.21, B5.33 31 00.01.29 | 17% | 110.1d |
|  | 1 | **Depth From 4.5m to 5.5m** |  | 2026-02-09 | 2026-10-12 |  |  |  |
| B5.33 31 00.01.7 |  | Excavation | 1.75d | 2026-02-09 A | 2026-02-10 A | B5.33 31 00.01.5 | 100% |  |
| B5.33 31 00.01.15 |  | Sand Bedding | 0.5d | 2026-02-11 A | 2026-02-12 A | B5.33 31 00.01.7 | 100% |  |
| B5.33 31 00.01.23 |  | Pipe Laying | 0.75d | 2026-02-14 A | 2026-02-14 A | B5.33 31 00.01.15 | 100% |  |
| B5.33 31 00.01.31 |  | Embedment & Test (9.95% Completed) | 108d | 2026-05-09 A | 2026-09-15 A | B5.33 31 00.01.23 | 100% |  |
| B5.33 31 00.01.39 |  | Backfilling & Warrning Tape (9.95% Completed) | 106d | 2026-05-11 A | 2026-09-15 A | B5.33 31 00.01.37, B5.33 31 00.01.31 FF, B5.33 31 00.01.33 SS, B5.33 31 00.01.35 SS | 100% |  |
| B5.33 31 00.01.31_R |  | Embedment & Test(Rem) | 3.67d | 2026-09-26 A | 2026-10-11 | B5.33 31 00.01.23, B5.33 31 00.01.31 | 17% | 110.1d |
| B5.33 31 00.01.39_R |  | Backfilling & Warrning Tape(Rem) | 4.56d | 2026-09-28 A | 2026-10-12 | B5.33 31 00.01.37, B5.33 31 00.01.31_R FF, B5.33 31 00.01.33_R SS, B5.33 31 00.01.35_R SS, B5.33 31 00.01.39 | 17% | 109.31d |
|  | Manholes | **Manholes ?1200** |  | 2026-02-10 | 2026-10-13 |  |  |  |
|  | 2 | **Depth From 0.0m to 1.5m** |  | 2026-02-14 | 2026-10-10 |  |  |  |
| B6.33 05 39.01.827 |  | Excavation & Compaction | 0.5d | 2026-02-14 A | 2026-02-15 A | B5.33 31 00.01.7 | 100% |  |
| B6.33 05 39.01.837 |  | Blinding Conc, & RC Base (36.00% Completed) | 40d | 2026-08-01 A | 2026-09-15 A | B6.33 05 39.01.827 | 100% |  |
| B6.33 05 39.01.847 |  | Manhole Installation (36.00% Completed) | 38d | 2026-08-03 A | 2026-09-15 A | B6.33 05 39.01.837 SS | 100% |  |
| B6.33 05 39.01.857 |  | Test, Internal Finishing, Benching & Cover (36.00% Completed) | 37d | 2026-08-04 A | 2026-09-15 A | B6.33 05 39.01.847 SS | 100% |  |
| B6.33 05 39.01.867 |  | Backfilling | 5d | 2026-09-19 A | 2026-10-10 | B6.33 05 39.01.857_R, B6.33 05 39.01.1417 | 40% | 110.32d |
| B6.33 05 39.01.837_R |  | Blinding Conc, & RC Base(Rem) | 2.04d | 2026-09-22 A | 2026-10-08 | B6.33 05 39.01.827, B6.33 05 39.01.837 | 40% | 112.1d |
| B6.33 05 39.01.847_R |  | Manhole Installation(Rem) | 1.52d | 2026-10-03 A | 2026-10-07 | B6.33 05 39.01.837_R SS, B6.33 05 39.01.847 | 40% | 112.41d |
| B6.33 05 39.01.857_R |  | Test, Internal Finishing, Benching & Cover(Rem) | 2.56d | 2026-10-04 A | 2026-10-08 | B6.33 05 39.01.847_R SS, B6.33 05 39.01.857 | 40% | 111.79d |
|  | 3 | **Depth From 1.5m to 2.5m** |  | 2026-02-10 | 2026-10-10 |  |  |  |
| B6.33 05 39.01.877 |  | Excavation & Compaction | 0.75d | 2026-02-10 A | 2026-02-10 A | B6.33 05 39.01.827 | 100% |  |
| B6.33 05 39.01.887 |  | Blinding Conc, & RC Base (36.00% Completed) | 24d | 2026-08-19 A | 2026-09-15 A | B6.33 05 39.01.877 | 100% |  |
| B6.33 05 39.01.897 |  | Manhole Installation (36.00% Completed) | 21d | 2026-08-23 A | 2026-09-15 A | B6.33 05 39.01.887 SS | 100% |  |
| B6.33 05 39.01.917 |  | Backfilling (36.00% Completed) | 20d | 2026-08-24 A | 2026-09-15 A | B6.33 05 39.01.897 | 100% |  |
| B6.33 05 39.01.907 |  | Test, Internal Finishing, Benching & Cover | 4d | 2026-09-17 A | 2026-10-10 | B6.33 05 39.01.897_R | 40% | 110.92d |
| B6.33 05 39.01.917_R |  | Backfilling(Rem) | 3.2d | 2026-09-21 A | 2026-10-10 | B6.33 05 39.01.907 FF, B6.33 05 39.01.867 FF, B6.33 05 39.01.917 | 40% | 110.32d |
| B6.33 05 39.01.887_R |  | Blinding Conc, & RC Base(Rem) | 2.04d | 2026-09-28 A | 2026-10-08 | B6.33 05 39.01.877, B6.33 05 39.01.887 | 40% | 112.1d |
| B6.33 05 39.01.897_R |  | Manhole Installation(Rem) | 1.52d | 2026-09-30 A | 2026-10-07 | B6.33 05 39.01.887_R SS, B6.33 05 39.01.897 | 40% | 112.41d |
|  | 4 | **Depth From 2.5m to 3.5m** |  | 2026-02-11 | 2026-10-10 |  |  |  |
| B6.33 05 39.01.927 |  | Excavation & Compaction | 0.75d | 2026-02-11 A | 2026-02-11 A | B6.33 05 39.01.877 | 100% |  |
| B6.33 05 39.01.937 |  | Blinding Conc, & RC Base (36.00% Completed) | 24d | 2026-08-19 A | 2026-09-15 A | B6.33 05 39.01.927 | 100% |  |
| B6.33 05 39.01.947 |  | Manhole Installation (36.00% Completed) | 23d | 2026-08-20 A | 2026-09-15 A | B6.33 05 39.01.937 SS | 100% |  |
| B6.33 05 39.01.967 |  | Backfilling (36.00% Completed) | 21d | 2026-08-23 A | 2026-09-15 A | B6.33 05 39.01.947 | 100% |  |
| B6.33 05 39.01.957 |  | Test, Internal Finishing, Benching & Cover | 4d | 2026-09-17 A | 2026-10-10 | B6.33 05 39.01.947_R | 40% | 110.92d |
| B6.33 05 39.01.967_R |  | Backfilling(Rem) | 3.2d | 2026-09-19 A | 2026-10-10 | B6.33 05 39.01.957 FF, B6.33 05 39.01.967 | 40% | 110.92d |
| B6.33 05 39.01.937_R |  | Blinding Conc, & RC Base(Rem) | 2.04d | 2026-09-21 A | 2026-10-08 | B6.33 05 39.01.927, B6.33 05 39.01.937 | 40% | 112.1d |
| B6.33 05 39.01.947_R |  | Manhole Installation(Rem) | 1.52d | 2026-09-24 A | 2026-10-07 | B6.33 05 39.01.937_R SS, B6.33 05 39.01.947 | 40% | 112.41d |
|  | 1 | **Depth From 4.5m to 5.5m** |  | 2026-02-12 | 2026-10-13 |  |  |  |
| B6.33 05 39.01.977 |  | Excavation & Compaction | 0.5d | 2026-02-15 A | 2026-02-16 A | B6.33 05 39.01.927 | 100% |  |
| B6.33 05 39.01.987 |  | Blinding Conc, & RC Base (36.00% Completed) | 39d | 2026-08-02 A | 2026-09-15 A | B6.33 05 39.01.977 | 100% |  |
| B6.33 05 39.01.997 |  | Manhole Installation (36.00% Completed) | 37d | 2026-08-04 A | 2026-09-15 A | B6.33 05 39.01.987 SS | 100% |  |
| B6.33 05 39.01.1007 |  | Test, Internal Finishing, Benching & Cover (36.00% Completed) | 34d | 2026-08-08 A | 2026-09-15 A | B6.33 05 39.01.997 SS | 100% |  |
| B6.33 05 39.01.987_R |  | Blinding Conc, & RC Base(Rem) | 2.04d | 2026-09-24 A | 2026-10-08 | B6.33 05 39.01.977, B6.33 05 39.01.987 | 40% | 112.1d |
| B6.33 05 39.01.997_R |  | Manhole Installation(Rem) | 1.52d | 2026-09-26 A | 2026-10-07 | B6.33 05 39.01.987_R SS, B6.33 05 39.01.997 | 40% | 112.41d |
| B6.33 05 39.01.1007_R |  | Test, Internal Finishing, Benching & Cover(Rem) | 2.56d | 2026-09-29 A | 2026-10-08 | B6.33 05 39.01.997_R SS, B6.33 05 39.01.1007 | 40% | 111.79d |
| B6.33 05 39.01.1017 |  | Backfilling | 5d | 2026-10-05 A | 2026-10-10 | B6.33 05 39.01.1007_R, B6.33 05 39.01.967_R, B6.33 05 39.01.1767, DMM2-Proc-Delv-4048 | 40% | 110.32d |
|  | 5 | **Depth From 4.5m to 5.5m with back drop** |  | 2026-02-12 | 2026-10-13 |  |  |  |
| B6.33 05 39.01.4307 |  | Excavation & Compaction | 0.75d | 2026-02-12 A | 2026-02-12 A | B6.33 05 39.01.977 | 100% |  |
| B6.33 05 39.01.4277 |  | Blinding Conc, & RC Base | 3d | 2026-09-20 A | 2026-10-08 | B6.33 05 39.01.4307, B3.33 14 19.01.43 | 40% | 111.52d |

| ID | WBS | Task | Duration | Start | Finish | Predecessors | Complete | Total float |
| --- | --- | --- | --- | --- | --- | --- | --- | --- |
| B6.33 05 39.01.4287 |  | Manhole Installation | 2d | 2026-09-24 A | 2026-10-08 | B6.33 05 39.01.4277 | 40% | 112.12d |
| B6.33 05 39.01.4297 |  | Test, Internal Finishing, Benching & Cover | 5d | 2026-09-27 A | 2026-10-10 | B6.33 05 39.01.4287 | 40% | 110.32d |
| B6.33 05 39.01.4317 |  | Backfilling | 10d | 2026-10-03 A | 2026-10-13 | B6.33 05 39.01.4297, B6.33 05 39.01.917_R | 40% | 107.33d |
|  | 2 | **Valves & Chambers** |  | 2026-10-07 | 2026-10-26 |  |  |  |
|  | Gate | **Gate Valves** |  | 2026-10-07 | 2026-10-11 |  |  |  |
| B3.33 14 19.01.93 |  | Burried Isolation Valve Installation | 2d | 2026-10-07 | 2026-10-08 | B5.33 31 00.01.23 |  | 109.32d |
| B3.33 14 19.01.103 |  | Spindle & Surface Box | 2d | 2026-10-10 | 2026-10-11 | B3.33 14 19.01.93 |  | 109.32d |
|  | Washout V in Ch | **Washout Valves in Chambers** |  | 2026-10-07 | 2026-10-26 |  |  |  |
| B3.33 14 19.01.43 |  | Land Adjustment & Compaction | 3d | 2026-10-07 | 2026-10-10 | B6.33 05 39.01.977 |  | 96.32d |
| B3.33 14 19.01.53 |  | Foundations | 3d | 2026-10-11 | 2026-10-13 | B3.33 14 19.01.43, B6.33 05 39.01.4307 |  | 96.32d |
| B3.33 14 19.01.63 |  | Chambers Walls Conc Cast In Situ | 3d | 2026-10-14 | 2026-10-17 | B3.33 14 19.01.53 |  | 96.32d |
| B3.33 14 19.01.73 |  | Chamber Curing, Finishing & Steel Cover | 4d | 2026-10-18 | 2026-10-21 | B3.33 14 19.01.63 |  | 96.32d |
| B3.33 14 19.01.83 |  | Valve & Fitting Installation | 4d | 2026-10-22 | 2026-10-26 | B3.33 14 19.01.73 |  | 96.32d |
|  | Stormwater Network | **Stormwater Network** |  | 2026-02-11 | 2026-10-19 |  |  |  |
|  | GRP | **GRP** |  | 2026-02-11 | 2026-10-11 |  |  |  |
|  | ?40011 | **?400** |  | 2026-02-11 | 2026-10-11 |  |  |  |
|  | 3 | **Depth From 1.5m to 2.5m** |  | 2026-02-11 | 2026-10-11 |  |  |  |
| B6.33 42 11.01-1.1 |  | Excavation | 1d | 2026-02-11 A | 2026-02-12 A | B6.33 05 39.01.3677 | 100% |  |
| B6.33 42 11.01-1.3 |  | Sand Bedding | 1d | 2026-02-12 A | 2026-02-14 A | B6.33 42 11.01-1.1 | 100% |  |
| B6.33 42 11.01-1.5 |  | Pipe Laying | 1d | 2026-02-15 A | 2026-02-16 A | B6.33 42 11.01-1.3 | 100% |  |
| B6.33 42 11.01-1.7 |  | Embedment & Test (47.25% Completed) | 114d | 2026-05-02 A | 2026-09-15 A | B6.33 42 11.01-1.5 | 100% |  |
| B6.33 42 11.01-1.9 |  | Backfilling & Warrning Tape (47.25% Completed) | 111d | 2026-05-05 A | 2026-09-15 A | B6.33 42 11.01-1.7 FF | 100% |  |
| B6.33 42 11.01-1.7_R |  | Embedment & Test(Rem) | 3.56d | 2026-10-07 | 2026-10-11 | B6.33 42 11.01-1.5, B6.33 42 11.01-1.7 |  | 104.48d |
| B6.33 42 11.01-1.9_R |  | Backfilling & Warrning Tape(Rem) | 3.84d | 2026-10-07 | 2026-10-11 | B6.33 42 11.01-1.7_R FF, B6.33 42 11.01-1.9 |  | 104.2d |
|  | Strom Manholes | **Manholes** |  | 2026-02-12 | 2026-10-19 |  |  |  |
|  | 1 | **?1200** |  | 2026-02-12 | 2026-10-19 |  |  |  |
|  | 3 | **Depth From 1.5m to 2.5m** |  | 2026-02-12 | 2026-10-19 |  |  |  |
| B6.33 05 39.01.3577 |  | Excavation & Compaction | 1d | 2026-02-12 A | 2026-02-14 A | B6.33 42 11.01-1.1 | 100% |  |
| B6.33 05 39.01.3587 |  | Blinding Conc, & RC Base (83.00% Completed) | 72d | 2026-06-24 A | 2026-09-15 A | B6.33 05 39.01.3577 | 100% |  |
| B6.33 05 39.01.3597 |  | Manhole Installation (83.00% Completed) | 69d | 2026-06-28 A | 2026-09-15 A | B6.33 05 39.01.3587 SS | 100% |  |
| B6.33 05 39.01.3587_R |  | Blinding Conc, & RC Base(Rem) | 3d | 2026-09-19 A | 2026-09-24 A | B6.33 05 39.01.3577, B6.33 05 39.01.3587 | 100% |  |
| B6.33 05 39.01.3597_R |  | Manhole Installation(Rem) | 3d | 2026-09-21 A | 2026-09-27 A | B6.33 05 39.01.3587_R SS, B6.33 05 39.01.3597 | 100% |  |
| B6.33 05 39.01.3607 |  | Test, Internal Finishing, Benching & Cover | 5d | 2026-10-07 | 2026-10-12 | B6.33 05 39.01.3597_R |  | 56.32d |
| B6.33 05 39.01.3617 |  | Backfilling | 6d | 2026-10-13 | 2026-10-19 | B6.33 05 39.01.3607 |  | 56.32d |
|  | Catch Basins | **Catch Basins** |  | 2026-03-09 | 2026-10-18 |  |  |  |
|  | Sing | **Single** |  | 2026-06-24 | 2026-10-10 |  |  |  |
| B6.33 05 40.01.410 |  | Excavation, Compaction & Vapour Barrier (62.50% Completed) | 72d | 2026-06-24 A | 2026-09-15 A | B6.33 05 39.01.3577 | 100% |  |
| B6.33 05 40.01.420 |  | Blinding Conc. (62.50% Completed) | 70d | 2026-06-27 A | 2026-09-15 A | B6.33 05 40.01.410 SS | 100% |  |
| B6.33 05 40.01.430 |  | Catch Basin Installation (62.50% Completed) | 68d | 2026-06-29 A | 2026-09-15 A | B6.33 05 40.01.420 SS | 100% |  |
| B6.33 05 40.01.440 |  | Backfilling, DI Frame & Grate Cover Fixing (62.50% Completed) | 65d | 2026-07-02 A | 2026-09-15 A | B6.33 42 11.35-120, B6.33 05 40.01.430 SS | 100% |  |
| B6.33 05 40.01.410_R |  | Excavation, Compaction & Vapour Barrier(Rem) | 3d | 2026-10-07 | 2026-10-10 | B6.33 05 39.01.3577, B6.33 05 40.01.410 |  | 36.2d |
| B6.33 05 40.01.420_R |  | Blinding Conc.(Rem) | 3d | 2026-10-07 | 2026-10-10 | B6.33 05 40.01.410_R SS, B6.33 05 40.01.420 |  | 55.05d |
| B6.33 05 40.01.430_R |  | Catch Basin Installation(Rem) | 2.12d | 2026-10-07 | 2026-10-10 | B6.33 05 40.01.420_R SS, B6.33 05 40.01.430 |  | 55.05d |
| B6.33 05 40.01.440_R |  | Backfilling, DI Frame & Grate Cover Fixing(Rem) | 2.88d | 2026-10-07 | 2026-10-10 | B6.33 42 11.35-120, B6.33 05 40.01.430_R SS, B6.33 05 40.01.440 |  | 55.05d |
|  | Dou | **Double** |  | 2026-09-03 | 2026-10-18 |  |  |  |
| B6.33 05 40.01.890 |  | Excavation, Compaction & Vapour Barrier (62.50% Completed) | 10.8d | 2026-09-03 A | 2026-09-15 A | B6.33 05 40.01.410 SS | 100% |  |
| B6.33 05 40.01.900 |  | Blinding Conc. (62.50% Completed) | 9.8d | 2026-09-05 A | 2026-09-15 A | B6.33 05 40.01.890 SS | 100% |  |
| B6.33 05 40.01.910 |  | Catch Basin Installation (62.50% Completed) | 7.8d | 2026-09-07 A | 2026-09-15 A | B6.33 05 40.01.900 SS | 100% |  |
| B6.33 05 40.01.890_R |  | Excavation, Compaction & Vapour Barrier(Rem) | 3d | 2026-10-07 | 2026-10-10 | B6.33 05 40.01.410_R SS, B6.33 05 40.01.890 |  | 36.2d |
| B6.33 05 40.01.900_R |  | Blinding Conc.(Rem) | 3d | 2026-10-07 | 2026-10-10 | B6.33 05 40.01.890_R SS, B6.33 05 40.01.900 |  | 36.2d |
| B6.33 05 40.01.910_R |  | Catch Basin Installation(Rem) | 2.12d | 2026-10-08 | 2026-10-11 | B6.33 05 40.01.900_R SS, B6.33 05 40.01.910, B6.33 05 40.01.510_R |  | 35.2d |
| B6.33 05 40.01.920 |  | Backfilling, DI Frame & Grate Cover Fixing | 6d | 2026-10-11 | 2026-10-18 | B6.33 42 11.36-193, B6.33 05 40.01.910_R |  | 35.2d |
|  | UPVC | **UPVC** |  | 2026-03-09 | 2026-09-22 |  |  |  |
|  | UPVC300 | **?300 From 0.0 to 1.5m** |  | 2026-03-09 | 2026-09-22 |  |  |  |
| B6.33 42 11.35-120 |  | Fittings & Pipe Installation | 3d | 2026-03-09 A | 2026-03-14 A | B6.33 05 39.01.3677 | 100% |  |
| B6.33 42 11.35-18 |  | Catch Basin Opening Prep. (56.70% Completed) | 63d | 2026-07-05 A | 2026-09-15 A | B6.33 05 40.01.910 SS | 100% |  |
| B6.33 42 11.35-18_R |  | Catch Basin Opening Prep.(Rem) | 3d | 2026-09-20 A | 2026-09-22 A | B6.33 05 40.01.910_R SS, B6.33 42 11.35-18 | 100% |  |
|  | UPVC3001 | **?400 From 0.0 to 1.5m** |  | 2026-03-09 | 2026-09-22 |  |  |  |
| B6.33 42 11.36-193 |  | Fittings & Pipe Installation | 3d | 2026-03-09 A | 2026-03-14 A | B6.33 05 39.01.3677 | 100% |  |
| B6.33 42 11.36-181 |  | Catch Basin Opening Prep. (56.70% Completed) | 61d | 2026-07-07 A | 2026-09-15 A | B6.33 42 11.35-18 SS | 100% |  |
| B6.33 42 11.36-181_R |  | Catch Basin Opening Prep.(Rem) | 3d | 2026-09-20 A | 2026-09-22 A | B6.33 42 11.35-18_R SS, B6.33 42 11.36-181, B6.33 05 40.01.950_R | 100% |  |
|  | Potable Water | **Potable Water Network** |  | 2026-10-20 | 2026-11-08 |  |  |  |
|  | HDPE | **HDPE Pipes** |  | 2026-10-20 | 2026-11-08 |  |  |  |
|  | ?110mm | **?110mm** |  | 2026-10-20 | 2026-11-08 |  |  |  |
|  | Depth: 1.51m - 2.5m | **Depth: 0.51m - 1.5m** |  | 2026-10-20 | 2026-11-08 |  |  |  |
| B3.33 14 13-191 |  | Excavation | 3d | 2026-10-20 | 2026-10-22 | B3.33 14 13-91_R, B6.33 05 39.01.3617 |  | 56.32d |
| B3.33 14 13-193 |  | Sand Bedding | 3d | 2026-10-24 | 2026-10-26 | B3.33 14 13-191 |  | 71.32d |
| B3.33 14 13-195 |  | Pipe Laying | 3d | 2026-10-27 | 2026-10-29 | B3.33 14 13-193 |  | 71.32d |
| B3.33 14 13-197 |  | Embedment & Test | 4d | 2026-10-31 | 2026-11-03 | B3.33 14 13-195 |  | 71.32d |
| B3.33 14 13-199 |  | Backfilling & Warrning Tape | 4d | 2026-11-04 | 2026-11-08 | B3.33 14 13-197, B3.33 14 13.01.01017_R |  | 71.32d |

| ID | WBS | Task | Duration | Start | Finish | Predecessors | Total float |
| --- | --- | --- | --- | --- | --- | --- | --- |
|  | Fire Fighting | **Fire Fighting Network** |  | 2026-10-24 | 2026-12-15 |  |  |
|  | HDPE | **HDPE Pipes** |  | 2026-10-24 | 2026-11-18 |  |  |
|  | ?250mm | **?250mm** |  | 2026-10-24 | 2026-11-18 |  |  |
|  | Depth: 1.51m - 2.5m | **Depth: 0.51m - 1.5m** |  | 2026-10-24 | 2026-11-18 |  |  |
| B3.1. 33 14 13-119 |  | Excavation | 4d | 2026-10-24 | 2026-10-27 | B3.33 14 13-191 | 56.32d |
| B3.1. 33 14 13-1111 |  | Sand Bedding | 4d | 2026-10-28 | 2026-11-01 | B3.1. 33 14 13-119 | 56.32d |
| B3.1. 33 14 13-1113 |  | Pipe Laying | 4d | 2026-11-02 | 2026-11-05 | B3.1. 33 14 13-1111 | 56.32d |
| B3.1. 33 14 13-1115 |  | Embedment & Test | 6d | 2026-11-07 | 2026-11-12 | B3.1. 33 14 13-1113 | 56.32d |
| B3.1. 33 14 13-1117 |  | Backfilling & Warrning Tape | 5d | 2026-11-14 | 2026-11-18 | B3.1. 33 14 13-1115, B3.1. 33 14 13-01108, B3.33 14 19.01.fh45 | 56.32d |
|  | Valves & Chambers | **Valves & Chambers** |  | 2026-11-14 | 2026-12-07 |  |  |
|  | 2 | **Air Valves** |  | 2026-11-14 | 2026-12-07 |  |  |
|  | 4 | **Air valves on less than 315 mm. (In Chamber)** |  | 2026-11-14 | 2026-12-07 |  |  |
| B3.33 05 63.02.67 |  | Land Adjustment & Compaction | 4d | 2026-11-14 | 2026-11-17 | B3.1. 33 14 13-1115 | 60.32d |
| B3.33 05 63.02.65 |  | Foundations | 4d | 2026-11-18 | 2026-11-22 | B3.33 05 63.02.67 | 60.32d |
| B3.33 05 63.02.68 |  | Chambers Walls Conc Cast In Situ | 4d | 2026-11-23 | 2026-11-26 | B3.33 05 63.02.65 | 60.32d |
| B3.33 05 63.02.66 |  | Chamber Curing, Finishing & Steel Cover | 5d | 2026-11-28 | 2026-12-02 | B3.33 05 63.02.68 | 60.32d |
| B3.33 05 63.02.69 |  | Valve & Fitting Installation | 4d | 2026-12-03 | 2026-12-07 | B3.33 05 63.02.66 | 60.32d |
|  | 3 | **Fire Hydrant** |  | 2026-11-07 | 2026-12-15 |  |  |
| B3.33 14 19.01.fh38 |  | Riser Pipe & Flanged Fittings Installation | 4d | 2026-11-07 | 2026-11-10 | B3.1. 33 14 13-1113 | 73.32d |
| B3.33 14 19.01.fh37 |  | Firehydrant Fixing/Installation | 5d | 2026-11-11 | 2026-11-16 | B3.33 14 19.01.fh38 | 73.32d |
| B3.33 14 19.01.fh39 |  | Backfilling & Compaction | 5d | 2026-12-10 | 2026-12-15 | B3.33 14 19.01.fh37, B3.1. 33 14 13-11109, B3.33 14 19.01.fh36, DMM2-Proc-Delv-5898 | 53.32d |
|  | Dry Networks | **Dry Networks** |  | 2026-10-18 | 2026-12-12 |  |  |
|  | MV | **Medium Voltage Network** |  | 2026-10-18 | 2026-10-31 |  |  |
|  | Cables | **Cables** |  | 2026-10-18 | 2026-10-31 |  |  |
|  | 3C,500mm2 | **3C,500mm2** |  | 2026-10-18 | 2026-10-31 |  |  |
| B2.33 71 49.23.83 |  | Cable 13.8 kV Unarmored | 4d | 2026-10-18 | 2026-10-22 | B6.33 05 40.01.920 | 73.2d |
| B2.33 71 49.23.84 |  | Straight joints cables | 3d | 2026-10-22 | 2026-10-26 | B2.33 71 49.23.83 | 73.2d |
| B2.33 71 49.23.85 |  | Cable Termination | 4d | 2026-10-26 | 2026-10-31 | B2.33 71 49.23.84, B2.33 71 49.23.03 | 73.2d |
|  | LV Network | **Low Voltage Network** |  | 2026-10-18 | 2026-11-24 |  |  |
|  | Duct Banks | **Duct Banks** |  | 2026-10-18 | 2026-11-24 |  |  |
|  | 6 Way | **6 Way** |  | 2026-10-18 | 2026-11-21 |  |  |
| B2.33 71 00 02 136 |  | Excavation | 2d | 2026-10-18 | 2026-10-20 | B6.33 05 40.01.920 | 35.2d |
| B2.33 71 00 02 137 |  | Shuttering, Steel Fixing Incl. UPVC Pipe & Conc. Cast | 3d | 2026-10-20 | 2026-10-24 | B2.33 71 00 02 136 | 84.2d |
| B2.33 71 00 02 138 |  | Backfilling & Warrning Tape | 3d | 2026-11-18 | 2026-11-21 | B2.33 71 00 02 137, B2.33 71 00 02 147 | 62.32d |
|  | 8 Way | **8 Way** |  | 2026-10-20 | 2026-11-24 |  |  |
| B2.33 71 00 02 139 |  | Excavation | 2d | 2026-10-20 | 2026-10-22 | B2.33 71 00 02 136 | 35.2d |
| B2.33 71 00 02 140 |  | Shuttering, Steel Fixing Incl. UPVC Pipe & Conc. Cast | 3d | 2026-10-22 | 2026-10-26 | B2.33 71 00 02 139 | 85.2d |
| B2.33 71 00 02 141 |  | Backfilling & Warrning Tape | 3d | 2026-11-22 | 2026-11-24 | B2.33 71 00 02 140, B2.33 71 00 02 138, B2.33 71 00 02 98 | 62.32d |
|  | Cables | **Cables** |  | 2026-11-02 | 2026-11-05 |  |  |
|  | 4C,10+1C,10mm2 | **4C,10+1C,10mm2** |  | 2026-11-02 | 2026-11-03 |  |  |
| B2.33 71 00 01 15 |  | Cable Pulling | 2d | 2026-11-02 | 2026-11-03 | B2.33 71 00 01 18 | 4.32d |
|  | 4C,50+1C,25mm2 | **4C,50+1C,25mm2** |  | 2026-11-04 | 2026-11-05 |  |  |
| B2.33 71 00 01 16 |  | Cable Pulling | 2d | 2026-11-04 | 2026-11-05 | B2.33 71 00 01 15 | 4.32d |
|  | Street Lighting | **Street Lighting** |  | 2026-11-19 | 2026-12-12 |  |  |
|  | Cables | **Cables** |  | 2026-12-03 | 2026-12-09 |  |  |
|  | 4C,10+1C,10mm2 | **4C,10+1C,10mm2** |  | 2026-12-03 | 2026-12-09 |  |  |
| B2.33 71 19 142 |  | Land Adjustment | 2d | 2026-12-03 | 2026-12-05 | B2.33 71 19 192 SS | 56.32d |
| B2.33 71 49.23.152 |  | Cable Pulling | 2d | 2026-12-06 | 2026-12-07 | B2.33 71 19 142 | 56.32d |
| B2.33 71 19 152 |  | Backfilling | 2d | 2026-12-08 | 2026-12-09 | B2.33 71 49.23.152 | 56.32d |
|  | SL Poles | **SL Poles** |  | 2026-11-19 | 2026-12-05 |  |  |
|  | Pole (10 M Dbl Arm) | **Pole (10 M Double Arm)** |  | 2026-11-19 | 2026-12-02 |  |  |
| B2.33 71 16.79 |  | Excavation | 2d | 2026-11-19 | 2026-11-21 | B3.1. 33 14 13-1117, B2.33 71 16.75_R | 56.32d |
| B2.33 71 16.80 |  | PC & RC Foundation | 2d | 2026-11-22 | 2026-11-23 | B2.33 71 16.79 | 56.32d |
| B2.33 71 16.81 |  | Lighting Poles Installation Incl power box, Cables | 3d | 2026-11-24 | 2026-11-26 | B2.33 71 16.80 | 56.32d |
| B2.26.56.19.13 |  | Lighting Luminares Inst | 2d | 2026-11-28 | 2026-11-29 | B2.33 71 16.81 | 56.32d |
| B2.33 71 16.82 |  | Backfilling, Grouting & Chamfering | 3d | 2026-11-30 | 2026-12-02 | B2.26.56.19.13 | 56.32d |
|  | Pole (16 M Dbl Arm) | **Pole (16 M Double Arm)** |  | 2026-11-22 | 2026-12-05 |  |  |
| B2.33 71 16.83 |  | Excavation | 2d | 2026-11-22 | 2026-11-23 | B2.33 71 16.79, B2.33 71 00 02 157 | 60.32d |
| B2.33 71 16.84 |  | PC & RC Foundation | 3d | 2026-11-24 | 2026-11-26 | B2.33 71 16.83 | 60.32d |
| B2.33 71 16.85 |  | Lighting Poles Installation Incl power box, Cables | 3d | 2026-11-28 | 2026-11-30 | B2.33 71 16.84 | 60.32d |
| B2.26.56.19.14 |  | Lighting Luminares Inst | 2d | 2026-12-01 | 2026-12-02 | B2.33 71 16.85 | 60.32d |
| B2.33 71 16.86 |  | Backfilling, Grouting & Chamfering | 2d | 2026-12-03 | 2026-12-05 | B2.26.56.19.14, B2.33 71 00 02 043 | 60.32d |
|  | SL Pillars | **SL Pillars** |  | 2026-12-01 | 2026-12-03 |  |  |
| B2.33 71 26 032 |  | Pillars Installation (Internal Wiring) | 2d | 2026-12-01 | 2026-12-02 | B2.33 71 16.85, B2.33 71 16.81 | 62.32d |
| B2.33 71 26 043 |  | KWH meter mounting a frame installation | 1d | 2026-12-03 | 2026-12-03 | B2.33 71 26 032, B2.33 71 26 042, B2.33 71 26 041 | 62.32d |
|  | Earthing | **Earthing** |  | 2026-12-01 | 2026-12-12 |  |  |
| B2.33 71 19 41 |  | Land Adjustment | 3d | 2026-12-01 | 2026-12-03 | B2.33 71 16.85, B2.33 71 16.81, B2.33 71 19 38 | 60.32d |
| B2.33 71 19 42 |  | Earth Rods & Conduits | 1d | 2026-12-05 | 2026-12-05 | B2.33 71 19 41 | 60.32d |
| B2.33 71 19 43 |  | Backfilling | 2d | 2026-12-10 | 2026-12-12 | B2.33 71 19 42, B2.33 71 19 152, B2.33 71 00 02 66, B2.33 71 19 25 | 56.32d |
|  | Telecommunication | **Telecommunication Network** |  | 2026-10-22 | 2026-11-15 |  |  |

| ID | WBS | Task | Duration | Start | Finish | Predecessors | Complete | Total float |
| --- | --- | --- | --- | --- | --- | --- | --- | --- |
|  | Ducts | **Ducts** |  | 2026-10-22 | 2026-11-09 |  |  |  |
|  | (6*50mm) | **Size (6*50mm) HDPE ducts** |  | 2026-10-22 | 2026-11-01 |  |  |  |
| B2.1.33 81 26.132 |  | Excavation | 2d | 2026-10-22 | 2026-10-25 | B2.33 71 00 02 139, B2.33 71 00 02 136 |  | 35.2d |
| B2.1.33 81 26.133 |  | HDPE Pipe, Shuttering, Steel Fixing & Conc. Cast | 4d | 2026-10-25 | 2026-10-29 | B2.1.33 81 26.132 |  | 71.2d |
| B2.1.33 81 26.134 |  | Backfilling & Warrning Tape | 2d | 2026-10-29 | 2026-11-01 | B2.1.33 81 26.133, B2.1.33 81 26.13_R |  | 71.2d |
|  | (6*50mm+2*32mm) | **Size (6*50mm+2*32mm) HDPE ducts** |  | 2026-10-25 | 2026-11-04 |  |  |  |
| B2.1.33 81 26.135 |  | Excavation | 2d | 2026-10-25 | 2026-10-27 | B2.1.33 81 26.132 |  | 35.2d |
| B2.1.33 81 26.136 |  | HDPE Pipe, Shuttering, Steel Fixing & Conc. Cast | 3d | 2026-10-27 | 2026-10-31 | B2.1.33 81 26.135 |  | 86.2d |
| B2.1.33 81 26.137 |  | Backfilling & Warrning Tape | 3d | 2026-11-02 | 2026-11-04 | B2.1.33 81 26.136, B2.1.33 81 26.62 SS, B2.33 71 00.217 SS |  | 84.32d |
|  | (6*50mm+4*32mm) | **Size (6*50mm+4*32mm) HDPE ducts** |  | 2026-10-27 | 2026-11-05 |  |  |  |
| B2.1.33 81 26.138 |  | Excavation | 2d | 2026-10-27 | 2026-10-29 | B2.1.33 81 26.135 |  | 35.2d |
| B2.1.33 81 26.139 |  | HDPE Pipe, Shuttering, Steel Fixing & Conc. Cast | 3d | 2026-10-29 | 2026-11-02 | B2.1.33 81 26.138 |  | 84.2d |
| B2.1.33 81 26.140 |  | Backfilling & Warrning Tape | 3d | 2026-11-02 | 2026-11-05 | B2.1.33 81 26.139 |  | 84.2d |
|  | (2*32mm) | **Size (2*32mm) HDPE ducts** |  | 2026-10-29 | 2026-11-07 |  |  |  |
| B2.1.33 81 26.141 |  | Excavation | 2d | 2026-10-29 | 2026-11-01 | B2.1.33 81 26.138 |  | 35.2d |
| B2.1.33 81 26.142 |  | HDPE Pipe, Shuttering, Steel Fixing & Conc. Cast | 2d | 2026-11-01 | 2026-11-03 | B2.1.33 81 26.141 |  | 36.2d |
| B2.1.33 81 26.143 |  | Backfilling & Warrning Tape | 3d | 2026-11-03 | 2026-11-07 | B2.1.33 81 26.142 |  | 36.2d |
|  | (4*32mm) | **Size (4*32mm) HDPE ducts** |  | 2026-10-29 | 2026-11-07 |  |  |  |
| B2.1.33 81 26.144 |  | Excavation | 2d | 2026-10-29 | 2026-11-01 | B2.1.33 81 26.141 SS |  | 35.2d |
| B2.1.33 81 26.145 |  | HDPE Pipe, Shuttering, Steel Fixing & Conc. Cast | 2d | 2026-11-01 | 2026-11-03 | B2.1.33 81 26.144 |  | 85.2d |
| B2.1.33 81 26.146 |  | Backfilling & Warrning Tape | 3d | 2026-11-03 | 2026-11-07 | B2.1.33 81 26.145, B2.1.33 81 26.23_R |  | 85.2d |
|  | (6*50mm+6*32mm) | **Size (6*50mm+6*32mm) HDPE ducts** |  | 2026-11-01 | 2026-11-09 |  |  |  |
| B2.1.33 81 26.147 |  | Excavation | 2d | 2026-11-01 | 2026-11-03 | B2.1.33 81 26.144 |  | 35.2d |
| B2.1.33 81 26.148 |  | HDPE Pipe, Shuttering, Steel Fixing & Conc. Cast | 2d | 2026-11-03 | 2026-11-05 | B2.1.33 81 26.147 |  | 67.2d |
| B2.1.33 81 26.149 |  | Backfilling & Warrning Tape | 3d | 2026-11-05 | 2026-11-09 | B2.1.33 81 26.148, B2.1.33 81 26.134 |  | 67.2d |
|  | Manholes | **Manholes** |  | 2026-11-03 | 2026-11-15 |  |  |  |
|  | Manhole Type 1 | **Manhole Type 1** |  | 2026-11-03 | 2026-11-11 |  |  |  |
| B2.31 23 00.623 |  | Excavation | 2d | 2026-11-03 | 2026-11-05 | B2.1.33 81 26.147 |  | 35.2d |
| B2.33 71 00.254 |  | Manhole Installation | 2d | 2026-11-05 | 2026-11-08 | B2.31 23 00.623 |  | 35.2d |
| B2.33 71 00.255 |  | Backfilling & Warrning Tape | 3d | 2026-11-08 | 2026-11-11 | B2.33 71 00.254, B2.1.02 41 00.015_R, B2.1.33 81 26.143 |  | 35.2d |
|  | Manhole Type 2 | **Manhole Type 2** |  | 2026-11-05 | 2026-11-15 |  |  |  |
| B2.31 23 00.625 |  | Excavation | 2d | 2026-11-05 | 2026-11-08 | B2.31 23 00.623 |  | 37.2d |
| B2.33 71 00.258 |  | Manhole Installation | 3d | 2026-11-08 | 2026-11-11 | B2.31 23 00.625 |  | 37.2d |
| B2.33 71 00.259 |  | Backfilling & Warrning Tape | 3d | 2026-11-11 | 2026-11-15 | B2.33 71 00.258 |  | 37.2d |
|  | Crossing Ducts | **Road Crossing Ducts** |  | 2026-11-03 | 2026-11-11 |  |  |  |
|  | 1 | **Size (6X50mm) HDPE** |  | 2026-11-03 | 2026-11-11 |  |  |  |
| B2.31 23 00.622 |  | Excavation | 2d | 2026-11-03 | 2026-11-05 | B2.1.33 81 26.147 |  | 67.2d |
| B2.33 71 00.252 |  | Shuttering, Steel Fixing Incl. UPVC Pipe & Conc. Cast | 2d | 2026-11-05 | 2026-11-08 | B2.31 23 00.622, B1.2.31 23 16.01.13 |  | 67.2d |
| B2.33 71 00.253 |  | Backfilling & Warrning Tape | 3d | 2026-11-08 | 2026-11-11 | B2.33 71 00.252 |  | 67.2d |
|  | Earth & Road Works | **Earth & Road Works** |  | 2025-12-12 | 2026-12-03 |  |  |  |
|  | Earth Works | **Earth Works** |  | 2025-12-12 | 2026-05-06 |  |  |  |
| B1.2.31 23 16.01.13 |  | Roadway Excavation | 113.04d | 2025-12-12 A | 2026-05-06 A | DMM2-Eng-MS-78 | 100% |  |
| B1.2.31 23 23.01.13 |  | Embankment Backfiling | 113.03d | 2025-12-12 A | 2026-05-06 A | B1.2.31 23 16.01.13 | 100% |  |
|  | Earth Layers | **Earth Layers** |  | 2026-04-20 | 2026-10-11 |  |  |  |
| B1.2.32 11 13.01.13 |  | Subgrade (82.00% Completed) | 123.97d | 2026-04-20 A | 2026-09-15 A | B1.2.31 23 23.01.13 | 100% |  |
| B1.2.32 11 23.01.13 |  | Aggregate Base Course (48.00% Completed) | 88.84d | 2026-06-04 A | 2026-09-15 A | B1.2.32 11 13.01.13 SS | 100% |  |
| B1.2.32 11 13.01.13_R |  | Subgrade(Rem) | 2d | 2026-10-10 | 2026-10-11 | B1.2.31 23 23.01.13, B1.2.32 11 13.01.13, B1.2.32 11 13.01.12_R |  | 50.18d |
| B1.2.32 11 23.01.13_R |  | Aggregate Base Course(Rem) | 1.04d | 2026-10-10 | 2026-10-11 | B1.2.32 11 13.01.13_R SS, B1.2.32 11 23.01.13 |  | 50.18d |
|  | Interlock | **Interlock** |  | 2026-10-25 | 2026-10-27 |  |  |  |
| B1.2.32 14 13.13.13 |  | 60mm thick - Interlocking Block Pavers | 3d | 2026-10-25 | 2026-10-27 | DMM2-Proc-Delv-7408 |  | 7.32d |
|  | Curbstone | **Curbstone** |  | 2026-10-28 | 2026-11-12 |  |  |  |
|  | Pre Install | **Pre-Installation** |  | 2026-10-28 | 2026-11-07 |  |  |  |
| B2.31 23 00.361 |  | Excavation | 2d | 2026-10-28 | 2026-10-29 | B1.2.32 14 13.13.13 |  | 7.32d |
| B1.2.32 14 13.13.213 |  | PCC | 3d | 2026-10-31 | 2026-11-02 | B2.31 23 00.361 |  | 21.32d |
| 32 16 13.0013 |  | Haunching | 4d | 2026-11-03 | 2026-11-07 | B1.2.32 14 13.13.213 |  | 21.32d |
|  | Installation | **Installation** |  | 2026-11-08 | 2026-11-10 |  |  |  |
| B1.2.32 16.13.01.13 |  | Curb Stone, Type K1 | 3d | 2026-11-08 | 2026-11-10 | 32 16 13.0013 |  | 21.32d |
| B1.2.32 16.13.02.12 |  | Dropped Curb, Type K3 | 2d | 2026-11-09 | 2026-11-10 | B1.2.32 16.13.01.13 FF, 32 16 13.0013 |  | 21.32d |
| B1.2.32 16.13.03.13 |  | Edge Curb, Type K4 | 2d | 2026-11-09 | 2026-11-10 | B1.2.32 16.13.02.12 FF, 32 16 13.0013 |  | 21.32d |
| B1.2.32 16.13.0413 |  | Heel Curb, Type K5 | 2d | 2026-11-09 | 2026-11-10 | B1.2.32 16.13.03.13 FF, 32 16 13.0013 |  | 21.32d |
| B1.2.32 16.13.05.12 |  | Transition Curb | 2d | 2026-11-09 | 2026-11-10 | B1.2.32 16.13.0413 FF, 32 16 13.0013 |  | 21.32d |
|  | Finishing | **Finishing** |  | 2026-11-11 | 2026-11-12 |  |  |  |
| 32 16 13.013 |  | Finishing, Fareface | 2d | 2026-11-11 | 2026-11-12 | B1.2.32 16.13.01.13, B1.2.32 16.13.02.12, B1.2.32 16.13.03.13, B1.2.32 16.13.0413, B1.2.32 16.13.05.12, 32 16 13.06 |  | 21.32d |
|  | Asphalt Layers | **Asphalt Layers** |  | 2026-07-05 | 2026-11-29 |  |  |  |
| B1.2.32 11 26.01.13 |  | Bituminous Base Course including Prime Coat (MC1) and tack coat (RC2) (43.00% Completed) | 62.08d | 2026-07-05 A | 2026-09-15 A | B1.2.32 11 23.01.13 SS | 100% |  |
| B1.2.32 11 26.01.13_R |  | Bituminous Base Course including Prime Coat (MC1) and tack coat (RC2)(Rem) | 1.14d | 2026-10-10 | 2026-10-11 | B1.2.32 11 23.01.13_R SS, B1.2.32 11 26.01.13 |  | 50.18d |
| B1.2.32 12 16.01.13 |  | Bituminous concrete Wearing Course, including tack coat (RC2) | 5d | 2026-11-24 | 2026-11-29 | B1.2.32 11 26.01.13_R, B7.32 31 26.01-113, 32 16 13.013 |  | 12.32d |
|  | Pavement Marking | **Pavement Marking** |  | 2026-11-30 | 2026-12-01 |  |  |  |
| B1.2.32 17 23.01.13 |  | Retroreflective Thermoplastic White Traffic lines | 2d | 2026-11-30 | 2026-12-01 | B1.2.32 12 16.01.13 |  | 56.32d |
| B1.2.32 17 23.02.13 |  | Retroreflective Thermoplastic Yellow, Traffic lines | 2d | 2026-11-30 | 2026-12-01 | B1.2.32 12 16.01.13 |  | 56.32d |

| ID | WBS | Task | Duration | Start | Finish | Predecessors | Complete | Total float |
| --- | --- | --- | --- | --- | --- | --- | --- | --- |
|  | Traffic Signs | **Traffic Signs** |  | 2026-10-31 | 2026-12-03 |  |  |  |
|  | Pre Install | **Pre-Installation** |  | 2026-10-31 | 2026-11-03 |  |  |  |
| B2.31 23 00.371 |  | Excavation | 2d | 2026-10-31 | 2026-11-01 | B2.31 23 00.361 |  | 7.32d |
| 10 14 53.013 |  | Foundation | 2d | 2026-11-02 | 2026-11-03 | B2.31 23 00.371 |  | 80.32d |
|  | Installation | **Installation** |  | 2026-12-02 | 2026-12-03 |  |  |  |
| B1.2.10 14 14.01.13 |  | Ground mounted, 1 Sheet Alumenium, Single post | 2d | 2026-12-02 | 2026-12-03 | B1.2.10 14 53.0113 SS, B1.2.32 17 23.01.13, B1.2.32 17 23.02.13, 10 14 53.013 |  | 56.32d |
| B1.2.10 14 53.0113 |  | 1 Sheet Alumenium, Single post | 2d | 2026-12-02 | 2026-12-03 | B1.2.32 17 23.01.13, B1.2.32 17 23.02.13, 10 14 53.013 |  | 56.32d |
|  | Landscape | **Landscape** |  | 2026-11-02 | 2026-11-23 |  |  |  |
|  | Fences | **Fences** |  | 2026-11-02 | 2026-11-23 |  |  |  |
|  | (ZATCA HCIS) | **Steel fence (ZATCA HCIS)** |  | 2026-11-02 | 2026-11-23 |  |  |  |
| B7.32 31 26.01-19 |  | Earthwork | 6d | 2026-11-02 | 2026-11-08 | B2.31 23 00.371 |  | 7.32d |
| B7.32 31 26.01-111 |  | Foundation | 7d | 2026-11-09 | 2026-11-16 | B7.32 31 26.01-19 |  | 7.32d |
| B7.32 31 26.01-113 |  | Fence Installation | 6d | 2026-11-17 | 2026-11-23 | B7.32 31 26.01-111 |  | 7.32d |
|  | Customs Rd 01 | **Customs Road 01** |  | 2025-12-11 | 2026-12-16 |  |  |  |
|  | Wet Networks | **Wet Networks** |  | 2026-04-02 | 2026-12-09 |  |  |  |
|  | Sewerage Network | **Sewerage Network** |  | 2026-04-02 | 2026-11-08 |  |  |  |
|  | GRP | **GRP Pipes** |  | 2026-04-02 | 2026-10-17 |  |  |  |
|  | 200 | **?150** |  | 2026-04-02 | 2026-10-17 |  |  |  |
|  | 1 | **Depth From 1.5m to 2.5m** |  | 2026-04-02 | 2026-10-12 |  |  |  |
| B5.33 31 00.01.02.28 |  | Pipe Laying (10.51% Completed) | 139d | 2026-04-02 A | 2026-09-15 A | B5.33 31 00.01.02.24, DMM2-Proc-Delv-4038 SS | 100% |  |
| B5.33 31 00.01.02.32 |  | Embedment & Test (10.42% Completed) | 136d | 2026-04-06 A | 2026-09-15 A | B5.33 31 00.01.02.28 FF | 100% |  |
| B5.33 31 00.01.02.36 |  | Backfilling & Warrning Tape (10.42% Completed) | 132d | 2026-04-10 A | 2026-09-15 A | B5.33 31 00.01.02.32 FF | 100% |  |
| B5.33 31 00.01.02.20 |  | Excavation | 2d | 2026-04-15 A | 2026-04-16 A | B1.1.31 23 23.122 SS | 100% |  |
| B5.33 31 00.01.02.24 |  | Sand Bedding | 2d | 2026-04-18 A | 2026-04-19 A | B5.33 31 00.01.02.20 | 100% |  |
| B5.33 31 00.01.02.28_R |  | Pipe Laying(Rem) | 2.69d | 2026-09-22 A | 2026-10-10 | B5.33 31 00.01.02.24, DMM2-Proc-Delv-4038_R SS, B5.33 31 00.01.02.28 | 12% | 110.96d |
| B5.33 31 00.01.02.32_R |  | Embedment & Test(Rem) | 3.67d | 2026-09-26 A | 2026-10-11 | B5.33 31 00.01.02.28_R FF, B5.33 31 00.01.02.32 | 12% | 110.1d |
| B5.33 31 00.01.02.36_R |  | Backfilling & Warrning Tape(Rem) | 4.56d | 2026-09-28 A | 2026-10-12 | B5.33 31 00.01.02.32_R FF, B5.33 31 00.01.02.36 | 12% | 109.31d |
|  | 4 | **Depth From 2.5m to 3.5m** |  | 2026-04-18 | 2026-10-17 |  |  |  |
| B5.33 31 00.01.02.22 |  | Excavation | 2d | 2026-04-18 A | 2026-04-19 A | B5.33 31 00.01.02.20 | 100% |  |
| B5.33 31 00.01.02.26 |  | Sand Bedding | 1d | 2026-04-20 A | 2026-04-20 A | B5.33 31 00.01.02.22 | 100% |  |
| B5.33 31 00.01.02.30 |  | Pipe Laying | 7.12d | 2026-05-06 A | 2026-05-14 A | B5.33 31 00.01.02.26 | 100% |  |
| B5.33 31 00.01.02.34 |  | Embedment & Test (10.42% Completed) | 108d | 2026-05-09 A | 2026-09-15 A | B5.33 31 00.01.02.30 | 100% |  |
| B5.33 31 00.01.02.38 |  | Backfilling & Warrning Tape (10.42% Completed) | 106d | 2026-05-11 A | 2026-09-15 A | B5.33 31 00.01.02.34 FF, B5.33 31 00.01.02.36 SS | 100% |  |
| B5.33 31 00.01.02.34_R |  | Embedment & Test(Rem) | 3.67d | 2026-09-20 A | 2026-10-11 | B5.33 31 00.01.02.30, B5.33 31 00.01.02.34 | 12% | 84.1d |
| B5.33 31 00.01.02.38_R |  | Backfilling & Warrning Tape(Rem) | 10d | 2026-09-22 A | 2026-10-17 | DMM2-Proc-Delv-4058 FF, B5.33 31 00.01.02.34_R FF, B5.33 31 00.01.02.36_R SS, B5.33 31 00.01.02.38, B5.33 31 00.01.29_R, B5.33 31 00.01.39_R, B6.33 05 39.01.717_R | 17% | 78.52d |
|  | Manholes | **Manholes ?1200** |  | 2026-04-06 | 2026-11-08 |  |  |  |
|  | 3 | **Depth From 1.5m to 2.5m** |  | 2026-04-06 | 2026-11-08 |  |  |  |
| B6.33 05 39.01.727 |  | Excavation & Compaction | 4d | 2026-04-06 A | 2026-04-09 A | B5.33 31 00.01.02.22 | 100% |  |
| B6.33 05 39.01.737 |  | Blinding Conc, & RC Base | 3.18d | 2026-05-06 A | 2026-05-10 A | B6.33 05 39.01.727 | 100% |  |
| B6.33 05 39.01.747 |  | Manhole Installation (45.23% Completed) | 107d | 2026-05-10 A | 2026-09-15 A | B6.33 05 39.01.737 | 100% |  |
| B6.33 05 39.01.757 |  | Test, Internal Finishing, Benching & Cover (45.23% Completed) | 85.88d | 2026-06-08 A | 2026-09-15 A | B6.33 05 39.01.747 SS | 100% |  |
| B6.33 05 39.01.767 |  | Backfilling (45.23% Completed) | 83d | 2026-06-11 A | 2026-09-15 A | B6.33 05 39.01.757 SS, B5.33 31 00.01.02.38 | 100% |  |
| B6.33 05 39.01.747_R |  | Manhole Installation(Rem) | 1.52d | 2026-09-26 A | 2026-10-07 | B6.33 05 39.01.737, B6.33 05 39.01.747 | 40% | 112.41d |
| B6.33 05 39.01.757_R |  | Test, Internal Finishing, Benching & Cover(Rem) | 2.56d | 2026-09-28 A | 2026-10-08 | B6.33 05 39.01.747_R SS, B6.33 05 39.01.757 | 40% | 111.79d |
| B6.33 05 39.01.767_R |  | Backfilling(Rem) | 10d | 2026-10-04 A | 2026-11-08 | B6.33 05 39.01.4317 FF, B3.33 14 19.01.83 FF, B5.33 31 23.01-1.28 FF, B6.33 05 39.01.757_R SS, B5.33 31 00.01.02.38_R, B6.33 05 39.01.767 | 40% | 85.32d |
|  | 4 | **Depth From 2.5m to 3.5m** |  | 2026-04-26 | 2026-11-08 |  |  |  |
| B6.33 05 39.01.777 |  | Excavation & Compaction | 2d | 2026-04-26 A | 2026-04-27 A | B6.33 05 39.01.727 | 100% |  |
| B6.33 05 39.01.787 |  | Blinding Conc, & RC Base | 68.17d | 2026-05-06 A | 2026-07-29 A | B6.33 05 39.01.777 | 100% |  |
| B6.33 05 39.01.797 |  | Manhole Installation (45.23% Completed) | 107d | 2026-05-10 A | 2026-09-15 A | B6.33 05 39.01.787 | 100% |  |
| B6.33 05 39.01.807 |  | Test, Internal Finishing, Benching & Cover (45.23% Completed) | 80.88d | 2026-06-14 A | 2026-09-15 A | B6.33 05 39.01.797 SS | 100% |  |
| B6.33 05 39.01.817 |  | Backfilling (45.23% Completed) | 77d | 2026-06-18 A | 2026-09-15 A | B6.33 05 39.01.807 SS, B6.33 05 39.01.767 FF | 100% |  |
| B6.33 05 39.01.797_R |  | Manhole Installation(Rem) | 1.52d | 2026-09-21 A | 2026-10-07 | B6.33 05 39.01.787, B6.33 05 39.01.797 | 40% | 112.41d |
| B6.33 05 39.01.807_R |  | Test, Internal Finishing, Benching & Cover(Rem) | 2.56d | 2026-09-24 A | 2026-10-08 | B6.33 05 39.01.797_R SS, B6.33 05 39.01.807 | 40% | 111.79d |
| B6.33 05 39.01.817_R |  | Backfilling(Rem) | 10d | 2026-10-01 A | 2026-11-08 | B5.33 05 63.015 FF, B6.33 05 39.01.807_R SS, B6.33 05 39.01.767_R FF, B6.33 05 39.01.817 | 40% | 85.32d |
|  | GRP1 | **HDPE Pipes** |  | 2026-10-07 | 2026-11-08 |  |  |  |
|  | 200 | **?160** |  | 2026-10-07 | 2026-11-08 |  |  |  |
|  | 1 | **Depth From 0.0m to 1.5m** |  | 2026-10-07 | 2026-11-08 |  |  |  |
| B5.33 31 23.01-1.20 |  | Excavation | 10d | 2026-10-07 | 2026-10-18 | B5.33 31 00.01.02.22 |  | 85.32d |
| B5.33 31 23.01-1.22 |  | Sand Bedding | 3d | 2026-10-19 | 2026-10-21 | B5.33 31 23.01-1.20, B6.33 05 39.01.727 |  | 85.32d |
| B5.33 31 23.01-1.24 |  | Pipe Laying | 3d | 2026-10-22 | 2026-10-25 | B5.33 31 23.01-1.22 |  | 85.32d |
| B5.33 31 23.01-1.26 |  | Embedment & Test | 5d | 2026-10-26 | 2026-10-31 | B5.33 31 23.01-1.24 |  | 85.32d |
| B5.33 31 23.01-1.28 |  | Backfilling & Warrning Tape | 7d | 2026-11-01 | 2026-11-08 | B5.33 31 23.01-1.26 |  | 85.32d |
|  | Stormwater Network | **Stormwater Network** |  | 2026-06-01 | 2026-11-03 |  |  |  |
|  | Box Cul. | **Box Cul.** |  | 2026-06-01 | 2026-11-03 |  |  |  |
| B6. 33 42 13.16 |  | Excavation | 85.29d | 2026-06-01 A | 2026-09-09 A | B6. 33 42 13.011, B1.1.31 23 23.122 | 100% |  |
| B6. 33 42 13.26 |  | Lean PC & RC Foundation | 81.21d | 2026-06-07 A | 2026-09-10 A | B6. 33 42 13.16 | 100% |  |
| B6. 33 42 13.36 |  | Box Reinforced Conc. Walls incl. Water Stop | 82.5d | 2026-06-10 A | 2026-09-14 A | B6. 33 42 13.26, B6.33 05 63.041 | 100% |  |
| B6. 33 42 13.46 |  | Box Reinforced Conc. Slab (92.00% Completed) | 40.5d | 2026-07-30 A | 2026-09-15 A | B6. 33 42 13.36 | 100% |  |
| B6. 33 42 13.56 |  | Curing & Water Proofing (75.00% Completed) | 36d | 2026-08-05 A | 2026-09-15 A | B6. 33 42 13.46 SS | 100% |  |
| B6. 33 42 13.46_R |  | Box Reinforced Conc. Slab(Rem) | 3d | 2026-09-24 A | 2026-10-07 | B6. 33 42 13.36, B6. 33 42 13.46 | 90% | 52.62d |

| ID | WBS | Task | Duration | Start | Finish | Predecessors | Complete | Total float |
| --- | --- | --- | --- | --- | --- | --- | --- | --- |
| B6. 33 42 13.56_R |  | Curing & Water Proofing(Rem) | 2.5d | 2026-09-28 A | 2026-10-07 | B6. 33 42 13.46_R SS, B6. 33 42 13.56 | 75% | 45.3d |
| B6. 33 42 13.66 |  | Backfilling & Warrning Tape | 6d | 2026-10-07 | 2026-10-14 | B6. 33 42 13.56_R |  | 50.3d |
|  | Conc. Ch | **Concrete Chambers** |  | 2026-09-02 | 2026-11-03 |  |  |  |
|  | Conc. Ch 2.53.51 | **Size 3.0 x 3.0 m, depth 1.5 to 2.5** |  | 2026-09-02 | 2026-10-20 |  |  |  |
| B6.33 05 63.012 |  | Cocrete Cast for Chamber & Curing (75.00% Completed) | 12d | 2026-09-02 A | 2026-09-15 A | B6. 33 42 13.26 | 100% |  |
| B6.33 05 63.011 |  | Shuttering, Steel Fixing, CJ & Water Stop | 3d | 2026-09-07 A | 2026-09-10 A | B1.2.32 11 23.01.18, B6. 33 42 13.36 | 100% |  |
| B6.33 05 63.012_R |  | Cocrete Cast for Chamber & Curing(Rem) | 3d | 2026-10-03 A | 2026-10-04 A | B6. 33 42 13.26, B6.33 05 63.012, DMM2-Proc-Delv-7274_R, DMM2-Proc-Delv-7414 | 100% |  |
| B6.33 05 63.013 |  | Cast Iron Steps Installation, Epoxy Paint & Internal Finishing | 7d | 2026-10-07 | 2026-10-15 | B6.33 05 63.012_R, B6. 33 42 13.56_R |  | 45.3d |
| B6.33 05 63.014 |  | Waterproofing Tanking Membrane & Protection | 4d | 2026-10-15 | 2026-10-20 | B6.33 05 63.013, B6. 33 42 13.46_R, B6.33 05 63.043 |  | 45.3d |
|  | Conc. Ch 3.54.5 | **Size 3.0 x 1.5 m, depth 1.5 to 2.5** |  | 2026-09-05 | 2026-10-25 |  |  |  |
| B6.33 05 63.021 |  | Shuttering, Steel Fixing, CJ & Water Stop (75.00% Completed) | 10d | 2026-09-05 A | 2026-09-15 A | B6.33 05 63.011, B6. 33 42 13.26 | 100% |  |
| B6.33 05 63.022 |  | Cocrete Cast for Chamber & Curing (75.00% Completed) | 7d | 2026-09-08 A | 2026-09-15 A | B6.33 05 63.012 SS | 100% |  |
| B6.33 05 63.021_R |  | Shuttering, Steel Fixing, CJ & Water Stop(Rem) | 2.5d | 2026-09-21 A | 2026-09-26 A | B6.33 05 63.011, B6. 33 42 13.26, B6.33 05 63.021 | 100% |  |
| B6.33 05 63.022_R |  | Cocrete Cast for Chamber & Curing(Rem) | 2.5d | 2026-10-01 A | 2026-10-03 A | B6.33 05 63.012_R SS, B6.33 05 63.022 | 100% |  |
| B6.33 05 63.023 |  | Cast Iron Steps Installation, Epoxy Paint & Internal Finishing | 5d | 2026-10-07 | 2026-10-13 | B6.33 05 63.022_R, B6. 33 42 13.56_R |  | 51.3d |
| B6.33 05 63.024 |  | Waterproofing Tanking Membrane & Protection | 4d | 2026-10-20 | 2026-10-25 | B6.33 05 63.023, B6.33 05 63.014, B6. 33 42 13.66, B6.33 42 11.36-1.20_R, B6.33 42 11.36-185_R |  | 45.3d |
|  | Conc. Ch 3.54.51 | **Size 2.5 x 1.5 m, depth 1.5 to 2.5** |  | 2026-09-07 | 2026-10-29 |  |  |  |
| B6.33 05 63.031 |  | Shuttering, Steel Fixing, CJ & Water Stop (75.00% Completed) | 8d | 2026-09-07 A | 2026-09-15 A | B6. 33 42 13.26, B6.33 05 63.021 SS | 100% |  |
| B6.33 05 63.032 |  | Cocrete Cast for Chamber & Curing (75.00% Completed) | 4d | 2026-09-12 A | 2026-09-15 A | B6.33 05 63.022 SS | 100% |  |
| B6.33 05 63.031_R |  | Shuttering, Steel Fixing, CJ & Water Stop(Rem) | 2.5d | 2026-09-24 A | 2026-10-01 A | B6. 33 42 13.26, B6.33 05 63.021_R SS, B6.33 05 63.031 | 100% |  |
| B6.33 05 63.032_R |  | Cocrete Cast for Chamber & Curing(Rem) | 2d | 2026-10-03 A | 2026-10-04 A | B6.33 05 63.022_R SS, B6.33 05 63.032 | 100% |  |
| B6.33 05 63.033 |  | Cast Iron Steps Installation, Epoxy Paint & Internal Finishing | 4d | 2026-10-07 | 2026-10-12 | B6.33 05 63.032_R, B6. 33 42 13.56_R |  | 56.3d |
| B6.33 05 63.034 |  | Waterproofing Tanking Membrane & Protection | 4d | 2026-10-25 | 2026-10-29 | B6.33 05 63.033, B6.33 05 63.024 |  | 45.3d |
|  | Conc. Ch 2.53.5 | **Size 2.0 x 1.5 m, depth 2.5 to 3.5** |  | 2026-09-03 | 2026-11-03 |  |  |  |
| B6.33 05 63.041 |  | Shuttering, Steel Fixing, CJ & Water Stop | 6d | 2026-09-03 A | 2026-09-10 A | B6.33 05 63.081 | 100% |  |
| B6.33 05 63.042 |  | Cocrete Cast for Chamber & Curing (75.00% Completed) | 5d | 2026-09-10 A | 2026-09-15 A | B6. 33 42 13.26, B1.2.32 11 23.01.18, B6.33 05 63.032 SS, B6.33 05 63.031 SS | 100% |  |
| B6.33 05 63.042_R |  | Cocrete Cast for Chamber & Curing(Rem) | 2d | 2026-09-27 A | 2026-09-29 A | B6. 33 42 13.26, B1.2.32 11 23.01.18, B6.33 05 63.032_R SS, B6.33 05 63.031_R SS, B6.33 05 63.042 | 100% |  |
| B6.33 05 63.043 |  | Cast Iron Steps Installation, Epoxy Paint & Internal Finishing | 4d | 2026-10-07 | 2026-10-12 | B6.33 05 63.042_R, B6. 33 42 13.56_R, B6. 33 42 13.36, B6.33 05 63.011 |  | 48.3d |
| B6.33 05 63.044 |  | Waterproofing Tanking Membrane & Protection | 4d | 2026-10-29 | 2026-11-03 | B6.33 05 63.043, B6.33 05 63.034 |  | 45.3d |
|  | Potable Water | **Potable Water Network** |  | 2026-06-10 | 2026-10-11 |  |  |  |
|  | HDPE | **HDPE Pipes** |  | 2026-06-10 | 2026-10-11 |  |  |  |
|  | ?110mm | **?110mm** |  | 2026-06-10 | 2026-10-11 |  |  |  |
|  | Depth: 0.0m - 1.5m | **Depth: 0.0m - 1.5m** |  | 2026-06-17 | 2026-10-10 |  |  |  |
| B3.33 14 13-91 |  | Excavation (72.00% Completed) | 78d | 2026-06-17 A | 2026-09-15 A | B3.33 14 13.01.0103 | 100% |  |
| B3.33 14 13-95 |  | Sand Bedding (72.00% Completed) | 76d | 2026-06-20 A | 2026-09-15 A | B3.33 14 13-91 FF | 100% |  |
| B3.33 14 13-99 |  | Pipe Laying (72.00% Completed) | 74d | 2026-06-22 A | 2026-09-15 A | B3.33 14 13-95 FF | 100% |  |
| B3.33 14 13-103 |  | Embedment & Test (72.00% Completed) | 71d | 2026-06-25 A | 2026-09-15 A | B3.33 14 13-99 FF | 100% |  |
| B3.33 14 13-107 |  | Backfilling & Warrning Tape (72.00% Completed) | 68d | 2026-06-29 A | 2026-09-15 A | B3.33 14 13-103 FF | 100% |  |
| B3.33 14 13-91_R |  | Excavation(Rem) | 3d | 2026-10-07 | 2026-10-10 | B3.33 14 13.01.0103, B3.33 14 13-91 |  | 15.44d |
| B3.33 14 13-95_R |  | Sand Bedding(Rem) | 3d | 2026-10-07 | 2026-10-10 | B3.33 14 13-91_R FF, B3.33 14 13-95 |  | 15.72d |
| B3.33 14 13-99_R |  | Pipe Laying(Rem) | 3d | 2026-10-07 | 2026-10-10 | B3.33 14 13-95_R FF, B3.33 14 13-99 |  | 15.72d |
| B3.33 14 13-107_R |  | Backfilling & Warrning Tape(Rem) | 2.4d | 2026-10-07 | 2026-10-10 | B3.33 14 13-103_R FF, B3.33 14 13-107 |  | 15.72d |
| B3.33 14 13-103_R |  | Embedment & Test(Rem) | 2.12d | 2026-10-07 | 2026-10-10 | B3.33 14 13-99_R FF, B3.33 14 13-103 |  | 15.72d |
|  | Depth: 1.51m - 2.5m | **Depth: 1.51m - 2.5m** |  | 2026-06-10 | 2026-10-11 |  |  |  |
| B3.33 14 13-93 |  | Excavation (72.00% Completed) | 84d | 2026-06-10 A | 2026-09-15 A | B3.33 14 13-91 SS | 100% |  |
| B3.33 14 13-97 |  | Sand Bedding (72.00% Completed) | 82d | 2026-06-13 A | 2026-09-15 A | B3.33 14 13-93 FF | 100% |  |
| B3.33 14 13-101 |  | Pipe Laying (72.00% Completed) | 79d | 2026-06-16 A | 2026-09-15 A | B3.33 14 13-97 FF | 100% |  |
| B3.33 14 13-105 |  | Embedment & Test (72.00% Completed) | 77d | 2026-06-18 A | 2026-09-15 A | B3.33 14 13-101 FF | 100% |  |
| B3.33 14 13-109 |  | Backfilling & Warrning Tape (72.00% Completed) | 74d | 2026-06-22 A | 2026-09-15 A | B3.33 14 13-105 SS | 100% |  |
| B3.33 14 13-101_R |  | Pipe Laying(Rem) | 3d | 2026-10-07 | 2026-10-10 | B3.33 14 13-97_R FF, B3.33 14 13-101 |  | 15.44d |
| B3.33 14 13-93_R |  | Excavation(Rem) | 3d | 2026-10-07 | 2026-10-10 | B3.33 14 13-91_R SS, B3.33 14 13-93 |  | 15.44d |
| B3.33 14 13-97_R |  | Sand Bedding(Rem) | 3d | 2026-10-07 | 2026-10-10 | B3.33 14 13-93_R FF, B3.33 14 13-97 |  | 15.44d |
| B3.33 14 13-105_R |  | Embedment & Test(Rem) | 2.12d | 2026-10-07 | 2026-10-10 | B3.33 14 13-101_R FF, B3.33 14 13-105 |  | 15.44d |
| B3.33 14 13-109_R |  | Backfilling & Warrning Tape(Rem) | 2.4d | 2026-10-07 | 2026-10-11 | B3.33 14 13-105_R SS, B3.33 14 13-109 |  | 15.44d |
|  | Fire Fighting | **Fire Fighting Network** |  | 2026-09-20 | 2026-12-09 |  |  |  |
|  | HDPE | **HDPE Pipes** |  | 2026-09-20 | 2026-12-03 |  |  |  |
|  | ?250mm | **?250mm** |  | 2026-09-20 | 2026-12-03 |  |  |  |
|  | Depth: 0.0m - 1.5m | **Depth: 0.0m - 1.5m** |  | 2026-09-20 | 2026-12-03 |  |  |  |
| B3.1. 33 14 13-1191 |  | Excavation | 4d | 2026-09-20 A | 2026-09-24 A | B3.33 14 13-91_R, B3.33 14 13-93_R | 100% |  |
| B3.1. 33 14 13-1195 |  | Sand Bedding | 4d | 2026-09-26 A | 2026-09-29 A | B3.1. 33 14 13-1191 | 100% |  |
| B3.1. 33 14 13-1199 |  | Pipe Laying | 4d | 2026-09-30 A | 2026-10-04 A | B3.1. 33 14 13-1195 | 100% |  |
| B3.1. 33 14 13-11103 |  | Embedment & Test | 6d | 2026-10-03 A | 2026-10-05 A | B3.1. 33 14 13-1199 | 100% |  |
| B3.1. 33 14 13-11107 |  | Backfilling & Warrning Tape | 5d | 2026-11-29 | 2026-12-03 | B3.1. 33 14 13-11103, B3.33 14 19.01.fh33, B3.33 05 63.02.79, B3.33 14 19.01.fh48_R, B3.33 05 63.02.64 |  | 53.32d |
|  | Depth: 1.51m - 2.5m | **Depth: 1.51m - 2.5m** |  | 2026-10-11 | 2026-11-24 |  |  |  |
| B3.1. 33 14 13-1193 |  | Excavation | 4d | 2026-10-11 | 2026-10-14 | B3.33 14 13-91_R, B3.33 14 13-93_R |  | 53.32d |
| B3.1. 33 14 13-1197 |  | Sand Bedding | 4d | 2026-10-15 | 2026-10-19 | B3.1. 33 14 13-1193 |  | 53.32d |
| B3.1. 33 14 13-11101 |  | Pipe Laying | 4d | 2026-10-20 | 2026-10-24 | B3.1. 33 14 13-1197 |  | 53.32d |
| B3.1. 33 14 13-11105 |  | Embedment & Test | 6d | 2026-10-25 | 2026-10-31 | B3.1. 33 14 13-11101 |  | 53.32d |
| B3.1. 33 14 13-11109 |  | Backfilling & Warrning Tape | 5d | 2026-11-19 | 2026-11-24 | B3.1. 33 14 13-11105, B3.1. 33 14 13-20, B3.1. 33 14 13-22, B3.1. 33 14 13-1117, B3.33 05 63.02.46 |  | 66.32d |
|  | Valves & Chambers | **Valves & Chambers** |  | 2026-11-01 | 2026-11-28 |  |  |  |

| ID | WBS | Task | Duration | Start | Finish | Predecessors | Complete | Total float |
| --- | --- | --- | --- | --- | --- | --- | --- | --- |
|  | 2 | **Air Valves** |  | 2026-11-01 | 2026-11-28 |  |  |  |
|  | 4 | **Air valves on less than 315 mm. (In Chamber)** |  | 2026-11-01 | 2026-11-28 |  |  |  |
| B3.33 05 63.02.62 |  | Land Adjustment & Compaction | 4d | 2026-11-01 | 2026-11-04 | B3.1. 33 14 13-11105, B3.1. 33 14 13-11103 |  | 53.32d |
| B3.33 05 63.02.60 |  | Foundations | 5d | 2026-11-05 | 2026-11-10 | B3.33 05 63.02.62 |  | 53.32d |
| B3.33 05 63.02.63 |  | Chambers Walls Conc Cast In Situ | 5d | 2026-11-11 | 2026-11-16 | B3.33 05 63.02.60 |  | 53.32d |
| B3.33 05 63.02.61 |  | Chamber Curing, Finishing & Steel Cover | 6d | 2026-11-17 | 2026-11-23 | B3.33 05 63.02.63 |  | 53.32d |
| B3.33 05 63.02.64 |  | Valve & Fitting Installation | 4d | 2026-11-24 | 2026-11-28 | B3.33 05 63.02.61 |  | 53.32d |
|  | 3 | **Fire Hydrant** |  | 2026-10-25 | 2026-12-09 |  |  |  |
| B3.33 14 19.01.fh35 |  | Riser Pipe & Flanged Fittings Installation | 4d | 2026-10-25 | 2026-10-28 | B3.1. 33 14 13-11101, B3.1. 33 14 13-1199 |  | 79.32d |
| B3.33 14 19.01.fh34 |  | Firehydrant Fixing/Installation | 5d | 2026-10-29 | 2026-11-03 | B3.33 14 19.01.fh35 |  | 79.32d |
| B3.33 14 19.01.fh36 |  | Backfilling & Compaction | 5d | 2026-12-05 | 2026-12-09 | B3.33 14 19.01.fh34, B3.1. 33 14 13-11107, B3.33 05 63.01.64, B3.33 05 63.02.84, DMM2-Proc-Delv-5908_R |  | 53.32d |
|  | Dry Networks | **Dry Networks** |  | 2026-09-02 | 2026-12-05 |  |  |  |
|  | MV | **Medium Voltage Network** |  | 2026-10-17 | 2026-11-02 |  |  |  |
|  | Duct Banks | **Duct Banks** |  | 2026-10-17 | 2026-11-02 |  |  |  |
|  | 2 Way | **2 Way** |  | 2026-10-17 | 2026-11-02 |  |  |  |
| B2.31 23 00.640 |  | Excavation | 4d | 2026-10-17 | 2026-10-21 | B5.33 31 00.01.02.38_R |  | 78.52d |
| B2.33 71 00.288 |  | Shuttering, Steel Fixing Incl. UPVC Pipe & Conc. Cast | 7d | 2026-10-21 | 2026-10-29 | B2.31 23 00.640 |  | 86.52d |
| B2.33 71 00.289 |  | Backfilling & Warrning Tape | 3d | 2026-10-29 | 2026-11-02 | B2.33 71 00.288 |  | 86.52d |
|  | LV Network | **Low Voltage Network** |  | 2026-10-10 | 2026-12-05 |  |  |  |
|  | Duct Banks | **Duct Banks** |  | 2026-10-21 | 2026-12-05 |  |  |  |
|  | 2 Way | **2 Way** |  | 2026-10-21 | 2026-12-05 |  |  |  |
| B2.33 71 00 02 112 |  | Excavation | 2d | 2026-10-21 | 2026-10-24 | B2.31 23 00.640 |  | 78.52d |
| B2.33 71 00 02 113 |  | Shuttering, Steel Fixing Incl. UPVC Pipe & Conc. Cast | 3d | 2026-10-24 | 2026-10-27 | B2.33 71 00 02 112 |  | 92.52d |
| B2.33 71 00 02 114 |  | Backfilling & Warrning Tape | 3d | 2026-12-02 | 2026-12-05 | B2.33 71 00 02 113, B2.33 71 00 02 144, B2.33 71 00 02 132, B2.33 71 00 02 135, B2.33 71 00 02 117, B2.33 71 00 02 120, B2.33 71 00 02 123 |  | 62.32d |
|  | 4 Way | **4 Way** |  | 2026-10-24 | 2026-11-02 |  |  |  |
| B2.33 71 00 02 115 |  | Excavation | 2d | 2026-10-24 | 2026-10-26 | B2.33 71 00 02 112 |  | 78.52d |
| B2.33 71 00 02 116 |  | Shuttering, Steel Fixing Incl. UPVC Pipe & Conc. Cast | 3d | 2026-10-26 | 2026-10-29 | B2.33 71 00 02 115 |  | 87.52d |
| B2.33 71 00 02 117 |  | Backfilling & Warrning Tape | 3d | 2026-10-29 | 2026-11-02 | B2.33 71 00 02 116 |  | 87.52d |
|  | 6 Way | **6 Way** |  | 2026-10-26 | 2026-11-04 |  |  |  |
| B2.33 71 00 02 118 |  | Excavation | 2d | 2026-10-26 | 2026-10-28 | B2.33 71 00 02 115 |  | 78.52d |
| B2.33 71 00 02 119 |  | Shuttering, Steel Fixing Incl. UPVC Pipe & Conc. Cast | 3d | 2026-10-28 | 2026-11-01 | B2.33 71 00 02 118 |  | 80.52d |
| B2.33 71 00 02 120 |  | Backfilling & Warrning Tape | 3d | 2026-11-01 | 2026-11-04 | B2.33 71 00 02 119 |  | 85.52d |
|  | 8 Way | **8 Way** |  | 2026-10-28 | 2026-11-07 |  |  |  |
| B2.33 71 00 02 121 |  | Excavation | 2d | 2026-10-28 | 2026-10-31 | B2.33 71 00 02 118 |  | 78.52d |
| B2.33 71 00 02 122 |  | Shuttering, Steel Fixing Incl. UPVC Pipe & Conc. Cast | 3d | 2026-10-31 | 2026-11-03 | B2.33 71 00 02 121 |  | 78.52d |
| B2.33 71 00 02 123 |  | Backfilling & Warrning Tape | 3d | 2026-11-03 | 2026-11-07 | B2.33 71 00 02 122 |  | 83.52d |
|  | Cables | **Cables** |  | 2026-10-10 | 2026-11-05 |  |  |  |
|  | 4C,10+1C,10mm2 | **4C,10+1C,10mm2** |  | 2026-10-10 | 2026-10-11 |  |  |  |
| B2.33 71 00 01 12 |  | Cable Pulling | 2d | 2026-10-10 | 2026-10-11 | B1.2.32 11 26.01.12_R |  | 98.32d |
|  | 4C,50+1C,25mm2 | **4C,50+1C,25mm2** |  | 2026-11-03 | 2026-11-05 |  |  |  |
| B2.33 71 00 01 13 |  | Cable Pulling | 2d | 2026-11-03 | 2026-11-05 | B2.33 71 00 01 12, B2.33 71 00 02 119, B2.33 71 00 02 122 |  | 78.52d |
|  | Street Lighting | **Street Lighting** |  | 2026-09-02 | 2026-11-12 |  |  |  |
|  | SL Poles | **SL Poles** |  | 2026-09-02 | 2026-11-10 |  |  |  |
|  | Pole (10 M Sngl Arm) | **Pole (10 M Single Arm)** |  | 2026-09-02 | 2026-10-15 |  |  |  |
| B2.33 71 16.71 |  | Excavation (74.36% Completed) | 11.2d | 2026-09-02 A | 2026-09-15 A | B3.33 14 13-109 SS, B3.33 14 13-107 SS | 100% |  |
| B2.33 71 16.72 |  | PC & RC Foundation (74.36% Completed) | 10.2d | 2026-09-03 A | 2026-09-15 A | B2.33 71 16.71 SS | 100% |  |
| B2.33 71 16.73 |  | Lighting Poles Installation Incl power box, Cables (74.36% Completed) | 9.2d | 2026-09-05 A | 2026-09-15 A | B2.33 71 16.72 SS | 100% |  |
| B2.33 71 16.71_R |  | Excavation(Rem) | 2d | 2026-10-07 | 2026-10-10 | B3.33 14 13-109_R SS, B3.33 14 13-107_R SS, B2.33 71 16.71 |  | 15.44d |
| B2.33 71 16.72_R |  | PC & RC Foundation(Rem) | 2d | 2026-10-07 | 2026-10-10 | B2.33 71 16.71_R SS, B2.33 71 16.72 |  | 15.44d |
| B2.33 71 16.73_R |  | Lighting Poles Installation Incl power box, Cables(Rem) | 2d | 2026-10-07 | 2026-10-10 | B2.33 71 16.72_R SS, B2.33 71 16.73 |  | 15.44d |
| B2.26.56.19.11 |  | Lighting Luminares Inst | 2d | 2026-10-10 | 2026-10-12 | B2.33 71 16.73_R |  | 15.44d |
| B2.33 71 16.74 |  | Backfilling, Grouting & Chamfering | 3d | 2026-10-12 | 2026-10-15 | B2.26.56.19.11 |  | 15.44d |
|  | Pole (10 M Dbl Arm) | **Pole (10 M Double Arm)** |  | 2026-09-05 | 2026-10-24 |  |  |  |
| B2.33 71 16.75 |  | Excavation (74.36% Completed) | 9.2d | 2026-09-05 A | 2026-09-15 A | B2.33 71 16.71 SS | 100% |  |
| B2.33 71 16.76 |  | PC & RC Foundation (74.36% Completed) | 8.2d | 2026-09-06 A | 2026-09-15 A | B2.33 71 16.75 SS | 100% |  |
| B2.33 71 16.77 |  | Lighting Poles Installation Incl power box, Cables (74.36% Completed) | 6.2d | 2026-09-08 A | 2026-09-15 A | B2.33 71 16.76 SS | 100% |  |
| B2.33 71 16.75_R |  | Excavation(Rem) | 2d | 2026-10-17 | 2026-10-18 | B2.33 71 00 02 154 FF, B2.33 71 16.71_R SS, B2.33 71 16.75 |  | 11.32d |
| B2.33 71 16.76_R |  | PC & RC Foundation(Rem) | 2d | 2026-10-17 | 2026-10-18 | B2.33 71 16.75_R SS, B2.33 71 16.76 |  | 11.32d |
| B2.33 71 16.77_R |  | Lighting Poles Installation Incl power box, Cables(Rem) | 2d | 2026-10-17 | 2026-10-18 | B2.33 71 16.76_R SS, B2.33 71 16.77 |  | 11.32d |
| B2.26.56.19.12 |  | Lighting Luminares Inst | 2d | 2026-10-19 | 2026-10-20 | B2.33 71 16.77_R |  | 11.32d |
| B2.33 71 16.78 |  | Backfilling, Grouting & Chamfering | 3d | 2026-10-21 | 2026-10-24 | B2.26.56.19.12, B2.33 71 16.74 |  | 11.32d |
|  | Pole (12 M Sngl Arm) | **Pole (12 M Single Arm)** |  | 2026-09-03 | 2026-11-10 |  |  |  |
| B2.33 71 16.116 |  | Excavation (74.36% Completed) | 10.2d | 2026-09-03 A | 2026-09-15 A | B2.33 71 16.75 SS | 100% |  |
| B2.33 71 16.126 |  | PC & RC Foundation (74.36% Completed) | 9.2d | 2026-09-05 A | 2026-09-15 A | B2.33 71 16.116 SS | 100% |  |
| B2.33 71 16.136 |  | Lighting Poles Installation Incl power box, Cables (74.36% Completed) | 6.2d | 2026-09-08 A | 2026-09-15 A | B2.33 71 16.126 SS | 100% |  |
| B2.33 71 16.116_R |  | Excavation(Rem) | 2d | 2026-11-03 | 2026-11-04 | B2.33 71 19 182 FF, B2.33 71 16.78 FF, B2.33 71 16.75_R SS, B2.33 71 16.116 |  | 1.32d |
| B2.33 71 16.126_R |  | PC & RC Foundation(Rem) | 2d | 2026-11-03 | 2026-11-04 | B2.33 71 16.116_R SS, B2.33 71 16.126 |  | 1.32d |
| B2.33 71 16.136_R |  | Lighting Poles Installation Incl power box, Cables(Rem) | 2d | 2026-11-03 | 2026-11-04 | B2.33 71 16.126_R SS, B2.33 71 16.136 |  | 1.32d |
| B2.26.56.19.29 |  | Lighting Luminares Inst | 2d | 2026-11-05 | 2026-11-07 | B2.33 71 16.136_R |  | 1.32d |
| B2.33 71 16.146 |  | Backfilling, Grouting & Chamfering | 3d | 2026-11-08 | 2026-11-10 | B2.26.56.19.29 |  | 1.32d |

| ID | WBS | Task | Duration | Start | Finish | Predecessors | Complete | Total float |
| --- | --- | --- | --- | --- | --- | --- | --- | --- |
|  | Earthing | **Earthing** |  | 2026-11-05 | 2026-11-12 |  |  |  |
| B2.33 71 19 38 |  | Land Adjustment | 2d | 2026-11-05 | 2026-11-07 | B2.33 71 16.136_R, B2.33 71 16.67 |  | 5.32d |
| B2.33 71 19 39 |  | Earth Rods & Conduits | 3d | 2026-11-08 | 2026-11-10 | B2.33 71 19 38 |  | 5.32d |
| B2.33 71 19 40 |  | Backfilling | 2d | 2026-11-11 | 2026-11-12 | B2.33 71 19 39, B2.33 71 00 02 75 |  | 5.32d |
|  | Earth & Road Works | **Earth & Road Works** |  | 2025-12-11 | 2026-12-16 |  |  |  |
|  | Earth Works | **Earth Works** |  | 2025-12-11 | 2026-03-16 |  |  |  |
| B1.2.31 23 16.01.12 |  | Roadway Excavation | 74.87d | 2025-12-11 A | 2026-03-16 A | DMM2-Eng-MS-78 | 100% |  |
| B1.2.31 23 23.01.12 |  | Engineering Backfiling | 74.03d | 2025-12-11 A | 2026-03-15 A | B1.2.31 23 16.01.12 | 100% |  |
|  | Earth Layers | **Earth Layers** |  | 2026-03-15 | 2026-10-08 |  |  |  |
| B1.2.32 11 13.01.12 |  | Subgrade (65.00% Completed) | 149.97d | 2026-03-15 A | 2026-09-15 A | B1.2.31 23 23.01.12 | 100% |  |
| B1.2.32 11 23.01.12 |  | Aggregate Base Course | 2d | 2026-05-21 A | 2026-05-24 A | B1.2.32 11 13.01.12 SS+5d, B1.2.32 11 13.01.12 FF+2d | 100% |  |
| B1.2.32 11 23.01.18 |  | DRAINAGE LAYERS CRUSHED STONE (AGGREGATE) | 44d | 2026-06-14 A | 2026-08-03 A | B1.2.32 11 23.01.12 | 100% |  |
| B1.2.32 11 13.01.12_R |  | Subgrade(Rem) | 2d | 2026-10-07 | 2026-10-08 | B1.2.31 23 23.01.12, B1.2.32 11 13.01.12 |  | 50.18d |
|  | Interlock | **Interlock** |  | 2026-11-18 | 2026-11-21 |  |  |  |
| B1.2.32 14 13.13.12 |  | 60mm thick - Interlocking Block Pavers | 3d | 2026-11-18 | 2026-11-21 | B2.33 71 19 40, B1.2.32 14 13.13.6 |  | 1.32d |
|  | Curbstone | **Curbstone** |  | 2026-11-22 | 2026-12-09 |  |  |  |
|  | Pre Install | **Pre-Installation** |  | 2026-11-22 | 2026-11-28 |  |  |  |
| B2.31 23 00.331 |  | Excavation | 2d | 2026-11-22 | 2026-11-23 | B1.2.32 14 13.13.12 |  | 1.32d |
| B1.2.32 14 13.13.212 |  | PCC | 2d | 2026-11-24 | 2026-11-25 | B2.31 23 00.331 |  | 1.32d |
| 32 16 13.0012 |  | Haunching | 2d | 2026-11-26 | 2026-11-28 | B1.2.32 14 13.13.212 |  | 1.32d |
|  | Installation | **Installation** |  | 2026-11-29 | 2026-12-07 |  |  |  |
| B1.2.32 16.13.01.12 |  | Curb Stone, Type K1 | 2d | 2026-11-29 | 2026-11-30 | 32 16 13.0012 |  | 1.32d |
| B1.2.32 16.13.02.11 |  | Dropped Curb, Type K3 | 1d | 2026-12-01 | 2026-12-01 | B1.2.32 16.13.01.12, 32 16 13.0012 |  | 1.32d |
| B1.2.32 16.13.03.12 |  | Edge Curb, Type K4 | 2d | 2026-12-02 | 2026-12-03 | B1.2.32 16.13.02.11, 32 16 13.0012 |  | 1.32d |
| B1.2.32 16.13.0412 |  | Heel Curb, Type K5 | 2d | 2026-12-05 | 2026-12-06 | B1.2.32 16.13.03.12, 32 16 13.0012 |  | 1.32d |
| B1.2.32 16.13.05.11 |  | Transition Curb | 1d | 2026-12-07 | 2026-12-07 | B1.2.32 16.13.0412, 32 16 13.0012 |  | 1.32d |
|  | Finishing | **Finishing** |  | 2026-12-08 | 2026-12-09 |  |  |  |
| 32 16 13.012 |  | Finishing, Fareface | 2d | 2026-12-08 | 2026-12-09 | B1.2.32 16.13.01.12, B1.2.32 16.13.02.11, B1.2.32 16.13.03.12, B1.2.32 16.13.0412, B1.2.32 16.13.05.11 |  | 1.32d |
|  | Asphalt Layers | **Asphalt Layers** |  | 2026-05-24 | 2026-12-12 |  |  |  |
| B1.2.32 11 26.01.12 |  | Bituminous Base Course including Prime Coat (MC1) and tack coat (RC2) (74.00% Completed) | 94.47d | 2026-05-24 A | 2026-09-15 A | B1.2.32 11 23.01.12 | 100% |  |
| B1.2.32 11 26.01.12_R |  | Bituminous Base Course including Prime Coat (MC1) and tack coat (RC2)(Rem) | 2d | 2026-10-07 | 2026-10-08 | B1.2.32 11 23.01.12, B1.2.32 11 26.01.12 |  | 54.32d |
| B1.2.32 12 16.01.12 |  | Bituminous concrete Wearing Course, including tack coat (RC2) | 2d | 2026-12-10 | 2026-12-12 | B1.2.32 11 26.01.12_R, B7.32 31 26.01-5, 32 16 13.012, 10 14 53.012 |  | 1.32d |
|  | Pavement Marking | **Pavement Marking** |  | 2026-12-13 | 2026-12-16 |  |  |  |
| B1.2.32 17 23.02.12 |  | Retroreflective Thermoplastic Yellow, Traffic lines | 2d | 2026-12-13 | 2026-12-14 | B1.2.32 12 16.01.12 |  | 52.32d |
| B1.2.32 17 23.01.12 |  | Retroreflective Thermoplastic White Traffic lines | 2d | 2026-12-15 | 2026-12-16 | B1.2.32 12 16.01.12, B1.2.32 17 23.02.12 |  | 52.32d |
|  | Traffic Signs | **Traffic Signs** |  | 2026-11-24 | 2026-12-16 |  |  |  |
|  | Pre Install | **Pre-Installation** |  | 2026-11-24 | 2026-11-25 |  |  |  |
| 10 14 53.012 |  | Foundation | 2d | 2026-11-24 | 2026-11-25 | B2.31 23 00.341 SS |  | 13.32d |
| B2.31 23 00.341 |  | Excavation | 1d | 2026-11-24 | 2026-11-24 | B2.31 23 00.331 |  | 5.32d |
|  | Installation | **Installation** |  | 2026-12-15 | 2026-12-16 |  |  |  |
| B1.2.10 14 53.0112 |  | 1 Sheet Alumenium, Single post | 2d | 2026-12-15 | 2026-12-16 | B1.2.32 17 23.02.12, B1.2.32 17 23.01.12 FF, B1.2.10 14 53.014, B1.2.10 14 14.01.4 |  | 52.32d |
|  | Landscape | **Landscape** |  | 2026-08-15 | 2026-12-05 |  |  |  |
|  | Fences | **Fences** |  | 2026-08-15 | 2026-12-05 |  |  |  |
|  | (ZATCA HCIS) | **Steel fence (ZATCA HCIS)** |  | 2026-08-15 | 2026-12-05 |  |  |  |
| B7.32 31 26.01-1 |  | Earthwork (0.00% Completed) | 28d | 2026-08-15 A | 2026-09-15 A | B1.2.32 11 23.01.18 | 100% |  |
| B7.32 31 26.01-3 |  | Foundation (0.00% Completed) | 25.1d | 2026-08-17 A | 2026-09-15 A | B7.32 31 26.01-1 SS | 100% |  |
| B7.32 31 26.01-1_R |  | Earthwork(Rem) | 5d | 2026-11-19 | 2026-11-24 | B2.31 23 00.341 FF, B7.32 31 26.01-1 |  | 5.32d |
| B7.32 31 26.01-3_R |  | Foundation(Rem) | 6d | 2026-11-19 | 2026-11-25 | B7.32 31 26.01-1_R SS, B7.32 31 26.01-3 |  | 5.32d |
| B7.32 31 26.01-5 |  | Fence Installation | 8d | 2026-11-26 | 2026-12-05 | B7.32 31 26.01-113, B7.32 31 26.01-3_R, B7.32 31 26.01-8 |  | 5.32d |
|  | Sewerage Lift ST | **Sewerage Lift Station** |  | 2025-12-07 | 2026-12-12 |  |  |  |
|  | 1 | **Site Preparation & Initial Earthworks** |  | 2025-12-07 | 2026-05-13 |  |  |  |
| B5.1.31 23 16.01.1 |  | Excavation for wet well & Chambers | 121d | 2025-12-07 A | 2026-05-09 A | B3.2.31 23 16.01, B1.1.31 23 23.162 | 100% |  |
| B5.1.31 23 16.01.3 |  | Embankment Backfiling | 9d | 2026-05-04 A | 2026-05-13 A | B5.1.31 23 16.01.1 | 100% |  |
|  | 11 | **Underground Concrete Structures & Waterproofing** |  | 2026-10-11 | 2026-10-22 |  |  |  |
| B5.1.31 23 16.01.13 |  | Reinforced Concrete Walls | 4d | 2026-10-11 | 2026-10-14 | B5.1.31 23 16.01.9_R |  | 15.32d |
| B5.1.31 23 16.01.15 |  | Water proofing Membrane with protection board | 2d | 2026-10-19 | 2026-10-20 | B5.1.31 23 16.01.13, B5.1.31 23 16.01.19 |  | 12.32d |
| B5.1.31 23 16.01.21 |  | Backfilling around underground chambers | 2d | 2026-10-21 | 2026-10-22 | B5.1.31 23 16.01.15 |  | 12.32d |
|  | 2 | **Sub-Structure & Foundations** |  | 2026-05-10 | 2026-10-12 |  |  |  |
| B5.1.31 23 16.01.7 |  | 100 mm thickness lean concrete | 4d | 2026-05-10 A | 2026-05-13 A | B5.1.31 23 16.01.3 | 100% |  |
| B5.1.31 23 16.01.9 |  | Footings for wet well & Chambers (30.00% Completed) | 66d | 2026-07-01 A | 2026-09-15 A | B5.1.31 23 16.01.7 | 100% |  |
| B5.1.31 23 16.01.9_R |  | Footings for wet well & Chambers(Rem) | 3d | 2026-10-07 | 2026-10-10 | B5.1.31 23 16.01.7, B5.1.31 23 16.01.9 |  | 12.32d |
| B5.1.31 23 16.01.11 |  | Slab on grade and ground beams | 2d | 2026-10-11 | 2026-10-12 | B5.1.31 23 16.01.9_R |  | 12.32d |
|  | 10 | **Superstructure - Control Room & Roof Slabs** |  | 2026-10-13 | 2026-10-24 |  |  |  |
| B5.1.31 23 16.01.17 |  | Reinforced Concrete Columns | 3d | 2026-10-13 | 2026-10-15 | B5.1.31 23 16.01.11 |  | 12.32d |
| B5.1.31 23 16.01.23 |  | Concrete masonry unit (200mm) walls | 3d | 2026-10-17 | 2026-10-19 | B5.1.31 23 16.01.11, B5.1.31 23 16.01.17 |  | 15.32d |
| B5.1.31 23 16.01.27 |  | Roof Slab for wet well & Chambers | 4d | 2026-10-20 | 2026-10-24 | B5.1.31 23 16.01.13, B5.1.31 23 16.01.23 |  | 15.32d |
|  | 12 | **Waterproofing, Roofing & External Enclosure** |  | 2026-10-20 | 2026-11-14 |  |  |  |
| B5.1.31 23 16.01.29 |  | External plastering | 4d | 2026-10-20 | 2026-10-24 | B5.1.31 23 16.01.23 |  | 30.32d |
| B5.1.31 23 16.01.39 |  | Water proofing Membrane for roof | 3d | 2026-10-25 | 2026-10-27 | B5.1.31 23 16.01.27 |  | 15.32d |
| B5.1.31 23 16.01.55 |  | Vapor retarders for roof | 3d | 2026-10-28 | 2026-10-31 | B5.1.31 23 16.01.39 |  | 15.32d |

| ID | WBS | Task | Duration | Start | Finish | Predecessors | Total float |
| --- | --- | --- | --- | --- | --- | --- | --- |
| B5.1.31 23 16.01.71 |  | Geotextile membrane | 3d | 2026-11-01 | 2026-11-03 | B5.1.31 23 16.01.55, DMM2-Proc-Delv-7439_R | 15.32d |
| B5.1.31 23 16.01.89 |  | Gravel for Control Room Roof | 3d | 2026-11-04 | 2026-11-07 | B5.1.31 23 16.01.71 | 15.32d |
| B5.1.31 23 16.01.99 |  | 50mm slab on grade | 3d | 2026-11-08 | 2026-11-10 | B5.1.31 23 16.01.89, B5.1.31 23 16.01.25 | 15.32d |
| B5.1.31 23 16.01.107 |  | Stone copping 30mm thickness | 3d | 2026-11-11 | 2026-11-14 | B5.1.31 23 16.01.99 | 15.32d |
|  | 13 | **Internal Chamber Works (Wet Well, Valve, Screening)** |  | 2026-10-24 | 2026-11-18 |  |  |
| B5.1.31 23 16.01.31 |  | Sloped screed for internal floors for wet well and valve chamber | 2d | 2026-10-24 | 2026-10-25 | B5.1.31 23 16.01.13, B5.1.31 23 16.01.21 | 12.32d |
| B5.1.31 23 16.01.41 |  | Sloped screed for internal floors for Screening chamber | 3d | 2026-10-26 | 2026-10-28 | B5.1.31 23 16.01.13, B5.1.31 23 16.01.21, B5.1.31 23 16.01.31 | 17.32d |
| B5.1.31 23 16.01.43 |  | Epoxy paint for internal side and floors for wet well and valve chamber | 2d | 2026-10-26 | 2026-10-27 | B5.1.31 23 16.01.31 | 12.32d |
| B5.1.31 23 16.01.57 |  | Epoxy paint for internal side and floors for Screening chamber | 3d | 2026-10-29 | 2026-11-01 | B5.1.31 23 16.01.41, B5.1.31 23 16.01.43 | 17.32d |
| B5.1.31 23 16.01.73 |  | Stainless steel A36 ladders for screening chamber for screening chamber, wet well & valve chamber | 3d | 2026-11-02 | 2026-11-04 | B5.1.31 23 16.01.43, B5.1.31 23 16.01.57, DMM2-Proc-Delv-7432 | 19.32d |
| B5.1.31 23 16.01.91 |  | Stainless steel A36 covers | 2d | 2026-11-05 | 2026-11-07 | B5.1.31 23 16.01.73, DMM2-Proc-Delv-7433 | 19.32d |
| B5.1.31 23 16.01.101 |  | Medium duty lockable D.I. cover | 2d | 2026-11-17 | 2026-11-18 | B5.1.31 23 16.01.73, B5.1.31 23 16.01.91, DMM2-Proc-Delv-7433, B5.1.31 23 16.01.95 | 11.32d |
|  | 3 | **Control Room Internal Finishes** |  | 2026-10-17 | 2026-11-21 |  |  |
| B5.1.31 23 16.01.19 |  | Vapor retarders below slab on grade | 2d | 2026-10-17 | 2026-10-18 | B5.1.31 23 16.01.11, B5.1.31 23 16.01.17 | 12.32d |
| B5.1.31 23 16.01.25 |  | Water proofing Paint below slab on grade | 3d | 2026-10-19 | 2026-10-21 | B5.1.31 23 16.01.19 | 29.32d |
| B5.1.31 23 16.01.45 |  | Internal plastering | 3d | 2026-10-28 | 2026-10-31 | B5.1.31 23 16.01.23, B5.1.31 23 16.01.27, B5.1.31 23 16.01.43 | 12.32d |
| B5.1.31 23 16.01.59 |  | Internal painting (Acrylic) | 3d | 2026-11-01 | 2026-11-03 | B5.1.31 23 16.01.45, DMM2-Proc-Delv-7434 | 12.32d |
| B5.1.31 23 16.01.61 |  | External painting | 3d | 2026-11-11 | 2026-11-14 | B5.1.31 23 16.01.29, B5.1.31 23 16.01.45, DMM2-Proc-Delv-7434, B5.1.31 23 16.01.107 SS | 15.32d |
| B5.1.31 23 16.01.75 |  | Steel Door SD1 | 2d | 2026-11-11 | 2026-11-12 | B5.1.31 23 16.01.59, B5.1.31 23 16.01.61 SS | 16.32d |
| B5.1.31 23 16.01.97 |  | Aluminum signage | 2d | 2026-11-19 | 2026-11-21 | B5.1.31 23 16.01.59, B5.1.31 23 16.01.61, B5.1.31 23 16.01.75, DMM2-Proc-Delv-7435, B5.1.31 23 16.01.101 | 11.32d |
|  | 4 | **Mechanical & Process Equipment Installation** |  | 2026-10-25 | 2026-11-25 |  |  |
| B5.1.31 23 16.01.47 |  | JIB Crane installation | 3d | 2026-10-25 | 2026-10-27 | B5.1.31 23 16.01.27, DMM2-Proc-Delv-4518_R | 18.32d |
| B5.1.31 23 16.01.33 |  | Buried ductile iron pipes installation | 3d | 2026-11-02 | 2026-11-04 | B5.1.31 23 16.01.21, DMM2-Proc-Delv-4458, DMM2-Proc-Delv-4588 | 11.32d |
| B5.1.31 23 16.01.49 |  | Double flanged ductile iron pipe installation | 2d | 2026-11-05 | 2026-11-07 | B5.1.31 23 16.01.21, B5.1.31 23 16.01.33, DMM2-Proc-Delv-4448_R | 11.32d |
| B5.1.31 23 16.01.63 |  | Submersible - wet installed pump installation | 3d | 2026-11-08 | 2026-11-10 | B5.1.31 23 16.01.43, B5.1.31 23 16.01.47, DMM2-Proc-Delv-4438, B5.1. 26 32 12 .05 | 9.32d |
| B5.1.31 23 16.01.65 |  | Manually operated Gate Valve DN150 installation | 2d | 2026-11-08 | 2026-11-09 | B5.1.31 23 16.01.33, B5.1.31 23 16.01.49, B5.1.31 23 16.01.47 | 11.32d |
| B5.1.31 23 16.01.77 |  | Non-return Valve DN150 installation | 2d | 2026-11-10 | 2026-11-11 | B5.1.31 23 16.01.33, B5.1.31 23 16.01.49, B5.1.31 23 16.01.65, DMM2-Proc-Delv-4478_R, B5.1.31 23 16.01.65 FF | 11.32d |
| B5.1.31 23 16.01.111 |  | Scupper installation | 3d | 2026-11-11 | 2026-11-14 | B5.1.31 23 16.01.99, DMM2-Proc-Delv-7447, DMM2-Proc-Delv-3638 | 17.32d |
| B5.1.31 23 16.01.79 |  | Basket screens | 3d | 2026-11-11 | 2026-11-14 | B5.1.31 23 16.01.43, B5.1.31 23 16.01.57, B5.1.31 23 16.01.63, DMM2-Proc-Delv-4488 | 9.32d |
| B5.1.31 23 16.01.93 |  | Odor Control Unit | 2d | 2026-11-15 | 2026-11-16 | B5.1.31 23 16.01.43, B5.1.31 23 16.01.57, B5.1.31 23 16.01.63, B5.1.31 23 16.01.79, DMM2-Proc-Delv-4498, B5.1.31 23 16.01.77 | 9.32d |
| B5.1.31 23 16.01.95 |  | Screening container | 2d | 2026-11-15 | 2026-11-16 | B5.1.31 23 16.01.79, DMM2-Proc-Delv-7446 | 11.32d |
| B5.1.31 23 16.01.103 |  | Surge Tank | 2d | 2026-11-17 | 2026-11-18 | B5.1.31 23 16.01.43, B5.1.31 23 16.01.57, B5.1.31 23 16.01.63, B5.1.31 23 16.01.93, DMM2-Proc-Delv-3778, DMM2-Proc-Delv-4508, DMM2-Proc-Delv-4588 | 9.32d |
| B5.1.31 23 16.01.109 |  | Electrically operated penstock installation | 2d | 2026-11-19 | 2026-11-21 | B5.1.31 23 16.01.43, B5.1.31 23 16.01.57, B5.1.31 23 16.01.63, B5.1.31 23 16.01.103, DMM2-Proc-Delv-7445 | 9.32d |
| B5.1.31 23 16.01.115 |  | DX wall mounted Split/AC installation | 2d | 2026-11-22 | 2026-11-23 | B5.1.31 23 16.01.59, B5.1.31 23 16.01.109 | 9.32d |
| B5.1.31 23 16.01.119 |  | Fire extinguishers (CO2, Powder) placement | 2d | 2026-11-24 | 2026-11-25 | B5.1.31 23 16.01.59, B5.1.31 23 16.01.115, B5.1.31 23 16.01.85, B5.1.31 23 16.01.97, B5.1.31 23 16.01.111 | 9.32d |
|  | 5 | **Electrical & Control Systems** |  | 2026-10-07 | 2026-12-12 |  |  |
| B5.1.31 23 16.01.5 |  | Grounding and lightning system | 3d | 2026-10-07 | 2026-10-10 | B5.1.31 23 16.01.1 | 36.32d |
| B5.1.31 23 16.01.35 |  | 4Cx 95mm2 Cable from SEC/Generator to ATS and MCC-SPS | 3d | 2026-10-24 | 2026-10-26 | B5.1.31 23 16.01.21, B5.1.31 23 16.01.5, B5.1.31 23 16.01.21 FF | 25.32d |
| B5.1. 26 32 12 .05 |  | Positive displacement rotary type pump installation | 3d | 2026-11-04 | 2026-11-07 | B5.1.31 23 16.01.13, B5.1.31 23 16.01.27, DMM2-Proc-Delv-4628_R | 9.32d |
| B5.1.31 23 16.01.81 |  | MCC - 160AT/250AF, 400V, 3PH, 60HZ | 2d | 2026-11-04 | 2026-11-05 | B5.1.31 23 16.01.59, DMM2-Proc-Delv-4558 | 12.32d |
| B5.1. 26 32 12 .03 |  | ATS | 2d | 2026-11-07 | 2026-11-08 | B5.1.31 23 16.01.59, B5.1.31 23 16.01.81, DMM2-Proc-Delv-4608_R | 12.32d |
| B5.1.31 23 16.01.105 |  | DB-SPS Panel | 2d | 2026-11-09 | 2026-11-10 | B5.1.31 23 16.01.59, B5.1. 26 32 12 .03 | 12.32d |
| B5.1. 26 29 00 .02 |  | Local Control Panel, IP 65 | 2d | 2026-11-11 | 2026-11-12 | B5.1.31 23 16.01.105, DMM2-Proc-Delv-4568 | 12.32d |
| B5.1.31 23 16.01.51 |  | Standby Diesel Generator Set installation | 3d | 2026-11-11 | 2026-11-14 | B5.1.31 23 16.01.21, B5.1.31 23 16.01.5, B5.1.31 23 16.01.35, DMM2-Proc-Delv-4588, DMM2-Proc-Delv-4458, DMM2-Proc-Delv-7366, DMM2-Proc-Delv-4508 | 12.32d |
| B5.1.31 23 16.01.113 |  | ELP Panels | 2d | 2026-11-14 | 2026-11-15 | B5.1.31 23 16.01.59, B5.1.31 23 16.01.105, B5.1. 26 29 00 .02 | 12.32d |
| B5.1.31 23 16.01.67 |  | 2.084m3 capacity underground fuel tank installation | 2d | 2026-11-15 | 2026-11-16 | B5.1.31 23 16.01.1, B5.1.31 23 16.01.21, B5.1.31 23 16.01.51, DMM2-Proc-Delv-7454 | 12.32d |
| B5.1.31 23 16.01.117 |  | Isolator/disconnect switches installation | 2d | 2026-11-16 | 2026-11-17 | B5.1.31 23 16.01.59, B5.1.31 23 16.01.113 | 12.32d |
| B5.1.31 23 16.01.83 |  | Manually operated fuel pump installation | 2d | 2026-11-17 | 2026-11-18 | B5.1.31 23 16.01.67, B5.1.31 23 16.01.21, B5.1.31 23 16.01.11, DMM2-Proc-Delv-4598_R | 12.32d |
| B5.1.31 23 16.01.137 |  | Surfaced Mounted Light | 1d | 2026-11-24 | 2026-11-24 | B5.1.31 23 16.01.59, B5.1.31 23 16.01.121, B5.1.31 23 16.01.123, B5.1.31 23 16.01.125, B5.1.31 23 16.01.127, B5.1.31 23 16.01.129, B5.1.31 23 16.01.131, B5.1.31 23 16.01.133, B5.1.31 23 16.01.135, DMM2-Proc-Delv-7458, B5.1.31 23 16.01.119 SS | 9.32d |
| B5.1.31 23 16.01.139 |  | 7-meter single arm light pole | 2d | 2026-11-25 | 2026-11-26 | B5.1.31 23 16.01.59, B5.1.31 23 16.01.121, B5.1.31 23 16.01.123, B5.1.31 23 16.01.125, B5.1.31 23 16.01.127, B5.1.31 23 16.01.129, B5.1.31 23 16.01.131, B5.1.31 23 16.01.133, B5.1.31 23 16.01.135, B5.1.31 23 16.01.137, DMM2-Proc-Delv-7457 | 9.32d |
| B5.1.31 23 16.01.141 |  | Socket Outlets installation | 2d | 2026-11-28 | 2026-11-29 | B5.1.31 23 16.01.59, B5.1.31 23 16.01.121, B5.1.31 23 16.01.123, B5.1.31 23 16.01.125, B5.1.31 23 16.01.127, B5.1.31 23 16.01.129, B5.1.31 23 16.01.131, B5.1.31 23 16.01.133, B5.1.31 23 16.01.135, B5.1.31 23 16.01.139 | 9.32d |
| B5.1.31 23 16.01.143 |  | Fire Alarm System | 2d | 2026-11-30 | 2026-12-01 | B5.1.31 23 16.01.59, B5.1.31 23 16.01.121, B5.1.31 23 16.01.123, B5.1.31 23 16.01.125, B5.1.31 23 16.01.127, B5.1.31 23 16.01.129, B5.1.31 23 16.01.131, B5.1.31 23 16.01.133, B5.1.31 23 16.01.135, B5.1.31 23 16.01.141 | 9.32d |
| B5.1.31 23 16.01.145 |  | PLC system | 3d | 2026-12-02 | 2026-12-05 | B5.1.31 23 16.01.59, B5.1.31 23 16.01.121, B5.1.31 23 16.01.123, B5.1.31 23 16.01.125, B5.1.31 23 16.01.127, B5.1.31 23 16.01.129, B5.1.31 23 16.01.131, B5.1.31 23 16.01.133, B5.1.31 23 16.01.135, B5.1.31 23 16.01.63, B5.1.31 23 16.01.79, B5.1.31 23 16.01.93, B5.1.31 23 16.01.103, B5.1.31 23 16.01.109, B5.1.31 23 16.01.143, DMM2-Proc-Delv-4668_R | 9.32d |
| B5.1.31 23 16.01.147 |  | Process Control Wiring | 3d | 2026-12-06 | 2026-12-08 | B5.1.31 23 16.01.59, B5.1.31 23 16.01.121, B5.1.31 23 16.01.123, B5.1.31 23 16.01.125, B5.1.31 23 16.01.127, B5.1.31 23 16.01.129, B5.1.31 23 16.01.131, B5.1.31 23 16.01.133, B5.1.31 23 16.01.135, B5.1.31 23 16.01.63, B5.1.31 23 16.01.79, B5.1.31 23 16.01.93, B5.1.31 23 16.01.103, B5.1.31 23 16.01.109, B5.1.31 23 16.01.143, B5.1.31 23 16.01.145, B5.1.31 23 16.01.145 FF, DMM2-Proc-Delv-7460 | 9.32d |
| B5.1.31 23 16.01.149 |  | Instrumentation for Process Systems | 3d | 2026-12-09 | 2026-12-12 | B5.1.31 23 16.01.59, B5.1.31 23 16.01.121, B5.1.31 23 16.01.123, B5.1.31 23 16.01.125, B5.1.31 23 16.01.127, B5.1.31 23 16.01.129, B5.1.31 23 16.01.131, B5.1.31 23 16.01.133, B5.1.31 23 16.01.135, B5.1.31 23 16.01.63, B5.1.31 23 16.01.79, B5.1.31 23 16.01.93, B5.1.31 23 16.01.103, B5.1.31 23 16.01.109, B5.1.31 23 16.01.143, B5.1.31 23 16.01.147, B5.1.31 23 16.01.147 FF, DMM2-Proc-Delv-7461 | 9.32d |
|  | LV Cables | **LV Cables** |  | 2026-11-22 | 2026-11-23 |  |  |
| B5.1.31 23 16.01.121 |  | 4Cx 10mm2 Cu/XLPE/SWA/PVC from MCC-SPS to ELP | 1d | 2026-11-22 | 2026-11-22 | B5.1.31 23 16.01.63, B5.1.31 23 16.01.79, B5.1.31 23 16.01.93, B5.1.31 23 16.01.103, B5.1.31 23 16.01.109, B5.1.31 23 16.01.81, B5.1. 26 32 12 .03, B5.1.31 23 16.01.105, B5.1.31 23 16.01.113, B5.1.31 23 16.01.117, DMM2-Proc-Delv-4578_R | 9.32d |
| B5.1.31 23 16.01.123 |  | 4Cx 35mm2 + 1Cx16mm2 SUBMERGED RUBBER | 1d | 2026-11-22 | 2026-11-22 | B5.1.31 23 16.01.63, B5.1.31 23 16.01.79, B5.1.31 23 16.01.93, B5.1.31 23 16.01.103, B5.1.31 23 16.01.109, B5.1.31 23 16.01.81, B5.1. 26 32 12 .03, B5.1.31 23 16.01.105, B5.1.31 23 16.01.113, B5.1.31 23 16.01.117, B5.1.31 23 16.01.121 FF, DMM2-Proc-Delv-4578_R | 9.32d |
| B5.1.31 23 16.01.125 |  | 4Cx 10mm2 + 1Cx10mm2 Cu/XLPE/PVC FROM MCC-SPS to DB-SPS | 1d | 2026-11-22 | 2026-11-22 | B5.1.31 23 16.01.63, B5.1.31 23 16.01.79, B5.1.31 23 16.01.93, B5.1.31 23 16.01.103, B5.1.31 23 16.01.109, B5.1.31 23 16.01.81, B5.1. 26 32 12 .03, B5.1.31 23 16.01.105, B5.1.31 23 16.01.113, B5.1.31 23 16.01.117, B5.1.31 23 16.01.123 FF, DMM2-Proc-Delv-4578_R | 9.32d |
| B5.1.31 23 16.01.127 |  | 4Cx 10mm2 + 1Cx10mm2 Cu/XLPE/PVC FROM MCC-SPS to Penstok | 1d | 2026-11-22 | 2026-11-22 | B5.1.31 23 16.01.63, B5.1.31 23 16.01.79, B5.1.31 23 16.01.93, B5.1.31 23 16.01.103, B5.1.31 23 16.01.109, B5.1.31 23 16.01.81, B5.1. 26 32 12 .03, B5.1.31 23 16.01.105, B5.1.31 23 16.01.113, B5.1.31 23 16.01.117, B5.1.31 23 16.01.125 FF, DMM2-Proc-Delv-4578_R | 9.32d |
| B5.1.31 23 16.01.129 |  | 4Cx 10mm2 + 1Cx10mm2 Cu/XLPE/PVC FROM MCC-SPS to Odor Control Unit | 1d | 2026-11-23 | 2026-11-23 | B5.1.31 23 16.01.63, B5.1.31 23 16.01.79, B5.1.31 23 16.01.93, B5.1.31 23 16.01.103, B5.1.31 23 16.01.109, B5.1.31 23 16.01.81, B5.1. 26 32 12 .03, B5.1.31 23 16.01.105, B5.1.31 23 16.01.113, B5.1.31 23 16.01.117, B5.1.31 23 16.01.127, DMM2-Proc-Delv-4578_R | 9.32d |
| B5.1.31 23 16.01.131 |  | 4Cx 6mm2 + 1Cx6mm2 Cu/XLPE/PVC FROM MCC-SPS to the mechanical bar screen | 1d | 2026-11-23 | 2026-11-23 | B5.1.31 23 16.01.63, B5.1.31 23 16.01.79, B5.1.31 23 16.01.93, B5.1.31 23 16.01.103, B5.1.31 23 16.01.109, B5.1.31 23 16.01.81, B5.1. 26 32 12 .03, B5.1.31 23 16.01.105, B5.1.31 23 16.01.113, B5.1.31 23 16.01.117, B5.1.31 23 16.01.129 FF, DMM2-Proc-Delv-4578_R | 9.32d |
| B5.1.31 23 16.01.133 |  | 3Cx 6mm2 Cu/XLPE/PVC FROM MCC-SPS to the two fuel pumps. | 1d | 2026-11-23 | 2026-11-23 | B5.1.31 23 16.01.63, B5.1.31 23 16.01.79, B5.1.31 23 16.01.93, B5.1.31 23 16.01.103, B5.1.31 23 16.01.109, B5.1.31 23 16.01.81, B5.1. 26 32 12 .03, B5.1.31 23 16.01.105, B5.1.31 23 16.01.113, B5.1.31 23 16.01.117, B5.1.31 23 16.01.83, B5.1.31 23 16.01.131 FF, DMM2-Proc-Delv-4578_R | 9.32d |
| B5.1.31 23 16.01.135 |  | 4Cx 6mm2 + 1Cx6mm2 Cu/XLPE/PVC FROM MCC-SPS to the mechanical crane | 1d | 2026-11-23 | 2026-11-23 | B5.1.31 23 16.01.63, B5.1.31 23 16.01.79, B5.1.31 23 16.01.93, B5.1.31 23 16.01.103, B5.1.31 23 16.01.109, B5.1.31 23 16.01.81, B5.1. 26 32 12 .03, B5.1.31 23 16.01.105, B5.1.31 23 16.01.113, B5.1.31 23 16.01.117, B5.1.31 23 16.01.133 FF, DMM2-Proc-Delv-4578_R | 9.32d |
|  | 6 | **External Works & Site Finishing** |  | 2026-10-24 | 2026-11-05 |  |  |
| B5.1.31 23 16.01.37 |  | Precast Concrete curbstone - Type K1 | 3d | 2026-10-24 | 2026-10-26 | B5.1.31 23 16.01.3, B5.1.31 23 16.01.21 | 24.32d |
| B5.1.31 23 16.01.53 |  | Electrical Hand Hole (EHH-1) 600mm x 600mm x 800mm | 3d | 2026-10-27 | 2026-10-29 | B5.1.31 23 16.01.21, B5.1.31 23 16.01.3, B5.1.31 23 16.01.37, DMM2-Proc-Delv-7456 | 24.32d |
| B5.1.31 23 16.01.69 |  | Precast Concrete curbstone - Type K4 | 2d | 2026-10-31 | 2026-11-01 | B5.1.31 23 16.01.3, B5.1.31 23 16.01.21, B5.1.31 23 16.01.53, B5.1.31 23 16.01.53 FF | 24.32d |
| B5.1.31 23 16.01.87 |  | Electrical Hand Hole (EHH-2) 400mm x 400mm x 600mm | 2d | 2026-11-02 | 2026-11-03 | B5.1.31 23 16.01.21, B5.1.31 23 16.01.3, B5.1.31 23 16.01.69, DMM2-Proc-Delv-7456 | 24.32d |
| B5.1.31 23 16.01.85 |  | Steel fence (ZATCA HCIS) including Steel gate size (7*2.7)m | 2d | 2026-11-04 | 2026-11-05 | B5.1.31 23 16.01.37, B5.1.31 23 16.01.69, B5.1.31 23 16.01.87 | 24.32d |

| ID | WBS | Task | Duration | Start | Finish | Predecessors | Complete | Total float |
| --- | --- | --- | --- | --- | --- | --- | --- | --- |
|  | Zone 04 | **Zone 04** |  | 2025-11-17 | 2027-01-05 |  |  |  |
|  | Dewatering | **Earthworks & Site Grading** |  | 2025-11-17 | 2026-05-06 |  |  |  |
| B1.1.31 23 19.12 |  | Dewatering | 135.38d | 2025-11-17 A | 2026-05-06 A | B1.1.31 23 19.2, DMM2-Cons-Surv-Z04 | 100% |  |
| B1.1.31 23 16.12 |  | Excavation (all types of soil) | 41.64d | 2025-11-22 A | 2026-01-08 A | B1.1.31 23 19.12 | 100% |  |
| B1.1.31 23 23.12 |  | Engineering Backfiling - Road 02 | 63.49d | 2025-11-22 A | 2026-02-04 A | B1.1.31 23 16.12, DMM2-Proc-Delv-7497 | 100% |  |
| B1.1.31 23 23.172 |  | Engineering Backfiling - Road 03 | 58.71d | 2025-11-27 A | 2026-02-04 A | B1.1.31 23 23.12, DMM2-Proc-Delv-7497 | 100% |  |
| B1.1.31 23 23.182 |  | Engineering Backfiling - Road 04 | 56.71d | 2025-11-30 A | 2026-02-04 A | B1.1.31 23 23.172, DMM2-Proc-Delv-7497 | 100% |  |
|  | Road 02 | **Road 02** |  | 2025-11-20 | 2026-12-30 |  |  |  |
|  | Wet Networks | **Wet Networks** |  | 2026-01-07 | 2026-12-09 |  |  |  |
|  | Sewerage Network | **Sewerage Network** |  | 2026-01-21 | 2026-10-08 |  |  |  |
|  | GRP | **GRP Pipes** |  | 2026-01-21 | 2026-06-08 |  |  |  |
|  | 150 | **?150** |  | 2026-01-24 | 2026-06-06 |  |  |  |
|  | 1 | **Depth From 1.5m to 2.5m** |  | 2026-01-24 | 2026-05-23 |  |  |  |
| B5.33 31 00.01.02.1 |  | Excavation | 32.08d | 2026-01-24 A | 2026-03-08 A | B1.1.31 23 23.12 | 100% |  |
| B5.33 31 00.01.02.13 |  | Sand Bedding | 33.58d | 2026-01-27 A | 2026-03-15 A | B5.33 31 00.01.02.1 | 100% |  |
| B5.33 31 00.01.02.25 |  | Pipe Laying | 36.34d | 2026-01-28 A | 2026-03-22 A | B5.33 31 00.01.02.13 | 100% |  |
| B5.33 31 00.01.02.37 |  | Embedment & Test | 37.82d | 2026-01-31 A | 2026-03-29 A | B5.33 31 00.01.02.25 | 100% |  |
| B5.33 31 00.01.02.49 |  | Backfilling & Warrning Tape | 41.78d | 2026-04-04 A | 2026-05-23 A | B5.33 31 00.01.02.37 | 100% |  |
|  | 2 | **Depth From 2.5m to 3.5m** |  | 2026-01-26 | 2026-06-06 |  |  |  |
| B5.33 31 00.01.02.3 |  | Excavation | 46.58d | 2026-01-26 A | 2026-04-04 A | B5.33 31 00.01.02.1 | 100% |  |
| B5.33 31 00.01.02.15 |  | Sand Bedding | 46.58d | 2026-01-28 A | 2026-04-06 A | B5.33 31 00.01.02.3 | 100% |  |
| B5.33 31 00.01.02.27 |  | Pipe Laying | 47.58d | 2026-01-31 A | 2026-04-09 A | B5.33 31 00.01.02.15 | 100% |  |
| B5.33 31 00.01.02.39 |  | Embedment & Test | 53.82d | 2026-02-01 A | 2026-04-18 A | B5.33 31 00.01.02.27 | 100% |  |
| B5.33 31 00.01.02.51 |  | Backfilling & Warrning Tape | 20d | 2026-05-09 A | 2026-06-06 A | B5.33 31 00.01.02.39, B5.33 31 00.01.02.49 | 100% |  |
|  | 200 | **?200** |  | 2026-01-21 | 2026-06-08 |  |  |  |
|  | 3 | **Depth From 1.5m to 2.5m** |  | 2026-02-26 | 2026-06-03 |  |  |  |
| B5.33 31 00.01.02.5 |  | Excavation | 5.17d | 2026-02-26 A | 2026-03-07 A | B5.33 31 00.01.02.3 | 100% |  |
| B5.33 31 00.01.02.17 |  | Sand Bedding | 7.42d | 2026-03-02 A | 2026-03-14 A | B5.33 31 00.01.02.5 | 100% |  |
| B5.33 31 00.01.02.29 |  | Pipe Laying | 11.37d | 2026-03-03 A | 2026-03-21 A | B5.33 31 00.01.02.17 | 100% |  |
| B5.33 31 00.01.02.41 |  | Embedment & Test | 42.1d | 2026-04-01 A | 2026-05-20 A | B5.33 31 00.01.02.29 | 100% |  |
| B5.33 31 00.01.02.53 |  | Backfilling & Warrning Tape | 46.29d | 2026-04-06 A | 2026-06-03 A | B5.33 31 00.01.02.41 | 100% |  |
|  | 2 | **Depth From 2.5m to 3.5m** |  | 2026-01-21 | 2026-06-08 |  |  |  |
| B5.33 31 00.01.02.7 |  | Excavation | 90.58d | 2026-01-21 A | 2026-05-20 A | B5.33 31 00.01.02.5 | 100% |  |
| B5.33 31 00.01.02.19 |  | Sand Bedding | 88.58d | 2026-01-24 A | 2026-05-20 A | B5.33 31 00.01.02.7 | 100% |  |
| B5.33 31 00.01.02.31 |  | Pipe Laying | 86.5d | 2026-01-26 A | 2026-05-20 A | B5.33 31 00.01.02.19 | 100% |  |
| B5.33 31 00.01.02.43 |  | Embedment & Test | 92.65d | 2026-01-28 A | 2026-06-03 A | B5.33 31 00.01.02.31 | 100% |  |
| B5.33 31 00.01.02.55 |  | Backfilling & Warrning Tape | 22.89d | 2026-05-07 A | 2026-06-08 A | B5.33 31 00.01.02.43, B5.33 31 00.01.02.53, B5.33 31 00.01.02.51 | 100% |  |
|  | 1 | **Depth From 3.5m to 4.5m** |  | 2026-03-05 | 2026-05-20 |  |  |  |
| B5.33 31 00.01.02.9 |  | Excavation | 58.01d | 2026-03-05 A | 2026-05-20 A | B5.33 31 00.01.02.7 | 100% |  |
| B5.33 31 00.01.02.21 |  | Sand Bedding | 56.51d | 2026-03-08 A | 2026-05-20 A | B5.33 31 00.01.02.9 | 100% |  |
| B5.33 31 00.01.02.33 |  | Pipe Laying | 55.76d | 2026-03-09 A | 2026-05-20 A | B5.33 31 00.01.02.21 | 100% |  |
| B5.33 31 00.01.02.45 |  | Embedment & Test | 16.56d | 2026-04-30 A | 2026-05-20 A | B5.33 31 00.01.02.33 | 100% |  |
| B5.33 31 00.01.02.57 |  | Backfilling & Warrning Tape | 14.64d | 2026-05-03 A | 2026-05-20 A | B5.33 31 00.01.02.45 | 100% |  |
|  | 4 | **Depth From 4.5m to 5.5m** |  | 2026-03-05 | 2026-06-06 |  |  |  |
| B5.33 31 00.01.02.11 |  | Excavation | 58.01d | 2026-03-05 A | 2026-05-20 A | B5.33 31 00.01.02.9 | 100% |  |
| B5.33 31 00.01.02.23 |  | Sand Bedding | 53.43d | 2026-03-08 A | 2026-05-17 A | B5.33 31 00.01.02.11 | 100% |  |
| B5.33 31 00.01.02.35 |  | Pipe Laying | 57.68d | 2026-03-09 A | 2026-05-23 A | B5.33 31 00.01.02.23 | 100% |  |
| B5.33 31 00.01.02.47 |  | Embedment & Test | 25.59d | 2026-04-29 A | 2026-06-03 A | B5.33 31 00.01.02.35 | 100% |  |
| B5.33 31 00.01.02.59 |  | Backfilling & Warrning Tape | 26.39d | 2026-05-02 A | 2026-06-06 A | B5.33 31 00.01.02.47, B5.33 31 00.01.02.57, B5.33 31 00.01.02.55 | 100% |  |
|  | Manholes | **Manholes ?1200** |  | 2026-02-04 | 2026-10-08 |  |  |  |
|  | 2 | **Depth From 0.0m to 1.5m** |  | 2026-02-04 | 2026-10-08 |  |  |  |
| B6.33 05 39.01.1377 |  | Excavation & Compaction | 0.34d | 2026-02-04 A | 2026-02-05 A | B5.33 31 00.01.02.11 | 100% |  |
| B6.33 05 39.01.1387 |  | Blinding Conc, & RC Base | 3d | 2026-04-01 A | 2026-04-04 A | B6.33 05 39.01.1377 | 100% |  |
| B6.33 05 39.01.1397 |  | Manhole Installation | 2d | 2026-04-05 A | 2026-04-06 A | B6.33 05 39.01.1387 | 100% |  |
| B6.33 05 39.01.1407 |  | Test, Internal Finishing, Benching & Cover (45.60% Completed) | 78d | 2026-06-17 A | 2026-09-15 A | B6.33 05 39.01.1397 | 100% |  |
| B6.33 05 39.01.1417 |  | Backfilling | 9.95d | 2026-06-22 A | 2026-07-02 A | B5.33 31 00.01.02.59 | 100% |  |
| B6.33 05 39.01.1407_R |  | Test, Internal Finishing, Benching & Cover(Rem) | 2.18d | 2026-09-20 A | 2026-10-08 | B6.33 05 39.01.1397, B6.33 05 39.01.1407, B5.33 31 00.01.0238_R | 50% | 112.23d |
|  | 3 | **Depth From 1.5m to 2.5m** |  | 2026-02-09 | 2026-10-08 |  |  |  |
| B6.33 05 39.01.1427 |  | Excavation & Compaction | 1.26d | 2026-02-09 A | 2026-02-10 A | B6.33 05 39.01.1377 | 100% |  |
| B6.33 05 39.01.1437 |  | Blinding Conc, & RC Base | 3d | 2026-05-20 A | 2026-05-23 A | B6.33 05 39.01.1427 | 100% |  |
| B6.33 05 39.01.1447 |  | Manhole Installation (43.20% Completed) | 95d | 2026-05-24 A | 2026-09-15 A | B6.33 05 39.01.1437 | 100% |  |
| B6.33 05 39.01.1457 |  | Test, Internal Finishing, Benching & Cover (45.60% Completed) | 76.8d | 2026-06-18 A | 2026-09-15 A | B6.33 05 39.01.1447 SS | 100% |  |
| B6.33 05 39.01.1467 |  | Backfilling | 57.3d | 2026-06-23 A | 2026-08-29 A | B5.33 31 00.01.02.59 | 100% |  |
| B6.33 05 39.01.1447_R |  | Manhole Installation(Rem) | 1.14d | 2026-09-22 A | 2026-10-07 | B6.33 05 39.01.1437, B6.33 05 39.01.1447 | 50% | 112.75d |
| B6.33 05 39.01.1457_R |  | Test, Internal Finishing, Benching & Cover(Rem) | 2.18d | 2026-09-26 A | 2026-10-08 | B6.33 05 39.01.1447_R SS, B6.33 05 39.01.1457 | 50% | 112.23d |
|  | 4 | **Depth From 2.5m to 3.5m** |  | 2026-02-18 | 2026-10-08 |  |  |  |
| B6.33 05 39.01.1477 |  | Excavation & Compaction | 0.5d | 2026-02-18 A | 2026-02-19 A | B6.33 05 39.01.1427 | 100% |  |
| B6.33 05 39.01.1487 |  | Blinding Conc, & RC Base | 4d | 2026-04-05 A | 2026-04-08 A | B6.33 05 39.01.1477 | 100% |  |
| B6.33 05 39.01.1497 |  | Manhole Installation (43.20% Completed) | 98d | 2026-05-20 A | 2026-09-15 A | B6.33 05 39.01.1487 | 100% |  |
| B6.33 05 39.01.1507 |  | Test, Internal Finishing, Benching & Cover (45.60% Completed) | 77d | 2026-06-18 A | 2026-09-15 A | B6.33 05 39.01.1497 SS | 100% |  |

| ID | WBS | Task | Duration | Start | Finish | Predecessors | Complete | Total float |
| --- | --- | --- | --- | --- | --- | --- | --- | --- |
| B6.33 05 39.01.1517 |  | Backfilling | 57.5d | 2026-06-23 A | 2026-08-29 A | B5.33 31 00.01.02.59 | 100% |  |
| B6.33 05 39.01.1507_R |  | Test, Internal Finishing, Benching & Cover(Rem) | 2.18d | 2026-09-19 A | 2026-10-08 | B6.33 05 39.01.1497_R SS, B6.33 05 39.01.1507, B6.33 05 39.01.1457_R | 50% | 112.23d |
| B6.33 05 39.01.1497_R |  | Manhole Installation(Rem) | 1.14d | 2026-09-21 A | 2026-10-07 | B6.33 05 39.01.1487, B6.33 05 39.01.1497 | 50% | 112.75d |
|  | 1 | **Depth From 3.5m to 4.5m** |  | 2026-02-22 | 2026-10-08 |  |  |  |
| B6.33 05 39.01.1527 |  | Excavation & Compaction | 0.17d | 2026-02-22 A | 2026-02-23 A | B6.33 05 39.01.1477 | 100% |  |
| B6.33 05 39.01.1537 |  | Blinding Conc, & RC Base | 32.52d | 2026-05-20 A | 2026-07-01 A | B6.33 05 39.01.1527 | 100% |  |
| B6.33 05 39.01.1547 |  | Manhole Installation (43.20% Completed) | 95d | 2026-05-24 A | 2026-09-15 A | B6.33 05 39.01.1537 | 100% |  |
| B6.33 05 39.01.1557 |  | Test, Internal Finishing, Benching & Cover (45.60% Completed) | 77.32d | 2026-06-17 A | 2026-09-15 A | B6.33 05 39.01.1547 SS | 100% |  |
| B6.33 05 39.01.1567 |  | Backfilling | 59.3d | 2026-06-22 A | 2026-08-30 A | B6.33 05 39.01.1517, B6.33 05 39.01.1467, B6.33 05 39.01.1417 | 100% |  |
| B6.33 05 39.01.1557_R |  | Test, Internal Finishing, Benching & Cover(Rem) | 2.18d | 2026-09-21 A | 2026-10-08 | B6.33 05 39.01.1547_R SS, B6.33 05 39.01.1557, B6.33 05 39.01.1507_R, B5.33 31 00.01.0240_R | 50% | 112.23d |
| B6.33 05 39.01.1547_R |  | Manhole Installation(Rem) | 1.14d | 2026-09-24 A | 2026-10-07 | B6.33 05 39.01.1537, B6.33 05 39.01.1547 | 50% | 112.75d |
|  | 1 | **Depth From 3.5m to 4.5m Backdrop** |  | 2026-06-03 | 2026-10-08 |  |  |  |
| B6.33 05 39.01.1577 |  | Excavation & Compaction | 2d | 2026-06-03 A | 2026-06-04 A | B6.33 05 39.01.1527 | 100% |  |
| B6.33 05 39.01.1587 |  | Blinding Conc, & RC Base | 3d | 2026-06-06 A | 2026-06-08 A | B6.33 05 39.01.1577 | 100% |  |
| B6.33 05 39.01.1597 |  | Manhole Installation (43.20% Completed) | 78d | 2026-06-17 A | 2026-09-15 A | B6.33 05 39.01.1587 | 100% |  |
| B6.33 05 39.01.1607 |  | Test, Internal Finishing, Benching & Cover (45.60% Completed) | 76d | 2026-06-20 A | 2026-09-15 A | B6.33 05 39.01.1597 SS | 100% |  |
| B6.33 05 39.01.1617 |  | Backfilling | 59.3d | 2026-06-22 A | 2026-08-30 A | B6.33 05 39.01.1567 | 100% |  |
| B6.33 05 39.01.1597_R |  | Manhole Installation(Rem) | 1.14d | 2026-09-20 A | 2026-10-07 | B6.33 05 39.01.1587, B6.33 05 39.01.1597 | 50% | 112.75d |
| B6.33 05 39.01.1607_R |  | Test, Internal Finishing, Benching & Cover(Rem) | 2.18d | 2026-09-24 A | 2026-10-08 | B6.33 05 39.01.1597_R SS, B6.33 05 39.01.1607, B6.33 05 39.01.1557_R, B6.33 05 39.01.1407_R | 50% | 112.23d |
|  | Stormwater Network | **Stormwater Network** |  | 2026-01-07 | 2026-10-07 |  |  |  |
|  | GRP | **GRP** |  | 2026-01-07 | 2026-10-07 |  |  |  |
|  | ?4001 | **?500** |  | 2026-01-17 | 2026-06-04 |  |  |  |
|  | 3 | **Depth From 1.5m to 2.5m** |  | 2026-01-18 | 2026-06-04 |  |  |  |
| B6.33 42 11.05-1.1 |  | Excavation | 78.21d | 2026-01-18 A | 2026-05-03 A | B6.33 05 39.01.4227, B5.33 31 00.01.02.11 | 100% |  |
| B6.33 42 11.05-1.15 |  | Sand Bedding | 81.16d | 2026-01-21 A | 2026-05-10 A | B6.33 42 11.05-1.1 | 100% |  |
| B6.33 42 11.05-1.29 |  | Pipe Laying | 85.46d | 2026-01-24 A | 2026-05-17 A | B6.33 42 11.05-1.15 | 100% |  |
| B6.33 42 11.05-1.43 |  | Embedment & Test | 88.51d | 2026-01-27 A | 2026-05-24 A | B6.33 42 11.05-1.29 | 100% |  |
| B6.33 42 11.05-1.57 |  | Backfilling & Warrning Tape | 64.15d | 2026-03-10 A | 2026-06-04 A | B6.33 42 11.05-1.43 | 100% |  |
|  | 1 | **Depth From 2.5m to 3.5m** |  | 2026-01-17 | 2026-06-03 |  |  |  |
| B6.33 42 11.05-1.3 |  | Excavation | 102.29d | 2026-01-17 A | 2026-06-03 A | B6.33 42 11.05-1.1 | 100% |  |
| B6.33 42 11.05-1.17 |  | Sand Bedding | 81.16d | 2026-01-21 A | 2026-05-10 A | B6.33 42 11.05-1.3 | 100% |  |
| B6.33 42 11.05-1.31 |  | Pipe Laying | 86.46d | 2026-01-22 A | 2026-05-17 A | B6.33 42 11.05-1.17 | 100% |  |
| B6.33 42 11.05-1.45 |  | Embedment & Test | 91.51d | 2026-01-24 A | 2026-05-24 A | B6.33 42 11.05-1.31 | 100% |  |
| B6.33 42 11.05-1.59 |  | Backfilling & Warrning Tape | 22.17d | 2026-05-04 A | 2026-06-03 A | B6.33 42 11.05-1.45, B6.33 42 11.01-1026 | 100% |  |
|  | ?4002 | **?600** |  | 2026-01-07 | 2026-10-07 |  |  |  |
|  | 4 | **Depth From 1.5m to 2.5m** |  | 2026-01-07 | 2026-10-07 |  |  |  |
| B6.33 42 11.05-1.5 |  | Excavation (69.55% Completed) | 200.31d | 2026-01-07 A | 2026-09-15 A | B6.33 42 11.05-1.3 | 100% |  |
| B6.33 42 11.05-1.19 |  | Sand Bedding (69.55% Completed) | 198.81d | 2026-01-10 A | 2026-09-15 A | B6.33 42 11.05-1.5 FF | 100% |  |
| B6.33 42 11.05-1.33 |  | Pipe Laying (69.55% Completed) | 196.06d | 2026-01-12 A | 2026-09-15 A | B6.33 42 11.05-1.19 FF | 100% |  |
| B6.33 42 11.05-1.47 |  | Embedment & Test (69.55% Completed) | 193d | 2026-01-16 A | 2026-09-15 A | B6.33 42 11.05-1.33 FF | 100% |  |
| B6.33 42 11.05-1.61 |  | Backfilling & Warrning Tape (69.55% Completed) | 79.54d | 2026-06-15 A | 2026-09-15 A | B6.33 42 11.01-1028, B6.33 42 11.05-1.47 SS | 100% |  |
| B6.33 42 11.05-1.47_R |  | Embedment & Test(Rem) | 2.35d | 2026-09-16 A | 2026-10-07 | B6.33 42 11.05-1.33_R FF, B6.33 42 11.05-1.47 | 90% | 113.02d |
| B6.33 42 11.05-1.61_R |  | Backfilling & Warrning Tape(Rem) | 2.69d | 2026-09-16 A | 2026-10-07 | B6.33 42 11.01-1028, B6.33 42 11.05-1.47_R SS, B6.33 42 11.05-1.61 | 90% | 48.8d |
| B6.33 42 11.05-1.5_R |  | Excavation(Rem) | 3d | 2026-09-22 A | 2026-10-07 | B6.33 42 11.05-1.3, B6.33 42 11.05-1.5 | 90% | 113.02d |
| B6.33 42 11.05-1.33_R |  | Pipe Laying(Rem) | 3d | 2026-09-24 A | 2026-10-07 | B6.33 42 11.05-1.19_R FF, B6.33 42 11.05-1.33 | 90% | 113.02d |
| B6.33 42 11.05-1.19_R |  | Sand Bedding(Rem) | 3d | 2026-09-26 A | 2026-10-07 | B6.33 42 11.05-1.5_R FF, B6.33 42 11.05-1.19 | 90% | 113.02d |
|  | ?40021 | **?700** |  | 2026-02-02 | 2026-10-07 |  |  |  |
|  | 4 | **Depth From 1.5m to 2.5m** |  | 2026-02-02 | 2026-10-07 |  |  |  |
| B6.33 42 11.05-1.7 |  | Excavation (69.55% Completed) | 178.81d | 2026-02-02 A | 2026-09-15 A | B6.33 42 11.05-1.5 SS | 100% |  |
| B6.33 42 11.05-1.21 |  | Sand Bedding (69.55% Completed) | 176.06d | 2026-02-04 A | 2026-09-15 A | B6.33 42 11.05-1.7 FF | 100% |  |
| B6.33 42 11.05-1.35 |  | Pipe Laying (69.55% Completed) | 174.31d | 2026-02-07 A | 2026-09-15 A | B6.33 42 11.05-1.21 FF | 100% |  |
| B6.33 42 11.05-1.49 |  | Embedment & Test (69.55% Completed) | 173.81d | 2026-02-08 A | 2026-09-15 A | B6.33 42 11.05-1.35 FF | 100% |  |
| B6.33 42 11.05-1.63 |  | Backfilling & Warrning Tape (69.55% Completed) | 77.43d | 2026-06-17 A | 2026-09-15 A | B6.33 42 11.05-1.59, B6.33 42 11.05-1.49 SS | 100% |  |
| B6.33 42 11.05-1.7_R |  | Excavation(Rem) | 3d | 2026-09-20 A | 2026-10-07 | B6.33 42 11.05-1.5_R SS, B6.33 42 11.05-1.7 | 90% | 113.02d |
| B6.33 42 11.05-1.21_R |  | Sand Bedding(Rem) | 3d | 2026-09-24 A | 2026-10-07 | B6.33 42 11.05-1.7_R FF, B6.33 42 11.05-1.21 | 90% | 113.02d |
| B6.33 42 11.05-1.35_R |  | Pipe Laying(Rem) | 3d | 2026-09-28 A | 2026-10-07 | B6.33 42 11.05-1.21_R FF, B6.33 42 11.05-1.35 | 90% | 113.02d |
| B6.33 42 11.05-1.49_R |  | Embedment & Test(Rem) | 2.35d | 2026-10-01 A | 2026-10-07 | B6.33 42 11.05-1.35_R FF, B6.33 42 11.05-1.49 | 90% | 113.02d |
| B6.33 42 11.05-1.63_R |  | Backfilling & Warrning Tape(Rem) | 2.69d | 2026-10-03 A | 2026-10-07 | B6.33 42 11.05-1.59, B6.33 42 11.05-1.49_R SS, B6.33 42 11.05-1.63 | 90% | 113.05d |
|  | ?400 | **?800** |  | 2026-01-17 | 2026-04-29 |  |  |  |
|  | 3 | **Depth From 1.5m to 2.5m** |  | 2026-01-17 | 2026-04-29 |  |  |  |
| B6.33 42 11.05-1.9 |  | Excavation | 64.58d | 2026-01-17 A | 2026-04-15 A | B1.2.31 23 16.01.15 | 100% |  |
| B6.33 42 11.05-1.23 |  | Sand Bedding | 63.83d | 2026-01-20 A | 2026-04-18 A | B6.33 42 11.05-1.9 | 100% |  |
| B6.33 42 11.05-1.37 |  | Pipe Laying | 62.33d | 2026-01-24 A | 2026-04-19 A | B6.33 42 11.05-1.23 | 100% |  |
| B6.33 42 11.05-1.51 |  | Embedment & Test | 1.03d | 2026-04-20 A | 2026-04-21 A | B6.33 42 11.05-1.37 | 100% |  |
| B6.33 42 11.05-1.65 |  | Backfilling & Warrning Tape | 2.29d | 2026-04-27 A | 2026-04-29 A | B6.33 42 11.05-1.51, B6.33 42 11.01-1030 | 100% |  |
|  | ?40011 | **?1100** |  | 2026-05-03 | 2026-06-08 |  |  |  |
|  | 3 | **Depth From 2.5m to 3.5m** |  | 2026-05-03 | 2026-06-08 |  |  |  |
| B6.33 42 11.05-1.11 |  | Excavation | 5d | 2026-05-03 A | 2026-05-07 A | B6.33 42 11.05-1.9 | 100% |  |
| B6.33 42 11.05-1.25 |  | Sand Bedding | 14d | 2026-05-06 A | 2026-05-21 A | B6.33 42 11.05-1.11 | 100% |  |
| B6.33 42 11.05-1.39 |  | Pipe Laying | 13d | 2026-05-13 A | 2026-06-01 A | B6.33 42 11.05-1.25 | 100% |  |

| ID | WBS | Task | Duration | Start | Finish | Predecessors | Complete | Total float |
| --- | --- | --- | --- | --- | --- | --- | --- | --- |
| B6.33 42 11.05-1.53 |  | Embedment & Test | 3d | 2026-06-02 A | 2026-06-04 A | B6.33 42 11.05-1.39 | 100% |  |
| B6.33 42 11.05-1.67 |  | Backfilling & Warrning Tape | 3d | 2026-06-06 A | 2026-06-08 A | B6.33 42 11.05-1.53 | 100% |  |
|  | ?400111 | **?1300** |  | 2026-06-06 | 2026-10-07 |  |  |  |
|  | 3 | **Depth From 2.5m to 3.5m** |  | 2026-06-06 | 2026-10-07 |  |  |  |
| B6.33 42 11.05-1.13 |  | Excavation | 2d | 2026-06-06 A | 2026-06-07 A | B6.33 42 11.05-1.11 | 100% |  |
| B6.33 42 11.05-1.27 |  | Sand Bedding (69.55% Completed) | 86d | 2026-06-08 A | 2026-09-15 A | B6.33 42 11.05-1.13 | 100% |  |
| B6.33 42 11.05-1.41 |  | Pipe Laying (69.55% Completed) | 76d | 2026-06-20 A | 2026-09-15 A | B6.33 42 11.05-1.27 FF | 100% |  |
| B6.33 42 11.05-1.55 |  | Embedment & Test (69.55% Completed) | 75d | 2026-06-21 A | 2026-09-15 A | B6.33 42 11.05-1.41 FF | 100% |  |
| B6.33 42 11.05-1.69 |  | Backfilling & Warrning Tape (69.55% Completed) | 73d | 2026-06-23 A | 2026-09-15 A | B6.33 42 11.34-1.19, B6.33 42 11.05-1.65, B6.33 42 11.05-1.55 FF, B6.33 05 40.01.280 SS | 100% |  |
| B6.33 42 11.05-1.27_R |  | Sand Bedding(Rem) | 3d | 2026-09-10 A | 2026-10-07 | B6.33 42 11.05-1.13, B6.33 42 11.05-1.27 | 90% | 104.17d |
| B6.33 42 11.05-1.69_R |  | Backfilling & Warrning Tape(Rem) | 2.69d | 2026-09-16 A | 2026-10-07 | B6.33 42 11.34-1.19, B6.33 42 11.05-1.65, B6.33 42 11.05-1.55_R FF, B6.33 05 40.01.280_R SS, B6.33 42 11.05-1.69 | 90% | 104.17d |
| B6.33 42 11.05-1.55_R |  | Embedment & Test(Rem) | 2.35d | 2026-09-16 A | 2026-10-07 | B6.33 42 11.05-1.41_R FF, B6.33 42 11.05-1.55 | 90% | 104.17d |
| B6.33 42 11.05-1.41_R |  | Pipe Laying(Rem) | 3d | 2026-09-24 A | 2026-10-07 | B6.33 42 11.05-1.27_R FF, B6.33 42 11.05-1.41 | 90% | 104.17d |
|  | Strom Manholes | **Manholes** |  | 2026-02-16 | 2026-09-28 |  |  |  |
|  | 1 | **?1200** |  | 2026-02-16 | 2026-09-28 |  |  |  |
|  | 4 | **Depth From 1.5m to 2.5m** |  | 2026-02-16 | 2026-09-28 |  |  |  |
| B6.33 05 39.01.3777 |  | Excavation & Compaction | 2d | 2026-02-16 A | 2026-02-17 A | B6.33 42 11.05-1.13, B6.33 42 11.05-1.67, B6.33 42 11.05-1.57 | 100% |  |
| B6.33 05 39.01.3787 |  | Blinding Conc, & RC Base | 54.75d | 2026-06-17 A | 2026-08-19 A | B6.33 05 39.01.3777 | 100% |  |
| B6.33 05 39.01.3797 |  | Manhole Installation | 51.5d | 2026-06-21 A | 2026-08-19 A | B6.33 05 39.01.3787 | 100% |  |
| B6.33 05 39.01.3807 |  | Test, Internal Finishing, Benching & Cover (97.00% Completed) | 73d | 2026-06-23 A | 2026-09-15 A | B6.33 05 39.01.3797 | 100% |  |
| B6.33 05 39.01.3817 |  | Backfilling | 35.03d | 2026-07-11 A | 2026-08-20 A | B6.33 42 11.05-1.13 | 100% |  |
| B6.33 05 39.01.3807_R |  | Test, Internal Finishing, Benching & Cover(Rem) | 3d | 2026-09-26 A | 2026-09-28 A | B6.33 05 39.01.3797, B6.33 05 39.01.3807 | 100% |  |
|  | 3 | **?2000** |  | 2026-02-18 | 2026-09-27 |  |  |  |
|  | 4 | **Depth From 1.5m to 2.5m** |  | 2026-02-18 | 2026-09-27 |  |  |  |
| B6.33 05 39.01.3877 |  | Excavation & Compaction | 1.5d | 2026-02-18 A | 2026-02-19 A | B6.33 05 39.01.3777 | 100% |  |
| B6.33 05 39.01.3887 |  | Blinding Conc, & RC Base | 3d | 2026-04-29 A | 2026-05-02 A | B6.33 05 39.01.3877 | 100% |  |
| B6.33 05 39.01.3917 |  | Backfilling (97.00% Completed) | 85.62d | 2026-06-08 A | 2026-09-15 A | B6.33 05 39.01.3907 SS, B6.33 42 11.361460 SS, B6.33 05 13.04-113 SS | 100% |  |
| B6.33 05 39.01.3897 |  | Manhole Installation (97.00% Completed) | 78d | 2026-06-17 A | 2026-09-15 A | B6.33 05 39.01.3887 | 100% |  |
| B6.33 05 39.01.3907 |  | Test, Internal Finishing, Benching & Cover (97.00% Completed) | 76d | 2026-06-20 A | 2026-09-15 A | B6.33 05 39.01.3897 SS | 100% |  |
| B6.33 05 39.01.3897_R |  | Manhole Installation(Rem) | 3d | 2026-09-10 A | 2026-09-19 A | B6.33 05 39.01.3887, B6.33 05 39.01.3897 | 100% |  |
| B6.33 05 39.01.3907_R |  | Test, Internal Finishing, Benching & Cover(Rem) | 3d | 2026-09-19 A | 2026-09-22 A | B6.33 05 39.01.3897_R SS, B6.33 05 39.01.3907 | 100% |  |
| B6.33 05 39.01.3917_R |  | Backfilling(Rem) | 3d | 2026-09-22 A | 2026-09-27 A | B6.33 05 39.01.3907_R SS, B6.33 42 11.361460_R SS, B6.33 05 13.04-113_R SS, B6.33 05 39.01.3917 | 100% |  |
|  | 3 | **Depth From 2.5m to 3.5m** |  | 2026-02-20 | 2026-09-22 |  |  |  |
| B6.33 05 39.01.3927 |  | Excavation & Compaction | 0.75d | 2026-02-20 A | 2026-02-21 A | B6.33 05 39.01.3877, B6.33 05 39.01.3877 FF | 100% |  |
| B6.33 05 39.01.3937 |  | Blinding Conc, & RC Base | 63.12d | 2026-06-08 A | 2026-08-20 A | B6.33 05 39.01.3927 | 100% |  |
| B6.33 05 39.01.3947 |  | Manhole Installation | 60.74d | 2026-06-10 A | 2026-08-19 A | B6.33 05 39.01.3937 | 100% |  |
| B6.33 05 39.01.3957 |  | Test, Internal Finishing, Benching & Cover (97.00% Completed) | 82d | 2026-06-13 A | 2026-09-15 A | B6.33 05 39.01.3947 | 100% |  |
| B6.33 05 39.01.3967 |  | Backfilling | 57.86d | 2026-06-15 A | 2026-08-20 A | B6.33 42 11.05-1.67 | 100% |  |
| B6.33 05 39.01.3957_R |  | Test, Internal Finishing, Benching & Cover(Rem) | 3d | 2026-09-19 A | 2026-09-22 A | B6.33 05 39.01.3947, B6.33 05 39.01.3957 | 100% |  |
|  | Catch Basins | **Catch Basins** |  | 2026-03-02 | 2026-10-01 |  |  |  |
|  | Sing | **Single** |  | 2026-06-08 | 2026-09-30 |  |  |  |
| B6.33 05 40.01.560 |  | Backfilling, DI Frame & Grate Cover Fixing (79.00% Completed) | 85.62d | 2026-06-08 A | 2026-09-15 A | B6.33 42 11.35-126, B6.33 05 39.01.3817, B6.33 05 40.01.550 SS, B6.33 05 40.01.160 SS | 100% |  |
| B6.33 05 40.01.530 |  | Excavation, Compaction & Vapour Barrier (79.00% Completed) | 78d | 2026-06-17 A | 2026-09-15 A | B6.33 05 39.01.3927 | 100% |  |
| B6.33 05 40.01.540 |  | Blinding Conc. (79.00% Completed) | 76d | 2026-06-20 A | 2026-09-15 A | B6.33 05 40.01.530 SS | 100% |  |
| B6.33 05 40.01.550 |  | Catch Basin Installation (79.00% Completed) | 74d | 2026-06-22 A | 2026-09-15 A | B6.33 05 40.01.540 SS | 100% |  |
| B6.33 05 40.01.530_R |  | Excavation, Compaction & Vapour Barrier(Rem) | 3d | 2026-09-10 A | 2026-09-19 A | B6.33 05 39.01.3927, B6.33 05 40.01.530 | 100% |  |
| B6.33 05 40.01.540_R |  | Blinding Conc.(Rem) | 3d | 2026-09-19 A | 2026-09-21 A | B6.33 05 40.01.530_R SS, B6.33 05 40.01.540 | 100% |  |
| B6.33 05 40.01.550_R |  | Catch Basin Installation(Rem) | 3d | 2026-09-20 A | 2026-09-24 A | B6.33 05 40.01.540_R SS, B6.33 05 40.01.550 | 100% |  |
| B6.33 05 40.01.560_R |  | Backfilling, DI Frame & Grate Cover Fixing(Rem) | 2.05d | 2026-09-29 A | 2026-09-30 A | B6.33 05 40.01.720 FF, B6.33 42 11.35-126, B6.33 05 39.01.3817, B6.33 05 40.01.550_R SS, B6.33 05 40.01.160_R SS, B6.33 05 40.01.560 | 100% |  |
|  | Dou | **Double** |  | 2026-08-23 | 2026-10-01 |  |  |  |
| B6.33 05 40.01.970 |  | Excavation, Compaction & Vapour Barrier (62.50% Completed) | 20.5d | 2026-08-23 A | 2026-09-15 A | B6.33 05 40.01.530 SS | 100% |  |
| B6.33 05 40.01.980 |  | Blinding Conc. (62.50% Completed) | 18.5d | 2026-08-25 A | 2026-09-15 A | B6.33 05 40.01.970 SS | 100% |  |
| B6.33 05 40.01.990 |  | Catch Basin Installation (62.50% Completed) | 17.5d | 2026-08-26 A | 2026-09-15 A | B6.33 05 40.01.980 SS | 100% |  |
| B6.33 05 40.01.970_R |  | Excavation, Compaction & Vapour Barrier(Rem) | 3d | 2026-09-10 A | 2026-09-19 A | B6.33 05 40.01.530_R SS, B6.33 05 40.01.970 | 100% |  |
| B6.33 05 40.01.980_R |  | Blinding Conc.(Rem) | 3d | 2026-09-19 A | 2026-09-21 A | B6.33 05 40.01.970_R SS, B6.33 05 40.01.980 | 100% |  |
| B6.33 05 40.01.990_R |  | Catch Basin Installation(Rem) | 2.12d | 2026-09-20 A | 2026-09-24 A | B6.33 05 40.01.980_R SS, B6.33 05 40.01.990 | 100% |  |
| B6.33 05 40.01.1000 |  | Backfilling, DI Frame & Grate Cover Fixing | 6d | 2026-09-24 A | 2026-10-01 A | B6.33 05 40.01.990_R, B6.33 42 11.36-199, B6.33 42 11.05-1.63_R, B6.33 42 11.01-1.48_R | 100% |  |
|  | UPVC | **UPVC** |  | 2026-03-02 | 2026-09-22 |  |  |  |
|  | UPVC300 | **?300 From 0.0 to 1.5m** |  | 2026-03-02 | 2026-09-22 |  |  |  |
| B6.33 42 11.35-126 |  | Fittings & Pipe Installation | 3.75d | 2026-03-02 A | 2026-03-08 A | B6.33 05 39.01.3777 | 100% |  |
| B6.33 42 11.35-114 |  | Catch Basin Opening Prep. (81.65% Completed) | 85.62d | 2026-06-08 A | 2026-09-15 A | B6.33 05 40.01.550 SS, DMM2-Proc-Delv-7510 SS, DMM2-Proc-Delv-5748 SS | 100% |  |
| B6.33 42 11.35-114_R |  | Catch Basin Opening Prep.(Rem) | 3d | 2026-09-20 A | 2026-09-22 A | B6.33 05 40.01.550_R SS, DMM2-Proc-Delv-7510_R SS, DMM2-Proc-Delv-5748_R SS, B6.33 42 11.35-114 | 100% |  |
|  | UPVC3001 | **?400 From 0.0 to 1.5m** |  | 2026-03-02 | 2026-09-22 |  |  |  |
| B6.33 42 11.36-199 |  | Fittings & Pipe Installation | 3.75d | 2026-03-02 A | 2026-03-08 A | B6.33 42 11.35-126 SS, B6.33 42 11.35-126 FF | 100% |  |
| B6.33 42 11.36-187 |  | Catch Basin Opening Prep. (81.65% Completed) | 85.62d | 2026-06-08 A | 2026-09-15 A | B6.33 42 11.35-114 SS | 100% |  |
| B6.33 42 11.36-187_R |  | Catch Basin Opening Prep.(Rem) | 3d | 2026-09-19 A | 2026-09-22 A | B6.33 42 11.35-114_R SS, B6.33 42 11.36-187 | 100% |  |
|  | Potable Water | **Potable Water Network** |  | 2026-02-03 | 2026-12-02 |  |  |  |
|  | HDPE | **HDPE Pipes** |  | 2026-02-03 | 2026-10-10 |  |  |  |
|  | ?110mm | **?110mm** |  | 2026-02-03 | 2026-10-10 |  |  |  |
|  | Depth: 0.0m - 1.5m | **Depth: 0.0m - 1.5m** |  | 2026-02-03 | 2026-09-30 |  |  |  |

| ID | WBS | Task | Duration | Start | Finish | Predecessors | Complete | Total float |
| --- | --- | --- | --- | --- | --- | --- | --- | --- |
| B3.33 14 13-1091 |  | Excavation | 68.66d | 2026-02-03 A | 2026-05-06 A | B6.33 42 11.05-1.13 | 100% |  |
| B3.33 14 13-1095 |  | Sand Bedding | 72.66d | 2026-02-05 A | 2026-05-13 A | B3.33 14 13-1091 | 100% |  |
| B3.33 14 13-1099 |  | Pipe Laying | 62.26d | 2026-02-28 A | 2026-05-20 A | B3.33 14 13-1095 | 100% |  |
| B3.33 14 13-10103 |  | Embedment & Test (71.25% Completed) | 97.34d | 2026-05-20 A | 2026-09-15 A | B3.33 14 13-1099 | 100% |  |
| B3.33 14 13-10107 |  | Backfilling & Warrning Tape (71.25% Completed) | 85.63d | 2026-06-08 A | 2026-09-15 A | B3.33 14 13-10103 SS | 100% |  |
| B3.33 14 13-10103_R |  | Embedment & Test(Rem) | 2.15d | 2026-09-22 A | 2026-09-27 A | B3.33 14 13-1099, B3.33 14 13-10103 | 100% |  |
| B3.33 14 13-10107_R |  | Backfilling & Warrning Tape(Rem) | 2.44d | 2026-09-28 A | 2026-09-30 A | B3.33 14 13.02.18 FF, B3.33 14 13-10103_R SS, B3.33 14 13-10107 | 100% |  |
|  | Depth: 1.51m - 2.5m | **Depth: 1.51m - 2.5m** |  | 2026-02-05 | 2026-10-10 |  |  |  |
| B3.33 14 13-1093 |  | Excavation (84.11% Completed) | 176d | 2026-02-05 A | 2026-09-15 A | B3.33 14 13-1091 | 100% |  |
| B3.33 14 13-1097 |  | Sand Bedding (84.11% Completed) | 175d | 2026-02-07 A | 2026-09-15 A | B3.33 14 13-1093 FF | 100% |  |
| B3.33 14 13-10101 |  | Pipe Laying (84.11% Completed) | 138.53d | 2026-04-02 A | 2026-09-15 A | B3.33 14 13-1097 FF | 100% |  |
| B3.33 14 13-10105 |  | Embedment & Test (84.11% Completed) | 77.68d | 2026-06-17 A | 2026-09-15 A | B3.33 14 13-10101 FF | 100% |  |
| B3.33 14 13-10109 |  | Backfilling & Warrning Tape (84.11% Completed) | 73.68d | 2026-06-22 A | 2026-09-15 A | B3.33 14 13-10105 FF | 100% |  |
| B3.33 14 13-10101_R |  | Pipe Laying(Rem) | 3d | 2026-10-07 | 2026-10-10 | B3.33 14 13-1097_R FF, B3.33 14 13-10101 |  | 93.32d |
| B3.33 14 13-10105_R |  | Embedment & Test(Rem) | 3d | 2026-10-07 | 2026-10-10 | B3.33 14 13-10101_R FF, B3.33 14 13-10105 |  | 93.32d |
| B3.33 14 13-10109_R |  | Backfilling & Warrning Tape(Rem) | 3d | 2026-10-07 | 2026-10-10 | B3.33 14 13-10105_R FF, B3.33 14 13-10109 |  | 93.32d |
| B3.33 14 13-1093_R |  | Excavation(Rem) | 3d | 2026-10-07 | 2026-10-10 | B3.33 14 13-1091, B3.33 14 13-1093 |  | 62.32d |
| B3.33 14 13-1097_R |  | Sand Bedding(Rem) | 3d | 2026-10-07 | 2026-10-10 | B3.33 14 13-1093_R FF, B3.33 14 13-1097 |  | 93.32d |
|  | Crossing | **Plots and Buildings Crossing** |  | 2026-10-11 | 2026-11-01 |  |  |  |
| B3.33 14 13.02.25 |  | Earthwork | 7d | 2026-10-11 | 2026-10-18 | B3.33 14 13-1093_R |  | 62.32d |
| B3.33 14 13.02.26 |  | Sand Bedding | 5d | 2026-10-19 | 2026-10-24 | B3.33 14 13.02.25 |  | 84.32d |
| B3.33 14 13.02.27 |  | Tee, Pipe (Crossing) Installation & Backfilling | 7d | 2026-10-25 | 2026-11-01 | B3.33 14 13.02.26, B3.33 14 13.02.21 |  | 84.32d |
|  | Valves & Chambers | **Valves & Chambers** |  | 2026-10-11 | 2026-12-02 |  |  |  |
|  | GV | **Gate Valves** |  | 2026-10-11 | 2026-10-17 |  |  |  |
|  | 1 | **Gate valves dia (110) mm** |  | 2026-10-11 | 2026-10-17 |  |  |  |
| B3.33 14 19.01.114 |  | Burried Isolation Valve Installation | 3d | 2026-10-11 | 2026-10-13 | B3.33 14 13-10101_R, DMM2-Proc-Delv-5828 |  | 101.32d |
| B3.33 14 19.01.115 |  | Spindle & Surface Box | 3d | 2026-10-14 | 2026-10-17 | B3.33 14 19.01.114, B3.33 14 19.01.111 |  | 101.32d |
|  | 2 | **Air Valves** |  | 2026-10-27 | 2026-12-02 |  |  |  |
|  | 4 | **Air valves on less than 315 mm. (In Chamber)** |  | 2026-10-27 | 2026-12-02 |  |  |  |
| B3.33 05 63.02.32 |  | Land Adjustment & Compaction | 3d | 2026-10-27 | 2026-10-31 | B1.2.32 11 26.01.15, B6.33 42 11.36-199, B6.33 05 40.01.1000, B6.33 05 40.01.560_R, B6.33 05 39.01.3967, B6.33 05 39.01.3917_R |  | 75.07d |
| B3.33 05 63.02.30 |  | Foundations | 4d | 2026-10-31 | 2026-11-04 | B3.33 05 63.02.32, B3.1. 33 14 13-09 |  | 75.07d |
| B3.33 05 63.02.33 |  | Chambers Walls Conc Cast In Situ | 4d | 2026-11-04 | 2026-11-09 | B3.33 05 63.02.30 |  | 75.07d |
| B3.33 05 63.02.31 |  | Chamber Curing, Finishing & Steel Cover | 5d | 2026-11-09 | 2026-11-15 | B3.33 05 63.02.33 |  | 75.07d |
| B3.33 05 63.02.34 |  | Valve & Fitting Installation | 5d | 2026-11-28 | 2026-12-02 | B3.33 05 63.02.31, B3.33 05 63.01.015 |  | 64.32d |
|  | Fire Fighting | **Fire Fighting Network** |  | 2026-02-05 | 2026-11-09 |  |  |  |
|  | HDPE | **HDPE Pipes** |  | 2026-02-05 | 2026-08-31 |  |  |  |
|  | ?250mm | **?250mm** |  | 2026-02-05 | 2026-08-31 |  |  |  |
|  | Depth: 0.0m - 1.5m | **Depth: 0.0m - 1.5m** |  | 2026-02-05 | 2026-04-06 |  |  |  |
| B3.1. 33 14 13-09 |  | Excavation | 30d | 2026-02-05 A | 2026-03-23 A | B6.33 42 11.36-199 | 100% |  |
| B3.1. 33 14 13-013 |  | Sand Bedding | 30.16d | 2026-02-07 A | 2026-03-26 A | B3.1. 33 14 13-09 | 100% |  |
| B3.1. 33 14 13-017 |  | Pipe Laying | 31.16d | 2026-02-07 A | 2026-03-28 A | B3.1. 33 14 13-013 | 100% |  |
| B3.1. 33 14 13-021 |  | Embedment & Test | 7d | 2026-03-24 A | 2026-04-01 A | B3.1. 33 14 13-017 | 100% |  |
| B3.1. 33 14 13-025 |  | Backfilling & Warrning Tape | 4d | 2026-04-01 A | 2026-04-06 A | B3.1. 33 14 13-021 | 100% |  |
|  | Depth: 1.51m - 2.5m | **Depth: 1.51m - 2.5m** |  | 2026-02-05 | 2026-08-31 |  |  |  |
| B3.1. 33 14 13-011 |  | Excavation | 155.16d | 2026-02-05 A | 2026-08-23 A | B3.1. 33 14 13-09 | 100% |  |
| B3.1. 33 14 13-015 |  | Sand Bedding | 156.16d | 2026-02-07 A | 2026-08-25 A | B3.1. 33 14 13-011 | 100% |  |
| B3.1. 33 14 13-019 |  | Pipe Laying | 158.16d | 2026-02-07 A | 2026-08-27 A | B3.1. 33 14 13-015 | 100% |  |
| B3.1. 33 14 13-023 |  | Embedment & Test | 116.16d | 2026-04-13 A | 2026-08-31 A | B3.1. 33 14 13-019 | 100% |  |
| B3.1. 33 14 13-027 |  | Backfilling & Warrning Tape | 97.24d | 2026-05-04 A | 2026-08-30 A | B3.1. 33 14 13-023, B3.33 14 19.01.130 | 100% |  |
|  | Valves & Chambers | **Valves & Chambers** |  | 2026-04-01 | 2026-11-09 |  |  |  |
|  | GV | **Gate Valves** |  | 2026-04-01 | 2026-10-11 |  |  |  |
|  | 1 | **Gate valves dia (250) mm** |  | 2026-04-01 | 2026-10-11 |  |  |  |
| B3.33 14 19.01.130 |  | Burried Isolation Valve Installation | 2d | 2026-04-01 A | 2026-04-04 A | B3.1. 33 14 13-019, B3.1. 33 14 13-017, DMM2-Proc-Delv-5898 | 100% |  |
| B3.33 14 19.01.131 |  | Spindle & Surface Box | 4d | 2026-10-07 | 2026-10-11 | B3.33 14 19.01.130, B3.1. 33 14 13-023 |  | 69.32d |
|  | 2 | **Air Valves** |  | 2026-10-10 | 2026-11-09 |  |  |  |
|  | 4 | **Air valves on less than 315 mm. (In Chamber)** |  | 2026-10-10 | 2026-11-09 |  |  |  |
| B3.33 05 63.02.72 |  | Land Adjustment & Compaction | 4d | 2026-10-10 | 2026-10-14 | B3.1. 33 14 13-017, DMM2-Proc-Delv-5908_R |  | 85.31d |
| B3.33 05 63.02.70 |  | Foundations | 5d | 2026-10-14 | 2026-10-20 | B3.33 05 63.02.72 |  | 85.31d |
| B3.33 05 63.02.73 |  | Chambers Walls Conc Cast In Situ | 5d | 2026-10-20 | 2026-10-26 | B3.33 05 63.02.70 |  | 85.31d |
| B3.33 05 63.02.71 |  | Chamber Curing, Finishing & Steel Cover | 6d | 2026-10-26 | 2026-11-02 | B3.33 05 63.02.73 |  | 85.31d |
| B3.33 05 63.02.74 |  | Valve & Fitting Installation | 6d | 2026-11-02 | 2026-11-09 | B3.33 05 63.02.71 |  | 85.31d |
|  | Washout Valves | **Washout Valves** |  | 2026-06-26 | 2026-11-09 |  |  |  |
|  | 4 | **Washout valves on 110-400 mm. (In Chamber)** |  | 2026-06-26 | 2026-11-09 |  |  |  |
| B3.33 05 63.01.57 |  | Land Adjustment & Compaction | 3d | 2026-06-26 A | 2026-06-29 A | B3.1. 33 14 13-023, B3.1. 33 14 13-021 | 100% |  |
| B3.33 05 63.01.55 |  | Foundations (50.00% Completed) | 68d | 2026-06-29 A | 2026-09-15 A | B3.33 05 63.01.57 | 100% |  |
| B3.33 05 63.01.58 |  | Chambers Walls Conc Cast In Situ (50.00% Completed) | 65d | 2026-07-02 A | 2026-09-15 A | B3.33 05 63.01.55 SS | 100% |  |
| B3.33 05 63.01.56 |  | Chamber Curing, Finishing & Steel Cover (50.00% Completed) | 62d | 2026-07-06 A | 2026-09-15 A | B3.1. 33 14 13-027, B3.1. 33 14 13-025, B3.33 05 63.01.58 SS | 100% |  |
| B3.33 05 63.01.59 |  | Valve & Fitting Installation (50.00% Completed) | 59d | 2026-07-09 A | 2026-09-15 A | B3.33 05 63.01.56 SS | 100% |  |
| B3.33 05 63.01.55_R |  | Foundations(Rem) | 3.5d | 2026-10-07 | 2026-10-11 | B3.33 05 63.01.57, B3.33 05 63.01.55 |  | 109.32d |
| B3.33 05 63.01.56_R |  | Chamber Curing, Finishing & Steel Cover(Rem) | 4d | 2026-10-07 | 2026-10-11 | B3.1. 33 14 13-027, B3.1. 33 14 13-025, B3.33 05 63.01.58_R SS, B3.33 05 63.01.56 |  | 109.32d |

| ID | WBS | Task | Duration | Start | Finish | Predecessors | Complete | Total float |
| --- | --- | --- | --- | --- | --- | --- | --- | --- |
| B3.33 05 63.01.58_R |  | Chambers Walls Conc Cast In Situ(Rem) | 3.5d | 2026-10-07 | 2026-10-11 | B3.33 05 63.01.55_R SS, B3.33 05 63.01.58 |  | 109.32d |
| B3.33 05 63.01.59_R |  | Valve & Fitting Installation(Rem) | 4d | 2026-11-04 | 2026-11-09 | B3.33 05 63.02.74 FF, B3.33 05 63.01.56_R SS, B3.33 05 63.01.59 |  | 85.31d |
|  | 3 | **Fire Hydrant** |  | 2026-06-17 | 2026-10-14 |  |  |  |
| B3.33 14 19.01.fh41 |  | Riser Pipe & Flanged Fittings Installation (1.00% Completed) | 77.84d | 2026-06-17 A | 2026-09-15 A | B3.1. 33 14 13-019, B3.1. 33 14 13-017 | 100% |  |
| B3.33 14 19.01.fh40 |  | Firehydrant Fixing/Installation (1.00% Completed) | 75.84d | 2026-06-20 A | 2026-09-15 A | DMM2-Proc-Delv-7178, B3.33 14 19.01.fh41 SS | 100% |  |
| B3.33 14 19.01.fh42 |  | Backfilling & Compaction (1.00% Completed) | 72.84d | 2026-06-23 A | 2026-09-15 A | B3.33 14 19.01.fh40 SS | 100% |  |
| B3.33 14 19.01.fh40_R |  | Firehydrant Fixing/Installation(Rem) | 4.97d | 2026-10-07 | 2026-10-12 | DMM2-Proc-Delv-7178, B3.33 14 19.01.fh41_R SS, B3.33 14 19.01.fh40 |  | 74.37d |
| B3.33 14 19.01.fh41_R |  | Riser Pipe & Flanged Fittings Installation(Rem) | 3.98d | 2026-10-07 | 2026-10-11 | B3.1. 33 14 13-019, B3.1. 33 14 13-017, B3.33 14 19.01.fh41 |  | 74.37d |
| B3.33 14 19.01.fh42_R |  | Backfilling & Compaction(Rem) | 6.95d | 2026-10-07 | 2026-10-14 | B3.33 14 19.01.fh40_R SS, B3.33 14 19.01.fh42 |  | 74.37d |
|  | TSE Network | **TSE Network** |  | 2026-02-04 | 2026-12-09 |  |  |  |
|  | HDPE | **HDPE Pipes** |  | 2026-02-04 | 2026-10-25 |  |  |  |
|  | ?110mm | **?110mm** |  | 2026-02-04 | 2026-10-25 |  |  |  |
|  | Depth: 0.0m - 1.5m | **Depth: 0.0m - 1.5m** |  | 2026-02-04 | 2026-10-25 |  |  |  |
| B4.33 14 13.01-018 |  | Excavation | 63.4d | 2026-02-04 A | 2026-05-02 A | B1.1.31 23 16.12 | 100% |  |
| B4.33 14 13.01-0112 |  | Sand Bedding | 68.4d | 2026-02-05 A | 2026-05-09 A | B4.33 14 13.01-018 | 100% |  |
| B4.33 14 13.01-0116 |  | Pipe Laying | 65.26d | 2026-03-24 A | 2026-06-13 A | B4.33 14 13.01-0112 | 100% |  |
| B4.33 14 13.01-0120 |  | Embedment & Test (20.03% Completed) | 115.6d | 2026-04-29 A | 2026-09-15 A | B4.33 14 13.01-0116 | 100% |  |
| B4.33 14 13.01-0124 |  | Backfilling & Warrning Tape (20.03% Completed) | 113d | 2026-05-03 A | 2026-09-15 A | B4.33 14 13.01-0120 FF | 100% |  |
| B4.33 14 13.01-0120_R |  | Embedment & Test(Rem) | 4.2d | 2026-10-07 | 2026-10-12 | B4.33 14 13.01-0116, B4.33 14 13.01-0120 |  | 47.12d |
| B4.33 14 13.01-0124_R |  | Backfilling & Warrning Tape(Rem) | 5d | 2026-10-20 | 2026-10-25 | B4.32 84 13.063 FF, B4.33 14 13.01-0120_R FF, B4.33 14 13.01-0124 |  | 35.32d |
|  | ?90mm | **?90mm** |  | 2026-02-04 | 2026-04-06 |  |  |  |
|  | Depth: 0.0m - 1.5m | **Depth: 0.0m - 1.5m** |  | 2026-02-04 | 2026-04-06 |  |  |  |
| B4.33 14 13.01-0110 |  | Excavation | 31.4d | 2026-02-04 A | 2026-03-25 A | B4.33 14 13.01-018 | 100% |  |
| B4.33 14 13.01-0114 |  | Sand Bedding | 32.4d | 2026-02-05 A | 2026-03-28 A | B4.33 14 13.01-0110 | 100% |  |
| B4.33 14 13.01-0118 |  | Pipe Laying | 22.15d | 2026-02-22 A | 2026-03-31 A | B4.33 14 13.01-0114 | 100% |  |
| B4.33 14 13.01-0122 |  | Embedment & Test | 12.75d | 2026-03-13 A | 2026-04-02 A | B4.33 14 13.01-0118, B3.33 14 19.01.140 | 100% |  |
| B4.33 14 13.01-0126 |  | Backfilling & Warrning Tape | 5d | 2026-04-01 A | 2026-04-06 A | B4.33 14 13.01-0122 | 100% |  |
|  | Valves & Chambers | **Valves & Chambers** |  | 2026-03-10 | 2026-12-09 |  |  |  |
|  | GV | **Gate Valves** |  | 2026-03-10 | 2026-10-10 |  |  |  |
|  | 1 | **Gate valves dia (250) mm** |  | 2026-03-10 | 2026-10-10 |  |  |  |
| B3.33 14 19.01.140 |  | Burried Isolation Valve Installation | 15d | 2026-03-10 A | 2026-04-02 A | B4.33 14 13.01-0118 | 100% |  |
| B3.33 14 19.01.141 |  | Spindle & Surface Box | 3d | 2026-10-07 | 2026-10-10 | B3.33 14 19.01.140 |  | 32.32d |
|  | 2 | **Air Valves** |  | 2026-10-26 | 2026-12-09 |  |  |  |
|  | 4 | **Air valves on less than 315 mm. (In Chamber)** |  | 2026-10-26 | 2026-12-09 |  |  |  |
| B3.33 05 63.02.97 |  | Land Adjustment & Compaction | 3d | 2026-10-26 | 2026-10-28 | B4.33 14 13.01-0124_R |  | 35.32d |
| B3.33 05 63.02.95 |  | Foundations | 4d | 2026-10-29 | 2026-11-02 | B3.33 05 63.02.97 |  | 40.32d |
| B3.33 05 63.02.98 |  | Chambers Walls Conc Cast In Situ | 4d | 2026-11-03 | 2026-11-07 | B3.33 05 63.02.95 |  | 40.32d |
| B3.33 05 63.02.96 |  | Chamber Curing, Finishing & Steel Cover | 5d | 2026-11-08 | 2026-11-12 | B3.33 05 63.02.98 |  | 40.32d |
| B3.33 05 63.02.99 |  | Valve & Fitting Installation | 3d | 2026-12-07 | 2026-12-09 | B3.33 05 63.02.96, B4.32 84 13.12, B3.33 05 63.02.94 |  | 20.32d |
|  | Washout Valves | **Washout Valves** |  | 2026-10-29 | 2026-11-22 |  |  |  |
|  | 4 | **Washout valves on 110-400 mm. (In Chamber)** |  | 2026-10-29 | 2026-11-22 |  |  |  |
| B3.33 05 63.01.72 |  | Land Adjustment & Compaction | 3d | 2026-10-29 | 2026-11-01 | B3.33 05 63.02.97 |  | 35.32d |
| B3.33 05 63.01.70 |  | Foundations | 4d | 2026-11-02 | 2026-11-05 | B3.33 05 63.01.72 |  | 35.32d |
| B3.33 05 63.01.73 |  | Chambers Walls Conc Cast In Situ | 4d | 2026-11-07 | 2026-11-10 | B3.33 05 63.01.70 |  | 35.32d |
| B3.33 05 63.01.71 |  | Chamber Curing, Finishing & Steel Cover | 5d | 2026-11-11 | 2026-11-16 | B3.33 05 63.01.73 |  | 35.32d |
| B3.33 05 63.01.74 |  | Valve & Fitting Installation | 5d | 2026-11-17 | 2026-11-22 | B3.33 05 63.01.71 |  | 35.32d |
|  | Solenoid valves | **Solenoid valves** |  | 2026-11-23 | 2026-12-06 |  |  |  |
|  | Solenoid valve ?1.0 | **1 Solenoid valve ?1.0 inch with box** |  | 2026-11-23 | 2026-12-01 |  |  |  |
| B4.32 84 13.13 |  | Cable Laying Two-Wire Decoder (12 AWG) | 3d | 2026-11-23 | 2026-11-25 | B4.33 14 13.01-0116, B4.33 14 13.01-0118, DMM2-Proc-Delv-7556 |  | 20.32d |
| B4.32 84 13.14 |  | Solenoid Valve Box Installation | 3d | 2026-11-25 | 2026-11-28 | DMM2-Proc-Delv-5868, DMM2-Proc-Delv-4128 |  | 24.32d |
| B4.32 84 13.49 |  | Pull Box Installation | 3d | 2026-11-28 | 2026-11-30 | B4.33 14 13.01-0118, DMM2-Proc-Delv-7555 |  | 22.32d |
| B4.32 84 13.15 |  | Bubblers Installation | 3d | 2026-11-29 | 2026-12-01 | B4.32 84 13.14, DMM2-Proc-Delv-7554 |  | 24.32d |
|  | Solenoid valve ?1.5 | **1 Solenoid valve ?1.5 inch with box** |  | 2026-11-26 | 2026-12-06 |  |  |  |
| B4.32 84 13.16 |  | Cable Laying Two-Wire Decoder (12 AWG) | 3d | 2026-11-26 | 2026-11-29 | B4.32 84 13.13, DMM2-Proc-Delv-7556 |  | 20.32d |
| B4.32 84 13.50 |  | Pull Box Installation | 3d | 2026-11-28 | 2026-11-30 | B4.32 84 13.49 SS, DMM2-Proc-Delv-7555 |  | 22.32d |
| B4.32 84 13.17 |  | Solenoid Valve Box Installation | 3d | 2026-11-30 | 2026-12-02 | B4.32 84 13.16, DMM2-Proc-Delv-5868, DMM2-Proc-Delv-4128 |  | 20.32d |
| B4.32 84 13.18 |  | Bubblers Installation | 3d | 2026-12-03 | 2026-12-06 | B4.32 84 13.17, B4.32 84 13.21, DMM2-Proc-Delv-7554 SS |  | 20.32d |
|  | Solenoid valve ?2.0 | **1 Solenoid valve ?2.0 inch with box** |  | 2026-11-30 | 2026-12-06 |  |  |  |
| B4.32 84 13.03 |  | Solenoid Valve Box Installation | 3d | 2026-11-30 | 2026-12-02 | B4.32 84 13.10 FF, DMM2-Proc-Delv-5868, DMM2-Proc-Delv-4128 |  | 20.32d |
| B4.32 84 13.10 |  | Cable Laying Two-Wire Decoder (12 AWG) | 3d | 2026-11-30 | 2026-12-02 | B4.32 84 13.16, DMM2-Proc-Delv-7556 |  | 20.32d |
| B4.32 84 13.51 |  | Pull Box Installation | 3d | 2026-12-01 | 2026-12-03 | B4.32 84 13.50, DMM2-Proc-Delv-7555 |  | 22.32d |
| B4.32 84 13.12 |  | Bubblers Installation | 3d | 2026-12-03 | 2026-12-06 | B4.32 84 13.03, B4.32 84 13.18 SS, B4.32 84 13.15 SS, B4.32 84 13.51 SS, DMM2-Proc-Delv-7554 FF |  | 20.32d |
|  | Dry Networks | **Dry Networks** |  | 2026-09-07 | 2026-11-21 |  |  |  |
|  | MV Network | **Medium Voltage Network** |  | 2026-10-07 | 2026-11-08 |  |  |  |
|  | Duct Banks | **Duct Banks** |  | 2026-10-19 | 2026-11-08 |  |  |  |
|  | 4 Way | **2 Way** |  | 2026-10-19 | 2026-11-08 |  |  |  |
| B2.31 23 00.642 |  | Excavation | 4d | 2026-10-19 | 2026-10-22 | B3.33 14 13.02.25 |  | 62.32d |
| B2.33 71 00.292 |  | Shuttering, Steel Fixing Incl. UPVC Pipe & Conc. Cast | 7d | 2026-10-24 | 2026-10-31 | B2.31 23 00.642 |  | 62.32d |
| B2.33 71 00.293 |  | Backfilling & Warrning Tape | 7d | 2026-11-01 | 2026-11-08 | B2.33 71 00.292 |  | 62.32d |
|  | Cables | **Cables** |  | 2026-10-07 | 2026-10-18 |  |  |  |

| ID | WBS | Task | Duration | Start | Finish | Predecessors | Complete | Total float |
| --- | --- | --- | --- | --- | --- | --- | --- | --- |
|  | 3C,500mm2 | **3C,500mm2** |  | 2026-10-07 | 2026-10-18 |  |  |  |
| B2.33 71 49.23.89 |  | Cable 13.8 kV Unarmored | 4d | 2026-10-07 | 2026-10-11 | B4.33 14 13.01-0126 |  | 75.32d |
| B2.33 71 49.23.90 |  | Straight joints cables | 3d | 2026-10-12 | 2026-10-14 | B2.33 71 49.23.89 |  | 75.32d |
| B2.33 71 49.23.91 |  | Cable Termination | 3d | 2026-10-15 | 2026-10-18 | B2.33 71 49.23.90 |  | 75.32d |
|  | LV Network | **Low Voltage Network** |  | 2026-11-07 | 2026-11-21 |  |  |  |
|  | Duct Banks | **Duct Banks** |  | 2026-11-09 | 2026-11-21 |  |  |  |
|  | 2 Way | **2 Way** |  | 2026-11-09 | 2026-11-17 |  |  |  |
| B2.33 71 00 02 145 |  | Excavation | 2d | 2026-11-09 | 2026-11-10 | B2.33 71 00.293 |  | 62.32d |
| B2.33 71 00 02 146 |  | Shuttering, Steel Fixing Incl. UPVC Pipe & Conc. Cast | 3d | 2026-11-11 | 2026-11-14 | B2.33 71 00 02 145, B1.2.31 23 16.01.15 |  | 62.32d |
| B2.33 71 00 02 147 |  | Backfilling & Warrning Tape | 3d | 2026-11-15 | 2026-11-17 | B2.33 71 00 02 146 |  | 62.32d |
|  | 4 Way | **4 Way** |  | 2026-11-11 | 2026-11-19 |  |  |  |
| B2.33 71 00 02 151 |  | Excavation | 3d | 2026-11-11 | 2026-11-14 | B2.33 71 00 02 145 |  | 65.32d |
| B2.33 71 00 02 152 |  | Shuttering, Steel Fixing Incl. UPVC Pipe & Conc. Cast | 2d | 2026-11-15 | 2026-11-16 | B2.33 71 00 02 151 |  | 66.32d |
| B2.33 71 00 02 153 |  | Backfilling & Warrning Tape | 3d | 2026-11-17 | 2026-11-19 | B2.33 71 00 02 152, B2.33 71 00 02 98 |  | 66.32d |
|  | 6 Way | **6 Way** |  | 2026-11-11 | 2026-11-21 |  |  |  |
| B2.33 71 00 02 148 |  | Excavation | 3d | 2026-11-11 | 2026-11-14 | B2.33 71 00 02 151 SS |  | 65.32d |
| B2.33 71 00 02 149 |  | Shuttering, Steel Fixing Incl. UPVC Pipe & Conc. Cast | 3d | 2026-11-15 | 2026-11-17 | B2.33 71 00 02 148 |  | 65.32d |
| B2.33 71 00 02 150 |  | Backfilling & Warrning Tape | 3d | 2026-11-18 | 2026-11-21 | B2.33 71 00 02 149, B2.33 71 00 02 98 |  | 65.32d |
|  | Cables | **Cables** |  | 2026-11-07 | 2026-11-08 |  |  |  |
|  | 4C,10+1C,10mm2 | **4C,10+1C,10mm2** |  | 2026-11-07 | 2026-11-08 |  |  |  |
| B2.33 71 00 01 19 |  | Cable Pulling | 2d | 2026-11-07 | 2026-11-08 | B2.33 71 00 01 16 |  | 4.32d |
|  | 4C,50+1C,25mm2 | **4C,50+1C,25mm2** |  | 2026-11-07 | 2026-11-08 |  |  |  |
| B2.33 71 00 01 20 |  | Cable Pulling | 2d | 2026-11-07 | 2026-11-08 | B2.33 71 00 01 19 SS, DMM2-Proc-Delv-6478, B2.33 71 26 31 |  | 4.32d |
|  | Street Lighting | **Street Lighting** |  | 2026-09-10 | 2026-11-14 |  |  |  |
|  | Duct Banks | **Duct Banks** |  | 2026-10-15 | 2026-10-21 |  |  |  |
|  | 4 Way | **4 Way** |  | 2026-10-15 | 2026-10-21 |  |  |  |
| B2.33 71 00 02 79 |  | Excavation | 2d | 2026-10-15 | 2026-10-17 | B2.33 71 00 02 88 |  | 30.32d |
| B2.33 71 00 02 80 |  | Shuttering, Steel Fixing Incl. UPVC Pipe & Conc. Cast | 2d | 2026-10-18 | 2026-10-19 | B2.33 71 00 02 79 |  | 32.32d |
| B2.33 71 00 02 81 |  | Backfilling & Warrning Tape | 2d | 2026-10-20 | 2026-10-21 | B2.33 71 00 02 80 |  | 32.32d |
|  | Drawpits | **Drawpits** |  | 2026-10-18 | 2026-10-24 |  |  |  |
| B2.33 71 00 02 82 |  | Excavation | 2d | 2026-10-18 | 2026-10-19 | B2.33 71 00 02 79 |  | 30.32d |
| B2.33 71 00 02 83 |  | Drawpits Installation | 2d | 2026-10-20 | 2026-10-21 | B2.33 71 00 02 82 |  | 30.32d |
| B2.33 71 00 02 84 |  | Backfilling & Warrning Tape | 2d | 2026-10-22 | 2026-10-24 | B2.33 71 00 02 83 |  | 30.32d |
|  | Cables | **Cables** |  | 2026-11-04 | 2026-11-11 |  |  |  |
|  | 4C,10+1C,10mm2 | **4C,10+1C,10mm2** |  | 2026-11-04 | 2026-11-11 |  |  |  |
| B2.33 71 19 202 |  | Land Adjustment | 2d | 2026-11-04 | 2026-11-07 | B2.33 71 00 02 82, B2.33 71 19 50 |  | 39.68d |
| B2.33 71 49.23.182 |  | Cable Pulling | 2d | 2026-11-07 | 2026-11-09 | B2.33 71 19 202, DMM2-Proc-Delv-6528 |  | 39.68d |
| B2.33 71 19 212 |  | Backfilling | 2d | 2026-11-09 | 2026-11-11 | B2.33 71 49.23.182, B2.33 71 16.035, B2.33 71 19 49, B2.33 71 19 52, B2.33 71 16.102 |  | 41.68d |
|  | SL Poles | **SL Poles** |  | 2026-09-10 | 2026-10-15 |  |  |  |
|  | Pole (10 M Sngl Arm) | **Pole (10 M Single Arm)** |  | 2026-09-10 | 2026-10-15 |  |  |  |
| B2.33 71 16.91 |  | Excavation (50.00% Completed) | 4.68d | 2026-09-10 A | 2026-09-15 A | B3.1. 33 14 13-027 | 100% |  |
| B2.33 71 16.92 |  | PC & RC Foundation (50.00% Completed) | 3.68d | 2026-09-12 A | 2026-09-15 A | B2.33 71 16.91 FF | 100% |  |
| B2.33 71 16.93 |  | Lighting Poles Installation Incl power box, Cables (50.00% Completed) | 2.68d | 2026-09-13 A | 2026-09-15 A | B2.33 71 16.92 FF | 100% |  |
| B2.26.56.19.16 |  | Lighting Luminares Inst (50.00% Completed) | 1.68d | 2026-09-14 A | 2026-09-15 A | B2.33 71 16.93 FF | 100% |  |
| B2.33 71 16.91_R |  | Excavation(Rem) | 2d | 2026-10-07 | 2026-10-08 | B2.33 71 16.91 |  | 44.32d |
| B2.33 71 16.92_R |  | PC & RC Foundation(Rem) | 2d | 2026-10-10 | 2026-10-11 | B2.33 71 16.91_R, B2.33 71 16.92 |  | 44.32d |
| B2.33 71 16.93_R |  | Lighting Poles Installation Incl power box, Cables(Rem) | 2d | 2026-10-10 | 2026-10-11 | B2.33 71 16.92_R FF, B2.33 71 16.93 |  | 44.32d |
| B2.26.56.19.16_R |  | Lighting Luminares Inst(Rem) | 2d | 2026-10-12 | 2026-10-13 | B2.33 71 16.93_R, B2.26.56.19.16 |  | 58.32d |
| B2.33 71 16.94 |  | Backfilling, Grouting & Chamfering | 2d | 2026-10-14 | 2026-10-15 | B2.26.56.19.16_R |  | 58.32d |
|  | SL Pillars | **SL Pillars** |  | 2026-11-09 | 2026-11-14 |  |  |  |
| B2.33 71 26 034 |  | Pillars Installation (Internal Wiring) | 2d | 2026-11-09 | 2026-11-11 | B2.33 71 16.93_R, B2.33 71 49.23.182 |  | 39.68d |
| B2.33 71 26 045 |  | KWH meter mounting a frame installation | 2d | 2026-11-11 | 2026-11-14 | B2.33 71 26 034 |  | 39.68d |
|  | Earthing | **Earthing** |  | 2026-10-15 | 2026-10-24 |  |  |  |
| B2.33 71 19 44 |  | Land Adjustment | 2d | 2026-10-15 | 2026-10-17 | B2.33 71 16.93_R, B2.33 71 00 02 88 |  | 41.32d |
| B2.33 71 19 45 |  | Earth Rods & Conduits | 2d | 2026-10-18 | 2026-10-19 | B2.33 71 19 44 |  | 41.32d |
| B2.33 71 19 46 |  | Backfilling | 2d | 2026-10-21 | 2026-10-24 | B2.33 71 19 45, B2.33 71 19 19, B2.33 71 00 02 90 |  | 39.68d |
|  | Telecommunication | **Telecommunication Network** |  | 2026-09-07 | 2026-10-26 |  |  |  |
|  | Ducts | **Ducts** |  | 2026-09-10 | 2026-10-25 |  |  |  |
|  | (6*50mm) | **Size (6*50mm) HDPE ducts** |  | 2026-09-13 | 2026-10-25 |  |  |  |
| B2.1.33 81 26.162 |  | Excavation (45.00% Completed) | 3d | 2026-09-13 A | 2026-09-15 A | B2.33 71 16.91 | 100% |  |
| B2.1.33 81 26.164 |  | Backfilling & Warrning Tape (45.00% Completed) | 2d | 2026-09-14 A | 2026-09-15 A | B2.1.33 81 26.163 FF | 100% |  |
| B2.1.33 81 26.163 |  | HDPE Pipe, Shuttering, Steel Fixing & Conc. Cast (45.00% Completed) | 1d | 2026-09-15 A | 2026-09-15 A | B2.1.33 81 26.162 FF | 100% |  |
| B2.1.33 81 26.162_R |  | Excavation(Rem) | 1d | 2026-10-25 | 2026-10-25 | B2.33 71 00 02 84, B2.33 71 00 02 81, B2.1.33 81 26.162 |  | 30.32d |
| B2.1.33 81 26.163_R |  | HDPE Pipe, Shuttering, Steel Fixing & Conc. Cast(Rem) | 1d | 2026-10-25 | 2026-10-25 | B2.1.33 81 26.162_R FF, B2.1.33 81 26.163 |  | 52.32d |
| B2.1.33 81 26.164_R |  | Backfilling & Warrning Tape(Rem) | 1d | 2026-10-25 | 2026-10-25 | B2.1.33 81 26.163_R FF, B2.1.33 81 26.164 |  | 52.32d |
|  | (6*50mm+2*32mm) | **Size (6*50mm+2*32mm) HDPE ducts** |  | 2026-09-13 | 2026-10-25 |  |  |  |
| B2.1.33 81 26.166 |  | HDPE Pipe, Shuttering, Steel Fixing & Conc. Cast (45.00% Completed) | 3d | 2026-09-13 A | 2026-09-15 A | B2.1.33 81 26.165 FF | 100% |  |
| B2.1.33 81 26.167 |  | Backfilling & Warrning Tape (45.00% Completed) | 2d | 2026-09-14 A | 2026-09-15 A | B2.1.33 81 26.166 FF | 100% |  |
| B2.1.33 81 26.165 |  | Excavation (45.00% Completed) | 1d | 2026-09-15 A | 2026-09-15 A | B2.1.33 81 26.162 FF | 100% |  |
| B2.1.33 81 26.165_R |  | Excavation(Rem) | 1d | 2026-10-25 | 2026-10-25 | B2.1.33 81 26.162_R FF, B2.1.33 81 26.165 |  | 39.32d |

| ID | WBS | Task | Duration | Start | Finish | Predecessors | Complete | Total float |
| --- | --- | --- | --- | --- | --- | --- | --- | --- |
| B2.1.33 81 26.166_R |  | HDPE Pipe, Shuttering, Steel Fixing & Conc. Cast(Rem) | 1d | 2026-10-25 | 2026-10-25 | B2.1.33 81 26.165_R FF, B2.1.33 81 26.166 |  | 52.32d |
| B2.1.33 81 26.167_R |  | Backfilling & Warrning Tape(Rem) | 1d | 2026-10-25 | 2026-10-25 | B2.1.33 81 26.166_R FF, B2.1.33 81 26.167 |  | 52.32d |
|  | (6*50mm+4*32mm) | **Size (6*50mm+4*32mm) HDPE ducts** |  | 2026-09-10 | 2026-10-25 |  |  |  |
| B2.1.33 81 26.168 |  | Excavation (45.00% Completed) | 5d | 2026-09-10 A | 2026-09-15 A | B2.1.33 81 26.165 SS | 100% |  |
| B2.1.33 81 26.169 |  | HDPE Pipe, Shuttering, Steel Fixing & Conc. Cast (45.00% Completed) | 4d | 2026-09-12 A | 2026-09-15 A | B2.1.33 81 26.168 FF | 100% |  |
| B2.1.33 81 26.170 |  | Backfilling & Warrning Tape (45.00% Completed) | 3d | 2026-09-13 A | 2026-09-15 A | B2.1.33 81 26.169 FF | 100% |  |
| B2.1.33 81 26.168_R |  | Excavation(Rem) | 1d | 2026-10-25 | 2026-10-25 | B2.1.33 81 26.165_R SS, B2.1.33 81 26.168 |  | 39.32d |
| B2.1.33 81 26.169_R |  | HDPE Pipe, Shuttering, Steel Fixing & Conc. Cast(Rem) | 1d | 2026-10-25 | 2026-10-25 | B2.1.33 81 26.168_R FF, B2.1.33 81 26.169 |  | 52.32d |
| B2.1.33 81 26.170_R |  | Backfilling & Warrning Tape(Rem) | 1d | 2026-10-25 | 2026-10-25 | B2.1.33 81 26.169_R FF, B2.1.33 81 26.170 |  | 52.32d |
|  | (2*32mm) | **Size (2*32mm) HDPE ducts** |  | 2026-09-12 | 2026-10-25 |  |  |  |
| B2.1.33 81 26.171 |  | Excavation (45.00% Completed) | 4d | 2026-09-12 A | 2026-09-15 A | B2.1.33 81 26.168 FF | 100% |  |
| B2.1.33 81 26.172 |  | HDPE Pipe, Shuttering, Steel Fixing & Conc. Cast (45.00% Completed) | 3d | 2026-09-13 A | 2026-09-15 A | B2.1.33 81 26.171 FF | 100% |  |
| B2.1.33 81 26.173 |  | Backfilling & Warrning Tape (45.00% Completed) | 2d | 2026-09-14 A | 2026-09-15 A | B2.1.33 81 26.172 FF, B2.1.33 81 26.167 FF, B2.1.33 81 26.164 FF | 100% |  |
| B2.1.33 81 26.171_R |  | Excavation(Rem) | 1d | 2026-10-25 | 2026-10-25 | B2.1.33 81 26.168_R FF, B2.1.33 81 26.171 |  | 39.32d |
| B2.1.33 81 26.172_R |  | HDPE Pipe, Shuttering, Steel Fixing & Conc. Cast(Rem) | 1d | 2026-10-25 | 2026-10-25 | B2.1.33 81 26.171_R FF, B2.1.33 81 26.172 |  | 52.32d |
| B2.1.33 81 26.173_R |  | Backfilling & Warrning Tape(Rem) | 1d | 2026-10-25 | 2026-10-25 | B2.1.33 81 26.172_R FF, B2.1.33 81 26.167_R FF, B2.1.33 81 26.164_R FF, B2.1.33 81 26.173 |  | 52.32d |
|  | Manholes | **Manholes** |  | 2026-09-07 | 2026-10-26 |  |  |  |
|  | Manhole Type 1 | **Manhole Type 1** |  | 2026-09-09 | 2026-10-26 |  |  |  |
| B2.31 23 00.630 |  | Excavation (67.00% Completed) | 6d | 2026-09-09 A | 2026-09-15 A | B2.1.33 81 26.171 SS | 100% |  |
| B2.33 71 00.268 |  | Manhole Installation (67.00% Completed) | 3d | 2026-09-13 A | 2026-09-15 A | B2.31 23 00.630 FF | 100% |  |
| B2.33 71 00.269 |  | Backfilling & Warrning Tape (67.00% Completed) | 2d | 2026-09-14 A | 2026-09-15 A | B2.33 71 00.268 FF, B2.1.33 81 26.173 FF | 100% |  |
| B2.31 23 00.630_R |  | Excavation(Rem) | 2d | 2026-10-25 | 2026-10-26 | B2.1.33 81 26.171_R SS, B2.31 23 00.630 |  | 39.32d |
| B2.33 71 00.268_R |  | Manhole Installation(Rem) | 2d | 2026-10-25 | 2026-10-26 | B2.31 23 00.630_R FF, B2.33 71 00.268 |  | 51.32d |
| B2.33 71 00.269_R |  | Backfilling & Warrning Tape(Rem) | 2d | 2026-10-25 | 2026-10-26 | B2.33 71 00.268_R FF, B2.1.33 81 26.173_R FF, B2.33 71 00.269 |  | 51.32d |
|  | Manhole Type 2 | **Manhole Type 2** |  | 2026-09-07 | 2026-10-26 |  |  |  |
| B2.31 23 00.631 |  | Excavation (67.00% Completed) | 8d | 2026-09-07 A | 2026-09-15 A | B2.31 23 00.630 SS | 100% |  |
| B2.33 71 00.270 |  | Manhole Installation (67.00% Completed) | 6d | 2026-09-09 A | 2026-09-15 A | B2.31 23 00.631 FF | 100% |  |
| B2.33 71 00.271 |  | Backfilling & Warrning Tape (67.00% Completed) | 3d | 2026-09-13 A | 2026-09-15 A | B2.33 71 00.270 FF, B2.1.33 81 26.170 FF | 100% |  |
| B2.31 23 00.631_R |  | Excavation(Rem) | 2d | 2026-10-25 | 2026-10-26 | B2.31 23 00.630_R SS, B2.31 23 00.631 |  | 39.32d |
| B2.33 71 00.270_R |  | Manhole Installation(Rem) | 2d | 2026-10-25 | 2026-10-26 | B2.31 23 00.631_R FF, B2.33 71 00.270 |  | 51.32d |
| B2.33 71 00.271_R |  | Backfilling & Warrning Tape(Rem) | 2d | 2026-10-25 | 2026-10-26 | B2.33 71 00.270_R FF, B2.1.33 81 26.170_R FF, B2.33 71 00.271 |  | 51.32d |
|  | Crossing Ducts | **Road Crossing Ducts** |  | 2026-09-12 | 2026-10-26 |  |  |  |
|  | 1 | **Size (6X50mm) HDPE** |  | 2026-09-12 | 2026-10-26 |  |  |  |
| B2.31 23 00.629 |  | Excavation (45.00% Completed) | 4d | 2026-09-12 A | 2026-09-15 A | B2.31 23 00.631 FF | 100% |  |
| B2.33 71 00.266 |  | Shuttering, Steel Fixing Incl. UPVC Pipe & Conc. Cast (45.00% Completed) | 3d | 2026-09-13 A | 2026-09-15 A | B2.31 23 00.629 FF | 100% |  |
| B2.33 71 00.267 |  | Backfilling & Warrning Tape (45.00% Completed) | 2d | 2026-09-14 A | 2026-09-15 A | B2.33 71 00.266 FF | 100% |  |
| B2.31 23 00.629_R |  | Excavation(Rem) | 1d | 2026-10-26 | 2026-10-26 | B2.31 23 00.631_R FF, B2.31 23 00.629 |  | 39.32d |
| B2.33 71 00.266_R |  | Shuttering, Steel Fixing Incl. UPVC Pipe & Conc. Cast(Rem) | 1d | 2026-10-26 | 2026-10-26 | B2.31 23 00.629_R FF, B2.33 71 00.266 |  | 39.32d |
| B2.33 71 00.267_R |  | Backfilling & Warrning Tape(Rem) | 1d | 2026-10-26 | 2026-10-26 | B2.33 71 00.266_R FF, B2.33 71 00.267 |  | 39.32d |
|  | Earth & Road Works | **Earth & Road Works** |  | 2025-11-20 | 2026-12-12 |  |  |  |
|  | Earth Works | **Earth Works** |  | 2025-11-20 | 2026-03-08 |  |  |  |
| B1.2.31 23 16.01.15 |  | Roadway Excavation | 11.3d | 2025-11-20 A | 2025-12-03 A | DMM2-Eng-MS-78 | 100% |  |
| B1.2.31 23 23.01.15 |  | Embankment Backfiling | 85.89d | 2025-11-22 A | 2026-03-08 A | B1.2.31 23 16.01.15 | 100% |  |
|  | Earth Layers | **Earth Layers** |  | 2026-01-06 | 2026-10-11 |  |  |  |
| B1.2.32 11 13.01.15 |  | Subgrade (65.00% Completed) | 201.83d | 2026-01-06 A | 2026-09-15 A | B1.2.31 23 23.01.15, DMM2-Proc-Delv-7500 | 100% |  |
| B1.2.32 11 23.01.15 |  | Aggregate Base Course (50.00% Completed) | 91.76d | 2026-06-01 A | 2026-09-15 A | B1.2.32 11 13.01.15 FF, DMM2-Proc-Delv-7498 SS | 100% |  |
| B1.2.32 11 13.01.15_R |  | Subgrade(Rem) | 2.8d | 2026-10-07 | 2026-10-10 | B1.2.31 23 23.01.15, DMM2-Proc-Delv-7500, B1.2.32 11 13.01.15 |  | 43.52d |
| B1.2.32 11 23.01.15_R |  | Aggregate Base Course(Rem) | 3.5d | 2026-10-07 | 2026-10-11 | B1.2.32 11 13.01.15_R FF, DMM2-Proc-Delv-7498_R SS, B1.2.32 11 23.01.15 |  | 42.82d |
|  | Interlock | **Interlock** |  | 2026-11-07 | 2026-11-09 |  |  |  |
| B1.2.32 14 13.13.15 |  | 60mm thick - Interlocking Block Pavers | 3d | 2026-11-07 | 2026-11-09 | B2.33 71 00 01 20 SS, DMM2-Proc-Delv-7502 SS |  | 4.32d |
|  | Curbstone | **Curbstone** |  | 2026-11-10 | 2026-11-30 |  |  |  |
|  | Pre Install | **Pre-Installation** |  | 2026-11-10 | 2026-11-16 |  |  |  |
| B2.31 23 00.421 |  | Excavation | 2d | 2026-11-10 | 2026-11-11 | B1.2.32 14 13.13.15, DMM2-Proc-Delv-7501 |  | 4.32d |
| B1.2.32 14 13.13.215 |  | PCC | 2d | 2026-11-12 | 2026-11-14 | B2.31 23 00.421 |  | 4.32d |
| 32 16 13.0015 |  | Haunching | 2d | 2026-11-15 | 2026-11-16 | B1.2.32 14 13.13.215 |  | 4.32d |
|  | Installation | **Installation** |  | 2026-11-17 | 2026-11-28 |  |  |  |
| B1.2.32 16.13.01.15 |  | Curb Stone, Type K1 | 2d | 2026-11-17 | 2026-11-18 | 32 16 13.0015 |  | 4.32d |
| B1.2.32 16.13.02.14 |  | Dropped Curb, Type K3 | 2d | 2026-11-19 | 2026-11-21 | B1.2.32 16.13.01.15, 32 16 13.0015 |  | 4.32d |
| B1.2.32 16.13.03.15 |  | Edge Curb, Type K4 | 2d | 2026-11-22 | 2026-11-23 | B1.2.32 16.13.02.14, 32 16 13.0015 |  | 4.32d |
| B1.2.32 16.13.0415 |  | Heel Curb, Type K5 | 2d | 2026-11-24 | 2026-11-25 | B1.2.32 16.13.03.15, 32 16 13.0015 |  | 4.32d |
| B1.2.32 16.13.05.14 |  | Transition Curb | 2d | 2026-11-26 | 2026-11-28 | B1.2.32 16.13.0415, 32 16 13.0015 |  | 4.32d |
|  | Finishing | **Finishing** |  | 2026-11-29 | 2026-11-30 |  |  |  |
| 32 16 13.015 |  | Finishing, Fareface | 2d | 2026-11-29 | 2026-11-30 | B1.2.32 16.13.01.15, B1.2.32 16.13.02.14, B1.2.32 16.13.03.15, B1.2.32 16.13.0415, B1.2.32 16.13.05.14 |  | 4.32d |
|  | Asphalt Layers | **Asphalt Layers** |  | 2026-10-21 | 2026-12-02 |  |  |  |
| B1.2.32 11 26.01.15 |  | Bituminous Base Course including Prime Coat (MC1) and tack coat (RC2) | 5d | 2026-10-21 | 2026-10-27 | B1.2.32 11 23.01.15_R, DMM2-Proc-Delv-7499 |  | 34.07d |
| B1.2.32 12 16.01.15 |  | Bituminous concrete Wearing Course, including tack coat (RC2) | 2d | 2026-12-01 | 2026-12-02 | B1.2.32 11 26.01.15, 10 14 53.015, 32 16 13.015, B7.32 31 26.01-195 SS |  | 4.32d |
|  | Pavement Marking | **Pavement Marking** |  | 2026-12-06 | 2026-12-09 |  |  |  |
| B1.2.32 17 23.02.15 |  | Retroreflective Thermoplastic Yellow, Traffic lines | 2d | 2026-12-06 | 2026-12-07 | B1.2.32 12 16.01.15, B1.2.32 12 19.13.015, DMM2-Proc-Delv-7503, B1.2.32 17 23.01.9, B1.2.32 17 23.02.9, B1.2.32 17 23.01.2, B1.2.32 17 23.02.2 |  | 23.32d |
| B1.2.32 17 23.01.15 |  | Retroreflective Thermoplastic White Traffic lines | 2d | 2026-12-08 | 2026-12-09 | B1.2.32 12 16.01.15, B1.2.32 12 19.13.015, B1.2.32 17 23.02.15 |  | 23.32d |
|  | Traffic Signs | **Traffic Signs** |  | 2026-11-12 | 2026-12-12 |  |  |  |

| ID | WBS | Task | Duration | Start | Finish | Predecessors | Complete | Total float |
| --- | --- | --- | --- | --- | --- | --- | --- | --- |
|  | Pre Install | **Pre-Installation** |  | 2026-11-12 | 2026-11-16 |  |  |  |
| B2.31 23 00.431 |  | Excavation | 2d | 2026-11-12 | 2026-11-14 | B2.31 23 00.421, DMM2-Proc-Delv-7505, DMM2-Proc-Delv-7506 |  | 6.32d |
| 10 14 53.015 |  | Foundation | 2d | 2026-11-15 | 2026-11-16 | B2.31 23 00.431 |  | 16.32d |
|  | Installation | **Installation** |  | 2026-12-08 | 2026-12-12 |  |  |  |
| B1.2.10 14 53.0115 |  | 1 Sheet Alumenium, Single post | 2d | 2026-12-08 | 2026-12-09 | B1.2.32 17 23.01.15 SS, B1.2.32 17 23.02.15, DMM2-Proc-Delv-7411 SS |  | 25.32d |
| B1.2.10 14 53.0215 |  | 2 Sheet Alumenium, Single post | 2d | 2026-12-10 | 2026-12-12 | B1.2.32 17 23.01.15, B1.2.32 17 23.02.15, B1.2.32 17 23.01.15 FF |  | 23.32d |
| B1.2.10 14 53.0315 |  | 1 Sheet Alumenium, Double post | 2d | 2026-12-10 | 2026-12-12 | B1.2.32 17 23.01.15, B1.2.32 17 23.02.15 |  | 23.32d |
|  | Guard Rail | **Guard Rail** |  | 2026-10-07 | 2026-10-19 |  |  |  |
| B2.31 23 00.664 |  | Excavation | 3d | 2026-10-07 | 2026-10-10 | B1.2.32 11 23.01.18 |  | 45.32d |
| 10 14 53.25 |  | Foundation | 2d | 2026-10-13 | 2026-10-14 | B2.31 23 00.664 FS+2d |  | 47.32d |
| B1.2.10 14 53.338 |  | W-Beam Guard Rail Installation | 4d | 2026-10-15 | 2026-10-19 | 10 14 53.25 SS+2d |  | 47.32d |
|  | Road Misc. | **Miscellaneous** |  | 2026-12-03 | 2026-12-05 |  |  |  |
| B1.2.32 12 19.13.015 |  | Speed Tables | 2d | 2026-12-03 | 2026-12-05 | B1.2.32 12 16.01.15 |  | 23.32d |
|  | Landscape | **Landscape** |  | 2026-11-15 | 2026-12-30 |  |  |  |
|  | Fences | **Fences** |  | 2026-11-15 | 2026-12-03 |  |  |  |
|  | (ZATCA HCIS) | **Steel fence (ZATCA HCIS)** |  | 2026-11-15 | 2026-12-03 |  |  |  |
| B7.32 31 26.01-191 |  | Earthwork | 6d | 2026-11-15 | 2026-11-21 | B2.31 23 00.431 |  | 6.32d |
| B7.32 31 26.01-193 |  | Foundation | 6d | 2026-11-22 | 2026-11-28 | B7.32 31 26.01-191 |  | 6.32d |
| B7.32 31 26.01-195 |  | Fence Installation | 5d | 2026-11-29 | 2026-12-03 | B7.32 31 26.01-193 |  | 6.32d |
|  | Geotextile | **Geotextile** |  | 2026-11-30 | 2026-12-05 |  |  |  |
| B7.31 32 19.23.6 |  | Geotextile to protect trees planting soil | 5d | 2026-11-30 | 2026-12-05 | DMM2-Proc-Delv-7541 |  | 19.32d |
| B7.31 32 19.23.7 |  | Geotextile below gravel bed | 5d | 2026-11-30 | 2026-12-05 | B7.32 31 26.01-191, DMM2-Proc-Delv-7541 |  | 19.32d |
|  | Trees | **Trees** |  | 2026-12-24 | 2026-12-30 |  |  |  |
| B7.32 93 43.07 |  | Tamarindus indica | 5d | 2026-12-24 | 2026-12-30 | B7.31 32 19.23.6, DMM2-Proc-Delv-7539, B7.31 32 19.23.7, B7.31 32 19.23.5, B7.32 91 00.01.01, B7.32 93 43.7 |  | 3d |
|  | Road 03 | **Road 03** |  | 2025-11-28 | 2026-12-30 |  |  |  |
|  | Wet Networks | **Wet Networks** |  | 2026-03-12 | 2026-11-07 |  |  |  |
|  | Sewerage Network | **Sewerage Network** |  | 2026-04-12 | 2026-10-08 |  |  |  |
|  | GRP | **GRP Pipes** |  | 2026-04-12 | 2026-08-27 |  |  |  |
|  | 150 | **?150** |  | 2026-04-12 | 2026-08-27 |  |  |  |
|  | 1 | **Depth From 1.5m to 2.5m** |  | 2026-04-15 | 2026-05-21 |  |  |  |
| B5.33 31 00.01.0211 |  | Excavation | 2d | 2026-04-15 A | 2026-04-16 A | B1.1.31 23 23.172 | 100% |  |
| B5.33 31 00.01.0215 |  | Sand Bedding | 2d | 2026-04-18 A | 2026-04-19 A | B5.33 31 00.01.0211 | 100% |  |
| B5.33 31 00.01.0219 |  | Pipe Laying | 2d | 2026-04-19 A | 2026-04-20 A | B5.33 31 00.01.0215 | 100% |  |
| B5.33 31 00.01.02113 |  | Embedment & Test | 1d | 2026-04-21 A | 2026-04-21 A | B5.33 31 00.01.0219 | 100% |  |
| B5.33 31 00.01.02117 |  | Backfilling & Warrning Tape | 16.62d | 2026-05-03 A | 2026-05-21 A | B5.33 31 00.01.02113 | 100% |  |
|  | 2 | **Depth From 2.5m to 3.5m** |  | 2026-04-12 | 2026-08-27 |  |  |  |
| B5.33 31 00.01.0213 |  | Excavation | 3d | 2026-04-12 A | 2026-04-14 A | B5.33 31 00.01.0211 | 100% |  |
| B5.33 31 00.01.0217 |  | Sand Bedding | 3d | 2026-04-15 A | 2026-04-18 A | B5.33 31 00.01.0213 | 100% |  |
| B5.33 31 00.01.02111 |  | Pipe Laying | 2d | 2026-04-19 A | 2026-04-20 A | B5.33 31 00.01.0217 | 100% |  |
| B5.33 31 00.01.02115 |  | Embedment & Test | 1d | 2026-04-21 A | 2026-04-21 A | B5.33 31 00.01.02111 | 100% |  |
| B5.33 31 00.01.02119 |  | Backfilling & Warrning Tape | 95.62d | 2026-05-04 A | 2026-08-27 A | B5.33 31 00.01.02115, B5.33 31 00.01.02117 | 100% |  |
|  | Manholes | **Manholes ?1200** |  | 2026-04-16 | 2026-10-08 |  |  |  |
|  | 3 | **Depth From 1.5m to 2.5m** |  | 2026-05-20 | 2026-10-08 |  |  |  |
| B6.33 05 39.01.1627 |  | Excavation & Compaction | 2d | 2026-05-20 A | 2026-05-21 A | B5.33 31 00.01.0213 | 100% |  |
| B6.33 05 39.01.1637 |  | Blinding Conc, & RC Base | 3d | 2026-05-23 A | 2026-05-25 A | B6.33 05 39.01.1627 | 100% |  |
| B6.33 05 39.01.1647 |  | Manhole Installation | 69.55d | 2026-05-31 A | 2026-08-19 A | B6.33 05 39.01.1637 | 100% |  |
| B6.33 05 39.01.1657 |  | Test, Internal Finishing, Benching & Cover (45.60% Completed) | 59.45d | 2026-07-08 A | 2026-09-15 A | B6.33 05 39.01.1647 | 100% |  |
| B6.33 05 39.01.1667 |  | Backfilling | 33.95d | 2026-07-13 A | 2026-08-22 A | B5.33 31 00.01.02117 | 100% |  |
| B6.33 05 39.01.1657_R |  | Test, Internal Finishing, Benching & Cover(Rem) | 2.18d | 2026-09-27 A | 2026-10-08 | B6.33 05 39.01.1647, B6.33 05 39.01.1657, B6.33 05 39.01.1607_R | 50% | 112.23d |
|  | 4 | **Depth From 2.5m to 3.5m** |  | 2026-04-16 | 2026-10-08 |  |  |  |
| B6.33 05 39.01.1677 |  | Excavation & Compaction | 2d | 2026-04-16 A | 2026-04-18 A | B6.33 05 39.01.1627 | 100% |  |
| B6.33 05 39.01.1687 |  | Blinding Conc, & RC Base | 3d | 2026-05-20 A | 2026-05-23 A | B6.33 05 39.01.1677 | 100% |  |
| B6.33 05 39.01.1697 |  | Manhole Installation (43.20% Completed) | 95d | 2026-05-24 A | 2026-09-15 A | B6.33 05 39.01.1687 | 100% |  |
| B6.33 05 39.01.1707 |  | Test, Internal Finishing, Benching & Cover (45.60% Completed) | 59d | 2026-07-09 A | 2026-09-15 A | B6.33 05 39.01.1697 SS | 100% |  |
| B6.33 05 39.01.1717 |  | Backfilling | 41.5d | 2026-07-14 A | 2026-08-31 A | B5.33 31 00.01.02117 | 100% |  |
| B6.33 05 39.01.1697_R |  | Manhole Installation(Rem) | 1.14d | 2026-09-24 A | 2026-10-07 | B6.33 05 39.01.1687, B6.33 05 39.01.1697 | 50% | 112.75d |
| B6.33 05 39.01.1707_R |  | Test, Internal Finishing, Benching & Cover(Rem) | 2.18d | 2026-09-29 A | 2026-10-08 | B6.33 05 39.01.1697_R SS, B6.33 05 39.01.1707, B6.33 05 39.01.1657_R | 50% | 112.23d |
|  | Stormwater Network | **Stormwater Network** |  | 2026-03-12 | 2026-10-07 |  |  |  |
|  | GRP | **GRP** |  | 2026-04-14 | 2026-10-07 |  |  |  |
|  | ?4001 | **?400** |  | 2026-04-14 | 2026-10-07 |  |  |  |
|  | 3 | **Depth From 1.5m to 2.5m** |  | 2026-04-14 | 2026-10-07 |  |  |  |
| B6.33 42 11.01-110 |  | Excavation | 8d | 2026-04-14 A | 2026-04-22 A | B5.33 31 00.01.0213 | 100% |  |
| B6.33 42 11.01-116 |  | Sand Bedding | 17.31d | 2026-04-16 A | 2026-05-06 A | B6.33 42 11.01-110 | 100% |  |
| B6.33 42 11.01-122 |  | Pipe Laying | 21.47d | 2026-04-19 A | 2026-05-13 A | B6.33 42 11.01-116 | 100% |  |
| B6.33 42 11.01-128 |  | Embedment & Test | 12.31d | 2026-05-06 A | 2026-05-20 A | B6.33 42 11.01-122 | 100% |  |
| B6.33 42 11.01-134 |  | Backfilling & Warrning Tape (67.02% Completed) | 106.53d | 2026-05-10 A | 2026-09-15 A | B6.33 42 11.01-128 | 100% |  |
| B6.33 42 11.01-134_R |  | Backfilling & Warrning Tape(Rem) | 3.75d | 2026-09-22 A | 2026-10-07 | B6.33 42 11.01-128, B6.33 42 11.01-134 | 90% | 47.52d |
|  | ?4002 | **?600** |  | 2026-04-16 | 2026-10-07 |  |  |  |
|  | 4 | **Depth From 1.5m to 2.5m** |  | 2026-04-16 | 2026-10-07 |  |  |  |
| B6.33 42 11.01-112 |  | Excavation | 8d | 2026-04-16 A | 2026-04-25 A | B6.33 42 11.01-110 | 100% |  |

| ID | WBS | Task | Duration | Start | Finish | Predecessors | Complete | Total float |
| --- | --- | --- | --- | --- | --- | --- | --- | --- |
| B6.33 42 11.01-118 |  | Sand Bedding (67.02% Completed) | 126d | 2026-04-18 A | 2026-09-15 A | B6.33 42 11.01-112 | 100% |  |
| B6.33 42 11.01-124 |  | Pipe Laying (67.02% Completed) | 124d | 2026-04-20 A | 2026-09-15 A | B6.33 42 11.01-118 FF | 100% |  |
| B6.33 42 11.01-130 |  | Embedment & Test (67.02% Completed) | 109.69d | 2026-05-06 A | 2026-09-15 A | B6.33 42 11.01-124 FF | 100% |  |
| B6.33 42 11.01-136 |  | Backfilling & Warrning Tape (67.02% Completed) | 105.69d | 2026-05-11 A | 2026-09-15 A | B6.33 42 11.01-130 FF | 100% |  |
| B6.33 42 11.01-136_R |  | Backfilling & Warrning Tape(Rem) | 2.96d | 2026-09-16 A | 2026-10-07 | B6.33 42 11.01-130_R FF, B6.33 42 11.01-136 | 90% | 113.02d |
| B6.33 42 11.01-130_R |  | Embedment & Test(Rem) | 2.57d | 2026-09-16 A | 2026-10-07 | B6.33 42 11.01-124_R FF, B6.33 42 11.01-130 | 90% | 113.02d |
| B6.33 42 11.01-118_R |  | Sand Bedding(Rem) | 3d | 2026-09-21 A | 2026-10-07 | B6.33 42 11.01-112, B6.33 42 11.01-118 | 90% | 113.02d |
| B6.33 42 11.01-124_R |  | Pipe Laying(Rem) | 3d | 2026-09-26 A | 2026-10-07 | B6.33 42 11.01-118_R FF, B6.33 42 11.01-124 | 90% | 113.02d |
|  | ?40021 | **?700** |  | 2026-04-22 | 2026-10-07 |  |  |  |
|  | 4 | **Depth From 1.5m to 2.5m** |  | 2026-04-22 | 2026-10-07 |  |  |  |
| B6.33 42 11.01-114 |  | Excavation | 5d | 2026-04-22 A | 2026-04-27 A | B6.33 42 11.01-112 | 100% |  |
| B6.33 42 11.01-120 |  | Sand Bedding | 97.19d | 2026-04-25 A | 2026-08-20 A | B6.33 42 11.01-114 | 100% |  |
| B6.33 42 11.01-126 |  | Pipe Laying | 95.14d | 2026-04-28 A | 2026-08-22 A | B6.33 42 11.01-120 | 100% |  |
| B6.33 42 11.01-132 |  | Embedment & Test (34.18% Completed) | 34.86d | 2026-08-06 A | 2026-09-15 A | B6.33 42 11.01-126 | 100% |  |
| B6.33 42 11.01-138 |  | Backfilling & Warrning Tape | 13.71d | 2026-08-09 A | 2026-08-24 A | B6.33 42 11.01-126 FF | 100% |  |
| B6.33 42 11.01-132_R |  | Embedment & Test(Rem) | 3.76d | 2026-09-24 A | 2026-10-07 | B6.33 42 11.01-126, B6.33 42 11.01-132 | 90% | 112.95d |
|  | Strom Manholes | **Manholes** |  | 2026-04-19 | 2026-10-07 |  |  |  |
|  | 1 | **?1200** |  | 2026-04-19 | 2026-10-07 |  |  |  |
|  | 4 | **Depth From 1.5m to 2.5m** |  | 2026-04-19 | 2026-10-07 |  |  |  |
| B6.33 05 39.01.3977 |  | Excavation & Compaction (97.00% Completed) | 125d | 2026-04-19 A | 2026-09-15 A | B6.33 42 11.01-114 | 100% |  |
| B6.33 05 39.01.3987 |  | Blinding Conc, & RC Base (97.00% Completed) | 61.6d | 2026-07-06 A | 2026-09-15 A | B6.33 05 39.01.3977 SS | 100% |  |
| B6.33 05 39.01.3997 |  | Manhole Installation (97.00% Completed) | 59.6d | 2026-07-08 A | 2026-09-15 A | B6.33 05 39.01.3987 SS | 100% |  |
| B6.33 05 39.01.4007 |  | Test, Internal Finishing, Benching & Cover (97.00% Completed) | 58.6d | 2026-07-09 A | 2026-09-15 A | B6.33 05 39.01.3997 SS | 100% |  |
| B6.33 05 39.01.4017 |  | Backfilling (97.00% Completed) | 57.6d | 2026-07-11 A | 2026-09-15 A | B6.33 05 39.01.4007 SS | 100% |  |
| B6.33 05 39.01.3977_R |  | Excavation & Compaction(Rem) | 3d | 2026-09-20 A | 2026-09-22 A | B6.33 42 11.01-114, B6.33 05 39.01.3977 | 100% |  |
| B6.33 05 39.01.4017_R |  | Backfilling(Rem) | 3d | 2026-09-20 A | 2026-09-24 A | B6.33 05 39.01.4007_R SS, B6.33 05 39.01.4017, B6.33 42 11.01-132_R | 100% |  |
| B6.33 05 39.01.3987_R |  | Blinding Conc, & RC Base(Rem) | 3d | 2026-09-22 A | 2026-09-28 A | B6.33 05 39.01.3977_R SS, B6.33 05 39.01.3987 | 100% |  |
| B6.33 05 39.01.3997_R |  | Manhole Installation(Rem) | 3d | 2026-09-26 A | 2026-10-01 A | B6.33 05 39.01.3987_R SS, B6.33 05 39.01.3997 | 100% |  |
| B6.33 05 39.01.4007_R |  | Test, Internal Finishing, Benching & Cover(Rem) | 3d | 2026-09-30 A | 2026-10-07 A | B6.33 05 39.01.3997_R SS, B6.33 05 39.01.4007 | 100% |  |
|  | Catch Basins | **Catch Basins** |  | 2026-03-12 | 2026-10-06 |  |  |  |
|  | Sing | **Single** |  | 2026-06-10 | 2026-10-06 |  |  |  |
| B6.33 05 40.01.570 |  | Excavation, Compaction & Vapour Barrier (92.60% Completed) | 83.6d | 2026-06-10 A | 2026-09-15 A | B6.33 05 39.01.3977 SS | 100% |  |
| B6.33 05 40.01.580 |  | Blinding Conc. (92.60% Completed) | 81.6d | 2026-06-13 A | 2026-09-15 A | B6.33 05 40.01.570 SS | 100% |  |
| B6.33 05 40.01.590 |  | Catch Basin Installation (92.60% Completed) | 80.6d | 2026-06-14 A | 2026-09-15 A | B6.33 05 40.01.580 SS | 100% |  |
| B6.33 05 40.01.600 |  | Backfilling, DI Frame & Grate Cover Fixing (92.60% Completed) | 79d | 2026-06-16 A | 2026-09-15 A | B6.33 42 11.36-1101, B6.33 42 11.35-128 | 100% |  |
| B6.33 05 40.01.600_R |  | Backfilling, DI Frame & Grate Cover Fixing(Rem) | 3d | 2026-09-20 A | 2026-09-22 A | B6.33 42 11.36-1101, B6.33 42 11.35-128, B6.33 05 40.01.600, B6.33 05 39.01.3807_R, B6.33 05 39.01.3957_R | 100% |  |
| B6.33 05 40.01.570_R |  | Excavation, Compaction & Vapour Barrier(Rem) | 3d | 2026-09-21 A | 2026-09-24 A | B6.33 05 39.01.3977_R SS, B6.33 05 40.01.570 | 100% |  |
| B6.33 05 40.01.580_R |  | Blinding Conc.(Rem) | 3d | 2026-09-26 A | 2026-09-29 A | B6.33 05 40.01.570_R SS, B6.33 05 40.01.580 | 100% |  |
| B6.33 05 40.01.590_R |  | Catch Basin Installation(Rem) | 3d | 2026-10-03 A | 2026-10-06 A | B6.33 05 40.01.580_R SS, B6.33 05 40.01.590 | 100% |  |
|  | UPVC | **UPVC** |  | 2026-03-12 | 2026-09-24 |  |  |  |
|  | UPVC300 | **?300 From 0.0 to 1.5m** |  | 2026-03-12 | 2026-09-24 |  |  |  |
| B6.33 42 11.35-128 |  | Fittings & Pipe Installation | 0.75d | 2026-03-12 A | 2026-03-14 A | B1.2.31 23 23.01.16 | 100% |  |
| B6.33 42 11.35-116 |  | Catch Basin Opening Prep. (87.09% Completed) | 80.6d | 2026-06-14 A | 2026-09-15 A | B6.33 05 40.01.590 SS | 100% |  |
| B6.33 42 11.35-116_R |  | Catch Basin Opening Prep.(Rem) | 3d | 2026-09-21 A | 2026-09-24 A | B6.33 05 40.01.590_R SS, B6.33 42 11.35-116 | 100% |  |
|  | UPVC3001 | **?400 From 0.0 to 1.5m** |  | 2026-03-12 | 2026-09-22 |  |  |  |
| B6.33 42 11.36-1101 |  | Fittings & Pipe Installation | 0.75d | 2026-03-12 A | 2026-03-14 A | B1.2.31 23 23.01.16 | 100% |  |
| B6.33 42 11.36-189 |  | Catch Basin Opening Prep. (87.09% Completed) | 80.6d | 2026-06-14 A | 2026-09-15 A | B6.33 42 11.35-116 SS, B6.33 05 40.01.590 SS | 100% |  |
| B6.33 42 11.36-189_R |  | Catch Basin Opening Prep.(Rem) | 3d | 2026-09-20 A | 2026-09-22 A | B6.33 42 11.35-116_R SS, B6.33 05 40.01.590_R SS, B6.33 42 11.36-189, B6.33 42 11.36-187_R | 100% |  |
|  | Potable Water | **Potable Water Network** |  | 2026-04-11 | 2026-10-25 |  |  |  |
|  | HDPE | **HDPE Pipes** |  | 2026-04-11 | 2026-10-10 |  |  |  |
|  | ?110mm | **?110mm** |  | 2026-04-11 | 2026-10-10 |  |  |  |
|  | Depth: 0.0m - 1.5m | **Depth: 0.0m - 1.5m** |  | 2026-04-11 | 2026-09-20 |  |  |  |
| B3.33 14 13-1191 |  | Excavation (79.00% Completed) | 131.98d | 2026-04-11 A | 2026-09-15 A | B6.33 42 11.36-1101 | 100% |  |
| B3.33 14 13-1195 |  | Sand Bedding (79.00% Completed) | 129.98d | 2026-04-13 A | 2026-09-15 A | B3.33 14 13-1191 FF | 100% |  |
| B3.33 14 13-1199 |  | Pipe Laying (79.00% Completed) | 126.98d | 2026-04-16 A | 2026-09-15 A | B3.33 14 13-1195 FF | 100% |  |
| B3.33 14 13-11103 |  | Embedment & Test (79.00% Completed) | 120.98d | 2026-04-23 A | 2026-09-15 A | B3.33 14 19.01.116, B3.33 14 13-1199 FF | 100% |  |
| B3.33 14 13-11107 |  | Backfilling & Warrning Tape (79.00% Completed) | 105.45d | 2026-05-11 A | 2026-09-15 A | B3.33 14 13.01.02 5 | 100% |  |
| B3.33 14 13-11103_R |  | Embedment & Test(Rem) | 3d | 2026-09-16 A | 2026-09-20 A | B3.33 14 19.01.116, B3.33 14 13-1199_R FF, B3.33 14 13-11103 | 100% |  |
| B3.33 14 13-1191_R |  | Excavation(Rem) | 3d | 2026-09-16 A | 2026-09-20 A | B1.2.32 11 26.01.16 FF, B3.33 14 13-1191 | 100% |  |
| B3.33 14 13-1195_R |  | Sand Bedding(Rem) | 3d | 2026-09-16 A | 2026-09-20 A | B3.33 14 13-1191_R FF, B3.33 14 13-1195 | 100% |  |
| B3.33 14 13-1199_R |  | Pipe Laying(Rem) | 3d | 2026-09-16 A | 2026-09-20 A | B3.33 14 13-1195_R FF, B3.33 14 13-1199 | 100% |  |
| B3.33 14 13-11107_R |  | Backfilling & Warrning Tape(Rem) | 2.05d | 2026-09-17 A | 2026-09-19 A | B3.33 14 13.01.02 5, B3.33 14 13-11107 | 100% |  |
|  | Depth: 1.51m - 2.5m | **Depth: 1.51m - 2.5m** |  | 2026-04-13 | 2026-10-10 |  |  |  |
| B3.33 14 13-1193 |  | Excavation (79.00% Completed) | 129.98d | 2026-04-13 A | 2026-09-15 A | B3.33 14 13-1191 SS | 100% |  |
| B3.33 14 13-1197 |  | Sand Bedding (79.00% Completed) | 126.98d | 2026-04-16 A | 2026-09-15 A | B3.33 14 13-1193 FF | 100% |  |
| B3.33 14 13-11101 |  | Pipe Laying (79.00% Completed) | 125.98d | 2026-04-18 A | 2026-09-15 A | B3.33 14 13-1197 FF | 100% |  |
| B3.33 14 13-11105 |  | Embedment & Test (79.00% Completed) | 120.98d | 2026-04-23 A | 2026-09-15 A | B3.33 14 19.01.116, B3.33 14 13-11101 FF, B3.33 14 13-11103 FF | 100% |  |
| B3.33 14 13-11109 |  | Backfilling & Warrning Tape (79.00% Completed) | 106.45d | 2026-05-10 A | 2026-09-15 A | B3.33 14 13-11105 FF | 100% |  |
| B3.33 14 13-11101_R |  | Pipe Laying(Rem) | 3d | 2026-10-07 | 2026-10-10 | B3.33 14 13-1197_R FF, B3.33 14 13-11101 |  | 110.32d |
| B3.33 14 13-11105_R |  | Embedment & Test(Rem) | 3d | 2026-10-07 | 2026-10-10 | B3.33 14 19.01.116, B3.33 14 13-11101_R FF, B3.33 14 13-11103_R FF, B3.33 14 13-11105 |  | 110.32d |

| ID | WBS | Task | Duration | Start | Finish | Predecessors | Complete | Total float |
| --- | --- | --- | --- | --- | --- | --- | --- | --- |
| B3.33 14 13-1193_R |  | Excavation(Rem) | 3d | 2026-10-07 | 2026-10-10 | B3.33 14 13-1191_R SS, B3.33 14 13-1193 |  | 88.32d |
| B3.33 14 13-1197_R |  | Sand Bedding(Rem) | 3d | 2026-10-07 | 2026-10-10 | B3.33 14 13-1193_R FF, B3.33 14 13-1197 |  | 110.32d |
| B3.33 14 13-11109_R |  | Backfilling & Warrning Tape(Rem) | 2.05d | 2026-10-07 | 2026-10-10 | B3.33 14 19.01.117 FF, B3.33 14 13-11105_R FF, B3.33 14 13-11109 |  | 110.32d |
|  | Crossing | **Plots and Buildings Crossing** |  | 2026-10-10 | 2026-10-19 |  |  |  |
| B3.33 14 13.02.28 |  | Earthwork | 3d | 2026-10-10 | 2026-10-12 | B3.33 05 63.02.37_R |  | 88.32d |
| B3.33 14 13.02.29 |  | Sand Bedding | 3d | 2026-10-13 | 2026-10-15 | B3.33 14 13.02.28 |  | 88.32d |
| B3.33 14 13.02.30 |  | Tee, Pipe (Crossing) Installation & Backfilling | 3d | 2026-10-17 | 2026-10-19 | B3.33 14 13.02.29, B3.33 14 13-10109_R |  | 88.32d |
|  | Valves & Chambers | **Valves & Chambers** |  | 2026-09-02 | 2026-10-25 |  |  |  |
|  | GV | **Gate Valves** |  | 2026-09-02 | 2026-10-10 |  |  |  |
|  | 1 | **Gate valves dia (110) mm** |  | 2026-09-02 | 2026-10-10 |  |  |  |
| B3.33 14 19.01.116 |  | Burried Isolation Valve Installation | 4d | 2026-09-02 A | 2026-09-07 A | B3.33 14 13-11101 SS, B3.33 14 13-11101 FF | 100% |  |
| B3.33 14 19.01.117 |  | Spindle & Surface Box | 3d | 2026-10-07 | 2026-10-10 | B3.33 14 19.01.116 |  | 110.32d |
|  | 2 | **Air Valves** |  | 2026-09-02 | 2026-10-25 |  |  |  |
|  | 4 | **Air valves on less than 315 mm. (In Chamber)** |  | 2026-09-02 | 2026-10-25 |  |  |  |
| B3.33 05 63.02.37 |  | Land Adjustment & Compaction (50.00% Completed) | 11.46d | 2026-09-02 A | 2026-09-15 A | B3.33 14 13-1193 SS | 100% |  |
| B3.33 05 63.02.35 |  | Foundations (50.00% Completed) | 10.46d | 2026-09-03 A | 2026-09-15 A | B3.33 05 63.02.37 SS | 100% |  |
| B3.33 05 63.02.36 |  | Chamber Curing, Finishing & Steel Cover (50.00% Completed) | 9.46d | 2026-09-05 A | 2026-09-15 A | B3.33 05 63.02.38 SS | 100% |  |
| B3.33 05 63.02.38 |  | Chambers Walls Conc Cast In Situ (50.00% Completed) | 9.46d | 2026-09-05 A | 2026-09-15 A | B3.33 05 63.02.35 SS | 100% |  |
| B3.33 05 63.02.35_R |  | Foundations(Rem) | 2.5d | 2026-10-07 | 2026-10-10 | B3.33 05 63.02.37_R SS, B3.33 05 63.02.35 |  | 99.32d |
| B3.33 05 63.02.36_R |  | Chamber Curing, Finishing & Steel Cover(Rem) | 3d | 2026-10-07 | 2026-10-10 | B3.33 05 63.02.38_R SS, B3.33 05 63.02.36 |  | 99.32d |
| B3.33 05 63.02.37_R |  | Land Adjustment & Compaction(Rem) | 2d | 2026-10-07 | 2026-10-08 | B3.33 14 13-1193_R SS, B3.33 05 63.02.37 |  | 88.32d |
| B3.33 05 63.02.38_R |  | Chambers Walls Conc Cast In Situ(Rem) | 2.5d | 2026-10-07 | 2026-10-10 | B3.33 05 63.02.35_R SS, B3.33 05 63.02.38 |  | 99.32d |
| B3.33 05 63.02.39 |  | Valve & Fitting Installation | 5d | 2026-10-20 | 2026-10-25 | B3.33 05 63.02.36_R, B3.33 14 19.01.119 |  | 91.32d |
|  | Fire Fighting | **Fire Fighting Network** |  | 2026-05-15 | 2026-11-07 |  |  |  |
|  | HDPE | **HDPE Pipes** |  | 2026-05-20 | 2026-08-31 |  |  |  |
|  | ?250mm | **?250mm** |  | 2026-05-20 | 2026-08-31 |  |  |  |
|  | Depth: 0.0m - 1.5m | **Depth: 0.0m - 1.5m** |  | 2026-05-20 | 2026-08-31 |  |  |  |
| B3.1. 33 14 13-0190 |  | Excavation | 2d | 2026-05-20 A | 2026-05-23 A | B3.33 14 13-1193 SS+2d, B3.33 14 13-1193 FF+2d | 100% |  |
| B3.1. 33 14 13-0194 |  | Sand Bedding | 2d | 2026-05-23 A | 2026-05-25 A | B3.1. 33 14 13-0190 | 100% |  |
| B3.1. 33 14 13-0198 |  | Pipe Laying | 76.62d | 2026-05-25 A | 2026-08-27 A | B3.1. 33 14 13-0194, DMM2-Proc-Delv-5888 | 100% |  |
| B3.1. 33 14 13-01102 |  | Embedment & Test | 69.5d | 2026-06-10 A | 2026-08-31 A | B3.1. 33 14 13-0198 | 100% |  |
| B3.1. 33 14 13-01106 |  | Backfilling & Warrning Tape | 66.75d | 2026-06-13 A | 2026-08-30 A | B3.1. 33 14 13-01102, B3.33 05 63.01.46 | 100% |  |
|  | Depth: 1.51m - 2.5m | **Depth: 1.51m - 2.5m** |  | 2026-05-23 | 2026-08-31 |  |  |  |
| B3.1. 33 14 13-0192 |  | Excavation | 2d | 2026-05-23 A | 2026-05-25 A | B3.1. 33 14 13-0190 | 100% |  |
| B3.1. 33 14 13-0196 |  | Sand Bedding | 2d | 2026-05-25 A | 2026-06-01 A | B3.1. 33 14 13-0192 | 100% |  |
| B3.1. 33 14 13-01104 |  | Embedment & Test | 69.5d | 2026-06-10 A | 2026-08-31 A | B3.1. 33 14 13-01100, B3.33 14 19.01.132 | 100% |  |
| B3.1. 33 14 13-01100 |  | Pipe Laying | 64.34d | 2026-06-13 A | 2026-08-27 A | B3.1. 33 14 13-0196, B3.33 05 63.01.46 | 100% |  |
| B3.1. 33 14 13-01108 |  | Backfilling & Warrning Tape | 64.58d | 2026-06-15 A | 2026-08-30 A | B3.1. 33 14 13-01104 | 100% |  |
|  | Valves & Chambers | **Valves & Chambers** |  | 2026-05-15 | 2026-10-21 |  |  |  |
|  | GV | **Gate Valves** |  | 2026-05-15 | 2026-10-21 |  |  |  |
|  | 1 | **Gate valves dia (250) mm** |  | 2026-05-15 | 2026-10-21 |  |  |  |
| B3.33 14 19.01.132 |  | Burried Isolation Valve Installation | 1.82d | 2026-05-15 A | 2026-05-17 A | B3.1. 33 14 13-01100, B3.1. 33 14 13-0198, B3.1. 33 14 13-01106 | 100% |  |
| B3.33 14 19.01.133 |  | Spindle & Surface Box | 4d | 2026-10-18 | 2026-10-21 | B3.33 14 19.01.132, B3.33 05 63.02.54, B3.33 14 19.01.131 |  | 64.32d |
|  | 2 | **Air Valves** |  | 2026-09-09 | 2026-10-13 |  |  |  |
|  | 4 | **Air valves on less than 315 mm. (In Chamber)** |  | 2026-09-09 | 2026-10-13 |  |  |  |
| B3.33 05 63.02.77 |  | Land Adjustment & Compaction | 2d | 2026-09-09 A | 2026-09-10 A | B3.1. 33 14 13-01104, B3.1. 33 14 13-01102 | 100% |  |
| B3.33 05 63.02.75 |  | Foundations | 3d | 2026-09-12 A | 2026-09-14 A | B3.33 05 63.02.77 | 100% |  |
| B3.33 05 63.02.78 |  | Chambers Walls Conc Cast In Situ | 3d | 2026-09-12 A | 2026-09-14 A | B3.33 05 63.02.75 | 100% |  |
| B3.33 05 63.02.76 |  | Chamber Curing, Finishing & Steel Cover | 1d | 2026-09-15 A | 2026-09-15 A | B3.33 05 63.02.78 | 100% |  |
| B3.33 05 63.02.79 |  | Valve & Fitting Installation | 6d | 2026-10-07 | 2026-10-13 | B3.33 05 63.02.76 |  | 92.32d |
|  | 3 | **Fire Hydrant** |  | 2026-09-09 | 2026-11-07 |  |  |  |
| B3.33 14 19.01.fh44 |  | Riser Pipe & Flanged Fittings Installation (50.00% Completed) | 6d | 2026-09-09 A | 2026-09-15 A | B3.1. 33 14 13-01100, B3.1. 33 14 13-0198 | 100% |  |
| B3.33 14 19.01.fh43 |  | Firehydrant Fixing/Installation (50.00% Completed) | 4d | 2026-09-12 A | 2026-09-15 A | B3.33 14 19.01.fh44 FF | 100% |  |
| B3.33 14 19.01.fh43_R |  | Firehydrant Fixing/Installation(Rem) | 3.5d | 2026-10-07 | 2026-10-11 | B3.33 14 19.01.fh44_R FF, B3.33 14 19.01.fh43 |  | 77.82d |
| B3.33 14 19.01.fh44_R |  | Riser Pipe & Flanged Fittings Installation(Rem) | 3d | 2026-10-07 | 2026-10-10 | B3.1. 33 14 13-01100, B3.1. 33 14 13-0198, B3.33 14 19.01.fh44 |  | 78.32d |
| B3.33 14 19.01.fh45 |  | Backfilling & Compaction | 7d | 2026-10-31 | 2026-11-07 | B3.33 14 19.01.fh43_R, B3.33 14 19.01.fh24, B3.33 14 19.01.121, B3.33 14 19.01.fh3, B3.33 14 19.01.fh42_R |  | 61.32d |
|  | Dry Networks | **Dry Networks** |  | 2026-09-05 | 2026-11-07 |  |  |  |
|  | MV Network | **Medium Voltage Network** |  | 2026-09-10 | 2026-10-14 |  |  |  |
|  | Duct Banks | **Duct Banks** |  | 2026-09-10 | 2026-10-14 |  |  |  |
|  | 4 Way | **2 Way** |  | 2026-09-10 | 2026-10-14 |  |  |  |
| B2.31 23 00.643 |  | Excavation (75.00% Completed) | 4.95d | 2026-09-10 A | 2026-09-15 A | B6.33 05 40.01.600 SS | 100% |  |
| B2.33 71 00.294 |  | Shuttering, Steel Fixing Incl. UPVC Pipe & Conc. Cast (75.00% Completed) | 2.95d | 2026-09-13 A | 2026-09-15 A | B2.31 23 00.643 SS | 100% |  |
| B2.31 23 00.643_R |  | Excavation(Rem) | 3d | 2026-10-07 | 2026-10-10 | B6.33 05 40.01.600_R SS, B2.31 23 00.643 |  | 30.32d |
| B2.33 71 00.294_R |  | Shuttering, Steel Fixing Incl. UPVC Pipe & Conc. Cast(Rem) | 3d | 2026-10-07 | 2026-10-10 | B2.31 23 00.643_R SS, B2.33 71 00.294 |  | 106.32d |
| B2.33 71 00.295 |  | Backfilling & Warrning Tape | 4d | 2026-10-11 | 2026-10-14 | B2.33 71 00.294_R |  | 106.32d |
|  | Street Lighting | **Street Lighting** |  | 2026-09-08 | 2026-11-07 |  |  |  |
|  | Duct Banks | **Duct Banks** |  | 2026-09-08 | 2026-10-17 |  |  |  |
|  | 4 Way | **4 Way** |  | 2026-09-08 | 2026-10-17 |  |  |  |
| B2.33 71 00 02 85 |  | Excavation (44.00% Completed) | 6.2d | 2026-09-08 A | 2026-09-15 A | B2.31 23 00.643 SS | 100% |  |
| B2.33 71 00 02 86 |  | Shuttering, Steel Fixing Incl. UPVC Pipe & Conc. Cast (44.00% Completed) | 3.2d | 2026-09-12 A | 2026-09-15 A | B2.33 71 00 02 85 SS | 100% |  |

| ID | WBS | Task | Duration | Start | Finish | Predecessors | Complete | Total float |
| --- | --- | --- | --- | --- | --- | --- | --- | --- |
| B2.33 71 00 02 87 |  | Backfilling & Warrning Tape (44.00% Completed) | 0.2d | 2026-09-15 A | 2026-09-15 A | B2.33 71 00 02 86 FF | 100% |  |
| B2.33 71 00 02 85_R |  | Excavation(Rem) | 2d | 2026-10-11 | 2026-10-12 | B2.31 23 00.643_R, B2.33 71 00 02 85 |  | 30.32d |
| B2.33 71 00 02 86_R |  | Shuttering, Steel Fixing Incl. UPVC Pipe & Conc. Cast(Rem) | 2d | 2026-10-13 | 2026-10-14 | B2.33 71 00 02 85_R, B2.33 71 00 02 86 |  | 91.32d |
| B2.33 71 00 02 87_R |  | Backfilling & Warrning Tape(Rem) | 2d | 2026-10-15 | 2026-10-17 | B2.33 71 00 02 86_R, B2.33 71 00 02 87 |  | 91.32d |
|  | Drawpits | **Drawpits** |  | 2026-10-13 | 2026-10-19 |  |  |  |
| B2.33 71 00 02 88 |  | Excavation | 2d | 2026-10-13 | 2026-10-14 | B2.33 71 00 02 85_R |  | 30.32d |
| B2.33 71 00 02 89 |  | Drawpits Installation | 2d | 2026-10-15 | 2026-10-17 | B2.33 71 00 02 88 |  | 41.32d |
| B2.33 71 00 02 90 |  | Backfilling & Warrning Tape | 2d | 2026-10-18 | 2026-10-19 | B2.33 71 00 02 89 |  | 41.32d |
|  | Cables | **Cables** |  | 2026-09-09 | 2026-11-02 |  |  |  |
|  | 4C,10+1C,10mm2 | **4C,10+1C,10mm2** |  | 2026-09-09 | 2026-11-02 |  |  |  |
| B2.33 71 19 222 |  | Land Adjustment (44.00% Completed) | 5.2d | 2026-09-09 A | 2026-09-15 A | B2.33 71 00 02 85 | 100% |  |
| B2.33 71 49.23.192 |  | Cable Pulling (44.00% Completed) | 4.2d | 2026-09-10 A | 2026-09-15 A | B2.33 71 19 222 SS | 100% |  |
| B2.33 71 19 232 |  | Backfilling (44.00% Completed) | 2.2d | 2026-09-13 A | 2026-09-15 A | B2.33 71 49.23.192 FF | 100% |  |
| B2.33 71 19 222_R |  | Land Adjustment(Rem) | 2d | 2026-10-26 | 2026-10-28 | B2.33 71 00 02 88, B2.33 71 16.99, B2.33 71 19 222 |  | 39.68d |
| B2.33 71 49.23.192_R |  | Cable Pulling(Rem) | 2d | 2026-10-28 | 2026-10-31 | B2.33 71 19 222_R, B2.33 71 49.23.192 |  | 39.68d |
| B2.33 71 19 232_R |  | Backfilling(Rem) | 2d | 2026-10-31 | 2026-11-02 | B2.33 71 16.94, B2.33 71 19 46, B2.33 71 16.98, B2.33 71 49.23.192_R, B2.33 71 19 232 |  | 45.68d |
|  | SL Poles | **SL Poles** |  | 2026-09-10 | 2026-10-13 |  |  |  |
|  | Pole (10 M Sngl Arm) | **Pole (10 M Single Arm)** |  | 2026-09-10 | 2026-10-13 |  |  |  |
| B2.33 71 16.95 |  | Excavation (92.63% Completed) | 5d | 2026-09-10 A | 2026-09-15 A | DMM2-Proc-Delv-6538 SS | 100% |  |
| B2.33 71 16.96 |  | PC & RC Foundation (92.63% Completed) | 4d | 2026-09-12 A | 2026-09-15 A | B2.33 71 16.95 SS | 100% |  |
| B2.33 71 16.97 |  | Lighting Poles Installation Incl power box, Cables (92.63% Completed) | 2d | 2026-09-14 A | 2026-09-15 A | B2.33 71 16.96 SS | 100% |  |
| B2.33 71 16.95_R |  | Excavation(Rem) | 2d | 2026-10-07 | 2026-10-08 | DMM2-Proc-Delv-6538_R SS, B2.33 71 16.95 |  | 58.32d |
| B2.33 71 16.96_R |  | PC & RC Foundation(Rem) | 2d | 2026-10-07 | 2026-10-08 | B2.33 71 16.95_R SS, B2.33 71 16.96 |  | 58.32d |
| B2.33 71 16.97_R |  | Lighting Poles Installation Incl power box, Cables(Rem) | 2d | 2026-10-07 | 2026-10-08 | B2.33 71 16.96_R SS, B2.33 71 16.97 |  | 58.32d |
| B2.26.56.19.17 |  | Lighting Luminares Inst | 2d | 2026-10-10 | 2026-10-11 | B2.33 71 16.97_R |  | 60.32d |
| B2.33 71 16.98 |  | Backfilling, Grouting & Chamfering | 2d | 2026-10-12 | 2026-10-13 | B2.26.56.19.17 |  | 60.32d |
|  | Earthing | **Earthing** |  | 2026-10-31 | 2026-11-07 |  |  |  |
| B2.33 71 19 47 |  | Land Adjustment | 2d | 2026-10-31 | 2026-11-02 | B2.33 71 16.97_R, B2.33 71 49.23.192_R, B2.33 71 00 02 82 |  | 39.68d |
| B2.33 71 19 48 |  | Earth Rods & Conduits | 2d | 2026-11-02 | 2026-11-04 | B2.33 71 19 47 |  | 43.68d |
| B2.33 71 19 49 |  | Backfilling | 2d | 2026-11-04 | 2026-11-07 | B2.33 71 19 48, B2.33 71 19 232_R |  | 43.68d |
|  | Telecommunication | **Telecommunication Network** |  | 2026-09-05 | 2026-10-20 |  |  |  |
|  | Ducts | **Ducts** |  | 2026-09-05 | 2026-10-11 |  |  |  |
|  | (6*50mm) | **Size (6*50mm) HDPE ducts** |  | 2026-09-05 | 2026-10-11 |  |  |  |
| B2.1.33 81 26.174 |  | Excavation (70.00% Completed) | 10d | 2026-09-05 A | 2026-09-15 A | B3.1. 33 14 13-01108 | 100% |  |
| B2.1.33 81 26.175 |  | HDPE Pipe, Shuttering, Steel Fixing & Conc. Cast (70.00% Completed) | 8d | 2026-09-07 A | 2026-09-15 A | B2.1.33 81 26.174 SS | 100% |  |
| B2.1.33 81 26.174_R |  | Excavation(Rem) | 2d | 2026-10-07 | 2026-10-08 | B2.1.33 81 26.174 |  | 93.32d |
| B2.1.33 81 26.175_R |  | HDPE Pipe, Shuttering, Steel Fixing & Conc. Cast(Rem) | 2d | 2026-10-07 | 2026-10-08 | B2.1.33 81 26.174_R SS, B2.1.33 81 26.175 |  | 105.32d |
| B2.1.33 81 26.176 |  | Backfilling & Warrning Tape | 2d | 2026-10-10 | 2026-10-11 | B2.1.33 81 26.175_R |  | 105.32d |
|  | (6*50mm+2*32mm) | **Size (6*50mm+2*32mm) HDPE ducts** |  | 2026-09-05 | 2026-10-11 |  |  |  |
| B2.1.33 81 26.177 |  | Excavation (70.00% Completed) | 10d | 2026-09-05 A | 2026-09-15 A | B2.1.33 81 26.174 SS | 100% |  |
| B2.1.33 81 26.178 |  | HDPE Pipe, Shuttering, Steel Fixing & Conc. Cast (70.00% Completed) | 7d | 2026-09-08 A | 2026-09-15 A | B2.1.33 81 26.177 SS | 100% |  |
| B2.1.33 81 26.177_R |  | Excavation(Rem) | 2d | 2026-10-07 | 2026-10-08 | B2.1.33 81 26.174_R SS, B2.1.33 81 26.177 |  | 93.32d |
| B2.1.33 81 26.178_R |  | HDPE Pipe, Shuttering, Steel Fixing & Conc. Cast(Rem) | 2d | 2026-10-07 | 2026-10-08 | B2.1.33 81 26.177_R SS, B2.1.33 81 26.178 |  | 99.32d |
| B2.1.33 81 26.179 |  | Backfilling & Warrning Tape | 2d | 2026-10-10 | 2026-10-11 | B2.1.33 81 26.178_R |  | 99.32d |
|  | (6*50mm+4*32mm) | **Size (6*50mm+4*32mm) HDPE ducts** |  | 2026-09-05 | 2026-10-11 |  |  |  |
| B2.1.33 81 26.180 |  | Excavation (70.00% Completed) | 10d | 2026-09-05 A | 2026-09-15 A | B2.1.33 81 26.177 FF, B2.1.33 81 26.177 SS | 100% |  |
| B2.1.33 81 26.181 |  | HDPE Pipe, Shuttering, Steel Fixing & Conc. Cast (70.00% Completed) | 6d | 2026-09-09 A | 2026-09-15 A | B2.1.33 81 26.180 SS | 100% |  |
| B2.1.33 81 26.180_R |  | Excavation(Rem) | 2d | 2026-10-07 | 2026-10-08 | B2.1.33 81 26.177_R FF, B2.1.33 81 26.177_R SS, B2.1.33 81 26.180 |  | 93.32d |
| B2.1.33 81 26.181_R |  | HDPE Pipe, Shuttering, Steel Fixing & Conc. Cast(Rem) | 2d | 2026-10-07 | 2026-10-08 | B2.1.33 81 26.180_R SS, B2.1.33 81 26.181 |  | 101.32d |
| B2.1.33 81 26.182 |  | Backfilling & Warrning Tape | 2d | 2026-10-10 | 2026-10-11 | B2.1.33 81 26.181_R |  | 101.32d |
|  | Manholes | **Manholes** |  | 2026-10-10 | 2026-10-20 |  |  |  |
|  | Manhole Type 1 | **Manhole Type 1** |  | 2026-10-10 | 2026-10-15 |  |  |  |
| B2.31 23 00.633 |  | Excavation | 2d | 2026-10-10 | 2026-10-11 | B2.1.33 81 26.180_R |  | 93.32d |
| B2.33 71 00.274 |  | Manhole Installation | 2d | 2026-10-12 | 2026-10-13 | B2.31 23 00.633 |  | 95.32d |
| B2.33 71 00.275 |  | Backfilling & Warrning Tape | 2d | 2026-10-14 | 2026-10-15 | B2.33 71 00.274 |  | 95.32d |
|  | Manhole Type 2 | **Manhole Type 2** |  | 2026-10-12 | 2026-10-20 |  |  |  |
| B2.31 23 00.634 |  | Excavation | 3d | 2026-10-12 | 2026-10-14 | B2.31 23 00.633 |  | 93.32d |
| B2.33 71 00.276 |  | Manhole Installation | 2d | 2026-10-15 | 2026-10-17 | B2.31 23 00.634 |  | 93.32d |
| B2.33 71 00.277 |  | Backfilling & Warrning Tape | 3d | 2026-10-18 | 2026-10-20 | B2.33 71 00.276 |  | 93.32d |
|  | Crossing Ducts | **Road Crossing Ducts** |  | 2026-10-11 | 2026-10-17 |  |  |  |
|  | 1 | **Size (6X50mm) HDPE** |  | 2026-10-11 | 2026-10-17 |  |  |  |
| B2.31 23 00.632 |  | Excavation | 2d | 2026-10-11 | 2026-10-12 | B2.31 23 00.643_R |  | 53.32d |
| B2.33 71 00.272 |  | Shuttering, Steel Fixing Incl. UPVC Pipe & Conc. Cast | 2d | 2026-10-13 | 2026-10-14 | B2.31 23 00.632 |  | 100.32d |
| B2.33 71 00.273 |  | Backfilling & Warrning Tape | 2d | 2026-10-15 | 2026-10-17 | B2.33 71 00.272 |  | 100.32d |
|  | Earth & Road Works | **Earth & Road Works** |  | 2025-11-28 | 2026-12-19 |  |  |  |
|  | Earth Works | **Earth Works** |  | 2025-11-28 | 2026-03-04 |  |  |  |
| B1.2.31 23 16.01.16 |  | Roadway Excavation | 4d | 2025-11-28 A | 2025-12-02 A | DMM2-Eng-MS-78 | 100% |  |
| B1.2.31 23 23.01.16 |  | Embankment Backfiling | 77.28d | 2025-11-30 A | 2026-03-04 A | B1.2.31 23 16.01.16 | 100% |  |
|  | Earth Layers | **Earth Layers** |  | 2026-01-22 | 2026-10-08 |  |  |  |
| B1.2.32 11 13.01.16 |  | Subgrade (65.00% Completed) | 187.4d | 2026-01-22 A | 2026-09-15 A | B1.2.31 23 23.01.16 | 100% |  |

| ID | WBS | Task | Duration | Start | Finish | Predecessors | Complete | Total float |
| --- | --- | --- | --- | --- | --- | --- | --- | --- |
| B1.2.32 11 23.01.16 |  | Aggregate Base Course (25.00% Completed) | 97.98d | 2026-05-20 A | 2026-09-15 A | B1.2.32 11 13.01.16 SS | 100% |  |
| B1.2.32 11 13.01.16_R |  | Subgrade(Rem) | 5d | 2026-09-20 A | 2026-09-24 A | B1.2.31 23 23.01.16, B1.2.32 11 13.01.16 | 100% |  |
| B1.2.32 11 23.01.16_R |  | Aggregate Base Course(Rem) | 1.5d | 2026-10-07 | 2026-10-08 | B1.2.32 11 13.01.16_R SS, B1.2.32 11 23.01.16 |  | 31.82d |
|  | Interlock | **Interlock** |  | 2026-10-08 | 2026-10-12 |  |  |  |
| B1.2.32 14 13.13.16 |  | 60mm thick - Interlocking Block Pavers | 3d | 2026-10-08 | 2026-10-12 | B1.2.32 11 23.01.16_R |  | 31.82d |
|  | Curbstone | **Curbstone** |  | 2026-10-12 | 2026-11-01 |  |  |  |
|  | Pre Install | **Pre-Installation** |  | 2026-10-12 | 2026-10-19 |  |  |  |
| B2.31 23 00.451 |  | Excavation | 2d | 2026-10-12 | 2026-10-14 | B1.2.32 14 13.13.16 |  | 31.82d |
| B1.2.32 14 13.13.216 |  | PCC | 2d | 2026-10-14 | 2026-10-17 | B2.31 23 00.451 |  | 31.82d |
| 32 16 13.0016 |  | Haunching | 2d | 2026-10-17 | 2026-10-19 | B1.2.32 14 13.13.216 |  | 31.82d |
|  | Installation | **Installation** |  | 2026-10-19 | 2026-10-29 |  |  |  |
| B1.2.32 16.13.01.16 |  | Curb Stone, Type K1 | 3d | 2026-10-19 | 2026-10-22 | 32 16 13.0016 |  | 31.82d |
| B1.2.32 16.13.02.15 |  | Dropped Curb, Type K3 | 1d | 2026-10-22 | 2026-10-24 | B1.2.32 16.13.01.16, 32 16 13.0016 |  | 31.82d |
| B1.2.32 16.13.03.16 |  | Edge Curb, Type K4 | 1d | 2026-10-24 | 2026-10-25 | B1.2.32 16.13.02.15 FF+1d, 32 16 13.0016 |  | 31.82d |
| B1.2.32 16.13.0416 |  | Heel Curb, Type K5 | 2d | 2026-10-25 | 2026-10-27 | B1.2.32 16.13.03.16, 32 16 13.0016 |  | 31.82d |
| B1.2.32 16.13.05.15 |  | Transition Curb | 2d | 2026-10-27 | 2026-10-29 | B1.2.32 16.13.0416, 32 16 13.0016 |  | 31.82d |
|  | Finishing | **Finishing** |  | 2026-10-29 | 2026-11-01 |  |  |  |
| 32 16 13.016 |  | Finishing, Fareface | 2d | 2026-10-29 | 2026-11-01 | B1.2.32 16.13.01.16, B1.2.32 16.13.02.15 SS+1d, B1.2.32 16.13.03.16, B1.2.32 16.13.0416, B1.2.32 16.13.05.15 |  | 31.82d |
|  | Asphalt Layers | **Asphalt Layers** |  | 2026-10-08 | 2026-12-08 |  |  |  |
| B1.2.32 11 26.01.16 |  | Bituminous Base Course including Prime Coat (MC1) and tack coat (RC2) | 2d | 2026-10-08 | 2026-10-11 | B1.2.32 11 23.01.16_R |  | 49.82d |
| B1.2.32 12 16.01.16 |  | Bituminous concrete Wearing Course, including tack coat (RC2) | 5d | 2026-12-03 | 2026-12-08 | B1.2.32 11 26.01.16, 32 16 13.016, B1.2.32 12 16.01.15 |  | 4.32d |
|  | Pavement Marking | **Pavement Marking** |  | 2026-12-14 | 2026-12-19 |  |  |  |
| B1.2.32 17 23.02.16 |  | Retroreflective Thermoplastic Yellow, Traffic lines | 2d | 2026-12-14 | 2026-12-16 | B1.2.32 12 16.01.16, B1.2.32 12 19.13.016 FF, B1.2.32 12 19.13.15 SS |  | 50.91d |
| B1.2.32 17 23.01.16 |  | Retroreflective Thermoplastic White Traffic lines | 2d | 2026-12-16 | 2026-12-19 | B1.2.32 12 16.01.16, B1.2.32 12 19.13.016, B1.2.10 14 14.0211, B1.2.10 14 53.0114 SS, B1.2.10 14 53.0110, 32 16 13.03, B1.2.32 17 23.01.3, B1.2.10 14 53.0112 FF, B1.2.32 17 23.02.16 |  | 50.91d |
|  | Road Misc. | **Miscellaneous** |  | 2026-12-09 | 2026-12-16 |  |  |  |
| B1.2.32 12 19.13.15 |  | Wheels stoppers (precast concrete) | 2d | 2026-12-09 | 2026-12-10 | B1.2.32 12 16.01.16, DMM2-Proc-Delv-7504 |  | 55.32d |
| B1.2.32 12 19.13.016 |  | Speed Tables | 2d | 2026-12-14 | 2026-12-16 | B1.2.32 12 16.01.16, B1.2.32 14 13.13.3 SS, 32 16 13.07 |  | 50.91d |
|  | Landscape | **Landscape** |  | 2026-12-24 | 2026-12-30 |  |  |  |
|  | Trees | **Trees** |  | 2026-12-24 | 2026-12-30 |  |  |  |
| B7.32 93 43.02-191 |  | Tamarindus indica | 5d | 2026-12-24 | 2026-12-30 | B2.31 23 00.451, B7.32 93 43.07 FF |  | 3d |
|  | Road 04 | **Road 04** |  | 2025-12-01 | 2027-01-05 |  |  |  |
|  | Wet Networks | **Wet Networks** |  | 2026-05-03 | 2026-11-19 |  |  |  |
|  | Stormwater Network | **Stormwater Network** |  | 2026-05-03 | 2026-10-07 |  |  |  |
|  | GRP | **GRP** |  | 2026-05-20 | 2026-10-07 |  |  |  |
|  | ?4001 | **?400** |  | 2026-05-20 | 2026-07-09 |  |  |  |
|  | 3 | **Depth From 1.5m to 2.5m** |  | 2026-05-20 | 2026-07-09 |  |  |  |
| B6.33 42 11.01-1.10 |  | Excavation | 2d | 2026-05-20 A | 2026-05-23 A | B1.2.31 23 23.01.17 | 100% |  |
| B6.33 42 11.01-1.18 |  | Sand Bedding | 2d | 2026-05-23 A | 2026-05-25 A | B6.33 42 11.01-1.10 | 100% |  |
| B6.33 42 11.01-1.26 |  | Pipe Laying | 27.84d | 2026-05-25 A | 2026-07-01 A | B6.33 42 11.01-1.18 | 100% |  |
| B6.33 42 11.01-1.34 |  | Embedment & Test | 34.08d | 2026-05-25 A | 2026-07-08 A | B6.33 42 11.01-1.26 | 100% |  |
| B6.33 42 11.01-1.42 |  | Backfilling & Warrning Tape | 35.2d | 2026-05-25 A | 2026-07-09 A | B6.33 42 11.01-1.34 | 100% |  |
|  | ?4002 | **?600** |  | 2026-05-23 | 2026-07-14 |  |  |  |
|  | 4 | **Depth From 1.5m to 2.5m** |  | 2026-05-23 | 2026-07-14 |  |  |  |
| B6.33 42 11.01-1.12 |  | Excavation | 2d | 2026-05-23 A | 2026-05-25 A | B6.33 42 11.01-1.10 | 100% |  |
| B6.33 42 11.01-1.20 |  | Sand Bedding | 1d | 2026-05-31 A | 2026-06-01 A | B6.33 42 11.01-1.12 | 100% |  |
| B6.33 42 11.01-1.28 |  | Pipe Laying | 34.72d | 2026-05-31 A | 2026-07-11 A | B6.33 42 11.01-1.20 | 100% |  |
| B6.33 42 11.01-1.36 |  | Embedment & Test | 35.08d | 2026-06-01 A | 2026-07-12 A | B6.33 42 11.01-1.28 | 100% |  |
| B6.33 42 11.01-1.44 |  | Backfilling & Warrning Tape | 36.2d | 2026-06-02 A | 2026-07-14 A | B6.33 42 11.01-1.36, B6.33 42 11.01-138 | 100% |  |
|  | ?40021 | **?700** |  | 2026-05-25 | 2026-10-07 |  |  |  |
|  | 4 | **Depth From 1.5m to 2.5m** |  | 2026-05-25 | 2026-10-07 |  |  |  |
| B6.33 42 11.01-1.14 |  | Excavation | 2d | 2026-05-25 A | 2026-06-01 A | B6.33 42 11.01-1.12 | 100% |  |
| B6.33 42 11.01-1.22 |  | Sand Bedding | 4d | 2026-05-25 A | 2026-06-03 A | B6.33 42 11.01-1.14 | 100% |  |
| B6.33 42 11.01-1.30 |  | Pipe Laying (71.06% Completed) | 93d | 2026-05-26 A | 2026-09-15 A | B6.33 42 11.01-1.22 | 100% |  |
| B6.33 42 11.01-1.38 |  | Embedment & Test (67.47% Completed) | 91.6d | 2026-06-01 A | 2026-09-15 A | B6.33 42 11.01-1.30 FF | 100% |  |
| B6.33 42 11.01-1.46 |  | Backfilling & Warrning Tape (6.35% Completed) | 90.6d | 2026-06-02 A | 2026-09-15 A | B6.33 42 11.01-1.38 SS | 100% |  |
| B6.33 42 11.01-1.38_R |  | Embedment & Test(Rem) | 2.55d | 2026-09-16 A | 2026-10-07 | B6.33 42 11.01-1.30_R FF, B6.33 42 11.01-1.38 | 90% | 113.02d |
| B6.33 42 11.01-1.46_R |  | Backfilling & Warrning Tape(Rem) | 2.94d | 2026-09-16 A | 2026-10-07 | B6.33 42 11.01-1.38_R SS, B6.33 42 11.01-1.46 | 90% | 113.03d |
| B6.33 42 11.01-1.30_R |  | Pipe Laying(Rem) | 3d | 2026-09-26 A | 2026-10-07 | B6.33 42 11.01-1.22, B6.33 42 11.01-1.30 | 90% | 113.02d |
|  | ?400211 | **?800** |  | 2026-06-01 | 2026-10-07 |  |  |  |
|  | 4 | **Depth From 1.5m to 2.5m** |  | 2026-06-01 | 2026-10-07 |  |  |  |
| B6.33 42 11.01-1.16 |  | Excavation | 2d | 2026-06-01 A | 2026-06-03 A | B6.33 42 11.01-1.14 | 100% |  |
| B6.33 42 11.01-1.24 |  | Sand Bedding | 2d | 2026-06-03 A | 2026-06-06 A | B6.33 42 11.01-1.16 | 100% |  |
| B6.33 42 11.01-1.32 |  | Pipe Laying (69.06% Completed) | 87.6d | 2026-06-06 A | 2026-09-15 A | B6.33 42 11.01-1.24 | 100% |  |
| B6.33 42 11.01-1.40 |  | Embedment & Test (59.61% Completed) | 85.6d | 2026-06-08 A | 2026-09-15 A | B6.33 42 11.01-1.32 FF | 100% |  |
| B6.33 42 11.01-1.48 |  | Backfilling & Warrning Tape (59.61% Completed) | 81.6d | 2026-06-13 A | 2026-09-15 A | B6.33 42 11.01-1.40 SS | 100% |  |
| B6.33 42 11.01-1.40_R |  | Embedment & Test(Rem) | 2.84d | 2026-09-16 A | 2026-10-07 | B6.33 42 11.01-1.32_R FF, B6.33 42 11.01-1.40 | 90% | 113.02d |
| B6.33 42 11.01-1.48_R |  | Backfilling & Warrning Tape(Rem) | 3.3d | 2026-09-20 A | 2026-10-07 | B6.33 42 11.01-1.40_R SS, B6.33 42 11.01-1.48, B6.33 42 11.01-136_R | 90% | 112.99d |
| B6.33 42 11.01-1.32_R |  | Pipe Laying(Rem) | 3d | 2026-09-27 A | 2026-10-07 | B6.33 42 11.01-1.24, B6.33 42 11.01-1.32 | 90% | 113.02d |
|  | Strom Manholes | **Manholes** |  | 2026-05-03 | 2026-10-04 |  |  |  |
|  | 3 | **?2000** |  | 2026-05-03 | 2026-10-04 |  |  |  |

| ID | WBS | Task | Duration | Start | Finish | Predecessors | Complete | Total float |
| --- | --- | --- | --- | --- | --- | --- | --- | --- |
|  | 1 | **Depth From 2.5m to 3.5m** |  | 2026-05-03 | 2026-10-04 |  |  |  |
| B6.33 05 39.01.4227 |  | Excavation & Compaction | 25d | 2026-05-03 A | 2026-06-06 A | B6.33 42 11.01-1.16 | 100% |  |
| B6.33 05 39.01.4237 |  | Blinding Conc, & RC Base | 25d | 2026-05-06 A | 2026-06-09 A | B6.33 05 39.01.4227 | 100% |  |
| B6.33 05 39.01.4247 |  | Manhole Installation | 72.1d | 2026-05-09 A | 2026-08-05 A | B6.33 05 39.01.4237 | 100% |  |
| B6.33 05 39.01.4257 |  | Test, Internal Finishing, Benching & Cover (97.00% Completed) | 70.89d | 2026-06-25 A | 2026-09-15 A | B6.33 05 39.01.4247 | 100% |  |
| B6.33 05 39.01.4267 |  | Backfilling (97.00% Completed) | 69d | 2026-06-28 A | 2026-09-15 A | B6.33 05 39.01.4257 SS, B6.33 05 39.01.3517 SS | 100% |  |
| B6.33 05 39.01.4257_R |  | Test, Internal Finishing, Benching & Cover(Rem) | 3d | 2026-09-22 A | 2026-09-26 A | B6.33 05 39.01.4247, B6.33 05 39.01.4257 | 100% |  |
| B6.33 05 39.01.4267_R |  | Backfilling(Rem) | 6d | 2026-09-27 A | 2026-10-04 A | B6.33 05 39.01.4257_R SS, B6.33 05 39.01.3517_R SS, B6.33 05 39.01.4267, B6.33 42 11.36-189_R | 100% |  |
|  | Catch Basins | **Catch Basins** |  | 2026-06-10 | 2026-10-03 |  |  |  |
|  | Sing | **Single** |  | 2026-06-10 | 2026-10-03 |  |  |  |
| B6.33 05 40.01.610 |  | Excavation, Compaction & Vapour Barrier | 0.5d | 2026-06-10 A | 2026-06-10 A | B6.33 05 39.01.4227 | 100% |  |
| B6.33 05 40.01.620 |  | Blinding Conc. | 1.67d | 2026-06-13 A | 2026-06-14 A | B6.33 05 40.01.610 | 100% |  |
| B6.33 05 40.01.630 |  | Catch Basin Installation (91.00% Completed) | 80d | 2026-06-15 A | 2026-09-15 A | B6.33 05 40.01.620 | 100% |  |
| B6.33 05 40.01.640 |  | Backfilling, DI Frame & Grate Cover Fixing (91.00% Completed) | 78.33d | 2026-06-16 A | 2026-09-15 A | B6.33 42 11.36-1103 SS, B6.33 42 11.35-130 SS | 100% |  |
| B6.33 05 40.01.640_R |  | Backfilling, DI Frame & Grate Cover Fixing(Rem) | 3d | 2026-09-27 A | 2026-09-30 A | B6.33 42 11.36-1103_R SS, B6.33 42 11.35-130_R SS, B6.33 05 40.01.640 | 100% |  |
| B6.33 05 40.01.630_R |  | Catch Basin Installation(Rem) | 3d | 2026-09-29 A | 2026-10-03 A | B6.33 05 40.01.620, B6.33 05 40.01.630 | 100% |  |
|  | UPVC | **UPVC** |  | 2026-06-15 | 2026-09-30 |  |  |  |
|  | UPVC300 | **?300 From 0.0 to 1.5m** |  | 2026-06-15 | 2026-09-30 |  |  |  |
| B6.33 42 11.35-118 |  | Catch Basin Opening Prep. (67.00% Completed) | 80d | 2026-06-15 A | 2026-09-15 A | B6.33 05 40.01.630 SS | 100% |  |
| B6.33 42 11.35-130 |  | Fittings & Pipe Installation (67.00% Completed) | 80d | 2026-06-15 A | 2026-09-15 A | B6.33 42 11.35-118 SS, B6.33 42 11.35-1.2 SS | 100% |  |
| B6.33 42 11.35-118_R |  | Catch Basin Opening Prep.(Rem) | 3d | 2026-09-21 A | 2026-09-24 A | B6.33 05 40.01.630_R SS, B6.33 42 11.35-118 | 100% |  |
| B6.33 42 11.35-130_R |  | Fittings & Pipe Installation(Rem) | 3d | 2026-09-27 A | 2026-09-30 A | B6.33 42 11.35-118_R SS, B6.33 42 11.35-1.2_R SS, B6.33 42 11.35-130 | 100% |  |
|  | UPVC3001 | **?400 From 0.0 to 1.5m** |  | 2026-06-15 | 2026-09-26 |  |  |  |
| B6.33 42 11.36-1103 |  | Fittings & Pipe Installation (67.00% Completed) | 80d | 2026-06-15 A | 2026-09-15 A | B6.33 42 11.36-191 SS | 100% |  |
| B6.33 42 11.36-191 |  | Catch Basin Opening Prep. (67.00% Completed) | 80d | 2026-06-15 A | 2026-09-15 A | B6.33 05 40.01.630 SS | 100% |  |
| B6.33 42 11.36-1103_R |  | Fittings & Pipe Installation(Rem) | 3d | 2026-09-21 A | 2026-09-26 A | B6.33 42 11.36-191_R SS, B6.33 42 11.36-1103 | 100% |  |
| B6.33 42 11.36-191_R |  | Catch Basin Opening Prep.(Rem) | 3d | 2026-09-21 A | 2026-09-24 A | B6.33 05 40.01.630_R SS, B6.33 42 11.36-191 | 100% |  |
|  | Sewerage Network | **Sewerage Network** |  | 2026-05-11 | 2026-10-11 |  |  |  |
|  | GRP | **GRP Pipes** |  | 2026-05-20 | 2026-10-11 |  |  |  |
|  | 150 | **?150** |  | 2026-05-20 | 2026-07-12 |  |  |  |
|  | 1 | **Depth From 1.5m to 2.5m** |  | 2026-05-20 | 2026-07-11 |  |  |  |
| B5.33 31 00.01.0210 |  | Excavation | 2d | 2026-05-20 A | 2026-05-21 A | B1.1.31 23 23.182 | 100% |  |
| B5.33 31 00.01.0218 |  | Sand Bedding | 2d | 2026-05-23 A | 2026-05-24 A | B5.33 31 00.01.0210 | 100% |  |
| B5.33 31 00.01.0226 |  | Pipe Laying | 34.55d | 2026-05-25 A | 2026-07-08 A | B5.33 31 00.01.0218 | 100% |  |
| B5.33 31 00.01.0234 |  | Embedment & Test | 33.72d | 2026-06-01 A | 2026-07-09 A | B5.33 31 00.01.0226 | 100% |  |
| B5.33 31 00.01.0242 |  | Backfilling & Warrning Tape | 26.15d | 2026-06-10 A | 2026-07-11 A | B5.33 31 00.01.0234, B6.33 05 39.01.1717 | 100% |  |
|  | 2 | **Depth From 2.5m to 3.5m** |  | 2026-05-23 | 2026-07-12 |  |  |  |
| B5.33 31 00.01.0212 |  | Excavation | 2d | 2026-05-23 A | 2026-05-24 A | B5.33 31 00.01.0210 | 100% |  |
| B5.33 31 00.01.0220 |  | Sand Bedding | 2d | 2026-05-25 A | 2026-05-31 A | B5.33 31 00.01.0212 | 100% |  |
| B5.33 31 00.01.0228 |  | Pipe Laying | 32.92d | 2026-06-01 A | 2026-07-08 A | B5.33 31 00.01.0220 | 100% |  |
| B5.33 31 00.01.0236 |  | Embedment & Test | 13.68d | 2026-06-24 A | 2026-07-11 A | B5.33 31 00.01.0228 | 100% |  |
| B5.33 31 00.01.0244 |  | Backfilling & Warrning Tape | 10.33d | 2026-06-29 A | 2026-07-12 A | B5.33 31 00.01.0236, B5.33 31 00.01.0242 | 100% |  |
|  | 200 | **?200** |  | 2026-06-24 | 2026-10-11 |  |  |  |
|  | 2 | **Depth From 2.5m to 3.5m** |  | 2026-06-24 | 2026-10-11 |  |  |  |
| B5.33 31 00.01.0214 |  | Excavation | 6.66d | 2026-06-24 A | 2026-07-01 A | B5.33 31 00.01.0212 | 100% |  |
| B5.33 31 00.01.0222 |  | Sand Bedding | 53.2d | 2026-06-27 A | 2026-08-27 A | B5.33 31 00.01.0214 | 100% |  |
| B5.33 31 00.01.0230 |  | Pipe Laying | 47.2d | 2026-06-29 A | 2026-08-23 A | B5.33 31 00.01.0222 | 100% |  |
| B5.33 31 00.01.0238 |  | Embedment & Test (4.61% Completed) | 65.34d | 2026-07-01 A | 2026-09-15 A | B5.33 31 00.01.0230 | 100% |  |
| B5.33 31 00.01.0246 |  | Backfilling & Warrning Tape | 49.88d | 2026-07-04 A | 2026-08-30 A | B5.33 31 00.01.0244 | 100% |  |
| B5.33 31 00.01.0238_R |  | Embedment & Test(Rem) | 3.81d | 2026-10-07 | 2026-10-11 | B5.33 31 00.01.0230, B5.33 31 00.01.0238 |  | 109.51d |
|  | 1 | **Depth From 3.5m to 4.5m** |  | 2026-06-27 | 2026-10-11 |  |  |  |
| B5.33 31 00.01.0216 |  | Excavation | 51.64d | 2026-06-27 A | 2026-08-25 A | B5.33 31 00.01.0214 | 100% |  |
| B5.33 31 00.01.0224 |  | Sand Bedding | 52.64d | 2026-06-29 A | 2026-08-29 A | B5.33 31 00.01.0216 | 100% |  |
| B5.33 31 00.01.0232 |  | Pipe Laying | 47.98d | 2026-07-01 A | 2026-08-26 A | B5.33 31 00.01.0224, DMM2-Proc-Delv-7108 | 100% |  |
| B5.33 31 00.01.0240 |  | Embedment & Test (4.42% Completed) | 65d | 2026-07-02 A | 2026-09-15 A | B5.33 31 00.01.0232 | 100% |  |
| B5.33 31 00.01.0248 |  | Backfilling & Warrning Tape | 48.91d | 2026-07-06 A | 2026-08-31 A | B5.33 31 00.01.0246 | 100% |  |
| B5.33 31 00.01.0240_R |  | Embedment & Test(Rem) | 3.82d | 2026-10-07 | 2026-10-11 | B3.33 14 19.01.103 FF, B5.33 31 00.01.0232, B5.33 31 00.01.0240 |  | 109.32d |
|  | Manholes | **Manholes ?1200** |  | 2026-05-11 | 2026-10-08 |  |  |  |
|  | 3 | **Depth From 1.5m to 2.5m** |  | 2026-05-11 | 2026-10-08 |  |  |  |
| B6.33 05 39.01.1727 |  | Excavation & Compaction | 84.66d | 2026-05-11 A | 2026-08-22 A | B5.33 31 00.01.0216 | 100% |  |
| B6.33 05 39.01.1737 |  | Blinding Conc, & RC Base | 71.33d | 2026-06-03 A | 2026-08-25 A | B6.33 05 39.01.1727 | 100% |  |
| B6.33 05 39.01.1747 |  | Manhole Installation | 68d | 2026-06-08 A | 2026-08-26 A | B6.33 05 39.01.1737, DMM2-Proc-Delv-7118 | 100% |  |
| B6.33 05 39.01.1757 |  | Test, Internal Finishing, Benching & Cover (45.60% Completed) | 83.34d | 2026-06-10 A | 2026-09-15 A | B6.33 05 39.01.1747 | 100% |  |
| B6.33 05 39.01.1767 |  | Backfilling | 65.84d | 2026-06-15 A | 2026-08-31 A | DMM2-Proc-PO-017 | 100% |  |
| B6.33 05 39.01.1757_R |  | Test, Internal Finishing, Benching & Cover(Rem) | 2.18d | 2026-10-03 A | 2026-10-08 | B6.33 05 39.01.1747, B6.33 05 39.01.1757, B6.33 05 39.01.1707_R | 50% | 112.23d |
|  | 4 | **Depth From 2.5m to 3.5m** |  | 2026-06-03 | 2026-07-11 |  |  |  |
| B6.33 05 39.01.1777 |  | Excavation & Compaction | 25d | 2026-06-03 A | 2026-07-02 A | B6.33 05 39.01.1727 | 100% |  |
| B6.33 05 39.01.1787 |  | Blinding Conc, & RC Base | 25.33d | 2026-06-06 A | 2026-07-05 A | B6.33 05 39.01.1777 | 100% |  |
| B6.33 05 39.01.1797 |  | Manhole Installation | 22d | 2026-06-11 A | 2026-07-07 A | B6.33 05 39.01.1787 | 100% |  |
| B6.33 05 39.01.1807 |  | Test, Internal Finishing, Benching & Cover | 22.66d | 2026-06-13 A | 2026-07-09 A | B6.33 05 39.01.1797 | 100% |  |

| ID | WBS | Task | Duration | Start | Finish | Predecessors | Complete | Total float |
| --- | --- | --- | --- | --- | --- | --- | --- | --- |
| B6.33 05 39.01.1817 |  | Backfilling | 21.99d | 2026-06-15 A | 2026-07-11 A | B6.33 05 39.01.1807 | 100% |  |
|  | 1 | **Depth From 3.5m to 4.5m** |  | 2026-06-21 | 2026-10-08 |  |  |  |
| B6.33 05 39.01.1827 |  | Excavation & Compaction | 54d | 2026-06-21 A | 2026-08-23 A | B6.33 05 39.01.1777 | 100% |  |
| B6.33 05 39.01.1837 |  | Blinding Conc, & RC Base | 53.33d | 2026-06-24 A | 2026-08-25 A | B6.33 05 39.01.1827 | 100% |  |
| B6.33 05 39.01.1847 |  | Manhole Installation | 53d | 2026-06-27 A | 2026-08-27 A | B6.33 05 39.01.1837 | 100% |  |
| B6.33 05 39.01.1857 |  | Test, Internal Finishing, Benching & Cover (45.60% Completed) | 68.34d | 2026-06-28 A | 2026-09-15 A | B6.33 05 39.01.1847 | 100% |  |
| B6.33 05 39.01.1867 |  | Backfilling | 52.84d | 2026-06-30 A | 2026-08-31 A | B6.33 05 39.01.1817 | 100% |  |
| B6.33 05 39.01.1857_R |  | Test, Internal Finishing, Benching & Cover(Rem) | 2.18d | 2026-10-05 A | 2026-10-08 | B6.33 05 39.01.1847, B6.33 05 39.01.1857, B6.33 05 39.01.1757_R | 50% | 112.23d |
|  | Potable Water | **Potable Water Network** |  | 2026-05-03 | 2026-10-27 |  |  |  |
|  | HDPE | **HDPE Pipes** |  | 2026-05-20 | 2026-10-10 |  |  |  |
|  | ?110mm | **?110mm** |  | 2026-05-20 | 2026-10-10 |  |  |  |
|  | Depth: 0.0m - 1.5m | **Depth: 0.0m - 1.5m** |  | 2026-05-20 | 2026-09-26 |  |  |  |
| B3.33 14 13.01.0191 |  | Excavation | 2d | 2026-05-20 A | 2026-05-23 A | B6.33 05 39.01.1727 | 100% |  |
| B3.33 14 13.01.0195 |  | Sand Bedding | 2d | 2026-05-23 A | 2026-05-25 A | B3.33 14 13.01.0191 | 100% |  |
| B3.33 14 13.01.0199 |  | Pipe Laying (80.00% Completed) | 93.46d | 2026-05-25 A | 2026-09-15 A | B3.33 14 13.01.0195 | 100% |  |
| B3.33 14 13.01.01103 |  | Embedment & Test (80.00% Completed) | 87.46d | 2026-06-06 A | 2026-09-15 A | B3.33 14 19.01.118, B3.33 14 13.01.0199 FF | 100% |  |
| B3.33 14 13.01.01107 |  | Backfilling & Warrning Tape (80.00% Completed) | 83.46d | 2026-06-10 A | 2026-09-15 A | B3.33 14 13.01.01103 SS, B3.33 14 13-11107 SS, B3.33 14 13-11109 SS | 100% |  |
| B3.33 14 13.01.01107_R |  | Backfilling & Warrning Tape(Rem) | 2d | 2026-09-17 A | 2026-09-20 A | B3.33 14 13.01.01103_R SS, B3.33 14 13-11107_R SS, B3.33 14 13-11109_R SS, B3.33 14 13.01.01107 | 100% |  |
| B3.33 14 13.01.0199_R |  | Pipe Laying(Rem) | 3d | 2026-09-20 A | 2026-09-22 A | B3.33 14 13.01.0195, B3.33 14 13.01.0199 | 100% |  |
| B3.33 14 13.01.01103_R |  | Embedment & Test(Rem) | 3d | 2026-09-24 A | 2026-09-26 A | B3.33 14 19.01.118, B3.33 14 13.01.0199_R FF, B3.33 14 13.01.01103 | 100% |  |
|  | Depth: 1.51m - 2.5m | **Depth: 1.51m - 2.5m** |  | 2026-05-23 | 2026-10-10 |  |  |  |
| B3.33 14 13.01.0193 |  | Excavation | 2d | 2026-05-23 A | 2026-05-25 A | B3.33 14 13.01.0191 | 100% |  |
| B3.33 14 13.01.0197 |  | Sand Bedding | 2d | 2026-05-25 A | 2026-06-01 A | B3.33 14 13.01.0193 | 100% |  |
| B3.33 14 13.01.01101 |  | Pipe Laying (80.00% Completed) | 91.46d | 2026-06-01 A | 2026-09-15 A | B3.33 14 13.01.0197 | 100% |  |
| B3.33 14 13.01.01105 |  | Embedment & Test (80.00% Completed) | 87.46d | 2026-06-06 A | 2026-09-15 A | B3.33 14 19.01.118, B3.33 14 13.01.01101 FF | 100% |  |
| B3.33 14 13.01.01109 |  | Backfilling & Warrning Tape (80.00% Completed) | 83.46d | 2026-06-10 A | 2026-09-15 A | B3.33 14 13.01.01105 SS, B3.33 14 13.01.01107 FF | 100% |  |
| B3.33 14 13.01.01101_R |  | Pipe Laying(Rem) | 3d | 2026-10-07 | 2026-10-10 | B3.33 14 13.01.0197, B3.33 14 13.01.01101 |  | 68.32d |
| B3.33 14 13.01.01105_R |  | Embedment & Test(Rem) | 3d | 2026-10-07 | 2026-10-10 | B3.33 14 19.01.118, B3.33 14 13.01.01101_R FF, B3.33 14 13.01.01105 |  | 68.32d |
| B3.33 14 13.01.01109_R |  | Backfilling & Warrning Tape(Rem) | 2d | 2026-10-07 | 2026-10-08 | B3.33 14 13.01.01105_R SS, B3.33 14 13.01.01107_R FF, B3.33 14 13.01.01109 |  | 68.32d |
|  | Crossing | **Plots and Buildings Crossing** |  | 2026-10-07 | 2026-10-27 |  |  |  |
| B3.33 14 13.02.31 |  | Earthwork | 7d | 2026-10-07 | 2026-10-14 | B3.33 14 13.01.0193 |  | 63.82d |
| B3.33 14 13.02.32 |  | Sand Bedding | 3d | 2026-10-15 | 2026-10-18 | B3.33 14 13.02.31 |  | 89.32d |
| B3.33 14 13.02.33 |  | Tee, Pipe (Crossing) Installation & Backfilling | 7d | 2026-10-20 | 2026-10-27 | B3.33 14 13.02.32, B3.33 14 13.02.30 |  | 88.32d |
|  | Valves & Chambers | **Valves & Chambers** |  | 2026-05-03 | 2026-10-20 |  |  |  |
|  | GV | **Gate Valves** |  | 2026-05-03 | 2026-10-19 |  |  |  |
|  | 1 | **Gate valves dia (110) mm** |  | 2026-05-03 | 2026-10-19 |  |  |  |
| B3.33 14 19.01.118 |  | Burried Isolation Valve Installation | 3d | 2026-05-03 A | 2026-05-06 A | B1.2.31 23 23.01.17 | 100% |  |
| B3.33 14 19.01.119 |  | Spindle & Surface Box | 3d | 2026-10-17 | 2026-10-19 | B3.33 14 19.01.118, B3.33 05 63.02.015 |  | 91.32d |
|  | Washout Valves | **Washout Valves** |  | 2026-07-06 | 2026-10-20 |  |  |  |
|  | 4 | **Washout valves on 110-400 mm. (In Chamber)** |  | 2026-07-06 | 2026-10-20 |  |  |  |
| B3.33 05 63.01.27 |  | Land Adjustment & Compaction (62.50% Completed) | 62d | 2026-07-06 A | 2026-09-15 A | B3.33 14 13.01.0191 | 100% |  |
| B3.33 05 63.01.25 |  | Foundations (62.50% Completed) | 11d | 2026-09-03 A | 2026-09-15 A | B3.33 05 63.01.27 SS | 100% |  |
| B3.33 05 63.01.28 |  | Chambers Walls Conc Cast In Situ (62.50% Completed) | 8d | 2026-09-07 A | 2026-09-15 A | B3.33 05 63.01.25 SS | 100% |  |
| B3.33 05 63.01.26 |  | Chamber Curing, Finishing & Steel Cover (62.50% Completed) | 7d | 2026-09-08 A | 2026-09-15 A | B3.33 05 63.01.28 SS | 100% |  |
| B3.33 05 63.01.25_R |  | Foundations(Rem) | 2.12d | 2026-10-12 | 2026-10-14 | B3.33 05 63.01.27_R SS, B3.33 05 63.01.25 |  | 63.82d |
| B3.33 05 63.01.26_R |  | Chamber Curing, Finishing & Steel Cover(Rem) | 2.5d | 2026-10-12 | 2026-10-14 | B3.33 05 63.01.28_R SS, B3.33 05 63.01.26 |  | 63.82d |
| B3.33 05 63.01.27_R |  | Land Adjustment & Compaction(Rem) | 3d | 2026-10-12 | 2026-10-14 | B3.33 14 13.02.31 FF, B3.33 05 63.01.27 |  | 63.82d |
| B3.33 05 63.01.28_R |  | Chambers Walls Conc Cast In Situ(Rem) | 2.12d | 2026-10-12 | 2026-10-14 | B3.33 05 63.01.25_R SS, B3.33 05 63.01.28 |  | 63.82d |
| B3.33 05 63.01.29 |  | Valve & Fitting Installation | 5d | 2026-10-14 | 2026-10-20 | B3.33 05 63.01.26_R |  | 63.82d |
|  | Fire Fighting | **Fire Fighting Network** |  | 2026-06-13 | 2026-11-19 |  |  |  |
|  | HDPE | **HDPE Pipes** |  | 2026-06-13 | 2026-08-31 |  |  |  |
|  | ?250mm | **?250mm** |  | 2026-06-13 | 2026-08-31 |  |  |  |
|  | Depth: 0.0m - 1.5m | **Depth: 0.0m - 1.5m** |  | 2026-06-13 | 2026-08-31 |  |  |  |
| B3.1. 33 14 13..1 |  | Excavation | 61.16d | 2026-06-13 A | 2026-08-23 A | B3.33 14 13.01.0191, B3.33 14 13.01.0193 | 100% |  |
| B3.1. 33 14 13..5 |  | Sand Bedding | 62.16d | 2026-06-14 A | 2026-08-25 A | B3.1. 33 14 13..1 | 100% |  |
| B3.1. 33 14 13..9 |  | Pipe Laying | 61.16d | 2026-06-17 A | 2026-08-27 A | B3.1. 33 14 13..5 | 100% |  |
| B3.1. 33 14 13..13 |  | Embedment & Test | 62.32d | 2026-06-20 A | 2026-08-31 A | B3.1. 33 14 13..9 | 100% |  |
| B3.1. 33 14 13..17 |  | Backfilling & Warrning Tape | 58.4d | 2026-06-23 A | 2026-08-30 A | B3.1. 33 14 13..13 | 100% |  |
|  | Depth: 1.51m - 2.5m | **Depth: 1.51m - 2.5m** |  | 2026-06-14 | 2026-08-31 |  |  |  |
| B3.1. 33 14 13..3 |  | Excavation | 60.16d | 2026-06-14 A | 2026-08-23 A | B3.1. 33 14 13..1 | 100% |  |
| B3.1. 33 14 13..7 |  | Sand Bedding | 60.16d | 2026-06-16 A | 2026-08-25 A | B3.1. 33 14 13..3 | 100% |  |
| B3.1. 33 14 13..11 |  | Pipe Laying | 56.16d | 2026-06-23 A | 2026-08-27 A | B3.1. 33 14 13..7 | 100% |  |
| B3.1. 33 14 13..15 |  | Embedment & Test | 56.32d | 2026-06-26 A | 2026-08-31 A | B3.1. 33 14 13..11 | 100% |  |
| B3.1. 33 14 13..19 |  | Backfilling & Warrning Tape | 52.4d | 2026-06-30 A | 2026-08-30 A | B3.1. 33 14 13..15 | 100% |  |
|  | Valves & Chambers | **Valves & Chambers** |  | 2026-07-02 | 2026-11-19 |  |  |  |
|  | GV | **Gate Valves** |  | 2026-07-17 | 2026-11-19 |  |  |  |
|  | 1 | **Gate valves dia (250) mm** |  | 2026-07-17 | 2026-11-19 |  |  |  |
| B3.33 14 19.01.134 |  | Burried Isolation Valve Installation (62.50% Completed) | 52d | 2026-07-17 A | 2026-09-15 A | B3.1. 33 14 13..9, B3.1. 33 14 13..11 | 100% |  |
| B3.33 14 19.01.134_R |  | Burried Isolation Valve Installation(Rem) | 4d | 2026-11-11 | 2026-11-15 | B3.33 05 63.01.44 FF, B3.1. 33 14 13..9, B3.1. 33 14 13..11, B3.33 14 19.01.134 |  | 60.32d |
| B3.33 14 19.01.135 |  | Spindle & Surface Box | 4d | 2026-11-16 | 2026-11-19 | B3.33 14 19.01.134_R |  | 60.32d |

| ID | WBS | Task | Duration | Start | Finish | Predecessors | Complete | Total float |
| --- | --- | --- | --- | --- | --- | --- | --- | --- |
|  | 2 | **Air Valves** |  | 2026-07-02 | 2026-10-18 |  |  |  |
|  | 4 | **Air valves on less than 315 mm. (In Chamber)** |  | 2026-07-02 | 2026-10-18 |  |  |  |
| B3.33 05 63.02.82 |  | Land Adjustment & Compaction (50.00% Completed) | 64.36d | 2026-07-02 A | 2026-09-15 A | B3.1. 33 14 13..15, B3.1. 33 14 13..13 | 100% |  |
| B3.33 05 63.02.80 |  | Foundations (50.00% Completed) | 12d | 2026-09-02 A | 2026-09-15 A | B3.33 05 63.02.82 SS | 100% |  |
| B3.33 05 63.02.81 |  | Chamber Curing, Finishing & Steel Cover (50.00% Completed) | 11d | 2026-09-03 A | 2026-09-15 A | B3.33 05 63.02.83 SS | 100% |  |
| B3.33 05 63.02.83 |  | Chambers Walls Conc Cast In Situ (50.00% Completed) | 11d | 2026-09-03 A | 2026-09-15 A | B3.33 05 63.02.80 SS | 100% |  |
| B3.33 05 63.02.80_R |  | Foundations(Rem) | 3.5d | 2026-10-07 | 2026-10-11 | B3.33 05 63.02.82_R SS, B3.33 05 63.02.80 |  | 65.32d |
| B3.33 05 63.02.81_R |  | Chamber Curing, Finishing & Steel Cover(Rem) | 4d | 2026-10-07 | 2026-10-11 | B3.33 05 63.02.83_R SS, B3.33 05 63.02.81 |  | 65.32d |
| B3.33 05 63.02.82_R |  | Land Adjustment & Compaction(Rem) | 3d | 2026-10-07 | 2026-10-10 | B3.1. 33 14 13..15, B3.1. 33 14 13..13, B3.33 05 63.02.82 |  | 65.32d |
| B3.33 05 63.02.83_R |  | Chambers Walls Conc Cast In Situ(Rem) | 3.5d | 2026-10-07 | 2026-10-11 | B3.33 05 63.02.80_R SS, B3.33 05 63.02.83 |  | 65.32d |
| B3.33 05 63.02.84 |  | Valve & Fitting Installation | 6d | 2026-10-12 | 2026-10-18 | B3.33 05 63.02.81_R |  | 65.32d |
|  | Washout Valves | **Washout Valves** |  | 2026-07-04 | 2026-10-18 |  |  |  |
|  | 4 | **Washout valves on 110-400 mm. (In Chamber)** |  | 2026-07-04 | 2026-10-18 |  |  |  |
| B3.33 05 63.01.62 |  | Land Adjustment & Compaction (50.00% Completed) | 63.36d | 2026-07-04 A | 2026-09-15 A | B3.1. 33 14 13..15, B3.1. 33 14 13..13 | 100% |  |
| B3.33 05 63.01.60 |  | Foundations (50.00% Completed) | 11d | 2026-09-03 A | 2026-09-15 A | B3.33 05 63.01.62 SS | 100% |  |
| B3.33 05 63.01.63 |  | Chambers Walls Conc Cast In Situ (50.00% Completed) | 10d | 2026-09-05 A | 2026-09-15 A | B3.33 05 63.01.60 SS | 100% |  |
| B3.33 05 63.01.61 |  | Chamber Curing, Finishing & Steel Cover (50.00% Completed) | 9d | 2026-09-06 A | 2026-09-15 A | B3.33 05 63.01.63 SS | 100% |  |
| B3.33 05 63.01.60_R |  | Foundations(Rem) | 3.5d | 2026-10-07 | 2026-10-11 | B3.33 05 63.01.62_R SS, B3.33 05 63.01.60 |  | 65.32d |
| B3.33 05 63.01.61_R |  | Chamber Curing, Finishing & Steel Cover(Rem) | 4d | 2026-10-07 | 2026-10-11 | B3.33 05 63.01.63_R SS, B3.33 05 63.01.61 |  | 65.32d |
| B3.33 05 63.01.62_R |  | Land Adjustment & Compaction(Rem) | 3d | 2026-10-07 | 2026-10-10 | B3.1. 33 14 13..15, B3.1. 33 14 13..13, B3.33 05 63.01.62 |  | 65.32d |
| B3.33 05 63.01.63_R |  | Chambers Walls Conc Cast In Situ(Rem) | 3.5d | 2026-10-07 | 2026-10-11 | B3.33 05 63.01.60_R SS, B3.33 05 63.01.63 |  | 65.32d |
| B3.33 05 63.01.64 |  | Valve & Fitting Installation | 6d | 2026-10-12 | 2026-10-18 | B3.33 05 63.01.61_R |  | 65.32d |
|  | 3 | **Fire Hydrant** |  | 2026-06-29 | 2026-11-19 |  |  |  |
| B3.33 14 19.01.fh47 |  | Riser Pipe & Flanged Fittings Installation (1.00% Completed) | 68d | 2026-06-29 A | 2026-09-15 A | B3.1. 33 14 13..11, B3.1. 33 14 13..9 | 100% |  |
| B3.33 14 19.01.fh46 |  | Firehydrant Fixing/Installation (1.00% Completed) | 66d | 2026-07-01 A | 2026-09-15 A | B3.33 14 19.01.fh47 SS | 100% |  |
| B3.33 14 19.01.fh48 |  | Backfilling & Compaction (1.00% Completed) | 50d | 2026-07-20 A | 2026-09-15 A | B3.33 14 19.01.fh5, B3.33 14 19.01.fh46 SS | 100% |  |
| B3.33 14 19.01.fh46_R |  | Firehydrant Fixing/Installation(Rem) | 4.97d | 2026-10-07 | 2026-10-12 | B3.33 14 19.01.fh47_R SS, B3.33 14 19.01.fh46 |  | 91.37d |
| B3.33 14 19.01.fh47_R |  | Riser Pipe & Flanged Fittings Installation(Rem) | 3.98d | 2026-10-07 | 2026-10-11 | B3.1. 33 14 13..11, B3.1. 33 14 13..9, B3.33 14 19.01.fh47 |  | 91.37d |
| B3.33 14 19.01.fh48_R |  | Backfilling & Compaction(Rem) | 6.95d | 2026-11-12 | 2026-11-19 | B3.33 14 19.01.135 FF, B3.33 14 19.01.129 FF, B3.33 14 19.01.fh5, B3.33 14 19.01.fh46_R SS, B3.33 14 19.01.fh48 |  | 60.32d |
|  | Dry Networks | **Dry Networks** |  | 2026-10-07 | 2026-11-21 |  |  |  |
|  | MV Network | **Medium Voltage Network** |  | 2026-10-07 | 2026-10-26 |  |  |  |
|  | Duct Banks | **Duct Banks** |  | 2026-10-07 | 2026-10-26 |  |  |  |
|  | 4 Way | **2 Way** |  | 2026-10-07 | 2026-10-26 |  |  |  |
| B2.31 23 00.644 |  | Excavation | 4d | 2026-10-07 | 2026-10-11 | B6.33 05 40.01.640_R, B6.33 05 39.01.1867 |  | 41.32d |
| B2.33 71 00.296 |  | Shuttering, Steel Fixing Incl. UPVC Pipe & Conc. Cast | 7d | 2026-10-12 | 2026-10-19 | B2.31 23 00.644 |  | 41.32d |
| B2.33 71 00.297 |  | Backfilling & Warrning Tape | 6d | 2026-10-20 | 2026-10-26 | B2.33 71 00.296 |  | 41.32d |
|  | Street Lighting | **Street Lighting** |  | 2026-10-24 | 2026-11-09 |  |  |  |
|  | SL Poles | **SL Poles** |  | 2026-10-24 | 2026-11-04 |  |  |  |
|  | Pole (10 M Sngl Arm) | **Pole (10 M Single Arm)** |  | 2026-10-24 | 2026-11-04 |  |  |  |
| B2.33 71 16.99 |  | Excavation | 2d | 2026-10-24 | 2026-10-26 | B2.33 71 19 46 |  | 39.68d |
| B2.33 71 16.100 |  | PC & RC Foundation | 2d | 2026-10-26 | 2026-10-28 | B2.33 71 16.99 |  | 41.68d |
| B2.33 71 16.101 |  | Lighting Poles Installation Incl power box, Cables | 2d | 2026-10-28 | 2026-10-31 | B2.33 71 16.100 |  | 41.68d |
| B2.26.56.19.18 |  | Lighting Luminares Inst | 2d | 2026-10-31 | 2026-11-02 | B2.33 71 16.101 |  | 45.68d |
| B2.33 71 16.102 |  | Backfilling, Grouting & Chamfering | 2d | 2026-11-02 | 2026-11-04 | B2.26.56.19.18 |  | 45.68d |
|  | Earthing | **Earthing** |  | 2026-11-02 | 2026-11-09 |  |  |  |
| B2.33 71 19 50 |  | Land Adjustment | 2d | 2026-11-02 | 2026-11-04 | B2.33 71 16.101, B2.33 71 19 47 |  | 39.68d |
| B2.33 71 19 51 |  | Earth Rods & Conduits | 2d | 2026-11-04 | 2026-11-07 | B2.33 71 19 50 |  | 41.68d |
| B2.33 71 19 52 |  | Backfilling | 2d | 2026-11-07 | 2026-11-09 | B2.33 71 19 51 |  | 41.68d |
|  | Telecommunication | **Telecommunication Network** |  | 2026-10-27 | 2026-11-21 |  |  |  |
|  | Ducts | **Ducts** |  | 2026-10-27 | 2026-11-17 |  |  |  |
|  | (6*50mm) | **Size (6*50mm) HDPE ducts** |  | 2026-10-27 | 2026-10-31 |  |  |  |
| B2.1.33 81 26.183 |  | Excavation | 2d | 2026-10-27 | 2026-10-28 | B2.33 71 00.267_R |  | 39.32d |
| B2.1.33 81 26.184 |  | HDPE Pipe, Shuttering, Steel Fixing & Conc. Cast | 2d | 2026-10-29 | 2026-10-31 | B2.1.33 81 26.183 |  | 49.32d |
| B2.1.33 81 26.185 |  | Backfilling & Warrning Tape | 2d | 2026-10-29 | 2026-10-31 | B2.1.33 81 26.184 SS, B2.33 71 00.269_R, B2.33 71 00.271_R |  | 49.32d |
|  | (6*50mm+2*32mm) | **Size (6*50mm+2*32mm) HDPE ducts** |  | 2026-10-29 | 2026-11-04 |  |  |  |
| B2.1.33 81 26.186 |  | Excavation | 2d | 2026-10-29 | 2026-10-31 | B2.1.33 81 26.183, B2.31 23 00.632 |  | 39.32d |
| B2.1.33 81 26.187 |  | HDPE Pipe, Shuttering, Steel Fixing & Conc. Cast | 2d | 2026-11-01 | 2026-11-02 | B2.1.33 81 26.186 |  | 45.32d |
| B2.1.33 81 26.188 |  | Backfilling & Warrning Tape | 2d | 2026-11-03 | 2026-11-04 | B2.1.33 81 26.187 |  | 45.32d |
|  | (6*50mm+4*32mm) | **Size (6*50mm+4*32mm) HDPE ducts** |  | 2026-11-01 | 2026-11-17 |  |  |  |
| B2.1.33 81 26.189 |  | Excavation | 2d | 2026-11-01 | 2026-11-02 | B2.1.33 81 26.186, B2.1.33 81 26.168_R |  | 39.32d |
| B2.1.33 81 26.190 |  | HDPE Pipe, Shuttering, Steel Fixing & Conc. Cast | 2d | 2026-11-03 | 2026-11-04 | B2.1.33 81 26.189 |  | 45.32d |
| B2.1.33 81 26.191 |  | Backfilling & Warrning Tape | 2d | 2026-11-15 | 2026-11-17 | B2.1.33 81 26.190, B2.1.33 81 26.188, B2.33 71 00.259 |  | 37.2d |
|  | (2*32mm) | **Size (2*32mm) HDPE ducts** |  | 2026-11-03 | 2026-11-09 |  |  |  |
| B2.1.33 81 26.192 |  | Excavation | 2d | 2026-11-03 | 2026-11-04 | B2.1.33 81 26.189, B2.1.33 81 26.171_R |  | 39.32d |
| B2.1.33 81 26.193 |  | HDPE Pipe, Shuttering, Steel Fixing & Conc. Cast | 2d | 2026-11-05 | 2026-11-07 | B2.1.33 81 26.192 |  | 43.32d |
| B2.1.33 81 26.194 |  | Backfilling & Warrning Tape | 2d | 2026-11-08 | 2026-11-09 | B2.1.33 81 26.193, B2.1.33 81 26.185 |  | 43.32d |
|  | Manholes | **Manholes** |  | 2026-11-05 | 2026-11-21 |  |  |  |
|  | Manhole Type 1 | **Manhole Type 1** |  | 2026-11-05 | 2026-11-21 |  |  |  |
| B2.31 23 00.636 |  | Excavation | 2d | 2026-11-05 | 2026-11-07 | B2.1.33 81 26.192, B2.31 23 00.630_R |  | 39.32d |
| B2.33 71 00.280 |  | Manhole Installation | 2d | 2026-11-08 | 2026-11-09 | B2.31 23 00.636 |  | 41.32d |

| ID | WBS | Task | Duration | Start | Finish | Predecessors | Complete | Total float |
| --- | --- | --- | --- | --- | --- | --- | --- | --- |
| B2.33 71 00.281 |  | Backfilling & Warrning Tape | 2d | 2026-11-19 | 2026-11-21 | B2.33 71 00.280, B2.33 71 00.251 |  | 33.32d |
|  | Manhole Type 2 | **Manhole Type 2** |  | 2026-11-08 | 2026-11-14 |  |  |  |
| B2.31 23 00.637 |  | Excavation | 2d | 2026-11-08 | 2026-11-09 | B2.31 23 00.636, B2.31 23 00.631_R |  | 39.32d |
| B2.33 71 00.282 |  | Manhole Installation | 2d | 2026-11-10 | 2026-11-11 | B2.31 23 00.637 |  | 39.32d |
| B2.33 71 00.283 |  | Backfilling & Warrning Tape | 2d | 2026-11-12 | 2026-11-14 | B2.33 71 00.282 |  | 39.32d |
|  | Earth & Road Works | **Earth & Road Works** |  | 2025-12-01 | 2026-11-08 |  |  |  |
|  | Earth Works | **Earth Works** |  | 2025-12-01 | 2026-03-14 |  |  |  |
| B1.2.31 23 16.01.17 |  | Roadway Excavation | 2d | 2025-12-01 A | 2025-12-03 A | DMM2-Eng-MS-78 | 100% |  |
| B1.2.31 23 23.01.17 |  | Embankment Backfiling | 79.8d | 2025-12-03 A | 2026-03-14 A | B1.2.31 23 16.01.17 | 100% |  |
|  | Earth Layers | **Earth Layers** |  | 2026-01-24 | 2026-10-08 |  |  |  |
| B1.2.32 11 13.01.17 |  | Subgrade (65.00% Completed) | 186.41d | 2026-01-24 A | 2026-09-15 A | B1.2.31 23 23.01.17 | 100% |  |
| B1.2.32 11 23.01.17 |  | Aggregate Base Course (35.00% Completed) | 97.97d | 2026-05-20 A | 2026-09-15 A | B1.2.32 11 13.01.17 SS | 100% |  |
| B1.2.32 11 13.01.17_R |  | Subgrade(Rem) | 1.05d | 2026-09-19 A | 2026-09-22 A | B1.2.31 23 23.01.17, B1.2.32 11 13.01.17 | 100% |  |
| B1.2.32 11 23.01.17_R |  | Aggregate Base Course(Rem) | 1.3d | 2026-10-07 | 2026-10-08 | B1.2.32 11 13.01.17_R SS, B1.2.32 11 23.01.17 |  | 16.02d |
|  | Interlock | **Interlock** |  | 2026-10-08 | 2026-10-12 |  |  |  |
| B1.2.32 14 13.13.17 |  | 60mm thick - Interlocking Block Pavers | 3d | 2026-10-08 | 2026-10-12 | B1.2.32 11 23.01.17_R |  | 16.02d |
|  | Curbstone | **Curbstone** |  | 2026-10-12 | 2026-11-01 |  |  |  |
|  | Pre Install | **Pre-Installation** |  | 2026-10-12 | 2026-10-20 |  |  |  |
| B2.31 23 00.481 |  | Excavation | 2d | 2026-10-12 | 2026-10-14 | B1.2.32 14 13.13.17 |  | 16.02d |
| B1.2.32 14 13.13.217 |  | PCC | 2d | 2026-10-14 | 2026-10-17 | B2.31 23 00.481 |  | 16.02d |
| 32 16 13.0017 |  | Haunching | 3d | 2026-10-17 | 2026-10-20 | B1.2.32 14 13.13.217 |  | 16.02d |
|  | Installation | **Installation** |  | 2026-10-20 | 2026-10-29 |  |  |  |
| B1.2.32 16.13.01.17 |  | Curb Stone, Type K1 | 3d | 2026-10-20 | 2026-10-24 | 32 16 13.0017 |  | 16.02d |
| B1.2.32 16.13.02.16 |  | Dropped Curb, Type K3 | 1d | 2026-10-24 | 2026-10-25 | B1.2.32 16.13.01.17, 32 16 13.0017 |  | 16.02d |
| B1.2.32 16.13.03.17 |  | Edge Curb, Type K4 | 2d | 2026-10-25 | 2026-10-27 | B1.2.32 16.13.02.16, 32 16 13.0017 |  | 16.02d |
| B1.2.32 16.13.0417 |  | Heel Curb, Type K5 | 2d | 2026-10-25 | 2026-10-27 | B1.2.32 16.13.03.17 SS, 32 16 13.0017 |  | 16.02d |
| B1.2.32 16.13.05.16 |  | Transition Curb | 2d | 2026-10-27 | 2026-10-29 | B1.2.32 16.13.0417, 32 16 13.0017 |  | 16.02d |
|  | Finishing | **Finishing** |  | 2026-10-29 | 2026-11-01 |  |  |  |
| 32 16 13.017 |  | Finishing, Fareface | 2d | 2026-10-29 | 2026-11-01 | B1.2.32 16.13.01.17, B1.2.32 16.13.02.16, B1.2.32 16.13.03.17, B1.2.32 16.13.0417, B1.2.32 16.13.05.16 |  | 16.02d |
|  | Asphalt Layers | **Asphalt Layers** |  | 2026-10-08 | 2026-11-03 |  |  |  |
| B1.2.32 11 26.01.17 |  | Bituminous Base Course including Prime Coat (MC1) and tack coat (RC2) | 2d | 2026-10-08 | 2026-10-11 | B1.2.32 11 23.01.17_R |  | 34.02d |
| B1.2.32 12 16.01.17 |  | Bituminous concrete Wearing Course, including tack coat (RC2) | 2d | 2026-11-01 | 2026-11-03 | B1.2.32 11 26.01.17, 32 16 13.017 |  | 16.02d |
|  | Pavement Marking | **Pavement Marking** |  | 2026-11-05 | 2026-11-08 |  |  |  |
| B1.2.32 17 23.01.17 |  | Retroreflective Thermoplastic White Traffic lines | 2d | 2026-11-05 | 2026-11-08 | B1.2.32 12 16.01.17, B1.2.32 12 19.13.017 |  | 86.02d |
| B1.2.32 17 23.02.17 |  | Retroreflective Thermoplastic Yellow, Traffic lines | 2d | 2026-11-05 | 2026-11-08 | B1.2.32 12 16.01.17, B1.2.32 12 19.13.017 |  | 86.02d |
|  | Road Misc. | **Miscellaneous** |  | 2026-11-03 | 2026-11-05 |  |  |  |
| B1.2.32 12 19.13.017 |  | Speed Tables | 2d | 2026-11-03 | 2026-11-05 | B1.2.32 12 16.01.17 |  | 86.02d |
| B1.2.32 12 19.13.16 |  | Wheels stoppers (precast concrete) | 2d | 2026-11-03 | 2026-11-05 | B1.2.32 12 16.01.17 |  | 16.02d |
|  | Landscape | **Landscape** |  | 2026-12-30 | 2027-01-05 |  |  |  |
|  | Trees | **Trees** |  | 2026-12-30 | 2027-01-05 |  |  |  |
| B7.32 93 43.03 |  | Tamarindus indica | 5d | 2026-12-30 | 2027-01-05 | B7.32 93 43.02-191 |  | 3d |
|  | Prov. Sum | **Provisional Sum** |  | 2026-12-14 | 2026-12-29 |  |  |  |
| Prov.Sum 01 |  | Additional Works | 12d | 2026-12-14 | 2026-12-29 | DMM-Mil-48 |  | 8d |
|  | T&C | **Testing & Commissioning** |  | 2026-09-08 | 2027-01-03 |  |  |  |
|  | Zone 01 | **Zone 01** |  | 2026-09-08 | 2026-12-27 |  |  |  |
|  | Wet | **Wet Networks & Stations** |  | 2026-09-08 | 2026-12-12 |  |  |  |
|  | Sewer | **Sewerage Network** |  | 2026-09-08 | 2026-12-12 |  |  |  |
| T&C-Sew-01 |  | Testing & Commissioning for Sewerage Network | 6d | 2026-09-08 A | 2026-12-12 | B6.33 05 39.01.1867, B6.33 05 39.01.817_R SS, DMM-Mil-48 FF, DMM-Mil-13 FF | 90% | 23.32d |
|  | Storm | **Storm Network** |  | 2026-09-12 | 2026-12-12 |  |  |  |
| T&C-Strm-01 |  | Testing & Commissioning for Storm Network | 6d | 2026-09-12 A | 2026-12-12 | B6.33 05 40.01.1000 FF, B6.33 05 40.01.840 FF, B6.33 05 63.044 FF, DMM-Mil-48 FF, T&C-Sew-01 SS, DMM-Mil-6 FF | 90% | 11.92d |
|  | Potable | **Potable Network** |  | 2026-12-05 | 2026-12-12 |  |  |  |
| T&C-Pot-01 |  | Testing & Commissioning for Potable Network | 7d | 2026-12-05 | 2026-12-12 | T&C-Strm-01 FF, B3.33 05 63.01.29 FF, B3.33 14 13.01.01109_R SS, B3.33 14 19.01.fm18 FF, DMM-Mil-48 FF, T&C-Strm-01 SS |  | 18.32d |
|  | Fire Fighting | **Fire Fighting Network** |  | 2026-12-06 | 2026-12-12 |  |  |  |
| T&C-FF-01 |  | Testing & Commissioning for Fire Fighting Network | 6d | 2026-12-06 | 2026-12-12 | T&C-Pot-01 FF, B3.33 05 63.01.64 FF, B3.33 05 63.02.84 FF, B3.33 14 19.01.fm51 FF, DMM-Mil-48 FF, T&C-Pot-01 SS |  | 18.32d |
|  | TSE | **TSE Network** |  | 2026-12-06 | 2026-12-12 |  |  |  |
| T&C-TSE-01 |  | Testing & Commissioning for TSE Network | 6d | 2026-12-06 | 2026-12-12 | T&C-FF-01 FF, B3.33 05 63.01.74 FF, B3.33 05 63.02.99 FF, DMM-Mil-48 FF, T&C-FF-01 SS |  | 18.32d |
|  | Dry | **Dry Networks** |  | 2026-12-13 | 2026-12-27 |  |  |  |
|  | MV | **Medium Voltage Network** |  | 2026-12-13 | 2026-12-16 |  |  |  |
| T&C-MV-01 |  | Testing & Commissioning for Medium Voltage Network | 4d | 2026-12-13 | 2026-12-16 | B2.33 71 00.021_R, B2.33 71 00.213, B2.33 71 49.23.05, B2.33 71 00.297, B2.33 71 49.23.064, DMM-Mil-48, B1.2.31 23 16.01.17, B2.33 71 16.031 |  | 1.32d |
|  | LV | **Low Voltage Network** |  | 2026-12-17 | 2026-12-20 |  |  |  |
| T&C-LV-01 |  | Testing & Commissioning for Low Voltage Network | 3d | 2026-12-17 | 2026-12-20 | B2.33 71 26 26, B2.33 71 26 23, B2.33 71 26 32, B2.33 71 26 29, B2.33 71 26 013, B2.33 71 26 023, B2.33 71 00 01 19, B2.33 71 00 01 20, B2.33 71 00 01 10, B2.33 71 00 01 16, DMM-Mil-48, T&C-MV-01 |  | 3.32d |
|  | Telecom | **Telecommunication Network** |  | 2026-12-21 | 2026-12-27 |  |  |  |
| T&C-Telecom-01 |  | Testing & Commissioning for Telecommunication Network | 6d | 2026-12-21 | 2026-12-27 | B2.33 71 00.267_R, B2.33 71 00.235, B2.1.33 81 26.191, B2.33 71 00.281, B2.1.33 81 26.194, B2.33 71 00.283, DMM-Mil-48, T&C-LV-01, B1.2.31 23 16.01.5 |  | 8.32d |
|  | SL | **Street Lighting** |  | 2026-12-13 | 2026-12-19 |  |  |  |
| T&C-SL-01 |  | Testing & Commissioning for Street Lighting Network | 6d | 2026-12-13 | 2026-12-19 | B2.33 71 19 212, B2.33 71 26 045, DMM-Mil-48 |  | 15.32d |
|  | Zone 02 | **Zone 02** |  | 2026-12-06 | 2026-12-30 |  |  |  |
|  | Wet | **Wet Networks & Stations** |  | 2026-12-06 | 2026-12-21 |  |  |  |
|  | Sewer | **Sewerage Network** |  | 2026-12-13 | 2026-12-19 |  |  |  |
| T&C-Sew-1 |  | Testing & Commissioning for Sewerage Network | 6d | 2026-12-13 | 2026-12-19 | T&C-Sew-01, DMM-Mil-48 |  | 23.32d |
|  | Storm | **Storm Network** |  | 2026-12-13 | 2026-12-20 |  |  |  |

| ID | WBS | Task | Duration | Start | Finish | Predecessors | Complete | Total float |
| --- | --- | --- | --- | --- | --- | --- | --- | --- |
| T&C-Strm-1 |  | Testing & Commissioning for Storm Network | 7d | 2026-12-13 | 2026-12-20 | T&C-Strm-01 |  | 24.32d |
|  | Potable | **Potable Network** |  | 2026-12-13 | 2026-12-19 |  |  |  |
| T&C-Pot-1 |  | Testing & Commissioning for Potable Network | 6d | 2026-12-13 | 2026-12-19 | T&C-Pot-01 |  | 27.32d |
|  | Fire Fighting | **Fire Fighting Network** |  | 2026-12-06 | 2026-12-12 |  |  |  |
| T&C-FF-1 |  | Testing & Commissioning for Fire Fighting Network | 6d | 2026-12-06 | 2026-12-12 | T&C-FF-01 SS |  | 30.32d |
|  | TSE | **TSE Network** |  | 2026-12-13 | 2026-12-19 |  |  |  |
| T&C-TSE-1 |  | Testing & Commissioning for TSE Network | 6d | 2026-12-13 | 2026-12-19 | T&C-TSE-01 |  | 18.32d |
|  | Pot Pump St. | **Potable Water Pump Station** |  | 2026-12-17 | 2026-12-21 |  |  |  |
| T&C-PumpS-13 |  | Testing & Commissioning for Process Control Wiring | 4d | 2026-12-17 | 2026-12-21 | B3.2.32 11 23.01.235, B3.2.32 11 23.01.249, B8.31 23 16.0193 FF |  | 1.32d |
| T&C-PumpS-23 |  | Testing & Commissioning for Instrumentation for Process Systems | 4d | 2026-12-17 | 2026-12-21 | B3.2.32 11 23.01.231, B3.2.32 11 23.01.249 |  | 1.32d |
| T&C-PumpS-3 |  | Testing & Commissioning for PLC System | 4d | 2026-12-17 | 2026-12-21 | B3.2.32 11 23.01.219, B3.2.32 11 23.01.137, B3.2.32 11 23.01.249, DMM-Mil-17 |  | 1.32d |
|  | Dry | **Dry Networks** |  | 2026-12-13 | 2026-12-30 |  |  |  |
|  | MV | **Medium Voltage Network** |  | 2026-12-17 | 2026-12-21 |  |  |  |
| T&C-MV-1 |  | Testing & Commissioning for Medium Voltage Network | 4d | 2026-12-17 | 2026-12-21 | T&C-MV-01 |  | 1.32d |
|  | LV | **Low Voltage Network** |  | 2026-12-21 | 2026-12-23 |  |  |  |
| T&C-LV-1 |  | Testing & Commissioning for Low Voltage Network | 3d | 2026-12-21 | 2026-12-23 | T&C-LV-01 |  | 3.32d |
|  | Telecom | **Telecommunication Network** |  | 2026-12-24 | 2026-12-30 |  |  |  |
| T&C-Telecom-1 |  | Testing & Commissioning for Telecommunication Network | 6d | 2026-12-24 | 2026-12-30 | T&C-Telecom-01 FF, DMM-Mil-48, T&C-LV-1 |  | 5.32d |
|  | SL | **Street Lighting** |  | 2026-12-13 | 2026-12-19 |  |  |  |
| T&C-SL-1 |  | Testing & Commissioning for Street Lighting Network | 6d | 2026-12-13 | 2026-12-19 | T&C-SL-01 FF |  | 15.32d |
|  | Zone 03 | **Zone 03** |  | 2026-09-12 | 2026-12-30 |  |  |  |
|  | Wet | **Wet Networks & Stations** |  | 2026-09-12 | 2026-12-28 |  |  |  |
|  | Sewer | **Sewerage Network** |  | 2026-09-13 | 2026-10-07 |  |  |  |
| T&C-Sew-11 |  | Testing & Commissioning for Sewerage Network | 6d | 2026-09-13 A | 2026-10-07 | T&C-Sew-1 | 90% | 85.72d |
|  | Storm | **Storm Network** |  | 2026-09-12 | 2026-12-20 |  |  |  |
| T&C-Strm-11 |  | Testing & Commissioning for Storm Network | 6d | 2026-09-12 A | 2026-12-20 | T&C-Strm-1 FF | 90% | 24.32d |
|  | Potable | **Potable Network** |  | 2026-12-13 | 2026-12-19 |  |  |  |
| T&C-Pot-11 |  | Testing & Commissioning for Potable Network | 6d | 2026-12-13 | 2026-12-19 | T&C-Pot-1 FF |  | 27.32d |
|  | Fire Fighting | **Fire Fighting Network** |  | 2026-12-13 | 2026-12-15 |  |  |  |
| T&C-FF-11 |  | Testing & Commissioning for Fire Fighting Network | 3d | 2026-12-13 | 2026-12-15 | T&C-FF-1 |  | 30.32d |
|  | TSE | **TSE Network** |  | 2026-12-20 | 2026-12-27 |  |  |  |
| T&C-TSE-11 |  | Testing & Commissioning for TSE Network | 7d | 2026-12-20 | 2026-12-27 | T&C-TSE-1 |  | 18.32d |
|  | Sewer Lift St. | **Sewer Lift Station** |  | 2026-12-22 | 2026-12-28 |  |  |  |
| T&C-LiftS-33 |  | Testing & Commissioning for PLC System | 6d | 2026-12-22 | 2026-12-28 | B5.1.31 23 16.01.149, T&C-PumpS-3, DMM-Mil-48 |  | 1.32d |
| T&C-LiftS-43 |  | Testing & Commissioning for Process Control Wiring | 6d | 2026-12-22 | 2026-12-28 | B5.1.31 23 16.01.147, T&C-PumpS-13, DMM-Mil-48 |  | 1.32d |
| T&C-LiftS-53 |  | Testing & Commissioning for Instrumentation for Process Systems | 6d | 2026-12-22 | 2026-12-28 | B5.1.31 23 16.01.149, T&C-PumpS-23, DMM-Mil-48 |  | 1.32d |
|  | Dry | **Dry Networks** |  | 2026-12-16 | 2026-12-30 |  |  |  |
|  | MV | **Medium Voltage Network** |  | 2026-12-22 | 2026-12-26 |  |  |  |
| T&C-MV-11 |  | Testing & Commissioning for Medium Voltage Network | 4d | 2026-12-22 | 2026-12-26 | T&C-MV-1 |  | 1.32d |
|  | LV | **Low Voltage Network** |  | 2026-12-24 | 2026-12-27 |  |  |  |
| T&C-LV-11 |  | Testing & Commissioning for Low Voltage Network | 3d | 2026-12-24 | 2026-12-27 | T&C-LV-1, T&C-LV-01 |  | 3.32d |
|  | Telecom | **Telecommunication Network** |  | 2026-12-24 | 2026-12-30 |  |  |  |
| T&C-Telecom-11 |  | Testing & Commissioning for Telecommunication Network | 6d | 2026-12-24 | 2026-12-30 | T&C-Telecom-1 FF, DMM-Mil-48 |  | 5.32d |
|  | SL | **Street Lighting** |  | 2026-12-16 | 2026-12-19 |  |  |  |
| T&C-SL-11 |  | Testing & Commissioning for Street Lighting Network | 3d | 2026-12-16 | 2026-12-19 | T&C-SL-1 FF, DMM-Mil-48 |  | 15.32d |
|  | Zone 04 | **Zone 04** |  | 2026-09-10 | 2027-01-03 |  |  |  |
|  | Wet | **Wet Networks & Stations** |  | 2026-09-10 | 2027-01-03 |  |  |  |
|  | Sewer | **Sewerage Network** |  | 2026-09-10 | 2026-12-12 |  |  |  |
| T&C-Sew-21 |  | Testing & Commissioning for Sewerage Network | 6d | 2026-09-10 A | 2026-12-12 | T&C-Sew-11, DMM-Mil-48 FF | 90% | 29.32d |
|  | Storm | **Storm Network** |  | 2026-09-28 | 2026-10-07 |  |  |  |
| T&C-Strm-21 |  | Testing & Commissioning for Storm Network | 6d | 2026-09-28 A | 2026-10-07 | T&C-Strm-11 SS | 90% | 87.72d |
|  | Potable | **Potable Network** |  | 2026-12-13 | 2026-12-19 |  |  |  |
| T&C-Pot-21 |  | Testing & Commissioning for Potable Network | 6d | 2026-12-13 | 2026-12-19 | T&C-Pot-11 SS, DMM-Mil-48 FF |  | 27.32d |
|  | Fire Fighting | **Fire Fighting Network** |  | 2026-12-08 | 2026-12-15 |  |  |  |
| T&C-FF-21 |  | Testing & Commissioning for Fire Fighting Network | 7d | 2026-12-08 | 2026-12-15 | T&C-FF-11 FF, DMM-Mil-48 FF |  | 30.32d |
|  | TSE | **TSE Network** |  | 2026-12-28 | 2027-01-03 |  |  |  |
| T&C-TSE-21 |  | Testing & Commissioning for TSE Network | 6d | 2026-12-28 | 2027-01-03 | T&C-TSE-11, DMM-Mil-48 FF |  | 18.32d |
|  | Dry | **Dry Networks** |  | 2026-12-13 | 2026-12-30 |  |  |  |
|  | MV | **Medium Voltage Network** |  | 2026-12-27 | 2026-12-30 |  |  |  |
| T&C-MV-21 |  | Testing & Commissioning for Medium Voltage Network | 4d | 2026-12-27 | 2026-12-30 | T&C-MV-11 |  | 1.32d |
|  | LV | **Low Voltage Network** |  | 2026-12-28 | 2026-12-30 |  |  |  |
| T&C-LV-21 |  | Testing & Commissioning for Low Voltage Network | 3d | 2026-12-28 | 2026-12-30 | DMM-Mil-48, T&C-LV-11 |  | 3.32d |
|  | Telecom | **Telecommunication Network** |  | 2026-12-24 | 2026-12-30 |  |  |  |
| T&C-Telecom-21 |  | Testing & Commissioning for Telecommunication Network | 6d | 2026-12-24 | 2026-12-30 | T&C-Telecom-11 FF |  | 5.32d |
|  | SL | **Street Lighting** |  | 2026-12-13 | 2026-12-20 |  |  |  |
| T&C-SL-21 |  | Testing & Commissioning for Street Lighting Network | 7d | 2026-12-13 | 2026-12-20 | T&C-SL-11 FF, DMM-Mil-48 |  | 14.32d |
|  | Closeout | **Project Closeout** |  | 2026-12-16 | 2027-02-15 |  |  |  |
|  | Engineering | **Engineering** |  | 2026-12-16 | 2027-01-11 |  |  |  |
|  | AS-Built | **AS-Built** |  | 2026-12-16 | 2027-01-11 |  |  |  |
|  | SDS | **Wet Networks & Stations** |  | 2026-12-16 | 2027-01-10 |  |  |  |

| ID | WBS | Task | Duration | Start | Finish | Predecessors | Total float |
| --- | --- | --- | --- | --- | --- | --- | --- |
|  | Sewer | **Sewerage Network** |  | 2026-12-20 | 2026-12-23 |  |  |
| Close.Asblt.01-1 |  | AS-Built Drawings Submittal - Sewerage Network | 4d | 2026-12-20 | 2026-12-23 | T&C-Sew-21, T&C-Sew-11, T&C-Sew-1, T&C-Sew-01 | 25.32d |
|  | Storm | **Storm Network** |  | 2026-12-24 | 2026-12-28 |  |  |
| Close.Asblt.01-2 |  | AS-Built Drawings Submittal - Storm Network | 4d | 2026-12-24 | 2026-12-28 | T&C-Strm-21, T&C-Strm-11, T&C-Strm-1, T&C-Strm-01, Close.Asblt.01-1 | 25.32d |
|  | Potable | **Potable Network** |  | 2027-01-05 | 2027-01-09 |  |  |
| Close.Asblt.01-3 |  | AS-Built Drawings Submittal - Potable Network | 4d | 2027-01-05 | 2027-01-09 | T&C-Pot-21, T&C-Pot-11, T&C-Pot-1, T&C-Pot-01, Clsout.13.2.1.341, Close.Asblt.01-2, DMM-Mil-14 | 19.32d |
|  | Fire Fighting | **Fire Fighting Network** |  | 2026-12-16 | 2026-12-20 |  |  |
| Close.Asblt.01-5 |  | AS-Built Drawings Submittal - Fire Fighting Network | 4d | 2026-12-16 | 2026-12-20 | T&C-FF-21, T&C-FF-11, T&C-FF-1, T&C-FF-01 | 30.32d |
|  | TSE | **TSE Network** |  | 2027-01-06 | 2027-01-10 |  |  |
| Close.Asblt.01-4 |  | AS-Built Drawings Submittal - TSE Network | 4d | 2027-01-06 | 2027-01-10 | Clsout.13.2.1.311, Clsout.13.2.1.161, Clsout.13.2.1.271 | 18.32d |
|  | Pot Pump St. | **Potable Water Pump Station** |  | 2026-12-22 | 2026-12-26 |  |  |
| Close.Asblt.01-21 |  | AS-Built Drawings Submittal - Potable Water Pump Station - Mech | 4d | 2026-12-22 | 2026-12-26 | T&C-PumpS-3, T&C-PumpS-23, T&C-PumpS-13 | 31.32d |
| Close.Asblt.01-31 |  | AS-Built Drawings Submittal - Potable Water Pump Station - Elec. | 4d | 2026-12-22 | 2026-12-26 | T&C-PumpS-3, T&C-PumpS-23, T&C-PumpS-13 | 31.32d |
| Close.Asblt.01-6 |  | AS-Built Drawings Submittal - Potable Water Pump Station - Civil & Arch | 4d | 2026-12-22 | 2026-12-26 | T&C-PumpS-3, T&C-PumpS-23, T&C-PumpS-13 | 19.32d |
|  | Sewer Lift St. | **Sewer Lift Station** |  | 2026-12-29 | 2027-01-02 |  |  |
| Close.Asblt.01-41 |  | AS-Built Drawings Submittal - Sewer Lift Station - Civil & Arch | 4d | 2026-12-29 | 2027-01-02 | T&C-LiftS-53, T&C-LiftS-43, T&C-LiftS-33, Close.Asblt.01-6 | 17.32d |
| Close.Asblt.01-51 |  | AS-Built Drawings Submittal - Sewer Lift Station - Mech | 4d | 2026-12-29 | 2027-01-02 | T&C-LiftS-53, T&C-LiftS-43, T&C-LiftS-33, DMM-Mil-18 | 17.32d |
| Close.Asblt.01-61 |  | AS-Built Drawings Submittal - Sewer Lift Station - Elec. | 4d | 2026-12-29 | 2027-01-02 | T&C-LiftS-53, T&C-LiftS-43, T&C-LiftS-33 | 17.32d |
|  | 1 | **Dry Networks** |  | 2026-12-21 | 2027-01-11 |  |  |
|  | MV | **Medium Voltage Network** |  | 2027-01-03 | 2027-01-06 |  |  |
| Close.MV.Asblt.01-8 |  | AS-Built Drawings Submittal - Medium Voltage Network | 4d | 2027-01-03 | 2027-01-06 | T&C-MV-21, T&C-MV-11, T&C-MV-1, T&C-MV-01, Close.Asblt.01-61, Close.Asblt.01-41, Close.Asblt.01-51 | 17.32d |
|  | LV | **Low Voltage Network** |  | 2027-01-07 | 2027-01-11 |  |  |
| Close.LV.Asblt.01-9 |  | AS-Built Drawings Submittal - Low Voltage Network | 4d | 2027-01-07 | 2027-01-11 | T&C-LV-21, T&C-LV-11, T&C-LV-1, T&C-LV-01, Close.MV.Asblt.01-8 | 17.32d |
|  | Telecom | **Telecommunication Network** |  | 2026-12-31 | 2027-01-04 |  |  |
| Close.Tele.Asblt.01 |  | AS-Built Drawings Submittal - Telecommunication Network | 4d | 2026-12-31 | 2027-01-04 | T&C-Telecom-21, T&C-Telecom-11, T&C-Telecom-1, T&C-Telecom-01 | 23.32d |
|  | SL | **Street Lighting** |  | 2026-12-21 | 2026-12-24 |  |  |
| Close.SL.Asblt.01-11 |  | AS-Built Drawings Submittal - Street Lighting | 4d | 2026-12-21 | 2026-12-24 | T&C-SL-21, T&C-SL-11, T&C-SL-1, T&C-SL-01 | 26.32d |
|  | O & M Manuals | **O & M Manuals** |  | 2026-12-20 | 2027-01-06 |  |  |
|  | SDS | **Wet Networks & Stations** |  | 2026-12-20 | 2027-01-05 |  |  |
|  | Sewer | **Sewerage Network** |  | 2026-12-20 | 2026-12-21 |  |  |
| Clsout.13.2.1.131 |  | O & M Manuals Submittals | 2d | 2026-12-20 | 2026-12-21 | T&C-Sew-21, T&C-Sew-11, T&C-Sew-1, T&C-Sew-01 | 23.32d |
|  | Storm | **Storm Network** |  | 2026-12-22 | 2026-12-23 |  |  |
| Clsout.13.2.1.141 |  | O & M Manuals Submittals | 2d | 2026-12-22 | 2026-12-23 | T&C-Strm-01, T&C-Strm-1, T&C-Strm-11, T&C-Strm-21, Clsout.13.2.1.131 | 23.32d |
|  | Potable | **Potable Network** |  | 2026-12-24 | 2026-12-26 |  |  |
| Clsout.13.2.1.151 |  | O & M Manuals Submittals | 2d | 2026-12-24 | 2026-12-26 | T&C-Pot-21, T&C-Pot-11, T&C-Pot-1, T&C-Pot-01, Clsout.13.2.1.141 | 23.32d |
|  | Fire Fighting | **Fire Fighting Network** |  | 2026-12-27 | 2026-12-28 |  |  |
| Clsout.13.2.1.171 |  | O & M Manuals Submittals | 2d | 2026-12-27 | 2026-12-28 | T&C-FF-21, T&C-FF-11, T&C-FF-1, T&C-FF-01, Clsout.13.2.1.151 | 23.32d |
|  | TSE | **TSE Network** |  | 2027-01-04 | 2027-01-05 |  |  |
| Clsout.13.2.1.161 |  | O & M Manuals Submittals | 2d | 2027-01-04 | 2027-01-05 | T&C-TSE-01, T&C-TSE-1, T&C-TSE-11, T&C-TSE-21, Clsout.13.2.1.171, Close.SL.Asblt.01-11 | 18.32d |
|  | Pot Pump St. | **Potable Water Pump Station** |  | 2026-12-22 | 2026-12-23 |  |  |
| Clsout.13.2.1.181 |  | O & M Manuals Submittals | 2d | 2026-12-22 | 2026-12-23 | T&C-PumpS-13, T&C-PumpS-23, T&C-PumpS-3 | 13.32d |
|  | Sewer Lift St. | **Sewer Lift Station** |  | 2026-12-29 | 2026-12-30 |  |  |
| Clsout.13.2.1.191 |  | O & M Manuals Submittals | 2d | 2026-12-29 | 2026-12-30 | T&C-LiftS-33, T&C-LiftS-43, T&C-LiftS-53 | 7.32d |
|  | 1 | **Dry Networks** |  | 2026-12-31 | 2027-01-06 |  |  |
|  | MV | **Medium Voltage Network** |  | 2026-12-31 | 2027-01-02 |  |  |
| Clsout.13.2.1.201 |  | O & M Manuals Submittals | 2d | 2026-12-31 | 2027-01-02 | T&C-MV-21, T&C-MV-11, T&C-MV-1, T&C-MV-01 | 1.32d |
|  | LV | **Low Voltage Network** |  | 2027-01-03 | 2027-01-04 |  |  |
| Clsout.13.2.1.211 |  | O & M Manuals Submittals | 2d | 2027-01-03 | 2027-01-04 | T&C-LV-01, T&C-LV-1, T&C-LV-11, T&C-LV-21, Clsout.13.2.1.201 | 1.32d |
|  | Telecom | **Telecommunication Network** |  | 2027-01-05 | 2027-01-06 |  |  |
| Clsout.13.2.1.221 |  | O & M Manuals Submittals | 2d | 2027-01-05 | 2027-01-06 | T&C-Telecom-21, T&C-Telecom-11, T&C-Telecom-1, T&C-Telecom-01, Clsout.13.2.1.211 | 1.32d |
|  | SL | **Street Lighting** |  | 2027-01-05 | 2027-01-06 |  |  |
| Clsout.13.2.1.231 |  | O & M Manuals Submittals | 2d | 2027-01-05 | 2027-01-06 | T&C-SL-01, T&C-SL-1, T&C-SL-11, T&C-SL-21, Clsout.13.2.1.221 FF | 1.32d |
|  | Spare Parts | **Operational Spare Parts & Guarantee Certificates/Docs.** |  | 2026-12-20 | 2027-01-06 |  |  |
|  | SDS | **Wet Networks & Stations** |  | 2026-12-20 | 2027-01-05 |  |  |
|  | Sewer | **Sewerage Network** |  | 2026-12-20 | 2026-12-21 |  |  |
| Clsout.13.2.1.241 |  | Operational Spare Parts & Guarantee Certificates/Docs. | 2d | 2026-12-20 | 2026-12-21 | T&C-Sew-21, T&C-Sew-11, T&C-Sew-1, T&C-Sew-01 | 23.32d |
|  | Storm | **Storm Network** |  | 2026-12-22 | 2026-12-23 |  |  |
| Clsout.13.2.1.251 |  | Operational Spare Parts & Guarantee Certificates/Docs. | 2d | 2026-12-22 | 2026-12-23 | T&C-Strm-21, T&C-Strm-11, T&C-Strm-1, T&C-Strm-01, Clsout.13.2.1.241 | 23.32d |
|  | Potable | **Potable Network** |  | 2026-12-24 | 2026-12-26 |  |  |
| Clsout.13.2.1.261 |  | Operational Spare Parts & Guarantee Certificates/Docs. | 2d | 2026-12-24 | 2026-12-26 | T&C-Pot-21, T&C-Pot-11, T&C-Pot-1, T&C-Pot-01, Clsout.13.2.1.251 | 23.32d |
|  | Fire Fighting | **Fire Fighting Network** |  | 2026-12-27 | 2026-12-28 |  |  |
| Clsout.13.2.1.281 |  | Operational Spare Parts & Guarantee Certificates/Docs. | 2d | 2026-12-27 | 2026-12-28 | T&C-FF-21, T&C-FF-11, T&C-FF-1, T&C-FF-01, Clsout.13.2.1.261 | 23.32d |
|  | TSE | **TSE Network** |  | 2027-01-04 | 2027-01-05 |  |  |
| Clsout.13.2.1.271 |  | Operational Spare Parts & Guarantee Certificates/Docs. | 2d | 2027-01-04 | 2027-01-05 | T&C-TSE-21, T&C-TSE-11, T&C-TSE-1, T&C-TSE-01, Clsout.13.2.1.281 | 18.32d |
|  | Pot Pump St. | **Potable Water Pump Station** |  | 2026-12-22 | 2026-12-23 |  |  |
| Clsout.13.2.1.291 |  | Operational Spare Parts & Guarantee Certificates/Docs. | 2d | 2026-12-22 | 2026-12-23 | T&C-PumpS-13, T&C-PumpS-3, T&C-PumpS-23 | 5.32d |
|  | Sewer Lift St. | **Sewer Lift Station** |  | 2026-12-29 | 2026-12-30 |  |  |
| Clsout.13.2.1.301 |  | Operational Spare Parts & Guarantee Certificates/Docs. | 2d | 2026-12-29 | 2026-12-30 | T&C-LiftS-53, T&C-LiftS-33, T&C-LiftS-43, Clsout.13.2.1.291 | 1.32d |
|  | 1 | **Dry Networks** |  | 2026-12-21 | 2027-01-06 |  |  |
|  | MV | **Medium Voltage Network** |  | 2026-12-31 | 2027-01-02 |  |  |

| ID | WBS | Task | Duration | Start | Finish | Predecessors | Total float |
| --- | --- | --- | --- | --- | --- | --- | --- |
| Clsout.13.2.1.351 |  | Operational Spare Parts & Guarantee Certificates/Docs. | 2d | 2026-12-31 | 2027-01-02 | T&C-MV-21, T&C-MV-01, T&C-MV-11, T&C-MV-1, Clsout.13.2.1.301 | 1.32d |
|  | LV | **Low Voltage Network** |  | 2027-01-03 | 2027-01-04 |  |  |
| Clsout.13.2.1.341 |  | Operational Spare Parts & Guarantee Certificates/Docs. | 2d | 2027-01-03 | 2027-01-04 | T&C-LV-21, T&C-LV-11, T&C-LV-1, T&C-LV-01, Clsout.13.2.1.351 | 1.32d |
|  | Telecom | **Telecommunication Network** |  | 2027-01-05 | 2027-01-06 |  |  |
| Clsout.13.2.1.321 |  | Operational Spare Parts & Guarantee Certificates/Docs. | 2d | 2027-01-05 | 2027-01-06 | T&C-Telecom-21, T&C-Telecom-11, T&C-Telecom-1, T&C-Telecom-01, Clsout.13.2.1.341 | 1.32d |
|  | SL | **Street Lighting** |  | 2026-12-21 | 2026-12-22 |  |  |
| Clsout.13.2.1.311 |  | Operational Spare Parts & Guarantee Certificates/Docs. | 2d | 2026-12-21 | 2026-12-22 | T&C-SL-21, T&C-SL-11, T&C-SL-1, T&C-SL-01, Close.Asblt.01-5 | 30.32d |
|  | Snagging | **Snagging** |  | 2027-01-09 | 2027-01-31 |  |  |
| Clsout.13.2.1.1 |  | Punch List | 4d | 2027-01-09 | 2027-01-13 | B1.1.02 41 00.101, DMM-Mil-48, Clsout.13.2.1.321, Prov.Sum 01, B1.2.10 14 53.0115, B1.2.10 14 53.0215, B1.2.10 14 53.0315, B7.32 93 43.04.44, B7.32 93 13.01, DMM-Mil-3, Clsout.13.2.1.181, Clsout.13.2.1.191, Clsout.13.2.1.231, Mil.Cons.Fin | 0d |
| Clsout.13.2.1.2 |  | Rectifying / Closing | 14d | 2027-01-13 | 2027-01-29 | Clsout.13.2.1.1 | 0d |
| Clsout.13.2.1.4 |  | Desnagging | 4d | 2027-01-27 | 2027-01-31 | Clsout.13.2.1.2 FF+2d | 0d |
|  | Demobilization | **Demobilization** |  | 2027-01-31 | 2027-02-13 |  |  |
| Clsout.13.2.1.7 |  | Demobilization of Manpower | 4d | 2027-01-31 | 2027-02-04 | Clsout.13.2.1.4, Close.Tele.Asblt.01, Close.LV.Asblt.01-9, Close.Asblt.01-3, Close.Asblt.01-4, Close.Asblt.01-21, Close.Asblt.01-31 | 0d |
| Clsout.13.2.1.8 |  | Demobilization of Equipments | 5d | 2027-02-04 | 2027-02-10 | Clsout.13.2.1.7 | 0d |
| Clsout.13.2.1.10 |  | Restoration Of Ground Surfaces | 4d | 2027-02-06 | 2027-02-10 | Clsout.13.2.1.9 SS, B1.1.02 41 00.101 | 2d |
| Clsout.13.2.1.9 |  | Demoblization of Offices & Facilities & Site Clean-up | 6d | 2027-02-06 | 2027-02-13 | Clsout.13.2.1.8 SS+1d | 0d |
|  | Handing Over | **Handing Over** |  | 2027-02-13 | 2027-02-15 |  |  |
| Clsout.13.2.1.11 |  | Project Handing Over | 2d | 2027-02-13 | 2027-02-15 | Clsout.13.2.1.10, Clsout.13.2.1.4, Clsout.13.2.1.9 | 0d |

## Version 3 (data date 2026-10-13, saved 2026-10-13, file 02. WPR UPD As Oct. 13, 2026.xer)

Note of the change: Weekly folders named by the Thursday the week ends on: a report dated after one Thursday up to the next goes in the next Thursday's folder (26-Oct → W05 - 29-Oct-2026); all weeks moved accordingly, W00 removed

Last finish 2027-02-15 → 2027-02-22 (+7d). Complete tasks 2240 → 2339.

Changed:

| ID | Task | Start | Finish | Total float |
| --- | --- | --- | --- | --- |
| Milstones | **Milestones** |  | 2027-02-15 → 2027-02-22 (+7d) |  |
| Cont. Milstones | **Contractual Milestones** |  | 2027-02-15 → 2027-02-22 (+7d) |  |
| DMM-Mil-4 | Engineering - Finish | 2026-10-25 → 2026-11-01 (+7d) | 2026-10-25 → 2026-11-01 (+7d) | 9.32d → 95.32d |
| DMM-Mil-2 | Medium Voltage Network - Finish | 2026-12-05 → 2026-12-12 (+7d) | 2026-12-05 → 2026-12-12 (+7d) |  |
| DMM-Mil-3 | Road Works & Asphalt - Finish | 2026-12-12 → 2026-12-17 (+5d) | 2026-12-12 → 2026-12-17 (+5d) | 23.32d → 24.32d |
| DMM-Mil-28 | Project Commencement Finish | 2027-02-15 → 2027-02-22 (+7d) | 2027-02-15 → 2027-02-22 (+7d) |  |
| Control | **Control Milestones** | 2026-11-10 → 2026-11-15 (+5d) | 2026-12-19 → 2026-12-26 (+7d) |  |
| Networks Milstones | **Networks & Stations** | 2026-11-22 → 2026-11-21 (-1d) | 2026-12-16 → 2026-12-23 (+7d) |  |
| DMM-Mil-7 | Potable Water Network - Finish | 2026-12-02 → 2026-11-21 (-11d) | 2026-12-02 → 2026-11-21 (-11d) | 64.32d → 80.32d |
| DMM-Mil-6 | Storm Water Network - Finish | 2026-12-01 → 2026-11-22 (-9d) | 2026-12-01 → 2026-11-22 (-9d) | 21.72d → 34.92d |
| DMM-Mil-17 | Potable Water Pump Station - Finish | 2026-12-16 → 2026-11-25 (-21d) | 2026-12-16 → 2026-11-25 (-21d) | 1.32d → 25.92d |
| DMM-Mil-11 | Fire Fighting Network - Finish | 2026-12-15 → 2026-11-25 (-20d) | 2026-12-15 → 2026-11-25 (-20d) | 53.32d → 76.91d |
| DMM-Mil-5 | Sewerage Network - Finish | 2026-11-22 → 2026-11-29 (+7d) | 2026-11-22 → 2026-11-29 (+7d) |  |
| DMM-Mil-10 | Low Voltage Network - Finish | 2026-12-05 → 2026-12-10 (+5d) | 2026-12-05 → 2026-12-10 (+5d) | 62.32d → 63.32d |
| DMM-Mil-8 | TSE Network - Finish | 2026-12-09 → 2026-12-10 (+1d) | 2026-12-09 → 2026-12-10 (+1d) | 58.32d → 63.32d |
| DMM-Mil-48 | Bituminous concrete Wearing Course - Finish | 2026-12-12 → 2026-12-17 (+5d) | 2026-12-12 → 2026-12-17 (+5d) | 1.32d → 2.32d |
| DMM-Mil-9 | Telecommunication Network - Finish | 2026-12-10 → 2026-12-17 (+7d) | 2026-12-10 → 2026-12-17 (+7d) |  |
| DMM-Mil-12 | Street Lighting Network - Finish | 2026-12-16 → 2026-12-23 (+7d) | 2026-12-16 → 2026-12-23 (+7d) |  |
| Zonewise | **Zonewise Milestones** | 2026-11-10 → 2026-11-15 (+5d) | 2026-12-19 → 2026-12-26 (+7d) |  |
| DMM-Mil-13 | Zone 01 - Finish | 2026-11-10 → 2026-11-15 (+5d) | 2026-11-10 → 2026-11-15 (+5d) | 50.32d → 52.32d |
| DMM-Mil-14 | Zone 02 - Finish | 2026-12-17 → 2026-12-24 (+7d) | 2026-12-17 → 2026-12-24 (+7d) |  |
| DMM-Mil-16 | Zone 04 - Finish | 2026-12-19 → 2026-12-26 (+7d) | 2026-12-19 → 2026-12-26 (+7d) |  |
| Eng | **Engineering** |  | 2026-10-25 → 2026-11-01 (+7d) |  |
| Prequalification | **Prequalifications & Materials Submissions** |  | 2026-10-25 → 2026-11-01 (+7d) |  |
| Prequal Submit | **Submittals** |  | 2026-10-13 → 2026-10-20 (+7d) |  |
| SDS | **Wet Networks & Stations** |  | 2026-10-10 → 2026-10-17 (+7d) |  |
| Pot Pump St. | **Potable Water Pump Station** |  | 2026-10-10 → 2026-10-17 (+7d) |  |
| 3 | **Mechanical** |  | 2026-10-10 → 2026-10-17 (+7d) |  |
| DMM2-Eng-PQ-0127 | Prepare & Submit for Hose Bibb Materials | 2026-10-07 → 2026-10-14 (+7d) | 2026-10-10 → 2026-10-17 (+7d) | 15.32d → 105.32d |
| Guard Room | **Guard Rooms** |  | 2026-10-13 → 2026-10-20 (+7d) |  |
| GR MAT Mech | **Mechanical** |  | 2026-10-13 → 2026-10-20 (+7d) |  |
| DMM2-Eng-PQ-041 | Prepare & Submit for PPR Pipes Materials | 2026-10-07 → 2026-10-14 (+7d) | 2026-10-08 → 2026-10-15 (+7d) | 17.32d → 103.32d |
| DMM2-Eng-PQ-044 | Prepare & Submit for Clean out Materials | 2026-10-07 → 2026-10-14 (+7d) | 2026-10-08 → 2026-10-15 (+7d) | 8.32d → 95.32d |
| DMM2-Eng-PQ-046 | Prepare & Submit for Electrical Water Heater Materials | 2026-10-07 → 2026-10-14 (+7d) | 2026-10-08 → 2026-10-15 (+7d) | 16.32d → 103.32d |
| DMM2-Eng-PQ-048 | Prepare & Submit for Shower Materials | 2026-10-07 → 2026-10-14 (+7d) | 2026-10-08 → 2026-10-15 (+7d) | 13.32d → 99.32d |
| DMM2-Eng-PQ-049 | Prepare & Submit for Toilet Materials | 2026-10-10 → 2026-10-17 (+7d) | 2026-10-11 → 2026-10-18 (+7d) | 13.32d → 99.32d |
| DMM2-Eng-PQ-050 | Prepare & Submit for Semi Pedestal Sink Materials | 2026-10-12 → 2026-10-19 (+7d) | 2026-10-13 → 2026-10-20 (+7d) | 13.32d → 99.32d |
| GR MAT Elec | **Electrical** |  | 2026-10-08 → 2026-10-15 (+7d) |  |
| DMM2-Eng-PQ-062 | Prepare & Submit for PC Workstation Materials | 2026-10-07 → 2026-10-14 (+7d) | 2026-10-08 → 2026-10-15 (+7d) | 17.32d → 103.32d |
| DMM2-Eng-PQ-063 | Prepare & Submit for 50 inch Screen Materials | 2026-10-07 → 2026-10-14 (+7d) | 2026-10-08 → 2026-10-15 (+7d) | 17.32d → 103.32d |
| Approvals | **Approvals** |  | 2026-10-25 → 2026-11-01 (+7d) |  |
| SDS | **Wet Networks & Stations** |  | 2026-10-13 → 2026-10-20 (+7d) |  |
| Pot Pump St. | **Potable Water Pump Station** |  | 2026-10-13 → 2026-10-20 (+7d) |  |
| 3 | **Mechanical** |  | 2026-10-13 → 2026-10-20 (+7d) |  |
| DMM2-Eng-PQ-578 | Review & Approval for Hose Bibb Materials | 2026-10-11 → 2026-10-18 (+7d) | 2026-10-13 → 2026-10-20 (+7d) | 15.32d → 105.32d |
| Guard Room | **Guard Rooms** |  | 2026-10-25 → 2026-11-01 (+7d) |  |
| GR MAT Mech | **Mechanical** |  | 2026-10-25 → 2026-11-01 (+7d) |  |
| DMM2-Eng-PQ-1408 | Review & Approval for DX Wall Mounted Split/AC Materials | 2026-10-10 → 2026-10-17 (+7d) | 2026-10-15 → 2026-10-22 (+7d) | 17.32d → 103.32d |
| DMM2-Eng-PQ-1428 | Review & Approval for Clean out Materials | 2026-10-10 → 2026-10-17 (+7d) | 2026-10-13 → 2026-10-20 (+7d) | 8.32d → 95.32d |
| DMM2-Eng-PQ-1468 | Review & Approval for Shower Materials | 2026-10-10 → 2026-10-17 (+7d) | 2026-10-15 → 2026-10-22 (+7d) | 17.32d → 103.32d |
| DMM2-Eng-PQ-1478 | Review & Approval for Toilet Materials | 2026-10-12 → 2026-10-19 (+7d) | 2026-10-18 → 2026-10-25 (+7d) | 15.32d → 101.32d |
| DMM2-Eng-PQ-1438 | Review & Approval for Floor Drain Materials | 2026-10-14 → 2026-10-21 (+7d) | 2026-10-18 → 2026-10-25 (+7d) | 8.32d → 95.32d |
| DMM2-Eng-PQ-1488 | Review & Approval for Semi Pedestal Sink Materials | 2026-10-14 → 2026-10-21 (+7d) | 2026-10-20 → 2026-10-27 (+7d) | 13.32d → 99.32d |
| DMM2-Eng-PQ-1448 | Review & Approval for Electrical Water Heater Materials | 2026-10-19 → 2026-10-26 (+7d) | 2026-10-25 → 2026-11-01 (+7d) | 8.32d → 95.32d |
| GR MAT Elec | **Electrical** |  | 2026-10-15 → 2026-10-22 (+7d) |  |
| DMM2-Eng-PQ-1538 | Review & Approval for Wiring Devices Materials | 2026-10-07 → 2026-10-14 (+7d) | 2026-10-13 → 2026-10-20 (+7d) | 19.32d → 105.32d |
| DMM2-Eng-PQ-1548 | Review & Approval for Ground Wires, Rods, Pits, Clamping Materials | 2026-10-07 → 2026-10-14 (+7d) | 2026-10-13 → 2026-10-20 (+7d) | 19.32d → 105.32d |
| DMM2-Eng-PQ-1578 | Review & Approval for Data and Voice System Materials | 2026-10-07 → 2026-10-14 (+7d) | 2026-10-13 → 2026-10-20 (+7d) | 19.32d → 105.32d |
| DMM2-Eng-PQ-1588 | Review & Approval for Data Cabinet Materials | 2026-10-07 → 2026-10-14 (+7d) | 2026-10-13 → 2026-10-20 (+7d) | 19.32d → 103.32d |
| DMM2-Eng-PQ-1598 | Review & Approval for Data/ Voice RJ45 Outlet Materials | 2026-10-07 → 2026-10-14 (+7d) | 2026-10-13 → 2026-10-20 (+7d) | 19.32d → 105.32d |
| DMM2-Eng-PQ-1608 | Review & Approval for PC Workstation Materials | 2026-10-10 → 2026-10-17 (+7d) | 2026-10-15 → 2026-10-22 (+7d) | 17.32d → 103.32d |
| DMM2-Eng-PQ-1618 | Review & Approval for 50 inch Screen Materials | 2026-10-10 → 2026-10-17 (+7d) | 2026-10-15 → 2026-10-22 (+7d) | 17.32d → 103.32d |
| Procurement | **Procurement** |  | 2026-12-29 → 2026-11-03 (-56d) |  |
| PR & PO | **PR & PO** |  | 2026-10-27 → 2026-11-03 (+7d) |  |
| Site Grading | **Earth & Road Works** |  | 2026-10-27 → 2026-11-03 (+7d) |  |
| DMM2-Proc-PO-09 | PR & PO for Traffic Signs Materials | 2026-10-07 → 2026-10-14 (+7d) | 2026-10-08 → 2026-10-15 (+7d) | 21.32d → 107.32d |
| DMM2-Proc-PO-07 | PR & PO for Pavement Markings Materials | 2026-10-10 → 2026-10-17 (+7d) | 2026-10-11 → 2026-10-18 (+7d) | 21.32d → 107.32d |
| DMM2-Proc-PO-010 | PR & PO for ground Mounted Information Signs Materials | 2026-10-26 → 2026-11-02 (+7d) | 2026-10-27 → 2026-11-03 (+7d) | 9.32d → 95.32d |
| Wet | **Wet Networks & Stations** |  | 2026-10-22 → 2026-10-29 (+7d) |  |
| Sewer | **Sewerage Network** |  | 2026-10-08 → 2026-10-15 (+7d) |  |

| ID | Task | Start | Finish | Complete | Total float |
| --- | --- | --- | --- | --- | --- |
| DMM2-Proc-PO-019 | PR & PO for Discharge Chamber Materials | 2026-10-07 → 2026-10-14 (+7d) | 2026-10-08 → 2026-10-15 (+7d) |  | 96.32d → 111.32d |
| Pot Pump St. | **Potable Water Pump Station** |  | 2026-10-22 → 2026-10-29 (+7d) |  |  |
| 1 | **Civil & Architecture** | 2026-10-07 → 2026-10-01 (-6d) | 2026-10-15 → 2026-10-22 (+7d) |  |  |
| DMM2-Proc-PO-031 | PR & PO for CMU Walls Materials | 2026-10-07 → 2026-10-01 A (-6d) | 2026-10-08 → 2026-10-03 A (-5d) | 0% → 100% | 111.32d → none |
| DMM2-Proc-PO-030 | PR & PO for Stairs Materials | 2026-10-07 → 2026-10-14 (+7d) | 2026-10-08 → 2026-10-15 (+7d) |  | 1.32d → 105.32d |
| DMM2-Proc-PO-035 | PR & PO for Gravel Materials | 2026-10-07 → 2026-10-14 (+7d) | 2026-10-08 → 2026-10-15 (+7d) |  | 50.32d → 111.32d |
| DMM2-Proc-PO-032 | PR & PO for Stainless Steel Ladder Materials | 2026-10-10 → 2026-10-17 (+7d) | 2026-10-11 → 2026-10-18 (+7d) |  | 1.32d → 105.32d |
| DMM2-Proc-PO-034 | PR & PO for Metal Railing Materials | 2026-10-12 → 2026-10-19 (+7d) | 2026-10-13 → 2026-10-20 (+7d) |  | 1.32d → 105.32d |
| DMM2-Proc-PO-036 | PR & PO for Handrail Materials | 2026-10-12 → 2026-10-19 (+7d) | 2026-10-13 → 2026-10-20 (+7d) |  | 1.32d → 105.32d |
| DMM2-Proc-PO-033 | PR & PO for Steel shutter Door Materials | 2026-10-14 → 2026-10-21 (+7d) | 2026-10-15 → 2026-10-22 (+7d) |  | 21.32d → 105.32d |
| 3 | **Mechanical** |  | 2026-10-22 → 2026-10-29 (+7d) |  |  |
| DMM2-Proc-PO-042 | PR & PO for Sand Trap Louver Materials | 2026-10-07 → 2026-10-14 (+7d) | 2026-10-08 → 2026-10-15 (+7d) |  | 2.32d → 99.32d |
| DMM2-Proc-PO-188 | PR & PO for Fans Materials | 2026-10-07 → 2026-10-14 (+7d) | 2026-10-08 → 2026-10-15 (+7d) |  | 20.32d → 111.32d |
| DMM2-Proc-PO-198 | PR & PO for Louvers Materials | 2026-10-07 → 2026-10-14 (+7d) | 2026-10-08 → 2026-10-15 (+7d) |  | 40.32d → 111.32d |
| DMM2-Proc-PO-050 | PR & PO for Trench Drain Materials | 2026-10-13 → 2026-10-14 (+1d) | 2026-10-14 → 2026-10-17 (+3d) |  | 38.32d → 110.72d |
| DMM2-Proc-PO-041 | PR & PO for Strainers Materials | 2026-10-10 → 2026-10-17 (+7d) | 2026-10-11 → 2026-10-18 (+7d) |  | 2.32d → 99.32d |
| DMM2-Proc-PO-045 | PR & PO for Exhaust Fans Materials | 2026-10-12 → 2026-10-19 (+7d) | 2026-10-13 → 2026-10-20 (+7d) |  | 2.32d → 99.32d |
| DMM2-Proc-PO-044 | PR & PO for Hose Bibb Materials | 2026-10-14 → 2026-10-21 (+7d) | 2026-10-15 → 2026-10-22 (+7d) |  | 15.32d → 105.32d |
| DMM2-Proc-PO-046 | PR & PO for Chlorine Cylinder Racks Materials | 2026-10-14 → 2026-10-21 (+7d) | 2026-10-15 → 2026-10-22 (+7d) |  | 2.32d → 99.32d |
| DMM2-Proc-PO-047 | PR & PO for Chlorinators Materials | 2026-10-17 → 2026-10-24 (+7d) | 2026-10-18 → 2026-10-25 (+7d) |  | 11.32d → 99.32d |
| DMM2-Proc-PO-048 | PR & PO for Discharge Line Analyzer Materials | 2026-10-19 → 2026-10-26 (+7d) | 2026-10-20 → 2026-10-27 (+7d) |  | 11.32d → 99.32d |
| DMM2-Proc-PO-049 | PR & PO for Emergency shower Materials | 2026-10-21 → 2026-10-28 (+7d) | 2026-10-22 → 2026-10-29 (+7d) |  | 15.32d → 99.32d |
| 2 | **Electrical** | 2026-10-07 → 2026-10-14 (+7d) | 2026-10-08 → 2026-10-15 (+7d) |  |  |
| DMM2-Proc-PO-051 | PR & PO for Switches and Circuit Breakers Materials | 2026-10-07 → 2026-10-14 (+7d) | 2026-10-08 → 2026-10-15 (+7d) |  | 55.32d → 111.32d |
| Sewer Lift St. | **Sewer Lift Station** |  | 2026-10-13 → 2026-10-20 (+7d) |  |  |
| 1 | **Civil & Architecture** | 2026-10-07 → 2026-10-14 (+7d) | 2026-10-13 → 2026-10-20 (+7d) |  |  |
| DMM2-Proc-PO-052 | PR & PO for Metal Ladders Materials | 2026-10-07 → 2026-10-14 (+7d) | 2026-10-08 → 2026-10-15 (+7d) |  | 19.32d → 107.32d |
| DMM2-Proc-PO-054 | PR & PO for Internal painting (Acrylic) Materials | 2026-10-10 → 2026-10-17 (+7d) | 2026-10-11 → 2026-10-18 (+7d) |  | 19.32d → 109.32d |
| DMM2-Proc-PO-055 | PR & PO for Signages Materials | 2026-10-10 → 2026-10-17 (+7d) | 2026-10-11 → 2026-10-18 (+7d) |  | 35.32d → 107.32d |
| DMM2-Proc-PO-053 | PR & PO for Metal Covers Materials | 2026-10-12 → 2026-10-19 (+7d) | 2026-10-13 → 2026-10-20 (+7d) |  | 36.32d → 107.32d |
| 3 | **Mechanical** |  | 2026-10-08 → 2026-10-15 (+7d) |  |  |
| DMM2-Proc-PO-067 | PR & PO for Scupper Materials | 2026-10-07 → 2026-10-14 (+7d) | 2026-10-08 → 2026-10-15 (+7d) |  | 25.32d → 111.32d |
| 2 | **Electrical** |  | 2026-10-08 → 2026-10-15 (+7d) |  |  |
| DMM2-Proc-PO-078 | PR & PO for Surfaced Mounted Light (LED) Materials | 2026-10-07 → 2026-10-14 (+7d) | 2026-10-08 → 2026-10-15 (+7d) |  | 31.32d → 111.32d |
| Landscape | **Landscape Works** |  | 2026-10-08 → 2026-10-15 (+7d) |  |  |
| DMM2-Proc-PO-0103 | PR & PO for Fences (ZATCA HCIS) Materials | 2026-10-07 → 2026-10-14 (+7d) | 2026-10-08 → 2026-10-15 (+7d) |  | 60.32d → 111.32d |
| DMM2-Proc-PO-0104 | PR & PO Prepare & Submit for Fences (MODON) Materials | 2026-10-07 → 2026-10-14 (+7d) | 2026-10-08 → 2026-10-15 (+7d) |  | 50.32d → 111.32d |
| DMM2-Proc-PO-0105 | PR & PO for Vehicle Steel Gate Materials | 2026-10-07 → 2026-10-14 (+7d) | 2026-10-08 → 2026-10-15 (+7d) |  | 40.32d → 111.32d |
| DMM2-Proc-PO-0106 | PR & PO for Vehicle and Pedestrian Steel Gate Materials | 2026-10-07 → 2026-10-14 (+7d) | 2026-10-08 → 2026-10-15 (+7d) |  | 6.32d → 111.32d |
| Guard Room | **Guard Rooms** |  | 2026-10-27 → 2026-11-03 (+7d) |  |  |
| GR MAT Civil | **Civil & Architecture** |  | 2026-10-13 → 2026-10-20 (+7d) |  |  |
| DMM2-Proc-PO-0108 | PR & PO for Stone Coping Materials | 2026-10-07 → 2026-10-14 (+7d) | 2026-10-08 → 2026-10-15 (+7d) |  | 31.32d → 52.32d |
| DMM2-Proc-PO-0114 | PR & PO for Fluid-Applied Water Proofing Paint Materials | 2026-10-07 → 2026-10-14 (+7d) | 2026-10-08 → 2026-10-15 (+7d) |  | 42.32d → 45.32d |
| DMM2-Proc-PO-0117 | PR & PO for Porcelain Flooring Tiles Materials | 2026-10-07 → 2026-10-14 (+7d) | 2026-10-08 → 2026-10-15 (+7d) |  | 1.32d → 105.32d |
| DMM2-Proc-PO-0118 | PR & PO for gypsum Board Suspended Ceiling Materials | 2026-10-07 → 2026-10-14 (+7d) | 2026-10-08 → 2026-10-15 (+7d) |  | 31.32d → 109.32d |
| DMM2-Proc-PO-0119 | PR & PO for Painting Materials | 2026-10-07 → 2026-10-14 (+7d) | 2026-10-08 → 2026-10-15 (+7d) |  | 19.32d → 41.32d |
| DMM2-Proc-PO-0120 | PR & PO for Raised Floor System Materials | 2026-10-07 → 2026-10-14 (+7d) | 2026-10-08 → 2026-10-15 (+7d) |  | 44.32d → 111.32d |
| DMM2-Proc-PO-0121 | PR & PO for Steel Doors Materials | 2026-10-07 → 2026-10-14 (+7d) | 2026-10-08 → 2026-10-15 (+7d) |  | 42.32d → 111.32d |
| DMM2-Proc-PO-0122 | PR & PO for Wood Doors Materials | 2026-10-07 → 2026-10-14 (+7d) | 2026-10-08 → 2026-10-15 (+7d) |  | 47.32d → 111.32d |
| DMM2-Proc-PO-0123 | PR & PO for Aluminum Windows Materials | 2026-10-07 → 2026-10-14 (+7d) | 2026-10-08 → 2026-10-15 (+7d) |  | 37.32d → 111.32d |
| DMM2-Proc-PO-0111 | PR & PO for Reinforced Concrete Materials | 2026-10-10 → 2026-10-17 (+7d) | 2026-10-11 → 2026-10-18 (+7d) |  | 19.32d → 41.32d |
| DMM2-Proc-PO-0113 | PR & PO for Board Insulation Materials | 2026-10-12 → 2026-10-19 (+7d) | 2026-10-13 → 2026-10-20 (+7d) |  | 19.32d → 103.32d |
| GR MAT Mech | **Mechanical** |  | 2026-10-27 → 2026-11-03 (+7d) |  |  |
| DMM2-Proc-PO-0124 | PR & PO for Exhaust Axial Fans Materials | 2026-10-07 → 2026-10-14 (+7d) | 2026-10-08 → 2026-10-15 (+7d) |  | 34.32d → 111.32d |
| DMM2-Proc-PO-0126 | PR & PO for PPR Pipes Materials | 2026-10-07 → 2026-10-14 (+7d) | 2026-10-08 → 2026-10-15 (+7d) |  | 11.32d → 109.32d |
| DMM2-Proc-PO-0128 | PR & PO for Scupper Materials | 2026-10-07 → 2026-10-14 (+7d) | 2026-10-08 → 2026-10-15 (+7d) |  | 15.32d → 111.32d |
| DMM2-Proc-PO-0129 | PR & PO for Clean out Materials | 2026-10-14 → 2026-10-21 (+7d) | 2026-10-14 → 2026-10-21 (+7d) |  | 14.32d → 106.32d |
| DMM2-Proc-PO-0127 | PR & PO for DX Wall Mounted Split/AC Materials | 2026-10-17 → 2026-10-24 (+7d) | 2026-10-18 → 2026-10-25 (+7d) |  | 34.32d → 103.32d |
| DMM2-Proc-PO-0133 | PR & PO for Shower Materials | 2026-10-17 → 2026-10-24 (+7d) | 2026-10-18 → 2026-10-25 (+7d) |  | 38.32d → 103.32d |
| DMM2-Proc-PO-0134 | PR & PO for Toilet Materials | 2026-10-19 → 2026-10-26 (+7d) | 2026-10-20 → 2026-10-27 (+7d) |  | 33.32d → 101.32d |
| DMM2-Proc-PO-0135 | PR & PO for Semi Pedestal Sink Materials | 2026-10-21 → 2026-10-28 (+7d) | 2026-10-22 → 2026-10-29 (+7d) |  | 34.32d → 99.32d |
| DMM2-Proc-PO-0131 | PR & PO for Electrical Water Heater Materials | 2026-10-26 → 2026-11-02 (+7d) | 2026-10-27 → 2026-11-03 (+7d) |  | 8.32d → 95.32d |
| GR MAT Elec | **Electrical** |  | 2026-10-18 → 2026-10-25 (+7d) |  |  |
| DMM2-Proc-PO-0137 | PR & PO for Panelboards Materials | 2026-10-07 → 2026-10-14 (+7d) | 2026-10-08 → 2026-10-15 (+7d) |  | 36.32d → 111.32d |
| DMM2-Proc-PO-0139 | PR & PO for Lighting Materials | 2026-10-07 → 2026-10-14 (+7d) | 2026-10-08 → 2026-10-15 (+7d) |  | 31.32d → 109.32d |
| DMM2-Proc-PO-0142 | PR & PO for Enclosed Switches and Circuit Breakers Materials | 2026-10-07 → 2026-10-14 (+7d) | 2026-10-08 → 2026-10-15 (+7d) |  | 34.32d → 111.32d |
| DMM2-Proc-PO-0143 | PR & PO for Fire Alarm System Materials | 2026-10-07 → 2026-10-14 (+7d) | 2026-10-08 → 2026-10-15 (+7d) |  | 1.32d → 105.32d |
| DMM2-Proc-PO-0140 | PR & PO for Wiring Devices Materials | 2026-10-14 → 2026-10-21 (+7d) | 2026-10-15 → 2026-10-22 (+7d) |  | 27.32d → 105.32d |
| DMM2-Proc-PO-0145 | PR & PO for Data Cabinet Materials | 2026-10-14 → 2026-10-21 (+7d) | 2026-10-15 → 2026-10-22 (+7d) |  | 32.32d → 103.32d |
| DMM2-Proc-PO-0146 | PR & PO for Data/ Voice RJ45 Outlet Materials | 2026-10-17 → 2026-10-24 (+7d) | 2026-10-18 → 2026-10-25 (+7d) |  | 32.32d → 103.32d |

| ID | Task | Start | Finish | Complete | Total float |
| --- | --- | --- | --- | --- | --- |
| DMM2-Proc-PO-0147 | PR & PO for PC Workstation Materials | 2026-10-17 → 2026-10-24 (+7d) | 2026-10-18 → 2026-10-25 (+7d) |  | 37.32d → 103.32d |
| DMM2-Proc-PO-0148 | PR & PO for 50 inch Screen Materials | 2026-10-17 → 2026-10-24 (+7d) | 2026-10-18 → 2026-10-25 (+7d) |  | 39.32d → 103.32d |
| Mauf. & Delivery | **Manufacturing & Delivery** |  | 2026-12-29 → 2026-11-03 (-56d) |  |  |
| Long Lead | **Long Lead Items** |  | 2026-11-24 → 2026-10-24 (-31d) |  |  |
| Zone 01 | **Zone 01** |  | 2026-11-01 → 2026-10-17 (-15d) |  |  |
| SDS | **Wet Networks & Stations** |  | 2026-11-01 → 2026-10-15 (-17d) |  |  |
| Potable | **Potable Network** |  | 2026-10-08 → 2026-10-01 (-7d) |  |  |
| DMM2-Proc-Delv-618_R | Manuf. & Delivery for Valves Chambers Materials(Rem) |  | 2026-10-08 → 2026-10-01 A (-7d) | 50% → 100% | 20.32d → none |
| TSE | **TSE Network** |  | 2026-11-01 → 2026-10-15 (-17d) |  |  |
| DMM2-Proc-Delv-648 | Manuf. & Delivery for Solenoid Primary Control Valves Materials | 2026-10-10 → 2026-09-15 A (-25d) | 2026-11-01 → 2026-10-15 (-17d) | 0% → 90% | 20.32d → 46.32d |
| SDS1 | **Dry Networks** |  | 2026-10-10 → 2026-10-17 (+7d) |  |  |
| SL | **Street Lighting** |  | 2026-10-10 → 2026-10-17 (+7d) |  |  |
| DMM2-Proc-Delv-1328_R | Manuf. & Delivery for SL Luminares Materials(Rem) |  | 2026-10-10 → 2026-10-17 (+7d) | 30% → 40% | 110.52d → 110.92d |
| Zone 02 | **Zone 02** |  | 2026-11-24 → 2026-10-18 (-37d) |  |  |
| SDS | **Wet Networks & Stations** |  | 2026-11-24 → 2026-10-18 (-37d) |  |  |
| Sewer | **Sewerage Network** |  | 2026-10-31 → 2026-10-04 (-27d) |  |  |
| DMM2-Proc-Delv-2328_R | Manuf. & Delivery for Discharge Chamber Materials(Rem) | 2026-10-07 → 2026-09-13 A (-24d) | 2026-10-18 → 2026-09-30 A (-18d) | 0% → 100% | 88.32d → none |
| DMM2-Proc-Delv-2308 | Manuf. & Delivery for Valves Chambers Materials | 2026-10-13 → 2026-09-17 A (-26d) | 2026-10-31 → 2026-10-04 A (-27d) | 0% → 100% | 88.76d → none |
| Potable | **Potable Network** |  | 2026-10-11 → 2026-10-14 (+3d) |  |  |
| DMM2-Proc-Delv-2368 | Manuf. & Delivery for Flow Meter Materials | 2026-10-07 → 2026-08-29 A (-39d) | 2026-10-11 → 2026-10-14 (+3d) | 0% → 90% | 68.32d → 71.92d |
| DMM2-Proc-Delv-3648 | Manuf. & Delivery for Flow Meter Chamber Materials | 2026-10-07 → 2026-09-10 A (-27d) | 2026-10-11 → 2026-10-14 (+3d) | 0% → 90% | 68.32d → 71.92d |
| Fire Fighting | **Fire Fighting Network** |  | 2026-10-15 → 2026-09-29 (-16d) |  |  |
| DMM2-Proc-Delv-2428_R | Manuf. & Delivery for Valves Chambers Materials(Rem) |  | 2026-10-15 → 2026-09-29 A (-16d) | 20% → 100% | 105.32d → none |
| TSE | **TSE Network** |  | 2026-11-24 → 2026-10-17 (-38d) |  |  |
| DMM2-Proc-Delv-2388 | Manuf. & Delivery for Solenoid Primary Control Valves Materials | 2026-11-02 → 2026-09-25 A (-38d) | 2026-11-24 → 2026-10-17 (-38d) | 0% → 85% | 24.32d → 63.32d |
| Pot Pump St. | **Potable Water Pump Station** |  | 2026-11-15 → 2026-10-18 (-28d) |  |  |
| 3 | **Mechanical** |  | 2026-11-04 → 2026-10-17 (-18d) |  |  |
| DMM2-Proc-Delv-3768_R | Manuf. & Delivery for Electromagnetic Flow Meters Materials(Rem) | 2026-10-07 → 2026-09-02 A (-35d) | 2026-10-22 → 2026-10-15 (-7d) | 0% → 90% | 23.32d → 50.92d |
| DMM2-Proc-Delv-2528_R | Manuf. & Delivery for Butterfly Valve Materials(Rem) | 2026-10-07 → 2026-09-03 A (-34d) | 2026-10-22 → 2026-10-15 (-7d) | 0% → 90% | 16.32d → 50.92d |
| DMM2-Proc-Delv-3778 | Manuf. & Delivery for Surge Tank Materials | 2026-10-07 → 2026-09-03 A (-34d) | 2026-11-04 → 2026-10-17 (-18d) | 0% → 90% | 11.32d → 33.82d |
| DMM2-Proc-Delv-3738_R | Manuf. & Delivery for DI Pipes Materials(Rem) | 2026-10-07 → 2026-09-17 A (-20d) | 2026-10-13 → 2026-10-15 (+2d) | 0% → 80% | 11.32d → 38.12d |
| DMM2-Proc-Delv-2538_R | Manuf. & Delivery for OverHead Crane Materials(Rem) | 2026-10-07 → 2026-10-01 A (-6d) | 2026-10-20 → 2026-10-17 (-3d) | 0% → 80% | 16.32d → 25.92d |
| 2 | **Electrical** |  | 2026-11-15 → 2026-10-18 (-28d) |  |  |
| DMM2-Proc-Delv-2648_R | Manuf. & Delivery for LV Cables Materials(Rem) | 2026-10-07 → 2026-09-12 A (-25d) | 2026-10-12 → 2026-10-14 (+2d) | 0% → 88% | 5.32d → 110.72d |
| DMM2-Proc-Delv-3878 | Manuf. & Delivery for Automatic Transfer Switch ATS panel Materials | 2026-10-07 → 2026-09-13 A (-24d) | 2026-10-28 → 2026-10-15 (-13d) | 0% → 90% | 29.32d → 46.42d |
| DMM2-Proc-Delv-3858 | Manuf. & Delivery for Addressable Fire Alarm System Materials | 2026-10-07 → 2026-09-15 A (-22d) | 2026-11-04 → 2026-10-17 (-18d) | 0% → 90% | 23.32d → 45.82d |
| DMM2-Proc-Delv-3808_R | Manuf. & Delivery for Motor Control Center (MCC) Materials(Rem) | 2026-10-07 → 2026-09-17 A (-20d) | 2026-10-17 → 2026-10-15 (-2d) | 0% → 80% | 23.32d → 46.52d |
| DMM2-Proc-Delv-3828_R | Manuf. & Delivery for Local Control Panel Materials(Rem) | 2026-10-07 → 2026-09-20 A (-17d) | 2026-10-12 → 2026-10-14 (+2d) | 0% → 80% | 32.12d → 35.48d |
| DMM2-Proc-Delv-3868_R | Manuf. & Delivery for PLC System Materials(Rem) | 2026-10-07 → 2026-09-20 A (-17d) | 2026-10-20 → 2026-10-18 (-2d) | 0% → 67% | 44.32d → 52.36d |
| DMM2-Proc-Delv-3838 | Manuf. & Delivery for Panelboards Materials | 2026-10-28 → 2026-09-25 A (-33d) | 2026-11-15 → 2026-10-17 (-29d) | 0% → 85% | 8.32d → 41.92d |
| SDS1 | **Dry Networks** |  | 2026-10-29 → 2026-10-17 (-12d) |  |  |
| MV | **Medium Voltage Network** |  | 2026-10-18 → 2026-10-15 (-3d) |  |  |
| DMM2-Proc-Delv-2978_R | Manuf. & Delivery for Unit Substation Materials(Rem) | 2026-10-07 → 2026-09-06 A (-31d) | 2026-10-18 → 2026-10-14 (-4d) | 0% → 90% | 90.32d → 112.32d |
| DMM2-Proc-Delv-2988_R | Manuf. & Delivery for RMU Materials(Rem) | 2026-10-07 → 2026-09-17 A (-20d) | 2026-10-18 → 2026-10-15 (-3d) | 0% → 80% | 24.32d → 111.32d |
| SL | **Street Lighting** |  | 2026-10-29 → 2026-10-17 (-12d) |  |  |
| DMM2-Proc-Delv-3038_R | Manuf. & Delivery for SL Pillars Materials(Rem) | 2026-10-07 → 2026-09-12 A (-25d) | 2026-10-29 → 2026-10-17 (-12d) | 0% → 88% | 87.32d → 110.92d |
| DMM2-Proc-Delv-3068_R | Manuf. & Delivery for SL Luminares Materials(Rem) |  | 2026-10-11 → 2026-10-17 (+6d) | 16% → 27% | 90.32d → 110.4d |
| Zone 03 | **Zone 03** |  | 2026-11-24 → 2026-10-22 (-33d) |  |  |
| SDS | **Wet Networks & Stations** |  | 2026-11-24 → 2026-10-22 (-33d) |  |  |
| Sewer | **Sewerage Network** |  | 2026-10-28 → 2026-10-04 (-24d) |  |  |
| DMM2-Proc-Delv-4038_R | Manuf. & Delivery for HDPE Pipes Materials(Rem) | 2026-10-07 → 2026-09-12 A (-25d) | 2026-10-28 → 2026-09-26 A (-32d) | 0% → 100% | 94.32d → none |
| DMM2-Proc-Delv-4048 | Manuf. & Delivery for Valves Chambers Materials |  | 2026-10-19 → 2026-09-25 A (-24d) | 33% → 100% | 103.27d → none |
| Potable | **Potable Network** |  | 2026-10-10 → 2026-09-30 (-10d) |  |  |
| DMM2-Proc-Delv-4098_R | Manuf. & Delivery for Valves Chambers Materials(Rem) | 2026-10-07 → 2026-09-07 A (-30d) | 2026-10-10 → 2026-09-30 A (-10d) | 0% → 100% | 110.32d → none |
| Fire Fighting | **Fire Fighting Network** |  | 2026-10-08 → 2026-10-03 (-5d) |  |  |
| DMM2-Proc-Delv-4168_R | Manuf. & Delivery for Valves Chambers Materials(Rem) | 2026-10-07 → 2026-09-12 A (-25d) | 2026-10-08 → 2026-10-03 A (-5d) | 0% → 100% | 111.32d → none |
| TSE | **TSE Network** |  | 2026-11-24 → 2026-10-17 (-38d) |  |  |
| DMM2-Proc-Delv-4128 | Manuf. & Delivery for Solenoid Primary Control Valves Materials | 2026-11-14 → 2026-09-25 A (-50d) | 2026-11-24 → 2026-10-17 (-38d) | 0% → 85% | 24.32d → 63.32d |
| Sewer Lift St. | **Sewer Lift Station** |  | 2026-11-10 → 2026-10-22 (-19d) |  |  |
| 3 | **Mechanical** |  | 2026-11-10 → 2026-10-22 (-19d) |  |  |
| DMM2-Proc-Delv-4508 | Manuf. & Delivery for Surge Tank Materials | 2026-10-07 → 2026-09-01 A (-36d) | 2026-11-10 → 2026-10-17 (-24d) | 0% → 90% | 12.32d → 39.32d |
| DMM2-Proc-Delv-4448_R | Manuf. & Delivery for Double Flanged DI Pipes Materials(Rem) | 2026-10-07 → 2026-09-12 A (-25d) | 2026-10-29 → 2026-10-17 (-12d) | 0% → 88% | 11.32d → 33.92d |
| DMM2-Proc-Delv-4488 | Manuf. & Delivery for Basket Screens Materials | 2026-10-07 → 2026-09-12 A (-25d) | 2026-10-29 → 2026-10-18 (-11d) | 0% → 80% | 19.32d → 35.32d |
| DMM2-Proc-Delv-4438 | Manuf. & Delivery for Submersible Pumps Materials | 2026-10-17 → 2026-09-13 A (-34d) | 2026-10-31 → 2026-10-15 (-16d) | 0% → 90% | 15.32d → 35.02d |
| DMM2-Proc-Delv-4478_R | Manuf. & Delivery for Non Return Valve (Flap) Materials(Rem) | 2026-10-07 → 2026-09-13 A (-24d) | 2026-10-29 → 2026-10-20 (-9d) | 0% → 70% | 20.32d → 34.32d |
| DMM2-Proc-Delv-4518_R | Manuf. & Delivery for JIB Crane Materials(Rem) | 2026-10-07 → 2026-09-19 A (-18d) | 2026-10-24 → 2026-10-22 (-2d) | 0% → 50% | 18.32d → 25.82d |
| DMM2-Proc-Delv-4458 | Manuf. & Delivery for Buried Flanged DI Pipes Materials | 2026-10-31 → 2026-09-25 A (-36d) | 2026-11-01 → 2026-10-14 (-18d) | 0% → 85% | 11.32d → 33.02d |
| DMM2-Proc-Delv-4498 | Manuf. & Delivery for Odor Control Unit Materials | 2026-10-31 → 2026-09-25 A (-36d) | 2026-11-02 → 2026-10-14 (-19d) | 0% → 85% | 19.32d → 41.87d |
| 2 | **Electrical** |  | 2026-11-03 → 2026-10-17 (-17d) |  |  |
| DMM2-Proc-Delv-4578_R | Manuf. & Delivery for Low Voltage Cables Materials(Rem) | 2026-10-07 → 2026-08-29 A (-39d) | 2026-10-24 → 2026-10-15 (-9d) | 0% → 90% | 33.32d → 46.82d |

| ID | Task | Start | Finish | Complete | Total float |
| --- | --- | --- | --- | --- | --- |
| DMM2-Proc-Delv-4558 | Manuf. & Delivery for Motor Control Center (MCC) Materials | 2026-10-10 → 2026-09-02 A (-38d) | 2026-10-12 → 2026-10-14 (+2d) | 0% → 90% | 31.32d → 36.02d |
| DMM2-Proc-Delv-4608_R | Manuf. & Delivery for Automatic Transfer (Switch ATS) Materials(Rem) | 2026-10-07 → 2026-09-12 A (-25d) | 2026-10-29 → 2026-10-15 (-14d) | 0% → 90% | 18.32d → 36.32d |
| DMM2-Proc-Delv-4598_R | Manuf. & Delivery for Fuel Pump Materials(Rem) | 2026-10-07 → 2026-09-15 A (-22d) | 2026-10-29 → 2026-10-15 (-14d) | 0% → 90% | 19.32d → 45.32d |
| DMM2-Proc-Delv-4628_R | Manuf. & Delivery for Displacement Rotary Type Pump Materials(Rem) | 2026-10-07 → 2026-09-19 A (-18d) | 2026-11-03 → 2026-10-17 (-17d) | 0% → 90% | 9.32d → 30.92d |
| DMM2-Proc-Delv-4668_R | Manuf. & Delivery for PLC System Materials(Rem) | 2026-10-07 → 2026-09-19 A (-18d) | 2026-10-24 → 2026-10-15 (-9d) | 0% → 90% | 39.32d → 55.82d |
| DMM2-Proc-Delv-4568 | Manuf. & Delivery for Local Control Panel Materials | 2026-10-31 → 2026-09-25 A (-36d) | 2026-11-02 → 2026-10-14 (-19d) | 0% → 85% | 19.32d → 41.87d |
| SDS1 | **Dry Networks** |  | 2026-10-29 → 2026-10-20 (-9d) |  |  |
| MV | **Medium Voltage Network** |  | 2026-10-29 → 2026-10-15 (-14d) |  |  |
| DMM2-Proc-Delv-4728_R | Manuf. & Delivery for RMU Materials(Rem) | 2026-10-07 → 2026-09-13 A (-24d) | 2026-10-29 → 2026-10-15 (-14d) | 0% → 90% | 24.32d → 111.32d |
| DMM2-Proc-Delv-4718_R | Manuf. & Delivery for Unit Substation Materials(Rem) | 2026-10-07 → 2026-09-14 A (-23d) | 2026-10-29 → 2026-10-15 (-14d) | 0% → 90% | 90.32d → 111.32d |
| LV | **Low Voltage Network** |  | 2026-10-29 → 2026-10-20 (-9d) |  |  |
| DMM2-Proc-Delv-4748_R | Manuf. & Delivery for LV Pillars Materials(Rem) | 2026-10-07 → 2026-09-16 A (-21d) | 2026-10-29 → 2026-10-15 (-14d) | 0% → 90% | 70.32d → 88.32d |
| DMM2-Proc-Delv-7199_R | Manuf. & Delivery for LV Panels Materials(Rem) | 2026-10-07 → 2026-09-17 A (-20d) | 2026-10-29 → 2026-10-20 (-9d) | 0% → 70% | 70.32d → 84.32d |
| SL | **Street Lighting** |  | 2026-10-29 → 2026-10-15 (-14d) |  |  |
| DMM2-Proc-Delv-4808_R | Manuf. & Delivery for SL Luminares Materials(Rem) | 2026-10-07 → 2026-08-30 A (-38d) | 2026-10-18 → 2026-10-14 (-4d) | 0% → 90% | 90.32d → 112.32d |
| DMM2-Proc-Delv-4788_R | Manuf. & Delivery for SL Cables Materials(Rem) | 2026-10-07 → 2026-09-13 A (-24d) | 2026-10-18 → 2026-10-14 (-4d) | 0% → 90% | 80.32d → 112.32d |
| DMM2-Proc-Delv-4798_R | Manuf. & Delivery for SL Poles Materials(Rem) | 2026-10-07 → 2026-09-19 A (-18d) | 2026-10-18 → 2026-10-14 (-4d) | 0% → 90% | 23.32d → 112.32d |
| DMM2-Proc-Delv-4778_R | Manuf. & Delivery for SL Pillars Materials(Rem) | 2026-10-07 → 2026-09-21 A (-16d) | 2026-10-29 → 2026-10-15 (-14d) | 0% → 90% | 87.32d → 111.32d |
| Zone 04 | **Zone 04** |  | 2026-11-10 → 2026-10-24 (-17d) |  |  |
| SDS | **Wet Networks & Stations** |  | 2026-11-04 → 2026-10-24 (-11d) |  |  |
| Storm | **Storm Network** |  | 2026-10-24 → 2026-10-07 (-17d) |  |  |
| DMM2-Proc-Delv-5758_R | Manuf. & Delivery for Concrete Chambers & Catch Basin Materials(Rem) | 2026-10-07 → 2026-09-19 A (-18d) | 2026-10-24 → 2026-10-07 A (-17d) | 0% → 100% | 96.32d → none |
| DMM2-Proc-Delv-5838_R | Manuf. & Delivery for Valves Chambers Materials(Rem) |  | 2026-10-07 A | 75% → 100% | 112.57d → none |
| Fire Fighting | **Fire Fighting Network** |  | 2026-10-10 → 2026-10-05 (-5d) |  |  |
| DMM2-Proc-Delv-5908_R | Manuf. & Delivery for Valves Chambers Materials(Rem) |  | 2026-10-10 → 2026-10-05 A (-5d) | 33% → 100% | 85.31d → none |
| TSE | **TSE Network** |  | 2026-11-04 → 2026-10-24 (-11d) |  |  |
| DMM2-Proc-Delv-5878_R | Manuf. & Delivery for Valves Materials(Rem) | 2026-10-07 → 2026-09-02 A (-35d) | 2026-10-08 → 2026-10-14 (+6d) | 0% → 90% |  |
| DMM2-Proc-Delv-5858_R | Manuf. & Delivery for HDPE Pipes Materials(Rem) | 2026-10-07 → 2026-09-12 A (-25d) | 2026-10-08 → 2026-10-14 (+6d) | 0% → 90% | 12.32d → 14.12d |
| DMM2-Proc-Delv-5868 | Manuf. & Delivery for Solenoid Primary Control Valves Materials | 2026-10-07 → 2026-09-17 A (-20d) | 2026-11-04 → 2026-10-24 (-11d) | 0% → 67% | 41.32d → 58.07d |
| SDS1 | **Dry Networks** |  | 2026-11-10 → 2026-10-20 (-21d) |  |  |
| MV | **Medium Voltage Network** |  | 2026-11-10 → 2026-10-20 (-21d) |  |  |
| DMM2-Proc-Delv-6458_R | Manuf. & Delivery for Unit Substation Materials(Rem) | 2026-10-19 → 2026-09-12 A (-37d) | 2026-11-10 → 2026-10-15 (-26d) | 0% → 90% | 80.32d → 108.32d |
| DMM2-Proc-Delv-6468_R | Manuf. & Delivery for RMU Materials(Rem) | 2026-10-07 → 2026-09-19 A (-18d) | 2026-10-29 → 2026-10-20 (-9d) | 0% → 70% | 24.32d → 38.32d |
| SL | **Street Lighting** |  | 2026-10-29 → 2026-10-17 (-12d) |  |  |
| DMM2-Proc-Delv-6518_R | Manuf. & Delivery for SL Pillars Materials(Rem) | 2026-10-07 → 2026-09-12 A (-25d) | 2026-10-29 → 2026-10-15 (-14d) | 0% → 90% | 87.32d → 105.32d |
| DMM2-Proc-Delv-6538_R | Manuf. & Delivery for SL Poles Materials(Rem) | 2026-10-07 → 2026-09-12 A (-25d) | 2026-10-18 → 2026-10-14 (-4d) | 0% → 90% |  |
| DMM2-Proc-Delv-6548_R | Manuf. & Delivery for SL Luminares Materials(Rem) | 2026-10-07 → 2026-09-17 A (-20d) | 2026-10-18 → 2026-10-17 (-1d) | 0% → 70% | 90.32d → 97.32d |
| Short Lead | **Short Lead Items** |  | 2026-12-29 → 2026-11-03 (-56d) |  |  |
| Zone 01 | **Zone 01** |  | 2026-12-29 → 2026-11-03 (-56d) |  |  |
| Site Grading | **Earth & Road Works** |  | 2026-11-15 → 2026-11-03 (-12d) |  |  |
| DMM2-Proc-Delv-7206 | Manuf. & Delivery for Pavement Markings Materials | 2026-10-15 → 2026-09-01 A (-44d) | 2026-10-27 → 2026-10-14 (-13d) | 0% → 90% | 40.82d → 112.32d |
| DMM2-Proc-Delv-7204_R | Manuf. & Delivery for Curbstone Materials(Rem) |  | 2026-10-15 → 2026-10-22 (+7d) | 50% → 62% | 40.82d → 105.82d |
| DMM2-Proc-Delv-7207 | Manuf. & Delivery for Wheels Stopper (precast concrete) Materials | 2026-11-12 → 2026-09-25 A (-48d) | 2026-11-15 → 2026-10-14 (-32d) | 0% → 85% | 75.82d → 113.02d |
| DMM2-Proc-Delv-7208 | Manuf. & Delivery for Traffic Signs Materials | 2026-10-27 → 2026-09-25 A (-32d) | 2026-11-08 → 2026-10-15 (-24d) | 0% → 85% | 40.82d → 111.82d |
| DMM2-Proc-Delv-7209 | Manuf. & Delivery for ground Mounted Information Signs Materials | 2026-10-28 → 2026-09-25 A (-33d) | 2026-11-08 → 2026-10-15 (-24d) | 0% → 85% | 71.32d → 111.82d |
| DMM2-Proc-Delv-7201_R | Manuf. & Delivery for Agg. Base Coarse(Rem) |  | 2026-10-25 → 2026-11-01 (+7d) |  |  |
| DMM2-Proc-Delv-7202_R | Manuf. & Delivery for Asphalt Materials(Rem) |  | 2026-10-27 → 2026-11-03 (+7d) |  |  |
| DMM2-Proc-Delv-7205 | Manuf. & Delivery for Interlock Materials |  | 2026-10-15 → 2026-10-22 (+7d) |  | 40.82d → 105.82d |
| SDS | **Wet Networks & Stations** |  | 2026-11-04 → 2026-10-19 (-16d) |  |  |
| TSE | **TSE Network** | 2026-10-19 → 2026-08-22 (-58d) | 2026-11-04 → 2026-10-19 (-16d) |  |  |
| DMM2-Proc-Delv-7257 | Manuf. & Delivery for Bubbler Materials | 2026-10-19 → 2026-08-22 A (-58d) | 2026-11-04 → 2026-10-19 (-16d) | 0% → 90% | 29.32d → 108.32d |
| DMM2-Proc-Delv-7258 | Manuf. & Delivery for Pull Box Materials | 2026-10-19 → 2026-08-26 A (-54d) | 2026-11-04 → 2026-10-19 (-16d) | 0% → 90% | 22.32d → 108.32d |
| DMM2-Proc-Delv-7256 | Manuf. & Delivery for Dripper Materials | 2026-10-19 → 2026-08-29 A (-51d) | 2026-11-04 → 2026-10-19 (-16d) | 0% → 90% | 23.32d → 108.32d |
| DMM2-Proc-Delv-7259 | Manuf. & Delivery for Two Wire Decoder Cable 12 awg Materials | 2026-10-19 → 2026-09-12 A (-37d) | 2026-11-04 → 2026-10-19 (-16d) | 0% → 88% | 20.32d → 46.32d |
| SDS1 | **Dry Networks** | 2026-10-19 → 2026-08-27 (-53d) | 2026-10-27 → 2026-10-14 (-13d) |  |  |
| SL | **Street Lighting** | 2026-10-19 → 2026-08-27 (-53d) | 2026-10-27 → 2026-10-14 (-13d) |  |  |
| DMM2-Proc-Delv-7240 | Manuf. & Delivery for SL Earthing Materials | 2026-10-19 → 2026-08-27 A (-53d) | 2026-10-24 → 2026-10-14 (-10d) | 0% → 90% | 89.32d → 103.82d |
| DMM2-Proc-Delv-7241 | Manuf. & Delivery for SL Drawpits Materials | 2026-10-24 → 2026-08-29 A (-56d) | 2026-10-27 → 2026-10-14 (-13d) | 0% → 90% | 87.32d → 104.92d |
| Landscape | **Landscape Works** | 2026-10-07 → 2026-08-27 (-41d) | 2026-12-29 → 2026-10-17 (-73d) |  |  |
| DMM2-Proc-Delv-7242 | Manuf. & Delivery for Trees Materials | 2026-10-07 → 2026-08-27 A (-41d) | 2026-11-10 → 2026-10-17 (-24d) | 0% → 90% | 27.32d → 110.32d |
| DMM2-Proc-Delv-7248 | Manuf. & Delivery for Gravel/Stone Mulch Materials | 2026-10-07 → 2026-09-02 A (-35d) | 2026-10-29 → 2026-10-15 (-14d) | 0% → 90% | 15.32d → 111.32d |
| DMM2-Proc-Delv-7252 | Manuf. & Delivery for Vehicle and Pedestrian Steel Gate Materials | 2026-10-10 → 2026-09-02 A (-38d) | 2026-11-12 → 2026-10-17 (-26d) | 0% → 90% | 6.32d → 110.32d |
| DMM2-Proc-Delv-7246 | Manuf. & Delivery for Large Shrubs Materials | 2026-10-07 → 2026-09-12 A (-25d) | 2026-10-20 → 2026-10-17 (-3d) | 0% → 80% | 37.32d → 110.92d |
| DMM2-Proc-Delv-7244 | Manuf. & Delivery for Geotextile Layers Materials | 2026-10-07 → 2026-09-13 A (-24d) | 2026-11-10 → 2026-10-17 (-24d) | 0% → 90% | 5.32d → 110.32d |
| DMM2-Proc-Delv-7243 | Manuf. & Delivery for Ornamental Grasses Materials | 2026-12-19 → 2026-09-25 A (-85d) | 2026-12-29 → 2026-10-15 (-75d) | 0% → 85% | 10.32d → 111.82d |
| DMM2-Proc-Delv-7245 | Manuf. & Delivery for Plastic edge Materials | 2026-11-19 → 2026-09-25 A (-55d) | 2026-11-30 → 2026-10-15 (-46d) | 0% → 85% | 5.32d → 111.82d |
| DMM2-Proc-Delv-7247 | Manuf. & Delivery for Plants Materials | 2026-12-01 → 2026-09-25 A (-67d) | 2026-12-17 → 2026-10-17 (-61d) | 0% → 85% | 8.32d → 111.07d |
| DMM2-Proc-Delv-7249 | Manuf. & Delivery for Fences (ZATCA HCIS) Materials | 2026-12-07 → 2026-09-25 A (-73d) | 2026-12-17 → 2026-10-15 (-63d) | 0% → 85% | 10.32d → 111.82d |
| DMM2-Proc-Delv-7250 | Manuf. & Delivery Prepare & Submit for Fences (MODON) Materials | 2026-11-25 → 2026-09-25 A (-61d) | 2026-12-06 → 2026-10-15 (-52d) | 0% → 85% | 10.32d → 111.82d |
| DMM2-Proc-Delv-7251 | Manuf. & Delivery for Vehicle Steel Gate Materials | 2026-11-14 → 2026-09-25 A (-50d) | 2026-11-24 → 2026-10-15 (-40d) | 0% → 85% | 10.32d → 111.82d |

| ID | Task | Start | Finish | Complete | Total float |
| --- | --- | --- | --- | --- | --- |
| Zone 02 | **Zone 02** |  | 2026-12-23 → 2026-11-03 (-50d) |  |  |
| Site Grading | **Earth & Road Works** |  | 2026-11-19 → 2026-11-03 (-16d) |  |  |
| DMM2-Proc-Delv-7265 | Manuf. & Delivery for Asphalt Materials |  | 2026-10-27 → 2026-11-03 (+7d) |  |  |
| DMM2-Proc-Delv-7264_R | Manuf. & Delivery for Agg. Base Coarse(Rem) |  | 2026-10-11 → 2026-10-18 (+7d) |  |  |
| DMM2-Proc-Delv-7269 | Manuf. & Delivery for Pavement Markings Materials | 2026-10-27 → 2026-09-25 A (-32d) | 2026-11-08 → 2026-10-15 (-24d) | 0% → 85% | 40.82d → 111.82d |
| DMM2-Proc-Delv-7270 | Manuf. & Delivery for Wheels Stopper (precast concrete) Materials | 2026-11-12 → 2026-09-25 A (-48d) | 2026-11-15 → 2026-10-14 (-32d) | 0% → 85% | 75.82d → 113.02d |
| DMM2-Proc-Delv-7271 | Manuf. & Delivery for Traffic Signs Materials | 2026-11-08 → 2026-09-25 A (-44d) | 2026-11-19 → 2026-10-15 (-35d) | 0% → 85% | 40.82d → 111.82d |
| DMM2-Proc-Delv-7272 | Manuf. & Delivery for ground Mounted Information Signs Materials | 2026-11-09 → 2026-09-25 A (-45d) | 2026-11-19 → 2026-10-15 (-35d) | 0% → 85% | 71.32d → 107.82d |
| DMM2-Proc-Delv-7267 | Manuf. & Delivery for Curbstone Materials |  | 2026-10-11 → 2026-10-18 (+7d) |  |  |
| DMM2-Proc-Delv-7268 | Manuf. & Delivery for Interlock Materials |  | 2026-10-15 → 2026-10-22 (+7d) |  |  |
| SDS | **Wet Networks & Stations** |  | 2026-11-21 → 2026-10-19 (-33d) |  |  |
| TSE | **TSE Network** | 2026-10-25 → 2026-09-25 (-30d) | 2026-11-04 → 2026-10-19 (-16d) |  |  |
| DMM2-Proc-Delv-7380 | Manuf. & Delivery for Dripper Materials | 2026-10-28 → 2026-09-25 A (-33d) | 2026-11-04 → 2026-10-19 (-16d) | 0% → 85% | 23.32d → 108.32d |
| DMM2-Proc-Delv-7381 | Manuf. & Delivery for Bubbler Materials | 2026-10-28 → 2026-09-25 A (-33d) | 2026-11-04 → 2026-10-19 (-16d) | 0% → 85% | 29.32d → 108.32d |
| DMM2-Proc-Delv-7382 | Manuf. & Delivery for Pull Box Materials | 2026-10-25 → 2026-09-25 A (-30d) | 2026-11-04 → 2026-10-19 (-16d) | 0% → 85% | 22.32d → 108.32d |
| DMM2-Proc-Delv-7383 | Manuf. & Delivery for Two Wire Decoder Cable 12 awg Materials | 2026-10-25 → 2026-09-25 A (-30d) | 2026-11-04 → 2026-10-19 (-16d) | 0% → 85% | 20.32d → 108.32d |
| Pot Pump St. | **Potable Water Pump Station** | 2026-09-19 → 2026-08-29 (-21d) | 2026-11-21 → 2026-10-17 (-35d) |  |  |
| 1 | **Civil & Architecture** | 2026-09-19 → 2026-09-09 (-10d) | 2026-11-09 → 2026-10-17 (-23d) |  |  |
| DMM2-Proc-Delv-7295 | Manuf. & Delivery for Steel shutter Door Materials | 2026-10-24 → 2026-09-09 A (-45d) | 2026-11-09 → 2026-10-15 (-25d) | 0% → 90% | 15.32d → 46.82d |
| DMM2-Proc-Delv-7298 | Manuf. & Delivery for Handrail Materials | 2026-10-14 → 2026-09-13 A (-31d) | 2026-10-31 → 2026-10-15 (-16d) | 0% → 90% | 1.32d → 46.82d |
| DMM2-Proc-Delv-7292 | Manuf. & Delivery for Stairs Materials | 2026-10-24 → 2026-09-14 A (-40d) | 2026-11-01 → 2026-10-15 (-17d) | 0% → 85% | 16.32d → 37.12d |
| DMM2-Proc-Delv-7294 | Manuf. & Delivery for Stainless Steel Ladder Materials | 2026-10-13 → 2026-09-14 A (-29d) | 2026-10-29 → 2026-10-17 (-12d) | 0% → 85% | 18.32d → 36.07d |
| DMM2-Proc-Delv-7297 | Manuf. & Delivery for Gravel Materials | 2026-10-10 → 2026-09-15 A (-25d) | 2026-10-11 → 2026-10-14 (+3d) | 0% → 90% | 50.32d → 54.12d |
| DMM2-Proc-Delv-7296 | Manuf. & Delivery for Metal Railing Materials | 2026-11-01 → 2026-09-25 A (-37d) | 2026-11-09 → 2026-10-15 (-25d) | 0% → 85% | 15.32d → 46.82d |
| 3 | **Mechanical** | 2026-10-10 → 2026-08-29 (-42d) | 2026-11-21 → 2026-10-17 (-35d) |  |  |
| DMM2-Proc-Delv-7304 | Manuf. & Delivery for Sand Trap Louver Materials | 2026-10-10 → 2026-08-29 A (-42d) | 2026-10-20 → 2026-10-14 (-6d) | 0% → 90% | 7.32d → 55.32d |
| DMM2-Proc-Delv-7393 | Manuf. & Delivery for Fans Materials | 2026-10-10 → 2026-09-05 A (-35d) | 2026-10-20 → 2026-10-14 (-6d) | 0% → 90% | 20.32d → 31.32d |
| DMM2-Proc-Delv-7312 | Manuf. & Delivery for Trench Drain Materials | 2026-10-15 → 2026-09-07 A (-38d) | 2026-10-21 → 2026-10-14 (-7d) | 0% → 90% | 38.32d → 50.72d |
| DMM2-Proc-Delv-7311 | Manuf. & Delivery for Emergency shower Materials | 2026-10-24 → 2026-09-08 A (-46d) | 2026-11-03 → 2026-10-14 (-20d) | 0% → 90% | 30.32d → 53.32d |
| DMM2-Proc-Delv-7306 | Manuf. & Delivery for Hose Bibb Materials | 2026-10-17 → 2026-09-10 A (-37d) | 2026-10-27 → 2026-10-14 (-13d) | 0% → 90% | 34.32d → 51.32d |
| DMM2-Proc-Delv-7309 | Manuf. & Delivery for Chlorinators Materials | 2026-10-19 → 2026-09-10 A (-39d) | 2026-10-27 → 2026-10-14 (-13d) | 0% → 90% | 14.32d → 31.52d |
| DMM2-Proc-Delv-7310 | Manuf. & Delivery for Discharge Line Analyzer Materials | 2026-10-21 → 2026-09-10 A (-41d) | 2026-10-31 → 2026-10-14 (-17d) | 0% → 90% | 11.32d → 31.42d |
| DMM2-Proc-Delv-7394 | Manuf. & Delivery for Louvers Materials | 2026-10-21 → 2026-09-12 A (-39d) | 2026-11-07 → 2026-10-15 (-23d) | 0% → 88% | 30.32d → 56.52d |
| DMM2-Proc-Delv-7308 | Manuf. & Delivery for Chlorine Cylinder Racks Materials | 2026-10-17 → 2026-09-14 A (-33d) | 2026-11-08 → 2026-10-17 (-22d) | 0% → 85% | 2.32d → 27.32d |
| DMM2-Proc-Delv-7305 | Manuf. & Delivery for FM200 Supression System Materials | 2026-10-21 → 2026-09-21 A (-30d) | 2026-11-07 → 2026-10-17 (-21d) | 0% → 85% | 7.32d → 32.07d |
| DMM2-Proc-Delv-7303 | Manuf. & Delivery for Strainers Materials | 2026-11-10 → 2026-09-25 A (-46d) | 2026-11-21 → 2026-10-15 (-37d) | 0% → 85% | 15.32d → 52.82d |
| DMM2-Proc-Delv-7307 | Manuf. & Delivery for Exhaust Fans Materials | 2026-11-01 → 2026-09-25 A (-37d) | 2026-11-11 → 2026-10-15 (-27d) | 0% → 85% | 1.32d → 30.82d |
| 2 | **Electrical** | 2026-11-08 → 2026-09-25 (-44d) | 2026-11-12 → 2026-10-14 (-29d) |  |  |
| DMM2-Proc-Delv-7396 | Manuf. & Delivery for Switches and Circuit Breakers Materials | 2026-11-08 → 2026-09-25 A (-44d) | 2026-11-12 → 2026-10-14 (-29d) | 0% → 85% | 30.32d → 61.57d |
| Landscape | **Landscape Works** | 2026-10-21 → 2026-09-07 (-44d) | 2026-12-23 → 2026-10-17 (-67d) |  |  |
| DMM2-Proc-Delv-7332 | Manuf. & Delivery for Large Shrubs Materials | 2026-10-21 → 2026-09-07 A (-44d) | 2026-10-24 → 2026-10-14 (-10d) | 0% → 90% | 37.32d → 52.02d |
| DMM2-Proc-Delv-7328 | Manuf. & Delivery for Trees Materials | 2026-11-11 → 2026-09-25 A (-47d) | 2026-11-28 → 2026-10-17 (-42d) | 0% → 85% | 27.32d → 75.07d |
| DMM2-Proc-Delv-7329 | Manuf. & Delivery for Ornamental Grasses Materials | 2026-12-19 → 2026-09-25 A (-85d) | 2026-12-21 → 2026-10-14 (-68d) | 0% → 85% | 10.32d → 74.87d |
| DMM2-Proc-Delv-7330 | Manuf. & Delivery for Geotextile Layers Materials | 2026-11-11 → 2026-09-25 A (-47d) | 2026-11-22 → 2026-10-15 (-38d) | 0% → 85% | 9.32d → 51.82d |
| DMM2-Proc-Delv-7331 | Manuf. & Delivery for Plastic edge Materials | 2026-12-01 → 2026-09-25 A (-67d) | 2026-12-12 → 2026-10-15 (-58d) | 0% → 85% | 5.32d → 60.82d |
| DMM2-Proc-Delv-7333 | Manuf. & Delivery for Plants Materials | 2026-12-19 → 2026-09-25 A (-85d) | 2026-12-23 → 2026-10-14 (-70d) | 0% → 85% | 8.32d → 74.57d |
| DMM2-Proc-Delv-7334 | Manuf. & Delivery for Gravel/Stone Mulch Materials | 2026-11-11 → 2026-09-25 A (-47d) | 2026-11-18 → 2026-10-15 (-34d) | 0% → 85% | 5.32d → 64.27d |
| DMM2-Proc-Delv-7335 | Manuf. & Delivery for Fences (ZATCA HCIS) Materials | 2026-12-07 → 2026-09-25 A (-73d) | 2026-12-23 → 2026-10-17 (-67d) | 0% → 85% | 10.32d → 75.07d |
| DMM2-Proc-Delv-7336 | Manuf. & Delivery for Fences (MODON) Materials | 2026-12-07 → 2026-09-25 A (-73d) | 2026-12-23 → 2026-10-17 (-67d) | 0% → 85% | 10.32d → 75.07d |
| DMM2-Proc-Delv-7337 | Manuf. & Delivery for Vehicle Steel Gate Materials | 2026-11-25 → 2026-09-25 A (-61d) | 2026-12-06 → 2026-10-15 (-52d) | 0% → 85% | 14.32d → 64.82d |
| DMM2-Proc-Delv-7338 | Manuf. & Delivery for Vehicle and Pedestrian Steel Gate Materials | 2026-11-14 → 2026-09-25 A (-50d) | 2026-11-24 → 2026-10-15 (-40d) | 0% → 85% | 6.32d → 46.82d |
| Guard Room | **Guard Rooms** | 2026-10-07 → 2026-09-03 (-34d) | 2026-11-16 → 2026-10-15 (-32d) |  |  |
| GR MAT Civil | **Civil & Architecture** | 2026-10-07 → 2026-09-07 (-30d) | 2026-11-07 → 2026-10-15 (-23d) |  |  |
| DMM2-Proc-Delv-7346 | Manuf. & Delivery for gypsum Board Suspended Ceiling Materials | 2026-10-22 → 2026-09-07 A (-45d) | 2026-10-25 → 2026-10-14 (-11d) | 0% → 90% | 33.32d → 50.02d |
| DMM2-Proc-Delv-7344 | Manuf. & Delivery for Concrete Masonry Materials | 2026-10-07 → 2026-09-09 A (-28d) | 2026-10-12 → 2026-10-14 (+2d) | 0% → 90% | 20.32d → 27.82d |
| DMM2-Proc-Delv-7342 | Manuf. & Delivery for Fluid-Applied Water Proofing Paint Materials | 2026-10-10 → 2026-09-10 A (-30d) | 2026-10-12 → 2026-10-14 (+2d) | 0% → 90% | 42.32d → 47.02d |
| DMM2-Proc-Delv-7339 | Manuf. & Delivery for Stone Coping Materials | 2026-10-22 → 2026-09-12 A (-40d) | 2026-10-25 → 2026-10-14 (-11d) | 0% → 88% | 20.32d → 55.96d |
| DMM2-Proc-Delv-7341 | Manuf. & Delivery for Board Insulation Materials | 2026-10-14 → 2026-09-12 A (-32d) | 2026-10-21 → 2026-10-14 (-7d) | 0% → 88% | 19.32d → 52.48d |
| DMM2-Proc-Delv-7345 | Manuf. & Delivery for Porcelain Flooring Tiles Materials | 2026-10-10 → 2026-09-12 A (-28d) | 2026-10-26 → 2026-10-15 (-11d) | 0% → 88% | 19.32d → 34.52d |
| DMM2-Proc-Delv-7348 | Manuf. & Delivery for Raised Floor System Materials | 2026-10-22 → 2026-09-12 A (-40d) | 2026-10-25 → 2026-10-14 (-11d) | 0% → 88% | 33.32d → 48.96d |
| DMM2-Proc-Delv-7351 | Manuf. & Delivery for Aluminum Windows Materials | 2026-10-22 → 2026-09-13 A (-39d) | 2026-10-25 → 2026-10-14 (-11d) | 0% → 90% | 26.32d → 42.02d |
| DMM2-Proc-Delv-7343 | Manuf. & Delivery for Water proofing Membrane Materials | 2026-10-07 → 2026-09-19 A (-18d) | 2026-10-12 → 2026-10-15 (+3d) | 0% → 67% | 44.32d → 47.67d |
| DMM2-Proc-Delv-7340 | Manuf. & Delivery for Vapor Retarders Materials | 2026-10-27 → 2026-09-25 A (-32d) | 2026-11-01 → 2026-10-14 (-18d) | 0% → 85% | 32.32d → 112.57d |
| DMM2-Proc-Delv-7347 | Manuf. & Delivery for Painting Materials | 2026-10-27 → 2026-09-25 A (-32d) | 2026-10-28 → 2026-10-14 (-14d) | 0% → 85% | 32.32d → 51.02d |
| DMM2-Proc-Delv-7349 | Manuf. & Delivery for Steel Doors Materials | 2026-10-27 → 2026-09-25 A (-32d) | 2026-11-01 → 2026-10-14 (-18d) | 0% → 85% | 27.32d → 51.57d |
| DMM2-Proc-Delv-7350 | Manuf. & Delivery for Wood Doors Materials | 2026-11-02 → 2026-09-25 A (-38d) | 2026-11-07 → 2026-10-14 (-24d) | 0% → 85% | 27.32d → 53.57d |
| GR MAT Mech | **Mechanical** | 2026-10-07 → 2026-09-08 (-29d) | 2026-11-07 → 2026-10-14 (-24d) |  |  |
| DMM2-Proc-Delv-7353 | Manuf. & Delivery for uPVC Pipes Materials | 2026-10-07 → 2026-09-08 A (-29d) | 2026-10-08 → 2026-10-14 (+6d) | 0% → 90% | 6.32d → 113.12d |
| DMM2-Proc-Delv-7356 | Manuf. & Delivery for Scupper Materials | 2026-10-10 → 2026-09-10 A (-30d) | 2026-10-12 → 2026-10-14 (+2d) | 0% → 90% | 15.32d → 20.02d |
| DMM2-Proc-Delv-7362 | Manuf. & Delivery for Toilet Materials | 2026-10-21 → 2026-09-10 A (-41d) | 2026-10-24 → 2026-10-14 (-10d) | 0% → 90% | 33.32d → 48.02d |

| ID | Task | Start | Finish | Complete | Total float |
| --- | --- | --- | --- | --- | --- |
| DMM2-Proc-Delv-7354 | Manuf. & Delivery for PPR Pipes Materials | 2026-10-10 → 2026-09-12 A (-28d) | 2026-10-12 → 2026-10-14 (+2d) | 0% → 88% | 11.32d → 15.96d |
| DMM2-Proc-Delv-7357 | Manuf. & Delivery for Clean out Materials | 2026-10-15 → 2026-09-12 A (-33d) | 2026-10-15 → 2026-10-14 (-1d) | 0% → 88% | 14.32d → 22.2d |
| DMM2-Proc-Delv-7358 | Manuf. & Delivery for Floor Drain Materials | 2026-10-13 → 2026-09-12 A (-31d) |  | 0% → 88% | 17.32d → 24.08d |
| DMM2-Proc-Delv-7361 | Manuf. & Delivery for Shower Materials | 2026-10-25 → 2026-09-12 A (-43d) | 2026-10-26 → 2026-10-14 (-12d) | 0% → 88% | 33.32d → 50.08d |
| DMM2-Proc-Delv-7360 | Manuf. & Delivery for Manhole Materials | 2026-10-07 → 2026-09-24 A (-13d) | 2026-10-10 → 2026-09-29 A (-11d) | 0% → 100% | 23.32d → none |
| DMM2-Proc-Delv-7352 | Manuf. & Delivery for Exhaust Axial Fans Materials | 2026-10-26 → 2026-09-25 A (-31d) | 2026-10-28 → 2026-10-14 (-14d) | 0% → 85% | 20.32d → 47.87d |
| DMM2-Proc-Delv-7355 | Manuf. & Delivery for DX Wall Mounted Split/AC Materials | 2026-11-05 → 2026-09-25 A (-41d) | 2026-11-07 → 2026-10-14 (-24d) | 0% → 85% | 19.32d → 46.02d |
| DMM2-Proc-Delv-7359 | Manuf. & Delivery for Electrical Water Heater Materials | 2026-10-31 → 2026-09-25 A (-36d) | 2026-11-04 → 2026-10-14 (-21d) | 0% → 85% | 19.32d → 49.57d |
| DMM2-Proc-Delv-7363 | Manuf. & Delivery for Semi Pedestal Sink Materials | 2026-10-25 → 2026-09-25 A (-30d) | 2026-10-26 → 2026-10-14 (-12d) | 0% → 85% | 33.32d → 52.02d |
| DMM2-Proc-Delv-7364 | Manuf. & Delivery for Fire Extinguishers (CO2 & Powder) Materials | 2026-10-27 → 2026-09-25 A (-32d) | 2026-10-29 → 2026-10-14 (-15d) | 0% → 85% | 19.32d → 55.87d |
| GR MAT Elec | **Electrical** | 2026-10-10 → 2026-09-03 (-37d) | 2026-11-16 → 2026-10-14 (-33d) |  |  |
| DMM2-Proc-Delv-7375 | Manuf. & Delivery for PC Workstation Materials | 2026-10-21 → 2026-09-03 A (-48d) | 2026-10-22 → 2026-10-14 (-8d) | 0% → 90% | 35.32d → 54.12d |
| DMM2-Proc-Delv-7368 | Manuf. & Delivery for Wiring Devices Materials | 2026-10-17 → 2026-09-09 A (-38d) | 2026-10-20 → 2026-10-14 (-6d) | 0% → 90% | 27.32d → 38.92d |
| DMM2-Proc-Delv-7371 | Manuf. & Delivery for Fire Alarm System Materials | 2026-10-22 → 2026-09-10 A (-42d) | 2026-10-26 → 2026-10-14 (-12d) | 0% → 90% | 19.32d → 55.92d |
| DMM2-Proc-Delv-7366 | Manuf. & Delivery for Low Voltage Cable Materials | 2026-10-22 → 2026-09-12 A (-40d) | 2026-10-26 → 2026-10-14 (-12d) | 0% → 88% | 25.32d → 41.84d |
| DMM2-Proc-Delv-7367 | Manuf. & Delivery for Lighting Materials | 2026-10-13 → 2026-09-12 A (-31d) | 2026-10-18 → 2026-10-14 (-4d) | 0% → 88% | 44.32d → 53.72d |
| DMM2-Proc-Delv-7369 | Manuf. & Delivery for Ground Wires, Rods, Pits, Clamping Materials | 2026-10-17 → 2026-09-12 A (-35d) | 2026-10-20 → 2026-10-14 (-6d) | 0% → 88% | 35.32d → 53.84d |
| DMM2-Proc-Delv-7370 | Manuf. & Delivery for Enclosed Switches and Circuit Breakers Materials | 2026-10-10 → 2026-09-12 A (-28d) | 2026-10-12 → 2026-10-14 (+2d) | 0% → 88% | 34.32d → 61.96d |
| DMM2-Proc-Delv-7365 | Manuf. & Delivery for Panelboards Materials | 2026-11-16 → 2026-09-25 A (-52d) | 2026-11-16 → 2026-10-14 (-33d) | 0% → 85% | 8.32d → 43.17d |
| DMM2-Proc-Delv-7373 | Manuf. & Delivery for Data Cabinet Materials | 2026-10-31 → 2026-09-25 A (-36d) | 2026-11-04 → 2026-10-14 (-21d) | 0% → 85% | 25.32d → 49.57d |
| DMM2-Proc-Delv-7374 | Manuf. & Delivery for Data/ Voice RJ45 Outlet Materials | 2026-10-27 → 2026-09-25 A (-32d) | 2026-10-29 → 2026-10-14 (-15d) | 0% → 85% | 25.32d → 57.87d |
| DMM2-Proc-Delv-7376 | Manuf. & Delivery for 50 inch Screen Materials | 2026-10-26 → 2026-09-25 A (-31d) | 2026-10-28 → 2026-10-14 (-14d) | 0% → 85% | 33.32d → 51.87d |
| Zone 03 | **Zone 03** |  | 2026-11-23 → 2026-10-20 (-34d) |  |  |
| Site Grading | **Earth & Road Works** |  | 2026-11-23 → 2026-10-20 (-34d) |  |  |
| DMM2-Proc-Delv-7408 | Manuf. & Delivery for Interlock Materials | 2026-10-07 → 2026-09-10 A (-27d) | 2026-10-24 → 2026-10-15 (-9d) | 0% → 90% | 5.32d → 18.82d |
| DMM2-Proc-Delv-7407 | Manuf. & Delivery for Curbstone Materials | 2026-10-13 → 2026-09-15 A (-28d) | 2026-10-19 → 2026-10-14 (-5d) | 0% → 90% | 15.07d → 112.82d |
| DMM2-Proc-Delv-7404_R | Manuf. & Delivery for Agg. Base Coarse(Rem) |  | 2026-10-10 → 2026-10-17 (+7d) |  | 42.82d → 110.32d |
| DMM2-Proc-Delv-7405_R | Manuf. & Delivery for Asphalt Materials(Rem) |  | 2026-10-13 → 2026-10-20 (+7d) |  | 14.07d → 108.07d |
| DMM2-Proc-Delv-7409 | Manuf. & Delivery for Pavement Markings Materials | 2026-11-08 → 2026-09-25 A (-44d) | 2026-11-12 → 2026-10-14 (-29d) | 0% → 85% | 40.82d → 112.72d |
| DMM2-Proc-Delv-7410 | Manuf. & Delivery for Wheels Stopper (precast concrete) Materials | 2026-11-12 → 2026-09-25 A (-48d) | 2026-11-15 → 2026-10-14 (-32d) | 0% → 85% | 75.82d → 113.02d |
| DMM2-Proc-Delv-7411 | Manuf. & Delivery for Traffic Signs Materials | 2026-11-19 → 2026-09-25 A (-55d) | 2026-11-23 → 2026-10-14 (-40d) | 0% → 85% | 40.82d → 78.32d |
| DMM2-Proc-Delv-7412 | Manuf. & Delivery for ground Mounted Information Signs Materials | 2026-10-28 → 2026-09-25 A (-33d) | 2026-11-02 → 2026-10-14 (-19d) | 0% → 85% | 9.32d → 112.57d |
| SDS | **Wet Networks & Stations** |  | 2026-11-22 → 2026-10-17 (-36d) |  |  |
| TSE | **TSE Network** | 2026-11-05 → 2026-09-25 (-41d) | 2026-11-22 → 2026-10-17 (-36d) |  |  |
| DMM2-Proc-Delv-7490 | Manuf. & Delivery for Dripper Materials | 2026-11-05 → 2026-09-25 A (-41d) | 2026-11-12 → 2026-10-15 (-28d) | 0% → 85% | 23.32d → 54.27d |
| DMM2-Proc-Delv-7491 | Manuf. & Delivery for Bubbler Materials | 2026-11-05 → 2026-09-25 A (-41d) | 2026-11-22 → 2026-10-17 (-36d) | 0% → 85% | 29.32d → 67.07d |
| DMM2-Proc-Delv-7492 | Manuf. & Delivery for Pull Box Materials | 2026-11-05 → 2026-09-25 A (-41d) | 2026-11-22 → 2026-10-17 (-36d) | 0% → 85% | 22.32d → 111.07d |
| DMM2-Proc-Delv-7493 | Manuf. & Delivery for Two Wire Decoder Cable 12 awg Materials | 2026-11-05 → 2026-09-25 A (-41d) | 2026-11-22 → 2026-10-17 (-36d) | 0% → 85% | 20.32d → 58.07d |
| Sewer Lift St. | **Sewer Lift Station** |  | 2026-11-05 → 2026-10-15 (-21d) |  |  |
| 1 | **Civil & Architecture** | 2026-10-10 → 2026-09-07 (-33d) | 2026-11-04 → 2026-10-14 (-21d) |  |  |
| DMM2-Proc-Delv-7432 | Manuf. & Delivery for Metal Ladders Materials | 2026-10-10 → 2026-09-07 A (-33d) | 2026-10-12 → 2026-10-14 (+2d) | 0% → 90% | 31.32d → 41.02d |
| DMM2-Proc-Delv-7434 | Manuf. & Delivery for Internal painting (Acrylic) Materials | 2026-10-12 → 2026-09-12 A (-30d) | 2026-10-15 → 2026-10-14 (-1d) | 0% → 88% | 25.32d → 32.84d |
| DMM2-Proc-Delv-7433 | Manuf. & Delivery for Metal Covers Materials | 2026-11-03 → 2026-09-25 A (-39d) | 2026-11-04 → 2026-10-14 (-21d) | 0% → 85% | 19.32d → 44.02d |
| DMM2-Proc-Delv-7435 | Manuf. & Delivery for Signages Materials | 2026-10-31 → 2026-09-25 A (-36d) | 2026-11-02 → 2026-10-14 (-19d) | 0% → 85% | 19.32d → 47.87d |
| 3 | **Mechanical** |  | 2026-11-05 → 2026-10-15 (-21d) |  |  |
| DMM2-Proc-Delv-7439_R | Manuf. & Delivery for Geotextile Membrane Materials(Rem) | 2026-10-07 → 2026-09-12 A (-25d) | 2026-10-22 → 2026-10-15 (-7d) | 0% → 90% | 11.32d → 34.92d |
| DMM2-Proc-Delv-7445 | Manuf. & Delivery for Penstock Materials | 2026-10-07 → 2026-09-15 A (-22d) | 2026-10-24 → 2026-10-15 (-9d) | 0% → 90% | 31.32d → 44.82d |
| DMM2-Proc-Delv-7447 | Manuf. & Delivery for Scupper Materials | 2026-10-10 → 2026-09-16 A (-24d) | 2026-11-01 → 2026-10-15 (-17d) | 0% → 90% | 25.32d → 45.32d |
| DMM2-Proc-Delv-7446 | Manuf. & Delivery for Screening Container Materials | 2026-11-02 → 2026-09-25 A (-38d) | 2026-11-05 → 2026-10-14 (-22d) | 0% → 85% | 18.32d → 43.72d |
| 2 | **Electrical** | 2026-10-07 → 2026-09-07 (-30d) | 2026-11-03 → 2026-10-15 (-19d) |  |  |
| DMM2-Proc-Delv-7458 | Manuf. & Delivery for Surfaced Mounted Light (LED) Materials | 2026-10-10 → 2026-09-07 A (-33d) | 2026-10-12 → 2026-10-14 (+2d) | 0% → 90% | 31.32d → 50.02d |
| DMM2-Proc-Delv-7457 | Manuf. & Delivery for Galvanized Steel Pole Materials | 2026-10-10 → 2026-09-12 A (-28d) | 2026-10-12 → 2026-10-14 (+2d) | 0% → 88% | 31.32d → 50.96d |
| DMM2-Proc-Delv-7454 | Manuf. & Delivery for Under Ground Fuel Tank Materials | 2026-10-07 → 2026-09-13 A (-24d) | 2026-10-29 → 2026-10-15 (-14d) | 0% → 90% | 19.32d → 43.32d |
| DMM2-Proc-Delv-7456 | Manuf. & Delivery for Electrical Hand Holes Materials | 2026-10-10 → 2026-09-15 A (-25d) | 2026-10-12 → 2026-10-14 (+2d) | 0% → 90% | 31.32d → 41.02d |
| DMM2-Proc-Delv-7460 | Manuf. & Delivery for Process Control Wiring Materials | 2026-10-25 → 2026-09-25 A (-30d) | 2026-10-26 → 2026-10-14 (-12d) | 0% → 85% | 43.32d → 60.02d |
| DMM2-Proc-Delv-7461 | Manuf. & Delivery for Instrumentation for Process Systems Materials | 2026-10-25 → 2026-09-25 A (-30d) | 2026-11-03 → 2026-10-15 (-19d) | 0% → 85% | 39.32d → 61.97d |
| Zone 04 | **Zone 04** |  | 2026-11-29 → 2026-10-17 (-43d) |  |  |
| Site Grading | **Earth & Road Works** |  | 2026-11-15 → 2026-10-15 (-31d) |  |  |
| DMM2-Proc-Delv-7498_R | Manuf. & Delivery for Agg. Base Coarse(Rem) | 2026-10-07 → 2026-09-12 A (-25d) | 2026-10-15 → 2026-10-14 (-1d) | 0% → 90% |  |
| DMM2-Proc-Delv-7499 | Manuf. & Delivery for Asphalt Materials | 2026-10-13 → 2026-09-12 A (-31d) | 2026-10-21 → 2026-10-14 (-7d) | 0% → 88% | 14.07d → 45.48d |
| DMM2-Proc-Delv-7501 | Manuf. & Delivery for Curbstone Materials | 2026-10-19 → 2026-09-21 A (-28d) | 2026-10-28 → 2026-10-15 (-13d) | 0% → 85% | 15.07d → 32.12d |
| DMM2-Proc-Delv-7502 | Manuf. & Delivery for Interlock Materials | 2026-10-25 → 2026-09-25 A (-30d) | 2026-11-02 → 2026-10-15 (-18d) | 0% → 85% | 11.32d → 30.32d |
| DMM2-Proc-Delv-7503 | Manuf. & Delivery for Pavement Markings Materials | 2026-11-12 → 2026-09-25 A (-48d) | 2026-11-15 → 2026-10-14 (-32d) | 0% → 85% | 40.82d → 74.02d |
| DMM2-Proc-Delv-7504 | Manuf. & Delivery for Wheels Stopper (precast concrete) Materials | 2026-11-12 → 2026-09-25 A (-48d) | 2026-11-15 → 2026-10-14 (-32d) | 0% → 85% | 75.82d → 109.02d |
| DMM2-Proc-Delv-7505 | Manuf. & Delivery for Traffic Signs Materials | 2026-11-03 → 2026-09-25 A (-39d) | 2026-11-05 → 2026-10-14 (-22d) | 0% → 85% | 11.32d → 36.87d |
| DMM2-Proc-Delv-7506 | Manuf. & Delivery for ground Mounted Information Signs Materials | 2026-11-03 → 2026-09-25 A (-39d) | 2026-11-08 → 2026-10-14 (-25d) | 0% → 85% | 9.32d → 36.57d |
| SDS | **Wet Networks & Stations** |  | 2026-11-26 → 2026-10-17 (-40d) |  |  |
| TSE | **TSE Network** | 2026-11-22 → 2026-09-25 (-58d) | 2026-11-26 → 2026-10-17 (-40d) |  |  |
| DMM2-Proc-Delv-7554 | Manuf. & Delivery for Bubbler Materials | 2026-11-22 → 2026-09-25 A (-58d) | 2026-11-22 → 2026-10-17 (-36d) | 0% → 85% | 29.32d → 67.07d |
| DMM2-Proc-Delv-7555 | Manuf. & Delivery for Pull Box Materials | 2026-11-23 → 2026-09-25 A (-59d) | 2026-11-26 → 2026-10-14 (-43d) | 0% → 85% | 22.32d → 65.72d |

| ID | Task | Start | Finish | Complete | Total float |
| --- | --- | --- | --- | --- | --- |
| DMM2-Proc-Delv-7556 | Manuf. & Delivery for Two Wire Decoder Cable 12 awg Materials | 2026-11-22 → 2026-09-25 A (-58d) | 2026-11-22 → 2026-10-17 (-36d) | 0% → 85% | 20.32d → 58.07d |
| Landscape | **Landscape Works** | 2026-10-07 → 2026-09-13 (-24d) | 2026-11-29 → 2026-10-14 (-46d) |  |  |
| DMM2-Proc-Delv-7540 | Manuf. & Delivery for Ornamental Grasses Materials | 2026-10-07 → 2026-09-13 A (-24d) | 2026-10-10 → 2026-10-14 (+4d) | 0% → 90% | 46.32d → 75.02d |
| DMM2-Proc-Delv-7543 | Manuf. & Delivery for Large Shrubs Materials | 2026-10-07 → 2026-09-13 A (-24d) | 2026-10-10 → 2026-10-14 (+4d) | 0% → 90% | 49.32d → 52.02d |
| DMM2-Proc-Delv-7539 | Manuf. & Delivery for Trees Materials | 2026-11-11 → 2026-09-25 A (-47d) | 2026-11-14 → 2026-10-14 (-31d) | 0% → 85% | 37.32d → 69.87d |
| DMM2-Proc-Delv-7541 | Manuf. & Delivery for Geotextile Layers Materials | 2026-11-23 → 2026-09-25 A (-59d) | 2026-11-29 → 2026-10-14 (-46d) | 0% → 85% | 9.32d → 64.42d |
| Construction | **Construction** |  | 2027-01-09 → 2027-01-16 (+7d) |  |  |
| Mil.Cons.Fin | Construction - Finish Milstone | 2026-12-29 → 2027-01-04 (+6d) | 2026-12-29 → 2027-01-04 (+6d) |  | 8d → 9d |
| Zone 01 | **Zone 01** |  | 2026-12-01 → 2026-12-08 (+7d) |  |  |
| Dewatering | **Earthworks & Site Grading** |  | 2026-10-19 → 2026-10-26 (+7d) |  |  |
| B1.1.31 23 23.22_R | Engineering Backfiling - Service Road(Rem) |  | 2026-10-19 → 2026-10-26 (+7d) |  | 21.72d → 103.12d |
| B1.1.31 23 16.01_R | Excavation (all types of soil)(Rem) | 2026-10-07 → 2026-10-14 (+7d) | 2026-10-11 → 2026-10-18 (+7d) |  | 27.93d → 76.33d |
| RD 01 | **Road 01** |  | 2026-12-01 → 2026-12-08 (+7d) |  |  |
| Wet Networks | **Wet Networks** |  | 2026-11-30 → 2026-12-03 (+3d) |  |  |
| Sewerage Network | **Sewerage Network** |  | 2026-10-28 → 2026-10-12 (-16d) |  |  |
| Manholes | **Manholes ?1200** |  | 2026-10-28 → 2026-10-12 (-16d) |  |  |
| 2 | **Depth From 0.0m to 1.5m** |  | 2026-10-11 → 2026-10-10 (-1d) |  |  |
| B5.33 05 13.014_R | Test, Internal Finishing, Benching & Cover(Rem) | 2026-10-07 A | 2026-10-11 → 2026-10-10 A (-1d) | 0% → 100% | 95.08d → none |
| 3 | **Depth From 1.5m to 2.5m** |  | 2026-10-14 → 2026-10-12 (-2d) |  |  |
| B5.33 05 13.024_R | Test, Internal Finishing, Benching & Cover(Rem) | 2026-10-11 A | 2026-10-14 → 2026-10-12 A (-2d) | 0% → 100% | 95.08d → none |
| 4 | **Depth From 2.5m to 3.5m** |  | 2026-10-21 → 2026-10-12 (-9d) |  |  |
| B5.33 05 13.034_R | Test, Internal Finishing, Benching & Cover(Rem) | 2026-10-14 → 2026-10-07 A (-7d) | 2026-10-18 → 2026-10-10 A (-8d) | 0% → 100% | 95.08d → none |
| 4 | **Depth From 2.5m to 3.5m Backdrop** |  | 2026-10-21 → 2026-10-12 (-9d) |  |  |
| B5.33 05 13.044_R | Test, Internal Finishing, Benching & Cover(Rem) | 2026-10-18 → 2026-10-11 A (-7d) | 2026-10-21 → 2026-10-12 A (-9d) | 0% → 100% | 95.08d → none |
| 1 | **Depth From 3.5m to 4.5m** |  | 2026-10-28 → 2026-10-11 (-17d) |  |  |
| B5.33 05 13.054_R | Test, Internal Finishing, Benching & Cover(Rem) | 2026-10-25 → 2026-10-07 A (-18d) | 2026-10-28 → 2026-10-11 A (-17d) | 0% → 100% | 95.08d → none |
| 1 | **Depth From 3.5m to 4.5m Backdrop** |  | 2026-10-25 → 2026-10-08 (-17d) |  |  |
| B5.33 05 13.064_R | Test, Internal Finishing, Benching & Cover(Rem) | 2026-10-21 → 2026-10-07 A (-14d) | 2026-10-25 → 2026-10-08 A (-17d) | 0% → 100% | 95.08d → none |
| Potable | **Potable Network** |  | 2026-10-15 → 2026-10-10 (-5d) |  |  |
| Valves & Chambers | **Valves & Chambers** |  | 2026-10-15 → 2026-10-10 (-5d) |  |  |
| GV | **Gate Valves** |  | 2026-10-10 → 2026-10-06 (-4d) |  |  |
| 1 | **Gate valves dia (110) mm** |  | 2026-10-10 → 2026-10-06 (-4d) |  |  |
| B3.33 14 19.01.105 | Spindle & Surface Box | 2026-10-07 → 2026-10-05 A (-2d) | 2026-10-10 → 2026-10-06 A (-4d) | 0% → 100% | 104.32d → none |
| 2 | **Air Valves** |  | 2026-10-15 → 2026-10-10 (-5d) |  |  |
| 4 | **Air valves on less than 315 mm. (In Chamber)** |  | 2026-10-15 → 2026-10-10 (-5d) |  |  |
| B3.33 05 63.02.014_R | Chamber Curing, Finishing & Steel Cover(Rem) | 2026-10-07 A | 2026-10-10 A | 0% → 100% | 91.32d → none |
| B3.33 05 63.02.015 | Valve & Fitting Installation | 2026-10-11 → 2026-10-08 A (-3d) | 2026-10-15 → 2026-10-10 A (-5d) | 0% → 100% | 91.32d → none |
| Fire Fighting | **Fire Fighting Network** |  | 2026-10-26 → 2026-10-12 (-14d) |  |  |
| Valves & Chambers | **Valves & Chambers** |  | 2026-10-26 → 2026-10-12 (-14d) |  |  |
| GV | **Gate Valves** |  | 2026-10-26 → 2026-10-05 (-21d) |  |  |
| 1 | **Gate valves dia (250) mm** |  | 2026-10-26 → 2026-10-05 (-21d) |  |  |
| B3.33 14 19.01.121 | Spindle & Surface Box | 2026-10-22 → 2026-10-04 A (-18d) | 2026-10-26 → 2026-10-05 A (-21d) | 0% → 100% | 64.32d → none |
| 2 | **Air Valves** |  | 2026-10-18 → 2026-10-12 (-6d) |  |  |
| 4 | **Air valves on less than 315 mm. (In Chamber)** |  | 2026-10-18 → 2026-10-12 (-6d) |  |  |
| B3.33 05 63.02.41_R | Chamber Curing, Finishing & Steel Cover(Rem) | 2026-10-07 A | 2026-10-11 → 2026-10-08 A (-3d) | 0% → 100% | 60.32d → none |
| B3.33 05 63.02.44 | Valve & Fitting Installation | 2026-10-12 → 2026-10-10 A (-2d) | 2026-10-18 → 2026-10-12 A (-6d) | 0% → 100% | 60.32d → none |
| TSE | **TSE Network** |  | 2026-11-30 → 2026-12-03 (+3d) |  |  |
| Valves & Chambers | **Valves & Chambers** |  | 2026-11-30 → 2026-12-03 (+3d) |  |  |
| GV | **Gate Valves** |  | 2026-10-10 → 2026-10-17 (+7d) |  |  |
| 1 | **Gate valves dia (250) mm** |  | 2026-10-10 → 2026-10-17 (+7d) |  |  |
| B3.33 14 19.01.137 | Spindle & Surface Box | 2026-10-07 → 2026-10-14 (+7d) | 2026-10-10 → 2026-10-17 (+7d) |  |  |
| 2 | **Air Valves** |  | 2026-10-15 → 2026-10-19 (+4d) |  |  |
| 4 | **Air valves on less than 315 mm. (In Chamber)** |  | 2026-10-15 → 2026-10-19 (+4d) |  |  |
| B3.33 05 63.02.86_R | Chamber Curing, Finishing & Steel Cover(Rem) | 2026-10-07 A | 2026-10-10 A | 0% → 100% | 6.32d → none |
| B3.33 05 63.02.89 | Valve & Fitting Installation | 2026-10-11 → 2026-10-14 (+3d) | 2026-10-15 → 2026-10-19 (+4d) |  | 6.32d → 9.32d |
| Washout Valves | **Washout Valves** |  | 2026-11-30 → 2026-12-03 (+3d) |  |  |
| 4 | **Washout valves on 110-400 mm. (In Chamber)** |  | 2026-11-30 → 2026-12-03 (+3d) |  |  |
| B3.33 05 63.01.65_R | Foundations(Rem) | 2026-10-07 A | 2026-10-10 A | 0% → 100% | 63.72d → none |
| B3.33 05 63.01.66_R | Chamber Curing, Finishing & Steel Cover(Rem) | 2026-10-07 A | 2026-10-10 A | 0% → 100% | 63.72d → none |
| B3.33 05 63.01.68_R | Chambers Walls Conc Cast In Situ(Rem) | 2026-10-07 A | 2026-10-10 A | 0% → 100% | 63.72d → none |
| B3.33 05 63.01.69 | Valve & Fitting Installation | 2026-11-28 → 2026-12-01 (+3d) | 2026-11-30 → 2026-12-03 (+3d) |  | 22.32d → 25.32d |
| Solenoid valves | **Solenoid valves** | 2026-11-05 → 2026-10-20 (-16d) | 2026-11-26 → 2026-11-30 (+4d) |  |  |
| Solenoid valve ?1.0 | **1 Solenoid valve ?1.0 inch with box** | 2026-11-05 → 2026-10-20 (-16d) | 2026-11-23 → 2026-11-26 (+3d) |  |  |
| B4.32 84 13.31 | Cable Laying Two-Wire Decoder (12 AWG) | 2026-11-05 → 2026-10-20 (-16d) | 2026-11-08 → 2026-10-22 (-17d) |  | 26.32d → 46.32d |
| B4.32 84 13.066 | Pull Box Installation | 2026-11-09 → 2026-10-24 (-16d) | 2026-11-11 → 2026-10-26 (-16d) |  | 26.32d → 46.32d |
| B4.32 84 13.32 | Solenoid Valve Box Installation | 2026-11-09 → 2026-10-24 (-16d) | 2026-11-11 → 2026-10-26 (-16d) |  | 29.32d → 49.32d |
| B4.32 84 13.33 | Bubblers Installation | 2026-11-21 → 2026-11-24 (+3d) | 2026-11-23 → 2026-11-26 (+3d) |  | 22.32d → 25.32d |
| Solenoid valve ?1.5 | **1 Solenoid valve ?1.5 inch with box** | 2026-11-09 → 2026-10-24 (-16d) | 2026-11-18 → 2026-11-02 (-16d) |  |  |
| B4.32 84 13.34 | Cable Laying Two-Wire Decoder (12 AWG) | 2026-11-09 → 2026-10-24 (-16d) | 2026-11-11 → 2026-10-26 (-16d) |  | 26.32d → 46.32d |
| B4.32 84 13.067 | Pull Box Installation | 2026-11-12 → 2026-10-27 (-16d) | 2026-11-15 → 2026-10-29 (-17d) |  | 26.32d → 46.32d |

| ID | Task | Start | Finish | Complete | Total float |
| --- | --- | --- | --- | --- | --- |
| B4.32 84 13.35 | Solenoid Valve Box Installation | 2026-11-12 → 2026-10-27 (-16d) | 2026-11-15 → 2026-10-29 (-17d) |  | 26.32d → 46.32d |
| B4.32 84 13.36 | Bubblers Installation | 2026-11-16 → 2026-10-31 (-16d) | 2026-11-18 → 2026-11-02 (-16d) |  | 26.32d → 46.32d |
| Solenoid valve ?2.0 | **1 Solenoid valve ?2.0 inch with box** | 2026-11-12 → 2026-10-27 (-16d) | 2026-11-26 → 2026-11-30 (+4d) |  |  |
| B4.32 84 13.28 | Cable Laying Two-Wire Decoder (12 AWG) | 2026-11-12 → 2026-10-27 (-16d) | 2026-11-15 → 2026-10-29 (-17d) |  | 26.32d → 46.32d |
| B4.32 84 13.068 | Pull Box Installation | 2026-11-16 → 2026-10-31 (-16d) | 2026-11-18 → 2026-11-02 (-16d) |  | 26.32d → 46.32d |
| B4.32 84 13.29 | Solenoid Valve Box Installation | 2026-11-16 → 2026-10-31 (-16d) | 2026-11-18 → 2026-11-02 (-16d) |  | 26.32d → 46.32d |
| B4.32 84 13.30 | Bubblers Installation | 2026-11-24 → 2026-11-28 (+4d) | 2026-11-26 → 2026-11-30 (+4d) |  | 22.32d → 25.32d |
| Dry Networks | **Dry Networks** |  | 2026-11-28 → 2026-11-10 (-18d) |  |  |
| MV Network | **Medium Voltage Network** |  | 2026-10-22 → 2026-10-26 (+4d) |  |  |
| B2.33 71 00.021_R | Backfilling & Warrning Tape(Rem) | 2026-10-07 A | 2026-10-10 A | 0% → 100% | 55.32d → none |
| Cables | **Cables** |  | 2026-10-22 → 2026-10-26 (+4d) |  |  |
| 3C,500mm2 | **3C,500mm2** |  | 2026-10-22 → 2026-10-26 (+4d) |  |  |
| B2.33 71 49.23.02 | Straight joints cables | 2026-10-07 → 2026-10-14 (+7d) | 2026-10-10 → 2026-10-17 (+7d) |  |  |
| B2.33 71 49.23.03 | Cable Termination | 2026-10-19 → 2026-10-22 (+3d) | 2026-10-22 → 2026-10-26 (+4d) |  | 75.32d → 78.32d |
| Low Voltage Network | **Low Voltage Network** |  | 2026-11-28 → 2026-11-10 (-18d) |  |  |
| Duct Banks | **Duct Banks** |  | 2026-11-28 → 2026-11-10 (-18d) |  |  |
| 4 Way | **6 Way** |  | 2026-11-28 → 2026-11-10 (-18d) |  |  |
| B2.33 71 00 02 101_R | Shuttering, Steel Fixing Incl. UPVC Pipe & Conc. Cast(Rem) | 2026-10-07 → 2026-10-14 (+7d) | 2026-10-08 → 2026-10-15 (+7d) |  |  |
| B2.33 71 00 02 102 | Backfilling & Warrning Tape | 2026-11-25 → 2026-11-07 (-18d) | 2026-11-28 → 2026-11-10 (-18d) |  | 62.32d → 84.21d |
| Street Lighting | **Street Lighting** |  | 2026-11-26 → 2026-10-21 (-36d) |  |  |
| Cables | **Cables** |  | 2026-11-26 → 2026-10-15 (-42d) |  |  |
| 4C,10+1C,10mm2 | **4C,10+1C,10mm2** |  | 2026-11-26 → 2026-10-15 (-42d) |  |  |
| B2.33 71 19 62_R | Land Adjustment(Rem) | 2026-10-07 A | 2026-10-07 A | 0% → 100% | 101.32d → none |
| B2.33 71 19 72 | Backfilling | 2026-11-24 → 2026-10-11 A (-44d) | 2026-11-26 → 2026-10-12 A (-45d) | 0% → 100% | 62.32d → none |
| B2.33 71 49.23.112_R | Cable Pulling(Rem) | 2026-10-07 → 2026-10-14 (+7d) | 2026-10-08 → 2026-10-15 (+7d) |  | 101.32d → 107.32d |
| Earthing | **Earthing** | 2026-10-10 → 2026-10-14 (+4d) | 2026-10-17 → 2026-10-21 (+4d) |  |  |
| B2.33 71 19 011 | Land Adjustment | 2026-10-10 → 2026-10-14 (+4d) | 2026-10-11 → 2026-10-15 (+4d) |  | 28.32d → 30.32d |
| B2.33 71 19 012 | Earth Rods & Conduits | 2026-10-12 → 2026-10-17 (+5d) | 2026-10-13 → 2026-10-18 (+5d) |  | 28.32d → 30.32d |
| B2.33 71 19 013 | Backfilling | 2026-10-14 → 2026-10-19 (+5d) | 2026-10-17 → 2026-10-21 (+4d) |  | 28.32d → 30.32d |
| SL Poles | **SL Poles** |  | 2026-10-26 → 2026-10-14 (-12d) |  |  |
| Pole (10 M Sngl Arm) | **Pole (10 M Single Arm)** |  | 2026-10-26 → 2026-10-14 (-12d) |  |  |
| B2.26.56.19.01_R | Lighting Luminares Inst(Rem) | 2026-10-07 A | 2026-10-08 A | 0% → 100% | 94.32d → none |
| B2.33 71 16.021_R | Excavation(Rem) | 2026-10-07 A | 2026-10-08 A | 0% → 100% | 28.32d → none |
| B2.33 71 16.022_R | PC & RC Foundation(Rem) | 2026-10-07 A | 2026-10-08 A | 0% → 100% | 94.32d → none |
| B2.33 71 16.023_R | Lighting Poles Installation Incl power box, Cables(Rem) | 2026-10-07 A | 2026-10-08 A | 0% → 100% | 94.32d → none |
| B2.33 71 16.025 | Backfilling, Grouting & Chamfering | 2026-10-24 → 2026-10-10 A (-14d) | 2026-10-26 → 2026-10-14 (-12d) | 0% → 80% | 82.32d → 98.72d |
| Telecommunication | **Telecommunication Network** |  | 2026-10-14 → 2026-10-21 (+7d) |  |  |
| Manholes | **Manholes** |  | 2026-10-08 → 2026-10-15 (+7d) |  |  |
| Manhole Type 1 | **Manhole Type 1** |  | 2026-10-08 → 2026-10-15 (+7d) |  |  |
| B2.31 23 00.571_R | Excavation(Rem) | 2026-10-07 → 2026-10-14 (+7d) | 2026-10-08 → 2026-10-15 (+7d) |  |  |
| B2.33 71 00.141_R | Manhole Installation(Rem) | 2026-10-07 → 2026-10-14 (+7d) | 2026-10-08 → 2026-10-15 (+7d) |  |  |
| B2.33 71 00.151_R | Backfilling & Warrning Tape(Rem) | 2026-10-07 → 2026-10-14 (+7d) | 2026-10-08 → 2026-10-15 (+7d) |  |  |
| Manhole Type 2 | **Manhole Type 2** |  | 2026-10-08 → 2026-10-15 (+7d) |  |  |
| B2.31 23 00.581_R | Excavation(Rem) | 2026-10-07 → 2026-10-14 (+7d) | 2026-10-08 → 2026-10-15 (+7d) |  |  |
| B2.33 71 00.161_R | Manhole Installation(Rem) | 2026-10-07 → 2026-10-14 (+7d) | 2026-10-08 → 2026-10-15 (+7d) |  |  |
| B2.33 71 00.171_R | Backfilling & Warrning Tape(Rem) | 2026-10-07 → 2026-10-14 (+7d) | 2026-10-08 → 2026-10-15 (+7d) |  |  |
| Ducts | **Ducts** |  | 2026-10-08 → 2026-10-15 (+7d) |  |  |
| (6*50mm) | **Size (6*50mm) HDPE ducts** |  | 2026-10-08 → 2026-10-15 (+7d) |  |  |
| B2.1.33 81 26.13_R | Backfilling & Warrning Tape(Rem) | 2026-10-07 → 2026-10-14 (+7d) | 2026-10-08 → 2026-10-15 (+7d) |  |  |
| (6*50mm+2*32mm) | **Size (6*50mm+2*32mm) HDPE ducts** |  | 2026-10-08 → 2026-10-15 (+7d) |  |  |
| B2.1.33 81 26.23_R | Backfilling & Warrning Tape(Rem) | 2026-10-07 → 2026-10-14 (+7d) | 2026-10-08 → 2026-10-15 (+7d) |  |  |
| (6*50mm+4*32mm) | **Size (6*50mm+4*32mm) HDPE ducts** |  | 2026-10-08 → 2026-10-15 (+7d) |  |  |
| B2.1.33 81 26.31_R | Excavation(Rem) | 2026-10-07 → 2026-10-14 (+7d) | 2026-10-08 → 2026-10-15 (+7d) |  |  |
| B2.1.33 81 26.32_R | HDPE Pipe, Shuttering, Steel Fixing & Conc. Cast(Rem) | 2026-10-07 → 2026-10-14 (+7d) | 2026-10-08 → 2026-10-15 (+7d) |  |  |
| B2.1.33 81 26.33_R | Backfilling & Warrning Tape(Rem) | 2026-10-07 → 2026-10-14 (+7d) | 2026-10-08 → 2026-10-15 (+7d) |  |  |
| (2*32mm) | **Size (2*32mm) HDPE ducts** |  | 2026-10-08 → 2026-10-15 (+7d) |  |  |
| B2.1.33 81 26.41_R | Excavation(Rem) | 2026-10-07 → 2026-10-14 (+7d) | 2026-10-08 → 2026-10-15 (+7d) |  |  |
| B2.1.33 81 26.42_R | HDPE Pipe, Shuttering, Steel Fixing & Conc. Cast(Rem) | 2026-10-07 → 2026-10-14 (+7d) | 2026-10-08 → 2026-10-15 (+7d) |  |  |
| B2.1.33 81 26.43_R | Backfilling & Warrning Tape(Rem) | 2026-10-07 → 2026-10-14 (+7d) | 2026-10-08 → 2026-10-15 (+7d) |  |  |
| (4*32mm) | **Size (4*32mm) HDPE ducts** |  | 2026-10-08 → 2026-10-15 (+7d) |  |  |
| B2.1.33 81 26.51_R | Excavation(Rem) | 2026-10-07 → 2026-10-14 (+7d) | 2026-10-08 → 2026-10-15 (+7d) |  |  |
| B2.1.33 81 26.52_R | HDPE Pipe, Shuttering, Steel Fixing & Conc. Cast(Rem) | 2026-10-07 → 2026-10-14 (+7d) | 2026-10-08 → 2026-10-15 (+7d) |  |  |
| B2.1.33 81 26.53_R | Backfilling & Warrning Tape(Rem) | 2026-10-07 → 2026-10-14 (+7d) | 2026-10-08 → 2026-10-15 (+7d) |  |  |
| Demolishing | **Demolishing and Site Clearing** |  | 2026-10-14 → 2026-10-21 (+7d) |  |  |
| B2.1.02 41 00.011_R | Excavation(Rem) | 2026-10-07 → 2026-10-14 (+7d) | 2026-10-08 → 2026-10-15 (+7d) |  |  |
| B2.1.02 41 00.012_R | Old Manholes Grubbing(Rem) | 2026-10-07 → 2026-10-14 (+7d) | 2026-10-08 → 2026-10-15 (+7d) |  |  |
| B2.1.02 41 00.013_R | Old Network Components Grubbing(Rem) | 2026-10-07 → 2026-10-14 (+7d) | 2026-10-08 → 2026-10-15 (+7d) |  |  |
| B2.1.02 41 00.014_R | New Manholes Installation(Rem) | 2026-10-07 → 2026-10-14 (+7d) | 2026-10-08 → 2026-10-15 (+7d) |  |  |
| B2.1.02 41 00.015_R | New Network Components Installation(Rem) | 2026-10-07 → 2026-10-14 (+7d) | 2026-10-08 → 2026-10-15 (+7d) |  |  |
| B2.1.02 41 00.016 | Backfilling & Warrning Tape | 2026-10-10 → 2026-10-17 (+7d) | 2026-10-14 → 2026-10-21 (+7d) |  |  |

| ID | Task | Start | Finish | Complete | Total float |
| --- | --- | --- | --- | --- | --- |
| Earth & Road Works | **Earth & Road Works** |  | 2026-10-27 → 2026-11-03 (+7d) |  |  |
| Earth Layers | **Earth Layers** |  | 2026-10-13 → 2026-10-20 (+7d) |  |  |
| B1.2.32 11 13.01.1_R | Subgrade(Rem) |  | 2026-10-07 A | 90% → 100% | 112.83d → none |
| B1.2.32 11 23.01.1_R | Aggregate Base Course(Rem) | 2026-10-07 → 2026-10-14 (+7d) | 2026-10-13 → 2026-10-20 (+7d) |  |  |
| Interlock | **Interlock** | 2026-10-14 → 2026-10-21 (+7d) | 2026-10-17 → 2026-10-24 (+7d) |  |  |
| B1.2.32 14 13.13.1 | 60mm thick - Interlocking Block Pavers | 2026-10-14 → 2026-10-21 (+7d) | 2026-10-17 → 2026-10-24 (+7d) |  |  |
| Curbstone | **Curbstone** |  | 2026-10-20 → 2026-10-27 (+7d) |  |  |
| Pre Install | **Pre-Installation** |  | 2026-10-14 → 2026-10-21 (+7d) |  |  |
| 32 16 133_R | Haunching(Rem) | 2026-10-12 → 2026-10-19 (+7d) | 2026-10-14 → 2026-10-21 (+7d) |  |  |
| 32 16 131_R | Excavation(Rem) | 2026-10-13 → 2026-10-20 (+7d) | 2026-10-14 → 2026-10-21 (+7d) |  |  |
| 32 16 132_R | PCC(Rem) | 2026-10-13 → 2026-10-20 (+7d) | 2026-10-14 → 2026-10-21 (+7d) |  |  |
| Installation | **Installation** |  | 2026-10-20 → 2026-10-27 (+7d) |  |  |
| B1.2.32 16.13.01.1_R | Curb Stone, Type K1(Rem) | 2026-10-14 → 2026-10-21 (+7d) | 2026-10-17 → 2026-10-24 (+7d) |  |  |
| B1.2.32 16.13.03.1 | Edge Curb, Type K4 | 2026-10-17 → 2026-10-24 (+7d) | 2026-10-19 → 2026-10-26 (+7d) |  |  |
| B1.2.32 16.13.041 | Heel Curb, Type K5 | 2026-10-19 → 2026-10-26 (+7d) | 2026-10-20 → 2026-10-27 (+7d) |  |  |
| Finishing | **Finishing** | 2026-10-19 → 2026-10-26 (+7d) | 2026-10-20 → 2026-10-27 (+7d) |  |  |
| 32 16 134 | Finishing, Fareface | 2026-10-19 → 2026-10-26 (+7d) | 2026-10-20 → 2026-10-27 (+7d) |  |  |
| Asphalt Layers | **Asphalt Layers** |  | 2026-10-15 → 2026-10-22 (+7d) |  |  |
| B1.2.32 11 26.01.1_R | Bituminous Base Course including Prime Coat (MC1) and tack coat (RC2)(Rem) |  | 2026-10-10 → 2026-10-17 (+7d) | 50% → 60% | 28.32d → 50.32d |
| B1.2.32 12 16.01.1 | Bituminous concrete Wearing Course, including tack coat (RC2) | 2026-10-11 → 2026-10-18 (+7d) | 2026-10-15 → 2026-10-22 (+7d) |  |  |
| Pavement Marking | **Pavement Marking** | 2026-10-19 → 2026-10-26 (+7d) | 2026-10-21 → 2026-10-28 (+7d) |  |  |
| B1.2.32 17 23.01.1 | Retroreflective Thermoplastic White Traffic lines | 2026-10-19 → 2026-10-26 (+7d) | 2026-10-21 → 2026-10-28 (+7d) |  |  |
| B1.2.32 17 23.02.1 | Retroreflective Thermoplastic Yellow, Traffic lines | 2026-10-19 → 2026-10-26 (+7d) | 2026-10-20 → 2026-10-27 (+7d) |  |  |
| Traffic Signs | **Traffic Signs** | 2026-10-14 → 2026-10-21 (+7d) | 2026-10-27 → 2026-11-03 (+7d) |  |  |
| Pre Install | **Pre-Installation** | 2026-10-14 → 2026-10-21 (+7d) | 2026-10-20 → 2026-10-27 (+7d) |  |  |
| 10 14 53.1 | Excavation | 2026-10-14 → 2026-10-21 (+7d) | 2026-10-17 → 2026-10-24 (+7d) |  |  |
| 10 14 53.01 | Foundation | 2026-10-17 → 2026-10-24 (+7d) | 2026-10-20 → 2026-10-27 (+7d) |  |  |
| Installation | **Installation** | 2026-10-20 → 2026-10-27 (+7d) | 2026-10-27 → 2026-11-03 (+7d) |  |  |
| B1.2.10 14 53.011 | 1 Sheet Alumenium, Single post | 2026-10-20 → 2026-10-27 (+7d) | 2026-10-25 → 2026-11-01 (+7d) |  |  |
| B1.2.10 14 14.01.1 | Ground mounted, 1 Sheet Alumenium, Single post | 2026-10-25 → 2026-11-01 (+7d) | 2026-10-27 → 2026-11-03 (+7d) |  |  |
| B1.2.10 14 53.021 | 2 Sheet Alumenium, Single post | 2026-10-25 → 2026-11-01 (+7d) | 2026-10-27 → 2026-11-03 (+7d) |  |  |
| Road Misc. | **Miscellaneous** | 2026-10-17 → 2026-10-24 (+7d) | 2026-10-18 → 2026-10-25 (+7d) |  |  |
| B1.2.32 12 19.13.01 | Speed Tables | 2026-10-17 → 2026-10-24 (+7d) | 2026-10-18 → 2026-10-25 (+7d) |  |  |
| Landscape | **Landscape** |  | 2026-12-01 → 2026-12-08 (+7d) |  |  |
| Geotextile | **Geotextile** | 2026-11-09 → 2026-11-16 (+7d) | 2026-11-23 → 2026-11-30 (+7d) |  |  |
| B7.31 32 19.23.01 | Geotextile to protect trees planting soil | 2026-11-09 → 2026-11-16 (+7d) | 2026-11-16 → 2026-11-23 (+7d) |  |  |
| B7.31 32 19.23.02 | Geotextile below gravel bed | 2026-11-16 → 2026-11-23 (+7d) | 2026-11-23 → 2026-11-30 (+7d) |  |  |
| Steel fence (MODON) | **Steel fence (MODON)** |  | 2026-10-24 → 2026-10-31 (+7d) |  |  |
| B7.32 31 26.021_R | Earthwork(Rem) | 2026-10-11 → 2026-10-18 (+7d) | 2026-10-17 → 2026-10-24 (+7d) |  |  |
| B7.32 31 26.022_R | Foundation(Rem) | 2026-10-11 → 2026-10-18 (+7d) | 2026-10-15 → 2026-10-22 (+7d) |  |  |
| B7.32 31 26.023 | Fence Installation | 2026-10-15 → 2026-10-22 (+7d) | 2026-10-24 → 2026-10-31 (+7d) |  |  |
| Gates | **Gates** | 2026-10-17 → 2026-10-24 (+7d) | 2026-11-09 → 2026-11-16 (+7d) |  |  |
| Gates (1.6x 2.7)m | **Size (1.6x 2.7)m** | 2026-10-17 → 2026-10-24 (+7d) | 2026-11-03 → 2026-11-10 (+7d) |  |  |
| B7.32 31 26.03.021 | Earthwork | 2026-10-17 → 2026-10-24 (+7d) | 2026-10-22 → 2026-10-29 (+7d) |  |  |
| B7.32 31 26.03.022 | Foundation | 2026-10-22 → 2026-10-29 (+7d) | 2026-10-28 → 2026-11-04 (+7d) |  |  |
| B7.32 31 26.03.023 | Gate Installation | 2026-10-28 → 2026-11-04 (+7d) | 2026-11-03 → 2026-11-10 (+7d) |  |  |
| Gates (4.5x 2.7)m | **Size (4.5x 2.7)m** | 2026-10-22 → 2026-10-29 (+7d) | 2026-11-09 → 2026-11-16 (+7d) |  |  |
| B7.32 31 26.03.041 | Earthwork | 2026-10-22 → 2026-10-29 (+7d) | 2026-10-28 → 2026-11-04 (+7d) |  |  |
| B7.32 31 26.03.042 | Foundation | 2026-10-28 → 2026-11-04 (+7d) | 2026-11-03 → 2026-11-10 (+7d) |  |  |
| B7.32 31 26.03.043 | Gate Installation | 2026-11-03 → 2026-11-10 (+7d) | 2026-11-09 → 2026-11-16 (+7d) |  |  |
| Trees | **Trees** | 2026-11-25 → 2026-12-02 (+7d) | 2026-12-01 → 2026-12-08 (+7d) |  |  |
| B7.32 93 43.02 | Cassia Glauca | 2026-11-25 → 2026-12-02 (+7d) | 2026-12-01 → 2026-12-08 (+7d) |  |  |
| Service Road | **Service Road** |  | 2026-12-01 → 2026-12-03 (+2d) |  |  |
| Wet Networks | **Wet Networks** |  | 2026-12-01 → 2026-11-22 (-9d) |  |  |
| Storm | **Storm Network** |  | 2026-12-01 → 2026-11-22 (-9d) |  |  |
| GRP | **GRP** | 2026-10-19 → 2026-10-06 (-13d) | 2026-11-24 → 2026-11-15 (-9d) |  |  |
| ?40011 | **?1300** | 2026-10-19 → 2026-10-06 (-13d) | 2026-11-10 → 2026-11-01 (-9d) |  |  |
| 3 | **Depth From 3.5m to 4.5m** | 2026-10-19 → 2026-10-06 (-13d) | 2026-11-10 → 2026-11-01 (-9d) |  |  |
| B6.33 42 11.26.1 | Excavation | 2026-10-19 → 2026-10-06 A (-13d) | 2026-10-22 → 2026-10-08 A (-14d) | 0% → 100% | 21.72d → none |
| B6.33 42 11.26.2 | Sand Bedding | 2026-10-22 → 2026-10-14 (-8d) | 2026-10-26 → 2026-10-17 (-9d) |  | 27.72d → 40.92d |
| B6.33 42 11.26.3 | Pipe Laying | 2026-10-26 → 2026-10-18 (-8d) | 2026-10-29 → 2026-10-20 (-9d) |  | 27.72d → 40.92d |
| B6.33 42 11.26.4 | Embedment & Test | 2026-10-29 → 2026-10-21 (-8d) | 2026-11-03 → 2026-10-25 (-9d) |  | 27.72d → 40.92d |
| B6.33 42 11.26.5 | Backfilling & Warrning Tape | 2026-11-03 → 2026-10-26 (-8d) | 2026-11-10 → 2026-11-01 (-9d) |  | 27.72d → 40.92d |
| ?40012 | **?1400** | 2026-10-22 → 2026-10-14 (-8d) | 2026-11-18 → 2026-11-09 (-9d) |  |  |
| 1 | **Depth From 3.5m to 4.5m** | 2026-10-22 → 2026-10-14 (-8d) | 2026-11-15 → 2026-11-05 (-10d) |  |  |
| B6.33 42 11.30.1 | Excavation | 2026-10-22 → 2026-10-14 (-8d) | 2026-10-26 → 2026-10-17 (-9d) |  | 21.72d → 34.92d |
| B6.33 42 11.30.2 | Sand Bedding | 2026-10-26 → 2026-10-18 (-8d) | 2026-10-29 → 2026-10-20 (-9d) |  | 29.72d → 42.92d |
| B6.33 42 11.30.3 | Pipe Laying | 2026-10-29 → 2026-10-21 (-8d) | 2026-11-02 → 2026-10-24 (-9d) |  | 29.72d → 42.92d |
| B6.33 42 11.30.4 | Embedment & Test | 2026-11-02 → 2026-10-25 (-8d) | 2026-11-08 → 2026-10-29 (-10d) |  | 29.72d → 42.92d |
| B6.33 42 11.30.5 | Backfilling & Warrning Tape | 2026-11-08 → 2026-10-31 (-8d) | 2026-11-15 → 2026-11-05 (-10d) |  | 29.72d → 42.92d |

| ID | Task | Start | Finish | Total float |
| --- | --- | --- | --- | --- |
| 4 | **Depth From 2.5m to 3.5m** | 2026-10-26 → 2026-10-18 (-8d) | 2026-11-18 → 2026-11-09 (-9d) |  |
| B6.33 42 11.29.1 | Excavation | 2026-10-26 → 2026-10-18 (-8d) | 2026-10-29 → 2026-10-20 (-9d) | 21.72d → 34.92d |
| B6.33 42 11.29.2 | Sand Bedding | 2026-10-29 → 2026-10-21 (-8d) | 2026-11-02 → 2026-10-24 (-9d) | 26.72d → 39.92d |
| B6.33 42 11.29.3 | Pipe Laying | 2026-11-02 → 2026-10-25 (-8d) | 2026-11-05 → 2026-10-27 (-9d) | 26.72d → 39.92d |
| B6.33 42 11.29.4 | Embedment & Test | 2026-11-05 → 2026-10-28 (-8d) | 2026-11-11 → 2026-11-02 (-9d) | 26.72d → 39.92d |
| B6.33 42 11.29.5 | Backfilling & Warrning Tape | 2026-11-11 → 2026-11-03 (-8d) | 2026-11-18 → 2026-11-09 (-9d) | 26.72d → 39.92d |
| ?400121 | **?1500** | 2026-10-29 → 2026-10-21 (-8d) | 2026-11-24 → 2026-11-15 (-9d) |  |
| 4 | **Depth From 2.5m to 3.5m** | 2026-10-29 → 2026-10-21 (-8d) | 2026-11-21 → 2026-11-11 (-10d) |  |
| B6.33 42 11.33.1 | Excavation | 2026-10-29 → 2026-10-21 (-8d) | 2026-11-02 → 2026-10-24 (-9d) | 21.72d → 34.92d |
| B6.33 42 11.33.2 | Sand Bedding | 2026-11-02 → 2026-10-25 (-8d) | 2026-11-05 → 2026-10-27 (-9d) | 24.72d → 37.92d |
| B6.33 42 11.33.3 | Pipe Laying | 2026-11-05 → 2026-10-28 (-8d) | 2026-11-09 → 2026-10-31 (-9d) | 24.72d → 37.92d |
| B6.33 42 11.33.4 | Embedment & Test | 2026-11-09 → 2026-11-01 (-8d) | 2026-11-14 → 2026-11-04 (-10d) | 24.72d → 37.92d |
| B6.33 42 11.33.5 | Backfilling & Warrning Tape | 2026-11-14 → 2026-11-05 (-9d) | 2026-11-21 → 2026-11-11 (-10d) | 24.72d → 37.92d |
| 1 | **Depth From 3.5m to 4.5m** | 2026-11-02 → 2026-10-25 (-8d) | 2026-11-24 → 2026-11-15 (-9d) |  |
| B6.33 42 11.34.1 | Excavation | 2026-11-02 → 2026-10-25 (-8d) | 2026-11-05 → 2026-10-27 (-9d) | 21.72d → 34.92d |
| B6.33 42 11.34.2 | Sand Bedding | 2026-11-05 → 2026-10-28 (-8d) | 2026-11-09 → 2026-10-31 (-9d) | 26.72d → 39.92d |
| B6.33 42 11.34.3 | Pipe Laying | 2026-11-09 → 2026-11-01 (-8d) | 2026-11-12 → 2026-11-03 (-9d) | 26.72d → 39.92d |
| B6.33 42 11.34.4 | Embedment & Test | 2026-11-12 → 2026-11-04 (-8d) | 2026-11-18 → 2026-11-09 (-9d) | 26.72d → 39.92d |
| B6.33 42 11.34.5 | Backfilling & Warrning Tape | 2026-11-21 → 2026-11-12 (-9d) | 2026-11-24 → 2026-11-15 (-9d) | 24.72d → 37.92d |
| Strom Manholes | **Manholes** | 2026-11-05 → 2026-10-28 (-8d) | 2026-12-01 → 2026-11-22 (-9d) |  |
| 3 | **?2000** | 2026-11-05 → 2026-10-28 (-8d) | 2026-12-01 → 2026-11-22 (-9d) |  |
| 4 | **Depth From 2.5m to 3.5m** | 2026-11-05 → 2026-10-28 (-8d) | 2026-11-26 → 2026-11-17 (-9d) |  |
| B6.33 05 13.07.1 | Excavation & Compaction | 2026-11-05 → 2026-10-28 (-8d) | 2026-11-09 → 2026-10-31 (-9d) | 21.72d → 34.92d |
| B6.33 05 13.07.2 | Blinding Conc, & RC Base | 2026-11-09 → 2026-11-01 (-8d) | 2026-11-14 → 2026-11-04 (-10d) | 22.72d → 35.92d |
| B6.33 05 13.07.3 | Manhole Installation | 2026-11-14 → 2026-11-05 (-9d) | 2026-11-17 → 2026-11-08 (-9d) | 22.72d → 35.92d |
| B6.33 05 13.07.4 | Test, Internal Finishing, Benching & Cover | 2026-11-17 → 2026-11-09 (-8d) | 2026-11-23 → 2026-11-14 (-9d) | 22.72d → 35.92d |
| B6.33 05 13.07.5 | Backfilling | 2026-11-23 → 2026-11-15 (-8d) | 2026-11-26 → 2026-11-17 (-9d) | 22.72d → 35.92d |
| 1 | **Depth From 3.5m to 4.5m** | 2026-11-09 → 2026-11-01 (-8d) | 2026-11-28 → 2026-11-18 (-10d) |  |
| B6.33 05 13.08.1 | Excavation & Compaction | 2026-11-09 → 2026-11-01 (-8d) | 2026-11-12 → 2026-11-03 (-9d) | 21.72d → 34.92d |
| B6.33 05 13.08.2 | Blinding Conc, & RC Base | 2026-11-12 → 2026-11-04 (-8d) | 2026-11-17 → 2026-11-08 (-9d) | 21.72d → 34.92d |
| B6.33 05 13.08.3 | Manhole Installation | 2026-11-17 → 2026-11-09 (-8d) | 2026-11-21 → 2026-11-11 (-10d) | 21.72d → 34.92d |
| B6.33 05 13.08.4 | Test, Internal Finishing, Benching & Cover | 2026-11-21 → 2026-11-12 (-9d) | 2026-11-24 → 2026-11-15 (-9d) | 21.72d → 34.92d |
| B6.33 05 13.08.5 | Backfilling | 2026-11-24 → 2026-11-16 (-8d) | 2026-11-28 → 2026-11-18 (-10d) | 21.72d → 34.92d |
| 3 | **Depth From 4.5m to 5.5m** | 2026-11-12 → 2026-11-04 (-8d) | 2026-12-01 → 2026-11-22 (-9d) |  |
| B6.33 05 13.09.1 | Excavation & Compaction | 2026-11-12 → 2026-11-04 (-8d) | 2026-11-16 → 2026-11-07 (-9d) | 22.72d → 35.92d |
| B6.33 05 13.09.2 | Blinding Conc, & RC Base | 2026-11-16 → 2026-11-08 (-8d) | 2026-11-21 → 2026-11-11 (-10d) | 22.72d → 35.92d |
| B6.33 05 13.09.3 | Manhole Installation | 2026-11-21 → 2026-11-12 (-9d) | 2026-11-23 → 2026-11-14 (-9d) | 22.72d → 35.92d |
| B6.33 05 13.09.4 | Test, Internal Finishing, Benching & Cover | 2026-11-23 → 2026-11-15 (-8d) | 2026-11-26 → 2026-11-17 (-9d) | 22.72d → 35.92d |
| B6.33 05 13.09.5 | Backfilling | 2026-11-28 → 2026-11-19 (-9d) | 2026-12-01 → 2026-11-22 (-9d) | 21.72d → 34.92d |
| Catch Basins | **Catch Basins** |  | 2026-11-25 → 2026-11-16 (-9d) |  |
| Sing | **Single** |  | 2026-11-17 → 2026-11-08 (-9d) |  |
| B6.33 05 63.07.4 | Backfilling, DI Frame & Grate Cover Fixing | 2026-10-11 → 2026-10-18 (+7d) | 2026-10-13 → 2026-10-20 (+7d) |  |
| B6.33 05 63.07.1_R | Excavation, Compaction & Vapour Barrier(Rem) | 2026-11-12 → 2026-11-04 (-8d) | 2026-11-16 → 2026-11-07 (-9d) | 71.12d → 84.32d |
| B6.33 05 63.07.2_R | Blinding Conc.(Rem) | 2026-11-12 → 2026-11-04 (-8d) | 2026-11-16 → 2026-11-07 (-9d) | 78.12d → 91.32d |
| B6.33 05 63.07.3_R | Catch Basin Installation(Rem) | 2026-11-12 → 2026-11-04 (-8d) | 2026-11-17 → 2026-11-08 (-9d) | 78.12d → 91.32d |
| Dou | **Double** | 2026-10-07 → 2026-10-14 (+7d) | 2026-11-25 → 2026-11-16 (-9d) |  |
| B6.33 05 63.08.4 | Backfilling, DI Frame & Grate Cover Fixing | 2026-10-07 → 2026-10-14 (+7d) | 2026-10-10 → 2026-10-17 (+7d) |  |
| B6.33 05 63.08.1 | Excavation, Compaction & Vapour Barrier | 2026-11-16 → 2026-11-08 (-8d) | 2026-11-19 → 2026-11-10 (-9d) | 71.12d → 84.32d |
| B6.33 05 63.08.2 | Blinding Conc. | 2026-11-19 → 2026-11-11 (-8d) | 2026-11-23 → 2026-11-14 (-9d) | 71.12d → 84.32d |
| B6.33 05 63.08.3 | Catch Basin Installation | 2026-11-23 → 2026-11-15 (-8d) | 2026-11-25 → 2026-11-16 (-9d) | 71.12d → 84.32d |
| SDS1 | **Dry Networks** | 2026-10-18 → 2026-10-22 (+4d) | 2026-11-26 → 2026-12-03 (+7d) |  |
| SL | **Street Lighting** | 2026-10-18 → 2026-10-22 (+4d) | 2026-11-26 → 2026-12-03 (+7d) |  |
| Duct Banks | **Duct Banks** | 2026-10-31 → 2026-11-04 (+4d) | 2026-11-12 → 2026-11-19 (+7d) |  |
| 2 Way | **2 Way** | 2026-10-31 → 2026-11-04 (+4d) | 2026-11-04 → 2026-11-09 (+5d) |  |
| B2.33 71 00 02 011 | Excavation | 2026-10-31 → 2026-11-04 (+4d) | 2026-11-01 → 2026-11-05 (+4d) | 73.32d → 81.32d |
| B2.33 71 00 02 012 | Shuttering, Steel Fixing Incl. UPVC Pipe & Conc. Cast | 2026-11-02 → 2026-11-07 (+5d) | 2026-11-04 → 2026-11-09 (+5d) | 78.32d → 87.32d |
| B2.33 71 00 02 013 | Backfilling & Warrning Tape | 2026-11-02 → 2026-11-07 (+5d) | 2026-11-04 → 2026-11-09 (+5d) | 78.32d → 87.32d |
| 4 Way | **4 Way** | 2026-11-02 → 2026-11-07 (+5d) | 2026-11-12 → 2026-11-19 (+7d) |  |
| B2.33 71 00 02 021 | Excavation | 2026-11-02 → 2026-11-07 (+5d) | 2026-11-03 → 2026-11-08 (+5d) | 73.32d → 81.32d |
| B2.33 71 00 02 022 | Shuttering, Steel Fixing Incl. UPVC Pipe & Conc. Cast | 2026-11-04 → 2026-11-09 (+5d) | 2026-11-07 → 2026-11-11 (+4d) | 73.32d → 82.32d |
| B2.33 71 00 02 023 | Backfilling & Warrning Tape | 2026-11-09 → 2026-11-16 (+7d) | 2026-11-12 → 2026-11-19 (+7d) | 72d → 79d |
| Drawpits | **Drawpits** | 2026-11-04 → 2026-11-09 (+5d) | 2026-11-10 → 2026-11-15 (+5d) |  |
| B2.33 71 00 02 041 | Excavation | 2026-11-04 → 2026-11-09 (+5d) | 2026-11-05 → 2026-11-10 (+5d) | 79.32d → 81.32d |
| B2.33 71 00 02 042 | Drawpits Installation | 2026-11-07 → 2026-11-11 (+4d) | 2026-11-08 → 2026-11-12 (+4d) | 79.32d → 81.32d |
| B2.33 71 00 02 043 | Backfilling & Warrning Tape | 2026-11-09 → 2026-11-14 (+5d) | 2026-11-10 → 2026-11-15 (+5d) | 79.32d → 81.32d |
| Cables | **Cables** | 2026-10-20 → 2026-10-25 (+5d) | 2026-11-16 → 2026-11-23 (+7d) |  |
| 4C,10+1C,10mm2 | **4C,10+1C,10mm2** | 2026-10-20 → 2026-10-25 (+5d) | 2026-11-16 → 2026-11-23 (+7d) |  |
| B2.33 71 19 242 | Land Adjustment | 2026-10-20 → 2026-10-25 (+5d) | 2026-10-22 → 2026-10-27 (+5d) | 30.32d → 32.32d |
| B2.33 71 49.23.202 | Cable Pulling | 2026-10-24 → 2026-10-28 (+4d) | 2026-10-25 → 2026-10-29 (+4d) | 30.32d → 32.32d |
| B2.33 71 19 252 | Backfilling | 2026-11-12 → 2026-11-19 (+7d) | 2026-11-16 → 2026-11-23 (+7d) | 72d → 79d |

| ID | Task | Start | Finish | Total float |
| --- | --- | --- | --- | --- |
| SL Poles | **SL Poles** | 2026-10-18 → 2026-10-22 (+4d) | 2026-11-26 → 2026-12-03 (+7d) |  |
| Pole (10 M Sngl Arm) | **Pole (10 M Single Arm)** | 2026-10-18 → 2026-10-22 (+4d) | 2026-11-26 → 2026-12-03 (+7d) |  |
| B2.33 71 16.25 | Excavation | 2026-10-18 → 2026-10-22 (+4d) | 2026-10-19 → 2026-10-24 (+5d) | 28.32d → 30.32d |
| B2.33 71 16.26 | PC & RC Foundation | 2026-10-20 → 2026-10-25 (+5d) | 2026-10-22 → 2026-10-27 (+5d) | 28.32d → 30.32d |
| B2.33 71 16.27 | Lighting Poles Installation Incl power box, Cables | 2026-10-24 → 2026-10-28 (+4d) | 2026-10-27 → 2026-11-01 (+5d) | 28.32d → 30.32d |
| B2.26.56.19.1 | Lighting Luminares Inst | 2026-10-28 → 2026-11-02 (+5d) | 2026-10-31 → 2026-11-04 (+4d) | 82.32d → 91.32d |
| B2.33 71 16.28 | Backfilling, Grouting & Chamfering | 2026-11-24 → 2026-12-01 (+7d) | 2026-11-26 → 2026-12-03 (+7d) | 62.32d → 69.32d |
| Relocate SLP | **Relocate Lighting Poles** | 2026-10-20 → 2026-10-25 (+5d) | 2026-11-16 → 2026-11-23 (+7d) |  |
| B2.1.02 41 00.16 | Excavation (Evacuation Around Poles) | 2026-10-20 → 2026-10-25 (+5d) | 2026-10-21 → 2026-10-26 (+5d) | 85.32d → 94.32d |
| B2.1.02 41 00.17 | Old Poles Grubbing | 2026-10-22 → 2026-10-27 (+5d) | 2026-10-25 → 2026-10-29 (+4d) | 85.32d → 94.32d |
| B2.1.02 41 00.17a | Poles Transferring & Installation Incl. Foundation | 2026-10-26 → 2026-10-31 (+5d) | 2026-10-27 → 2026-11-01 (+5d) | 85.32d → 94.32d |
| B2.1.02 41 00.18 | Backfilling & Warrning Tape | 2026-11-12 → 2026-11-19 (+7d) | 2026-11-16 → 2026-11-23 (+7d) | 72d → 79d |
| Earthing | **Earthing** | 2026-10-28 → 2026-11-02 (+5d) | 2026-11-04 → 2026-11-09 (+5d) |  |
| B2.33 71 19 13 | Land Adjustment | 2026-10-28 → 2026-11-02 (+5d) | 2026-10-29 → 2026-11-03 (+5d) | 28.32d → 30.32d |
| B2.33 71 19 14 | Earth Rods & Conduits | 2026-10-31 → 2026-11-04 (+4d) | 2026-11-01 → 2026-11-05 (+4d) | 28.32d → 30.32d |
| B2.33 71 19 15 | Backfilling | 2026-11-02 → 2026-11-07 (+5d) | 2026-11-04 → 2026-11-09 (+5d) | 28.32d → 30.32d |
| Earth & Road Works | **Earth & Road Works** |  | 2026-11-15 → 2026-11-19 (+4d) |  |
| Earth Works | **Earth Works** |  | 2026-10-21 → 2026-10-28 (+7d) |  |
| B1.2.31 23 23.01.2_R | Embankment Backfiling(Rem) | 2026-10-07 → 2026-10-14 (+7d) | 2026-10-21 → 2026-10-28 (+7d) |  |
| Earth Layers | **Earth Layers** |  | 2026-10-10 → 2026-10-17 (+7d) |  |
| B1.2.32 11 13.01.2_R | Subgrade(Rem) | 2026-10-07 → 2026-10-14 (+7d) | 2026-10-10 → 2026-10-17 (+7d) |  |
| B1.2.32 11 23.01.2_R | Aggregate Base Course(Rem) | 2026-10-07 → 2026-10-14 (+7d) | 2026-10-10 → 2026-10-17 (+7d) |  |
| Interlock | **Interlock** | 2026-11-02 → 2026-11-07 (+5d) | 2026-11-04 → 2026-11-09 (+5d) |  |
| B1.2.32 14 13.13.2 | 60mm thick - Interlocking Block Pavers | 2026-11-02 → 2026-11-07 (+5d) | 2026-11-04 → 2026-11-09 (+5d) | 28.32d → 30.32d |
| Curbstone | **Curbstone** | 2026-10-11 → 2026-10-18 (+7d) | 2026-11-12 → 2026-11-17 (+5d) |  |
| Pre Install | **Pre-Installation** | 2026-10-11 → 2026-10-18 (+7d) | 2026-10-19 → 2026-10-26 (+7d) |  |
| 32 16 13.0021 | Excavation | 2026-10-11 → 2026-10-18 (+7d) | 2026-10-12 → 2026-10-19 (+7d) |  |
| 32 16 13.0023 | Haunching | 2026-10-13 → 2026-10-20 (+7d) | 2026-10-15 → 2026-10-22 (+7d) |  |
| 32 16 13.0024 | PCC | 2026-10-17 → 2026-10-24 (+7d) | 2026-10-19 → 2026-10-26 (+7d) |  |
| Installation | **Installation** | 2026-11-02 → 2026-11-07 (+5d) | 2026-11-07 → 2026-11-11 (+4d) |  |
| B1.2.32 16.13.01.2 | Curb Stone, Type K1 | 2026-11-02 → 2026-11-07 (+5d) | 2026-11-03 → 2026-11-08 (+5d) | 29.32d → 31.32d |
| B1.2.32 16.13.03.2 | Edge Curb, Type K4 | 2026-11-02 → 2026-11-07 (+5d) | 2026-11-03 → 2026-11-08 (+5d) | 29.32d → 31.32d |
| B1.2.32 16.13.042 | Heel Curb, Type K5 | 2026-11-05 → 2026-11-10 (+5d) | 2026-11-07 → 2026-11-11 (+4d) | 28.32d → 30.32d |
| Finishing | **Finishing** | 2026-11-11 → 2026-11-16 (+5d) | 2026-11-12 → 2026-11-17 (+5d) |  |
| 32 16 13.0022 | Finishing, Fareface | 2026-11-11 → 2026-11-16 (+5d) | 2026-11-12 → 2026-11-17 (+5d) | 40.32d → 42.32d |
| Asphalt Layers | **Asphalt Layers** |  | 2026-11-10 → 2026-11-15 (+5d) |  |
| B1.2.32 11 26.01.2_R | Bituminous Base Course including Prime Coat (MC1) and tack coat (RC2)(Rem) | 2026-10-07 → 2026-10-14 (+7d) | 2026-10-11 → 2026-10-18 (+7d) |  |
| B1.2.32 12 16.01.2 | Bituminous concrete Wearing Course, including tack coat (RC2) | 2026-11-05 → 2026-11-10 (+5d) | 2026-11-10 → 2026-11-15 (+5d) | 28.32d → 30.32d |
| Pavement Marking | **Pavement Marking** | 2026-11-14 → 2026-11-18 (+4d) | 2026-11-15 → 2026-11-19 (+4d) |  |
| B1.2.32 17 23.01.2 | Retroreflective Thermoplastic White Traffic lines | 2026-11-14 → 2026-11-18 (+4d) | 2026-11-15 → 2026-11-19 (+4d) | 40.32d → 42.32d |
| B1.2.32 17 23.02.2 | Retroreflective Thermoplastic Yellow, Traffic lines | 2026-11-14 → 2026-11-18 (+4d) | 2026-11-15 → 2026-11-19 (+4d) | 40.32d → 42.32d |
| Traffic Signs | **Traffic Signs** | 2026-10-13 → 2026-10-20 (+7d) | 2026-10-21 → 2026-10-28 (+7d) |  |
| Pre Install | **Pre-Installation** | 2026-10-13 → 2026-10-20 (+7d) | 2026-10-17 → 2026-10-24 (+7d) |  |
| B2.31 23 00.41 | Excavation | 2026-10-13 → 2026-10-20 (+7d) | 2026-10-14 → 2026-10-21 (+7d) |  |
| 10 14 53.02 | Foundation | 2026-10-15 → 2026-10-22 (+7d) | 2026-10-17 → 2026-10-24 (+7d) |  |
| Installation | **Installation** | 2026-10-18 → 2026-10-25 (+7d) | 2026-10-21 → 2026-10-28 (+7d) |  |
| B1.2.10 14 53.317 | 1 Sheet Alumenium, Single post | 2026-10-18 → 2026-10-25 (+7d) | 2026-10-19 → 2026-10-26 (+7d) |  |
| B1.2.10 14 14.01.18 | Ground mounted, 1 Sheet Alumenium, Single post | 2026-10-20 → 2026-10-27 (+7d) | 2026-10-21 → 2026-10-28 (+7d) |  |
| B1.2.10 14 53.318 | 2 Sheet Alumenium, Single post | 2026-10-20 → 2026-10-27 (+7d) | 2026-10-21 → 2026-10-28 (+7d) |  |
| Road Misc. | **Miscellaneous** | 2026-11-11 → 2026-11-16 (+5d) | 2026-11-12 → 2026-11-17 (+5d) |  |
| B1.2.32 12 19.13.02 | Speed Tables | 2026-11-11 → 2026-11-16 (+5d) | 2026-11-12 → 2026-11-17 (+5d) | 40.32d → 42.32d |
| Zone 02 | **Zone 02** |  | 2027-01-09 → 2027-01-16 (+7d) |  |
| Dewatering | **Earthworks & Site Grading** |  | 2026-10-14 → 2026-10-21 (+7d) |  |
| B1.1.31 23 16.02_R | Excavation (all types of soil)(Rem) | 2026-10-07 → 2026-10-14 (+7d) | 2026-10-14 → 2026-10-21 (+7d) |  |
| Service Road | **Service Road** |  | 2026-12-02 → 2026-12-09 (+7d) |  |
| Wet Networks | **Wet Networks** |  | 2026-11-07 → 2026-11-14 (+7d) |  |
| Stormwater Network | **Stormwater Network** |  | 2026-11-07 → 2026-11-14 (+7d) |  |
| GRP | **GRP** |  | 2026-10-14 → 2026-10-21 (+7d) |  |
| ?40011 | **?1500** |  | 2026-10-14 → 2026-10-21 (+7d) |  |
| 3 | **Depth From 2.5m to 3.5m** |  | 2026-10-14 → 2026-10-21 (+7d) |  |
| B6.33 42 11.31-1 3_R | Sand Bedding(Rem) | 2026-10-07 → 2026-10-14 (+7d) | 2026-10-10 → 2026-10-17 (+7d) |  |
| B6.33 42 11.31-1 5_R | Pipe Laying(Rem) | 2026-10-07 → 2026-10-14 (+7d) | 2026-10-10 → 2026-10-17 (+7d) |  |
| B6.33 42 11.31-1 7_R | Embedment & Test(Rem) | 2026-10-07 → 2026-10-14 (+7d) | 2026-10-10 → 2026-10-17 (+7d) |  |
| B6.33 42 11.31-1 9_R | Backfilling & Warrning Tape(Rem) | 2026-10-11 → 2026-10-18 (+7d) | 2026-10-14 → 2026-10-21 (+7d) |  |
| 1 | **Depth From 3.5m to 4.5m** |  | 2026-10-14 → 2026-10-21 (+7d) |  |
| B6.33 42 11.31-1 4_R | Sand Bedding(Rem) | 2026-10-07 → 2026-10-14 (+7d) | 2026-10-10 → 2026-10-17 (+7d) |  |
| B6.33 42 11.31-1 6_R | Pipe Laying(Rem) | 2026-10-07 → 2026-10-14 (+7d) | 2026-10-10 → 2026-10-17 (+7d) |  |
| B6.33 42 11.31-1 8_R | Embedment & Test(Rem) | 2026-10-07 → 2026-10-14 (+7d) | 2026-10-10 → 2026-10-17 (+7d) |  |
| B6.33 42 11.31-1 10_R | Backfilling & Warrning Tape(Rem) | 2026-10-12 → 2026-10-19 (+7d) | 2026-10-14 → 2026-10-21 (+7d) |  |
| Strom Manholes | **Manholes** |  | 2026-10-24 → 2026-10-31 (+7d) |  |

| ID | Task | Start | Finish | Total float |
| --- | --- | --- | --- | --- |
| 2 | **?1500** |  | 2026-10-21 → 2026-10-28 (+7d) |  |
| 1 | **Depth From 2.5m to 3.5m** |  | 2026-10-21 → 2026-10-28 (+7d) |  |
| B6.33 05 39.01.3357 | Test, Internal Finishing, Benching & Cover | 2026-10-07 → 2026-10-14 (+7d) | 2026-10-12 → 2026-10-19 (+7d) |  |
| B6.33 05 39.01.3367_R | Backfilling(Rem) | 2026-10-17 → 2026-10-24 (+7d) | 2026-10-21 → 2026-10-28 (+7d) |  |
| 3 | **?2000** |  | 2026-10-24 → 2026-10-31 (+7d) |  |
| 3 | **Depth From 2.5m to 3.5m** |  | 2026-10-14 → 2026-10-21 (+7d) |  |
| B6.33 05 39.01.3377_R | Excavation & Compaction(Rem) | 2026-10-07 → 2026-10-14 (+7d) | 2026-10-08 → 2026-10-15 (+7d) |  |
| B6.33 05 39.01.3387_R | Blinding Conc, & RC Base(Rem) | 2026-10-07 → 2026-10-14 (+7d) | 2026-10-08 → 2026-10-15 (+7d) |  |
| B6.33 05 39.01.3397_R | Manhole Installation(Rem) | 2026-10-07 → 2026-10-14 (+7d) | 2026-10-08 → 2026-10-15 (+7d) |  |
| B6.33 05 39.01.3407 | Test, Internal Finishing, Benching & Cover | 2026-10-10 → 2026-10-17 (+7d) | 2026-10-14 → 2026-10-21 (+7d) |  |
| B6.33 05 39.01.3417_R | Backfilling(Rem) | 2026-10-12 → 2026-10-19 (+7d) | 2026-10-14 → 2026-10-21 (+7d) |  |
| 1 | **Depth From 3.5m to 4.5m** |  | 2026-10-14 → 2026-10-21 (+7d) |  |
| B6.33 05 39.01.3427_R | Excavation & Compaction(Rem) | 2026-10-07 → 2026-10-14 (+7d) | 2026-10-08 → 2026-10-15 (+7d) |  |
| B6.33 05 39.01.3437_R | Blinding Conc, & RC Base(Rem) | 2026-10-07 → 2026-10-14 (+7d) | 2026-10-08 → 2026-10-15 (+7d) |  |
| B6.33 05 39.01.3447_R | Manhole Installation(Rem) | 2026-10-07 → 2026-10-14 (+7d) | 2026-10-08 → 2026-10-15 (+7d) |  |
| B6.33 05 39.01.3457 | Test, Internal Finishing, Benching & Cover | 2026-10-10 → 2026-10-17 (+7d) | 2026-10-14 → 2026-10-21 (+7d) |  |
| 2 | **Depth From 4.5m to 5.5m** |  | 2026-10-24 → 2026-10-31 (+7d) |  |
| B6.33 05 39.01.3477_R | Excavation & Compaction(Rem) | 2026-10-07 → 2026-10-14 (+7d) | 2026-10-08 → 2026-10-15 (+7d) |  |
| B6.33 05 39.01.3487_R | Blinding Conc, & RC Base(Rem) | 2026-10-07 → 2026-10-14 (+7d) | 2026-10-08 → 2026-10-15 (+7d) |  |
| B6.33 05 39.01.3497_R | Manhole Installation(Rem) | 2026-10-07 → 2026-10-14 (+7d) | 2026-10-08 → 2026-10-15 (+7d) |  |
| B6.33 05 39.01.3507 | Test, Internal Finishing, Benching & Cover | 2026-10-10 → 2026-10-17 (+7d) | 2026-10-14 → 2026-10-21 (+7d) |  |
| B6.33 05 39.01.3517_R | Backfilling(Rem) | 2026-10-17 → 2026-10-24 (+7d) | 2026-10-24 → 2026-10-31 (+7d) |  |
| Catch Basins | **Catch Basins** |  | 2026-11-07 → 2026-11-14 (+7d) |  |
| Sing | **Single** | 2026-10-10 → 2026-10-17 (+7d) | 2026-10-31 → 2026-11-07 (+7d) |  |
| B6.33 05 40.01.330 | Excavation, Compaction & Vapour Barrier | 2026-10-10 → 2026-10-17 (+7d) | 2026-10-12 → 2026-10-19 (+7d) |  |
| B6.33 05 40.01.340 | Blinding Conc. | 2026-10-13 → 2026-10-20 (+7d) | 2026-10-15 → 2026-10-22 (+7d) |  |
| B6.33 05 40.01.350 | Catch Basin Installation | 2026-10-17 → 2026-10-24 (+7d) | 2026-10-20 → 2026-10-27 (+7d) |  |
| B6.33 05 40.01.360 | Backfilling, DI Frame & Grate Cover Fixing | 2026-10-24 → 2026-10-31 (+7d) | 2026-10-31 → 2026-11-07 (+7d) |  |
| Dou | **Double** | 2026-10-13 → 2026-10-20 (+7d) | 2026-11-07 → 2026-11-14 (+7d) |  |
| B6.33 05 40.01.810 | Excavation, Compaction & Vapour Barrier | 2026-10-13 → 2026-10-20 (+7d) | 2026-10-15 → 2026-10-22 (+7d) |  |
| B6.33 05 40.01.820 | Blinding Conc. | 2026-10-17 → 2026-10-24 (+7d) | 2026-10-19 → 2026-10-26 (+7d) |  |
| B6.33 05 40.01.830 | Catch Basin Installation | 2026-10-21 → 2026-10-28 (+7d) | 2026-10-25 → 2026-11-01 (+7d) |  |
| B6.33 05 40.01.840 | Backfilling, DI Frame & Grate Cover Fixing | 2026-10-31 → 2026-11-07 (+7d) | 2026-11-07 → 2026-11-14 (+7d) | 42.78d → 42.8d |
| Dry Networks | **Dry Networks** | 2026-10-24 → 2026-10-31 (+7d) | 2026-11-29 → 2026-12-06 (+7d) |  |
| Street Lighting | **Street Lighting** | 2026-10-24 → 2026-10-31 (+7d) | 2026-11-29 → 2026-12-06 (+7d) |  |
| SL Poles | **SL Poles** | 2026-10-24 → 2026-10-31 (+7d) | 2026-11-09 → 2026-11-16 (+7d) |  |
| Pole (10 M Sngl Arm) | **Pole (10 M Single Arm)** | 2026-10-24 → 2026-10-31 (+7d) | 2026-11-09 → 2026-11-16 (+7d) |  |
| B2.33 71 16.63 | Excavation | 2026-10-24 → 2026-10-31 (+7d) | 2026-10-26 → 2026-11-02 (+7d) |  |
| B2.33 71 16.64 | PC & RC Foundation | 2026-10-26 → 2026-11-02 (+7d) | 2026-10-29 → 2026-11-05 (+7d) | 72d → 79d |
| B2.33 71 16.65 | Lighting Poles Installation Incl power box, Cables | 2026-10-29 → 2026-11-05 (+7d) | 2026-11-02 → 2026-11-09 (+7d) | 72d → 79d |
| B2.26.56.19.9 | Lighting Luminares Inst | 2026-11-02 → 2026-11-09 (+7d) | 2026-11-05 → 2026-11-12 (+7d) | 72d → 79d |
| B2.33 71 16.66 | Backfilling, Grouting & Chamfering | 2026-11-05 → 2026-11-12 (+7d) | 2026-11-09 → 2026-11-16 (+7d) | 72d → 79d |
| Earthing | **Earthing** | 2026-10-26 → 2026-11-02 (+7d) | 2026-11-29 → 2026-12-06 (+7d) |  |
| B2.33 71 19 32 | Land Adjustment | 2026-10-26 → 2026-11-02 (+7d) | 2026-10-28 → 2026-11-04 (+7d) |  |
| B2.33 71 19 33 | Earth Rods & Conduits | 2026-10-28 → 2026-11-04 (+7d) | 2026-10-31 → 2026-11-07 (+7d) |  |
| B2.33 71 19 34 | Backfilling | 2026-11-26 → 2026-12-03 (+7d) | 2026-11-29 → 2026-12-06 (+7d) |  |
| LV Network | **Low Voltage Network** | 2026-10-28 → 2026-11-04 (+7d) | 2026-11-08 → 2026-11-15 (+7d) |  |
| MV Replacing | **Cable Replacement** | 2026-10-28 → 2026-11-04 (+7d) | 2026-11-08 → 2026-11-15 (+7d) |  |
| B2.33 71 49.23.101 | Excavation | 2026-10-28 → 2026-11-04 (+7d) | 2026-10-31 → 2026-11-07 (+7d) |  |
| B2.33 71 49.23.98 | Old Cable Grubbing | 2026-10-31 → 2026-11-07 (+7d) | 2026-11-02 → 2026-11-09 (+7d) |  |
| B2.33 71 49.23.99 | New Cable Installation | 2026-11-02 → 2026-11-09 (+7d) | 2026-11-04 → 2026-11-11 (+7d) |  |
| B2.33 71 49.23.100 | Backfilling & Warrning Tape | 2026-11-04 → 2026-11-11 (+7d) | 2026-11-08 → 2026-11-15 (+7d) |  |
| Earth & Road Works | **Earth & Road Works** |  | 2026-12-02 → 2026-12-09 (+7d) |  |
| Earth Works | **Earth Works** |  | 2026-10-13 → 2026-10-20 (+7d) |  |
| B1.2.31 23 16.01.9 | Roadway Excavation | 2026-10-11 → 2026-10-18 (+7d) | 2026-10-13 → 2026-10-20 (+7d) |  |
| Earth Layers | **Earth Layers** | 2026-10-13 → 2026-10-20 (+7d) | 2026-10-18 → 2026-10-25 (+7d) |  |
| B1.2.32 11 13.01.9 | Subgrade | 2026-10-13 → 2026-10-20 (+7d) | 2026-10-15 → 2026-10-22 (+7d) |  |
| B1.2.32 11 23.01.9 | Aggregate Base Course | 2026-10-15 → 2026-10-22 (+7d) | 2026-10-18 → 2026-10-25 (+7d) |  |
| Interlock | **Interlock** | 2026-11-08 → 2026-11-15 (+7d) | 2026-11-11 → 2026-11-18 (+7d) |  |
| B1.2.32 14 13.13.9 | 60mm thick - Interlocking Block Pavers | 2026-11-08 → 2026-11-15 (+7d) | 2026-11-11 → 2026-11-18 (+7d) |  |
| Curbstone | **Curbstone** | 2026-11-08 → 2026-11-15 (+7d) | 2026-11-23 → 2026-11-30 (+7d) |  |
| Pre Install | **Pre-Installation** | 2026-11-08 → 2026-11-15 (+7d) | 2026-11-15 → 2026-11-22 (+7d) |  |
| B2.31 23 00.241 | Excavation | 2026-11-08 → 2026-11-15 (+7d) | 2026-11-10 → 2026-11-17 (+7d) |  |
| B1.2.32 14 13.13.29 | PCC | 2026-11-10 → 2026-11-17 (+7d) | 2026-11-12 → 2026-11-19 (+7d) |  |
| 32 16 13.009 | Haunching | 2026-11-12 → 2026-11-19 (+7d) | 2026-11-15 → 2026-11-22 (+7d) |  |
| Installation | **Installation** | 2026-11-15 → 2026-11-22 (+7d) | 2026-11-23 → 2026-11-30 (+7d) |  |
| B1.2.32 16.13.01.9 | Curb Stone, Type K1 | 2026-11-15 → 2026-11-22 (+7d) | 2026-11-17 → 2026-11-24 (+7d) |  |
| B1.2.32 16.13.02.8 | Dropped Curb, Type K3 | 2026-11-17 → 2026-11-24 (+7d) | 2026-11-18 → 2026-11-25 (+7d) |  |
| B1.2.32 16.13.03.9 | Edge Curb, Type K4 | 2026-11-18 → 2026-11-25 (+7d) | 2026-11-21 → 2026-11-28 (+7d) |  |
| B1.2.32 16.13.049 | Heel Curb, Type K5 | 2026-11-21 → 2026-11-28 (+7d) | 2026-11-23 → 2026-11-30 (+7d) |  |

| ID | Task | Start | Finish | Complete | Total float |
| --- | --- | --- | --- | --- | --- |
| Finishing | **Finishing** | 2026-11-21 → 2026-11-28 (+7d) | 2026-11-23 → 2026-11-30 (+7d) |  |  |
| 32 16 13.09 | Finishing, Fareface | 2026-11-21 → 2026-11-28 (+7d) | 2026-11-23 → 2026-11-30 (+7d) |  |  |
| Asphalt Layers | **Asphalt Layers** | 2026-10-18 → 2026-10-25 (+7d) | 2026-11-29 → 2026-12-06 (+7d) |  |  |
| B1.2.32 11 26.01.9 | Bituminous Base Course including Prime Coat (MC1) and tack coat (RC2) | 2026-10-18 → 2026-10-25 (+7d) | 2026-10-24 → 2026-10-31 (+7d) |  |  |
| B1.2.32 12 16.01.9 | Bituminous concrete Wearing Course, including tack coat (RC2) | 2026-11-23 → 2026-11-30 (+7d) | 2026-11-29 → 2026-12-06 (+7d) |  |  |
| Pavement Marking | **Pavement Marking** | 2026-12-01 → 2026-12-08 (+7d) | 2026-12-02 → 2026-12-09 (+7d) |  |  |
| B1.2.32 17 23.01.9 | Retroreflective Thermoplastic White Traffic lines | 2026-12-01 → 2026-12-08 (+7d) | 2026-12-02 → 2026-12-09 (+7d) |  |  |
| B1.2.32 17 23.02.9 | Retroreflective Thermoplastic Yellow, Traffic lines | 2026-12-01 → 2026-12-08 (+7d) | 2026-12-02 → 2026-12-09 (+7d) |  |  |
| Traffic Signs | **Traffic Signs** | 2026-11-08 → 2026-11-15 (+7d) | 2026-11-15 → 2026-11-22 (+7d) |  |  |
| Pre Install | **Pre-Installation** | 2026-11-08 → 2026-11-15 (+7d) | 2026-11-12 → 2026-11-19 (+7d) |  |  |
| B2.31 23 00.251 | Excavation | 2026-11-08 → 2026-11-15 (+7d) | 2026-11-10 → 2026-11-17 (+7d) |  |  |
| 10 14 53.09 | Foundation | 2026-11-10 → 2026-11-17 (+7d) | 2026-11-12 → 2026-11-19 (+7d) |  |  |
| Installation | **Installation** | 2026-11-12 → 2026-11-19 (+7d) | 2026-11-15 → 2026-11-22 (+7d) |  |  |
| B1.2.10 14 53.019 | 1 Sheet Alumenium, Single post | 2026-11-12 → 2026-11-19 (+7d) | 2026-11-15 → 2026-11-22 (+7d) |  |  |
| Road Misc. | **Miscellaneous** | 2026-11-29 → 2026-12-06 (+7d) | 2026-12-01 → 2026-12-08 (+7d) |  |  |
| B1.2.32 12 19.13.09 | Speed Tables | 2026-11-29 → 2026-12-06 (+7d) | 2026-12-01 → 2026-12-08 (+7d) |  |  |
| Enterance RD 01 | **Entrance Road 01** |  | 2027-01-04 → 2027-01-11 (+7d) |  |  |
| Wet Networks | **Wet Networks** |  | 2026-10-12 → 2026-10-15 (+3d) |  |  |
| Sewerage Network | **Sewerage Network** |  | 2026-10-12 → 2026-10-14 (+2d) |  |  |
| GRP | **GRP Pipes** |  | 2026-10-12 → 2026-10-14 (+2d) |  |  |
| B5.33 31 00.01.2159_R | Backfilling & Warrning Tape(Rem) | 2026-10-07 A | 2026-10-12 A | 0% → 100% | 88.76d → none |
| 1 | **?200** |  | 2026-10-12 → 2026-10-14 (+2d) |  |  |
| 1 | **Depth From 0.0m - 1.5m** |  | 2026-10-12 → 2026-10-14 (+2d) |  |  |
| B5.33 31 00.01.2199_R | Embedment & Test(Rem) | 2026-10-07 A | 2026-10-11 → 2026-10-14 (+3d) | 0% → 80% | 89.74d → 112.6d |
| B5.33 31 00.01.2209_R | Backfilling & Warrning Tape(Rem) | 2026-10-07 A | 2026-10-12 A | 0% → 100% | 88.76d → none |
| Stormwater Network | **Stormwater Network** |  | 2026-10-10 → 2026-10-15 (+5d) |  |  |
| Strom Manholes | **Manholes** |  | 2026-10-08 → 2026-10-15 (+7d) |  |  |
| 2 | **?1500** |  | 2026-10-08 → 2026-10-15 (+7d) |  |  |
| 4 | **Depth From 2.5m to 3.5m** |  | 2026-10-08 → 2026-10-15 (+7d) |  |  |
| B6.33 05 13.05.05_R | Test, Internal Finishing, Benching & Cover(Rem) | 2026-10-07 → 2026-10-14 (+7d) | 2026-10-08 → 2026-10-15 (+7d) |  |  |
| B6.33 05 13.05.06_R | Backfilling(Rem) | 2026-10-07 → 2026-10-14 (+7d) | 2026-10-08 → 2026-10-15 (+7d) |  |  |
| 3 | **?2000** |  | 2026-10-08 → 2026-10-15 (+7d) |  |  |
| 4 | **Depth From 2.5m to 3.5m** |  | 2026-10-08 → 2026-10-15 (+7d) |  |  |
| B6.33 05 13.07.03_R | Blinding Conc, & RC Base(Rem) | 2026-10-07 → 2026-10-14 (+7d) | 2026-10-08 → 2026-10-15 (+7d) |  |  |
| B6.33 05 13.07.04_R | Manhole Installation(Rem) | 2026-10-07 → 2026-10-14 (+7d) | 2026-10-08 → 2026-10-15 (+7d) |  |  |
| B6.33 05 13.07.05_R | Test, Internal Finishing, Benching & Cover(Rem) | 2026-10-07 → 2026-10-14 (+7d) | 2026-10-08 → 2026-10-15 (+7d) |  |  |
| B6.33 05 13.07.06_R | Backfilling(Rem) | 2026-10-07 → 2026-10-14 (+7d) | 2026-10-08 → 2026-10-15 (+7d) |  |  |
| Catch Basins | **Catch Basins** |  | 2026-10-10 → 2026-10-15 (+5d) |  |  |
| Dou | **Double** |  | 2026-10-08 → 2026-10-15 (+7d) |  |  |
| B6.33 05 40.01.730_R | Excavation, Compaction & Vapour Barrier(Rem) | 2026-10-07 → 2026-10-14 (+7d) | 2026-10-08 → 2026-10-15 (+7d) |  |  |
| B6.33 05 40.01.740_R | Blinding Conc.(Rem) | 2026-10-07 → 2026-10-14 (+7d) | 2026-10-08 → 2026-10-15 (+7d) |  |  |
| B6.33 05 40.01.750_R | Catch Basin Installation(Rem) | 2026-10-07 → 2026-10-14 (+7d) | 2026-10-08 → 2026-10-15 (+7d) |  |  |
| B6.33 05 40.01.760_R | Backfilling, DI Frame & Grate Cover Fixing(Rem) | 2026-10-07 → 2026-10-14 (+7d) | 2026-10-08 → 2026-10-15 (+7d) |  |  |
| UPVC | **UPVC** |  | 2026-10-10 → 2026-10-14 (+4d) |  |  |
| UPVC300 | **?300 From 0.0 to 1.5m** |  | 2026-10-10 → 2026-10-14 (+4d) |  |  |
| B6.33 42 11.35-101_R | Catch Basin Opening Prep.(Rem) | 2026-10-07 A | 2026-10-10 → 2026-10-14 (+4d) | 0% → 67% | 111.23d → 112.63d |
| B6.33 42 11.35-102_R | Fittings & Pipe Installation(Rem) | 2026-10-07 A | 2026-10-08 → 2026-10-14 (+6d) | 0% → 67% | 111.32d → 112.66d |
| UPVC3001 | **?400 From 0.0 to 1.5m** |  | 2026-10-10 → 2026-10-14 (+4d) |  |  |
| B6.33 42 11.36-111_R | Catch Basin Opening Prep.(Rem) | 2026-10-07 A | 2026-10-10 → 2026-10-14 (+4d) | 0% → 67% | 63.92d → 112.63d |
| B6.33 42 11.36-112_R | Fittings & Pipe Installation(Rem) | 2026-10-07 A | 2026-10-10 → 2026-10-14 (+4d) | 0% → 67% |  |
| Dry Networks | **Dry Networks** | 2026-10-07 → 2026-10-14 (+7d) | 2026-12-02 → 2026-12-08 (+6d) |  |  |
| MV | **Medium Voltage Network** | 2026-10-07 → 2026-10-14 (+7d) | 2026-11-05 → 2026-11-12 (+7d) |  |  |
| Duct Banks | **Duct Banks** | 2026-10-07 → 2026-10-14 (+7d) | 2026-11-05 → 2026-11-12 (+7d) |  |  |
| 4 Way | **4 Way** | 2026-10-07 → 2026-10-14 (+7d) | 2026-11-05 → 2026-11-12 (+7d) |  |  |
| B2.31 23 00.602 | Excavation | 2026-10-07 → 2026-10-14 (+7d) | 2026-10-10 → 2026-10-17 (+7d) |  |  |
| B2.33 71 00.212 | Shuttering, Steel Fixing Incl. UPVC Pipe & Conc. Cast | 2026-10-11 → 2026-10-18 (+7d) | 2026-10-18 → 2026-10-25 (+7d) |  |  |
| B2.33 71 00.213 | Backfilling & Warrning Tape | 2026-10-31 → 2026-11-07 (+7d) | 2026-11-05 → 2026-11-12 (+7d) |  |  |
| Cables | **Cables** | 2026-10-19 → 2026-10-26 (+7d) | 2026-10-29 → 2026-11-05 (+7d) |  |  |
| 3C,500mm2 | **3C,500mm2** | 2026-10-19 → 2026-10-26 (+7d) | 2026-10-29 → 2026-11-05 (+7d) |  |  |
| B2.33 71 49.23.68 | Cable 13.8 kV Unarmored | 2026-10-19 → 2026-10-26 (+7d) | 2026-10-22 → 2026-10-29 (+7d) |  |  |
| B2.33 71 49.23.69 | Straight joints cables | 2026-10-24 → 2026-10-31 (+7d) | 2026-10-26 → 2026-11-02 (+7d) |  |  |
| B2.33 71 49.23.70 | Cable Termination | 2026-10-27 → 2026-11-03 (+7d) | 2026-10-29 → 2026-11-05 (+7d) |  |  |
| LV Network | **Low Voltage Network** | 2026-11-07 → 2026-11-14 (+7d) | 2026-11-19 → 2026-11-26 (+7d) |  |  |
| Duct Banks | **Duct Banks** | 2026-11-07 → 2026-11-14 (+7d) | 2026-11-19 → 2026-11-26 (+7d) |  |  |
| 2 Way | **2 Way** | 2026-11-07 → 2026-11-14 (+7d) | 2026-11-15 → 2026-11-22 (+7d) |  |  |
| B2.33 71 00 02 46 | Excavation | 2026-11-07 → 2026-11-14 (+7d) | 2026-11-08 → 2026-11-15 (+7d) |  |  |
| B2.33 71 00 02 47 | Shuttering, Steel Fixing Incl. UPVC Pipe & Conc. Cast | 2026-11-09 → 2026-11-16 (+7d) | 2026-11-11 → 2026-11-18 (+7d) |  |  |
| B2.33 71 00 02 48 | Backfilling & Warrning Tape | 2026-11-12 → 2026-11-19 (+7d) | 2026-11-15 → 2026-11-22 (+7d) |  |  |
| 4 Way | **4 Way** | 2026-11-09 → 2026-11-16 (+7d) | 2026-11-19 → 2026-11-26 (+7d) |  |  |
| B2.33 71 00 02 49 | Excavation | 2026-11-09 → 2026-11-16 (+7d) | 2026-11-10 → 2026-11-17 (+7d) |  |  |

| ID | Task | Start | Finish | Total float |
| --- | --- | --- | --- | --- |
| B2.33 71 00 02 50 | Shuttering, Steel Fixing Incl. UPVC Pipe & Conc. Cast | 2026-11-11 → 2026-11-18 (+7d) | 2026-11-14 → 2026-11-21 (+7d) |  |
| B2.33 71 00 02 51 | Backfilling & Warrning Tape | 2026-11-17 → 2026-11-24 (+7d) | 2026-11-19 → 2026-11-26 (+7d) |  |
| Cables | **Cables** | 2026-11-15 → 2026-11-22 (+7d) | 2026-11-16 → 2026-11-23 (+7d) |  |
| 4C,10+1C,10mm2 | **4C,10+1C,10mm2** | 2026-11-15 → 2026-11-22 (+7d) | 2026-11-16 → 2026-11-23 (+7d) |  |
| B2.33 71 00 01 1 | Cable Pulling | 2026-11-15 → 2026-11-22 (+7d) | 2026-11-16 → 2026-11-23 (+7d) |  |
| Street Lighting | **Street Lighting** | 2026-11-07 → 2026-11-14 (+7d) |  |  |
| Duct Banks | **Duct Banks** | 2026-11-11 → 2026-11-18 (+7d) | 2026-11-19 → 2026-11-26 (+7d) |  |
| 4 Way | **4 Way** | 2026-11-11 → 2026-11-18 (+7d) | 2026-11-19 → 2026-11-26 (+7d) |  |
| B2.33 71 00 02 52 | Excavation | 2026-11-11 → 2026-11-18 (+7d) | 2026-11-12 → 2026-11-19 (+7d) |  |
| B2.33 71 00 02 53 | Shuttering, Steel Fixing Incl. UPVC Pipe & Conc. Cast | 2026-11-14 → 2026-11-21 (+7d) | 2026-11-16 → 2026-11-23 (+7d) |  |
| B2.33 71 00 02 54 | Backfilling & Warrning Tape | 2026-11-17 → 2026-11-24 (+7d) | 2026-11-19 → 2026-11-26 (+7d) |  |
| Drawpits | **Drawpits** | 2026-11-14 → 2026-11-21 (+7d) | 2026-11-23 → 2026-11-30 (+7d) |  |
| B2.33 71 00 02 55 | Excavation | 2026-11-14 → 2026-11-21 (+7d) | 2026-11-16 → 2026-11-23 (+7d) | 62.32d → 69.32d |
| B2.33 71 00 02 56 | Drawpits Installation | 2026-11-17 → 2026-11-24 (+7d) | 2026-11-19 → 2026-11-26 (+7d) | 62.32d → 69.32d |
| B2.33 71 00 02 57 | Backfilling & Warrning Tape | 2026-11-21 → 2026-11-28 (+7d) | 2026-11-23 → 2026-11-30 (+7d) | 62.32d → 69.32d |
| Cables | **Cables** | 2026-11-17 → 2026-11-24 (+7d) | 2026-11-25 → 2026-12-02 (+7d) |  |
| 4C,10+1C,10mm2 | **4C,10+1C,10mm2** | 2026-11-17 → 2026-11-24 (+7d) | 2026-11-25 → 2026-12-02 (+7d) |  |
| B2.33 71 19 82 | Land Adjustment | 2026-11-17 → 2026-11-24 (+7d) | 2026-11-19 → 2026-11-26 (+7d) |  |
| B2.33 71 49.23.122 | Cable Pulling | 2026-11-21 → 2026-11-28 (+7d) | 2026-11-22 → 2026-11-29 (+7d) |  |
| B2.33 71 19 92 | Backfilling | 2026-11-23 → 2026-11-30 (+7d) | 2026-11-25 → 2026-12-02 (+7d) |  |
| SL Poles | **SL Poles** | 2026-11-07 → 2026-11-14 (+7d) | 2026-12-02 → 2026-11-28 (-4d) |  |
| Pole (10 M Sngl Arm) | **Pole (10 M Single Arm)** | 2026-11-07 → 2026-11-14 (+7d) | 2026-12-02 → 2026-11-28 (-4d) |  |
| B2.33 71 16.39 | Excavation | 2026-11-07 → 2026-11-14 (+7d) | 2026-11-09 → 2026-11-16 (+7d) |  |
| B2.33 71 16.40 | PC & RC Foundation | 2026-11-10 → 2026-11-17 (+7d) | 2026-11-12 → 2026-11-19 (+7d) |  |
| B2.33 71 16.41 | Lighting Poles Installation Incl power box, Cables | 2026-11-14 → 2026-11-21 (+7d) | 2026-11-16 → 2026-11-23 (+7d) |  |
| B2.26.56.19.3 | Lighting Luminares Inst | 2026-11-17 → 2026-11-24 (+7d) | 2026-11-18 → 2026-11-25 (+7d) |  |
| B2.33 71 16.42 | Backfilling, Grouting & Chamfering | 2026-12-01 → 2026-11-26 (-5d) | 2026-12-02 → 2026-11-28 (-4d) | 59.32d → 69.32d |
| Telecommunication | **Telecommunication Network** | 2026-11-21 → 2026-11-28 (+7d) | 2026-12-01 → 2026-12-08 (+7d) |  |
| Ducts | **Ducts** | 2026-11-21 → 2026-11-28 (+7d) | 2026-11-28 → 2026-12-05 (+7d) |  |
| (6*50mm) | **Size (6*50mm) HDPE ducts** | 2026-11-21 → 2026-11-28 (+7d) | 2026-11-25 → 2026-12-02 (+7d) |  |
| B2.1.33 81 26.69 | Excavation | 2026-11-21 → 2026-11-28 (+7d) | 2026-11-21 → 2026-11-28 (+7d) |  |
| B2.1.33 81 26.70 | HDPE Pipe, Shuttering, Steel Fixing & Conc. Cast | 2026-11-22 → 2026-11-29 (+7d) | 2026-11-23 → 2026-11-30 (+7d) |  |
| B2.1.33 81 26.71 | Backfilling & Warrning Tape | 2026-11-24 → 2026-12-01 (+7d) | 2026-11-25 → 2026-12-02 (+7d) |  |
| (2*32mm) | **Size (2*32mm) HDPE ducts** | 2026-11-22 → 2026-11-29 (+7d) | 2026-11-28 → 2026-12-05 (+7d) |  |
| B2.1.33 81 26.78 | Excavation | 2026-11-22 → 2026-11-29 (+7d) | 2026-11-22 → 2026-11-29 (+7d) |  |
| B2.1.33 81 26.79 | HDPE Pipe, Shuttering, Steel Fixing & Conc. Cast | 2026-11-23 → 2026-11-30 (+7d) | 2026-11-24 → 2026-12-01 (+7d) |  |
| B2.1.33 81 26.80 | Backfilling & Warrning Tape | 2026-11-26 → 2026-12-03 (+7d) | 2026-11-28 → 2026-12-05 (+7d) |  |
| (4*32mm) | **Size (4*32mm) HDPE ducts** | 2026-11-23 → 2026-11-30 (+7d) | 2026-11-28 → 2026-12-05 (+7d) |  |
| B2.1.33 81 26.81 | Excavation | 2026-11-23 → 2026-11-30 (+7d) | 2026-11-23 → 2026-11-30 (+7d) |  |
| B2.1.33 81 26.82 | HDPE Pipe, Shuttering, Steel Fixing & Conc. Cast | 2026-11-24 → 2026-12-01 (+7d) | 2026-11-25 → 2026-12-02 (+7d) |  |
| B2.1.33 81 26.83 | Backfilling & Warrning Tape | 2026-11-26 → 2026-12-03 (+7d) | 2026-11-28 → 2026-12-05 (+7d) |  |
| Manholes | **Manholes** | 2026-11-23 → 2026-11-30 (+7d) | 2026-11-30 → 2026-12-07 (+7d) |  |
| Manhole Type 2 | **Manhole Type 2** | 2026-11-23 → 2026-11-30 (+7d) | 2026-11-30 → 2026-12-07 (+7d) |  |
| B2.31 23 00.607 | Excavation | 2026-11-23 → 2026-11-30 (+7d) | 2026-11-23 → 2026-11-30 (+7d) |  |
| B2.33 71 00.222 | Manhole Installation | 2026-11-24 → 2026-12-01 (+7d) | 2026-11-24 → 2026-12-01 (+7d) |  |
| B2.33 71 00.223 | Backfilling & Warrning Tape | 2026-11-29 → 2026-12-06 (+7d) | 2026-11-30 → 2026-12-07 (+7d) |  |
| Crossing Ducts | **Road Crossing Ducts** | 2026-11-24 → 2026-12-01 (+7d) | 2026-12-01 → 2026-12-08 (+7d) |  |
| 1 | **Size (6*50mm) HDPE** | 2026-11-24 → 2026-12-01 (+7d) | 2026-11-29 → 2026-12-06 (+7d) |  |
| B2.31 23 00.608 | Excavation | 2026-11-24 → 2026-12-01 (+7d) | 2026-11-24 → 2026-12-01 (+7d) |  |
| B2.33 71 00.224 | Shuttering, Steel Fixing Incl. UPVC Pipe & Conc. Cast | 2026-11-25 → 2026-12-02 (+7d) | 2026-11-26 → 2026-12-03 (+7d) |  |
| B2.33 71 00.225 | Backfilling & Warrning Tape | 2026-11-28 → 2026-12-05 (+7d) | 2026-11-29 → 2026-12-06 (+7d) |  |
| 2 | **Size (2*32mm) HDPE** | 2026-11-25 → 2026-12-02 (+7d) | 2026-12-01 → 2026-12-08 (+7d) |  |
| B2.31 23 00.609 | Excavation | 2026-11-25 → 2026-12-02 (+7d) | 2026-11-25 → 2026-12-02 (+7d) |  |
| B2.33 71 00.226 | Shuttering, Steel Fixing Incl. UPVC Pipe & Conc. Cast | 2026-11-26 → 2026-12-03 (+7d) | 2026-11-28 → 2026-12-05 (+7d) |  |
| B2.33 71 00.227 | Backfilling & Warrning Tape | 2026-11-30 → 2026-12-07 (+7d) | 2026-12-01 → 2026-12-08 (+7d) |  |
| Earth & Road Works | **Earth & Road Works** |  | 2026-12-09 → 2026-12-14 (+5d) |  |
| Earth Layers | **Earth Layers** |  | 2026-10-08 → 2026-10-15 (+7d) |  |
| B1.2.32 11 13.01.4_R | Subgrade(Rem) | 2026-10-07 → 2026-10-14 (+7d) | 2026-10-08 → 2026-10-15 (+7d) |  |
| B1.2.32 11 23.01.4_R | Aggregate Base Course(Rem) | 2026-10-07 → 2026-10-14 (+7d) | 2026-10-08 → 2026-10-15 (+7d) |  |
| Interlock | **Interlock** | 2026-12-03 → 2026-11-29 (-4d) | 2026-12-05 → 2026-11-30 (-5d) |  |
| B1.2.32 14 13.13.4 | 60mm thick - Interlocking Block Pavers | 2026-12-03 → 2026-11-29 (-4d) | 2026-12-05 → 2026-11-30 (-5d) | 59.32d → 69.32d |
| Curbstone | **Curbstone** | 2026-10-15 → 2026-10-22 (+7d) | 2026-11-01 → 2026-11-08 (+7d) |  |
| Pre Install | **Pre-Installation** | 2026-10-15 → 2026-10-22 (+7d) | 2026-10-22 → 2026-10-29 (+7d) |  |
| B2.31 23 00.91 | Excavation | 2026-10-15 → 2026-10-22 (+7d) | 2026-10-18 → 2026-10-25 (+7d) |  |
| B1.2.32 14 13.13.24 | PCC | 2026-10-18 → 2026-10-25 (+7d) | 2026-10-20 → 2026-10-27 (+7d) |  |
| 32 16 13.004 | Haunching | 2026-10-20 → 2026-10-27 (+7d) | 2026-10-22 → 2026-10-29 (+7d) |  |
| Installation | **Installation** | 2026-10-22 → 2026-10-29 (+7d) | 2026-10-29 → 2026-11-05 (+7d) |  |
| B1.2.32 16.13.01.4 | Curb Stone, Type K1 | 2026-10-22 → 2026-10-29 (+7d) | 2026-10-25 → 2026-11-01 (+7d) |  |
| B1.2.32 16.13.03.4 | Edge Curb, Type K4 | 2026-10-25 → 2026-11-01 (+7d) | 2026-10-27 → 2026-11-03 (+7d) |  |
| B1.2.32 16.13.044 | Heel Curb, Type K5 | 2026-10-27 → 2026-11-03 (+7d) | 2026-10-29 → 2026-11-05 (+7d) |  |

| ID | Task | Start | Finish | Complete | Total float |
| --- | --- | --- | --- | --- | --- |
| Finishing | **Finishing** | 2026-10-29 → 2026-11-05 (+7d) | 2026-11-01 → 2026-11-08 (+7d) |  |  |
| 32 16 13.04 | Finishing, Fareface | 2026-10-29 → 2026-11-05 (+7d) | 2026-11-01 → 2026-11-08 (+7d) |  |  |
| Asphalt Layers | **Asphalt Layers** | 2026-10-12 → 2026-10-19 (+7d) | 2026-10-19 → 2026-10-26 (+7d) |  |  |
| B1.2.32 11 26.01.4 | Bituminous Base Course including Prime Coat (MC1) and tack coat (RC2) | 2026-10-12 → 2026-10-19 (+7d) | 2026-10-13 → 2026-10-20 (+7d) |  |  |
| B1.2.32 12 16.01.4 | Bituminous concrete Wearing Course, including tack coat (RC2) | 2026-10-14 → 2026-10-21 (+7d) | 2026-10-19 → 2026-10-26 (+7d) |  |  |
| Pavement Marking | **Pavement Marking** | 2026-10-20 → 2026-10-27 (+7d) | 2026-10-21 → 2026-10-28 (+7d) |  |  |
| B1.2.32 17 23.01.4 | Retroreflective Thermoplastic White Traffic lines | 2026-10-20 → 2026-10-27 (+7d) | 2026-10-21 → 2026-10-28 (+7d) |  |  |
| B1.2.32 17 23.02.4 | Retroreflective Thermoplastic Yellow, Traffic lines | 2026-10-20 → 2026-10-27 (+7d) | 2026-10-21 → 2026-10-28 (+7d) |  |  |
| Traffic Signs | **Traffic Signs** | 2026-10-15 → 2026-10-22 (+7d) | 2026-12-09 → 2026-12-14 (+5d) |  |  |
| Pre Install | **Pre-Installation** | 2026-10-15 → 2026-10-22 (+7d) | 2026-12-08 → 2026-11-21 (-17d) |  |  |
| B2.31 23 00.101 | Excavation | 2026-10-15 → 2026-10-22 (+7d) | 2026-10-18 → 2026-10-25 (+7d) |  |  |
| 10 14 53.04 | Foundation | 2026-12-07 → 2026-11-18 (-19d) | 2026-12-08 → 2026-11-21 (-17d) |  | 6.32d → 28d |
| Installation | **Installation** | 2026-12-06 → 2026-12-01 (-5d) | 2026-12-09 → 2026-12-14 (+5d) |  |  |
| B1.2.10 14 53.014 | 1 Sheet Alumenium, Single post | 2026-12-06 → 2026-12-01 (-5d) | 2026-12-06 → 2026-12-01 (-5d) |  | 59.32d → 69.32d |
| B1.2.10 14 14.01.4 | Ground mounted, 1 Sheet Alumenium, Single post | 2026-12-09 → 2026-12-13 (+4d) | 2026-12-09 → 2026-12-14 (+5d) |  | 56.32d → 59d |
| Landscape | **Landscape** | 2026-10-18 → 2026-10-15 (-3d) | 2027-01-04 → 2027-01-11 (+7d) |  |  |
| Fences | **Fences** | 2026-10-18 → 2026-10-25 (+7d) | 2027-01-04 → 2027-01-11 (+7d) |  |  |
| (ZATCA HCIS) | **Steel fence (ZATCA HCIS)** | 2026-10-18 → 2026-10-25 (+7d) | 2027-01-04 → 2027-01-11 (+7d) |  |  |
| B7.32 93 43.04.14 | Earthwork | 2026-10-18 → 2026-10-25 (+7d) | 2026-10-24 → 2026-10-31 (+7d) |  |  |
| B7.32 93 43.04.50 | Foundation | 2026-12-02 → 2026-11-14 (-18d) | 2026-12-08 → 2026-11-21 (-17d) |  | 6.32d → 28d |
| B7.32 93 43.04.56 | Fence Installation | 2026-12-29 → 2027-01-05 (+7d) | 2027-01-04 → 2027-01-11 (+7d) |  |  |
| (MODON) fence | **Steel fence (MODON)** | 2026-10-24 → 2026-10-31 (+7d) | 2026-12-27 → 2026-11-28 (-29d) |  |  |
| B7.32 93 43.04.12 | Earthwork | 2026-10-24 → 2026-10-31 (+7d) | 2026-10-31 → 2026-11-07 (+7d) |  |  |
| B7.32 93 43.04.48 | Foundation | 2026-12-09 → 2026-11-21 (-18d) | 2026-12-12 → 2026-11-24 (-18d) |  | 6.32d → 28d |
| B7.32 93 43.04.54 | Fence Installation | 2026-12-24 → 2026-11-24 (-30d) | 2026-12-27 → 2026-11-28 (-29d) |  | 10.32d → 42d |
| Gates | **Gates** | 2026-11-25 → 2026-11-07 (-18d) |  |  |  |
| Size (4.35x 2.7)m | **Size (4.35x 2.7)m** | 2026-11-25 → 2026-11-07 (-18d) |  |  |  |
| B7.32 93 43.04.10 | Earthwork | 2026-11-25 → 2026-11-07 (-18d) | 2026-11-30 → 2026-11-12 (-18d) |  | 6.32d → 28d |
| B7.32 93 43.04.46 | Foundation | 2026-12-13 → 2026-11-24 (-19d) | 2026-12-15 → 2026-11-28 (-17d) |  | 6.32d → 28d |
| B7.32 93 43.04.52 | Gate Installation | 2026-12-16 → 2026-12-15 (-1d) |  |  | 6.32d → 13d |
| Geotextile | **Geotextile** | 2026-11-23 → 2026-10-15 (-39d) | 2026-12-06 → 2026-11-18 (-18d) |  |  |
| B7.31 32 19.23.2 | Geotextile to protect trees planting soil | 2026-11-23 → 2026-10-15 (-39d) | 2026-11-28 → 2026-10-21 (-38d) |  | 30.32d → 68.82d |
| B7.31 32 19.23.3 | Geotextile below gravel bed | 2026-12-01 → 2026-11-12 (-19d) | 2026-12-06 → 2026-11-18 (-18d) |  | 6.32d → 28d |
| Trees | **Trees** | 2026-12-21 → 2026-10-18 (-64d) | 2026-12-27 → 2026-10-29 (-59d) |  |  |
| B7.32 93 43.01 | Azadirachta indica | 2026-12-21 → 2026-10-18 (-64d) | 2026-12-23 → 2026-10-21 (-63d) |  | 8.32d → 68.82d |
| B7.32 93 43.04 | Delonix Regia | 2026-12-24 → 2026-10-27 (-58d) | 2026-12-27 → 2026-10-29 (-59d) |  | 8.32d → 64.32d |
| B7.32 93 43.06 | Schinus Molle | 2026-12-24 → 2026-10-27 (-58d) | 2026-12-27 → 2026-10-29 (-59d) |  | 8.32d → 64.32d |
| Entrance Road 02 | **Entrance Road 02** |  | 2027-01-09 → 2027-01-16 (+7d) |  |  |
| Wet Networks | **Wet Networks** |  | 2026-11-26 → 2026-12-03 (+7d) |  |  |
| Sewerage Network | **Sewerage Network** |  | 2026-11-17 → 2026-11-24 (+7d) |  |  |
| B5.33 31 00.02.02 5_R | Backfilling & Warrning Tape(Rem) | 2026-10-07 A | 2026-10-12 A | 0% → 100% | 105.24d → none |
| Manholes | **Manholes ?1200** |  | 2026-10-11 → 2026-10-18 (+7d) |  |  |
| 2 | **Depth From 0.0m to 1.5m** |  | 2026-10-11 → 2026-10-18 (+7d) |  |  |
| B5.33 05 13.01 4_R | Test, Internal Finishing, Benching & Cover(Rem) | 2026-10-07 → 2026-10-14 (+7d) | 2026-10-10 → 2026-10-17 (+7d) |  |  |
| B5.33 05 13.01 5_R | Backfilling(Rem) | 2026-10-07 → 2026-10-14 (+7d) | 2026-10-11 → 2026-10-18 (+7d) |  |  |
| 3 | **Depth From 1.5m to 2.5m** |  | 2026-10-11 → 2026-10-18 (+7d) |  |  |
| B5.33 05 13.02 2_R | Blinding Conc, & RC Base(Rem) | 2026-10-07 → 2026-10-14 (+7d) | 2026-10-10 → 2026-10-17 (+7d) |  |  |
| B5.33 05 13.02 3_R | Manhole Installation(Rem) | 2026-10-07 → 2026-10-14 (+7d) | 2026-10-08 → 2026-10-15 (+7d) |  |  |
| B5.33 05 13.02 4_R | Test, Internal Finishing, Benching & Cover(Rem) | 2026-10-07 → 2026-10-14 (+7d) | 2026-10-10 → 2026-10-17 (+7d) |  |  |
| B5.33 05 13.02 5_R | Backfilling(Rem) | 2026-10-07 → 2026-10-14 (+7d) | 2026-10-11 → 2026-10-18 (+7d) |  |  |
| Sew Plot Connection | **Sewerage Plot Connection** | 2026-10-14 → 2026-10-21 (+7d) | 2026-11-17 → 2026-11-24 (+7d) |  |  |
| B5..33 31 16.011 | Excavation | 2026-10-14 → 2026-10-21 (+7d) | 2026-10-26 → 2026-11-02 (+7d) |  |  |
| B5..33 31 16.012 | Sand Bedding | 2026-10-26 → 2026-11-02 (+7d) | 2026-10-28 → 2026-11-04 (+7d) |  |  |
| B5..33 31 16.013 | Pipe Laying, Fittings | 2026-10-28 → 2026-11-04 (+7d) | 2026-11-01 → 2026-11-08 (+7d) |  |  |
| B5..33 31 16.014 | Embedment & Test | 2026-11-01 → 2026-11-08 (+7d) | 2026-11-05 → 2026-11-12 (+7d) |  |  |
| B5..33 31 16.015 | Backfilling & Warrning Tape | 2026-11-05 → 2026-11-12 (+7d) | 2026-11-17 → 2026-11-24 (+7d) |  |  |
| Discharge Ch | **Discharge Chamber** | 2026-10-07 → 2026-10-14 (+7d) | 2026-11-04 → 2026-11-07 (+3d) |  |  |
| B5.33 05 63.011 | Excavation & Compaction | 2026-10-07 → 2026-10-14 (+7d) | 2026-10-10 → 2026-10-17 (+7d) |  |  |
| B5.33 05 63.012 | Blinding Conc, & RC Base | 2026-10-11 → 2026-10-18 (+7d) | 2026-10-13 → 2026-10-20 (+7d) |  |  |
| B5.33 05 63.013 | Chamber Installation | 2026-10-19 → 2026-10-21 (+2d) | 2026-10-25 → 2026-10-27 (+2d) |  | 88.32d → 92.32d |
| B5.33 05 63.014 | Test, Internal Finishing, Benching & Cover | 2026-10-26 → 2026-10-28 (+2d) | 2026-10-29 → 2026-11-01 (+3d) |  | 88.32d → 92.32d |
| B5.33 05 63.015 | Backfilling | 2026-10-31 → 2026-11-02 (+2d) | 2026-11-04 → 2026-11-07 (+3d) |  | 88.32d → 92.32d |
| Stormwater Network | **Stormwater Network** |  | 2026-10-27 → 2026-10-28 (+1d) |  |  |
| GRP | **GRP** |  | 2026-10-11 → 2026-10-18 (+7d) |  |  |
| ?400 | **?400** |  | 2026-10-11 → 2026-10-18 (+7d) |  |  |
| 3 | **Depth From 1.5m to 2.5m** |  | 2026-10-11 → 2026-10-18 (+7d) |  |  |
| B6.33 42 11.02 5_R | Backfilling & Warrning Tape(Rem) | 2026-10-07 → 2026-10-14 (+7d) | 2026-10-11 → 2026-10-18 (+7d) |  |  |
| Strom Manholes | **Manholes** |  | 2026-10-21 → 2026-10-28 (+7d) |  |  |
| 1 | **?1200** |  | 2026-10-21 → 2026-10-28 (+7d) |  |  |
| 3 | **Depth From 1.5m to 2.5m** |  | 2026-10-21 → 2026-10-28 (+7d) |  |  |

| ID | Task | Start | Finish | Complete | Total float |
| --- | --- | --- | --- | --- | --- |
| B6.33 05 13.01 3_R | Manhole Installation(Rem) | 2026-10-07 → 2026-10-14 (+7d) | 2026-10-08 → 2026-10-15 (+7d) |  |  |
| B6.33 05 13.01 4_R | Test, Internal Finishing, Benching & Cover(Rem) | 2026-10-07 → 2026-10-14 (+7d) | 2026-10-08 → 2026-10-15 (+7d) |  |  |
| B6.33 05 13.01 5_R | Backfilling(Rem) | 2026-10-17 → 2026-10-24 (+7d) | 2026-10-21 → 2026-10-28 (+7d) |  |  |
| 3 | **?2000** |  | 2026-10-08 → 2026-10-15 (+7d) |  |  |
| 4 | **Depth From 2.5m to 3.5m** |  | 2026-10-08 → 2026-10-15 (+7d) |  |  |
| B6.33 05 13.07 4_R | Test, Internal Finishing, Benching & Cover(Rem) | 2026-10-07 → 2026-10-14 (+7d) | 2026-10-08 → 2026-10-15 (+7d) |  |  |
| Sing | **Single** |  | 2026-10-08 → 2026-10-15 (+7d) |  |  |
| B6.33 05 40.01.210_R | Excavation, Compaction & Vapour Barrier(Rem) | 2026-10-07 → 2026-10-14 (+7d) | 2026-10-08 → 2026-10-15 (+7d) |  | 59.32d → 101.32d |
| Dou | **Double** | 2026-10-10 → 2026-10-14 (+4d) |  |  |  |
| B6.33 05 40.01.800 | Backfilling, DI Frame & Grate Cover Fixing | 2026-10-21 → 2026-10-14 (-7d) | 2026-10-27 → 2026-10-21 (-6d) |  | 59.32d → 70.58d |
| B6.33 05 40.01.770 | Excavation, Compaction & Vapour Barrier | 2026-10-10 → 2026-10-17 (+7d) | 2026-10-12 → 2026-10-19 (+7d) |  | 59.32d → 101.32d |
| B6.33 05 40.01.780 | Blinding Conc. | 2026-10-13 → 2026-10-20 (+7d) | 2026-10-15 → 2026-10-22 (+7d) |  | 59.32d → 101.32d |
| B6.33 05 40.01.790 | Catch Basin Installation | 2026-10-17 → 2026-10-24 (+7d) | 2026-10-20 → 2026-10-27 (+7d) |  | 59.32d → 101.32d |
| UPVC | **UPVC** |  | 2026-10-20 → 2026-10-27 (+7d) |  |  |
| UPVC300 | **?300 From 0.0 to 1.5m** |  | 2026-10-10 → 2026-10-14 (+4d) |  |  |
| B6.33 42 11.35 1_R | Catch Basin Opening Prep.(Rem) | 2026-10-07 A | 2026-10-10 → 2026-10-14 (+4d) | 0% → 63% | 111.23d → 112.55d |
| B6.33 42 11.35 2_R | Fittings & Pipe Installation(Rem) | 2026-10-07 A | 2026-10-10 → 2026-10-14 (+4d) | 0% → 63% | 111.23d → 112.55d |
| UPVC3001 | **?400 From 0.0 to 1.5m** |  | 2026-10-20 → 2026-10-27 (+7d) |  |  |
| B6.33 42 11.36 1_R | Catch Basin Opening Prep.(Rem) | 2026-10-19 → 2026-10-10 A (-9d) | 2026-10-20 → 2026-10-27 (+7d) | 0% → 63% | 59.32d → 101.32d |
| B6.33 42 11.36 2_R | Fittings & Pipe Installation(Rem) | 2026-10-19 → 2026-10-11 A (-8d) | 2026-10-20 → 2026-10-14 (-6d) | 0% → 63% | 59.32d → 70.58d |
| Potable Water | **Potable Water Network** |  | 2026-11-26 → 2026-12-03 (+7d) |  |  |
| Crossing | **Plots and Buildings Crossing** | 2026-10-26 → 2026-11-02 (+7d) | 2026-11-14 → 2026-11-21 (+7d) |  |  |
| B3.33 14 13.02.011 | Earthwork | 2026-10-26 → 2026-11-02 (+7d) | 2026-11-02 → 2026-11-09 (+7d) |  | 64.32d → 69.32d |
| B3.33 14 13.02.012 | Sand Bedding | 2026-11-03 → 2026-11-10 (+7d) | 2026-11-05 → 2026-11-12 (+7d) |  |  |
| B3.33 14 13.02.013 | Tee, Pipe (Crossing) Installation & Backfilling | 2026-11-07 → 2026-11-14 (+7d) | 2026-11-14 → 2026-11-21 (+7d) |  |  |
| Valves & Chambers | **Valves & Chambers** |  | 2026-11-26 → 2026-12-03 (+7d) |  |  |
| GV | **Gate Valves** |  | 2026-11-10 → 2026-11-17 (+7d) |  |  |
| 1 | **Gate valves dia (110) mm** |  | 2026-11-10 → 2026-11-17 (+7d) |  |  |
| B3.33 14 19.01.109 | Spindle & Surface Box | 2026-11-08 → 2026-11-15 (+7d) | 2026-11-10 → 2026-11-17 (+7d) |  |  |
| Washout Valves | **Washout Valves** | 2026-11-03 → 2026-11-10 (+7d) | 2026-11-26 → 2026-12-03 (+7d) |  |  |
| 4 | **Washout valves on 110-400 mm. (In Chamber)** | 2026-11-03 → 2026-11-10 (+7d) | 2026-11-26 → 2026-12-03 (+7d) |  |  |
| B3.33 05 63.01.011 | Land Adjustment & Compaction | 2026-11-03 → 2026-11-10 (+7d) | 2026-11-05 → 2026-11-12 (+7d) |  | 64.32d → 69.32d |
| B3.33 05 63.01.012 | Foundations | 2026-11-07 → 2026-11-14 (+7d) | 2026-11-10 → 2026-11-17 (+7d) |  | 64.32d → 69.32d |
| B3.33 05 63.01.013 | Chambers Walls Conc Cast In Situ | 2026-11-11 → 2026-11-18 (+7d) | 2026-11-15 → 2026-11-22 (+7d) |  | 64.32d → 69.32d |
| B3.33 05 63.01.014 | Chamber Curing, Finishing & Steel Cover | 2026-11-16 → 2026-11-23 (+7d) | 2026-11-21 → 2026-11-28 (+7d) |  | 64.32d → 69.32d |
| B3.33 05 63.01.015 | Valve & Fitting Installation | 2026-11-22 → 2026-11-29 (+7d) | 2026-11-26 → 2026-12-03 (+7d) |  | 64.32d → 69.32d |
| Fire Fighting | **Fire Fighting Network** |  | 2026-11-15 → 2026-11-17 (+2d) |  |  |
| HDPE | **HDPE Pipes** |  | 2026-10-11 → 2026-10-18 (+7d) |  |  |
| ?250mm | **?250mm** |  | 2026-10-11 → 2026-10-18 (+7d) |  |  |
| Depth: 1.51m - 2.5m | **Depth: 1.51m - 2.5m** |  | 2026-10-11 → 2026-10-18 (+7d) |  |  |
| B3.1. 33 14 13.01 1_R | Excavation(Rem) | 2026-10-07 → 2026-10-14 (+7d) | 2026-10-11 → 2026-10-18 (+7d) |  | 61.32d → 83.32d |
| B3.1. 33 14 13.01 2_R | Sand Bedding(Rem) | 2026-10-07 → 2026-10-14 (+7d) | 2026-10-11 → 2026-10-18 (+7d) |  | 61.32d → 83.32d |
| B3.1. 33 14 13.01 3_R | Pipe Laying(Rem) | 2026-10-07 → 2026-10-14 (+7d) | 2026-10-11 → 2026-10-18 (+7d) |  | 61.32d → 83.32d |
| B3.1. 33 14 13.01 4_R | Embedment & Test(Rem) | 2026-10-07 → 2026-10-14 (+7d) | 2026-10-11 → 2026-10-18 (+7d) |  | 64.32d → 83.32d |
| B3.1. 33 14 13.01 5_R | Backfilling & Warrning Tape(Rem) | 2026-10-07 → 2026-10-14 (+7d) | 2026-10-11 → 2026-10-18 (+7d) |  | 84.32d → 103.32d |
| Valves & Chambers | **Valves & Chambers** |  | 2026-11-15 → 2026-11-17 (+2d) |  |  |
| B3.33 14 19.01.124_R | Burried Isolation Valve Installation(Rem) | 2026-10-07 → 2026-10-14 (+7d) | 2026-10-11 → 2026-10-18 (+7d) |  | 64.32d → 83.32d |
| Washout Valves | **Washout Valves** | 2026-10-12 → 2026-10-19 (+7d) | 2026-11-15 → 2026-11-17 (+2d) |  |  |
| 4 | **Washout valves on 110-400 mm. (In Chamber)** | 2026-10-12 → 2026-10-19 (+7d) | 2026-11-15 → 2026-11-17 (+2d) |  |  |
| B3.33 05 63.01.42 | Land Adjustment & Compaction | 2026-10-12 → 2026-10-19 (+7d) | 2026-10-15 → 2026-10-22 (+7d) |  | 64.32d → 83.32d |
| B3.33 05 63.01.40 | Foundations | 2026-10-17 → 2026-10-24 (+7d) | 2026-10-21 → 2026-10-28 (+7d) |  | 64.32d → 83.32d |
| B3.33 05 63.01.43 | Chambers Walls Conc Cast In Situ | 2026-10-22 → 2026-10-29 (+7d) | 2026-10-27 → 2026-11-03 (+7d) |  | 64.32d → 83.32d |
| B3.33 05 63.01.41 | Chamber Curing, Finishing & Steel Cover | 2026-11-02 → 2026-11-04 (+2d) | 2026-11-08 → 2026-11-10 (+2d) |  | 60.32d → 83.32d |
| B3.33 05 63.01.44 | Valve & Fitting Installation | 2026-11-09 → 2026-11-11 (+2d) | 2026-11-15 → 2026-11-17 (+2d) |  | 60.32d → 83.32d |
| 3 | **Fire Hydrant** | 2026-10-12 → 2026-10-19 (+7d) | 2026-10-29 → 2026-11-05 (+7d) |  |  |
| B3.33 14 19.01.fh23 | Riser Pipe & Flanged Fittings Installation | 2026-10-12 → 2026-10-19 (+7d) | 2026-10-15 → 2026-10-22 (+7d) |  | 61.32d → 86.32d |
| B3.33 14 19.01.fh22 | Firehydrant Fixing/Installation | 2026-10-17 → 2026-10-24 (+7d) | 2026-10-21 → 2026-10-28 (+7d) |  | 61.32d → 86.32d |
| B3.33 14 19.01.fh24 | Backfilling & Compaction | 2026-10-22 → 2026-10-29 (+7d) | 2026-10-29 → 2026-11-05 (+7d) |  | 61.32d → 86.32d |
| Dry Networks | **Dry Networks** | 2026-10-12 → 2026-10-19 (+7d) | 2026-11-30 → 2026-12-01 (+1d) |  |  |
| MV | **Medium Voltage Network** | 2026-10-28 → 2026-10-21 (-7d) | 2026-11-17 → 2026-11-24 (+7d) |  |  |
| Duct Banks | **Duct Banks** | 2026-10-28 → 2026-10-21 (-7d) | 2026-11-16 → 2026-11-10 (-6d) |  |  |
| 4 Way | **2 Way** | 2026-10-28 → 2026-10-21 (-7d) | 2026-11-16 → 2026-11-10 (-6d) |  |  |
| B2.31 23 00.638 | Excavation | 2026-10-28 → 2026-10-21 (-7d) | 2026-11-01 → 2026-10-26 (-6d) |  | 59.32d → 70.58d |
| B2.33 71 00.284 | Shuttering, Steel Fixing Incl. UPVC Pipe & Conc. Cast | 2026-11-02 → 2026-10-26 (-7d) | 2026-11-09 → 2026-11-03 (-6d) |  | 59.32d → 70.58d |
| B2.33 71 00.285 | Backfilling & Warrning Tape | 2026-11-10 → 2026-11-03 (-7d) | 2026-11-16 → 2026-11-10 (-6d) |  | 59.32d → 70.58d |
| Cables | **Cables** | 2026-11-07 → 2026-11-14 (+7d) | 2026-11-17 → 2026-11-24 (+7d) |  |  |
| 3C,500mm2 | **3C,500mm2** | 2026-11-07 → 2026-11-14 (+7d) | 2026-11-17 → 2026-11-24 (+7d) |  |  |
| B2.33 71 49.23.71 | Cable 13.8 kV Unarmored | 2026-11-07 → 2026-11-14 (+7d) | 2026-11-10 → 2026-11-17 (+7d) |  |  |
| B2.33 71 49.23.72 | Straight joints cables | 2026-11-11 → 2026-11-18 (+7d) | 2026-11-14 → 2026-11-21 (+7d) |  |  |
| B2.33 71 49.23.73 | Cable Termination | 2026-11-15 → 2026-11-22 (+7d) | 2026-11-17 → 2026-11-24 (+7d) |  |  |

| ID | Task | Start | Finish | Total float |
| --- | --- | --- | --- | --- |
| LV Network | **Low Voltage Network** | 2026-11-07 → 2026-11-14 (+7d) | 2026-11-10 → 2026-11-17 (+7d) |  |
| Cables | **Cables** | 2026-11-07 → 2026-11-14 (+7d) | 2026-11-10 → 2026-11-17 (+7d) |  |
| 4C,10+1C,10mm2 | **4C,10+1C,10mm2** | 2026-11-07 → 2026-11-14 (+7d) | 2026-11-10 → 2026-11-17 (+7d) |  |
| B2.33 71 00 01 9 | Cable Pulling | 2026-11-07 → 2026-11-14 (+7d) | 2026-11-10 → 2026-11-17 (+7d) |  |
| Street Lighting | **Street Lighting** | 2026-10-12 → 2026-10-19 (+7d) | 2026-11-30 → 2026-11-21 (-9d) |  |
| Duct Banks | **Duct Banks** | 2026-11-17 → 2026-11-10 (-7d) | 2026-11-26 → 2026-11-21 (-5d) |  |
| 2 Way | **2 Way** | 2026-11-17 → 2026-11-10 (-7d) | 2026-11-26 → 2026-11-21 (-5d) |  |
| B2.33 71 00 02 58 | Excavation | 2026-11-17 → 2026-11-10 (-7d) | 2026-11-18 → 2026-11-12 (-6d) | 59.32d → 70.58d |
| B2.33 71 00 02 59 | Shuttering, Steel Fixing Incl. UPVC Pipe & Conc. Cast | 2026-11-19 → 2026-11-12 (-7d) | 2026-11-23 → 2026-11-17 (-6d) | 59.32d → 70.58d |
| B2.33 71 00 02 60 | Backfilling & Warrning Tape | 2026-11-24 → 2026-11-17 (-7d) | 2026-11-26 → 2026-11-21 (-5d) | 59.32d → 70.58d |
| Drawpits | **Drawpits** | 2026-11-19 → 2026-11-12 (-7d) | 2026-11-25 → 2026-11-19 (-6d) |  |
| B2.33 71 00 02 61 | Excavation | 2026-11-19 → 2026-11-12 (-7d) | 2026-11-21 → 2026-11-15 (-6d) | 60.32d → 71.58d |
| B2.33 71 00 02 62 | Drawpits Installation | 2026-11-22 → 2026-11-15 (-7d) | 2026-11-23 → 2026-11-17 (-6d) | 60.32d → 71.58d |
| B2.33 71 00 02 63 | Backfilling & Warrning Tape | 2026-11-24 → 2026-11-17 (-7d) | 2026-11-25 → 2026-11-19 (-6d) | 60.32d → 71.58d |
| Cables | **Cables** | 2026-10-28 → 2026-11-04 (+7d) | 2026-11-30 → 2026-11-16 (-14d) |  |
| 4C,10+1C,10mm2 | **4C,10+1C,10mm2** | 2026-10-28 → 2026-11-04 (+7d) | 2026-11-30 → 2026-11-16 (-14d) |  |
| B2.33 71 19 102 | Land Adjustment | 2026-10-28 → 2026-11-04 (+7d) | 2026-10-31 → 2026-11-07 (+7d) |  |
| B2.33 71 49.23.132 | Cable Pulling | 2026-11-01 → 2026-11-08 (+7d) | 2026-11-05 → 2026-11-12 (+7d) |  |
| B2.33 71 19 112 | Backfilling | 2026-11-28 → 2026-11-14 (-14d) | 2026-11-30 → 2026-11-16 (-14d) | 62.32d → 80.32d |
| SL Poles | **SL Poles** | 2026-10-12 → 2026-10-19 (+7d) | 2026-11-02 → 2026-11-09 (+7d) |  |
| Pole (10 M Sngl Arm) | **Pole (10 M Single Arm)** | 2026-10-12 → 2026-10-19 (+7d) | 2026-10-27 → 2026-11-03 (+7d) |  |
| B2.33 71 16.43 | Excavation | 2026-10-12 → 2026-10-19 (+7d) | 2026-10-13 → 2026-10-20 (+7d) |  |
| B2.33 71 16.44 | PC & RC Foundation | 2026-10-14 → 2026-10-21 (+7d) | 2026-10-17 → 2026-10-24 (+7d) |  |
| B2.33 71 16.45 | Lighting Poles Installation Incl power box, Cables | 2026-10-18 → 2026-10-25 (+7d) | 2026-10-20 → 2026-10-27 (+7d) |  |
| B2.26.56.19.4 | Lighting Luminares Inst | 2026-10-21 → 2026-10-28 (+7d) | 2026-10-24 → 2026-10-31 (+7d) |  |
| B2.33 71 16.46 | Backfilling, Grouting & Chamfering | 2026-10-25 → 2026-11-01 (+7d) | 2026-10-27 → 2026-11-03 (+7d) |  |
| Pole (10 M Dbl Arm) | **Pole (10 M Double Arm)** | 2026-10-14 → 2026-10-21 (+7d) | 2026-11-02 → 2026-11-09 (+7d) |  |
| B2.33 71 16.47 | Excavation | 2026-10-14 → 2026-10-21 (+7d) | 2026-10-15 → 2026-10-22 (+7d) |  |
| B2.33 71 16.48 | PC & RC Foundation | 2026-10-17 → 2026-10-24 (+7d) | 2026-10-20 → 2026-10-27 (+7d) |  |
| B2.33 71 16.49 | Lighting Poles Installation Incl power box, Cables | 2026-10-21 → 2026-10-28 (+7d) | 2026-10-24 → 2026-10-31 (+7d) |  |
| B2.26.56.19.5 | Lighting Luminares Inst | 2026-10-25 → 2026-11-01 (+7d) | 2026-10-27 → 2026-11-03 (+7d) |  |
| B2.33 71 16.50 | Backfilling, Grouting & Chamfering | 2026-10-28 → 2026-11-04 (+7d) | 2026-11-02 → 2026-11-09 (+7d) |  |
| SL Pillars | **SL Pillars** | 2026-10-25 → 2026-11-01 (+7d) | 2026-10-28 → 2026-11-04 (+7d) |  |
| B2.33 71 26 031 | Pillars Installation (Internal Wiring) | 2026-10-25 → 2026-11-01 (+7d) | 2026-10-26 → 2026-11-02 (+7d) |  |
| B2.33 71 26 042 | KWH meter mounting a frame installation | 2026-10-27 → 2026-11-03 (+7d) | 2026-10-28 → 2026-11-04 (+7d) |  |
| Telecommunication | **Telecommunication Network** | 2026-11-07 → 2026-11-14 (+7d) | 2026-11-24 → 2026-12-01 (+7d) |  |
| Ducts | **Ducts** | 2026-11-07 → 2026-11-14 (+7d) | 2026-11-22 → 2026-11-29 (+7d) |  |
| (6*50mm) | **Size (6*50mm) HDPE ducts** | 2026-11-07 → 2026-11-14 (+7d) | 2026-11-17 → 2026-11-24 (+7d) |  |
| B2.1.33 81 26.84 | Excavation | 2026-11-07 → 2026-11-14 (+7d) | 2026-11-08 → 2026-11-15 (+7d) |  |
| B2.1.33 81 26.85 | HDPE Pipe, Shuttering, Steel Fixing & Conc. Cast | 2026-11-09 → 2026-11-16 (+7d) | 2026-11-10 → 2026-11-17 (+7d) |  |
| B2.1.33 81 26.86 | Backfilling & Warrning Tape | 2026-11-16 → 2026-11-23 (+7d) | 2026-11-17 → 2026-11-24 (+7d) |  |
| (6*50mm+2*32mm) | **Size (6*50mm+2*32mm) HDPE ducts** | 2026-11-09 → 2026-11-16 (+7d) | 2026-11-15 → 2026-11-22 (+7d) |  |
| B2.1.33 81 26.87 | Excavation | 2026-11-09 → 2026-11-16 (+7d) | 2026-11-10 → 2026-11-17 (+7d) |  |
| B2.1.33 81 26.88 | HDPE Pipe, Shuttering, Steel Fixing & Conc. Cast | 2026-11-11 → 2026-11-18 (+7d) | 2026-11-12 → 2026-11-19 (+7d) |  |
| B2.1.33 81 26.89 | Backfilling & Warrning Tape | 2026-11-14 → 2026-11-21 (+7d) | 2026-11-15 → 2026-11-22 (+7d) |  |
| (2*32mm) | **Size (2*32mm) HDPE ducts** | 2026-11-09 → 2026-11-16 (+7d) | 2026-11-15 → 2026-11-22 (+7d) |  |
| B2.1.33 81 26.93 | Excavation | 2026-11-09 → 2026-11-16 (+7d) | 2026-11-10 → 2026-11-17 (+7d) |  |
| B2.1.33 81 26.94 | HDPE Pipe, Shuttering, Steel Fixing & Conc. Cast | 2026-11-11 → 2026-11-18 (+7d) | 2026-11-12 → 2026-11-19 (+7d) |  |
| B2.1.33 81 26.95 | Backfilling & Warrning Tape | 2026-11-14 → 2026-11-21 (+7d) | 2026-11-15 → 2026-11-22 (+7d) |  |
| (4*32mm) | **Size (4*32mm) HDPE ducts** | 2026-11-11 → 2026-11-18 (+7d) | 2026-11-19 → 2026-11-26 (+7d) |  |
| B2.1.33 81 26.96 | Excavation | 2026-11-11 → 2026-11-18 (+7d) | 2026-11-12 → 2026-11-19 (+7d) |  |
| B2.1.33 81 26.97 | HDPE Pipe, Shuttering, Steel Fixing & Conc. Cast | 2026-11-14 → 2026-11-21 (+7d) | 2026-11-15 → 2026-11-22 (+7d) |  |
| B2.1.33 81 26.98 | Backfilling & Warrning Tape | 2026-11-18 → 2026-11-25 (+7d) | 2026-11-19 → 2026-11-26 (+7d) |  |
| (6*50mm+6*32mm) | **Size (6*50mm+6*32mm) HDPE ducts** | 2026-11-14 → 2026-11-21 (+7d) | 2026-11-19 → 2026-11-26 (+7d) |  |
| B2.1.33 81 26.99 | Excavation | 2026-11-14 → 2026-11-21 (+7d) | 2026-11-15 → 2026-11-22 (+7d) |  |
| B2.1.33 81 26.100 | HDPE Pipe, Shuttering, Steel Fixing & Conc. Cast | 2026-11-16 → 2026-11-23 (+7d) | 2026-11-17 → 2026-11-24 (+7d) |  |
| B2.1.33 81 26.101 | Backfilling & Warrning Tape | 2026-11-18 → 2026-11-25 (+7d) | 2026-11-19 → 2026-11-26 (+7d) |  |
| (6*32mm) | **Size (6*32mm) HDPE ducts** | 2026-11-16 → 2026-11-23 (+7d) | 2026-11-22 → 2026-11-29 (+7d) |  |
| B2.1.33 81 26.102 | Excavation | 2026-11-16 → 2026-11-23 (+7d) | 2026-11-17 → 2026-11-24 (+7d) |  |
| B2.1.33 81 26.103 | HDPE Pipe, Shuttering, Steel Fixing & Conc. Cast | 2026-11-18 → 2026-11-25 (+7d) | 2026-11-19 → 2026-11-26 (+7d) |  |
| B2.1.33 81 26.104 | Backfilling & Warrning Tape | 2026-11-21 → 2026-11-28 (+7d) | 2026-11-22 → 2026-11-29 (+7d) |  |
| Manholes | **Manholes** | 2026-11-16 → 2026-11-23 (+7d) | 2026-11-24 → 2026-12-01 (+7d) |  |
| Manhole Type 1 | **Manhole Type 1** | 2026-11-16 → 2026-11-23 (+7d) | 2026-11-22 → 2026-11-29 (+7d) |  |
| B2.31 23 00.610 | Excavation | 2026-11-16 → 2026-11-23 (+7d) | 2026-11-17 → 2026-11-24 (+7d) |  |
| B2.33 71 00.228 | Manhole Installation | 2026-11-18 → 2026-11-25 (+7d) | 2026-11-19 → 2026-11-26 (+7d) |  |
| B2.33 71 00.229 | Backfilling & Warrning Tape | 2026-11-21 → 2026-11-28 (+7d) | 2026-11-22 → 2026-11-29 (+7d) |  |
| Manhole Type 2 | **Manhole Type 2** | 2026-11-18 → 2026-11-25 (+7d) | 2026-11-24 → 2026-12-01 (+7d) |  |
| B2.31 23 00.611 | Excavation | 2026-11-18 → 2026-11-25 (+7d) | 2026-11-19 → 2026-11-26 (+7d) |  |
| B2.33 71 00.230 | Manhole Installation | 2026-11-21 → 2026-11-28 (+7d) | 2026-11-22 → 2026-11-29 (+7d) |  |
| B2.33 71 00.231 | Backfilling & Warrning Tape | 2026-11-23 → 2026-11-30 (+7d) | 2026-11-24 → 2026-12-01 (+7d) |  |

| ID | Task | Start | Finish | Total float |
| --- | --- | --- | --- | --- |
| Crossing Ducts | **Road Crossing Ducts** | 2026-11-19 → 2026-11-26 (+7d) | 2026-11-24 → 2026-12-01 (+7d) |  |
| 2 | **Size (2*32mm) HDPE** | 2026-11-19 → 2026-11-26 (+7d) | 2026-11-24 → 2026-12-01 (+7d) |  |
| B2.31 23 00.613 | Excavation | 2026-11-19 → 2026-11-26 (+7d) | 2026-11-19 → 2026-11-26 (+7d) |  |
| B2.33 71 00.234 | Shuttering, Steel Fixing Incl. UPVC Pipe & Conc. Cast | 2026-11-21 → 2026-11-28 (+7d) | 2026-11-22 → 2026-11-29 (+7d) |  |
| B2.33 71 00.235 | Backfilling & Warrning Tape | 2026-11-23 → 2026-11-30 (+7d) | 2026-11-24 → 2026-12-01 (+7d) |  |
| Earth & Road Works | **Earth & Road Works** |  | 2026-12-17 → 2026-12-24 (+7d) |  |
| Earth Layers | **Earth Layers** |  | 2026-10-08 → 2026-10-15 (+7d) |  |
| B1.2.32 11 13.01.5_R | Subgrade(Rem) | 2026-10-07 → 2026-10-14 (+7d) | 2026-10-08 → 2026-10-15 (+7d) |  |
| B1.2.32 11 23.01.5_R | Aggregate Base Course(Rem) | 2026-10-07 → 2026-10-14 (+7d) | 2026-10-08 → 2026-10-15 (+7d) |  |
| Interlock | **Interlock** | 2026-11-15 → 2026-11-22 (+7d) | 2026-11-18 → 2026-11-25 (+7d) |  |
| B1.2.32 14 13.13.5 | 60mm thick - Interlocking Block Pavers | 2026-11-15 → 2026-11-22 (+7d) | 2026-11-18 → 2026-11-25 (+7d) |  |
| Curbstone | **Curbstone** | 2026-11-10 → 2026-11-17 (+7d) | 2026-11-26 → 2026-12-03 (+7d) |  |
| Pre Install | **Pre-Installation** | 2026-11-10 → 2026-11-17 (+7d) | 2026-11-17 → 2026-11-24 (+7d) |  |
| B2.31 23 00.121 | Excavation | 2026-11-10 → 2026-11-17 (+7d) | 2026-11-12 → 2026-11-19 (+7d) |  |
| B1.2.32 14 13.13.25 | PCC | 2026-11-12 → 2026-11-19 (+7d) | 2026-11-15 → 2026-11-22 (+7d) |  |
| 32 16 13.005 | Haunching | 2026-11-15 → 2026-11-22 (+7d) | 2026-11-17 → 2026-11-24 (+7d) |  |
| Installation | **Installation** | 2026-11-16 → 2026-11-23 (+7d) | 2026-11-26 → 2026-12-03 (+7d) |  |
| B1.2.32 16.13.01.5 | Curb Stone, Type K1 | 2026-11-16 → 2026-11-23 (+7d) | 2026-11-19 → 2026-11-26 (+7d) |  |
| B1.2.32 16.13.02.4 | Dropped Curb, Type K3 | 2026-11-17 → 2026-11-24 (+7d) | 2026-11-19 → 2026-11-26 (+7d) |  |
| B1.2.32 16.13.03.5 | Edge Curb, Type K4 | 2026-11-19 → 2026-11-26 (+7d) | 2026-11-22 → 2026-11-29 (+7d) |  |
| B1.2.32 16.13.045 | Heel Curb, Type K5 | 2026-11-22 → 2026-11-29 (+7d) | 2026-11-24 → 2026-12-01 (+7d) |  |
| B1.2.32 16.13.05.4 | Transition Curb | 2026-11-24 → 2026-12-01 (+7d) | 2026-11-26 → 2026-12-03 (+7d) |  |
| Finishing | **Finishing** | 2026-11-24 → 2026-12-01 (+7d) | 2026-11-26 → 2026-12-03 (+7d) |  |
| 32 16 13.05 | Finishing, Fareface | 2026-11-24 → 2026-12-01 (+7d) | 2026-11-26 → 2026-12-03 (+7d) |  |
| Asphalt Layers | **Asphalt Layers** | 2026-10-10 → 2026-10-17 (+7d) | 2026-12-02 → 2026-12-09 (+7d) |  |
| B1.2.32 11 26.01.5 | Bituminous Base Course including Prime Coat (MC1) and tack coat (RC2) | 2026-10-10 → 2026-10-17 (+7d) | 2026-10-11 → 2026-10-18 (+7d) |  |
| B1.2.32 12 16.01.5 | Bituminous concrete Wearing Course, including tack coat (RC2) | 2026-11-26 → 2026-12-03 (+7d) | 2026-12-02 → 2026-12-09 (+7d) |  |
| Pavement Marking | **Pavement Marking** | 2026-12-02 → 2026-12-09 (+7d) | 2026-12-05 → 2026-12-12 (+7d) |  |
| B1.2.32 17 23.02.5 | Retroreflective Thermoplastic Yellow, Traffic lines | 2026-12-02 → 2026-12-09 (+7d) | 2026-12-03 → 2026-12-10 (+7d) |  |
| B1.2.32 17 23.01.5 | Retroreflective Thermoplastic White Traffic lines | 2026-12-03 → 2026-12-10 (+7d) | 2026-12-05 → 2026-12-12 (+7d) |  |
| Traffic Signs | **Traffic Signs** | 2026-11-24 → 2026-12-01 (+7d) | 2026-12-17 → 2026-12-24 (+7d) |  |
| Pre Install | **Pre-Installation** | 2026-11-24 → 2026-12-01 (+7d) | 2026-11-29 → 2026-12-06 (+7d) |  |
| B2.31 23 00.131 | Excavation | 2026-11-24 → 2026-12-01 (+7d) | 2026-11-26 → 2026-12-03 (+7d) |  |
| 10 14 53.05 | Foundation | 2026-11-26 → 2026-12-03 (+7d) | 2026-11-29 → 2026-12-06 (+7d) |  |
| Installation | **Installation** | 2026-12-10 → 2026-12-17 (+7d) | 2026-12-17 → 2026-12-24 (+7d) |  |
| B1.2.10 14 53.015 | 1 Sheet Alumenium, Single post | 2026-12-10 → 2026-12-17 (+7d) | 2026-12-13 → 2026-12-20 (+7d) |  |
| B1.2.10 14 53.035 | 1 Sheet Alumenium, Double post | 2026-12-13 → 2026-12-20 (+7d) | 2026-12-15 → 2026-12-22 (+7d) |  |
| B1.2.10 14 14.01.5 | Ground mounted, 1 Sheet Alumenium, Single post | 2026-12-15 → 2026-12-22 (+7d) | 2026-12-17 → 2026-12-24 (+7d) |  |
| B1.2.10 14 14.025 | Ground mounted, 1 Sheet Alumenium, Double post | 2026-12-15 → 2026-12-22 (+7d) | 2026-12-17 → 2026-12-24 (+7d) |  |
| Landscape | **Landscape** | 2026-11-26 → 2026-12-03 (+7d) | 2027-01-09 → 2027-01-16 (+7d) |  |
| Fences | **Fences** | 2026-11-26 → 2026-12-03 (+7d) | 2026-12-29 → 2027-01-05 (+7d) |  |
| (MODON)l fence | **Steel fence (MODON)** | 2026-11-26 → 2026-12-03 (+7d) | 2026-12-29 → 2027-01-05 (+7d) |  |
| B7.32 93 43.04.16 | Earthwork | 2026-11-26 → 2026-12-03 (+7d) | 2026-11-30 → 2026-12-07 (+7d) |  |
| B7.32 93 43.04.18 | Foundation | 2026-12-19 → 2026-12-26 (+7d) | 2026-12-22 → 2026-12-29 (+7d) |  |
| B7.32 93 43.04.20 | Fence Installation | 2026-12-22 → 2026-12-29 (+7d) | 2026-12-29 → 2027-01-05 (+7d) |  |
| Gates | **Gates** | 2026-11-30 → 2026-12-07 (+7d) | 2027-01-09 → 2027-01-16 (+7d) |  |
| Size (4.1x 2.7)m | **Size (4.1x 2.7)m** | 2026-11-30 → 2026-12-07 (+7d) | 2026-12-31 → 2027-01-07 (+7d) |  |
| B7.32 93 43.04.22 | Earthwork | 2026-11-30 → 2026-12-07 (+7d) | 2026-12-05 → 2026-12-12 (+7d) |  |
| B7.32 93 43.04.24 | Foundation | 2026-12-22 → 2026-12-29 (+7d) | 2026-12-26 → 2027-01-02 (+7d) |  |
| B7.32 93 43.04.26 | Gate Installation | 2026-12-26 → 2027-01-02 (+7d) | 2026-12-31 → 2027-01-07 (+7d) |  |
| Size (3.35x 2.7)m | **Size (3.35x 2.7)m** | 2026-12-05 → 2026-12-12 (+7d) | 2027-01-04 → 2027-01-11 (+7d) |  |
| B7.32 93 43.04.28 | Earthwork | 2026-12-05 → 2026-12-12 (+7d) | 2026-12-08 → 2026-12-15 (+7d) |  |
| B7.32 93 43.04.30 | Foundation | 2026-12-26 → 2027-01-02 (+7d) | 2026-12-29 → 2027-01-05 (+7d) |  |
| B7.32 93 43.04.32 | Gate Installation | 2026-12-29 → 2027-01-05 (+7d) | 2027-01-04 → 2027-01-11 (+7d) |  |
| Size (4.35x 2.7)m | **Size (4.35x 2.7)m** | 2026-12-08 → 2026-12-15 (+7d) | 2027-01-05 → 2027-01-12 (+7d) |  |
| B7.32 93 43.04.34 | Earthwork | 2026-12-08 → 2026-12-15 (+7d) | 2026-12-12 → 2026-12-19 (+7d) |  |
| B7.32 93 43.04.36 | Foundation | 2026-12-29 → 2027-01-05 (+7d) | 2027-01-02 → 2027-01-09 (+7d) |  |
| B7.32 93 43.04.38 | Gate Installation | 2027-01-02 → 2027-01-09 (+7d) | 2027-01-05 → 2027-01-12 (+7d) |  |
| Size (3.25x 2.7)m | **Size (3.25x 2.7)m** | 2026-12-12 → 2026-12-19 (+7d) | 2027-01-09 → 2027-01-16 (+7d) |  |
| B7.32 93 43.04.40 | Earthwork | 2026-12-12 → 2026-12-19 (+7d) | 2026-12-15 → 2026-12-22 (+7d) |  |
| B7.32 93 43.04.42 | Foundation | 2027-01-02 → 2027-01-09 (+7d) | 2027-01-05 → 2027-01-12 (+7d) |  |
| B7.32 93 43.04.44 | Gate Installation | 2027-01-05 → 2027-01-12 (+7d) | 2027-01-09 → 2027-01-16 (+7d) |  |
| Geotextile | **Geotextile** | 2026-12-15 → 2026-12-13 (-2d) | 2026-12-19 → 2026-12-26 (+7d) |  |
| B7.31 32 19.23.4 | Geotextile to protect trees planting soil | 2026-12-16 → 2026-12-13 (-3d) | 2026-12-19 → 2026-12-16 (-3d) | 12.32d → 21d |
| B7.31 32 19.23.5 | Geotextile below gravel bed | 2026-12-15 → 2026-12-22 (+7d) | 2026-12-19 → 2026-12-26 (+7d) |  |
| Ornamental Grasses | **Ornamental Grasses** | 2026-12-30 → 2027-01-06 (+7d) | 2027-01-05 → 2027-01-12 (+7d) |  |
| B7.32 93 13.01 | Pennisetum setaceum | 2026-12-30 → 2027-01-06 (+7d) | 2027-01-05 → 2027-01-12 (+7d) |  |
| Large Shrubs | **Large Shrubs** | 2026-12-30 → 2027-01-06 (+7d) | 2027-01-05 → 2027-01-12 (+7d) |  |
| B7.32 93 33.03 | Tecomaria Capensis | 2026-12-30 → 2027-01-06 (+7d) | 2027-01-05 → 2027-01-12 (+7d) |  |
| Miscellaneous | **Miscellaneous** | 2026-12-13 → 2026-12-09 (-4d) | 2026-12-30 → 2027-01-06 (+7d) |  |

| ID | Task | Start | Finish | Complete | Total float |
| --- | --- | --- | --- | --- | --- |
| B7.32 91 00.01 | Plastic edge | 2026-12-13 → 2026-12-09 (-4d) | 2026-12-15 → 2026-12-13 (-2d) |  | 5.32d → 14d |
| B7.32 91 00.01.01 | 75mm thickness for shrubs and grasses | 2026-12-19 → 2026-12-26 (+7d) | 2026-12-24 → 2026-12-31 (+7d) |  |  |
| B7.32 91 00.01.02 | 75mm thickness for trees | 2026-12-19 → 2026-12-26 (+7d) | 2026-12-24 → 2026-12-31 (+7d) |  |  |
| B7.32 91 00.02.01 | Grey gravel bed - 30-50 mm diameter (G1) | 2026-12-19 → 2026-12-26 (+7d) | 2026-12-24 → 2026-12-31 (+7d) |  |  |
| B7.32 91 00.02.02 | Grey gravel bed - 12-25 mm diameter (G2) | 2026-12-24 → 2026-12-31 (+7d) | 2026-12-30 → 2027-01-06 (+7d) |  |  |
| Management Road 01 | **Management Road 01** |  | 2026-12-10 → 2026-12-17 (+7d) |  |  |
| Wet Networks | **Wet Networks** |  | 2026-11-05 → 2026-11-09 (+4d) |  |  |
| Stormwater Network | **Stormwater Network** |  | 2026-10-11 → 2026-10-18 (+7d) |  |  |
| GRP | **GRP** |  | 2026-10-11 → 2026-10-18 (+7d) |  |  |
| ?40011 | **?1100** |  | 2026-10-11 → 2026-10-18 (+7d) |  |  |
| 3 | **Depth From 2.5m to 3.5m** |  | 2026-10-11 → 2026-10-18 (+7d) |  |  |
| B6.33 42 11.01-1017_R | Pipe Laying(Rem) | 2026-10-07 → 2026-10-14 (+7d) | 2026-10-10 → 2026-10-17 (+7d) |  |  |
| B6.33 42 11.01-1023_R | Embedment & Test(Rem) | 2026-10-07 → 2026-10-14 (+7d) | 2026-10-10 → 2026-10-17 (+7d) |  |  |
| B6.33 42 11.01-1029_R | Backfilling & Warrning Tape(Rem) | 2026-10-07 → 2026-10-14 (+7d) | 2026-10-11 → 2026-10-18 (+7d) |  |  |
| Strom Manholes | **Manholes** |  | 2026-10-11 → 2026-10-18 (+7d) |  |  |
| 2 | **?1500** |  | 2026-10-08 → 2026-10-15 (+7d) |  |  |
| 1 | **Depth From 2.5m to 3.5m** |  | 2026-10-08 → 2026-10-15 (+7d) |  |  |
| B6.33 05 39.01.3057_R | Test, Internal Finishing, Benching & Cover(Rem) | 2026-10-07 → 2026-10-14 (+7d) | 2026-10-08 → 2026-10-15 (+7d) |  |  |
| 3 | **?2000** |  | 2026-10-11 → 2026-10-18 (+7d) |  |  |
| 1 | **Depth From 2.5m to 3.5m** |  | 2026-10-11 → 2026-10-18 (+7d) |  |  |
| B6.33 05 39.01.3137_R | Blinding Conc, & RC Base(Rem) | 2026-10-07 → 2026-10-14 (+7d) | 2026-10-08 → 2026-10-15 (+7d) |  |  |
| B6.33 05 39.01.3147_R | Manhole Installation(Rem) | 2026-10-07 → 2026-10-14 (+7d) | 2026-10-08 → 2026-10-15 (+7d) |  |  |
| B6.33 05 39.01.3157_R | Test, Internal Finishing, Benching & Cover(Rem) | 2026-10-07 → 2026-10-14 (+7d) | 2026-10-08 → 2026-10-15 (+7d) |  |  |
| B6.33 05 39.01.3167_R | Backfilling(Rem) | 2026-10-07 → 2026-10-14 (+7d) | 2026-10-11 → 2026-10-18 (+7d) |  |  |
| Catch Basins | **Catch Basins** |  | 2026-10-10 → 2026-10-15 (+5d) |  |  |
| Sing | **Single** |  | 2026-10-08 → 2026-10-15 (+7d) |  |  |
| B6.33 05 40.01.250_R | Excavation, Compaction & Vapour Barrier(Rem) | 2026-10-07 → 2026-10-14 (+7d) | 2026-10-08 → 2026-10-15 (+7d) |  | 48.92d → 111.32d |
| B6.33 05 40.01.260_R | Blinding Conc.(Rem) | 2026-10-07 → 2026-10-14 (+7d) | 2026-10-08 → 2026-10-15 (+7d) |  | 48.92d → 111.32d |
| B6.33 05 40.01.270_R | Catch Basin Installation(Rem) | 2026-10-07 → 2026-10-14 (+7d) | 2026-10-08 → 2026-10-15 (+7d) |  | 48.92d → 111.32d |
| B6.33 05 40.01.280_R | Backfilling, DI Frame & Grate Cover Fixing(Rem) | 2026-10-07 → 2026-10-14 (+7d) | 2026-10-08 → 2026-10-15 (+7d) |  |  |
| UPVC | **UPVC** |  | 2026-10-10 → 2026-10-14 (+4d) |  |  |
| UPVC300 | **?300 From 0.0 to 1.5m** |  | 2026-10-08 → 2026-10-14 (+6d) |  |  |
| B6.33 42 11.35-131_R | Catch Basin Opening Prep.(Rem) | 2026-10-07 A | 2026-10-08 → 2026-10-14 (+6d) | 0% → 77% | 48.92d → 112.86d |
| B6.33 42 11.35-132_R | Fittings & Pipe Installation(Rem) | 2026-10-07 A | 2026-10-08 → 2026-10-14 (+6d) | 0% → 77% |  |
| UPVC3001 | **?400 From 0.0 to 1.5m** |  | 2026-10-10 → 2026-10-14 (+4d) |  |  |
| B6.33 42 11.36-121_R | Catch Basin Opening Prep.(Rem) | 2026-10-07 A | 2026-10-10 → 2026-10-14 (+4d) | 0% → 77% | 48.92d → 112.84d |
| B6.33 42 11.36-122_R | Fittings & Pipe Installation(Rem) | 2026-10-07 A | 2026-10-10 → 2026-10-14 (+4d) | 0% → 77% |  |
| Potable Water | **Potable Water Network** |  | 2026-10-21 → 2026-10-28 (+7d) |  |  |
| HDPE | **HDPE Pipes** |  | 2026-10-10 → 2026-10-17 (+7d) |  |  |
| ?110mm | **?110mm** |  | 2026-10-10 → 2026-10-17 (+7d) |  |  |
| Depth: 1.51m - 2.5m | **Depth: 1.51m - 2.5m** |  | 2026-10-10 → 2026-10-17 (+7d) |  |  |
| B3.33 14 11.01.0118_R | Backfilling & Warrning Tape(Rem) | 2026-10-07 → 2026-10-14 (+7d) | 2026-10-10 → 2026-10-17 (+7d) |  |  |
| Crossing | **Plots and Buildings Crossing** | 2026-10-07 → 2026-10-14 (+7d) | 2026-10-21 → 2026-10-28 (+7d) |  |  |
| B3.33 14 13.02.19 | Earthwork | 2026-10-07 → 2026-10-14 (+7d) | 2026-10-12 → 2026-10-19 (+7d) |  |  |
| B3.33 14 13.02.20 | Sand Bedding | 2026-10-13 → 2026-10-20 (+7d) | 2026-10-15 → 2026-10-22 (+7d) |  |  |
| B3.33 14 13.02.21 | Tee, Pipe (Crossing) Installation & Backfilling | 2026-10-17 → 2026-10-24 (+7d) | 2026-10-21 → 2026-10-28 (+7d) |  |  |
| Valves & Chambers | **Valves & Chambers** |  | 2026-10-10 → 2026-10-17 (+7d) |  |  |
| GV | **Gate Valves** |  | 2026-10-10 → 2026-10-17 (+7d) |  |  |
| 1 | **Gate valves dia (110) mm** |  | 2026-10-10 → 2026-10-17 (+7d) |  |  |
| B3.33 14 19.01.111 | Spindle & Surface Box | 2026-10-07 → 2026-10-14 (+7d) | 2026-10-10 → 2026-10-17 (+7d) |  | 104.32d → 110.32d |
| Fire Fighting | **Fire Fighting Network** |  | 2026-10-21 → 2026-10-28 (+7d) |  |  |
| Valves & Chambers | **Valves & Chambers** |  | 2026-10-21 → 2026-10-28 (+7d) |  |  |
| GV | **Gate Valves** |  | 2026-10-11 → 2026-10-18 (+7d) |  |  |
| 1 | **Gate valves dia (250) mm** |  | 2026-10-11 → 2026-10-18 (+7d) |  |  |
| B3.33 14 19.01.126 | Burried Isolation Valve Installation | 2026-10-07 → 2026-10-14 (+7d) | 2026-10-11 → 2026-10-18 (+7d) |  |  |
| 2 | **Air Valves** |  | 2026-10-17 → 2026-10-24 (+7d) |  |  |
| 4 | **Air valves on less than 315 mm. (In Chamber)** |  | 2026-10-17 → 2026-10-24 (+7d) |  |  |
| B3.33 05 63.02.50_R | Foundations(Rem) | 2026-10-07 → 2026-10-14 (+7d) | 2026-10-10 → 2026-10-17 (+7d) |  | 64.32d → 98.32d |
| B3.33 05 63.02.51_R | Chamber Curing, Finishing & Steel Cover(Rem) | 2026-10-07 → 2026-10-14 (+7d) | 2026-10-10 → 2026-10-17 (+7d) |  | 64.32d → 98.32d |
| B3.33 05 63.02.52_R | Land Adjustment & Compaction(Rem) | 2026-10-07 → 2026-10-14 (+7d) | 2026-10-10 → 2026-10-17 (+7d) |  | 64.32d → 98.32d |
| B3.33 05 63.02.53_R | Chambers Walls Conc Cast In Situ(Rem) | 2026-10-07 → 2026-10-14 (+7d) | 2026-10-10 → 2026-10-17 (+7d) |  | 64.32d → 98.32d |
| B3.33 05 63.02.54 | Valve & Fitting Installation | 2026-10-11 → 2026-10-18 (+7d) | 2026-10-17 → 2026-10-24 (+7d) |  | 64.32d → 98.32d |
| Washout Valves | **Washout Valves** |  | 2026-10-21 → 2026-10-28 (+7d) |  |  |
| 4 | **Washout valves on 110-400 mm. (In Chamber)** |  | 2026-10-21 → 2026-10-28 (+7d) |  |  |
| B3.33 05 63.01.49 | Valve & Fitting Installation | 2026-10-14 → 2026-10-21 (+7d) | 2026-10-21 → 2026-10-28 (+7d) |  | 75.37d → 94.37d |
| 3 | **Fire Hydrant** |  | 2026-10-14 → 2026-10-21 (+7d) |  |  |
| B3.33 14 19.01.fh25_R | Firehydrant Fixing/Installation(Rem) | 2026-10-07 → 2026-10-14 (+7d) | 2026-10-12 → 2026-10-19 (+7d) |  | 75.37d → 94.37d |
| B3.33 14 19.01.fh27_R | Backfilling & Compaction(Rem) | 2026-10-07 → 2026-10-14 (+7d) | 2026-10-14 → 2026-10-21 (+7d) |  | 75.37d → 94.37d |
| TSE Network | **TSE Network** |  | 2026-11-05 → 2026-11-09 (+4d) |  |  |
| HDPE | **HDPE Pipes** |  | 2026-10-19 → 2026-10-22 (+3d) |  |  |

| ID | Task | Start | Finish | Total float |
| --- | --- | --- | --- | --- |
| ?125mm | **?125mm** |  | 2026-10-19 → 2026-10-22 (+3d) |  |
| Depth: 0.0m - 1.5m | **Depth: 0.0m - 1.5m** |  | 2026-10-19 → 2026-10-22 (+3d) |  |
| B4.33 14 13.0110_R | Excavation(Rem) | 2026-10-12 → 2026-10-15 (+3d) | 2026-10-15 → 2026-10-19 (+4d) | 22.32d → 25.32d |
| B4.33 14 13.0112_R | Sand Bedding(Rem) | 2026-10-13 → 2026-10-17 (+4d) | 2026-10-15 → 2026-10-19 (+4d) | 22.32d → 25.32d |
| B4.33 14 13.0114_R | Pipe Laying(Rem) | 2026-10-13 → 2026-10-17 (+4d) | 2026-10-15 → 2026-10-19 (+4d) | 22.32d → 25.32d |
| B4.33 14 13.0116_R | Embedment & Test(Rem) | 2026-10-13 → 2026-10-17 (+4d) | 2026-10-18 → 2026-10-21 (+3d) | 90.86d → 93.86d |
| B4.33 14 13.0118_R | Backfilling & Warrning Tape(Rem) | 2026-10-13 → 2026-10-17 (+4d) | 2026-10-19 → 2026-10-22 (+3d) | 90.86d → 93.86d |
| Valves & Chambers | **Valves & Chambers** |  | 2026-11-05 → 2026-11-09 (+4d) |  |
| GV | **Gate Valves** |  | 2026-10-19 → 2026-10-22 (+3d) |  |
| GV 100 | **Gate valves dia (100) mm** |  | 2026-10-19 → 2026-10-22 (+3d) |  |
| B3.33 14 19.01.142_R | Burried Isolation Valve Installation(Rem) | 2026-10-13 → 2026-10-17 (+4d) | 2026-10-15 → 2026-10-19 (+4d) | 90.86d → 93.86d |
| B3.33 14 19.01.143 | Spindle & Surface Box | 2026-10-15 → 2026-10-19 (+4d) | 2026-10-19 → 2026-10-22 (+3d) | 90.96d → 93.96d |
| GV 150 | **Gate valves dia (150) mm** |  | 2026-10-19 → 2026-10-22 (+3d) |  |
| B3.33 14 19.01.153_R | Burried Isolation Valve Installation(Rem) | 2026-10-13 → 2026-10-17 (+4d) | 2026-10-15 → 2026-10-19 (+4d) | 90.96d → 93.96d |
| B3.33 14 19.01.163 | Spindle & Surface Box | 2026-10-15 → 2026-10-19 (+4d) | 2026-10-19 → 2026-10-22 (+3d) | 90.96d → 93.96d |
| Solenoid valves | **Solenoid valves** | 2026-10-17 → 2026-10-20 (+3d) | 2026-11-05 → 2026-11-09 (+4d) |  |
| Solenoid valve ?1.0 | **1 Solenoid valve ?1.0 inch with box** | 2026-10-20 → 2026-10-24 (+4d) | 2026-10-29 → 2026-11-02 (+4d) |  |
| B4.32 84 13.71 | Cable Laying Two-Wire Decoder (12 AWG) | 2026-10-20 → 2026-10-24 (+4d) | 2026-10-22 → 2026-10-26 (+4d) | 22.32d → 25.32d |
| B4.32 84 13.72 | Solenoid Valve Box Installation | 2026-10-24 → 2026-10-27 (+3d) | 2026-10-26 → 2026-10-29 (+3d) | 25.32d → 28.32d |
| B4.32 84 13.73 | Bubblers Installation | 2026-10-27 → 2026-10-31 (+4d) | 2026-10-29 → 2026-11-02 (+4d) | 25.32d → 28.32d |
| B4.32 84 13.77 | Pull Box Installation | 2026-10-27 → 2026-10-31 (+4d) | 2026-10-29 → 2026-11-02 (+4d) | 28.32d → 31.32d |
| Solenoid valve ?1.5 | **1 Solenoid valve ?1.5 inch with box** | 2026-10-17 → 2026-10-20 (+3d) | 2026-11-05 → 2026-11-09 (+4d) |  |
| B4.33 14 13.09 | Extra flexible dripline with 3.0LPH | 2026-10-17 → 2026-10-20 (+3d) | 2026-10-19 → 2026-10-22 (+3d) | 28.32d → 31.32d |
| B4.32 84 13.04 | Dripper | 2026-10-20 → 2026-10-24 (+4d) | 2026-10-22 → 2026-10-26 (+4d) | 28.32d → 31.32d |
| B4.32 84 13.74 | Cable Laying Two-Wire Decoder (12 AWG) | 2026-10-24 → 2026-10-27 (+3d) | 2026-10-26 → 2026-10-29 (+3d) | 22.32d → 25.32d |
| B4.32 84 13.78 | Pull Box Installation | 2026-10-27 → 2026-10-31 (+4d) | 2026-10-29 → 2026-11-02 (+4d) | 22.32d → 25.32d |
| B4.32 84 13.75 | Solenoid Valve Box Installation | 2026-10-31 → 2026-11-03 (+3d) | 2026-11-02 → 2026-11-05 (+3d) | 22.32d → 25.32d |
| B4.32 84 13.76 | Bubblers Installation | 2026-11-03 → 2026-11-07 (+4d) | 2026-11-05 → 2026-11-09 (+4d) | 22.32d → 25.32d |
| Solenoid valve ?2.0 | **1 Solenoid valve ?2.0 inch with box** | 2026-10-17 → 2026-10-20 (+3d) | 2026-10-26 → 2026-10-29 (+3d) |  |
| B4.32 84 13.68 | Cable Laying Two-Wire Decoder (12 AWG) | 2026-10-17 → 2026-10-20 (+3d) | 2026-10-19 → 2026-10-22 (+3d) | 22.32d → 25.32d |
| B4.32 84 13.69 | Solenoid Valve Box Installation | 2026-10-20 → 2026-10-24 (+4d) | 2026-10-22 → 2026-10-26 (+4d) | 28.32d → 31.32d |
| B4.32 84 13.79 | Pull Box Installation | 2026-10-20 → 2026-10-24 (+4d) | 2026-10-22 → 2026-10-26 (+4d) | 28.32d → 31.32d |
| B4.32 84 13.70 | Bubblers Installation | 2026-10-24 → 2026-10-27 (+3d) | 2026-10-26 → 2026-10-29 (+3d) | 28.32d → 31.32d |
| Dry Networks | **Dry Networks** | 2026-10-12 → 2026-10-19 (+7d) | 2026-12-10 → 2026-12-17 (+7d) |  |
| MV | **Medium Voltage Network** | 2026-10-12 → 2026-10-19 (+7d) | 2026-11-24 → 2026-11-30 (+6d) |  |
| Duct Banks | **Duct Banks** | 2026-10-19 → 2026-10-22 (+3d) | 2026-11-24 → 2026-11-30 (+6d) |  |
| 4 Way | **4 Way** | 2026-10-19 → 2026-10-22 (+3d) | 2026-11-24 → 2026-11-30 (+6d) |  |
| B2.31 23 00.639 | Excavation | 2026-10-19 → 2026-10-22 (+3d) | 2026-10-24 → 2026-10-27 (+3d) | 90.86d → 93.86d |
| B2.33 71 00.286 | Shuttering, Steel Fixing Incl. UPVC Pipe & Conc. Cast | 2026-10-24 → 2026-10-27 (+3d) | 2026-10-28 → 2026-11-01 (+4d) | 90.86d → 93.86d |
| B2.33 71 00.287 | Backfilling & Warrning Tape | 2026-11-21 → 2026-11-25 (+4d) | 2026-11-24 → 2026-11-30 (+6d) | 71.32d → 73.21d |
| Cables | **Cables** | 2026-10-12 → 2026-10-19 (+7d) | 2026-11-03 → 2026-11-10 (+7d) |  |
| 3C,500mm2 | **3C,500mm2** | 2026-10-12 → 2026-10-19 (+7d) | 2026-11-03 → 2026-11-10 (+7d) |  |
| B2.33 71 49.23.74 | Cable 13.8 kV Unarmored | 2026-10-12 → 2026-10-19 (+7d) | 2026-10-15 → 2026-10-22 (+7d) |  |
| B2.33 71 49.23.75 | Straight joints cables | 2026-10-17 → 2026-10-24 (+7d) | 2026-10-19 → 2026-10-26 (+7d) |  |
| B2.33 71 49.23.76 | Cable Termination | 2026-10-31 → 2026-11-07 (+7d) | 2026-11-03 → 2026-11-10 (+7d) | 73.2d → 73.21d |
| Street Lighting | **Street Lighting** | 2026-10-12 → 2026-10-19 (+7d) | 2026-11-01 → 2026-11-08 (+7d) |  |
| SL Poles | **SL Poles** | 2026-10-12 → 2026-10-19 (+7d) | 2026-10-29 → 2026-11-03 (+5d) |  |
| Pole (10 M Sngl Arm) | **Pole (10 M Single Arm)** | 2026-10-12 → 2026-10-19 (+7d) | 2026-10-29 → 2026-11-03 (+5d) |  |
| B2.33 71 16.51 | Excavation | 2026-10-12 → 2026-10-19 (+7d) | 2026-10-14 → 2026-10-21 (+7d) | 81.32d → 84.32d |
| B2.33 71 16.52 | PC & RC Foundation | 2026-10-15 → 2026-10-22 (+7d) | 2026-10-18 → 2026-10-25 (+7d) | 81.32d → 84.32d |
| B2.33 71 16.53 | Lighting Poles Installation Incl power box, Cables | 2026-10-19 → 2026-10-26 (+7d) | 2026-10-21 → 2026-10-28 (+7d) | 81.32d → 84.32d |
| B2.26.56.19.6 | Lighting Luminares Inst | 2026-10-22 → 2026-10-29 (+7d) | 2026-10-24 → 2026-10-31 (+7d) |  |
| B2.33 71 16.54 | Backfilling, Grouting & Chamfering | 2026-10-27 → 2026-11-01 (+5d) | 2026-10-29 → 2026-11-03 (+5d) | 82.32d → 84.32d |
| Earthing | **Earthing** | 2026-10-22 → 2026-10-29 (+7d) | 2026-11-01 → 2026-11-08 (+7d) |  |
| B2.33 71 19 26 | Land Adjustment | 2026-10-22 → 2026-10-29 (+7d) | 2026-10-25 → 2026-11-01 (+7d) | 81.32d → 88.32d |
| B2.33 71 19 27 | Earth Rods & Conduits | 2026-10-26 → 2026-11-02 (+7d) | 2026-10-28 → 2026-11-04 (+7d) | 81.32d → 88.32d |
| B2.33 71 19 28 | Backfilling | 2026-10-29 → 2026-11-05 (+7d) | 2026-11-01 → 2026-11-08 (+7d) | 81.32d → 88.32d |
| Telecommunication | **Telecommunication Network** | 2026-11-26 → 2026-12-03 (+7d) | 2026-12-10 → 2026-12-17 (+7d) |  |
| Ducts | **Ducts** | 2026-11-26 → 2026-12-03 (+7d) | 2026-12-09 → 2026-12-16 (+7d) |  |
| (6*50mm) | **Size (6*50mm) HDPE ducts** | 2026-11-26 → 2026-12-03 (+7d) | 2026-12-02 → 2026-12-09 (+7d) |  |
| B2.1.33 81 26.105 | Excavation | 2026-11-26 → 2026-12-03 (+7d) | 2026-11-28 → 2026-12-05 (+7d) |  |
| B2.1.33 81 26.106 | HDPE Pipe, Shuttering, Steel Fixing & Conc. Cast | 2026-11-29 → 2026-12-06 (+7d) | 2026-11-30 → 2026-12-07 (+7d) |  |
| B2.1.33 81 26.107 | Backfilling & Warrning Tape | 2026-12-01 → 2026-12-08 (+7d) | 2026-12-02 → 2026-12-09 (+7d) |  |
| (6*50mm+2*32mm) | **Size (6*50mm+2*32mm) HDPE ducts** | 2026-11-29 → 2026-12-06 (+7d) | 2026-12-03 → 2026-12-10 (+7d) |  |
| B2.1.33 81 26.108 | Excavation | 2026-11-29 → 2026-12-06 (+7d) | 2026-11-29 → 2026-12-06 (+7d) |  |
| B2.1.33 81 26.109 | HDPE Pipe, Shuttering, Steel Fixing & Conc. Cast | 2026-11-30 → 2026-12-07 (+7d) | 2026-12-01 → 2026-12-08 (+7d) |  |
| B2.1.33 81 26.110 | Backfilling & Warrning Tape | 2026-12-02 → 2026-12-09 (+7d) | 2026-12-03 → 2026-12-10 (+7d) |  |
| (6*50mm+4*32mm) | **Size (6*50mm+4*32mm) HDPE ducts** | 2026-11-30 → 2026-12-07 (+7d) | 2026-12-06 → 2026-12-13 (+7d) |  |
| B2.1.33 81 26.111 | Excavation | 2026-11-30 → 2026-12-07 (+7d) | 2026-12-01 → 2026-12-08 (+7d) |  |
| B2.1.33 81 26.112 | HDPE Pipe, Shuttering, Steel Fixing & Conc. Cast | 2026-12-02 → 2026-12-09 (+7d) | 2026-12-03 → 2026-12-10 (+7d) |  |

| ID | Task | Start | Finish | Total float |
| --- | --- | --- | --- | --- |
| B2.1.33 81 26.113 | Backfilling & Warrning Tape | 2026-12-05 → 2026-12-12 (+7d) | 2026-12-06 → 2026-12-13 (+7d) |  |
| (2*32mm) | **Size (2*32mm) HDPE ducts** | 2026-12-02 → 2026-12-09 (+7d) | 2026-12-07 → 2026-12-14 (+7d) |  |
| B2.1.33 81 26.114 | Excavation | 2026-12-02 → 2026-12-09 (+7d) | 2026-12-02 → 2026-12-09 (+7d) |  |
| B2.1.33 81 26.115 | HDPE Pipe, Shuttering, Steel Fixing & Conc. Cast | 2026-12-03 → 2026-12-10 (+7d) | 2026-12-05 → 2026-12-12 (+7d) |  |
| B2.1.33 81 26.116 | Backfilling & Warrning Tape | 2026-12-06 → 2026-12-13 (+7d) | 2026-12-07 → 2026-12-14 (+7d) |  |
| (4*32mm) | **Size (4*32mm) HDPE ducts** | 2026-12-03 → 2026-12-10 (+7d) | 2026-12-09 → 2026-12-16 (+7d) |  |
| B2.1.33 81 26.117 | Excavation | 2026-12-03 → 2026-12-10 (+7d) | 2026-12-05 → 2026-12-12 (+7d) |  |
| B2.1.33 81 26.118 | HDPE Pipe, Shuttering, Steel Fixing & Conc. Cast | 2026-12-06 → 2026-12-13 (+7d) | 2026-12-07 → 2026-12-14 (+7d) |  |
| B2.1.33 81 26.119 | Backfilling & Warrning Tape | 2026-12-08 → 2026-12-15 (+7d) | 2026-12-09 → 2026-12-16 (+7d) |  |
| Manholes | **Manholes** | 2026-12-06 → 2026-12-13 (+7d) | 2026-12-10 → 2026-12-17 (+7d) |  |
| Manhole Type 1 | **Manhole Type 1** | 2026-12-06 → 2026-12-13 (+7d) | 2026-12-09 → 2026-12-16 (+7d) |  |
| B2.31 23 00.617 | Excavation | 2026-12-06 → 2026-12-13 (+7d) | 2026-12-06 → 2026-12-13 (+7d) |  |
| B2.33 71 00.242 | Manhole Installation | 2026-12-07 → 2026-12-14 (+7d) | 2026-12-07 → 2026-12-14 (+7d) |  |
| B2.33 71 00.243 | Backfilling & Warrning Tape | 2026-12-08 → 2026-12-15 (+7d) | 2026-12-09 → 2026-12-16 (+7d) |  |
| Manhole Type 2 | **Manhole Type 2** | 2026-12-07 → 2026-12-14 (+7d) | 2026-12-10 → 2026-12-17 (+7d) |  |
| B2.31 23 00.615 | Excavation | 2026-12-07 → 2026-12-14 (+7d) | 2026-12-07 → 2026-12-14 (+7d) |  |
| B2.33 71 00.238 | Manhole Installation | 2026-12-08 → 2026-12-15 (+7d) | 2026-12-08 → 2026-12-15 (+7d) |  |
| B2.33 71 00.239 | Backfilling & Warrning Tape | 2026-12-09 → 2026-12-16 (+7d) | 2026-12-10 → 2026-12-17 (+7d) |  |
| Crossing Ducts | **Road Crossing Ducts** | 2026-11-29 → 2026-12-06 (+7d) | 2026-12-03 → 2026-12-10 (+7d) |  |
| 1 | **Size (6*50mm) HDPE** | 2026-11-29 → 2026-12-06 (+7d) | 2026-12-03 → 2026-12-10 (+7d) |  |
| B2.31 23 00.616 | Excavation | 2026-11-29 → 2026-12-06 (+7d) | 2026-11-29 → 2026-12-06 (+7d) |  |
| B2.33 71 00.240 | Shuttering, Steel Fixing Incl. UPVC Pipe & Conc. Cast | 2026-11-30 → 2026-12-07 (+7d) | 2026-12-01 → 2026-12-08 (+7d) |  |
| B2.33 71 00.241 | Backfilling & Warrning Tape | 2026-12-02 → 2026-12-09 (+7d) | 2026-12-03 → 2026-12-10 (+7d) |  |
| Earth & Road Works | **Earth & Road Works** |  | 2026-12-08 → 2026-12-13 (+5d) |  |
| Earth Layers | **Earth Layers** |  | 2026-10-08 → 2026-10-15 (+7d) |  |
| B1.2.32 11 13.01.6_R | Subgrade(Rem) | 2026-10-07 → 2026-10-14 (+7d) | 2026-10-08 → 2026-10-15 (+7d) |  |
| B1.2.32 11 23.01.6_R | Aggregate Base Course(Rem) | 2026-10-07 → 2026-10-14 (+7d) | 2026-10-08 → 2026-10-15 (+7d) |  |
| Interlock | **Interlock** | 2026-11-15 → 2026-11-12 (-3d) | 2026-11-17 → 2026-11-16 (-1d) |  |
| B1.2.32 14 13.13.6 | 60mm thick - Interlocking Block Pavers | 2026-11-15 → 2026-11-12 (-3d) | 2026-11-17 → 2026-11-16 (-1d) | 1.32d → 9.08d |
| Curbstone | **Curbstone** | 2026-10-15 → 2026-10-22 (+7d) | 2026-11-05 → 2026-11-12 (+7d) |  |
| Pre Install | **Pre-Installation** | 2026-10-15 → 2026-10-22 (+7d) | 2026-10-22 → 2026-10-29 (+7d) |  |
| B2.31 23 00.151 | Excavation | 2026-10-15 → 2026-10-22 (+7d) | 2026-10-18 → 2026-10-25 (+7d) |  |
| B1.2.32 14 13.13.26 | PCC | 2026-10-18 → 2026-10-25 (+7d) | 2026-10-20 → 2026-10-27 (+7d) |  |
| 32 16 13.006 | Haunching | 2026-10-20 → 2026-10-27 (+7d) | 2026-10-22 → 2026-10-29 (+7d) |  |
| Installation | **Installation** | 2026-10-22 → 2026-10-29 (+7d) | 2026-11-03 → 2026-11-10 (+7d) |  |
| B1.2.32 16.13.01.6 | Curb Stone, Type K1 | 2026-10-22 → 2026-10-29 (+7d) | 2026-10-25 → 2026-11-01 (+7d) |  |
| B1.2.32 16.13.02.5 | Dropped Curb, Type K3 | 2026-10-25 → 2026-11-01 (+7d) | 2026-10-27 → 2026-11-03 (+7d) |  |
| B1.2.32 16.13.03.6 | Edge Curb, Type K4 | 2026-10-27 → 2026-11-03 (+7d) | 2026-10-29 → 2026-11-05 (+7d) |  |
| B1.2.32 16.13.046 | Heel Curb, Type K5 | 2026-10-29 → 2026-11-05 (+7d) | 2026-11-01 → 2026-11-08 (+7d) |  |
| B1.2.32 16.13.05.5 | Transition Curb | 2026-11-01 → 2026-11-08 (+7d) | 2026-11-03 → 2026-11-10 (+7d) |  |
| Finishing | **Finishing** | 2026-11-03 → 2026-11-10 (+7d) | 2026-11-05 → 2026-11-12 (+7d) |  |
| 32 16 13.06 | Finishing, Fareface | 2026-11-03 → 2026-11-10 (+7d) | 2026-11-05 → 2026-11-12 (+7d) |  |
| Asphalt Layers | **Asphalt Layers** | 2026-10-10 → 2026-10-17 (+7d) | 2026-11-26 → 2026-12-03 (+7d) |  |
| B1.2.32 11 26.01.6 | Bituminous Base Course including Prime Coat (MC1) and tack coat (RC2) | 2026-10-10 → 2026-10-17 (+7d) | 2026-10-11 → 2026-10-18 (+7d) |  |
| B1.2.32 12 16.01.6 | Bituminous concrete Wearing Course, including tack coat (RC2) | 2026-11-21 → 2026-11-28 (+7d) | 2026-11-26 → 2026-12-03 (+7d) |  |
| Pavement Marking | **Pavement Marking** | 2026-11-26 → 2026-12-03 (+7d) | 2026-11-29 → 2026-12-06 (+7d) |  |
| B1.2.32 17 23.01.6 | Retroreflective Thermoplastic White Traffic lines | 2026-11-26 → 2026-12-03 (+7d) | 2026-11-29 → 2026-12-06 (+7d) |  |
| B1.2.32 17 23.02.6 | Retroreflective Thermoplastic Yellow, Traffic lines | 2026-11-26 → 2026-12-03 (+7d) | 2026-11-29 → 2026-12-06 (+7d) |  |
| Traffic Signs | **Traffic Signs** | 2026-10-15 → 2026-10-22 (+7d) | 2026-12-08 → 2026-12-13 (+5d) |  |
| Pre Install | **Pre-Installation** | 2026-10-15 → 2026-10-22 (+7d) | 2026-11-09 → 2026-11-16 (+7d) |  |
| B2.31 23 00.161 | Excavation | 2026-10-15 → 2026-10-22 (+7d) | 2026-10-18 → 2026-10-25 (+7d) |  |
| 10 14 53.06 | Foundation | 2026-11-07 → 2026-11-14 (+7d) | 2026-11-09 → 2026-11-16 (+7d) |  |
| Installation | **Installation** | 2026-11-09 → 2026-11-16 (+7d) | 2026-12-08 → 2026-12-13 (+5d) |  |
| B1.2.10 14 53.016 | 1 Sheet Alumenium, Single post | 2026-11-09 → 2026-11-16 (+7d) | 2026-11-11 → 2026-11-18 (+7d) |  |
| B1.2.10 14 53.026 | 2 Sheet Alumenium, Single post | 2026-11-29 → 2026-12-06 (+7d) | 2026-12-01 → 2026-12-08 (+7d) |  |
| B1.2.10 14 14.01.6 | Ground mounted, 1 Sheet Alumenium, Single post | 2026-12-05 → 2026-12-08 (+3d) | 2026-12-06 → 2026-12-10 (+4d) | 56.32d → 59d |
| B1.2.10 14 14.026 | Ground mounted, 1 Sheet Alumenium, Double post | 2026-12-07 → 2026-12-10 (+3d) | 2026-12-08 → 2026-12-13 (+5d) | 56.32d → 59d |
| Landscape | **Landscape** | 2026-10-18 → 2026-10-25 (+7d) | 2026-11-25 → 2026-12-02 (+7d) |  |
| Large Shrubs | **Large Shrubs** | 2026-11-14 → 2026-11-21 (+7d) | 2026-11-25 → 2026-12-02 (+7d) |  |
| B7.32 93 33.01 | Dodonaea viscosa | 2026-11-14 → 2026-11-21 (+7d) | 2026-11-19 → 2026-11-26 (+7d) |  |
| B7.32 93 33.02 | Leucophyllun Frutescens | 2026-11-19 → 2026-11-26 (+7d) | 2026-11-25 → 2026-12-02 (+7d) |  |
| Fences | **Fences** | 2026-10-18 → 2026-10-25 (+7d) | 2026-11-21 → 2026-11-28 (+7d) |  |
| (ZATCA HCIS) | **Steel fence (ZATCA HCIS)** | 2026-10-18 → 2026-10-25 (+7d) | 2026-11-21 → 2026-11-28 (+7d) |  |
| B7.32 93 43.04.44.10 | Earthwork | 2026-10-18 → 2026-10-25 (+7d) | 2026-10-24 → 2026-10-31 (+7d) |  |
| B7.32 93 43.04.44.12 | Foundation | 2026-11-07 → 2026-11-14 (+7d) | 2026-11-14 → 2026-11-21 (+7d) |  |
| B7.32 93 43.04.44.14 | Fence Installation | 2026-11-14 → 2026-11-21 (+7d) | 2026-11-21 → 2026-11-28 (+7d) |  |
| Miscellaneous | **Miscellaneous** | 2026-10-24 → 2026-10-31 (+7d) | 2026-11-19 → 2026-11-26 (+7d) |  |
| B7.32 91 00.02.2 | Grey gravel bed - 30-50 mm diameter (G1) | 2026-10-24 → 2026-10-31 (+7d) | 2026-10-31 → 2026-11-07 (+7d) |  |
| B7.32 91 00.1 | Plastic edge | 2026-10-24 → 2026-10-31 (+7d) | 2026-10-29 → 2026-11-05 (+7d) |  |
| B7.32 91 00.02.12 | Grey gravel bed - 12-25 mm diameter (G2) | 2026-10-31 → 2026-11-07 (+7d) | 2026-11-07 → 2026-11-14 (+7d) |  |

| ID | Task | Start | Finish | Complete | Total float |
| --- | --- | --- | --- | --- | --- |
| B7.32 91 00.01.2 | 75mm thickness for shrubs and grasses | 2026-11-07 → 2026-11-14 (+7d) | 2026-11-14 → 2026-11-21 (+7d) |  |  |
| B7.32 91 00.01.12 | 75mm thickness for trees | 2026-11-14 → 2026-11-21 (+7d) | 2026-11-19 → 2026-11-26 (+7d) |  |  |
| Commercial Rd 01 | **Commercial Road 01** |  | 2026-12-22 → 2026-12-23 (+1d) |  |  |
| Wet Networks | **Wet Networks** |  | 2026-11-18 → 2026-11-25 (+7d) |  |  |
| Stormwater Network | **Stormwater Network** |  | 2026-10-24 → 2026-10-31 (+7d) |  |  |
| GRP | **GRP** |  | 2026-10-24 → 2026-10-31 (+7d) |  |  |
| ?400 | **?400** |  | 2026-10-24 → 2026-10-31 (+7d) |  |  |
| 3 | **Depth From 0.0m to 1.5m** |  | 2026-10-13 → 2026-10-20 (+7d) |  |  |
| B6.33 42 11.013_R | Pipe Laying(Rem) |  | 2026-10-08 → 2026-10-15 (+7d) | 46% → 45% | 48.84d → 48.83d |
| B6.33 42 11.014_R | Embedment & Test(Rem) |  | 2026-10-08 → 2026-10-15 (+7d) |  |  |
| B6.33 42 11.015_R | Backfilling & Warrning Tape(Rem) | 2026-10-11 → 2026-10-18 (+7d) | 2026-10-13 → 2026-10-20 (+7d) |  |  |
| 1 | **Depth From 1.5m to 2.5m** |  | 2026-10-24 → 2026-10-31 (+7d) |  |  |
| B6.33 42 11.02.4_R | Embedment & Test(Rem) | 2026-10-13 → 2026-10-20 (+7d) | 2026-10-17 → 2026-10-24 (+7d) |  |  |
| B6.33 42 11.02.5_R | Backfilling & Warrning Tape(Rem) | 2026-10-19 → 2026-10-26 (+7d) | 2026-10-24 → 2026-10-31 (+7d) |  |  |
| ?500 | **?500** |  | 2026-10-11 → 2026-10-18 (+7d) |  |  |
| 3 | **Depth From 0.0m to 1.5m** |  | 2026-10-11 → 2026-10-18 (+7d) |  |  |
| B6.33 42 11.361060_R | Backfilling & Warrning Tape(Rem) | 2026-10-07 → 2026-10-14 (+7d) | 2026-10-11 → 2026-10-18 (+7d) |  |  |
| ?600 | **?600** |  | 2026-10-10 → 2026-10-17 (+7d) |  |  |
| 3 | **Depth From 0.0m to 1.5m** |  | 2026-10-10 → 2026-10-17 (+7d) |  |  |
| B6.33 42 11.361070_R | Excavation(Rem) | 2026-10-07 → 2026-10-14 (+7d) | 2026-10-10 → 2026-10-17 (+7d) |  |  |
| B6.33 42 11.361080_R | Sand Bedding(Rem) | 2026-10-07 → 2026-10-14 (+7d) | 2026-10-10 → 2026-10-17 (+7d) |  |  |
| B6.33 42 11.361090_R | Pipe Laying(Rem) | 2026-10-07 → 2026-10-14 (+7d) | 2026-10-10 → 2026-10-17 (+7d) |  |  |
| B6.33 42 11.361100_R | Embedment & Test(Rem) | 2026-10-07 → 2026-10-14 (+7d) | 2026-10-10 → 2026-10-17 (+7d) |  |  |
| B6.33 42 11.361110_R | Backfilling & Warrning Tape(Rem) | 2026-10-07 → 2026-10-14 (+7d) | 2026-10-10 → 2026-10-17 (+7d) |  |  |
| ?700 | **?700** |  | 2026-10-10 → 2026-10-17 (+7d) |  |  |
| 3 | **Depth From 0.0m to 1.5m** |  | 2026-10-10 → 2026-10-17 (+7d) |  |  |
| B6.33 42 11.361120_R | Excavation(Rem) |  | 2026-10-08 → 2026-10-15 (+7d) | 49% → 48% |  |
| B6.33 42 11.361130_R | Sand Bedding(Rem) |  | 2026-10-08 → 2026-10-15 (+7d) | 49% → 48% |  |
| B6.33 42 11.361140_R | Pipe Laying(Rem) |  | 2026-10-08 → 2026-10-15 (+7d) | 49% → 48% |  |
| B6.33 42 11.361150_R | Embedment & Test(Rem) |  | 2026-10-08 → 2026-10-15 (+7d) | 49% → 48% |  |
| B6.33 42 11.361160_R | Backfilling & Warrning Tape(Rem) | 2026-10-07 → 2026-10-14 (+7d) | 2026-10-10 → 2026-10-17 (+7d) |  |  |
| ?800 | **?800** |  | 2026-10-13 → 2026-10-20 (+7d) |  |  |
| 3 | **Depth From 0.0m to 1.5m** |  | 2026-10-13 → 2026-10-20 (+7d) |  |  |
| B6.33 42 11.361170_R | Excavation(Rem) |  | 2026-10-08 → 2026-10-15 (+7d) |  |  |
| B6.33 42 11.361180_R | Sand Bedding(Rem) |  | 2026-10-08 → 2026-10-15 (+7d) |  |  |
| B6.33 42 11.361190_R | Pipe Laying(Rem) |  | 2026-10-08 → 2026-10-15 (+7d) | 49% → 48% |  |
| B6.33 42 11.361200_R | Embedment & Test(Rem) |  | 2026-10-08 → 2026-10-15 (+7d) | 49% → 48% |  |
| B6.33 42 11.361210_R | Backfilling & Warrning Tape(Rem) | 2026-10-10 → 2026-10-17 (+7d) | 2026-10-13 → 2026-10-20 (+7d) |  |  |
| ?900 | **?900** |  | 2026-10-19 → 2026-10-26 (+7d) |  |  |
| 3 | **Depth From 0.0m to 1.5m** |  | 2026-10-15 → 2026-10-22 (+7d) |  |  |
| B6.33 42 11.361320_R | Excavation(Rem) | 2026-10-07 → 2026-10-14 (+7d) | 2026-10-10 → 2026-10-17 (+7d) |  |  |
| B6.33 42 11.361330_R | Sand Bedding(Rem) | 2026-10-07 → 2026-10-14 (+7d) | 2026-10-10 → 2026-10-17 (+7d) |  |  |
| B6.33 42 11.361340_R | Pipe Laying(Rem) | 2026-10-07 → 2026-10-14 (+7d) | 2026-10-10 → 2026-10-17 (+7d) |  |  |
| B6.33 42 11.361350_R | Embedment & Test(Rem) | 2026-10-07 → 2026-10-14 (+7d) | 2026-10-10 → 2026-10-17 (+7d) |  |  |
| B6.33 42 11.361360_R | Backfilling & Warrning Tape(Rem) | 2026-10-13 → 2026-10-20 (+7d) | 2026-10-15 → 2026-10-22 (+7d) |  |  |
| 4 | **Depth From 1.5m to 2.5m** |  | 2026-10-19 → 2026-10-26 (+7d) |  |  |
| B6.33 42 11.13.55_R | Backfilling & Warrning Tape(Rem) | 2026-10-15 → 2026-10-22 (+7d) | 2026-10-19 → 2026-10-26 (+7d) |  |  |
| ?1000 | **?1000** |  | 2026-10-18 → 2026-10-25 (+7d) |  |  |
| 3 | **Depth From 0.0m to 1.5m** |  | 2026-10-18 → 2026-10-25 (+7d) |  |  |
| B6.33 42 11.361370_R | Excavation(Rem) | 2026-10-07 → 2026-10-14 (+7d) | 2026-10-10 → 2026-10-17 (+7d) |  |  |
| B6.33 42 11.361380_R | Sand Bedding(Rem) | 2026-10-07 → 2026-10-14 (+7d) | 2026-10-10 → 2026-10-17 (+7d) |  |  |
| B6.33 42 11.361390_R | Pipe Laying(Rem) | 2026-10-07 → 2026-10-14 (+7d) | 2026-10-10 → 2026-10-17 (+7d) |  |  |
| B6.33 42 11.361400_R | Embedment & Test(Rem) | 2026-10-07 → 2026-10-14 (+7d) | 2026-10-10 → 2026-10-17 (+7d) |  |  |
| B6.33 42 11.361410_R | Backfilling & Warrning Tape(Rem) | 2026-10-15 → 2026-10-22 (+7d) | 2026-10-18 → 2026-10-25 (+7d) |  |  |
| ?1100 | **?1100** |  | 2026-10-19 → 2026-10-26 (+7d) |  |  |
| 3 | **Depth From 0.0m to 1.5m** |  | 2026-10-15 → 2026-10-22 (+7d) |  |  |
| B6.33 42 11.361220_R | Excavation(Rem) | 2026-10-07 → 2026-10-14 (+7d) | 2026-10-10 → 2026-10-17 (+7d) |  |  |
| B6.33 42 11.361230_R | Sand Bedding(Rem) | 2026-10-07 → 2026-10-14 (+7d) | 2026-10-10 → 2026-10-17 (+7d) |  |  |
| B6.33 42 11.361240_R | Pipe Laying(Rem) | 2026-10-07 → 2026-10-14 (+7d) | 2026-10-10 → 2026-10-17 (+7d) |  |  |
| B6.33 42 11.361250_R | Embedment & Test(Rem) | 2026-10-07 → 2026-10-14 (+7d) | 2026-10-10 → 2026-10-17 (+7d) |  |  |
| B6.33 42 11.361260_R | Backfilling & Warrning Tape(Rem) | 2026-10-13 → 2026-10-20 (+7d) | 2026-10-15 → 2026-10-22 (+7d) |  |  |
| 4 | **Depth From 1.5m to 2.5m** |  | 2026-10-19 → 2026-10-26 (+7d) |  |  |
| B6.33 42 11.13.105_R | Backfilling & Warrning Tape(Rem) | 2026-10-15 → 2026-10-22 (+7d) | 2026-10-19 → 2026-10-26 (+7d) |  |  |
| ?1200 | **?1200** |  | 2026-10-15 → 2026-10-22 (+7d) |  |  |
| 3 | **Depth From 0.0m to 1.5m** |  | 2026-10-10 → 2026-10-17 (+7d) |  |  |
| B6.33 42 11.361270_R | Excavation(Rem) | 2026-10-07 → 2026-10-14 (+7d) | 2026-10-10 → 2026-10-17 (+7d) |  |  |
| B6.33 42 11.361280_R | Sand Bedding(Rem) | 2026-10-07 → 2026-10-14 (+7d) | 2026-10-10 → 2026-10-17 (+7d) |  |  |
| B6.33 42 11.361290_R | Pipe Laying(Rem) | 2026-10-07 → 2026-10-14 (+7d) | 2026-10-10 → 2026-10-17 (+7d) |  |  |
| B6.33 42 11.361300_R | Embedment & Test(Rem) | 2026-10-07 → 2026-10-14 (+7d) | 2026-10-10 → 2026-10-17 (+7d) |  |  |
| B6.33 42 11.361310_R | Backfilling & Warrning Tape(Rem) | 2026-10-07 → 2026-10-14 (+7d) | 2026-10-10 → 2026-10-17 (+7d) |  |  |

| ID | Task | Start | Finish | Complete | Total float |
| --- | --- | --- | --- | --- | --- |
| 4 | **Depth From 1.5m to 2.5m** |  | 2026-10-15 → 2026-10-22 (+7d) |  |  |
| B6.33 42 11.13.115_R | Excavation(Rem) |  | 2026-10-08 → 2026-10-15 (+7d) | 49% → 48% |  |
| B6.33 42 11.13.125_R | Sand Bedding(Rem) |  | 2026-10-08 → 2026-10-15 (+7d) | 49% → 48% |  |
| B6.33 42 11.13.135_R | Pipe Laying(Rem) |  | 2026-10-08 → 2026-10-15 (+7d) | 49% → 48% |  |
| B6.33 42 11.13.145_R | Embedment & Test(Rem) |  | 2026-10-08 → 2026-10-15 (+7d) | 49% → 48% |  |
| B6.33 42 11.13.155_R | Backfilling & Warrning Tape(Rem) | 2026-10-11 → 2026-10-18 (+7d) | 2026-10-15 → 2026-10-22 (+7d) |  |  |
| ?1300 | **?1300** |  | 2026-10-17 → 2026-10-24 (+7d) |  |  |
| 3 | **Depth From 0.0m to 1.5m** |  | 2026-10-10 → 2026-10-17 (+7d) |  |  |
| B6.33 42 11.361420_R | Excavation(Rem) | 2026-10-07 → 2026-10-14 (+7d) | 2026-10-10 → 2026-10-17 (+7d) |  |  |
| B6.33 42 11.361430_R | Sand Bedding(Rem) | 2026-10-07 → 2026-10-14 (+7d) | 2026-10-10 → 2026-10-17 (+7d) |  |  |
| B6.33 42 11.361440_R | Pipe Laying(Rem) | 2026-10-07 → 2026-10-14 (+7d) | 2026-10-10 → 2026-10-17 (+7d) |  |  |
| B6.33 42 11.361450_R | Embedment & Test(Rem) | 2026-10-07 → 2026-10-14 (+7d) | 2026-10-10 → 2026-10-17 (+7d) |  |  |
| B6.33 42 11.361460_R | Backfilling & Warrning Tape(Rem) | 2026-10-07 → 2026-10-14 (+7d) | 2026-10-10 → 2026-10-17 (+7d) |  |  |
| 4 | **Depth From 1.5m to 2.5m** |  | 2026-10-17 → 2026-10-24 (+7d) |  |  |
| B6.33 42 11.13.185_R | Pipe Laying(Rem) | 2026-10-07 → 2026-10-14 (+7d) | 2026-10-10 → 2026-10-17 (+7d) |  |  |
| B6.33 42 11.13.195_R | Embedment & Test(Rem) | 2026-10-07 → 2026-10-14 (+7d) | 2026-10-10 → 2026-10-17 (+7d) |  |  |
| B6.33 42 11.13.205_R | Backfilling & Warrning Tape(Rem) | 2026-10-13 → 2026-10-20 (+7d) | 2026-10-17 → 2026-10-24 (+7d) |  |  |
| ?1400 | **?1400** |  | 2026-10-15 → 2026-10-22 (+7d) |  |  |
| 3 | **Depth From 0.0m to 1.5m** |  | 2026-10-10 → 2026-10-17 (+7d) |  |  |
| B6.33 42 11.361470_R | Excavation(Rem) | 2026-10-07 → 2026-10-14 (+7d) | 2026-10-10 → 2026-10-17 (+7d) |  |  |
| B6.33 42 11.361480_R | Sand Bedding(Rem) | 2026-10-07 → 2026-10-14 (+7d) | 2026-10-10 → 2026-10-17 (+7d) |  |  |
| B6.33 42 11.361490_R | Pipe Laying(Rem) | 2026-10-07 → 2026-10-14 (+7d) | 2026-10-10 → 2026-10-17 (+7d) |  |  |
| B6.33 42 11.361500_R | Embedment & Test(Rem) | 2026-10-07 → 2026-10-14 (+7d) | 2026-10-10 → 2026-10-17 (+7d) |  |  |
| B6.33 42 11.361510_R | Backfilling & Warrning Tape(Rem) | 2026-10-07 → 2026-10-14 (+7d) | 2026-10-10 → 2026-10-17 (+7d) |  |  |
| 4 | **Depth From 1.5m to 2.5m** |  | 2026-10-15 → 2026-10-22 (+7d) |  |  |
| B6.33 42 11.13.215_R | Excavation(Rem) | 2026-10-07 → 2026-10-14 (+7d) | 2026-10-10 → 2026-10-17 (+7d) |  |  |
| B6.33 42 11.13.225_R | Sand Bedding(Rem) | 2026-10-07 → 2026-10-14 (+7d) | 2026-10-10 → 2026-10-17 (+7d) |  |  |
| B6.33 42 11.13.235_R | Pipe Laying(Rem) | 2026-10-07 → 2026-10-14 (+7d) | 2026-10-10 → 2026-10-17 (+7d) |  |  |
| B6.33 42 11.13.245_R | Embedment & Test(Rem) | 2026-10-07 → 2026-10-14 (+7d) | 2026-10-10 → 2026-10-17 (+7d) |  |  |
| B6.33 42 11.13.255_R | Backfilling & Warrning Tape(Rem) | 2026-10-11 → 2026-10-18 (+7d) | 2026-10-15 → 2026-10-22 (+7d) |  |  |
| ?1500 | **?1500** |  | 2026-10-14 → 2026-10-21 (+7d) |  |  |
| 3 | **Depth From 0.0m to 1.5m** |  | 2026-10-14 → 2026-10-21 (+7d) |  |  |
| B6.33 42 11.361520_R | Excavation(Rem) | 2026-10-07 → 2026-10-14 (+7d) | 2026-10-10 → 2026-10-17 (+7d) |  |  |
| B6.33 42 11.361530_R | Sand Bedding(Rem) | 2026-10-07 → 2026-10-14 (+7d) | 2026-10-10 → 2026-10-17 (+7d) |  |  |
| B6.33 42 11.361540_R | Pipe Laying(Rem) | 2026-10-07 → 2026-10-14 (+7d) | 2026-10-10 → 2026-10-17 (+7d) |  |  |
| B6.33 42 11.361550_R | Embedment & Test(Rem) | 2026-10-07 → 2026-10-14 (+7d) | 2026-10-10 → 2026-10-17 (+7d) |  |  |
| B6.33 42 11.361560_R | Backfilling & Warrning Tape(Rem) | 2026-10-11 → 2026-10-18 (+7d) | 2026-10-14 → 2026-10-21 (+7d) |  |  |
| B6.33 05 40.01.700 | Blinding Conc. | 2026-10-07 → 2026-10-14 (+7d) | 2026-10-10 → 2026-10-17 (+7d) |  | 100.32d → 106.32d |
| B6.33 05 40.01.720 | Backfilling, DI Frame & Grate Cover Fixing | 2026-10-15 → 2026-10-14 (-1d) |  |  | 100.32d → 106.48d |
| B6.33 05 40.01.710 | Catch Basin Installation | 2026-10-11 → 2026-10-18 (+7d) | 2026-10-14 → 2026-10-21 (+7d) |  | 100.32d → 106.32d |
| UPVC | **UPVC** |  | 2026-10-14 → 2026-10-21 (+7d) |  |  |
| UPVC300 | **?300 From 0.0 to 1.5m** |  | 2026-10-10 → 2026-10-14 (+4d) |  |  |
| B6.33 42 11.35-11_R | Catch Basin Opening Prep.(Rem) | 2026-10-07 A | 2026-10-10 → 2026-10-14 (+4d) | 0% → 58% | 111.23d → 112.44d |
| B6.33 42 11.35-12_R | Fittings & Pipe Installation(Rem) | 2026-10-07 A | 2026-10-10 → 2026-10-14 (+4d) | 0% → 58% | 111.23d → 112.44d |
| UPVC3001 | **?400 From 0.0 to 1.5m** |  | 2026-10-14 → 2026-10-21 (+7d) |  |  |
| B6.33 42 11.36-11_R | Catch Basin Opening Prep.(Rem) | 2026-10-13 → 2026-10-08 A (-5d) | 2026-10-14 → 2026-10-21 (+7d) | 0% → 58% | 100.32d → 106.32d |
| B6.33 42 11.36-12_R | Fittings & Pipe Installation(Rem) | 2026-10-13 → 2026-10-10 A (-3d) |  | 0% → 58% | 100.32d → 106.48d |
| Potable Water | **Potable Water Network** |  | 2026-11-07 → 2026-11-14 (+7d) |  |  |
| HDPE | **HDPE Pipes** |  | 2026-10-20 → 2026-10-27 (+7d) |  |  |
| ?110mm | **?110mm** |  | 2026-10-20 → 2026-10-27 (+7d) |  |  |
| Depth: 0.0m - 1.5m | **Depth: 0.0m - 1.5m** |  | 2026-10-10 → 2026-10-17 (+7d) |  |  |
| B3.33 14 13.01.01.1_R | Excavation(Rem) | 2026-10-07 → 2026-10-14 (+7d) | 2026-10-10 → 2026-10-17 (+7d) |  |  |
| B3.33 14 13.01.01.2_R | Sand Bedding(Rem) | 2026-10-07 → 2026-10-14 (+7d) | 2026-10-10 → 2026-10-17 (+7d) |  |  |
| B3.33 14 13.01.01.3_R | Pipe Laying(Rem) | 2026-10-07 → 2026-10-14 (+7d) | 2026-10-10 → 2026-10-17 (+7d) |  |  |
| B3.33 14 13.01.01.5_R | Backfilling & Warrning Tape(Rem) | 2026-10-07 → 2026-10-14 (+7d) | 2026-10-10 → 2026-10-17 (+7d) |  |  |
| B3.33 14 13.01.01.4_R | Embedment & Test(Rem) | 2026-10-07 → 2026-10-14 (+7d) | 2026-10-10 → 2026-10-17 (+7d) |  |  |
| Depth: 1.51m - 2.5m | **Depth: 1.51m - 2.5m** |  | 2026-10-20 → 2026-10-27 (+7d) |  |  |
| B3.33 14 13.01.02.1_R | Excavation(Rem) | 2026-10-07 → 2026-10-14 (+7d) | 2026-10-10 → 2026-10-17 (+7d) |  |  |
| B3.33 14 13.01.02.2_R | Sand Bedding(Rem) | 2026-10-07 → 2026-10-14 (+7d) | 2026-10-10 → 2026-10-17 (+7d) |  |  |
| B3.33 14 13.01.02.3_R | Pipe Laying(Rem) | 2026-10-07 → 2026-10-14 (+7d) | 2026-10-10 → 2026-10-17 (+7d) |  |  |
| B3.33 14 13.01.02.4_R | Embedment & Test(Rem) | 2026-10-07 → 2026-10-14 (+7d) | 2026-10-10 → 2026-10-17 (+7d) |  |  |
| B3.33 14 13.01.02.5_R | Backfilling & Warrning Tape(Rem) | 2026-10-17 → 2026-10-24 (+7d) | 2026-10-20 → 2026-10-27 (+7d) |  |  |
| Valves & Chambers | **Valves & Chambers** |  | 2026-11-07 → 2026-11-14 (+7d) |  |  |
| GV | **Gate Valves** |  | 2026-10-13 → 2026-10-20 (+7d) |  |  |
| 1 | **Gate valves dia (110) mm** |  | 2026-10-13 → 2026-10-20 (+7d) |  |  |
| B3.33 14 19.01.106_R | Burried Isolation Valve Installation(Rem) | 2026-10-07 → 2026-10-14 (+7d) | 2026-10-10 → 2026-10-17 (+7d) |  |  |
| B3.33 14 19.01.107 | Spindle & Surface Box | 2026-10-11 → 2026-10-18 (+7d) | 2026-10-13 → 2026-10-20 (+7d) |  |  |
| 2 | **Air Valves** | 2026-10-11 → 2026-10-18 (+7d) | 2026-11-03 → 2026-11-10 (+7d) |  |  |
| 4 | **Air valves on less than 315 mm. (In Chamber)** | 2026-10-11 → 2026-10-18 (+7d) | 2026-11-03 → 2026-11-10 (+7d) |  |  |
| B3.33 05 63.02.22 | Land Adjustment & Compaction | 2026-10-11 → 2026-10-18 (+7d) | 2026-10-13 → 2026-10-20 (+7d) |  | 64.32d → 69.32d |

| ID | Task | Start | Finish | Total float |
| --- | --- | --- | --- | --- |
| B3.33 05 63.02.20 | Foundations | 2026-10-14 → 2026-10-21 (+7d) | 2026-10-18 → 2026-10-25 (+7d) | 79.32d → 84.32d |
| B3.33 05 63.02.23 | Chambers Walls Conc Cast In Situ | 2026-10-19 → 2026-10-26 (+7d) | 2026-10-22 → 2026-10-29 (+7d) | 79.32d → 84.32d |
| B3.33 05 63.02.21 | Chamber Curing, Finishing & Steel Cover | 2026-10-24 → 2026-10-31 (+7d) | 2026-10-28 → 2026-11-04 (+7d) | 79.32d → 84.32d |
| B3.33 05 63.02.24 | Valve & Fitting Installation | 2026-10-29 → 2026-11-05 (+7d) | 2026-11-03 → 2026-11-10 (+7d) | 79.32d → 84.32d |
| Washout Valves | **Washout Valves** | 2026-10-14 → 2026-10-21 (+7d) | 2026-11-07 → 2026-11-14 (+7d) |  |
| 4 | **Washout valves on 110-400 mm. (In Chamber)** | 2026-10-14 → 2026-10-21 (+7d) | 2026-11-07 → 2026-11-14 (+7d) |  |
| B3.33 05 63.01.17 | Land Adjustment & Compaction | 2026-10-14 → 2026-10-21 (+7d) | 2026-10-17 → 2026-10-24 (+7d) | 64.32d → 69.32d |
| B3.33 05 63.01.15 | Foundations | 2026-10-18 → 2026-10-25 (+7d) | 2026-10-21 → 2026-10-28 (+7d) |  |
| B3.33 05 63.01.18 | Chambers Walls Conc Cast In Situ | 2026-10-22 → 2026-10-29 (+7d) | 2026-10-26 → 2026-11-02 (+7d) |  |
| B3.33 05 63.01.16 | Chamber Curing, Finishing & Steel Cover | 2026-10-27 → 2026-11-03 (+7d) | 2026-11-01 → 2026-11-08 (+7d) |  |
| B3.33 05 63.01.19 | Valve & Fitting Installation | 2026-11-02 → 2026-11-09 (+7d) | 2026-11-07 → 2026-11-14 (+7d) |  |
| Crossing | **Plots and Buildings Crossing** | 2026-10-18 → 2026-10-25 (+7d) | 2026-11-05 → 2026-11-12 (+7d) |  |
| B3.33 14 13.02.16 | Earthwork | 2026-10-18 → 2026-10-25 (+7d) | 2026-10-25 → 2026-11-01 (+7d) | 64.32d → 69.32d |
| B3.33 14 13.02.17 | Sand Bedding | 2026-10-26 → 2026-11-02 (+7d) | 2026-10-28 → 2026-11-04 (+7d) |  |
| B3.33 14 13.02.18 | Tee, Pipe (Crossing) Installation & Backfilling | 2026-10-29 → 2026-11-05 (+7d) | 2026-11-05 → 2026-11-12 (+7d) |  |
| Fire Fighting | **Fire Fighting Network** |  | 2026-11-18 → 2026-11-25 (+7d) |  |
| B3.1. 33 14 13.01_R | Excavation(Rem) | 2026-10-07 → 2026-10-14 (+7d) | 2026-10-11 → 2026-10-18 (+7d) |  |
| B3.1. 33 14 13.02_R | Sand Bedding(Rem) | 2026-10-07 → 2026-10-14 (+7d) | 2026-10-11 → 2026-10-18 (+7d) | 66.32d → 69.25d |
| B3.1. 33 14 13.03_R | Pipe Laying(Rem) | 2026-10-07 → 2026-10-14 (+7d) | 2026-10-11 → 2026-10-18 (+7d) | 66.32d → 69.25d |
| B3.1. 33 14 13.2_R | Excavation(Rem) | 2026-10-07 → 2026-10-14 (+7d) | 2026-10-11 → 2026-10-18 (+7d) |  |
| B3.1. 33 14 13.3_R | Sand Bedding(Rem) | 2026-10-07 → 2026-10-14 (+7d) | 2026-10-11 → 2026-10-18 (+7d) | 66.32d → 69.25d |
| B3.1. 33 14 13.4_R | Pipe Laying(Rem) | 2026-10-07 → 2026-10-14 (+7d) | 2026-10-11 → 2026-10-18 (+7d) | 66.32d → 69.25d |
| B3.1. 33 14 13.22_R | Excavation(Rem) | 2026-10-07 → 2026-10-14 (+7d) | 2026-10-11 → 2026-10-18 (+7d) |  |
| B3.1. 33 14 13.23_R | Sand Bedding(Rem) | 2026-10-07 → 2026-10-14 (+7d) | 2026-10-11 → 2026-10-18 (+7d) | 66.32d → 69.25d |
| B3.1. 33 14 13.24_R | Pipe Laying(Rem) | 2026-10-07 → 2026-10-14 (+7d) | 2026-10-11 → 2026-10-18 (+7d) | 66.32d → 69.25d |
| Valves & Chambers | **Valves & Chambers** | 2026-10-11 → 2026-10-18 (+7d) | 2026-11-15 → 2026-11-22 (+7d) |  |
| 2 | **Air Valves** | 2026-10-11 → 2026-10-18 (+7d) | 2026-11-10 → 2026-11-17 (+7d) |  |
| 4 | **Air valves on less than 315 mm. (In Chamber)** | 2026-10-11 → 2026-10-18 (+7d) | 2026-11-10 → 2026-11-17 (+7d) |  |
| B3.33 05 63.02.47 | Land Adjustment & Compaction | 2026-10-11 → 2026-10-18 (+7d) | 2026-10-15 → 2026-10-22 (+7d) |  |
| B3.33 05 63.02.45 | Foundations | 2026-10-15 → 2026-10-22 (+7d) | 2026-10-21 → 2026-10-28 (+7d) | 79.88d → 83.88d |
| B3.33 05 63.02.48 | Chambers Walls Conc Cast In Situ | 2026-10-21 → 2026-10-28 (+7d) | 2026-10-27 → 2026-11-03 (+7d) | 79.88d → 83.88d |
| B3.33 05 63.02.46 | Chamber Curing, Finishing & Steel Cover | 2026-10-27 → 2026-11-03 (+7d) | 2026-11-03 → 2026-11-10 (+7d) | 79.88d → 83.88d |
| B3.33 05 63.02.49 | Valve & Fitting Installation | 2026-11-03 → 2026-11-10 (+7d) | 2026-11-10 → 2026-11-17 (+7d) |  |
| Washout Valves | **Washout Valves** | 2026-10-15 → 2026-10-22 (+7d) | 2026-11-15 → 2026-11-22 (+7d) |  |
| 4 | **Washout valves on 110-400 mm. (In Chamber)** | 2026-10-15 → 2026-10-22 (+7d) | 2026-11-15 → 2026-11-22 (+7d) |  |
| B3.33 05 63.01.37 | Land Adjustment & Compaction | 2026-10-15 → 2026-10-22 (+7d) | 2026-10-20 → 2026-10-27 (+7d) |  |
| B3.33 05 63.01.35 | Foundations | 2026-10-20 → 2026-10-27 (+7d) | 2026-10-26 → 2026-11-02 (+7d) |  |
| B3.33 05 63.01.38 | Chambers Walls Conc Cast In Situ | 2026-10-26 → 2026-11-02 (+7d) | 2026-11-01 → 2026-11-08 (+7d) |  |
| B3.33 05 63.01.36 | Chamber Curing, Finishing & Steel Cover | 2026-11-01 → 2026-11-08 (+7d) | 2026-11-08 → 2026-11-15 (+7d) |  |
| B3.33 05 63.01.39 | Valve & Fitting Installation | 2026-11-08 → 2026-11-15 (+7d) | 2026-11-15 → 2026-11-22 (+7d) |  |
| 3 | **Fire Hydrant** |  | 2026-11-18 → 2026-11-25 (+7d) |  |
| B3.33 14 19.01.fh19_R | Firehydrant Fixing/Installation(Rem) | 2026-11-10 → 2026-11-17 (+7d) | 2026-11-16 → 2026-11-23 (+7d) |  |
| B3.33 14 19.01.fh20_R | Riser Pipe & Flanged Fittings Installation(Rem) | 2026-11-10 → 2026-11-17 (+7d) | 2026-11-15 → 2026-11-22 (+7d) |  |
| B3.33 14 19.01.fh21_R | Backfilling & Compaction(Rem) | 2026-11-10 → 2026-11-17 (+7d) | 2026-11-18 → 2026-11-25 (+7d) |  |
| Dry Networks | **Dry Networks** | 2026-10-26 → 2026-11-02 (+7d) | 2026-12-06 → 2026-12-13 (+7d) |  |
| MV | **Medium Voltage Network** |  | 2026-12-01 → 2026-12-08 (+7d) |  |
| Duct Banks | **Duct Banks** |  | 2026-11-19 → 2026-11-25 (+6d) |  |
| 4 Way | **4 Way** |  | 2026-11-19 → 2026-11-25 (+6d) |  |
| B2.33 71 00 02 45 | Backfilling & Warrning Tape | 2026-11-16 → 2026-11-21 (+5d) | 2026-11-19 → 2026-11-25 (+6d) | 71.32d → 73.21d |
| Cables | **Cables** | 2026-11-18 → 2026-11-25 (+7d) | 2026-12-01 → 2026-12-08 (+7d) |  |
| 3C,500mm2 | **3C,500mm2** | 2026-11-18 → 2026-11-25 (+7d) | 2026-12-01 → 2026-12-08 (+7d) |  |
| B2.33 71 49.23.65 | Cable 13.8 kV Unarmored | 2026-11-18 → 2026-11-25 (+7d) | 2026-11-24 → 2026-12-01 (+7d) |  |
| B2.33 71 49.23.66 | Straight joints cables | 2026-11-24 → 2026-12-01 (+7d) | 2026-11-28 → 2026-12-05 (+7d) |  |
| B2.33 71 49.23.67 | Cable Termination | 2026-11-28 → 2026-12-05 (+7d) | 2026-12-01 → 2026-12-08 (+7d) |  |
| Street Lighting | **Street Lighting** | 2026-11-24 → 2026-12-01 (+7d) | 2026-12-06 → 2026-12-13 (+7d) |  |
| SL Poles | **SL Poles** | 2026-11-24 → 2026-12-01 (+7d) | 2026-12-06 → 2026-12-13 (+7d) |  |
| Pole (10 M Sngl Arm) | **Pole (10 M Single Arm)** | 2026-11-24 → 2026-12-01 (+7d) | 2026-12-06 → 2026-12-13 (+7d) |  |
| B2.33 71 16.35 | Excavation | 2026-11-24 → 2026-12-01 (+7d) | 2026-11-28 → 2026-12-05 (+7d) |  |
| B2.33 71 16.38 | Backfilling, Grouting & Chamfering | 2026-11-26 → 2026-12-03 (+7d) | 2026-11-29 → 2026-12-06 (+7d) |  |
| B2.33 71 16.36 | PC & RC Foundation | 2026-11-28 → 2026-12-05 (+7d) | 2026-12-01 → 2026-12-08 (+7d) |  |
| B2.33 71 16.37 | Lighting Poles Installation Incl power box, Cables | 2026-12-01 → 2026-12-08 (+7d) | 2026-12-03 → 2026-12-10 (+7d) |  |
| B2.26.56.19.2 | Lighting Luminares Inst | 2026-12-03 → 2026-12-10 (+7d) | 2026-12-06 → 2026-12-13 (+7d) |  |
| Earthing | **Earthing** | 2026-11-26 → 2026-12-03 (+7d) | 2026-12-02 → 2026-12-09 (+7d) |  |
| B2.33 71 19 23 | Land Adjustment | 2026-11-26 → 2026-12-03 (+7d) | 2026-11-29 → 2026-12-06 (+7d) |  |
| B2.33 71 19 24 | Earth Rods & Conduits | 2026-11-30 → 2026-12-07 (+7d) | 2026-11-30 → 2026-12-07 (+7d) |  |
| B2.33 71 19 25 | Backfilling | 2026-12-01 → 2026-12-08 (+7d) | 2026-12-02 → 2026-12-09 (+7d) |  |
| Telecommunication | **Telecommunication Network** | 2026-10-26 → 2026-11-02 (+7d) | 2026-11-29 → 2026-12-06 (+7d) |  |
| Ducts | **Ducts** | 2026-10-26 → 2026-11-02 (+7d) | 2026-11-29 → 2026-12-06 (+7d) |  |
| (6*50mm) | **Size (6*50mm) HDPE ducts** | 2026-10-26 → 2026-11-02 (+7d) | 2026-11-01 → 2026-11-08 (+7d) |  |
| B2.1.33 81 26.54 | Excavation | 2026-10-26 → 2026-11-02 (+7d) | 2026-10-27 → 2026-11-03 (+7d) |  |

| ID | Task | Start | Finish | Total float |
| --- | --- | --- | --- | --- |
| B2.1.33 81 26.55 | HDPE Pipe, Shuttering, Steel Fixing & Conc. Cast | 2026-10-28 → 2026-11-04 (+7d) | 2026-10-29 → 2026-11-05 (+7d) |  |
| B2.1.33 81 26.56 | Backfilling & Warrning Tape | 2026-10-31 → 2026-11-07 (+7d) | 2026-11-01 → 2026-11-08 (+7d) |  |
| (6*50mm+2*32mm) | **Size (6*50mm+2*32mm) HDPE ducts** | 2026-10-26 → 2026-11-02 (+7d) | 2026-11-26 → 2026-12-03 (+7d) |  |
| B2.1.33 81 26.57 | Excavation | 2026-10-26 → 2026-11-02 (+7d) | 2026-10-27 → 2026-11-03 (+7d) |  |
| B2.1.33 81 26.58 | HDPE Pipe, Shuttering, Steel Fixing & Conc. Cast | 2026-10-28 → 2026-11-04 (+7d) | 2026-10-29 → 2026-11-05 (+7d) |  |
| B2.1.33 81 26.59 | Backfilling & Warrning Tape | 2026-11-25 → 2026-12-02 (+7d) | 2026-11-26 → 2026-12-03 (+7d) |  |
| (6*50mm+4*32mm) | **Size (6*50mm+4*32mm) HDPE ducts** | 2026-10-26 → 2026-11-02 (+7d) | 2026-11-01 → 2026-11-08 (+7d) |  |
| B2.1.33 81 26.60 | Excavation | 2026-10-26 → 2026-11-02 (+7d) | 2026-10-27 → 2026-11-03 (+7d) |  |
| B2.1.33 81 26.61 | HDPE Pipe, Shuttering, Steel Fixing & Conc. Cast | 2026-10-28 → 2026-11-04 (+7d) | 2026-10-29 → 2026-11-05 (+7d) |  |
| B2.1.33 81 26.62 | Backfilling & Warrning Tape | 2026-10-31 → 2026-11-07 (+7d) | 2026-11-01 → 2026-11-08 (+7d) |  |
| (2*32mm) | **Size (2*32mm) HDPE ducts** | 2026-10-26 → 2026-11-02 (+7d) | 2026-11-01 → 2026-11-08 (+7d) |  |
| B2.1.33 81 26.63 | Excavation | 2026-10-26 → 2026-11-02 (+7d) | 2026-10-27 → 2026-11-03 (+7d) |  |
| B2.1.33 81 26.64 | HDPE Pipe, Shuttering, Steel Fixing & Conc. Cast | 2026-10-28 → 2026-11-04 (+7d) | 2026-10-29 → 2026-11-05 (+7d) |  |
| B2.1.33 81 26.65 | Backfilling & Warrning Tape | 2026-10-31 → 2026-11-07 (+7d) | 2026-11-01 → 2026-11-08 (+7d) |  |
| (4*32mm) | **Size (4*32mm) HDPE ducts** | 2026-10-28 → 2026-11-04 (+7d) | 2026-11-29 → 2026-12-06 (+7d) |  |
| B2.1.33 81 26.66 | Excavation | 2026-10-28 → 2026-11-04 (+7d) | 2026-10-29 → 2026-11-05 (+7d) |  |
| B2.1.33 81 26.67 | HDPE Pipe, Shuttering, Steel Fixing & Conc. Cast | 2026-10-31 → 2026-11-07 (+7d) | 2026-11-01 → 2026-11-08 (+7d) |  |
| B2.1.33 81 26.68 | Backfilling & Warrning Tape | 2026-11-28 → 2026-12-05 (+7d) | 2026-11-29 → 2026-12-06 (+7d) |  |
| Manholes | **Manholes** | 2026-10-28 → 2026-11-04 (+7d) | 2026-11-03 → 2026-11-10 (+7d) |  |
| Manhole Type 1 | **Manhole Type 1** | 2026-10-28 → 2026-11-04 (+7d) | 2026-11-03 → 2026-11-10 (+7d) |  |
| B2.31 23 00.603 | Excavation | 2026-10-28 → 2026-11-04 (+7d) | 2026-10-29 → 2026-11-05 (+7d) |  |
| B2.33 71 00.214 | Manhole Installation | 2026-10-31 → 2026-11-07 (+7d) | 2026-11-01 → 2026-11-08 (+7d) |  |
| B2.33 71 00.215 | Backfilling & Warrning Tape | 2026-11-02 → 2026-11-09 (+7d) | 2026-11-03 → 2026-11-10 (+7d) |  |
| Manhole Type 2 | **Manhole Type 2** | 2026-10-28 → 2026-11-04 (+7d) | 2026-11-03 → 2026-11-10 (+7d) |  |
| B2.31 23 00.604 | Excavation | 2026-10-28 → 2026-11-04 (+7d) | 2026-10-29 → 2026-11-05 (+7d) |  |
| B2.33 71 00.216 | Manhole Installation | 2026-10-31 → 2026-11-07 (+7d) | 2026-11-01 → 2026-11-08 (+7d) |  |
| B2.33 71 00.217 | Backfilling & Warrning Tape | 2026-11-02 → 2026-11-09 (+7d) | 2026-11-03 → 2026-11-10 (+7d) |  |
| Crossing Ducts | **Road Crossing Ducts** | 2026-10-31 → 2026-11-07 (+7d) | 2026-11-05 → 2026-11-12 (+7d) |  |
| 1 | **Size (6*50mm) HDPE** | 2026-10-31 → 2026-11-07 (+7d) | 2026-11-05 → 2026-11-12 (+7d) |  |
| B2.31 23 00.605 | Excavation | 2026-10-31 → 2026-11-07 (+7d) | 2026-11-01 → 2026-11-08 (+7d) |  |
| B2.33 71 00.218 | Shuttering, Steel Fixing Incl. UPVC Pipe & Conc. Cast | 2026-11-02 → 2026-11-09 (+7d) | 2026-11-03 → 2026-11-10 (+7d) |  |
| B2.33 71 00.219 | Backfilling & Warrning Tape | 2026-11-04 → 2026-11-11 (+7d) | 2026-11-05 → 2026-11-12 (+7d) |  |
| Earth & Road Works | **Earth & Road Works** |  | 2026-12-16 → 2026-12-23 (+7d) |  |
| Earth Layers | **Earth Layers** |  | 2026-10-08 → 2026-10-15 (+7d) |  |
| B1.2.32 11 13.01.3_R | Subgrade(Rem) | 2026-10-07 → 2026-10-14 (+7d) | 2026-10-08 → 2026-10-15 (+7d) |  |
| B1.2.32 11 23.01.3_R | Aggregate Base Course(Rem) | 2026-10-07 → 2026-10-14 (+7d) | 2026-10-08 → 2026-10-15 (+7d) |  |
| Interlock | **Interlock** | 2026-12-14 → 2026-12-21 (+7d) | 2026-12-16 → 2026-12-23 (+7d) |  |
| B1.2.32 14 13.13.3 | 60mm thick - Interlocking Block Pavers | 2026-12-14 → 2026-12-21 (+7d) | 2026-12-16 → 2026-12-23 (+7d) |  |
| Curbstone | **Curbstone** | 2026-11-24 → 2026-12-01 (+7d) | 2026-12-06 → 2026-12-13 (+7d) |  |
| Pre Install | **Pre-Installation** | 2026-11-24 → 2026-12-01 (+7d) | 2026-12-01 → 2026-12-08 (+7d) |  |
| B2.31 23 00.61 | Excavation | 2026-11-24 → 2026-12-01 (+7d) | 2026-11-26 → 2026-12-03 (+7d) |  |
| B1.2.32 14 13.13.23 | PCC | 2026-11-26 → 2026-12-03 (+7d) | 2026-11-29 → 2026-12-06 (+7d) |  |
| 32 16 13.003 | Haunching | 2026-11-29 → 2026-12-06 (+7d) | 2026-12-01 → 2026-12-08 (+7d) |  |
| Installation | **Installation** | 2026-12-01 → 2026-12-08 (+7d) | 2026-12-03 → 2026-12-10 (+7d) |  |
| B1.2.32 16.13.01.3 | Curb Stone, Type K1 | 2026-12-01 → 2026-12-08 (+7d) | 2026-12-03 → 2026-12-10 (+7d) |  |
| B1.2.32 16.13.03.3 | Edge Curb, Type K4 | 2026-12-01 → 2026-12-08 (+7d) | 2026-12-03 → 2026-12-10 (+7d) |  |
| Finishing | **Finishing** | 2026-12-03 → 2026-12-10 (+7d) | 2026-12-06 → 2026-12-13 (+7d) |  |
| 32 16 13.03 | Finishing, Fareface | 2026-12-03 → 2026-12-10 (+7d) | 2026-12-06 → 2026-12-13 (+7d) |  |
| Asphalt Layers | **Asphalt Layers** | 2026-10-08 → 2026-10-15 (+7d) | 2026-12-08 → 2026-12-15 (+7d) |  |
| B1.2.32 11 26.01.3 | Bituminous Base Course including Prime Coat (MC1) and tack coat (RC2) | 2026-10-08 → 2026-10-15 (+7d) | 2026-10-11 → 2026-10-18 (+7d) |  |
| B1.2.32 12 16.01.3 | Bituminous concrete Wearing Course, including tack coat (RC2) | 2026-12-02 → 2026-12-09 (+7d) | 2026-12-08 → 2026-12-15 (+7d) |  |
| Pavement Marking | **Pavement Marking** | 2026-12-08 → 2026-12-15 (+7d) | 2026-12-13 → 2026-12-20 (+7d) |  |
| B1.2.32 17 23.02.3 | Retroreflective Thermoplastic Yellow, Traffic lines | 2026-12-08 → 2026-12-15 (+7d) | 2026-12-10 → 2026-12-17 (+7d) |  |
| B1.2.32 17 23.01.3 | Retroreflective Thermoplastic White Traffic lines | 2026-12-10 → 2026-12-17 (+7d) | 2026-12-13 → 2026-12-20 (+7d) |  |
| Traffic Signs | **Traffic Signs** | 2026-11-24 → 2026-12-01 (+7d) | 2026-12-10 → 2026-12-17 (+7d) |  |
| Pre Install | **Pre-Installation** | 2026-11-24 → 2026-12-01 (+7d) | 2026-11-29 → 2026-12-06 (+7d) |  |
| B2.31 23 00.71 | Excavation | 2026-11-24 → 2026-12-01 (+7d) | 2026-11-26 → 2026-12-03 (+7d) |  |
| 10 14 53.03 | Foundation | 2026-11-26 → 2026-12-03 (+7d) | 2026-11-29 → 2026-12-06 (+7d) |  |
| Installation | **Installation** | 2026-12-08 → 2026-12-15 (+7d) | 2026-12-10 → 2026-12-17 (+7d) |  |
| B1.2.10 14 14.01.3 | Ground mounted, 1 Sheet Alumenium, Single post | 2026-12-08 → 2026-12-15 (+7d) | 2026-12-10 → 2026-12-17 (+7d) |  |
| B1.2.10 14 53.013 | 1 Sheet Alumenium, Single post | 2026-12-08 → 2026-12-15 (+7d) | 2026-12-10 → 2026-12-17 (+7d) |  |
| B1.2.10 14 53.023 | 2 Sheet Alumenium, Single post | 2026-12-08 → 2026-12-15 (+7d) | 2026-12-10 → 2026-12-17 (+7d) |  |
| Landscape | **Landscape** | 2026-11-26 → 2026-12-03 (+7d) |  |  |
| Gates | **Gates** | 2026-11-26 → 2026-12-03 (+7d) |  |  |
| Size (6.1x 2.7)m | **Size (6.1x 2.7)m** | 2026-11-26 → 2026-12-03 (+7d) |  |  |
| B7.32 93 43.04.63 | Earthwork | 2026-11-26 → 2026-12-03 (+7d) | 2026-12-02 → 2026-12-09 (+7d) |  |
| B7.32 93 43.04.64 | Foundation | 2026-12-02 → 2026-12-09 (+7d) | 2026-12-06 → 2026-12-13 (+7d) |  |
| B7.32 93 43.04.65 | Gate Installation | 2026-12-20 → 2026-12-19 (-1d) |  | 6.32d → 13d |
| Size (5.5x 2.7)m | **Size (5.5x 2.7)m** | 2026-11-26 → 2026-12-03 (+7d) | 2026-12-09 → 2026-12-16 (+7d) |  |
| B7.32 93 43.04.66 | Earthwork | 2026-11-26 → 2026-12-03 (+7d) | 2026-12-02 → 2026-12-09 (+7d) |  |

| ID | Task | Start | Finish | Complete | Total float |
| --- | --- | --- | --- | --- | --- |
| B7.32 93 43.04.67 | Foundation | 2026-12-02 → 2026-12-09 (+7d) | 2026-12-06 → 2026-12-13 (+7d) |  |  |
| B7.32 93 43.04.68 | Gate Installation | 2026-12-06 → 2026-12-13 (+7d) | 2026-12-09 → 2026-12-16 (+7d) |  |  |
| Size (4.85x 2.7)m | **Size (4.85x 2.7)m** | 2026-12-02 → 2026-12-09 (+7d) | 2026-12-13 → 2026-12-20 (+7d) |  |  |
| B7.32 93 43.04.69 | Earthwork | 2026-12-02 → 2026-12-09 (+7d) | 2026-12-06 → 2026-12-13 (+7d) |  |  |
| B7.32 93 43.04.70 | Foundation | 2026-12-06 → 2026-12-13 (+7d) | 2026-12-09 → 2026-12-16 (+7d) |  |  |
| B7.32 93 43.04.71 | Gate Installation | 2026-12-09 → 2026-12-16 (+7d) | 2026-12-13 → 2026-12-20 (+7d) |  |  |
| Parking Roads | **Parking Roads** |  | 2026-12-16 → 2026-12-23 (+7d) |  |  |
| Wet Networks | **Wet Networks** |  | 2026-10-29 → 2026-11-05 (+7d) |  |  |
| Stormwater Network | **Stormwater Network** |  | 2026-10-17 → 2026-10-24 (+7d) |  |  |
| GRP | **GRP** |  | 2026-10-17 → 2026-10-24 (+7d) |  |  |
| ?4002 | **?500** |  | 2026-10-15 → 2026-10-22 (+7d) |  |  |
| 3 | **Depth From 1.5m to 2.5m** |  | 2026-10-15 → 2026-10-22 (+7d) |  |  |
| B6.33 42 11.03-11_R | Excavation(Rem) | 2026-10-07 → 2026-10-14 (+7d) | 2026-10-10 → 2026-10-17 (+7d) |  |  |
| B6.33 42 11.03-14_R | Sand Bedding(Rem) | 2026-10-07 → 2026-10-14 (+7d) | 2026-10-10 → 2026-10-17 (+7d) |  |  |
| B6.33 42 11.03-17_R | Pipe Laying(Rem) | 2026-10-07 → 2026-10-14 (+7d) | 2026-10-10 → 2026-10-17 (+7d) |  |  |
| B6.33 42 11.03-110 | Embedment & Test | 2026-10-10 → 2026-10-17 (+7d) | 2026-10-15 → 2026-10-22 (+7d) |  |  |
| B6.33 42 11.03-113_R | Backfilling & Warrning Tape(Rem) | 2026-10-11 → 2026-10-18 (+7d) | 2026-10-15 → 2026-10-22 (+7d) |  |  |
| ?4001 | **?600** |  | 2026-10-15 → 2026-10-22 (+7d) |  |  |
| 3 | **Depth From 1.5m to 2.5m** |  | 2026-10-15 → 2026-10-22 (+7d) |  |  |
| B6.33 42 11.03-12_R | Excavation(Rem) | 2026-10-07 → 2026-10-14 (+7d) | 2026-10-10 → 2026-10-17 (+7d) |  |  |
| B6.33 42 11.03-15_R | Sand Bedding(Rem) | 2026-10-07 → 2026-10-14 (+7d) | 2026-10-10 → 2026-10-17 (+7d) |  |  |
| B6.33 42 11.03-18_R | Pipe Laying(Rem) | 2026-10-07 → 2026-10-14 (+7d) | 2026-10-10 → 2026-10-17 (+7d) |  |  |
| B6.33 42 11.03-111 | Embedment & Test | 2026-10-10 → 2026-10-17 (+7d) | 2026-10-15 → 2026-10-22 (+7d) |  |  |
| B6.33 42 11.03-114_R | Backfilling & Warrning Tape(Rem) | 2026-10-12 → 2026-10-19 (+7d) | 2026-10-15 → 2026-10-22 (+7d) |  |  |
| ?400 | **?800** |  | 2026-10-17 → 2026-10-24 (+7d) |  |  |
| 3 | **Depth From 1.5m to 2.5m** |  | 2026-10-17 → 2026-10-24 (+7d) |  |  |
| B6.33 42 11.03-13_R | Excavation(Rem) | 2026-10-07 → 2026-10-14 (+7d) | 2026-10-10 → 2026-10-17 (+7d) |  | 82.32d → 100.04d |
| B6.33 42 11.03-16_R | Sand Bedding(Rem) | 2026-10-07 → 2026-10-14 (+7d) | 2026-10-10 → 2026-10-17 (+7d) |  |  |
| B6.33 42 11.03-19_R | Pipe Laying(Rem) | 2026-10-07 → 2026-10-14 (+7d) | 2026-10-10 → 2026-10-17 (+7d) |  |  |
| B6.33 42 11.03-112 | Embedment & Test | 2026-10-10 → 2026-10-17 (+7d) | 2026-10-15 → 2026-10-22 (+7d) |  |  |
| B6.33 42 11.03-115_R | Backfilling & Warrning Tape(Rem) | 2026-10-13 → 2026-10-20 (+7d) | 2026-10-17 → 2026-10-24 (+7d) |  |  |
| Strom Manholes | **Manholes** |  | 2026-10-17 → 2026-10-24 (+7d) |  |  |
| 1 | **?1200** |  | 2026-10-17 → 2026-10-24 (+7d) |  |  |
| 3 | **Depth From 1.5m to 2.5m** |  | 2026-10-17 → 2026-10-24 (+7d) |  |  |
| B6.33 05 13.04-11_R | Excavation & Compaction(Rem) | 2026-10-07 → 2026-10-14 (+7d) | 2026-10-08 → 2026-10-15 (+7d) |  | 82.32d → 106.32d |
| B6.33 05 13.04-14_R | Blinding Conc, & RC Base(Rem) | 2026-10-07 → 2026-10-14 (+7d) | 2026-10-08 → 2026-10-15 (+7d) |  |  |
| B6.33 05 13.04-17_R | Manhole Installation(Rem) | 2026-10-07 → 2026-10-14 (+7d) | 2026-10-08 → 2026-10-15 (+7d) |  |  |
| B6.33 05 13.04-110 | Test, Internal Finishing, Benching & Cover | 2026-10-10 → 2026-10-17 (+7d) | 2026-10-14 → 2026-10-21 (+7d) |  |  |
| B6.33 05 13.04-113_R | Backfilling(Rem) | 2026-10-13 → 2026-10-20 (+7d) | 2026-10-17 → 2026-10-24 (+7d) |  |  |
| Catch Basins | **Catch Basins** |  | 2026-10-10 → 2026-10-17 (+7d) |  |  |
| Sing | **Single** |  | 2026-10-10 → 2026-10-17 (+7d) |  |  |
| B6.33 05 40.01.290_R | Excavation, Compaction & Vapour Barrier(Rem) | 2026-10-07 → 2026-10-14 (+7d) | 2026-10-08 → 2026-10-15 (+7d) |  | 82.32d → 111.32d |
| B6.33 05 40.01.300_R | Blinding Conc.(Rem) | 2026-10-07 → 2026-10-14 (+7d) | 2026-10-08 → 2026-10-15 (+7d) |  | 82.32d → 111.32d |
| B6.33 05 40.01.310_R | Catch Basin Installation(Rem) | 2026-10-07 → 2026-10-14 (+7d) | 2026-10-08 → 2026-10-15 (+7d) |  | 82.32d → 111.32d |
| B6.33 05 40.01.320_R | Backfilling, DI Frame & Grate Cover Fixing(Rem) | 2026-10-07 → 2026-10-14 (+7d) | 2026-10-10 → 2026-10-17 (+7d) |  | 82.32d → 99.32d |
| UPVC | **UPVC** |  | 2026-10-10 → 2026-10-14 (+4d) |  |  |
| UPVC300 | **?300 From 0.0 to 1.5m** |  | 2026-10-10 → 2026-10-14 (+4d) |  |  |
| B6.33 42 11.35-1 1_R | Catch Basin Opening Prep.(Rem) | 2026-10-07 A | 2026-10-10 → 2026-10-14 (+4d) | 0% → 68% | 82.32d → 112.65d |
| B6.33 42 11.35-1 2_R | Fittings & Pipe Installation(Rem) | 2026-10-07 A | 2026-10-10 → 2026-10-14 (+4d) | 0% → 68% | 82.32d → 99.32d |
| UPVC3001 | **?400 From 0.0 to 1.5m** |  | 2026-10-10 → 2026-10-14 (+4d) |  |  |
| B6.33 42 11.36-1 1_R | Catch Basin Opening Prep.(Rem) | 2026-10-07 A | 2026-10-10 → 2026-10-14 (+4d) | 0% → 68% | 82.32d → 112.65d |
| B6.33 42 11.36-1 2_R | Fittings & Pipe Installation(Rem) | 2026-10-07 A | 2026-10-10 → 2026-10-14 (+4d) | 0% → 68% | 82.32d → 99.32d |
| Fire Fighting | **Fire Fighting Network** |  | 2026-10-29 → 2026-11-05 (+7d) |  |  |
| HDPE | **HDPE Pipes** |  | 2026-10-19 → 2026-10-26 (+7d) |  |  |
| ?250mm | **?250mm** |  | 2026-10-19 → 2026-10-26 (+7d) |  |  |
| Depth: 0.0m - 1.5m | **Depth: 0.0m - 1.5m** |  | 2026-10-19 → 2026-10-26 (+7d) |  |  |
| B3.1. 33 14 13.01.10_R | Excavation(Rem) | 2026-10-07 → 2026-10-14 (+7d) | 2026-10-11 → 2026-10-18 (+7d) |  |  |
| B3.1. 33 14 13.01.14_R | Sand Bedding(Rem) | 2026-10-07 → 2026-10-14 (+7d) | 2026-10-11 → 2026-10-18 (+7d) |  |  |
| B3.1. 33 14 13.01.18_R | Pipe Laying(Rem) | 2026-10-07 → 2026-10-14 (+7d) | 2026-10-11 → 2026-10-18 (+7d) |  |  |
| B3.1. 33 14 13.01.22_R | Embedment & Test(Rem) | 2026-10-07 → 2026-10-14 (+7d) | 2026-10-11 → 2026-10-18 (+7d) |  |  |
| B3.1. 33 14 13.01.26 | Backfilling & Warrning Tape | 2026-10-12 → 2026-10-19 (+7d) | 2026-10-19 → 2026-10-26 (+7d) |  |  |
| Depth: 1.51m - 2.5m | **Depth: 1.51m - 2.5m** |  | 2026-10-19 → 2026-10-26 (+7d) |  |  |
| B3.1. 33 14 13.01.12_R | Excavation(Rem) | 2026-10-07 → 2026-10-14 (+7d) | 2026-10-11 → 2026-10-18 (+7d) |  |  |
| B3.1. 33 14 13.01.16_R | Sand Bedding(Rem) | 2026-10-07 → 2026-10-14 (+7d) | 2026-10-11 → 2026-10-18 (+7d) |  |  |
| B3.1. 33 14 13.01.20_R | Pipe Laying(Rem) | 2026-10-07 → 2026-10-14 (+7d) | 2026-10-11 → 2026-10-18 (+7d) |  |  |
| B3.1. 33 14 13.01.24_R | Embedment & Test(Rem) | 2026-10-07 → 2026-10-14 (+7d) | 2026-10-11 → 2026-10-18 (+7d) |  |  |
| B3.1. 33 14 13.01.28 | Backfilling & Warrning Tape | 2026-10-12 → 2026-10-19 (+7d) | 2026-10-19 → 2026-10-26 (+7d) |  |  |
| 3 | **Fire Hydrant** | 2026-10-12 → 2026-10-19 (+7d) | 2026-10-29 → 2026-11-05 (+7d) |  |  |
| B3.33 14 19.01.fh29 | Riser Pipe & Flanged Fittings Installation | 2026-10-12 → 2026-10-19 (+7d) | 2026-10-15 → 2026-10-22 (+7d) |  |  |
| B3.33 14 19.01.fh28 | Firehydrant Fixing/Installation | 2026-10-17 → 2026-10-24 (+7d) | 2026-10-21 → 2026-10-28 (+7d) |  |  |

| ID | Task | Start | Finish | Complete | Total float |
| --- | --- | --- | --- | --- | --- |
| B3.33 14 19.01.fh30 | Backfilling & Compaction | 2026-10-22 → 2026-10-29 (+7d) | 2026-10-29 → 2026-11-05 (+7d) |  |  |
| Dry Networks | **Dry Networks** | 2026-10-11 → 2026-10-18 (+7d) | 2026-12-16 → 2026-12-23 (+7d) |  |  |
| LV Network | **Low Voltage Network** | 2026-10-31 → 2026-11-07 (+7d) | 2026-11-01 → 2026-11-08 (+7d) |  |  |
| Cables | **Cables** | 2026-10-31 → 2026-11-07 (+7d) | 2026-11-01 → 2026-11-08 (+7d) |  |  |
| 4C,10+1C,10mm2 | **4C,10+1C,10mm2** | 2026-10-31 → 2026-11-07 (+7d) | 2026-11-01 → 2026-11-08 (+7d) |  |  |
| B2.33 71 00 01 10 | Cable Pulling | 2026-10-31 → 2026-11-07 (+7d) | 2026-11-01 → 2026-11-08 (+7d) |  |  |
| Street Lighting | **Street Lighting** | 2026-10-11 → 2026-10-18 (+7d) | 2026-12-16 → 2026-12-23 (+7d) |  |  |
| Duct Banks | **Duct Banks** | 2026-10-11 → 2026-10-18 (+7d) | 2026-12-02 → 2026-12-08 (+6d) |  |  |
| 2 Way | **2 Way** | 2026-10-11 → 2026-10-18 (+7d) | 2026-12-02 → 2026-12-08 (+6d) |  |  |
| B2.33 71 00 02 64 | Excavation | 2026-10-11 → 2026-10-18 (+7d) | 2026-10-12 → 2026-10-19 (+7d) |  | 82.32d → 99.32d |
| B2.33 71 00 02 65 | Shuttering, Steel Fixing Incl. UPVC Pipe & Conc. Cast | 2026-10-13 → 2026-10-20 (+7d) | 2026-10-15 → 2026-10-22 (+7d) |  |  |
| B2.33 71 00 02 66 | Backfilling & Warrning Tape | 2026-12-01 → 2026-12-07 (+6d) | 2026-12-02 → 2026-12-08 (+6d) |  | 62.32d → 63.32d |
| 6 Way | **6 Way** | 2026-10-13 → 2026-10-20 (+7d) | 2026-12-01 → 2026-12-08 (+7d) |  |  |
| B2.33 71 00 02 67 | Excavation | 2026-10-13 → 2026-10-20 (+7d) | 2026-10-14 → 2026-10-21 (+7d) |  | 82.32d → 99.32d |
| B2.33 71 00 02 68 | Shuttering, Steel Fixing Incl. UPVC Pipe & Conc. Cast | 2026-10-15 → 2026-10-22 (+7d) | 2026-10-18 → 2026-10-25 (+7d) |  |  |
| B2.33 71 00 02 69 | Backfilling & Warrning Tape | 2026-11-30 → 2026-12-07 (+7d) | 2026-12-01 → 2026-12-08 (+7d) |  |  |
| Drawpits | **Drawpits** | 2026-10-15 → 2026-10-22 (+7d) | 2026-10-22 → 2026-10-29 (+7d) |  |  |
| B2.33 71 00 02 70 | Excavation | 2026-10-15 → 2026-10-22 (+7d) | 2026-10-17 → 2026-10-24 (+7d) |  | 82.32d → 99.32d |
| B2.33 71 00 02 71 | Drawpits Installation | 2026-10-18 → 2026-10-25 (+7d) | 2026-10-19 → 2026-10-26 (+7d) |  | 82.32d → 99.32d |
| B2.33 71 00 02 72 | Backfilling & Warrning Tape | 2026-10-20 → 2026-10-27 (+7d) | 2026-10-22 → 2026-10-29 (+7d) |  | 82.32d → 99.32d |
| Earthing | **Earthing** | 2026-12-09 → 2026-12-16 (+7d) | 2026-12-16 → 2026-12-23 (+7d) |  |  |
| B2.33 71 19 29 | Land Adjustment | 2026-12-09 → 2026-12-16 (+7d) | 2026-12-12 → 2026-12-19 (+7d) |  |  |
| B2.33 71 19 30 | Earth Rods & Conduits | 2026-12-12 → 2026-12-19 (+7d) | 2026-12-14 → 2026-12-21 (+7d) |  |  |
| B2.33 71 19 31 | Backfilling | 2026-12-14 → 2026-12-21 (+7d) | 2026-12-16 → 2026-12-23 (+7d) |  |  |
| SL Poles | **SL Poles** | 2026-11-28 → 2026-12-05 (+7d) | 2026-12-14 → 2026-12-21 (+7d) |  |  |
| Pole (10 M Sngl Arm) | **Pole (10 M Single Arm)** | 2026-11-28 → 2026-12-05 (+7d) | 2026-12-09 → 2026-12-16 (+7d) |  |  |
| B2.33 71 16.55 | Excavation | 2026-11-28 → 2026-12-05 (+7d) | 2026-12-01 → 2026-12-08 (+7d) |  |  |
| B2.33 71 16.56 | PC & RC Foundation | 2026-12-01 → 2026-12-08 (+7d) | 2026-12-03 → 2026-12-10 (+7d) |  |  |
| B2.33 71 16.57 | Lighting Poles Installation Incl power box, Cables | 2026-12-03 → 2026-12-10 (+7d) | 2026-12-06 → 2026-12-13 (+7d) |  |  |
| B2.26.56.19.7 | Lighting Luminares Inst | 2026-12-06 → 2026-12-13 (+7d) | 2026-12-07 → 2026-12-14 (+7d) |  |  |
| B2.33 71 16.58 | Backfilling, Grouting & Chamfering | 2026-12-07 → 2026-12-14 (+7d) | 2026-12-09 → 2026-12-16 (+7d) |  |  |
| Pole (10 M Dbl Arm) | **Pole (10 M Double Arm)** | 2026-12-01 → 2026-12-08 (+7d) | 2026-12-14 → 2026-12-21 (+7d) |  |  |
| B2.33 71 16.59 | Excavation | 2026-12-01 → 2026-12-08 (+7d) | 2026-12-03 → 2026-12-10 (+7d) |  |  |
| B2.33 71 16.60 | PC & RC Foundation | 2026-12-03 → 2026-12-10 (+7d) | 2026-12-07 → 2026-12-14 (+7d) |  |  |
| B2.33 71 16.61 | Lighting Poles Installation Incl power box, Cables | 2026-12-07 → 2026-12-14 (+7d) | 2026-12-09 → 2026-12-16 (+7d) |  |  |
| B2.26.56.19.8 | Lighting Luminares Inst | 2026-12-09 → 2026-12-16 (+7d) | 2026-12-12 → 2026-12-19 (+7d) |  |  |
| B2.33 71 16.62 | Backfilling, Grouting & Chamfering | 2026-12-12 → 2026-12-19 (+7d) | 2026-12-14 → 2026-12-21 (+7d) |  |  |
| Earth & Road Works | **Earth & Road Works** |  | 2026-12-14 → 2026-12-21 (+7d) |  |  |
| Earth Layers | **Earth Layers** |  | 2026-10-12 → 2026-10-19 (+7d) |  |  |
| B1.2.32 11 13.01.7_R | Subgrade(Rem) | 2026-10-07 → 2026-10-14 (+7d) | 2026-10-12 → 2026-10-19 (+7d) |  |  |
| B1.2.32 11 23.01.7_R | Aggregate Base Course(Rem) | 2026-10-07 → 2026-10-14 (+7d) | 2026-10-08 → 2026-10-15 (+7d) |  |  |
| Interlock | **Interlock** | 2026-12-12 → 2026-12-19 (+7d) | 2026-12-14 → 2026-12-21 (+7d) |  |  |
| B1.2.32 14 13.13.7 | 60mm thick - Interlocking Block Pavers | 2026-12-12 → 2026-12-19 (+7d) | 2026-12-14 → 2026-12-21 (+7d) |  |  |
| Curbstone | **Curbstone** | 2026-11-12 → 2026-11-19 (+7d) | 2026-11-26 → 2026-12-03 (+7d) |  |  |
| Pre Install | **Pre-Installation** | 2026-11-12 → 2026-11-19 (+7d) | 2026-11-19 → 2026-11-26 (+7d) |  |  |
| B2.31 23 00.181 | Excavation | 2026-11-12 → 2026-11-19 (+7d) | 2026-11-15 → 2026-11-22 (+7d) |  |  |
| B1.2.32 14 13.13.27 | PCC | 2026-11-15 → 2026-11-22 (+7d) | 2026-11-17 → 2026-11-24 (+7d) |  |  |
| 32 16 13.007 | Haunching | 2026-11-17 → 2026-11-24 (+7d) | 2026-11-19 → 2026-11-26 (+7d) |  |  |
| Installation | **Installation** | 2026-11-19 → 2026-11-26 (+7d) | 2026-11-25 → 2026-12-02 (+7d) |  |  |
| B1.2.32 16.13.01.7 | Curb Stone, Type K1 | 2026-11-19 → 2026-11-26 (+7d) | 2026-11-22 → 2026-11-29 (+7d) |  |  |
| B1.2.32 16.13.02.6 | Dropped Curb, Type K3 | 2026-11-22 → 2026-11-29 (+7d) | 2026-11-23 → 2026-11-30 (+7d) |  |  |
| B1.2.32 16.13.03.7 | Edge Curb, Type K4 | 2026-11-23 → 2026-11-30 (+7d) | 2026-11-24 → 2026-12-01 (+7d) |  |  |
| B1.2.32 16.13.047 | Heel Curb, Type K5 | 2026-11-23 → 2026-11-30 (+7d) | 2026-11-24 → 2026-12-01 (+7d) |  |  |
| B1.2.32 16.13.05.6 | Transition Curb | 2026-11-24 → 2026-12-01 (+7d) | 2026-11-25 → 2026-12-02 (+7d) |  |  |
| Finishing | **Finishing** | 2026-11-25 → 2026-12-02 (+7d) | 2026-11-26 → 2026-12-03 (+7d) |  |  |
| 32 16 13.07 | Finishing, Fareface | 2026-11-25 → 2026-12-02 (+7d) | 2026-11-26 → 2026-12-03 (+7d) |  |  |
| Asphalt Layers | **Asphalt Layers** |  | 2026-12-05 → 2026-12-12 (+7d) |  |  |
| B1.2.32 11 26.01.7_R | Bituminous Base Course including Prime Coat (MC1) and tack coat (RC2)(Rem) |  | 2026-10-08 → 2026-10-15 (+7d) | 20% → 21% | 54.73d → 54.74d |
| B1.2.32 12 16.01.7 | Bituminous concrete Wearing Course, including tack coat (RC2) | 2026-12-02 → 2026-12-09 (+7d) | 2026-12-05 → 2026-12-12 (+7d) |  |  |
| Pavement Marking | **Pavement Marking** | 2026-12-05 → 2026-12-12 (+7d) | 2026-12-07 → 2026-12-14 (+7d) |  |  |
| B1.2.32 17 23.01.7 | Retroreflective Thermoplastic White Traffic lines | 2026-12-05 → 2026-12-12 (+7d) | 2026-12-07 → 2026-12-14 (+7d) |  |  |
| B1.2.32 17 23.02.7 | Retroreflective Thermoplastic Yellow, Traffic lines | 2026-12-05 → 2026-12-12 (+7d) | 2026-12-07 → 2026-12-14 (+7d) |  |  |
| Traffic Signs | **Traffic Signs** | 2026-11-15 → 2026-11-22 (+7d) | 2026-12-13 → 2026-12-20 (+7d) |  |  |
| Pre Install | **Pre-Installation** | 2026-11-15 → 2026-11-22 (+7d) | 2026-11-19 → 2026-11-26 (+7d) |  |  |
| B2.31 23 00.191 | Excavation | 2026-11-15 → 2026-11-22 (+7d) | 2026-11-17 → 2026-11-24 (+7d) |  |  |
| 10 14 53.07 | Foundation | 2026-11-17 → 2026-11-24 (+7d) | 2026-11-19 → 2026-11-26 (+7d) |  |  |
| Installation | **Installation** | 2026-12-10 → 2026-12-17 (+7d) | 2026-12-13 → 2026-12-20 (+7d) |  |  |
| B1.2.10 14 53.017 | 1 Sheet Alumenium, Single post | 2026-12-10 → 2026-12-17 (+7d) | 2026-12-13 → 2026-12-20 (+7d) |  |  |
| Road Misc. | **Miscellaneous** | 2026-12-05 → 2026-12-12 (+7d) | 2026-12-07 → 2026-12-14 (+7d) |  |  |
| B1.2.32 12 19.13.6 | Wheels stoppers (precast concrete) | 2026-12-05 → 2026-12-12 (+7d) | 2026-12-07 → 2026-12-14 (+7d) |  |  |

| ID | Task | Start | Finish | Complete | Total float |
| --- | --- | --- | --- | --- | --- |
| Landscape | **Landscape** | 2026-11-17 → 2026-11-24 (+7d) | 2026-12-10 → 2026-12-17 (+7d) |  |  |
| Fences | **Fences** | 2026-11-17 → 2026-11-24 (+7d) | 2026-12-08 → 2026-12-15 (+7d) |  |  |
| (ZATCA HCIS) | **Steel fence (ZATCA HCIS)** | 2026-11-17 → 2026-11-24 (+7d) | 2026-12-05 → 2026-12-12 (+7d) |  |  |
| B7.32 93 43.02.14 | Earthwork | 2026-11-17 → 2026-11-24 (+7d) | 2026-11-23 → 2026-11-30 (+7d) |  |  |
| B7.32 93 43.02.16 | Foundation | 2026-11-23 → 2026-11-30 (+7d) | 2026-11-29 → 2026-12-06 (+7d) |  |  |
| B7.32 93 43.02.18 | Fence Installation | 2026-11-29 → 2026-12-06 (+7d) | 2026-12-05 → 2026-12-12 (+7d) |  |  |
| (MODON) fence | **Steel fence (MODON)** | 2026-11-23 → 2026-11-30 (+7d) | 2026-12-08 → 2026-12-15 (+7d) |  |  |
| B7.32 93 43.02.20 | Earthwork | 2026-11-23 → 2026-11-30 (+7d) | 2026-11-29 → 2026-12-06 (+7d) |  |  |
| B7.32 93 43.02.22 | Foundation | 2026-11-29 → 2026-12-06 (+7d) | 2026-12-05 → 2026-12-12 (+7d) |  |  |
| B7.32 93 43.02.24 | Fence Installation | 2026-12-05 → 2026-12-12 (+7d) | 2026-12-08 → 2026-12-15 (+7d) |  |  |
| Trees | **Trees** | 2026-12-05 → 2026-12-12 (+7d) | 2026-12-10 → 2026-12-17 (+7d) |  |  |
| B7.32 93 43.02.10 | Ceratonia Siliqua | 2026-12-05 → 2026-12-12 (+7d) | 2026-12-08 → 2026-12-15 (+7d) |  |  |
| B7.32 93 43.02.12 | Milettia pinnata/ Pongamia glabra | 2026-12-05 → 2026-12-12 (+7d) | 2026-12-08 → 2026-12-15 (+7d) |  |  |
| B7.32 93 43.7 | Azadirachta indica | 2026-12-07 → 2026-12-14 (+7d) | 2026-12-10 → 2026-12-17 (+7d) |  |  |
| Arterial Road | **Arterial Road** |  | 2026-11-22 → 2026-11-29 (+7d) |  |  |
| Wet Networks | **Wet Networks** |  | 2026-11-22 → 2026-11-29 (+7d) |  |  |
| Sewerage Network | **Sewerage Network** |  | 2026-11-22 → 2026-11-29 (+7d) |  |  |
| HDPE | **HDPE Pipes** |  | 2026-10-12 → 2026-10-14 (+2d) |  |  |
| 1 | **?160** |  | 2026-10-12 → 2026-10-14 (+2d) |  |  |
| 3 | **Depth From 1.5m to 2.5m** |  | 2026-10-12 → 2026-10-14 (+2d) |  |  |
| B5.33 31 23.021_R | Excavation(Rem) | 2026-10-07 A | 2026-10-10 A | 0% → 100% | 90.32d → none |
| B5.33 31 23.024_R | Embedment & Test(Rem) | 2026-10-07 A | 2026-10-11 → 2026-10-14 (+3d) | 0% → 80% | 89.32d → 94.52d |
| B5.33 31 23.025_R | Backfilling & Warrning Tape(Rem) | 2026-10-07 A | 2026-10-12 A | 0% → 100% | 108.32d → none |
| B5.33 31 23.022_R | Sand Bedding(Rem) | 2026-10-08 A | 2026-10-10 A | 0% → 100% | 90.32d → none |
| B5.33 31 23.023_R | Pipe Laying(Rem) | 2026-10-08 A | 2026-10-10 A | 0% → 100% | 90.32d → none |
| 2 | **Valves & Chambers** |  | 2026-11-22 → 2026-11-29 (+7d) |  |  |
| Gate | **Gate Valves** |  | 2026-10-12 → 2026-10-18 (+6d) |  |  |
| B3.33 14 19.01.1_R | Burried Isolation Valve Installation(Rem) | 2026-10-08 → 2026-10-14 (+6d) | 2026-10-10 → 2026-10-15 (+5d) |  | 104.32d → 105.32d |
| B3.33 14 19.01.7 | Spindle & Surface Box | 2026-10-11 → 2026-10-17 (+6d) | 2026-10-12 → 2026-10-18 (+6d) |  | 104.32d → 105.32d |
| Air V in Ch1 | **Air Valves in Chambers** | 2026-10-12 → 2026-10-14 (+2d) | 2026-11-22 → 2026-11-29 (+7d) |  |  |
| B3.33 14 19.01.26 | Land Adjustment & Compaction | 2026-10-12 → 2026-10-14 (+2d) | 2026-10-15 → 2026-10-18 (+3d) |  | 88.76d → 94.52d |
| B3.33 14 19.01.28 | Foundations | 2026-10-15 → 2026-10-18 (+3d) | 2026-10-20 → 2026-10-22 (+2d) |  | 90.76d → 94.52d |
| B3.33 14 19.01.30 | Chambers Walls Conc Cast In Situ | 2026-10-20 → 2026-10-22 (+2d) | 2026-10-24 → 2026-10-26 (+2d) |  | 90.76d → 94.52d |
| B3.33 14 19.01.32 | Chamber Curing, Finishing & Steel Cover | 2026-10-24 → 2026-10-26 (+2d) | 2026-10-28 → 2026-10-31 (+3d) |  | 90.76d → 94.52d |
| B3.33 14 19.01.33 | Valve & Fitting Installation | 2026-11-17 → 2026-11-24 (+7d) | 2026-11-22 → 2026-11-29 (+7d) |  |  |
| Stormwater Network | **Stormwater Network** |  | 2026-10-31 → 2026-11-05 (+5d) |  |  |
| Box Cul. | **Box Cul.** |  | 2026-10-31 → 2026-11-05 (+5d) |  |  |
| B6. 33 42 13.013_R | Box Reinforced Conc. Walls incl. Water Stop(Rem) |  | 2026-10-07 → 2026-10-14 (+7d) | 90% → 95% | 113.02d → 113.17d |
| B6. 33 42 13.014_R | Box Reinforced Conc. Slab(Rem) |  | 2026-10-07 → 2026-10-14 (+7d) | 75% → 90% | 112.57d → 113.02d |
| B6. 33 42 13.015_R | Curing & Water Proofing(Rem) |  | 2026-10-08 → 2026-10-14 (+6d) | 75% → 80% | 42.78d → 43.01d |
| B6. 33 42 13.016 | Backfilling & Warrning Tape | 2026-10-18 → 2026-10-24 (+6d) | 2026-10-25 → 2026-10-31 (+6d) |  | 42.78d → 43.01d |
| Conc. Ch | **Concrete Chambers** |  | 2026-10-31 → 2026-11-05 (+5d) |  |  |
| Conc. Ch 2.53.5 | **Size 1.5 x 1.5 m, depth 2.5 to 3.5** |  | 2026-10-31 → 2026-11-05 (+5d) |  |  |
| B6.33 05 63.054 | Waterproofing Tanking Membrane & Protection | 2026-10-08 → 2026-10-14 (+6d) | 2026-10-13 → 2026-10-19 (+6d) |  | 42.78d → 43.01d |
| B6.33 05 63.053 | Cast Iron Steps Installation, Epoxy Paint & Internal Finishing | 2026-10-25 → 2026-10-31 (+6d) | 2026-10-31 → 2026-11-05 (+5d) |  | 42.78d → 43.01d |
| Conc. Ch 3.54.5 | **Size 1.5 x 1.5 m, depth 3.5 to 4.5** |  | 2026-10-31 → 2026-11-05 (+5d) |  |  |
| B6.33 05 63.064 | Waterproofing Tanking Membrane & Protection | 2026-10-13 → 2026-10-19 (+6d) | 2026-10-18 → 2026-10-24 (+6d) |  | 42.78d → 43.01d |
| B6.33 05 63.063 | Cast Iron Steps Installation, Epoxy Paint & Internal Finishing | 2026-10-25 → 2026-10-31 (+6d) | 2026-10-31 → 2026-11-05 (+5d) |  | 42.78d → 43.01d |
| Potable Water | **Potable Water Network** |  | 2026-10-18 → 2026-10-25 (+7d) |  |  |
| HDPE | **HDPE Pipes** |  | 2026-10-17 → 2026-10-24 (+7d) |  |  |
| ?250mm | **?250mm** |  | 2026-10-17 → 2026-10-24 (+7d) |  |  |
| Depth: 0.0m - 1.5m | **Depth: 0.0m - 1.5m** |  | 2026-10-14 → 2026-10-21 (+7d) |  |  |
| B3.33 14 11.01.011_R | Excavation(Rem) | 2026-10-07 → 2026-10-14 (+7d) | 2026-10-10 → 2026-10-17 (+7d) |  |  |
| B3.33 14 11.01.012_R | Sand Bedding(Rem) | 2026-10-07 → 2026-10-14 (+7d) | 2026-10-10 → 2026-10-17 (+7d) |  |  |
| B3.33 14 11.01.013_R | Pipe Laying(Rem) | 2026-10-07 → 2026-10-14 (+7d) | 2026-10-10 → 2026-10-17 (+7d) |  |  |
| B3.33 14 11.01.014_R | Embedment & Test(Rem) | 2026-10-07 → 2026-10-14 (+7d) | 2026-10-12 → 2026-10-19 (+7d) |  |  |
| B3.33 14 11.01.015_R | Backfilling & Warrning Tape(Rem) | 2026-10-08 → 2026-10-15 (+7d) | 2026-10-14 → 2026-10-21 (+7d) |  |  |
| Depth: 1.51m - 2.5m | **Depth: 1.51m - 2.5m** |  | 2026-10-17 → 2026-10-24 (+7d) |  |  |
| B3.33 14 11.01.021_R | Excavation(Rem) | 2026-10-07 → 2026-10-14 (+7d) | 2026-10-11 → 2026-10-18 (+7d) |  |  |
| B3.33 14 11.01.023_R | Pipe Laying(Rem) | 2026-10-07 → 2026-10-14 (+7d) | 2026-10-11 → 2026-10-18 (+7d) |  |  |
| B3.33 14 11.01.024_R | Embedment & Test(Rem) | 2026-10-07 → 2026-10-14 (+7d) | 2026-10-12 → 2026-10-19 (+7d) |  |  |
| B3.33 14 11.01.022_R | Sand Bedding(Rem) | 2026-10-08 → 2026-10-15 (+7d) | 2026-10-11 → 2026-10-18 (+7d) |  |  |
| B3.33 14 11.01.025_R | Backfilling & Warrning Tape(Rem) | 2026-10-10 → 2026-10-17 (+7d) | 2026-10-17 → 2026-10-24 (+7d) |  |  |
| Valves & Chambers | **Valves & Chambers** |  | 2026-10-12 → 2026-10-19 (+7d) |  |  |
| Air Valves | **Air Valves** |  | 2026-10-12 → 2026-10-19 (+7d) |  |  |
| 4 | **Air valves on less than 315 mm. (In Chamber)** |  | 2026-10-12 → 2026-10-19 (+7d) |  |  |
| B3.33 05 63.02.19 | Valve & Fitting Installation | 2026-10-07 → 2026-10-14 (+7d) | 2026-10-12 → 2026-10-19 (+7d) |  |  |
| 3 | **Flow Meter (On Chamber)** | 2026-10-07 → 2026-10-14 (+7d) | 2026-10-18 → 2026-10-25 (+7d) |  |  |
| B3.33 14 19.01.fm16 | RC Conc. Works | 2026-10-07 → 2026-10-14 (+7d) | 2026-10-11 → 2026-10-18 (+7d) |  |  |
| B3.33 14 19.01.fm17 | Fixing Flange/Connections | 2026-10-12 → 2026-10-19 (+7d) | 2026-10-14 → 2026-10-21 (+7d) |  |  |

| ID | Task | Start | Finish | Total float |
| --- | --- | --- | --- | --- |
| B3.33 14 19.01.fm18 | Flow Meter Installation | 2026-10-15 → 2026-10-22 (+7d) | 2026-10-18 → 2026-10-25 (+7d) |  |
| Fire Fighting | **Fire Fighting Network** | 2026-10-12 → 2026-10-19 (+7d) | 2026-10-26 → 2026-11-02 (+7d) |  |
| 3 | **Flow Meter (On Chamber)** | 2026-10-12 → 2026-10-19 (+7d) | 2026-10-26 → 2026-11-02 (+7d) |  |
| B3.33 14 19.01.fm50 | RC Conc. Works | 2026-10-12 → 2026-10-19 (+7d) | 2026-10-17 → 2026-10-24 (+7d) |  |
| B3.33 14 19.01.fm49 | Fixing Flange/Connections | 2026-10-18 → 2026-10-25 (+7d) | 2026-10-21 → 2026-10-28 (+7d) |  |
| B3.33 14 19.01.fm51 | Flow Meter Installation | 2026-10-22 → 2026-10-29 (+7d) | 2026-10-26 → 2026-11-02 (+7d) |  |
| TSE Network | **TSE Network** |  | 2026-10-19 → 2026-10-26 (+7d) |  |
| HDPE | **HDPE Pipes** |  | 2026-10-19 → 2026-10-26 (+7d) |  |
| ?125mm | **?125mm** |  | 2026-10-19 → 2026-10-26 (+7d) |  |
| Depth: 0.0m - 1.5m | **Depth: 0.0m - 1.5m** |  | 2026-10-19 → 2026-10-26 (+7d) |  |
| B4.33 14 13.081_R | Excavation(Rem) | 2026-10-07 → 2026-10-14 (+7d) | 2026-10-10 → 2026-10-17 (+7d) |  |
| B4.33 14 13.082_R | Sand Bedding(Rem) | 2026-10-07 → 2026-10-14 (+7d) | 2026-10-10 → 2026-10-17 (+7d) |  |
| B4.33 14 13.083_R | Pipe Laying(Rem) | 2026-10-07 → 2026-10-14 (+7d) | 2026-10-10 → 2026-10-17 (+7d) |  |
| B4.33 14 13.084_R | Embedment & Test(Rem) | 2026-10-07 → 2026-10-14 (+7d) | 2026-10-12 → 2026-10-19 (+7d) |  |
| B4.33 14 13.085 | Backfilling & Warrning Tape | 2026-10-12 → 2026-10-19 (+7d) | 2026-10-19 → 2026-10-26 (+7d) |  |
| Dry Networks | **Dry Networks** |  | 2026-11-14 → 2026-11-15 (+1d) |  |
| MV | **Medium Voltage Network** |  | 2026-11-08 → 2026-11-15 (+7d) |  |
| Cables | **Cables** |  | 2026-11-08 → 2026-11-15 (+7d) |  |
| 3C,500mm2 | **3C,500mm2** |  | 2026-10-21 → 2026-10-28 (+7d) |  |
| B2.33 71 19 16_R | Land Adjustment(Rem) | 2026-10-15 → 2026-10-22 (+7d) | 2026-10-19 → 2026-10-26 (+7d) |  |
| B2.33 71 19 17_R | Backfilling(Rem) | 2026-10-15 → 2026-10-22 (+7d) | 2026-10-21 → 2026-10-28 (+7d) |  |
| B2.33 71 49.23.010_R | Cable Pulling(Rem) | 2026-10-15 → 2026-10-22 (+7d) | 2026-10-18 → 2026-10-25 (+7d) |  |
| MV Replacing | **Cable Replacement** | 2026-10-19 → 2026-10-26 (+7d) | 2026-11-08 → 2026-11-15 (+7d) |  |
| B2.33 71 49.23.061 | Excavation | 2026-10-19 → 2026-10-26 (+7d) | 2026-10-22 → 2026-10-29 (+7d) |  |
| B2.33 71 49.23.062 | Old Cable Grubbing | 2026-10-22 → 2026-10-29 (+7d) | 2026-10-27 → 2026-11-03 (+7d) |  |
| B2.33 71 49.23.063 | New Cable Installation | 2026-10-27 → 2026-11-03 (+7d) | 2026-11-01 → 2026-11-08 (+7d) |  |
| B2.33 71 49.23.064 | Backfilling & Warrning Tape | 2026-11-01 → 2026-11-08 (+7d) | 2026-11-08 → 2026-11-15 (+7d) |  |
| Street Lighting | **Street Lighting** |  | 2026-11-14 → 2026-11-12 (-2d) |  |
| Cables | **Cables** |  | 2026-10-21 → 2026-10-28 (+7d) |  |
| 4C,10+1C,10mm2 | **4C,10+1C,10mm2** |  | 2026-10-21 → 2026-10-28 (+7d) |  |
| B2.33 71 19 18_R | Land Adjustment(Rem) | 2026-10-15 → 2026-10-22 (+7d) | 2026-10-17 → 2026-10-24 (+7d) |  |
| B2.33 71 49.23.64_R | Cable Pulling(Rem) | 2026-10-15 → 2026-10-22 (+7d) | 2026-10-18 → 2026-10-25 (+7d) |  |
| B2.33 71 19 19 | Backfilling | 2026-10-18 → 2026-10-25 (+7d) | 2026-10-21 → 2026-10-28 (+7d) |  |
| SL Poles | **SL Poles** |  | 2026-10-15 → 2026-10-22 (+7d) |  |
| Pole (12 M Sngl Arm) | **Pole (12 M Single Arm)** |  | 2026-10-15 → 2026-10-22 (+7d) |  |
| B2.33 71 16.033_R | Lighting Poles Installation Incl power box, Cables(Rem) | 2026-10-07 → 2026-10-14 (+7d) | 2026-10-08 → 2026-10-15 (+7d) |  |
| B2.33 71 16.034_R | Lighting Luminares Inst(Rem) | 2026-10-07 → 2026-10-14 (+7d) | 2026-10-08 → 2026-10-15 (+7d) |  |
| B2.33 71 16.035 | Backfilling, Grouting & Chamfering | 2026-10-10 → 2026-10-17 (+7d) | 2026-10-15 → 2026-10-22 (+7d) |  |
| Earthing | **Earthing** | 2026-10-10 → 2026-10-17 (+7d) | 2026-11-14 → 2026-11-12 (-2d) |  |
| B2.33 71 19 20 | Land Adjustment | 2026-10-10 → 2026-10-17 (+7d) | 2026-10-12 → 2026-10-19 (+7d) |  |
| B2.33 71 19 21 | Earth Rods & Conduits | 2026-10-13 → 2026-10-20 (+7d) | 2026-10-15 → 2026-10-22 (+7d) |  |
| B2.33 71 19 22 | Backfilling | 2026-11-11 → 2026-11-09 (-2d) | 2026-11-14 → 2026-11-12 (-2d) | 1.32d → 9.08d |
| SL Pillars | **SL Pillars** | 2026-10-31 → 2026-10-25 (-6d) | 2026-11-03 → 2026-10-29 (-5d) |  |
| B2.33 71 26 03 | Pillars Installation (Internal Wiring) | 2026-10-31 → 2026-10-25 (-6d) | 2026-11-01 → 2026-10-27 (-5d) | 87.32d → 97.68d |
| B2.33 71 26 041 | KWH meter mounting a frame installation | 2026-11-02 → 2026-10-27 (-6d) | 2026-11-03 → 2026-10-29 (-5d) | 87.32d → 97.68d |
| Earth & Road Works | **Earth & Road Works** |  | 2026-11-19 → 2026-11-18 (-1d) |  |
| Earth Layers | **Earth Layers** |  | 2026-10-13 → 2026-10-20 (+7d) |  |
| B1.2.32 11 13.01.8_R | Subgrade(Rem) |  | 2026-10-13 → 2026-10-20 (+7d) |  |
| B1.2.32 11 23.01.8_R | Aggregate Base Course(Rem) | 2026-10-07 → 2026-10-14 (+7d) | 2026-10-08 → 2026-10-15 (+7d) |  |
| Interlock | **Interlock** | 2026-11-15 → 2026-11-12 (-3d) | 2026-11-17 → 2026-11-16 (-1d) |  |
| B1.2.32 14 13.13.8 | 60mm thick - Interlocking Block Pavers | 2026-11-15 → 2026-11-12 (-3d) | 2026-11-17 → 2026-11-16 (-1d) | 1.32d → 9.08d |
| Curbstone | **Curbstone** |  | 2026-10-08 → 2026-10-15 (+7d) |  |
| Pre Install | **Pre-Installation** |  | 2026-10-08 → 2026-10-15 (+7d) |  |
| 32 16 13.031_R | Excavation(Rem) | 2026-10-07 → 2026-10-14 (+7d) | 2026-10-08 → 2026-10-15 (+7d) |  |
| 32 16 13.032_R | PCC(Rem) | 2026-10-07 → 2026-10-14 (+7d) | 2026-10-08 → 2026-10-15 (+7d) |  |
| 32 16 13.033_R | Haunching(Rem) | 2026-10-07 → 2026-10-14 (+7d) | 2026-10-08 → 2026-10-15 (+7d) |  |
| Installation | **Installation** |  | 2026-10-08 → 2026-10-15 (+7d) |  |
| B1.2.32 16.13.01.8_R | Curb Stone, Type K1(Rem) | 2026-10-07 → 2026-10-14 (+7d) | 2026-10-08 → 2026-10-15 (+7d) |  |
| Finishing | **Finishing** |  | 2026-10-08 → 2026-10-15 (+7d) |  |
| 32 16 13.08_R | Finishing, Fareface(Rem) | 2026-10-07 → 2026-10-14 (+7d) | 2026-10-08 → 2026-10-15 (+7d) |  |
| Asphalt Layers | **Asphalt Layers** |  | 2026-10-20 → 2026-10-27 (+7d) |  |
| B1.2.32 11 26.01.8_R | Bituminous Base Course including Prime Coat (MC1) and tack coat (RC2)(Rem) |  | 2026-10-08 → 2026-10-15 (+7d) |  |
| B1.2.32 12 16.01.8 | Bituminous concrete Wearing Course, including tack coat (RC2) | 2026-10-14 → 2026-10-21 (+7d) | 2026-10-20 → 2026-10-27 (+7d) |  |
| Pavement Marking | **Pavement Marking** | 2026-10-20 → 2026-10-27 (+7d) | 2026-10-26 → 2026-11-02 (+7d) |  |
| B1.2.32 17 23.02.8 | Retroreflective Thermoplastic Yellow, Traffic lines | 2026-10-20 → 2026-10-27 (+7d) | 2026-10-22 → 2026-10-29 (+7d) |  |
| B1.2.32 17 23.01.8 | Retroreflective Thermoplastic White Traffic lines | 2026-10-22 → 2026-10-29 (+7d) | 2026-10-26 → 2026-11-02 (+7d) |  |
| Traffic Signs | **Traffic Signs** | 2026-10-08 → 2026-10-15 (+7d) | 2026-11-19 → 2026-11-18 (-1d) |  |
| Pre Install | **Pre-Installation** | 2026-10-08 → 2026-10-15 (+7d) | 2026-10-14 → 2026-10-21 (+7d) |  |
| B2.31 23 00.221 | Excavation | 2026-10-08 → 2026-10-15 (+7d) | 2026-10-11 → 2026-10-18 (+7d) |  |
| 10 14 53.08 | Foundation | 2026-10-11 → 2026-10-18 (+7d) | 2026-10-14 → 2026-10-21 (+7d) |  |

| ID | Task | Start | Finish | Complete | Total float |
| --- | --- | --- | --- | --- | --- |
| Installation | **Installation** | 2026-11-18 → 2026-11-16 (-2d) | 2026-11-19 → 2026-11-18 (-1d) |  |  |
| B1.2.10 14 53.018 | 1 Sheet Alumenium, Single post | 2026-11-18 → 2026-11-16 (-2d) | 2026-11-19 → 2026-11-18 (-1d) |  | 73.32d → 81.08d |
| B1.2.10 14 53.028 | 2 Sheet Alumenium, Single post | 2026-11-18 → 2026-11-16 (-2d) | 2026-11-19 → 2026-11-18 (-1d) |  | 73.32d → 81.08d |
| Guard Rooms | **Guard Rooms** |  | 2026-12-15 → 2026-12-12 (-3d) |  |  |
| Utilities | **Underground Utilities** | 2026-10-07 → 2026-10-05 (-2d) | 2026-11-01 → 2026-10-28 (-4d) |  |  |
| B8.31 23 16.0115 | Gravel | 2026-10-07 → 2026-10-05 A (-2d) | 2026-10-08 → 2026-10-06 A (-2d) | 0% → 100% | 6.32d → none |
| B8.31 23 16.0117 | uPVC pipes ?160mm | 2026-10-10 → 2026-10-07 A (-3d) | 2026-10-11 → 2026-10-10 A (-1d) | 0% → 100% | 6.32d → none |
| B8.31 23 16.0119 | uPVC pipes ?110mm | 2026-10-12 → 2026-10-07 A (-5d) | 2026-10-13 → 2026-10-10 A (-3d) | 0% → 100% | 6.32d → none |
| B8.31 23 16.0121 | uPVC pipes ?75mm | 2026-10-14 → 2026-10-07 A (-7d) | 2026-10-15 → 2026-10-10 A (-5d) | 0% → 100% | 6.32d → none |
| B8.31 23 16.0123 | uPVC pipes ?50mm | 2026-10-17 → 2026-10-07 A (-10d) | 2026-10-18 → 2026-10-10 A (-8d) | 0% → 100% | 6.32d → none |
| B8.31 23 16.0125 | PPR pipes ?32mm | 2026-10-19 → 2026-10-14 (-5d) | 2026-10-20 → 2026-10-17 (-3d) |  | 6.32d → 15.96d |
| B8.31 23 16.0127 | PPR pipes ?25mm | 2026-10-21 → 2026-10-17 (-4d) | 2026-10-22 → 2026-10-19 (-3d) |  | 6.32d → 15.96d |
| B8.31 23 16.0129 | PPR pipes ?20mm | 2026-10-21 → 2026-10-17 (-4d) | 2026-10-22 → 2026-10-19 (-3d) |  | 6.32d → 15.96d |
| B8.31 23 16.0131 | Scupper ?110mm | 2026-10-24 → 2026-10-19 (-5d) | 2026-10-25 → 2026-10-21 (-4d) |  | 6.32d → 15.96d |
| B8.31 23 16.0133 | Clean out ?110mm | 2026-10-26 → 2026-10-21 (-5d) | 2026-10-27 → 2026-10-24 (-3d) |  | 6.32d → 15.96d |
| B8.31 23 16.0135 | Floor drain | 2026-10-28 → 2026-10-24 (-4d) | 2026-10-29 → 2026-10-26 (-3d) |  | 6.32d → 15.96d |
| B8.31 23 16.0137 | Manhole, dimensions 600mmX600mm | 2026-10-31 → 2026-10-26 (-5d) | 2026-11-01 → 2026-10-28 (-4d) |  | 6.32d → 15.96d |
| Walls & Columns | **Superstructure - Walls & Columns** |  | 2026-11-05 → 2026-11-02 (-3d) |  |  |
| B8.31 23 16.0143 | Concrete masonry unit, 200mm thick wall | 2026-11-02 → 2026-10-28 (-5d) | 2026-11-03 → 2026-10-31 (-3d) |  | 6.32d → 15.96d |
| B8.31 23 16.0145 | Concrete masonry unit, 150mm thick wall | 2026-11-04 → 2026-10-31 (-4d) | 2026-11-05 → 2026-11-02 (-3d) |  | 6.32d → 15.96d |
| Roof | **Superstructure - Roof** | 2026-10-12 → 2026-10-19 (+7d) | 2026-12-06 → 2026-12-02 (-4d) |  |  |
| B8.31 23 16.0147 | Roof Slab and beams | 2026-10-12 → 2026-10-19 (+7d) | 2026-10-13 → 2026-10-20 (+7d) |  |  |
| B8.31 23 16.0153 | Sloped screed for roof | 2026-10-14 → 2026-10-21 (+7d) | 2026-10-15 → 2026-10-22 (+7d) |  |  |
| B8.31 23 16.0187 | Water proofing Membrane for roof | 2026-10-17 → 2026-10-24 (+7d) | 2026-10-18 → 2026-10-25 (+7d) |  |  |
| B8.31 23 16.01111 | 50mm Extruded polystyrene insulation for roof | 2026-10-19 → 2026-10-26 (+7d) | 2026-10-20 → 2026-10-27 (+7d) |  |  |
| B8.31 23 16.01135 | Water proofing Membrane with protection board | 2026-12-01 → 2026-11-26 (-5d) | 2026-12-01 → 2026-11-28 (-3d) |  | 6.32d → 15.96d |
| B8.31 23 16.01145 | 50mm foam concrete for roof layers | 2026-12-02 → 2026-11-28 (-4d) | 2026-12-03 → 2026-11-30 (-3d) |  | 6.32d → 15.96d |
| B8.31 23 16.01149 | Stone coping 30mm thickness | 2026-12-05 → 2026-11-30 (-5d) | 2026-12-06 → 2026-12-02 (-4d) |  | 6.32d → 15.96d |
| Enclosure | **Enclosure & Weatherproofing** | 2026-11-07 → 2026-11-02 (-5d) | 2026-11-19 → 2026-11-16 (-3d) |  |  |
| B8.31 23 16.0149 | Aluminum window W01 size (1.3m x 1.4m) | 2026-11-07 → 2026-11-02 (-5d) | 2026-11-07 → 2026-11-03 (-4d) |  | 16.32d → 25.96d |
| B8.31 23 16.0155 | Aluminum window W02 size (0.6m x 0.9m) | 2026-11-08 → 2026-11-03 (-5d) | 2026-11-09 → 2026-11-05 (-4d) |  | 16.32d → 25.96d |
| B8.31 23 16.0189 | External plastering | 2026-11-10 → 2026-11-05 (-5d) | 2026-11-14 → 2026-11-10 (-4d) |  | 16.32d → 25.96d |
| B8.31 23 16.01113 | Water proofing Membrane with 50mm screed protection | 2026-11-15 → 2026-11-10 (-5d) | 2026-11-16 → 2026-11-12 (-4d) |  | 16.32d → 25.96d |
| B8.31 23 16.01137 | External painting | 2026-11-17 → 2026-11-12 (-5d) | 2026-11-19 → 2026-11-16 (-3d) |  | 16.32d → 25.96d |
| Interior & MEP | **Interior & MEP** | 2026-11-07 → 2026-11-02 (-5d) | 2026-12-15 → 2026-12-12 (-3d) |  |  |
| B8.31 23 16.0151 | Internal plastering | 2026-11-07 → 2026-11-02 (-5d) | 2026-11-08 → 2026-11-04 (-4d) |  | 6.32d → 15.96d |
| B8.31 23 16.0157 | Cementitious Water proofing for wet areas | 2026-11-09 → 2026-11-04 (-5d) | 2026-11-10 → 2026-11-07 (-3d) |  | 6.32d → 15.96d |
| Mechanical | **Mechanical** | 2026-11-09 → 2026-11-04 (-5d) | 2026-11-12 → 2026-11-09 (-3d) |  |  |
| B8.31 23 16.0159 | DX wall mounted Split/AC | 2026-11-09 → 2026-11-04 (-5d) | 2026-11-10 → 2026-11-07 (-3d) |  | 18.32d → 27.96d |
| B8.31 23 16.0191 | EF-01 Exhaust axial fan | 2026-11-11 → 2026-11-07 (-4d) | 2026-11-12 → 2026-11-09 (-3d) |  | 18.32d → 27.96d |
| Plumb & Elec | **Plumbing & Electrical** | 2026-11-09 → 2026-11-04 (-5d) | 2026-12-15 → 2026-12-12 (-3d) |  |  |
| B8.31 23 16.0177 | 20A DOUBLE POLE SWITCH | 2026-11-09 → 2026-11-04 (-5d) | 2026-11-10 → 2026-11-07 (-3d) |  | 11.32d → 20.96d |
| B8.31 23 16.0179 | 13A SPUR OUTLET, For guard room 1&2 | 2026-11-11 → 2026-11-07 (-4d) | 2026-11-12 → 2026-11-09 (-3d) |  | 11.32d → 20.96d |
| B8.31 23 16.0161 | Electrical Water Heater 50L | 2026-11-14 → 2026-11-09 (-5d) | 2026-11-15 → 2026-11-11 (-4d) |  | 18.32d → 27.96d |
| B8.31 23 16.0181 | 13A SINGLE SWITCH SOCKET OUTLET | 2026-11-17 → 2026-11-09 (-8d) | 2026-11-18 → 2026-11-11 (-7d) |  | 8.32d → 20.96d |
| B8.31 23 16.0163 | DB-MGR Panel | 2026-11-17 → 2026-11-11 (-6d) | 2026-11-18 → 2026-11-14 (-4d) |  | 17.32d → 27.96d |
| B8.31 23 16.0183 | 13A DOUBLE SWITCH SOCKET OUTLET | 2026-11-19 → 2026-11-11 (-8d) | 2026-11-21 → 2026-11-14 (-7d) |  | 8.32d → 20.96d |
| B8.31 23 16.0165 | Grounding and lightning system | 2026-11-19 → 2026-11-14 (-5d) | 2026-11-21 → 2026-11-16 (-5d) |  | 17.32d → 27.96d |
| B8.31 23 16.0167 | Fire alarm system | 2026-11-22 → 2026-11-16 (-6d) | 2026-11-23 → 2026-11-18 (-5d) |  | 17.32d → 27.96d |
| B8.31 23 16.0169 | Data/ voice RJ45 outlet include CAT6A cable | 2026-12-07 → 2026-12-02 (-5d) | 2026-12-08 → 2026-12-05 (-3d) |  | 6.32d → 15.96d |
| B8.31 23 16.0171 | RJ45 connector include CAT6A cable for security cameras | 2026-12-09 → 2026-12-05 (-4d) | 2026-12-10 → 2026-12-07 (-3d) |  | 6.32d → 15.96d |
| B8.31 23 16.0173 | Switch 20A, 1P, 60Hz Isolator/disconnect switches | 2026-12-12 → 2026-12-07 (-5d) | 2026-12-13 → 2026-12-09 (-4d) |  | 6.32d → 15.96d |
| B8.31 23 16.0175 | DB-GR Panel | 2026-12-14 → 2026-12-09 (-5d) | 2026-12-15 → 2026-12-12 (-3d) |  | 6.32d → 15.96d |
| B8.31 23 16.0193 | 4Cx 6mm2 + 1Cx6mm2 Cu/XLPE/PVC FROM KWHM to DB-MGR | 2026-12-14 → 2026-12-09 (-5d) | 2026-12-15 → 2026-12-12 (-3d) |  | 6.32d → 15.96d |
| Interior Finishes | **Interior Finishes** | 2026-11-11 → 2026-11-07 (-4d) | 2026-11-28 → 2026-11-24 (-4d) |  |  |
| B8.31 23 16.0195 | Porcelain flooring tiles size (600x600) | 2026-11-11 → 2026-11-07 (-4d) | 2026-11-14 → 2026-11-10 (-4d) |  | 6.32d → 15.96d |
| B8.31 23 16.01117 | Raised floor finish | 2026-11-15 → 2026-11-10 (-5d) | 2026-11-17 → 2026-11-14 (-3d) |  | 16.32d → 25.96d |
| B8.31 23 16.0197 | Ceramic wall tiles size (300x300) mm | 2026-11-15 → 2026-11-10 (-5d) | 2026-11-17 → 2026-11-14 (-3d) |  | 6.32d → 15.96d |
| B8.31 23 16.01107 | Porcelain flooring tiles size (300x300) | 2026-11-18 → 2026-11-14 (-4d) | 2026-11-21 → 2026-11-17 (-4d) |  | 6.32d → 15.96d |
| B8.31 23 16.0185 | Internal painting | 2026-11-22 → 2026-11-14 (-8d) | 2026-11-24 → 2026-11-17 (-7d) |  | 8.32d → 20.96d |
| B8.31 23 16.01109 | Porcelain flooring tiles size (500x500) | 2026-11-22 → 2026-11-17 (-5d) | 2026-11-24 → 2026-11-21 (-3d) |  | 6.32d → 15.96d |
| B8.31 23 16.0199 | Gypsum board ceiling, including paint | 2026-11-25 → 2026-11-17 (-8d) | 2026-11-26 → 2026-11-19 (-7d) |  | 8.32d → 20.96d |
| B8.31 23 16.01115 | Porcelain skirting 100mm height | 2026-11-25 → 2026-11-21 (-4d) | 2026-11-28 → 2026-11-24 (-4d) |  | 7.32d → 16.96d |
| Fixtures, Equipment | **Fixtures, Equipment & Final Connections** | 2026-11-21 → 2026-11-16 (-5d) | 2026-12-09 → 2026-12-06 (-3d) |  |  |
| Doors | **Install Doors** | 2026-11-29 → 2026-11-24 (-5d) | 2026-12-05 → 2026-12-01 (-4d) |  |  |
| B8.31 23 16.01139 | Steel Door SD1 | 2026-11-29 → 2026-11-24 (-5d) | 2026-11-30 → 2026-11-26 (-4d) |  | 7.32d → 16.96d |
| B8.31 23 16.01141 | Wood Door TD1 | 2026-12-01 → 2026-11-26 (-5d) | 2026-12-02 → 2026-11-29 (-3d) |  | 7.32d → 16.96d |
| B8.31 23 16.01143 | Wood Door TD2 | 2026-12-03 → 2026-11-29 (-4d) | 2026-12-05 → 2026-12-01 (-4d) |  | 7.32d → 16.96d |
| Sanitarywares | **Install Sanitarywares** | 2026-11-25 → 2026-11-21 (-4d) | 2026-11-30 → 2026-11-26 (-4d) |  |  |
| B8.31 23 16.01119 | Toilet | 2026-11-25 → 2026-11-21 (-4d) | 2026-11-26 → 2026-11-23 (-3d) |  | 6.32d → 15.96d |

| ID | Task | Start | Finish | Total float |
| --- | --- | --- | --- | --- |
| B8.31 23 16.01121 | Shower | 2026-11-28 → 2026-11-23 (-5d) | 2026-11-29 → 2026-11-25 (-4d) | 6.32d → 15.96d |
| B8.31 23 16.01123 | Semi pedestal sink | 2026-11-30 → 2026-11-25 (-5d) | 2026-11-30 → 2026-11-26 (-4d) | 6.32d → 15.96d |
| Tech | **Install Final Electrical & Tech Components** | 2026-11-21 → 2026-11-16 (-5d) | 2026-12-09 → 2026-12-06 (-3d) |  |
| B8.31 23 16.01147 | WALL MOUNTED BULK HEAD OUTDOOR LED 15 WATTS, IP65 | 2026-11-21 → 2026-11-16 (-5d) | 2026-11-22 → 2026-11-18 (-4d) | 16.32d → 25.96d |
| B8.31 23 16.01131 | Data Cabinet including all devices 12U | 2026-11-25 → 2026-11-21 (-4d) | 2026-11-26 → 2026-11-23 (-3d) | 8.32d → 17.96d |
| B8.31 23 16.01101 | 50-inch screen | 2026-11-28 → 2026-11-23 (-5d) | 2026-11-29 → 2026-11-25 (-4d) | 8.32d → 17.96d |
| B8.31 23 16.01133 | PC workstation | 2026-11-30 → 2026-11-25 (-5d) | 2026-12-01 → 2026-11-28 (-3d) | 8.32d → 17.96d |
| B8.31 23 16.01125 | ROUND RECESSED LED 11.5 WATTS, IP20 | 2026-12-06 → 2026-12-01 (-5d) | 2026-12-07 → 2026-12-03 (-4d) | 7.32d → 16.96d |
| B8.31 23 16.01127 | ROUND RECESSED LED 11.5 WATTS, IP20, with Emergency | 2026-12-08 → 2026-12-03 (-5d) | 2026-12-09 → 2026-12-06 (-3d) | 7.32d → 16.96d |
| B8.31 23 16.01129 | ROUND RECESSED LED 11.5 WATTS, IP44 | 2026-12-08 → 2026-12-03 (-5d) | 2026-12-09 → 2026-12-06 (-3d) | 7.32d → 16.96d |
| Fire | **Install Fire Equipments** | 2026-12-02 → 2026-11-28 (-4d) | 2026-12-06 → 2026-12-02 (-4d) |  |
| B8.31 23 16.01103 | CO2 fire extinguishers | 2026-12-02 → 2026-11-28 (-4d) | 2026-12-03 → 2026-11-30 (-3d) | 8.32d → 17.96d |
| B8.31 23 16.01105 | Powder fire extinguishers | 2026-12-05 → 2026-11-30 (-5d) | 2026-12-06 → 2026-12-02 (-4d) | 8.32d → 17.96d |
| Potable Water PumpST | **Potable Water Pump Station** |  | 2026-12-16 → 2026-11-25 (-21d) |  |
| Superstructure | **Superstructure** |  | 2026-10-10 → 2026-10-17 (+7d) |  |
| B3.2.32 11 23.01.27_R | CMU (Concrete Masonry Unit) Walls Construction(Rem) | 2026-10-07 → 2026-10-14 (+7d) | 2026-10-10 → 2026-10-17 (+7d) |  |
| B3.2.32 11 23.01.39_R | Roof Slab & Beams Construction(Rem) | 2026-10-07 → 2026-10-14 (+7d) | 2026-10-08 → 2026-10-15 (+7d) |  |
| 1 | **Building Envelope & Waterproofing** | 2026-10-07 → 2026-10-14 (+7d) | 2026-12-14 → 2026-11-23 (-21d) |  |
| B3.2.32 11 23.01.21 | Sloped Screed for Roof | 2026-10-07 → 2026-10-14 (+7d) | 2026-10-11 → 2026-10-18 (+7d) |  |
| B3.2.32 11 23.01.43 | External Plastering | 2026-10-07 → 2026-10-14 (+7d) | 2026-10-11 → 2026-10-18 (+7d) |  |
| B3.2.32 11 23.01.49 | Waterproofing Membrane for Roof | 2026-10-10 → 2026-10-17 (+7d) | 2026-10-11 → 2026-10-18 (+7d) |  |
| B3.2.32 11 23.01.29 | Geotextile Membrane for Roof | 2026-10-12 → 2026-10-19 (+7d) | 2026-10-13 → 2026-10-20 (+7d) |  |
| B3.2.32 11 23.01.65 | Water proofing with 50mm screed protection | 2026-10-12 → 2026-10-19 (+7d) | 2026-10-13 → 2026-10-20 (+7d) |  |
| B3.2.32 11 23.01.41 | 50mm Foam Concrete for Roof | 2026-10-14 → 2026-10-21 (+7d) | 2026-10-15 → 2026-10-22 (+7d) |  |
| B3.2.32 11 23.01.79 | Stainless steel at top of tank size of 950x950mm | 2026-10-14 → 2026-10-21 (+7d) | 2026-10-15 → 2026-10-22 (+7d) |  |
| B3.2.32 11 23.01.51 | Gravel for Roof | 2026-10-17 → 2026-10-24 (+7d) | 2026-10-18 → 2026-10-25 (+7d) |  |
| B3.2.32 11 23.01.69 | Stone Copping Installation | 2026-10-19 → 2026-10-26 (+7d) | 2026-10-20 → 2026-10-27 (+7d) |  |
| B3.2.32 11 23.01.250 | External Painting | 2026-12-13 → 2026-11-21 (-22d) | 2026-12-14 → 2026-11-23 (-21d) | 3.32d → 27.92d |
| 2 | **Interior Finishes & Fixed Installations** | 2026-10-07 → 2026-10-14 (+7d) | 2026-11-24 → 2026-11-01 (-23d) |  |
| B3.2.32 11 23.01.31 | Lean Concrete for Equipment Pads | 2026-10-07 → 2026-10-14 (+7d) | 2026-10-10 → 2026-10-17 (+7d) |  |
| B3.2.32 11 23.01.33 | Stairs Construction | 2026-11-02 → 2026-10-15 (-18d) | 2026-11-04 → 2026-10-19 (-16d) | 16.32d → 37.12d |
| B3.2.32 11 23.01.45 | Internal Plastering | 2026-11-05 → 2026-10-19 (-17d) | 2026-11-08 → 2026-10-22 (-17d) | 16.32d → 37.12d |
| B3.2.32 11 23.01.63 | Water proofing Membrane with protection board | 2026-11-09 → 2026-10-22 (-18d) | 2026-11-11 → 2026-10-26 (-16d) | 19.32d → 40.12d |
| B3.2.32 11 23.01.71 | Internal Painting (Acrylic/Emulsion) | 2026-11-23 → 2026-10-29 (-25d) | 2026-11-24 → 2026-11-01 (-23d) | 10.32d → 37.12d |
| B3.2.32 11 23.01.91 | Epoxy Paint for Floors & Non-Toxic Epoxy for Tank | 2026-11-23 → 2026-10-29 (-25d) | 2026-11-24 → 2026-11-01 (-23d) | 10.32d → 37.12d |
| 3 | **Mechanical & Piping Rough-In** | 2026-10-14 → 2026-10-15 (+1d) | 2026-12-05 → 2026-11-14 (-21d) |  |
| B3.2.32 11 23.01.53 | Overhead Crane Installation | 2026-10-21 → 2026-10-17 (-4d) | 2026-10-22 → 2026-10-19 (-3d) | 16.32d → 25.92d |
| B3.2.32 11 23.01.73 | Surge Tank | 2026-11-05 → 2026-10-19 (-17d) | 2026-11-07 → 2026-10-21 (-17d) | 11.32d → 31.92d |
| B3.2.32 11 23.01.93 | Control Panel | 2026-11-05 → 2026-10-19 (-17d) | 2026-11-07 → 2026-10-21 (-17d) | 11.32d → 31.92d |
| 1 | **Major Equipment** | 2026-10-24 → 2026-10-19 (-5d) | 2026-11-18 → 2026-10-28 (-21d) |  |
| 5 | **Pumps** | 2026-10-24 → 2026-10-19 (-5d) | 2026-11-01 → 2026-10-28 (-4d) |  |
| B3.2.32 11 23.01.81 | Water Pump - Vertical multistage cintrifugal pump | 2026-10-24 → 2026-10-19 (-5d) | 2026-10-25 → 2026-10-21 (-4d) | 20.32d → 29.92d |
| B3.2.32 11 23.01.123 | Submersible pump | 2026-10-25 → 2026-10-20 (-5d) | 2026-10-27 → 2026-10-24 (-3d) | 20.32d → 29.92d |
| B3.2.32 11 23.01.111 | Fire Pump - Vertical multistage cintrifugal (jockey) pump | 2026-10-26 → 2026-10-21 (-5d) | 2026-10-27 → 2026-10-24 (-3d) | 20.32d → 29.92d |
| B3.2.32 11 23.01.99 | Fire Pump - split case cintrifugal pump | 2026-10-26 → 2026-10-21 (-5d) | 2026-10-27 → 2026-10-24 (-3d) | 20.32d → 29.92d |
| B3.2.32 11 23.01.139 | Manually Operated Fuel Pump | 2026-10-28 → 2026-10-24 (-4d) | 2026-10-29 → 2026-10-26 (-3d) | 32.32d → 41.92d |
| B3.2.32 11 23.01.149 | Positive Displacement Rotary Type Pump | 2026-10-31 → 2026-10-26 (-5d) | 2026-11-01 → 2026-10-28 (-4d) | 32.32d → 41.92d |
| 1 | **Chlorination System** | 2026-11-09 → 2026-10-19 (-21d) | 2026-11-18 → 2026-10-28 (-21d) |  |
| B3.2.32 11 23.01.83 | Chlorine Cylinder racks | 2026-11-09 → 2026-10-19 (-21d) | 2026-11-10 → 2026-10-21 (-20d) | 2.32d → 25.92d |
| B3.2.32 11 23.01.101 | Chlorinators | 2026-11-11 → 2026-10-21 (-21d) | 2026-11-12 → 2026-10-24 (-19d) | 2.32d → 25.92d |
| B3.2.32 11 23.01.113 | Discharge Line Analyzer | 2026-11-11 → 2026-10-21 (-21d) | 2026-11-12 → 2026-10-24 (-19d) | 2.32d → 25.92d |
| B3.2.32 11 23.01.125 | Motive Water Pumps (Injection) | 2026-11-14 → 2026-10-24 (-21d) | 2026-11-15 → 2026-10-26 (-20d) | 2.32d → 25.92d |
| B3.2.32 11 23.01.127 | Motive Water Pumps (Water) | 2026-11-14 → 2026-10-24 (-21d) | 2026-11-15 → 2026-10-26 (-20d) | 2.32d → 25.92d |
| B3.2.32 11 23.01.137 | Control Panel | 2026-11-17 → 2026-10-26 (-22d) | 2026-11-18 → 2026-10-28 (-21d) | 1.32d → 25.92d |
| 2 | **Internal Piping & Valves Installation** | 2026-11-17 → 2026-10-26 (-22d) | 2026-12-05 → 2026-11-14 (-21d) |  |
| 1 | **Pipes** | 2026-11-17 → 2026-10-26 (-22d) | 2026-12-05 → 2026-11-14 (-21d) |  |
| 1 | **Double Flanged DI Pipes** | 2026-11-17 → 2026-10-26 (-22d) | 2026-11-23 → 2026-11-02 (-21d) |  |
| B3.2.32 11 23.01.147 | Double Flanged DI Pipe ?60 mm | 2026-11-17 → 2026-10-26 (-22d) | 2026-11-18 → 2026-10-28 (-21d) | 7.32d → 31.92d |
| B3.2.32 11 23.01.155 | Double Flanged DI Pipe ?80 mm | 2026-11-19 → 2026-10-28 (-22d) | 2026-11-21 → 2026-10-31 (-21d) | 5.32d → 29.92d |
| B3.2.32 11 23.01.161 | Double Flanged DI Pipe ?100 mm | 2026-11-19 → 2026-10-28 (-22d) | 2026-11-21 → 2026-10-31 (-21d) | 5.32d → 29.92d |
| B3.2.32 11 23.01.169 | Double Flanged DI Pipe ?200 mm | 2026-11-19 → 2026-10-28 (-22d) | 2026-11-21 → 2026-10-31 (-21d) | 5.32d → 29.92d |
| B3.2.32 11 23.01.179 | Double Flanged DI Pipe ?300 mm | 2026-11-22 → 2026-10-31 (-22d) | 2026-11-23 → 2026-11-02 (-21d) | 5.32d → 29.92d |
| B3.2.32 11 23.01.185 | Double Flanged DI Pipe ?350 mm | 2026-11-22 → 2026-10-31 (-22d) | 2026-11-23 → 2026-11-02 (-21d) | 5.32d → 29.92d |
| 2 | **PPR Pipes** | 2026-11-24 → 2026-11-02 (-22d) | 2026-12-05 → 2026-11-14 (-21d) |  |
| B3.2.32 11 23.01.199 | PPR Pipes with ?25mm | 2026-11-24 → 2026-11-02 (-22d) | 2026-11-25 → 2026-11-04 (-21d) | 5.32d → 29.92d |
| B3.2.32 11 23.01.203 | PPR Pipes with ?32mm | 2026-11-26 → 2026-11-04 (-22d) | 2026-11-28 → 2026-11-07 (-21d) | 5.32d → 29.92d |
| B3.2.32 11 23.01.209 | PPR Pipes with ?40mm | 2026-11-29 → 2026-11-07 (-22d) | 2026-11-30 → 2026-11-09 (-21d) | 5.32d → 29.92d |
| B3.2.32 11 23.01.213 | Hose Bibb Installation | 2026-12-01 → 2026-11-09 (-22d) | 2026-12-02 → 2026-11-11 (-21d) | 5.32d → 29.92d |
| B3.2.32 11 23.01.217 | Emergency Shower Installation | 2026-12-03 → 2026-11-11 (-22d) | 2026-12-05 → 2026-11-14 (-21d) | 5.32d → 29.92d |
| 2 | **Valves** | 2026-11-17 → 2026-10-26 (-22d) | 2026-11-28 → 2026-11-07 (-21d) |  |

| ID | Task | Start | Finish | Total float |
| --- | --- | --- | --- | --- |
| 1 | **Gate Valves** | 2026-11-17 → 2026-10-26 (-22d) | 2026-11-25 → 2026-11-04 (-21d) |  |
| B3.2.32 11 23.01.157 | Manually operated Gate Valve DN60 | 2026-11-17 → 2026-10-26 (-22d) | 2026-11-18 → 2026-10-28 (-21d) | 17.32d → 41.92d |
| B3.2.32 11 23.01.163 | Manually operated Gate Valve DN80 | 2026-11-22 → 2026-10-31 (-22d) | 2026-11-23 → 2026-11-02 (-21d) | 11.32d → 35.92d |
| B3.2.32 11 23.01.171 | Manually operated Gate Valve DN100 | 2026-11-22 → 2026-10-31 (-22d) | 2026-11-23 → 2026-11-02 (-21d) | 15.32d → 39.92d |
| B3.2.32 11 23.01.181 | Manually operated Gate Valve DN200 | 2026-11-22 → 2026-10-31 (-22d) | 2026-11-23 → 2026-11-02 (-21d) | 11.32d → 35.92d |
| B3.2.32 11 23.01.193 | Manually operated Gate Valve DN350 | 2026-11-24 → 2026-11-02 (-22d) | 2026-11-25 → 2026-11-04 (-21d) | 13.32d → 37.92d |
| 2 | **Non Return Valves** | 2026-11-19 → 2026-10-28 (-22d) | 2026-11-25 → 2026-11-04 (-21d) |  |
| B3.2.32 11 23.01.165 | Non return Valve DN60 | 2026-11-19 → 2026-10-28 (-22d) | 2026-11-21 → 2026-10-31 (-21d) | 17.32d → 41.92d |
| B3.2.32 11 23.01.187 | Non return Valve DN300 | 2026-11-24 → 2026-11-02 (-22d) | 2026-11-25 → 2026-11-04 (-21d) | 13.32d → 37.92d |
| 3 | **Butterfly Valves** | 2026-11-24 → 2026-11-02 (-22d) | 2026-11-28 → 2026-11-07 (-21d) |  |
| B3.2.32 11 23.01.189 | Butterfly Valve DN200 | 2026-11-24 → 2026-11-02 (-22d) | 2026-11-25 → 2026-11-04 (-21d) | 11.32d → 35.92d |
| B3.2.32 11 23.01.195 | Butterfly Valve DN300 | 2026-11-26 → 2026-11-04 (-22d) | 2026-11-28 → 2026-11-07 (-21d) | 11.32d → 35.92d |
| 3 | **Flowmeters** | 2026-11-24 → 2026-11-02 (-22d) | 2026-11-28 → 2026-11-07 (-21d) |  |
| B3.2.32 11 23.01.173 | Electromagnetic Flowmeter DN80, PN16 | 2026-11-24 → 2026-11-02 (-22d) | 2026-11-25 → 2026-11-04 (-21d) | 11.32d → 35.92d |
| B3.2.32 11 23.01.197 | Electromagnetic Flowmeter DN200, PN16 | 2026-11-26 → 2026-11-04 (-22d) | 2026-11-28 → 2026-11-07 (-21d) | 11.32d → 35.92d |
| Strainers | **Strainers** | 2026-12-01 → 2026-11-09 (-22d) | 2026-12-02 → 2026-11-11 (-21d) |  |
| B3.2. 22 05 23 .11 | Strainer DN80 | 2026-12-01 → 2026-11-09 (-22d) | 2026-12-02 → 2026-11-11 (-21d) | 7.32d → 31.92d |
| B3.2. 22 05 23 .12 | Strainer DN350 | 2026-12-01 → 2026-11-09 (-22d) | 2026-12-02 → 2026-11-11 (-21d) | 7.32d → 31.92d |
| 3 | **HVAC & Fire Suppression Fixture Installation** | 2026-10-21 → 2026-10-19 (-2d) | 2026-11-26 → 2026-11-03 (-23d) |  |
| Fans | **Fans** | 2026-10-21 → 2026-10-19 (-2d) | 2026-11-14 → 2026-10-20 (-25d) |  |
| B3.2.32 11 23.01.55 | Roof Mounted Fans | 2026-10-21 → 2026-10-19 (-2d) | 2026-10-22 → 2026-10-20 (-2d) | 20.32d → 28.32d |
| B3.2.32 11 23.01.85 | Exhaust Axial Fan | 2026-11-12 → 2026-10-19 (-24d) | 2026-11-14 → 2026-10-20 (-25d) | 1.32d → 28.32d |
| AC Units | **AC Units** | 2026-11-12 → 2026-10-19 (-24d) | 2026-11-14 → 2026-10-20 (-25d) |  |
| B3.2.32 11 23.01.103 | DX wall mounted Split/AC | 2026-11-12 → 2026-10-19 (-24d) | 2026-11-14 → 2026-10-20 (-25d) | 1.32d → 28.32d |
| FM200 System | **FM200 System** | 2026-11-15 → 2026-10-21 (-25d) | 2026-11-16 → 2026-10-22 (-25d) |  |
| B3.2.32 11 23.01.1 | FM200 system for Electrcal Room - Second Fix | 2026-11-15 → 2026-10-21 (-25d) | 2026-11-16 → 2026-10-22 (-25d) | 1.32d → 28.32d |
| B3.2.32 11 23.01.115 | FM200 system for Electrcal Room - First Fix | 2026-11-15 → 2026-10-21 (-25d) | 2026-11-16 → 2026-10-22 (-25d) | 1.32d → 28.32d |
| B3.2.32 11 23.01.3 | FM200 system for Electrcal Room - Final Fix | 2026-11-15 → 2026-10-21 (-25d) | 2026-11-16 → 2026-10-22 (-25d) | 1.32d → 28.32d |
| Fire Extinguishers | **Fire Extinguishers** | 2026-11-25 → 2026-11-01 (-24d) | 2026-11-26 → 2026-11-03 (-23d) |  |
| B3.2.32 11 23.01.270 | CO2 fire extinguishers | 2026-11-25 → 2026-11-01 (-24d) | 2026-11-26 → 2026-11-03 (-23d) | 14.32d → 41.12d |
| B3.2.32 11 23.01.280 | Powder fire extinguishers | 2026-11-25 → 2026-11-01 (-24d) | 2026-11-26 → 2026-11-03 (-23d) | 14.32d → 41.12d |
| 4 | **External & Underground Piping** | 2026-10-14 → 2026-10-15 (+1d) | 2026-11-04 → 2026-11-07 (+3d) |  |
| 1 | **Buried Pipes** | 2026-10-14 → 2026-10-15 (+1d) | 2026-10-25 → 2026-10-27 (+2d) |  |
| B3.2.32 11 23.01.13 | Buried DI Pipe ?80 mm | 2026-10-14 → 2026-10-15 (+1d) | 2026-10-15 → 2026-10-18 (+3d) | 33.32d → 38.12d |
| B3.2.32 11 23.01.17 | Buried DI Pipe ?100 mm | 2026-10-17 → 2026-10-18 (+1d) | 2026-10-18 → 2026-10-20 (+2d) | 33.32d → 38.12d |
| B3.2.32 11 23.01.23 | Buried DI Pipe ?200 mm | 2026-10-19 → 2026-10-20 (+1d) | 2026-10-20 → 2026-10-22 (+2d) | 33.32d → 38.12d |
| B3.2.32 11 23.01.37 | Buried DI Pipe ?300 mm | 2026-10-21 → 2026-10-22 (+1d) | 2026-10-22 → 2026-10-25 (+3d) | 33.32d → 38.12d |
| B3.2.32 11 23.01.57 | Buried DI Pipe ?350 mm | 2026-10-24 → 2026-10-25 (+1d) | 2026-10-25 → 2026-10-27 (+2d) | 33.32d → 38.12d |
| 2 | **uPVC** | 2026-10-26 → 2026-10-27 (+1d) | 2026-10-27 → 2026-10-29 (+2d) |  |
| B3.2.32 11 23.01.87 | uPVC Pipes ?110mm | 2026-10-26 → 2026-10-27 (+1d) | 2026-10-27 → 2026-10-29 (+2d) | 33.32d → 38.12d |
| 3 | **Drains** | 2026-10-28 → 2026-10-29 (+1d) | 2026-11-04 → 2026-11-07 (+3d) |  |
| B3.2.32 11 23.01.105 | Trench drain | 2026-10-28 → 2026-10-29 (+1d) | 2026-10-29 → 2026-11-01 (+3d) | 33.32d → 38.12d |
| B3.2.32 11 23.01.117 | Scupper ?110mm | 2026-10-31 → 2026-11-01 (+1d) | 2026-11-01 → 2026-11-03 (+2d) | 33.32d → 38.12d |
| B3.2.32 11 23.01.129 | Manholes | 2026-11-02 → 2026-11-03 (+1d) | 2026-11-04 → 2026-11-07 (+3d) | 33.32d → 38.12d |
| 4 | **Electrical & Control Systems** | 2026-10-07 → 2026-10-14 (+7d) | 2026-12-16 → 2026-11-25 (-21d) |  |
| 5 | **Primary Power Installation** | 2026-10-07 → 2026-10-14 (+7d) | 2026-10-31 → 2026-10-24 (-7d) |  |
| 1 | **Generator** | 2026-10-07 → 2026-10-14 (+7d) | 2026-10-12 → 2026-10-19 (+7d) |  |
| B3.2.32 11 23.01.35 | Standby Diesel Generator | 2026-10-07 → 2026-10-14 (+7d) | 2026-10-12 → 2026-10-19 (+7d) |  |
| 2 | **Fuel Tank** | 2026-10-13 → 2026-10-20 (+7d) | 2026-10-14 → 2026-10-21 (+7d) |  |
| B3.2.32 11 23.01.47 | Underground Fuel Tank | 2026-10-13 → 2026-10-20 (+7d) | 2026-10-14 → 2026-10-21 (+7d) |  |
| 3 | **ATS** | 2026-10-29 → 2026-10-22 (-7d) | 2026-10-31 → 2026-10-24 (-7d) |  |
| B3.2.32 11 23.01.67 | Automatic Transfer Switch ATS | 2026-10-29 → 2026-10-22 (-7d) | 2026-10-31 → 2026-10-24 (-7d) | 29.32d → 41.32d |
| 4 | **Motor Control Center (MCC)** | 2026-10-29 → 2026-10-22 (-7d) | 2026-10-31 → 2026-10-24 (-7d) |  |
| B3.2.32 11 23.01.89 | MCC Installation | 2026-10-29 → 2026-10-22 (-7d) | 2026-10-31 → 2026-10-24 (-7d) | 29.32d → 41.32d |
| Hand Holes | **Hand Holes** | 2026-10-10 → 2026-10-17 (+7d) | 2026-10-15 → 2026-10-22 (+7d) |  |
| B3.2. 26 05 43 .02 | Hand Hole (EHH-2) 400mm x 400mm x 600mm | 2026-10-10 → 2026-10-17 (+7d) | 2026-10-12 → 2026-10-19 (+7d) |  |
| B3.2. 26 05 43 .01 | Hand Hole (EHH-1) 600mm x 600mm x 800mm | 2026-10-13 → 2026-10-20 (+7d) | 2026-10-15 → 2026-10-22 (+7d) |  |
| 2 | **Cable Tray, Conduit Installation & Power Cable Pulling** | 2026-11-19 → 2026-10-28 (-22d) | 2026-12-05 → 2026-11-14 (-21d) |  |
| B3.2.32 11 23.01.145 | 4x1Cx 630mm2 Cu/XLPE//PVC | 2026-11-19 → 2026-10-28 (-22d) | 2026-11-21 → 2026-10-31 (-21d) | 1.32d → 25.92d |
| B3.2.32 11 23.01.153 | 4Cx 10mm2 Cu/XLPE/SWA/PVC | 2026-11-22 → 2026-10-31 (-22d) | 2026-11-23 → 2026-11-02 (-21d) | 1.32d → 25.92d |
| B3.2.32 11 23.01.159 | 4/Cx35mm²+1Cx16mm² | 2026-11-24 → 2026-11-02 (-22d) | 2026-11-25 → 2026-11-04 (-21d) | 1.32d → 25.92d |
| B3.2.32 11 23.01.167 | 4/Cx6mm² Cu/XLPE/PVC + 1Cx6mm² Cu/PVC | 2026-11-26 → 2026-11-04 (-22d) | 2026-11-28 → 2026-11-07 (-21d) | 1.32d → 25.92d |
| B3.2.32 11 23.01.175 | 4Cx 25mm2 + 1Cx16mm2 Cu/XLPE/PVC | 2026-11-29 → 2026-11-07 (-22d) | 2026-11-30 → 2026-11-09 (-21d) | 1.32d → 25.92d |
| B3.2.32 11 23.01.177 | 3Cx 6mm2 Cu/XLPE/PVC | 2026-12-01 → 2026-11-09 (-22d) | 2026-12-02 → 2026-11-11 (-21d) | 1.32d → 25.92d |
| B3.2.32 11 23.01.183 | 4Cx 25mm2 + 1Cx11mm2 Cu/XLPE/PVC | 2026-12-03 → 2026-11-11 (-22d) | 2026-12-05 → 2026-11-14 (-21d) | 1.32d → 25.92d |
| B3.2.32 11 23.01.191 | 3Cx 6mm2 Cu/XLPE/PVC | 2026-12-03 → 2026-11-11 (-22d) | 2026-12-05 → 2026-11-14 (-21d) | 1.32d → 25.92d |
| B3.2.32 11 23.01.201 | 4Cx 10mm2 + 1Cx10mm2 Cu/XLPE/PVC | 2026-12-03 → 2026-11-11 (-22d) | 2026-12-05 → 2026-11-14 (-21d) | 1.32d → 25.92d |
| B3.2.32 11 23.01.205 | 4Cx 6mm2 Cu/XLPE/SWA/PVC | 2026-12-03 → 2026-11-11 (-22d) | 2026-12-05 → 2026-11-14 (-21d) | 1.32d → 25.92d |
| 1 | **Enclosed Switches and Circuit Breakers** | 2026-11-05 → 2026-10-19 (-17d) | 2026-11-10 → 2026-10-25 (-16d) |  |
| B3.2. 26 28 16 .02 | 40A, 3P, 60Hz Isolator/disconnect switches IP65 | 2026-11-05 → 2026-10-19 (-17d) | 2026-11-07 → 2026-10-21 (-17d) | 23.32d → 44.12d |

| ID | Task | Start | Finish | Complete | Total float |
| --- | --- | --- | --- | --- | --- |
| B3.2. 26 28 16 .03 | 20A, 1P, 60Hz Isolator/disconnect switches IP65 | 2026-11-05 → 2026-10-19 (-17d) | 2026-11-07 → 2026-10-21 (-17d) |  | 23.32d → 44.12d |
| B3.2. 26 28 16 .01 | 630A, 3P, 60Hz Isolator/disconnect switches IP65 | 2026-11-09 → 2026-10-22 (-18d) | 2026-11-10 → 2026-10-25 (-16d) |  | 20.32d → 41.12d |
| Panelboards | **Panelboards** | 2026-11-16 → 2026-10-22 (-25d) | 2026-11-22 → 2026-10-29 (-24d) |  |  |
| B3.2. 26 24 16 .01 | DB-PW Panel: 100 Ampere, 3P, IP66,60Hz | 2026-11-16 → 2026-10-22 (-25d) | 2026-11-17 → 2026-10-25 (-23d) |  | 10.32d → 37.12d |
| B3.2. 26 24 16 .02 | DB-CL Panel: 100 Ampere, 3P, IP66,60Hz | 2026-11-18 → 2026-10-25 (-24d) | 2026-11-19 → 2026-10-27 (-23d) |  | 10.32d → 37.12d |
| B3.2. 26 24 16 .03 | ELP Panel: phtocell , timer,40 Ampere, 3P, IP66,60Hz | 2026-11-21 → 2026-10-27 (-25d) | 2026-11-22 → 2026-10-29 (-24d) |  | 10.32d → 37.12d |
| 3 | **Lighting** | 2026-11-09 → 2026-10-22 (-18d) | 2026-12-14 → 2026-11-23 (-21d) |  |  |
| 1 | **Poles** | 2026-12-06 → 2026-11-14 (-22d) | 2026-12-07 → 2026-11-16 (-21d) |  |  |
| B3.2.32 11 23.01.207 | 7m Single Arm Galvanized Steel Pole | 2026-12-06 → 2026-11-14 (-22d) | 2026-12-07 → 2026-11-16 (-21d) |  | 1.32d → 25.92d |
| 2 | **Fixtures (LEDs)** | 2026-11-09 → 2026-10-22 (-18d) | 2026-12-12 → 2026-11-21 (-21d) |  |  |
| B3.2.32 11 23.01.290 | Install addressable fire alarm system including smoke detector | 2026-11-09 → 2026-10-22 (-18d) | 2026-11-10 → 2026-10-25 (-16d) |  | 20.32d → 41.12d |
| B3.2.32 11 23.01.211 | HIGHBAY LED 76 WATTS, IP65, 230V, 60HZ, 12000 LUMENS | 2026-12-08 → 2026-11-16 (-22d) | 2026-12-09 → 2026-11-18 (-21d) |  | 1.32d → 25.92d |
| B3.2.32 11 23.01.215 | HIGHBAY LED 76 WATTS, IP65, 230V, 60HZ, 12000 LUMENS | 2026-12-08 → 2026-11-16 (-22d) | 2026-12-09 → 2026-11-18 (-21d) |  | 1.32d → 25.92d |
| B3.2.32 11 23.01.221 | Surfaced Mounted Light, IP65, 230V, 60Hz, 4200 Lumens | 2026-12-10 → 2026-11-18 (-22d) | 2026-12-12 → 2026-11-21 (-21d) |  | 1.32d → 25.92d |
| B3.2.32 11 23.01.225 | Surfaced Mounted Light, IP65, 230V, 60Hz, 4200 lumens | 2026-12-10 → 2026-11-18 (-22d) | 2026-12-12 → 2026-11-21 (-21d) |  | 1.32d → 25.92d |
| B3.2.32 11 23.01.229 | WALL MOUNTED LED FLOODLIGHT, IP65, 230V, 60HZ, 4300 LUMENS | 2026-12-10 → 2026-11-18 (-22d) | 2026-12-12 → 2026-11-21 (-21d) |  | 1.32d → 25.92d |
| B3.2.32 11 23.01.233 | WALL MOUNTED BULK HEAD OUTDOOR LED, IP65,230V 60 HZ | 2026-12-10 → 2026-11-18 (-22d) | 2026-12-12 → 2026-11-21 (-21d) |  | 1.32d → 25.92d |
| B3.2.32 11 23.01.237 | EMERGENCY EXIT SIGN (CEILING OR WALL MOUNTED) IP65,230V 60 HZ | 2026-12-10 → 2026-11-18 (-22d) | 2026-12-12 → 2026-11-21 (-21d) |  | 1.32d → 25.92d |
| 3 | **Wiring Devices** | 2026-12-13 → 2026-11-21 (-22d) | 2026-12-14 → 2026-11-23 (-21d) |  |  |
| B3.2.32 11 23.01.239 | 13A SINGLE SWITCH SOCKET OUTLET (WEATHER PROOF) | 2026-12-13 → 2026-11-21 (-22d) | 2026-12-14 → 2026-11-23 (-21d) |  | 1.32d → 25.92d |
| B3.2.32 11 23.01.241 | 13A DOUBLE SWITCH SOCKET OUTLET | 2026-12-13 → 2026-11-21 (-22d) | 2026-12-14 → 2026-11-23 (-21d) |  | 1.32d → 25.92d |
| B3.2.32 11 23.01.243 | 13A SINGLE SWITCH SOCKET OUTLET | 2026-12-13 → 2026-11-21 (-22d) | 2026-12-14 → 2026-11-23 (-21d) |  | 1.32d → 25.92d |
| B3.2.32 11 23.01.245 | 13A SPUR OUTLET | 2026-12-13 → 2026-11-21 (-22d) | 2026-12-14 → 2026-11-23 (-21d) |  | 1.32d → 25.92d |
| B3.2.32 11 23.01.247 | INDUSTRIAL SOCKET OUTLET, 400V, 3P, 60HZ, WITH GROUNDING | 2026-12-13 → 2026-11-21 (-22d) | 2026-12-14 → 2026-11-23 (-21d) |  | 1.32d → 25.92d |
| 4 | **Grounding & Lightning System** | 2026-12-15 → 2026-11-23 (-22d) | 2026-12-16 → 2026-11-25 (-21d) |  |  |
| B3.2.32 11 23.01.249 | Install Grounding and Lightning System | 2026-12-15 → 2026-11-23 (-22d) | 2026-12-16 → 2026-11-25 (-21d) |  | 1.32d → 25.92d |
| 6 | **Control & Instrumentation** | 2026-12-06 → 2026-11-14 (-22d) | 2026-12-09 → 2026-11-18 (-21d) |  |  |
| B3.2.32 11 23.01.219 | PLC Installation | 2026-12-06 → 2026-11-14 (-22d) | 2026-12-08 → 2026-11-17 (-21d) |  | 5.32d → 29.92d |
| B3.2.32 11 23.01.223 | Data Cabinet including all devices 12U | 2026-12-06 → 2026-11-14 (-22d) | 2026-12-07 → 2026-11-16 (-21d) |  | 5.32d → 29.92d |
| B3.2.32 11 23.01.227 | Data/ voice RJ45 outlet include CAT6A cable | 2026-12-06 → 2026-11-14 (-22d) | 2026-12-07 → 2026-11-16 (-21d) |  | 5.32d → 29.92d |
| B3.2.32 11 23.01.231 | Instrumentation for Process Systems (Field Instruments) | 2026-12-08 → 2026-11-16 (-22d) | 2026-12-09 → 2026-11-18 (-21d) |  | 5.32d → 29.92d |
| 7 | **Control Cable Pulling & Termination** | 2026-12-10 → 2026-11-18 (-22d) | 2026-12-12 → 2026-11-21 (-21d) |  |  |
| B3.2.32 11 23.01.235 | Process Control Wiring | 2026-12-10 → 2026-11-18 (-22d) | 2026-12-12 → 2026-11-21 (-21d) |  | 5.32d → 29.92d |
| 6 | **Final Fixtures** | 2026-10-31 → 2026-10-19 (-12d) | 2026-11-26 → 2026-11-05 (-21d) |  |  |
| 1 | **Door & Louver Installation** | 2026-11-05 → 2026-10-19 (-17d) | 2026-11-15 → 2026-10-29 (-17d) |  |  |
| B3.2.32 11 23.01.59 | Steel Door SD1 For chlorination size (2000x2300)mm | 2026-11-05 → 2026-10-19 (-17d) | 2026-11-07 → 2026-10-21 (-17d) |  | 27.32d → 48.12d |
| B3.2.32 11 23.01.75 | Steel Door SD1 size (2000x2550)mm | 2026-11-08 → 2026-10-21 (-18d) | 2026-11-09 → 2026-10-24 (-16d) |  | 27.32d → 48.12d |
| B3.2.32 11 23.01.95 | Steel Door SD2 size (900x2200)mm | 2026-11-09 → 2026-10-22 (-18d) | 2026-11-10 → 2026-10-25 (-16d) |  | 26.32d → 47.12d |
| B3.2.32 11 23.01.107 | 90 mins fire rated Steel Door SD3 size (1000x2200)mm | 2026-11-11 → 2026-10-25 (-17d) | 2026-11-12 → 2026-10-27 (-16d) |  | 26.32d → 47.12d |
| B3.2.32 11 23.01.119 | Sand trap louver 1500mm x 1500mm | 2026-11-11 → 2026-10-25 (-17d) | 2026-11-12 → 2026-10-27 (-16d) |  | 26.32d → 47.12d |
| B3.2.32 11 23.01.131 | Louver 3400mm x 2800mm | 2026-11-14 → 2026-10-27 (-18d) | 2026-11-15 → 2026-10-29 (-17d) |  | 26.32d → 47.12d |
| B3.2.32 11 23.01.143 | Steel shutter Door SD4 size (3200x3000)mm | 2026-11-14 → 2026-10-27 (-18d) | 2026-11-15 → 2026-10-29 (-17d) |  | 26.32d → 47.12d |
| 7 | **Ladders** | 2026-10-31 → 2026-10-19 (-12d) | 2026-11-10 → 2026-10-29 (-12d) |  |  |
| B3.2.32 11 23.01.61 | 5m External Galvanized Steel Ladder | 2026-10-31 → 2026-10-19 (-12d) | 2026-11-01 → 2026-10-20 (-12d) |  | 18.32d → 34.32d |
| B3.2.32 11 23.01.77 | 3m External Galvanized Steel Ladder | 2026-11-02 → 2026-10-21 (-12d) | 2026-11-03 → 2026-10-22 (-12d) |  | 18.32d → 34.32d |
| B3.2.32 11 23.01.97 | 4.3m External Galvanized Steel Ladder - Potable Water Tank | 2026-11-04 → 2026-10-24 (-11d) | 2026-11-05 → 2026-10-25 (-11d) |  | 18.32d → 34.32d |
| B3.2.32 11 23.01.109 | 4.5m External Stainless Steel A36 Ladder | 2026-11-07 → 2026-10-26 (-12d) | 2026-11-08 → 2026-10-27 (-12d) |  | 18.32d → 34.32d |
| B3.2.32 11 23.01.121 | 4.3m External Galvanized Steel Ladder - Chlorination | 2026-11-09 → 2026-10-28 (-12d) | 2026-11-10 → 2026-10-29 (-12d) |  | 18.32d → 34.32d |
| 2 | **Handrails** | 2026-11-11 → 2026-10-31 (-11d) | 2026-11-12 → 2026-11-01 (-11d) |  |  |
| B3.2.32 11 23.01.133 | Handrail with approximate height 1.1m | 2026-11-11 → 2026-10-31 (-11d) | 2026-11-12 → 2026-11-01 (-11d) |  | 18.32d → 34.32d |
| 6 | **Signage** | 2026-11-14 → 2026-11-02 (-12d) | 2026-11-26 → 2026-11-05 (-21d) |  |  |
| B3.2.32 11 23.01.141 | Aluminum exterior signage size (300x150)mm | 2026-11-14 → 2026-11-02 (-12d) | 2026-11-15 → 2026-11-03 (-12d) |  | 18.32d → 34.32d |
| B3.2.32 11 23.01.151 | Aluminum interior signage size (300x150)mm | 2026-11-25 → 2026-11-04 (-21d) | 2026-11-26 → 2026-11-05 (-21d) |  | 10.32d → 34.32d |
| 5 | **Engineering Backfilling** | 2026-11-05 → 2026-11-07 (+2d) | 2026-11-07 → 2026-11-09 (+2d) |  |  |
| B3.2.32 11 23.01.135 | Backfilling around structures | 2026-11-05 → 2026-11-07 (+2d) | 2026-11-07 → 2026-11-09 (+2d) |  | 33.32d → 38.12d |
| Zone 03 | **Zone 03** |  | 2026-12-16 → 2026-12-23 (+7d) |  |  |
| Road 02 | **Road 02** |  | 2026-12-06 → 2026-12-12 (+6d) |  |  |
| Wet Networks | **Wet Networks** |  | 2026-12-03 → 2026-12-07 (+4d) |  |  |
| Sewerage Network | **Sewerage Network** |  | 2026-10-12 → 2026-10-17 (+5d) |  |  |
| GRP | **GRP Pipes** |  | 2026-10-12 → 2026-10-08 (-4d) |  |  |
| 200 | **?200** |  | 2026-10-12 → 2026-10-08 (-4d) |  |  |
| 3 | **Depth From 4.5m to 5.5m** |  | 2026-10-12 → 2026-10-08 (-4d) |  |  |
| B5.33 31 00.02.05.5_R | Backfilling & Warrning Tape(Rem) |  | 2026-10-12 → 2026-10-08 A (-4d) | 12% → 100% | 109.31d → none |
| Manholes | **Manholes ?1200** |  | 2026-10-10 → 2026-10-17 (+7d) |  |  |
| 4 | **Depth From 4.5m to 5.5m** |  | 2026-10-08 → 2026-10-15 (+7d) |  |  |
| B6.33 05 39.01.607_R | Test, Internal Finishing, Benching & Cover(Rem) |  | 2026-10-08 → 2026-10-15 (+7d) |  |  |
| B6.33 05 39.01.617_R | Backfilling(Rem) |  | 2026-10-08 → 2026-10-15 (+7d) |  |  |
| 1 | **Depth From 5.5m to 6.5m** |  | 2026-10-10 → 2026-10-17 (+7d) |  |  |
| B6.33 05 39.01.657_R | Test, Internal Finishing, Benching & Cover(Rem) |  | 2026-10-08 → 2026-10-15 (+7d) |  |  |
| B6.33 05 39.01.667_R | Backfilling(Rem) |  | 2026-10-08 → 2026-10-15 (+7d) |  |  |

| ID | Task | Start | Finish | Complete | Total float |
| --- | --- | --- | --- | --- | --- |
| 1 | **Depth From 5.5m to 6.5m Backdrop** |  | 2026-10-10 → 2026-10-17 (+7d) |  |  |
| B6.33 05 39.01.687_R | Blinding Conc, & RC Base(Rem) |  | 2026-10-08 → 2026-10-15 (+7d) |  |  |
| B6.33 05 39.01.697_R | Manhole Installation(Rem) |  | 2026-10-07 → 2026-10-14 (+7d) |  |  |
| B6.33 05 39.01.707_R | Test, Internal Finishing, Benching & Cover(Rem) |  | 2026-10-10 → 2026-10-17 (+7d) |  |  |
| B6.33 05 39.01.717_R | Backfilling(Rem) |  | 2026-10-10 → 2026-10-17 (+7d) |  |  |
| Stormwater Network | **Stormwater Network** |  | 2026-10-21 → 2026-10-28 (+7d) |  |  |
| Catch Basins | **Catch Basins** |  | 2026-10-21 → 2026-10-28 (+7d) |  |  |
| Sing | **Single** |  | 2026-10-10 → 2026-10-17 (+7d) |  |  |
| B6.33 05 40.01.370_R | Excavation, Compaction & Vapour Barrier(Rem) | 2026-10-07 → 2026-10-14 (+7d) | 2026-10-10 → 2026-10-17 (+7d) |  | 5.32d → 100.32d |
| B6.33 05 40.01.380_R | Blinding Conc.(Rem) | 2026-10-07 → 2026-10-14 (+7d) | 2026-10-10 → 2026-10-17 (+7d) |  | 5.32d → 110.32d |
| B6.33 05 40.01.390_R | Catch Basin Installation(Rem) | 2026-10-07 → 2026-10-14 (+7d) | 2026-10-10 → 2026-10-17 (+7d) |  | 5.32d → 110.32d |
| B6.33 05 40.01.400_R | Backfilling, DI Frame & Grate Cover Fixing(Rem) | 2026-10-07 → 2026-10-14 (+7d) | 2026-10-08 → 2026-10-15 (+7d) |  | 5.32d → 111.32d |
| Dou | **Double** | 2026-10-07 → 2026-10-14 (+7d) | 2026-10-21 → 2026-10-28 (+7d) |  |  |
| B6.33 05 40.01.880 | Backfilling, DI Frame & Grate Cover Fixing | 2026-10-07 → 2026-10-14 (+7d) | 2026-10-13 → 2026-10-20 (+7d) |  | 1.32d → 47.32d |
| B6.33 05 40.01.850 | Excavation, Compaction & Vapour Barrier | 2026-10-11 → 2026-10-18 (+7d) | 2026-10-13 → 2026-10-20 (+7d) |  |  |
| B6.33 05 40.01.860 | Blinding Conc. | 2026-10-14 → 2026-10-21 (+7d) | 2026-10-17 → 2026-10-24 (+7d) |  |  |
| B6.33 05 40.01.870 | Catch Basin Installation | 2026-10-18 → 2026-10-25 (+7d) | 2026-10-21 → 2026-10-28 (+7d) |  |  |
| Potable Water | **Potable Water Network** |  | 2026-11-12 → 2026-10-25 (-18d) |  |  |
| HDPE | **HDPE Pipes** |  | 2026-10-10 → 2026-10-17 (+7d) |  |  |
| ?110mm | **?110mm** |  | 2026-10-10 → 2026-10-17 (+7d) |  |  |
| Depth: 0.0m - 1.5m | **Depth: 0.0m - 1.5m** |  | 2026-10-10 → 2026-10-17 (+7d) |  |  |
| B3.33 14 13.01.01017_R | Backfilling & Warrning Tape(Rem) | 2026-10-07 → 2026-10-14 (+7d) | 2026-10-10 → 2026-10-17 (+7d) |  | 92.66d → 110.66d |
| Depth: 1.51m - 2.5m | **Depth: 1.51m - 2.5m** |  | 2026-10-08 → 2026-10-15 (+7d) |  |  |
| B3.33 14 13.01.01011_R | Pipe Laying(Rem) | 2026-10-07 → 2026-10-14 (+7d) | 2026-10-08 → 2026-10-15 (+7d) |  | 93.32d → 111.32d |
| B3.33 14 13.01.01015_R | Embedment & Test(Rem) | 2026-10-07 → 2026-10-14 (+7d) | 2026-10-08 → 2026-10-15 (+7d) |  | 93.32d → 111.32d |
| B3.33 14 13.01.01019_R | Backfilling & Warrning Tape(Rem) | 2026-10-07 → 2026-10-14 (+7d) | 2026-10-08 → 2026-10-15 (+7d) |  | 93.32d → 111.32d |
| Crossing | **Plots and Buildings Crossing** |  | 2026-10-21 → 2026-10-25 (+4d) |  |  |
| B3.33 14 13.02.23 | Sand Bedding | 2026-10-11 → 2026-10-14 (+3d) | 2026-10-13 → 2026-10-17 (+4d) |  | 82.32d → 103.32d |
| B3.33 14 13.02.24 | Tee, Pipe (Crossing) Installation & Backfilling | 2026-10-14 → 2026-10-18 (+4d) | 2026-10-21 → 2026-10-25 (+4d) |  | 82.32d → 103.32d |
| Valves & Chambers | **Valves & Chambers** |  | 2026-11-12 → 2026-10-08 (-35d) |  |  |
| GV | **Gate Valves** |  | 2026-10-28 → 2026-10-08 (-20d) |  |  |
| 1 | **Gate valves dia (110) mm** |  | 2026-10-28 → 2026-10-08 (-20d) |  |  |
| B3.33 14 19.01.112_R | Burried Isolation Valve Installation(Rem) | 2026-10-07 → 2026-10-01 A (-6d) | 2026-10-10 → 2026-10-06 A (-4d) | 0% → 100% | 93.32d → none |
| B3.33 14 19.01.113 | Spindle & Surface Box | 2026-10-26 → 2026-10-04 A (-22d) | 2026-10-28 → 2026-10-08 A (-20d) | 0% → 100% | 91.32d → none |
| 2 | **Air Valves** | 2026-10-07 → 2026-09-22 (-15d) | 2026-10-29 → 2026-10-08 (-21d) |  |  |
| 4 | **Air valves on less than 315 mm. (In Chamber)** | 2026-10-07 → 2026-09-22 (-15d) | 2026-10-29 → 2026-10-08 (-21d) |  |  |
| B3.33 05 63.02.27 | Land Adjustment & Compaction | 2026-10-07 → 2026-09-22 A (-15d) | 2026-10-10 → 2026-09-23 A (-17d) | 0% → 100% | 79.32d → none |
| B3.33 05 63.02.25 | Foundations | 2026-10-11 → 2026-09-24 A (-17d) | 2026-10-14 → 2026-09-26 A (-18d) | 0% → 100% | 79.32d → none |
| B3.33 05 63.02.28 | Chambers Walls Conc Cast In Situ | 2026-10-15 → 2026-09-28 A (-17d) | 2026-10-19 → 2026-09-30 A (-19d) | 0% → 100% | 79.32d → none |
| B3.33 05 63.02.26 | Chamber Curing, Finishing & Steel Cover | 2026-10-20 → 2026-10-03 A (-17d) | 2026-10-25 → 2026-10-03 A (-22d) | 0% → 100% | 79.32d → none |
| B3.33 05 63.02.29 | Valve & Fitting Installation | 2026-10-26 → 2026-10-07 A (-19d) | 2026-10-29 → 2026-10-08 A (-21d) | 0% → 100% | 79.32d → none |
| Washout Valves | **Washout Valves** | 2026-10-07 → 2026-09-22 (-15d) | 2026-11-12 → 2026-10-08 (-35d) |  |  |
| 4 | **Washout valves on 110-400 mm. (In Chamber)** | 2026-10-07 → 2026-09-22 (-15d) | 2026-11-12 → 2026-10-08 (-35d) |  |  |
| B3.33 05 63.01.22 | Land Adjustment & Compaction | 2026-10-07 → 2026-09-22 A (-15d) | 2026-10-10 → 2026-09-23 A (-17d) | 0% → 100% | 84.32d → none |
| B3.33 05 63.01.20 | Foundations | 2026-10-11 → 2026-09-24 A (-17d) | 2026-10-14 → 2026-09-26 A (-18d) | 0% → 100% | 84.32d → none |
| B3.33 05 63.01.23 | Chambers Walls Conc Cast In Situ | 2026-10-15 → 2026-09-28 A (-17d) | 2026-10-19 → 2026-09-30 A (-19d) | 0% → 100% | 84.32d → none |
| B3.33 05 63.01.21 | Chamber Curing, Finishing & Steel Cover | 2026-10-20 → 2026-10-03 A (-17d) | 2026-10-24 → 2026-10-03 A (-21d) | 0% → 100% | 84.32d → none |
| B3.33 05 63.01.24 | Valve & Fitting Installation | 2026-11-09 → 2026-10-07 A (-33d) | 2026-11-12 → 2026-10-08 A (-35d) | 0% → 100% | 71.32d → none |
| Fire Fighting | **Fire Fighting Network** |  | 2026-11-05 → 2026-11-12 (+7d) |  |  |
| Valves & Chambers | **Valves & Chambers** |  | 2026-11-05 → 2026-11-12 (+7d) |  |  |
| GV | **Gate Valves** |  | 2026-10-11 → 2026-10-18 (+7d) |  |  |
| 1 | **Gate valves dia (250) mm** |  | 2026-10-11 → 2026-10-18 (+7d) |  |  |
| B3.33 14 19.01.129 | Spindle & Surface Box | 2026-10-07 → 2026-10-14 (+7d) | 2026-10-11 → 2026-10-18 (+7d) |  | 94.32d → 109.32d |
| 2 | **Air Valves** | 2026-10-07 → 2026-10-14 (+7d) | 2026-11-05 → 2026-11-12 (+7d) |  |  |
| 4 | **Air valves on less than 315 mm. (In Chamber)** | 2026-10-07 → 2026-10-14 (+7d) | 2026-11-05 → 2026-11-12 (+7d) |  |  |
| B3.33 05 63.02.57 | Land Adjustment & Compaction | 2026-10-07 → 2026-10-14 (+7d) | 2026-10-11 → 2026-10-18 (+7d) |  |  |
| B3.33 05 63.02.55 | Foundations | 2026-10-12 → 2026-10-19 (+7d) | 2026-10-17 → 2026-10-24 (+7d) |  |  |
| B3.33 05 63.02.58 | Chambers Walls Conc Cast In Situ | 2026-10-18 → 2026-10-25 (+7d) | 2026-10-22 → 2026-10-29 (+7d) |  |  |
| B3.33 05 63.02.56 | Chamber Curing, Finishing & Steel Cover | 2026-10-24 → 2026-10-31 (+7d) | 2026-10-29 → 2026-11-05 (+7d) |  |  |
| B3.33 05 63.02.59 | Valve & Fitting Installation | 2026-10-31 → 2026-11-07 (+7d) | 2026-11-05 → 2026-11-12 (+7d) |  |  |
| Washout Valves | **Washout Valves** | 2026-10-07 → 2026-10-14 (+7d) | 2026-11-05 → 2026-11-12 (+7d) |  |  |
| 4 | **Washout valves on 110-400 mm. (In Chamber)** | 2026-10-07 → 2026-10-14 (+7d) | 2026-11-05 → 2026-11-12 (+7d) |  |  |
| B3.33 05 63.01.52 | Land Adjustment & Compaction | 2026-10-07 → 2026-10-14 (+7d) | 2026-10-11 → 2026-10-18 (+7d) |  |  |
| B3.33 05 63.01.50 | Foundations | 2026-10-12 → 2026-10-19 (+7d) | 2026-10-17 → 2026-10-24 (+7d) |  |  |
| B3.33 05 63.01.53 | Chambers Walls Conc Cast In Situ | 2026-10-18 → 2026-10-25 (+7d) | 2026-10-22 → 2026-10-29 (+7d) |  |  |
| B3.33 05 63.01.51 | Chamber Curing, Finishing & Steel Cover | 2026-10-24 → 2026-10-31 (+7d) | 2026-10-29 → 2026-11-05 (+7d) |  |  |
| B3.33 05 63.01.54 | Valve & Fitting Installation | 2026-10-31 → 2026-11-07 (+7d) | 2026-11-05 → 2026-11-12 (+7d) |  |  |
| 3 | **Fire Hydrant** | 2026-10-07 → 2026-10-14 (+7d) | 2026-10-22 → 2026-10-29 (+7d) |  |  |
| B3.33 14 19.01.fh32 | Riser Pipe & Flanged Fittings Installation | 2026-10-07 → 2026-10-14 (+7d) | 2026-10-11 → 2026-10-18 (+7d) |  | 84.32d → 99.32d |
| B3.33 14 19.01.fh31 | Firehydrant Fixing/Installation | 2026-10-12 → 2026-10-19 (+7d) | 2026-10-17 → 2026-10-24 (+7d) |  | 84.32d → 99.32d |

| ID | Task | Start | Finish | Complete | Total float |
| --- | --- | --- | --- | --- | --- |
| B3.33 14 19.01.fh33 | Backfilling & Compaction | 2026-10-18 → 2026-10-25 (+7d) | 2026-10-22 → 2026-10-29 (+7d) |  | 84.32d → 99.32d |
| TSE Network | **TSE Network** |  | 2026-12-03 → 2026-12-07 (+4d) |  |  |
| HDPE | **HDPE Pipes** |  | 2026-10-15 → 2026-10-20 (+5d) |  |  |
| ?110mm | **?110mm** |  | 2026-10-15 → 2026-10-20 (+5d) |  |  |
| Depth: 0.0m - 1.5m | **Depth: 0.0m - 1.5m** |  | 2026-10-15 → 2026-10-20 (+5d) |  |  |
| B4.33 14 13.01-0196_R | Embedment & Test(Rem) | 2026-10-07 → 2026-10-14 (+7d) | 2026-10-12 → 2026-10-19 (+7d) |  |  |
| B4.33 14 13.01-0198_R | Backfilling & Warrning Tape(Rem) | 2026-10-10 → 2026-10-14 (+4d) | 2026-10-15 → 2026-10-20 (+5d) |  | 6.32d → 9.26d |
| ?25mm | **?25mm** |  | 2026-10-13 → 2026-10-20 (+7d) |  |  |
| Depth: 0.0m - 1.5m | **Depth: 0.0m - 1.5m** |  | 2026-10-13 → 2026-10-20 (+7d) |  |  |
| B4.33 14 13.01-199_R | Excavation(Rem) | 2026-10-07 → 2026-10-02 A (-5d) | 2026-10-10 → 2026-10-05 A (-5d) | 0% → 100% | 11.32d → none |
| B4.33 14 13.01-209_R | Sand Bedding(Rem) | 2026-10-07 → 2026-10-14 (+7d) | 2026-10-10 → 2026-10-17 (+7d) |  |  |
| B4.33 14 13.01-219_R | Pipe Laying(Rem) | 2026-10-07 → 2026-10-14 (+7d) | 2026-10-10 → 2026-10-17 (+7d) |  |  |
| B4.33 14 13.01-229_R | Embedment & Test(Rem) | 2026-10-07 → 2026-10-14 (+7d) | 2026-10-12 → 2026-10-19 (+7d) |  |  |
| B4.33 14 13.01-239_R | Backfilling & Warrning Tape(Rem) | 2026-10-07 → 2026-10-14 (+7d) | 2026-10-13 → 2026-10-20 (+7d) |  |  |
| ?32mm | **?32mm** |  | 2026-10-13 → 2026-10-20 (+7d) |  |  |
| Depth: 0.0m - 1.5m | **Depth: 0.0m - 1.5m** |  | 2026-10-13 → 2026-10-20 (+7d) |  |  |
| B4.33 14 13.01-249_R | Excavation(Rem) | 2026-10-07 → 2026-10-03 A (-4d) | 2026-10-10 → 2026-10-04 A (-6d) | 0% → 100% | 11.32d → none |
| B4.33 14 13.01-259_R | Sand Bedding(Rem) | 2026-10-07 → 2026-10-14 (+7d) | 2026-10-10 → 2026-10-17 (+7d) |  |  |
| B4.33 14 13.01-269_R | Pipe Laying(Rem) | 2026-10-07 → 2026-10-14 (+7d) | 2026-10-10 → 2026-10-17 (+7d) |  |  |
| B4.33 14 13.01-279_R | Embedment & Test(Rem) | 2026-10-07 → 2026-10-14 (+7d) | 2026-10-12 → 2026-10-19 (+7d) |  |  |
| B4.33 14 13.01-289_R | Backfilling & Warrning Tape(Rem) | 2026-10-07 → 2026-10-14 (+7d) | 2026-10-13 → 2026-10-20 (+7d) |  |  |
| ?50mm | **?50mm** |  | 2026-10-13 → 2026-10-20 (+7d) |  |  |
| Depth: 0.0m - 1.5m | **Depth: 0.0m - 1.5m** |  | 2026-10-13 → 2026-10-20 (+7d) |  |  |
| B4.33 14 13.01-299_R | Excavation(Rem) | 2026-10-07 → 2026-10-14 (+7d) | 2026-10-10 → 2026-10-17 (+7d) |  |  |
| B4.33 14 13.01-309_R | Sand Bedding(Rem) | 2026-10-07 → 2026-10-14 (+7d) | 2026-10-10 → 2026-10-17 (+7d) |  |  |
| B4.33 14 13.01-319_R | Pipe Laying(Rem) | 2026-10-07 → 2026-10-14 (+7d) | 2026-10-10 → 2026-10-17 (+7d) |  |  |
| B4.33 14 13.01-329_R | Embedment & Test(Rem) | 2026-10-07 → 2026-10-14 (+7d) | 2026-10-12 → 2026-10-19 (+7d) |  |  |
| B4.33 14 13.01-339_R | Backfilling & Warrning Tape(Rem) | 2026-10-07 → 2026-10-14 (+7d) | 2026-10-13 → 2026-10-20 (+7d) |  |  |
| ?63mm | **?63mm** |  | 2026-10-13 → 2026-10-20 (+7d) |  |  |
| Depth: 0.0m - 1.5m | **Depth: 0.0m - 1.5m** |  | 2026-10-13 → 2026-10-20 (+7d) |  |  |
| B4.33 14 13.01-359_R | Sand Bedding(Rem) | 2026-10-07 → 2026-10-14 (+7d) | 2026-10-10 → 2026-10-17 (+7d) |  |  |
| B4.33 14 13.01-369_R | Pipe Laying(Rem) | 2026-10-07 → 2026-10-14 (+7d) | 2026-10-10 → 2026-10-17 (+7d) |  |  |
| B4.33 14 13.01-379_R | Embedment & Test(Rem) | 2026-10-07 → 2026-10-14 (+7d) | 2026-10-12 → 2026-10-19 (+7d) |  |  |
| B4.33 14 13.01-389_R | Backfilling & Warrning Tape(Rem) | 2026-10-07 → 2026-10-14 (+7d) | 2026-10-13 → 2026-10-20 (+7d) |  |  |
| ?75mm | **?75mm** |  | 2026-10-13 → 2026-10-20 (+7d) |  |  |
| Depth: 0.0m - 1.5m | **Depth: 0.0m - 1.5m** |  | 2026-10-13 → 2026-10-20 (+7d) |  |  |
| B4.33 14 13.01-399_R | Excavation(Rem) | 2026-10-07 → 2026-10-14 (+7d) | 2026-10-10 → 2026-10-17 (+7d) |  | 2.32d → 9.32d |
| B4.33 14 13.01-409_R | Sand Bedding(Rem) | 2026-10-07 → 2026-10-14 (+7d) | 2026-10-10 → 2026-10-17 (+7d) |  | 2.32d → 9.32d |
| B4.33 14 13.01-419_R | Pipe Laying(Rem) | 2026-10-07 → 2026-10-14 (+7d) | 2026-10-10 → 2026-10-17 (+7d) |  | 2.32d → 9.32d |
| B4.33 14 13.01-429_R | Embedment & Test(Rem) | 2026-10-07 → 2026-10-14 (+7d) | 2026-10-12 → 2026-10-19 (+7d) |  | 2.32d → 9.32d |
| B4.33 14 13.01-439_R | Backfilling & Warrning Tape(Rem) | 2026-10-07 → 2026-10-14 (+7d) | 2026-10-13 → 2026-10-20 (+7d) |  | 1.32d → 8.32d |
| Valves & Chambers | **Valves & Chambers** |  | 2026-12-03 → 2026-12-07 (+4d) |  |  |
| GV | **Gate Valves** |  | 2026-10-12 → 2026-10-19 (+7d) |  |  |
| 1 | **Gate valves dia (250) mm** |  | 2026-10-12 → 2026-10-19 (+7d) |  |  |
| B3.33 14 19.01.138_R | Burried Isolation Valve Installation(Rem) | 2026-10-07 → 2026-10-14 (+7d) | 2026-10-08 → 2026-10-15 (+7d) |  | 2.32d → 9.32d |
| B3.33 14 19.01.139 | Spindle & Surface Box | 2026-10-10 → 2026-10-17 (+7d) | 2026-10-12 → 2026-10-19 (+7d) |  |  |
| 2 | **Air Valves** | 2026-11-14 → 2026-10-15 (-30d) | 2026-12-03 → 2026-12-07 (+4d) |  |  |
| 4 | **Air valves on less than 315 mm. (In Chamber)** | 2026-11-14 → 2026-10-15 (-30d) | 2026-12-03 → 2026-12-07 (+4d) |  |  |
| B3.33 05 63.02.92 | Land Adjustment & Compaction | 2026-11-14 → 2026-10-15 (-30d) | 2026-11-16 → 2026-10-19 (-28d) |  | 23.32d → 54.27d |
| B3.33 05 63.02.90 | Foundations | 2026-11-17 → 2026-10-19 (-29d) | 2026-11-21 → 2026-10-24 (-28d) |  | 23.32d → 54.27d |
| B3.33 05 63.02.93 | Chambers Walls Conc Cast In Situ | 2026-11-22 → 2026-10-24 (-29d) | 2026-11-25 → 2026-10-28 (-28d) |  | 23.32d → 54.27d |
| B3.33 05 63.02.91 | Chamber Curing, Finishing & Steel Cover | 2026-11-26 → 2026-10-28 (-29d) | 2026-11-29 → 2026-11-01 (-28d) |  | 23.32d → 54.27d |
| B3.33 05 63.02.94 | Valve & Fitting Installation | 2026-12-01 → 2026-12-05 (+4d) | 2026-12-03 → 2026-12-07 (+4d) |  | 22.32d → 25.32d |
| Solenoid valves | **Solenoid valves** | 2026-10-11 → 2026-10-18 (+7d) | 2026-10-27 → 2026-11-03 (+7d) |  |  |
| Solenoid valve ?1.0 | **1 Solenoid valve ?1.0 inch with box** | 2026-10-11 → 2026-10-18 (+7d) | 2026-10-20 → 2026-10-27 (+7d) |  |  |
| B4.32 84 13.065 | Pull Box Installation | 2026-10-11 → 2026-10-18 (+7d) | 2026-10-18 → 2026-10-25 (+7d) |  |  |
| B4.32 84 13.23 | Solenoid Valve Box Installation | 2026-10-11 → 2026-10-18 (+7d) | 2026-10-13 → 2026-10-20 (+7d) |  |  |
| B4.32 84 13.22 | Cable Laying Two-Wire Decoder (12 AWG) | 2026-10-14 → 2026-10-21 (+7d) | 2026-10-17 → 2026-10-24 (+7d) |  |  |
| B4.32 84 13.24 | Bubblers Installation | 2026-10-18 → 2026-10-25 (+7d) | 2026-10-20 → 2026-10-27 (+7d) |  |  |
| Solenoid valve ?1.5 | **1 Solenoid valve ?1.5 inch with box** | 2026-10-14 → 2026-10-21 (+7d) | 2026-10-24 → 2026-10-31 (+7d) |  |  |
| B4.32 84 13.26 | Solenoid Valve Box Installation | 2026-10-14 → 2026-10-21 (+7d) | 2026-10-17 → 2026-10-24 (+7d) |  |  |
| B4.32 84 13.25 | Cable Laying Two-Wire Decoder (12 AWG) | 2026-10-18 → 2026-10-25 (+7d) | 2026-10-20 → 2026-10-27 (+7d) |  |  |
| B4.32 84 13.064 | Pull Box Installation | 2026-10-19 → 2026-10-26 (+7d) | 2026-10-21 → 2026-10-28 (+7d) |  |  |
| B4.32 84 13.27 | Bubblers Installation | 2026-10-21 → 2026-10-28 (+7d) | 2026-10-24 → 2026-10-31 (+7d) |  |  |
| Solenoid valve ?2.0 | **1 Solenoid valve ?2.0 inch with box** | 2026-10-18 → 2026-10-25 (+7d) | 2026-10-27 → 2026-11-03 (+7d) |  |  |
| B4.32 84 13.20 | Solenoid Valve Box Installation | 2026-10-18 → 2026-10-25 (+7d) | 2026-10-20 → 2026-10-27 (+7d) |  |  |
| B4.32 84 13.19 | Cable Laying Two-Wire Decoder (12 AWG) | 2026-10-21 → 2026-10-28 (+7d) | 2026-10-24 → 2026-10-31 (+7d) |  |  |
| B4.32 84 13.063 | Pull Box Installation | 2026-10-22 → 2026-10-29 (+7d) | 2026-10-25 → 2026-11-01 (+7d) |  |  |
| B4.32 84 13.21 | Bubblers Installation | 2026-10-25 → 2026-11-01 (+7d) | 2026-10-27 → 2026-11-03 (+7d) |  |  |
| Dry Networks | **Dry Networks** | 2026-10-14 → 2026-10-04 (-10d) | 2026-12-06 → 2026-12-12 (+6d) |  |  |

| ID | Task | Start | Finish | Complete | Total float |
| --- | --- | --- | --- | --- | --- |
| MV | **Medium Voltage Network** | 2026-10-14 → 2026-10-04 (-10d) | 2026-12-05 → 2026-12-12 (+7d) |  |  |
| Cables | **Cables** | 2026-10-14 → 2026-10-04 (-10d) | 2026-11-07 → 2026-11-14 (+7d) |  |  |
| 3C,500mm2 | **3C,500mm2** | 2026-10-14 → 2026-10-04 (-10d) | 2026-11-07 → 2026-11-14 (+7d) |  |  |
| B2.33 71 49.23.77 | Cable 13.8 kV Unarmored | 2026-10-14 → 2026-10-04 A (-10d) | 2026-10-18 → 2026-10-17 (-1d) | 0% → 44% | 1.32d → 9.08d |
| B2.33 71 49.23.78 | Straight joints cables | 2026-10-19 → 2026-10-17 (-2d) | 2026-10-21 → 2026-10-20 (-1d) |  | 83.32d → 91.08d |
| B2.33 71 49.23.79 | Cable Termination | 2026-11-03 → 2026-11-10 (+7d) | 2026-11-07 → 2026-11-14 (+7d) |  | 73.2d → 73.21d |
| RMU | **RMU** | 2026-10-17 → 2026-10-21 (+4d) | 2026-11-15 → 2026-11-17 (+2d) |  |  |
| B2 33 73 00.02.81 | Land Adjustment | 2026-10-17 → 2026-10-21 (+4d) | 2026-10-19 → 2026-10-24 (+5d) |  | 6.32d → 8.32d |
| B2 33 73 00.02.83 | Foundation Works & Curing | 2026-10-20 → 2026-10-25 (+5d) | 2026-10-27 → 2026-11-01 (+5d) |  | 26.32d → 28.32d |
| B2 33 73 00.02.85 | Installation of Ring Main Unit RMU, 13.8KV | 2026-10-31 → 2026-11-02 (+2d) | 2026-11-07 → 2026-11-09 (+2d) |  | 24.32d → 28.32d |
| B2.33 71 49.23.05 | Normally Open Point 13.8 KV | 2026-11-08 → 2026-11-10 (+2d) | 2026-11-15 → 2026-11-17 (+2d) |  | 24.32d → 28.32d |
| Units Substation | **Units Substation** | 2026-10-20 → 2026-10-25 (+5d) | 2026-12-05 → 2026-12-12 (+7d) |  |  |
| B2 33 73 00.01.81 | Land Adjustment | 2026-10-20 → 2026-10-25 (+5d) | 2026-10-22 → 2026-10-27 (+5d) |  | 6.32d → 8.32d |
| B2 33 73 00.01.83 | Foundation Works & Curing | 2026-10-28 → 2026-11-02 (+5d) | 2026-11-04 → 2026-11-09 (+5d) |  | 85.32d → 87.32d |
| B2 33 73 00.01.85 | Installation of Unit Substation 13.8/0.4 K V | 2026-12-01 → 2026-12-08 (+7d) | 2026-12-05 → 2026-12-12 (+7d) |  |  |
| LV Network | **Low Voltage Network** | 2026-10-14 → 2026-10-17 (+3d) | 2026-11-30 → 2026-12-07 (+7d) |  |  |
| Duct Banks | **Duct Banks** | 2026-10-14 → 2026-10-21 (+7d) | 2026-11-30 → 2026-12-07 (+7d) |  |  |
| 2 Way | **2 Way** | 2026-10-14 → 2026-10-21 (+7d) | 2026-11-26 → 2026-12-03 (+7d) |  |  |
| B2.33 71 00 02 103 | Excavation | 2026-10-14 → 2026-10-21 (+7d) | 2026-10-15 → 2026-10-22 (+7d) |  |  |
| B2.33 71 00 02 104 | Shuttering, Steel Fixing Incl. UPVC Pipe & Conc. Cast | 2026-10-17 → 2026-10-24 (+7d) | 2026-10-19 → 2026-10-26 (+7d) |  |  |
| B2.33 71 00 02 105 | Backfilling & Warrning Tape | 2026-11-24 → 2026-12-01 (+7d) | 2026-11-26 → 2026-12-03 (+7d) |  |  |
| 4 Way | **4 Way** | 2026-10-17 → 2026-10-24 (+7d) | 2026-11-30 → 2026-12-07 (+7d) |  |  |
| B2.33 71 00 02 106 | Excavation | 2026-10-17 → 2026-10-24 (+7d) | 2026-10-18 → 2026-10-25 (+7d) |  |  |
| B2.33 71 00 02 107 | Shuttering, Steel Fixing Incl. UPVC Pipe & Conc. Cast | 2026-10-19 → 2026-10-26 (+7d) | 2026-10-21 → 2026-10-28 (+7d) |  |  |
| B2.33 71 00 02 108 | Backfilling & Warrning Tape | 2026-11-28 → 2026-12-05 (+7d) | 2026-11-30 → 2026-12-07 (+7d) |  |  |
| 6 Way | **6 Way** | 2026-10-19 → 2026-10-26 (+7d) | 2026-10-27 → 2026-11-03 (+7d) |  |  |
| B2.33 71 00 02 109 | Excavation | 2026-10-19 → 2026-10-26 (+7d) | 2026-10-20 → 2026-10-27 (+7d) |  |  |
| B2.33 71 00 02 110 | Shuttering, Steel Fixing Incl. UPVC Pipe & Conc. Cast | 2026-10-21 → 2026-10-28 (+7d) | 2026-10-24 → 2026-10-31 (+7d) |  |  |
| B2.33 71 00 02 111 | Backfilling & Warrning Tape | 2026-10-25 → 2026-11-01 (+7d) | 2026-10-27 → 2026-11-03 (+7d) |  |  |
| Cables | **Cables** | 2026-10-19 → 2026-10-17 (-2d) | 2026-10-20 → 2026-10-19 (-1d) |  |  |
| 4C,10+1C,10mm2 | **4C,10+1C,10mm2** | 2026-10-19 → 2026-10-17 (-2d) | 2026-10-20 → 2026-10-19 (-1d) |  |  |
| B2.33 71 00 01 11 | Cable Pulling | 2026-10-19 → 2026-10-17 (-2d) | 2026-10-20 → 2026-10-19 (-1d) |  | 6.32d → 14.08d |
| LV Panels | **0.6/1 KV Low Voltage Distribution Panels** | 2026-10-24 → 2026-10-28 (+4d) | 2026-11-07 → 2026-11-11 (+4d) |  |  |
| B2.33 71 26 24 | Land Adjustment | 2026-10-24 → 2026-10-28 (+4d) | 2026-10-25 → 2026-10-29 (+4d) |  | 6.32d → 8.32d |
| B2.33 71 26 25 | Foundation Works & Curing | 2026-11-01 → 2026-11-05 (+4d) | 2026-11-03 → 2026-11-08 (+5d) |  | 33.32d → 35.32d |
| B2.33 71 26 23 | Installation of 0.6/1 KV Low Voltage Distribution Panels | 2026-11-04 → 2026-11-09 (+5d) | 2026-11-07 → 2026-11-11 (+4d) |  | 33.32d → 35.32d |
| LV Pillars | **0.6/1 KV Low Voltage Distribution Pillars** | 2026-10-26 → 2026-10-31 (+5d) | 2026-11-03 → 2026-11-08 (+5d) |  |  |
| B2.33 71 26 27 | Land Adjustment | 2026-10-26 → 2026-10-31 (+5d) | 2026-10-27 → 2026-11-01 (+5d) |  | 6.32d → 8.32d |
| B2.33 71 26 28 | Foundation Works & Curing | 2026-10-28 → 2026-11-02 (+5d) | 2026-10-31 → 2026-11-04 (+4d) |  | 33.32d → 35.32d |
| B2.33 71 26 26 | Installation of 0.6/1 KV Low Voltage Distribution Pillars | 2026-11-01 → 2026-11-05 (+4d) | 2026-11-03 → 2026-11-08 (+5d) |  | 33.32d → 35.32d |
| Street Lighting | **Street Lighting** | 2026-10-28 → 2026-11-02 (+5d) |  |  |  |
| Cables | **Cables** | 2026-10-28 → 2026-11-02 (+5d) | 2026-12-06 → 2026-11-11 (-25d) |  |  |
| 4C,10+1C,10mm2 | **4C,10+1C,10mm2** | 2026-10-28 → 2026-11-02 (+5d) | 2026-12-06 → 2026-11-11 (-25d) |  |  |
| B2.33 71 19 122 | Land Adjustment | 2026-10-28 → 2026-11-02 (+5d) | 2026-10-31 → 2026-11-04 (+4d) |  | 6.32d → 8.32d |
| B2.33 71 49.23.142 | Cable Pulling | 2026-11-01 → 2026-11-05 (+4d) | 2026-11-02 → 2026-11-07 (+5d) |  | 82.32d → 84.32d |
| B2.33 71 19 132 | Backfilling | 2026-12-03 → 2026-11-08 (-25d) | 2026-12-06 → 2026-11-11 (-25d) |  | 56.32d → 83.34d |
| SL Poles | **SL Poles** | 2026-11-01 → 2026-11-05 (+4d) | 2026-11-17 → 2026-11-22 (+5d) |  |  |
| Pole (10 M Sngl Arm) | **Pole (10 M Single Arm)** | 2026-11-01 → 2026-11-05 (+4d) | 2026-11-17 → 2026-11-22 (+5d) |  |  |
| B2.33 71 16.67 | Excavation | 2026-11-01 → 2026-11-05 (+4d) | 2026-11-03 → 2026-11-08 (+5d) |  | 6.32d → 8.32d |
| B2.33 71 16.68 | PC & RC Foundation | 2026-11-04 → 2026-11-09 (+5d) | 2026-11-07 → 2026-11-11 (+4d) |  | 64.32d → 66.32d |
| B2.33 71 16.69 | Lighting Poles Installation Incl power box, Cables | 2026-11-08 → 2026-11-12 (+4d) | 2026-11-10 → 2026-11-15 (+5d) |  | 64.32d → 66.32d |
| B2.26.56.19.10 | Lighting Luminares Inst | 2026-11-11 → 2026-11-16 (+5d) | 2026-11-14 → 2026-11-18 (+4d) |  | 70.32d → 72.32d |
| B2.33 71 16.70 | Backfilling, Grouting & Chamfering | 2026-11-15 → 2026-11-19 (+4d) | 2026-11-17 → 2026-11-22 (+5d) |  | 70.32d → 72.32d |
| Earthing | **Earthing** | 2026-11-21 → 2026-11-28 (+7d) | 2026-11-29 → 2026-12-06 (+7d) |  |  |
| B2.33 71 19 35 | Land Adjustment | 2026-11-21 → 2026-11-28 (+7d) | 2026-11-23 → 2026-11-30 (+7d) |  |  |
| B2.33 71 19 36 | Earth Rods & Conduits | 2026-11-24 → 2026-12-01 (+7d) | 2026-11-26 → 2026-12-03 (+7d) |  |  |
| B2.33 71 19 37 | Backfilling | 2026-11-28 → 2026-12-05 (+7d) | 2026-11-29 → 2026-12-06 (+7d) |  |  |
| Telecommunication | **Telecommunication Network** | 2026-10-14 → 2026-10-21 (+7d) | 2026-11-18 → 2026-11-25 (+7d) |  |  |
| Ducts | **Ducts** | 2026-10-14 → 2026-10-21 (+7d) | 2026-11-04 → 2026-11-11 (+7d) |  |  |
| (6*50mm+2*32mm) | **Size (6*50mm+2*32mm) HDPE ducts** | 2026-10-14 → 2026-10-21 (+7d) | 2026-10-22 → 2026-10-29 (+7d) |  |  |
| B2.1.33 81 26.123 | Excavation | 2026-10-14 → 2026-10-21 (+7d) | 2026-10-17 → 2026-10-24 (+7d) |  |  |
| B2.1.33 81 26.124 | HDPE Pipe, Shuttering, Steel Fixing & Conc. Cast | 2026-10-18 → 2026-10-25 (+7d) | 2026-10-20 → 2026-10-27 (+7d) |  |  |
| B2.1.33 81 26.125 | Backfilling & Warrning Tape | 2026-10-21 → 2026-10-28 (+7d) | 2026-10-22 → 2026-10-29 (+7d) |  |  |
| (6*50mm) | **Size (6*50mm) HDPE ducts** | 2026-10-14 → 2026-10-21 (+7d) | 2026-10-24 → 2026-10-31 (+7d) |  |  |
| B2.1.33 81 26.120 | Excavation | 2026-10-14 → 2026-10-21 (+7d) | 2026-10-17 → 2026-10-24 (+7d) |  |  |
| B2.1.33 81 26.121 | HDPE Pipe, Shuttering, Steel Fixing & Conc. Cast | 2026-10-18 → 2026-10-25 (+7d) | 2026-10-20 → 2026-10-27 (+7d) |  |  |
| B2.1.33 81 26.122 | Backfilling & Warrning Tape | 2026-10-21 → 2026-10-28 (+7d) | 2026-10-24 → 2026-10-31 (+7d) |  |  |
| (6*50mm+4*32mm) | **Size (6*50mm+4*32mm) HDPE ducts** | 2026-10-14 → 2026-10-21 (+7d) | 2026-10-24 → 2026-10-31 (+7d) |  |  |
| B2.1.33 81 26.126 | Excavation | 2026-10-14 → 2026-10-21 (+7d) | 2026-10-17 → 2026-10-24 (+7d) |  |  |
| B2.1.33 81 26.127 | HDPE Pipe, Shuttering, Steel Fixing & Conc. Cast | 2026-10-18 → 2026-10-25 (+7d) | 2026-10-20 → 2026-10-27 (+7d) |  |  |

| ID | Task | Start | Finish | Total float |
| --- | --- | --- | --- | --- |
| B2.1.33 81 26.128 | Backfilling & Warrning Tape | 2026-10-21 → 2026-10-28 (+7d) | 2026-10-24 → 2026-10-31 (+7d) |  |
| (2*32mm) | **Size (2*32mm) HDPE ducts** | 2026-10-18 → 2026-10-25 (+7d) | 2026-11-04 → 2026-11-11 (+7d) |  |
| B2.1.33 81 26.129 | Excavation | 2026-10-18 → 2026-10-25 (+7d) | 2026-10-19 → 2026-10-26 (+7d) |  |
| B2.1.33 81 26.130 | HDPE Pipe, Shuttering, Steel Fixing & Conc. Cast | 2026-10-20 → 2026-10-27 (+7d) | 2026-10-22 → 2026-10-29 (+7d) |  |
| B2.1.33 81 26.131 | Backfilling & Warrning Tape | 2026-11-02 → 2026-11-09 (+7d) | 2026-11-04 → 2026-11-11 (+7d) |  |
| Manholes | **Manholes** | 2026-10-22 → 2026-10-29 (+7d) | 2026-10-29 → 2026-11-05 (+7d) |  |
| Manhole Type 1 | **Manhole Type 1** | 2026-10-22 → 2026-10-29 (+7d) | 2026-10-29 → 2026-11-05 (+7d) |  |
| B2.31 23 00.620 | Excavation | 2026-10-22 → 2026-10-29 (+7d) | 2026-10-24 → 2026-10-31 (+7d) |  |
| B2.33 71 00.248 | Manhole Installation | 2026-10-25 → 2026-11-01 (+7d) | 2026-10-26 → 2026-11-02 (+7d) |  |
| B2.33 71 00.249 | Backfilling & Warrning Tape | 2026-10-27 → 2026-11-03 (+7d) | 2026-10-29 → 2026-11-05 (+7d) |  |
| Crossing Ducts | **Road Crossing Ducts** | 2026-10-20 → 2026-10-27 (+7d) | 2026-11-18 → 2026-11-25 (+7d) |  |
| 1 | **Size (6X50mm+4X32mm) HDPE** | 2026-10-20 → 2026-10-27 (+7d) | 2026-10-28 → 2026-11-04 (+7d) |  |
| B2.31 23 00.619 | Excavation | 2026-10-20 → 2026-10-27 (+7d) | 2026-10-21 → 2026-10-28 (+7d) |  |
| B2.33 71 00.246 | Shuttering, Steel Fixing Incl. UPVC Pipe & Conc. Cast | 2026-10-22 → 2026-10-29 (+7d) | 2026-10-25 → 2026-11-01 (+7d) |  |
| B2.33 71 00.247 | Backfilling & Warrning Tape | 2026-10-26 → 2026-11-02 (+7d) | 2026-10-28 → 2026-11-04 (+7d) |  |
| 2 | **Size (2*32mm) HDPE** | 2026-10-25 → 2026-11-01 (+7d) | 2026-11-18 → 2026-11-25 (+7d) |  |
| B2.31 23 00.621 | Excavation | 2026-10-25 → 2026-11-01 (+7d) | 2026-10-26 → 2026-11-02 (+7d) |  |
| B2.33 71 00.250 | Shuttering, Steel Fixing Incl. UPVC Pipe & Conc. Cast | 2026-10-27 → 2026-11-03 (+7d) | 2026-10-29 → 2026-11-05 (+7d) |  |
| B2.33 71 00.251 | Backfilling & Warrning Tape | 2026-11-16 → 2026-11-23 (+7d) | 2026-11-18 → 2026-11-25 (+7d) |  |
| Earth & Road Works | **Earth & Road Works** |  | 2026-11-30 → 2026-12-03 (+3d) |  |
| Earth Layers | **Earth Layers** |  | 2026-10-10 → 2026-10-17 (+7d) |  |
| B1.2.32 11 13.01.10_R | Subgrade(Rem) |  | 2026-10-10 → 2026-10-17 (+7d) |  |
| B1.2.32 11 23.01.10_R | Aggregate Base Course(Rem) | 2026-10-07 → 2026-10-14 (+7d) | 2026-10-10 → 2026-10-17 (+7d) |  |
| Interlock | **Interlock** | 2026-10-27 → 2026-10-18 (-9d) | 2026-10-29 → 2026-10-21 (-8d) |  |
| B1.2.32 14 13.13.10 | 60mm thick - Interlocking Block Pavers | 2026-10-27 → 2026-10-18 (-9d) | 2026-10-29 → 2026-10-21 (-8d) | 5.32d → 18.82d |
| Curbstone | **Curbstone** | 2026-10-31 → 2026-10-21 (-10d) | 2026-11-19 → 2026-11-11 (-8d) |  |
| Pre Install | **Pre-Installation** | 2026-10-31 → 2026-10-21 (-10d) | 2026-11-05 → 2026-10-28 (-8d) |  |
| B2.31 23 00.271 | Excavation | 2026-10-31 → 2026-10-21 (-10d) | 2026-11-01 → 2026-10-24 (-8d) | 5.32d → 18.82d |
| B1.2.32 14 13.13.210 | PCC | 2026-11-02 → 2026-10-24 (-9d) | 2026-11-03 → 2026-10-26 (-8d) | 15.32d → 28.82d |
| 32 16 13.0010 | Haunching | 2026-11-04 → 2026-10-26 (-9d) | 2026-11-05 → 2026-10-28 (-8d) | 15.32d → 28.82d |
| Installation | **Installation** | 2026-11-07 → 2026-10-28 (-10d) | 2026-11-17 → 2026-11-09 (-8d) |  |
| B1.2.32 16.13.01.10 | Curb Stone, Type K1 | 2026-11-07 → 2026-10-28 (-10d) | 2026-11-08 → 2026-10-31 (-8d) | 15.32d → 28.82d |
| B1.2.32 16.13.02.9 | Dropped Curb, Type K3 | 2026-11-09 → 2026-10-31 (-9d) | 2026-11-10 → 2026-11-02 (-8d) | 15.32d → 28.82d |
| B1.2.32 16.13.03.10 | Edge Curb, Type K4 | 2026-11-11 → 2026-11-02 (-9d) | 2026-11-12 → 2026-11-04 (-8d) | 15.32d → 28.82d |
| B1.2.32 16.13.0410 | Heel Curb, Type K5 | 2026-11-14 → 2026-11-04 (-10d) | 2026-11-15 → 2026-11-07 (-8d) | 15.32d → 28.82d |
| B1.2.32 16.13.05.9 | Transition Curb | 2026-11-16 → 2026-11-07 (-9d) | 2026-11-17 → 2026-11-09 (-8d) | 15.32d → 28.82d |
| Finishing | **Finishing** | 2026-11-18 → 2026-11-09 (-9d) | 2026-11-19 → 2026-11-11 (-8d) |  |
| 32 16 13.010 | Finishing, Fareface | 2026-11-18 → 2026-11-09 (-9d) | 2026-11-19 → 2026-11-11 (-8d) | 15.32d → 28.82d |
| Asphalt Layers | **Asphalt Layers** |  | 2026-11-25 → 2026-11-17 (-8d) |  |
| B1.2.32 11 26.01.10_R | Bituminous Base Course including Prime Coat (MC1) and tack coat (RC2)(Rem) |  | 2026-10-08 → 2026-10-15 (+7d) |  |
| B1.2.32 12 16.01.10 | Bituminous concrete Wearing Course, including tack coat (RC2) | 2026-11-21 → 2026-11-11 (-10d) | 2026-11-25 → 2026-11-17 (-8d) | 15.32d → 28.82d |
| Pavement Marking | **Pavement Marking** | 2026-11-26 → 2026-11-17 (-9d) | 2026-11-28 → 2026-11-19 (-9d) |  |
| B1.2.32 17 23.02.10 | Retroreflective Thermoplastic Yellow, Traffic lines | 2026-11-26 → 2026-11-17 (-9d) | 2026-11-26 → 2026-11-18 (-8d) | 64.32d → 77.82d |
| B1.2.32 17 23.01.10 | Retroreflective Thermoplastic White Traffic lines | 2026-11-28 → 2026-11-18 (-10d) | 2026-11-28 → 2026-11-19 (-9d) | 64.32d → 77.82d |
| Traffic Signs | **Traffic Signs** | 2026-11-02 → 2026-10-24 (-9d) | 2026-11-30 → 2026-12-03 (+3d) |  |
| Pre Install | **Pre-Installation** | 2026-11-02 → 2026-10-24 (-9d) | 2026-11-05 → 2026-10-28 (-8d) |  |
| B2.31 23 00.281 | Excavation | 2026-11-02 → 2026-10-24 (-9d) | 2026-11-03 → 2026-10-26 (-8d) | 5.32d → 18.82d |
| 10 14 53.010 | Foundation | 2026-11-04 → 2026-10-26 (-9d) | 2026-11-05 → 2026-10-28 (-8d) | 83.32d → 96.82d |
| Installation | **Installation** | 2026-11-29 → 2026-12-02 (+3d) | 2026-11-30 → 2026-12-03 (+3d) |  |
| B1.2.10 14 53.0110 | 1 Sheet Alumenium, Single post | 2026-11-29 → 2026-12-02 (+3d) | 2026-11-30 → 2026-12-03 (+3d) | 64.32d → 67.32d |
| Guard Rail | **Guard Rail** | 2026-10-13 → 2026-10-20 (+7d) | 2026-10-21 → 2026-10-28 (+7d) |  |
| B2.31 23 00.654 | Excavation | 2026-10-13 → 2026-10-20 (+7d) | 2026-10-15 → 2026-10-22 (+7d) |  |
| 10 14 53.15 | Foundation | 2026-10-15 → 2026-10-22 (+7d) | 2026-10-17 → 2026-10-24 (+7d) |  |
| B1.2.10 14 53.328 | W-Beam Guard Rail Installation | 2026-10-18 → 2026-10-25 (+7d) | 2026-10-21 → 2026-10-28 (+7d) |  |
| Landscape | **Landscape** | 2026-11-04 → 2026-10-26 (-9d) | 2026-11-25 → 2026-11-17 (-8d) |  |
| Fences | **Fences** | 2026-11-04 → 2026-10-26 (-9d) | 2026-11-25 → 2026-11-17 (-8d) |  |
| (ZATCA HCIS) | **Steel fence (ZATCA HCIS)** | 2026-11-04 → 2026-10-26 (-9d) | 2026-11-25 → 2026-11-17 (-8d) |  |
| B7.32 31 26.01-4 | Earthwork | 2026-11-04 → 2026-10-26 (-9d) | 2026-11-10 → 2026-11-02 (-8d) | 5.32d → 18.82d |
| B7.32 31 26.01-6 | Foundation | 2026-11-11 → 2026-11-02 (-9d) | 2026-11-17 → 2026-11-09 (-8d) | 5.32d → 18.82d |
| B7.32 31 26.01-8 | Fence Installation | 2026-11-18 → 2026-11-09 (-9d) | 2026-11-25 → 2026-11-17 (-8d) | 5.32d → 18.82d |
| Customs Road 04&RD05 | **Customs Road 04 & Road 05** |  | 2026-12-16 → 2026-12-23 (+7d) |  |
| Wet Networks | **Wet Networks** |  | 2026-11-19 → 2026-11-23 (+4d) |  |
| Stormwater Network | **Stormwater Network** |  | 2026-10-18 → 2026-10-25 (+7d) |  |
| Strom Manholes | **Manholes** |  | 2026-10-13 → 2026-10-20 (+7d) |  |
| 3 | **?2000** |  | 2026-10-13 → 2026-10-20 (+7d) |  |
| 3 | **Depth From 2.5m to 3.5m** |  | 2026-10-13 → 2026-10-20 (+7d) |  |
| B6.33 05 39.01.3707 | Test, Internal Finishing, Benching & Cover | 2026-10-07 → 2026-10-14 (+7d) | 2026-10-12 → 2026-10-19 (+7d) |  |
| B6.33 05 39.01.3717_R | Backfilling(Rem) | 2026-10-11 → 2026-10-18 (+7d) | 2026-10-13 → 2026-10-20 (+7d) |  |
| Catch Basins | **Catch Basins** |  | 2026-10-18 → 2026-10-25 (+7d) |  |
| Sing | **Single** |  | 2026-10-18 → 2026-10-25 (+7d) |  |

| ID | Task | Start | Finish | Total float |
| --- | --- | --- | --- | --- |
| B6.33 05 40.01.450_R | Excavation, Compaction & Vapour Barrier(Rem) | 2026-10-07 → 2026-10-14 (+7d) | 2026-10-10 → 2026-10-17 (+7d) |  |
| B6.33 05 40.01.460_R | Blinding Conc.(Rem) | 2026-10-08 → 2026-10-15 (+7d) | 2026-10-11 → 2026-10-18 (+7d) |  |
| B6.33 05 40.01.470_R | Catch Basin Installation(Rem) | 2026-10-12 → 2026-10-19 (+7d) | 2026-10-14 → 2026-10-21 (+7d) |  |
| B6.33 05 40.01.480 | Backfilling, DI Frame & Grate Cover Fixing | 2026-10-15 → 2026-10-22 (+7d) | 2026-10-18 → 2026-10-25 (+7d) |  |
| TSE Network | **TSE Network** |  | 2026-11-19 → 2026-11-23 (+4d) |  |
| HDPE | **HDPE Pipes** |  | 2026-10-12 → 2026-10-19 (+7d) |  |
| ?125mm | **?125mm** |  | 2026-10-12 → 2026-10-19 (+7d) |  |
| Depth: 0.0m - 1.5m | **Depth: 0.0m - 1.5m** |  | 2026-10-12 → 2026-10-19 (+7d) |  |
| B4.33 14 13.01-0195_R | Pipe Laying(Rem) | 2026-10-07 → 2026-10-14 (+7d) | 2026-10-10 → 2026-10-17 (+7d) |  |
| B4.33 14 13.01-0197_R | Embedment & Test(Rem) | 2026-10-07 → 2026-10-14 (+7d) | 2026-10-12 → 2026-10-19 (+7d) |  |
| B4.33 14 13.01-0199_R | Backfilling & Warrning Tape(Rem) | 2026-10-07 → 2026-10-14 (+7d) | 2026-10-12 → 2026-10-19 (+7d) |  |
| Valves | **Valves** | 2026-10-10 → 2026-10-17 (+7d) | 2026-11-19 → 2026-11-23 (+4d) |  |
| Solenoid valves | **Solenoid valves** | 2026-10-10 → 2026-10-17 (+7d) | 2026-11-19 → 2026-11-23 (+4d) |  |
| Solenoid valve ?1.0 | **1 Solenoid valve ?1.0 inch with box** | 2026-10-10 → 2026-10-17 (+7d) | 2026-11-12 → 2026-11-16 (+4d) |  |
| B4.32 84 13.062 | Pull Box Installation | 2026-10-10 → 2026-10-17 (+7d) | 2026-10-13 → 2026-10-20 (+7d) |  |
| B4.32 84 13.40 | Cable Laying Two-Wire Decoder (12 AWG) | 2026-10-13 → 2026-10-20 (+7d) | 2026-10-17 → 2026-10-24 (+7d) |  |
| B4.32 84 13.41 | Solenoid Valve Box Installation | 2026-10-17 → 2026-10-24 (+7d) | 2026-10-20 → 2026-10-27 (+7d) |  |
| B4.32 84 13.42 | Bubblers Installation | 2026-11-10 → 2026-11-14 (+4d) | 2026-11-12 → 2026-11-16 (+4d) | 22.32d → 25.32d |
| Solenoid valve ?1.5 | **1 Solenoid valve ?1.5 inch with box** | 2026-10-13 → 2026-10-20 (+7d) | 2026-11-16 → 2026-11-19 (+3d) |  |
| B4.32 84 13.061 | Pull Box Installation | 2026-10-13 → 2026-10-20 (+7d) | 2026-10-17 → 2026-10-24 (+7d) |  |
| B4.32 84 13.43 | Cable Laying Two-Wire Decoder (12 AWG) | 2026-10-17 → 2026-10-24 (+7d) | 2026-10-20 → 2026-10-27 (+7d) |  |
| B4.32 84 13.44 | Solenoid Valve Box Installation | 2026-10-20 → 2026-10-27 (+7d) | 2026-10-24 → 2026-10-31 (+7d) |  |
| B4.32 84 13.45 | Bubblers Installation | 2026-11-14 → 2026-11-17 (+3d) | 2026-11-16 → 2026-11-19 (+3d) | 22.32d → 25.32d |
| Solenoid valve ?2.0 | **1 Solenoid valve ?2.0 inch with box** | 2026-10-20 → 2026-10-27 (+7d) | 2026-11-19 → 2026-11-23 (+4d) |  |
| B4.32 84 13.37 | Cable Laying Two-Wire Decoder (12 AWG) | 2026-10-20 → 2026-10-27 (+7d) | 2026-10-24 → 2026-10-31 (+7d) |  |
| B4.32 84 13.38 | Solenoid Valve Box Installation | 2026-10-24 → 2026-10-31 (+7d) | 2026-10-27 → 2026-11-03 (+7d) |  |
| B4.32 84 13.06 | Pull Box Installation | 2026-11-07 → 2026-11-10 (+3d) | 2026-11-09 → 2026-11-12 (+3d) | 22.32d → 25.32d |
| B4.32 84 13.39 | Bubblers Installation | 2026-11-17 → 2026-11-21 (+4d) | 2026-11-19 → 2026-11-23 (+4d) | 22.32d → 25.32d |
| Dry Networks | **Dry Networks** |  | 2026-12-16 → 2026-12-23 (+7d) |  |
| MV | **Medium Voltage Network** | 2026-10-19 → 2026-10-17 (-2d) | 2026-12-05 → 2026-12-12 (+7d) |  |
| Duct Banks | **Duct Banks** | 2026-10-19 → 2026-10-26 (+7d) | 2026-11-09 → 2026-11-16 (+7d) |  |
| 4 Way | **2 Way** | 2026-10-19 → 2026-10-26 (+7d) | 2026-11-09 → 2026-11-16 (+7d) |  |
| B2.31 23 00.641 | Excavation | 2026-10-19 → 2026-10-26 (+7d) | 2026-10-22 → 2026-10-29 (+7d) |  |
| B2.33 71 00.290 | Shuttering, Steel Fixing Incl. UPVC Pipe & Conc. Cast | 2026-10-24 → 2026-10-31 (+7d) | 2026-11-01 → 2026-11-08 (+7d) |  |
| B2.33 71 00.291 | Backfilling & Warrning Tape | 2026-11-02 → 2026-11-09 (+7d) | 2026-11-09 → 2026-11-16 (+7d) |  |
| Cables | **Cables** | 2026-10-19 → 2026-10-17 (-2d) | 2026-11-10 → 2026-11-17 (+7d) |  |
| 3C,500mm2 | **3C,500mm2** | 2026-10-19 → 2026-10-17 (-2d) | 2026-11-10 → 2026-11-17 (+7d) |  |
| B2.33 71 49.23.86 | Cable 13.8 kV Unarmored | 2026-10-19 → 2026-10-17 (-2d) | 2026-10-22 → 2026-10-21 (-1d) | 4.32d → 12.08d |
| B2.33 71 49.23.87 | Straight joints cables | 2026-10-24 → 2026-10-21 (-3d) | 2026-10-26 → 2026-10-25 (-1d) | 82.32d → 90.08d |
| B2.33 71 49.23.88 | Cable Termination | 2026-11-07 → 2026-11-14 (+7d) | 2026-11-10 → 2026-11-17 (+7d) | 73.2d → 73.21d |
| RMU | **RMU** | 2026-10-24 → 2026-10-31 (+7d) | 2026-11-03 → 2026-11-10 (+7d) |  |
| B2 33 73 00.02.15 | Land Adjustment | 2026-10-24 → 2026-10-31 (+7d) | 2026-10-26 → 2026-11-02 (+7d) |  |
| B2 33 73 00.02.17 | Foundation Works & Curing | 2026-10-27 → 2026-11-03 (+7d) | 2026-10-31 → 2026-11-07 (+7d) |  |
| B2 33 73 00.02.19 | Installation of Ring Main Unit RMU, 13.8KV | 2026-11-01 → 2026-11-08 (+7d) | 2026-11-03 → 2026-11-10 (+7d) |  |
| Units Substation | **Units Substation** | 2026-10-27 → 2026-11-03 (+7d) | 2026-12-05 → 2026-12-12 (+7d) |  |
| B2 33 73 00.01.15 | Land Adjustment | 2026-10-27 → 2026-11-03 (+7d) | 2026-10-29 → 2026-11-05 (+7d) |  |
| B2 33 73 00.01.17 | Foundation Works & Curing | 2026-11-01 → 2026-11-08 (+7d) | 2026-11-04 → 2026-11-11 (+7d) |  |
| B2 33 73 00.01.19 | Installation of Unit Substation 13.8/0.4 K V | 2026-12-01 → 2026-12-08 (+7d) | 2026-12-05 → 2026-12-12 (+7d) |  |
| LV Network | **Low Voltage Network** | 2026-10-24 → 2026-10-21 (-3d) | 2026-11-23 → 2026-11-30 (+7d) |  |
| Duct Banks | **Duct Banks** | 2026-10-24 → 2026-10-31 (+7d) | 2026-11-23 → 2026-11-30 (+7d) |  |
| 4 Way | **4 Way** | 2026-10-24 → 2026-10-31 (+7d) | 2026-11-23 → 2026-11-30 (+7d) |  |
| B2.33 71 00 02 127 | Excavation | 2026-10-24 → 2026-10-31 (+7d) | 2026-10-26 → 2026-11-02 (+7d) |  |
| B2.33 71 00 02 128 | Shuttering, Steel Fixing Incl. UPVC Pipe & Conc. Cast | 2026-10-27 → 2026-11-03 (+7d) | 2026-10-29 → 2026-11-05 (+7d) |  |
| B2.33 71 00 02 129 | Backfilling & Warrning Tape | 2026-11-21 → 2026-11-28 (+7d) | 2026-11-23 → 2026-11-30 (+7d) |  |
| Cables | **Cables** | 2026-10-24 → 2026-10-21 (-3d) | 2026-10-25 → 2026-10-24 (-1d) |  |
| 4C,10+1C,10mm2 | **4C,10+1C,10mm2** | 2026-10-24 → 2026-10-21 (-3d) | 2026-10-25 → 2026-10-24 (-1d) |  |
| B2.33 71 00 01 14 | Cable Pulling | 2026-10-24 → 2026-10-21 (-3d) | 2026-10-25 → 2026-10-24 (-1d) | 4.32d → 12.08d |
| LV Panels | **0.6/1 KV Low Voltage Distribution Panels** | 2026-10-26 → 2026-10-24 (-2d) | 2026-11-11 → 2026-11-16 (+5d) |  |
| B2.33 71 26 30 | Land Adjustment | 2026-10-26 → 2026-10-24 (-2d) | 2026-10-27 → 2026-10-26 (-1d) | 4.32d → 12.08d |
| B2.33 71 26 31 | Foundation Works & Curing | 2026-11-03 → 2026-11-01 (-2d) | 2026-11-05 → 2026-11-04 (-1d) | 4.32d → 12.08d |
| B2.33 71 26 29 | Installation of 0.6/1 KV Low Voltage Distribution Panels | 2026-11-10 → 2026-11-15 (+5d) | 2026-11-11 → 2026-11-16 (+5d) | 33.32d → 35.32d |
| LV Pillars | **0.6/1 KV Low Voltage Distribution Pillars** | 2026-10-28 → 2026-10-26 (-2d) | 2026-11-09 → 2026-11-14 (+5d) |  |
| B2.33 71 26 33 | Land Adjustment | 2026-10-28 → 2026-10-26 (-2d) | 2026-10-29 → 2026-10-28 (-1d) | 4.32d → 12.08d |
| B2.33 71 26 34 | Foundation Works & Curing | 2026-10-31 → 2026-10-28 (-3d) | 2026-11-02 → 2026-11-01 (-1d) | 4.32d → 12.08d |
| B2.33 71 26 32 | Installation of 0.6/1 KV Low Voltage Distribution Pillars | 2026-11-08 → 2026-11-12 (+4d) | 2026-11-09 → 2026-11-14 (+5d) | 33.32d → 35.32d |
| Street Lighting | **Street Lighting** | 2026-10-27 → 2026-11-03 (+7d) | 2026-12-16 → 2026-12-23 (+7d) |  |
| Duct Banks | **Duct Banks** | 2026-10-27 → 2026-11-03 (+7d) | 2026-11-07 → 2026-11-14 (+7d) |  |
| 2 Way | **2 Way** | 2026-10-27 → 2026-11-03 (+7d) | 2026-11-07 → 2026-11-14 (+7d) |  |
| B2.33 71 00 02 73 | Excavation | 2026-10-27 → 2026-11-03 (+7d) | 2026-10-29 → 2026-11-05 (+7d) |  |
| B2.33 71 00 02 74 | Shuttering, Steel Fixing Incl. UPVC Pipe & Conc. Cast | 2026-10-31 → 2026-11-07 (+7d) | 2026-11-02 → 2026-11-09 (+7d) |  |

| ID | Task | Start | Finish |
| --- | --- | --- | --- |
| B2.33 71 00 02 75 | Backfilling & Warrning Tape | 2026-11-04 → 2026-11-11 (+7d) | 2026-11-07 → 2026-11-14 (+7d) |
| Drawpits | **Drawpits** | 2026-10-27 → 2026-11-03 (+7d) | 2026-11-03 → 2026-11-10 (+7d) |
| B2.33 71 00 02 76 | Excavation | 2026-10-27 → 2026-11-03 (+7d) | 2026-10-28 → 2026-11-04 (+7d) |
| B2.33 71 00 02 77 | Drawpits Installation | 2026-10-29 → 2026-11-05 (+7d) | 2026-10-31 → 2026-11-07 (+7d) |
| B2.33 71 00 02 78 | Backfilling & Warrning Tape | 2026-11-01 → 2026-11-08 (+7d) | 2026-11-03 → 2026-11-10 (+7d) |
| Cables | **Cables** | 2026-11-17 → 2026-11-24 (+7d) | 2026-12-16 → 2026-12-23 (+7d) |
| 4C,10+1C,10mm2 | **4C,10+1C,10mm2** | 2026-11-17 → 2026-11-24 (+7d) | 2026-12-16 → 2026-12-23 (+7d) |
| B2.33 71 19 162 | Land Adjustment | 2026-11-17 → 2026-11-24 (+7d) | 2026-11-18 → 2026-11-25 (+7d) |
| B2.33 71 49.23.162 | Cable Pulling | 2026-11-19 → 2026-11-26 (+7d) | 2026-11-24 → 2026-12-01 (+7d) |
| B2.33 71 19 172 | Backfilling | 2026-12-14 → 2026-12-21 (+7d) | 2026-12-16 → 2026-12-23 (+7d) |
| SL Poles | **SL Poles** | 2026-11-10 → 2026-11-17 (+7d) | 2026-11-22 → 2026-11-29 (+7d) |
| Pole (10 M Sngl Arm) | **Pole (10 M Single Arm)** | 2026-11-10 → 2026-11-17 (+7d) | 2026-11-22 → 2026-11-29 (+7d) |
| B2.33 71 16.87 | Excavation | 2026-11-10 → 2026-11-17 (+7d) | 2026-11-12 → 2026-11-19 (+7d) |
| B2.33 71 16.88 | PC & RC Foundation | 2026-11-14 → 2026-11-21 (+7d) | 2026-11-16 → 2026-11-23 (+7d) |
| B2.33 71 16.89 | Lighting Poles Installation Incl power box, Cables | 2026-11-17 → 2026-11-24 (+7d) | 2026-11-19 → 2026-11-26 (+7d) |
| B2.26.56.19.15 | Lighting Luminares Inst | 2026-11-21 → 2026-11-28 (+7d) | 2026-11-22 → 2026-11-29 (+7d) |
| B2.33 71 16.90 | Backfilling, Grouting & Chamfering | 2026-11-21 → 2026-11-28 (+7d) | 2026-11-22 → 2026-11-29 (+7d) |
| Telecommunication | **Telecommunication Network** |  | 2026-11-15 → 2026-11-22 (+7d) |
| Ducts | **Ducts** |  | 2026-11-11 → 2026-11-18 (+7d) |
| (6*50mm) | **Size (6*50mm) HDPE ducts** | 2026-10-31 → 2026-11-07 (+7d) | 2026-11-08 → 2026-11-15 (+7d) |
| B2.1.33 81 26.150 | Excavation | 2026-10-31 → 2026-11-07 (+7d) | 2026-11-01 → 2026-11-08 (+7d) |
| B2.1.33 81 26.151 | HDPE Pipe, Shuttering, Steel Fixing & Conc. Cast | 2026-11-02 → 2026-11-09 (+7d) | 2026-11-04 → 2026-11-11 (+7d) |
| B2.1.33 81 26.152 | Backfilling & Warrning Tape | 2026-11-05 → 2026-11-12 (+7d) | 2026-11-08 → 2026-11-15 (+7d) |
| (6*50mm+2*32mm) | **Size (6*50mm+2*32mm) HDPE ducts** | 2026-11-02 → 2026-11-09 (+7d) | 2026-11-10 → 2026-11-17 (+7d) |
| B2.1.33 81 26.153 | Excavation | 2026-11-02 → 2026-11-09 (+7d) | 2026-11-03 → 2026-11-10 (+7d) |
| B2.1.33 81 26.154 | HDPE Pipe, Shuttering, Steel Fixing & Conc. Cast | 2026-11-04 → 2026-11-11 (+7d) | 2026-11-07 → 2026-11-14 (+7d) |
| B2.1.33 81 26.155 | Backfilling & Warrning Tape | 2026-11-08 → 2026-11-15 (+7d) | 2026-11-10 → 2026-11-17 (+7d) |
| (6*50mm+4*32mm) | **Size (6*50mm+4*32mm) HDPE ducts** | 2026-11-04 → 2026-11-11 (+7d) | 2026-11-11 → 2026-11-18 (+7d) |
| B2.1.33 81 26.156 | Excavation | 2026-11-04 → 2026-11-11 (+7d) | 2026-11-05 → 2026-11-12 (+7d) |
| B2.1.33 81 26.157 | HDPE Pipe, Shuttering, Steel Fixing & Conc. Cast | 2026-11-07 → 2026-11-14 (+7d) | 2026-11-08 → 2026-11-15 (+7d) |
| B2.1.33 81 26.158 | Backfilling & Warrning Tape | 2026-11-09 → 2026-11-16 (+7d) | 2026-11-11 → 2026-11-18 (+7d) |
| Manholes | **Manholes** | 2026-11-04 → 2026-11-11 (+7d) | 2026-11-14 → 2026-11-21 (+7d) |
| Manhole Type 1 | **Manhole Type 1** | 2026-11-04 → 2026-11-11 (+7d) | 2026-11-11 → 2026-11-18 (+7d) |
| B2.31 23 00.627 | Excavation | 2026-11-04 → 2026-11-11 (+7d) | 2026-11-05 → 2026-11-12 (+7d) |
| B2.33 71 00.262 | Manhole Installation | 2026-11-07 → 2026-11-14 (+7d) | 2026-11-08 → 2026-11-15 (+7d) |
| B2.33 71 00.263 | Backfilling & Warrning Tape | 2026-11-09 → 2026-11-16 (+7d) | 2026-11-11 → 2026-11-18 (+7d) |
| Manhole Type 2 | **Manhole Type 2** | 2026-11-07 → 2026-11-14 (+7d) | 2026-11-14 → 2026-11-21 (+7d) |
| B2.31 23 00.628 | Excavation | 2026-11-07 → 2026-11-14 (+7d) | 2026-11-08 → 2026-11-15 (+7d) |
| B2.33 71 00.264 | Manhole Installation | 2026-11-09 → 2026-11-16 (+7d) | 2026-11-10 → 2026-11-17 (+7d) |
| B2.33 71 00.265 | Backfilling & Warrning Tape | 2026-11-12 → 2026-11-19 (+7d) | 2026-11-14 → 2026-11-21 (+7d) |
| Crossing Ducts | **Road Crossing Ducts** | 2026-11-09 → 2026-11-16 (+7d) | 2026-11-15 → 2026-11-22 (+7d) |
| 1 | **Size (6X50mm) HDPE** | 2026-11-09 → 2026-11-16 (+7d) | 2026-11-15 → 2026-11-22 (+7d) |
| B2.31 23 00.626 | Excavation | 2026-11-09 → 2026-11-16 (+7d) | 2026-11-10 → 2026-11-17 (+7d) |
| B2.33 71 00.260 | Shuttering, Steel Fixing Incl. UPVC Pipe & Conc. Cast | 2026-11-11 → 2026-11-18 (+7d) | 2026-11-12 → 2026-11-19 (+7d) |
| B2.33 71 00.261 | Backfilling & Warrning Tape | 2026-11-14 → 2026-11-21 (+7d) | 2026-11-15 → 2026-11-22 (+7d) |
| Earth & Road Works | **Earth & Road Works** |  | 2026-12-06 → 2026-12-13 (+7d) |
| Earth Layers | **Earth Layers** |  | 2026-10-08 → 2026-10-15 (+7d) |
| B1.2.32 11 13.01.11_R | Subgrade(Rem) | 2026-10-07 → 2026-10-14 (+7d) | 2026-10-08 → 2026-10-15 (+7d) |
| B1.2.32 11 23.01.11_R | Aggregate Base Course(Rem) | 2026-10-07 → 2026-10-14 (+7d) | 2026-10-08 → 2026-10-15 (+7d) |
| Interlock | **Interlock** | 2026-11-21 → 2026-11-28 (+7d) | 2026-11-22 → 2026-11-29 (+7d) |
| B1.2.32 14 13.13.11 | 60mm thick - Interlocking Block Pavers | 2026-11-21 → 2026-11-28 (+7d) | 2026-11-22 → 2026-11-29 (+7d) |
| Curbstone | **Curbstone** | 2026-11-21 → 2026-11-28 (+7d) | 2026-12-06 → 2026-12-13 (+7d) |
| Pre Install | **Pre-Installation** | 2026-11-21 → 2026-11-28 (+7d) | 2026-11-25 → 2026-12-02 (+7d) |
| B2.31 23 00.301 | Excavation | 2026-11-21 → 2026-11-28 (+7d) | 2026-11-22 → 2026-11-29 (+7d) |
| B1.2.32 14 13.13.211 | PCC | 2026-11-22 → 2026-11-29 (+7d) | 2026-11-23 → 2026-11-30 (+7d) |
| 32 16 13.0011 | Haunching | 2026-11-24 → 2026-12-01 (+7d) | 2026-11-25 → 2026-12-02 (+7d) |
| Installation | **Installation** | 2026-11-26 → 2026-12-03 (+7d) | 2026-12-03 → 2026-12-10 (+7d) |
| B1.2.32 16.13.01.11 | Curb Stone, Type K1 | 2026-11-26 → 2026-12-03 (+7d) | 2026-11-29 → 2026-12-06 (+7d) |
| B1.2.32 16.13.02.10 | Dropped Curb, Type K3 | 2026-11-30 → 2026-12-07 (+7d) | 2026-11-30 → 2026-12-07 (+7d) |
| B1.2.32 16.13.03.11 | Edge Curb, Type K4 | 2026-12-01 → 2026-12-08 (+7d) | 2026-12-01 → 2026-12-08 (+7d) |
| B1.2.32 16.13.0411 | Heel Curb, Type K5 | 2026-12-02 → 2026-12-09 (+7d) | 2026-12-02 → 2026-12-09 (+7d) |
| B1.2.32 16.13.05.10 | Transition Curb | 2026-12-03 → 2026-12-10 (+7d) | 2026-12-03 → 2026-12-10 (+7d) |
| Finishing | **Finishing** | 2026-12-05 → 2026-12-12 (+7d) | 2026-12-06 → 2026-12-13 (+7d) |
| 32 16 13.011 | Finishing, Fareface | 2026-12-05 → 2026-12-12 (+7d) | 2026-12-06 → 2026-12-13 (+7d) |
| Asphalt Layers | **Asphalt Layers** |  | 2026-10-11 → 2026-10-18 (+7d) |
| B1.2.32 11 26.01.11_R | Bituminous Base Course including Prime Coat (MC1) and tack coat (RC2)(Rem) |  | 2026-10-08 → 2026-10-15 (+7d) |
| B1.2.32 12 16.01.11 | Bituminous concrete Wearing Course, including tack coat (RC2) | 2026-10-08 → 2026-10-15 (+7d) | 2026-10-11 → 2026-10-18 (+7d) |
| Pavement Marking | **Pavement Marking** | 2026-10-11 → 2026-10-18 (+7d) | 2026-10-24 → 2026-10-31 (+7d) |
| B1.2.32 17 23.02.11 | Retroreflective Thermoplastic Yellow, Traffic lines | 2026-10-11 → 2026-10-18 (+7d) | 2026-10-13 → 2026-10-20 (+7d) |
| B1.2.32 17 23.01.11 | Retroreflective Thermoplastic White Traffic lines | 2026-10-22 → 2026-10-29 (+7d) | 2026-10-24 → 2026-10-31 (+7d) |

| ID | Task | Start | Finish | Total float |
| --- | --- | --- | --- | --- |
| Traffic Signs | **Traffic Signs** | 2026-11-21 → 2026-11-28 (+7d) | 2026-11-26 → 2026-12-03 (+7d) |  |
| Pre Install | **Pre-Installation** | 2026-11-21 → 2026-11-28 (+7d) | 2026-11-24 → 2026-12-01 (+7d) |  |
| B2.31 23 00.311 | Excavation | 2026-11-21 → 2026-11-28 (+7d) | 2026-11-22 → 2026-11-29 (+7d) |  |
| 10 14 53.011 | Foundation | 2026-11-23 → 2026-11-30 (+7d) | 2026-11-24 → 2026-12-01 (+7d) |  |
| Installation | **Installation** | 2026-11-25 → 2026-12-02 (+7d) | 2026-11-26 → 2026-12-03 (+7d) |  |
| B1.2.10 14 14.0211 | Ground mounted, 1 Sheet Alumenium, Double post | 2026-11-25 → 2026-12-02 (+7d) | 2026-11-26 → 2026-12-03 (+7d) |  |
| B1.2.10 14 53.0111 | 1 Sheet Alumenium, Single post | 2026-11-25 → 2026-12-02 (+7d) | 2026-11-26 → 2026-12-03 (+7d) |  |
| Customs Road 06 | **Customs Road 06** |  | 2026-12-13 → 2026-12-20 (+7d) |  |
| Wet Networks | **Wet Networks** |  | 2026-10-11 → 2026-10-18 (+7d) |  |
| Stormwater Network | **Stormwater Network** |  | 2026-10-11 → 2026-10-18 (+7d) |  |
| Strom Manholes | **Manholes** |  | 2026-10-11 → 2026-10-18 (+7d) |  |
| 3 | **?2000** |  | 2026-10-11 → 2026-10-18 (+7d) |  |
| 3 | **Depth From 2.5m to 3.5m** |  | 2026-10-11 → 2026-10-18 (+7d) |  |
| B6.33 05 39.01.3747_R | Manhole Installation(Rem) | 2026-10-07 → 2026-10-14 (+7d) | 2026-10-10 → 2026-10-17 (+7d) |  |
| B6.33 05 39.01.3757_R | Test, Internal Finishing, Benching & Cover(Rem) | 2026-10-07 → 2026-10-14 (+7d) | 2026-10-11 → 2026-10-18 (+7d) |  |
| B6.33 05 39.01.3767_R | Backfilling(Rem) | 2026-10-07 → 2026-10-14 (+7d) | 2026-10-10 → 2026-10-17 (+7d) |  |
| Catch Basins | **Catch Basins** |  | 2026-10-08 → 2026-10-15 (+7d) |  |
| Sing | **Single** |  | 2026-10-07 → 2026-10-14 (+7d) |  |
| B6.33 05 40.01.490_R | Excavation, Compaction & Vapour Barrier(Rem) |  | 2026-10-07 → 2026-10-14 (+7d) | 112.32d → 112.33d |
| B6.33 05 40.01.500_R | Blinding Conc.(Rem) |  | 2026-10-07 → 2026-10-14 (+7d) | 112.32d → 112.33d |
| B6.33 05 40.01.510_R | Catch Basin Installation(Rem) |  | 2026-10-07 → 2026-10-14 (+7d) | 35.2d → 35.21d |
| B6.33 05 40.01.520_R | Backfilling, DI Frame & Grate Cover Fixing(Rem) |  | 2026-10-07 → 2026-10-14 (+7d) | 10.65d → 10.66d |
| Dou | **Double** |  | 2026-10-08 → 2026-10-15 (+7d) |  |
| B6.33 05 40.01.930_R | Excavation, Compaction & Vapour Barrier(Rem) |  | 2026-10-07 → 2026-10-14 (+7d) | 112.61d → 112.62d |
| B6.33 05 40.01.940_R | Blinding Conc.(Rem) |  | 2026-10-07 → 2026-10-14 (+7d) | 112.61d → 112.62d |
| B6.33 05 40.01.950_R | Catch Basin Installation(Rem) |  | 2026-10-07 → 2026-10-14 (+7d) | 112.43d → 112.44d |
| B6.33 05 40.01.960 | Backfilling, DI Frame & Grate Cover Fixing |  | 2026-10-08 → 2026-10-15 (+7d) | 9.32d → 9.34d |
| Dry Networks | **Dry Networks** | 2026-10-10 → 2026-10-15 (+5d) | 2026-12-09 → 2026-12-16 (+7d) |  |
| MV Network | **Medium Voltage Network** | 2026-10-19 → 2026-10-17 (-2d) | 2026-11-24 → 2026-12-01 (+7d) |  |
| Cables | **Cables** | 2026-10-19 → 2026-10-17 (-2d) | 2026-11-21 → 2026-11-28 (+7d) |  |
| 3C,500mm2 | **3C,500mm2** | 2026-10-19 → 2026-10-17 (-2d) | 2026-11-14 → 2026-11-21 (+7d) |  |
| B2.33 71 49.23.92 | Cable 13.8 kV Unarmored | 2026-10-19 → 2026-10-17 (-2d) | 2026-10-22 → 2026-10-21 (-1d) | 1.32d → 9.08d |
| B2.33 71 49.23.93 | Straight joints cables | 2026-10-24 → 2026-10-21 (-3d) | 2026-10-26 → 2026-10-25 (-1d) | 85.32d → 93.08d |
| B2.33 71 49.23.94 | Cable Termination | 2026-11-10 → 2026-11-17 (+7d) | 2026-11-14 → 2026-11-21 (+7d) | 73.2d → 73.21d |
| 3C,50mm2 | **3C,50mm2** | 2026-10-24 → 2026-10-21 (-3d) | 2026-11-21 → 2026-11-28 (+7d) |  |
| B2.33 71 49.23.95 | Cable 13.8 kV Unarmored | 2026-10-24 → 2026-10-21 (-3d) | 2026-10-27 → 2026-10-26 (-1d) | 1.32d → 9.08d |
| B2.33 71 49.23.96 | Straight joints cables | 2026-10-28 → 2026-10-26 (-2d) | 2026-10-31 → 2026-10-29 (-2d) | 83.32d → 91.08d |
| B2.33 71 49.23.97 | Cable Termination | 2026-11-18 → 2026-11-25 (+7d) | 2026-11-21 → 2026-11-28 (+7d) |  |
| RMU | **RMU** | 2026-10-28 → 2026-10-26 (-2d) | 2026-11-24 → 2026-12-01 (+7d) |  |
| B2 33 73 00.02.5 | Land Adjustment | 2026-10-28 → 2026-10-26 (-2d) | 2026-10-31 → 2026-10-29 (-2d) | 28.32d → 36.08d |
| B2 33 73 00.02.7 | Foundation Works & Curing | 2026-11-01 → 2026-10-29 (-3d) | 2026-11-04 → 2026-11-03 (-1d) | 73.32d → 81.08d |
| B2 33 73 00.02.9 | Installation of Ring Main Unit RMU, 13.8KV | 2026-11-05 → 2026-11-03 (-2d) | 2026-11-08 → 2026-11-07 (-1d) | 74.32d → 82.08d |
| B2.33 71 49.23.102 | Normally Open Point 13.8 KV | 2026-11-22 → 2026-11-29 (+7d) | 2026-11-24 → 2026-12-01 (+7d) |  |
| Units Substation | **Units Substation** | 2026-11-01 → 2026-10-29 (-3d) | 2026-11-12 → 2026-11-11 (-1d) |  |
| B2 33 73 00.01.5 | Land Adjustment | 2026-11-01 → 2026-10-29 (-3d) | 2026-11-03 → 2026-11-02 (-1d) | 28.32d → 36.08d |
| B2 33 73 00.01.7 | Foundation Works & Curing | 2026-11-05 → 2026-11-03 (-2d) | 2026-11-09 → 2026-11-08 (-1d) | 73.32d → 81.08d |
| B2 33 73 00.01.9 | Installation of Unit Substation 13.8/0.4 K V | 2026-11-10 → 2026-11-08 (-2d) | 2026-11-12 → 2026-11-11 (-1d) | 73.32d → 81.08d |
| LV Network | **Low Voltage Network** | 2026-10-10 → 2026-10-15 (+5d) | 2026-12-01 → 2026-12-07 (+6d) |  |
| Duct Banks | **Duct Banks** | 2026-10-10 → 2026-10-15 (+5d) | 2026-12-01 → 2026-12-07 (+6d) |  |
| 2 Way | **2 Way** | 2026-10-10 → 2026-10-15 (+5d) | 2026-12-01 → 2026-12-07 (+6d) |  |
| B2.33 71 00 02 142 | Excavation | 2026-10-10 → 2026-10-15 (+5d) | 2026-10-11 → 2026-10-18 (+7d) | 11.32d → 11.34d |
| B2.33 71 00 02 143 | Shuttering, Steel Fixing Incl. UPVC Pipe & Conc. Cast | 2026-10-12 → 2026-10-18 (+6d) | 2026-10-14 → 2026-10-21 (+7d) | 100.32d → 100.34d |
| B2.33 71 00 02 144 | Backfilling & Warrning Tape | 2026-11-29 → 2026-12-05 (+6d) | 2026-12-01 → 2026-12-07 (+6d) | 62.32d → 63.32d |
| 6 Way | **6 Way** | 2026-10-12 → 2026-10-18 (+6d) | 2026-10-20 → 2026-10-27 (+7d) |  |
| B2.33 71 00 02 130 | Excavation | 2026-10-12 → 2026-10-18 (+6d) | 2026-10-13 → 2026-10-20 (+7d) | 11.32d → 11.34d |
| B2.33 71 00 02 131 | Shuttering, Steel Fixing Incl. UPVC Pipe & Conc. Cast | 2026-10-14 → 2026-10-20 (+6d) | 2026-10-17 → 2026-10-24 (+7d) | 98.32d → 98.34d |
| B2.33 71 00 02 132 | Backfilling & Warrning Tape | 2026-10-18 → 2026-10-24 (+6d) | 2026-10-20 → 2026-10-27 (+7d) | 98.32d → 98.34d |
| 8 Way | **8 Way** | 2026-10-14 → 2026-10-20 (+6d) | 2026-10-22 → 2026-10-29 (+7d) |  |
| B2.33 71 00 02 133 | Excavation | 2026-10-14 → 2026-10-20 (+6d) | 2026-10-15 → 2026-10-22 (+7d) | 11.32d → 11.34d |
| B2.33 71 00 02 134 | Shuttering, Steel Fixing Incl. UPVC Pipe & Conc. Cast | 2026-10-17 → 2026-10-22 (+5d) | 2026-10-19 → 2026-10-26 (+7d) | 96.32d → 96.34d |
| B2.33 71 00 02 135 | Backfilling & Warrning Tape | 2026-10-20 → 2026-10-26 (+6d) | 2026-10-22 → 2026-10-29 (+7d) | 96.32d → 96.34d |
| Cables | **Cables** | 2026-10-28 → 2026-10-26 (-2d) | 2026-11-01 → 2026-10-31 (-1d) |  |
| 4C,10+1C,10mm2 | **4C,10+1C,10mm2** | 2026-10-28 → 2026-10-26 (-2d) | 2026-10-29 → 2026-10-28 (-1d) |  |
| B2.33 71 00 01 17 | Cable Pulling | 2026-10-28 → 2026-10-26 (-2d) | 2026-10-29 → 2026-10-28 (-1d) | 1.32d → 9.08d |
| 4C,50+1C,25mm2 | **4C,50+1C,25mm2** | 2026-10-31 → 2026-10-28 (-3d) | 2026-11-01 → 2026-10-31 (-1d) |  |
| B2.33 71 00 01 18 | Cable Pulling | 2026-10-31 → 2026-10-28 (-3d) | 2026-11-01 → 2026-10-31 (-1d) | 1.32d → 9.08d |
| LV Panels | **0.6/1 KV Low Voltage Distribution Panels** | 2026-11-04 → 2026-11-02 (-2d) | 2026-11-17 → 2026-11-16 (-1d) |  |
| B2.33 71 26 021 | Land Adjustment | 2026-11-04 → 2026-11-02 (-2d) | 2026-11-05 → 2026-11-04 (-1d) | 28.32d → 36.08d |
| B2.33 71 26 022 | Foundation Works & Curing | 2026-11-12 → 2026-11-10 (-2d) | 2026-11-15 → 2026-11-14 (-1d) | 28.32d → 36.08d |
| B2.33 71 26 023 | Installation of 0.6/1 KV Low Voltage Distribution Panels | 2026-11-16 → 2026-11-14 (-2d) | 2026-11-17 → 2026-11-16 (-1d) | 28.32d → 36.08d |

| ID | Task | Start | Finish | Complete | Total float |
| --- | --- | --- | --- | --- | --- |
| LV Pillars | **0.6/1 KV Low Voltage Distribution Pillars** | 2026-11-07 → 2026-11-04 (-3d) | 2026-11-14 → 2026-11-12 (-2d) |  |  |
| B2.33 71 26 011 | Land Adjustment | 2026-11-07 → 2026-11-04 (-3d) | 2026-11-08 → 2026-11-07 (-1d) |  | 28.32d → 36.08d |
| B2.33 71 26 012 | Foundation Works & Curing | 2026-11-09 → 2026-11-07 (-2d) | 2026-11-11 → 2026-11-10 (-1d) |  | 28.32d → 36.08d |
| B2.33 71 26 013 | Installation of 0.6/1 KV Low Voltage Distribution Pillars | 2026-11-12 → 2026-11-10 (-2d) | 2026-11-14 → 2026-11-12 (-2d) |  | 29.32d → 37.08d |
| Street Lighting | **Street Lighting** | 2026-10-17 → 2026-10-22 (+5d) | 2026-12-09 → 2026-12-16 (+7d) |  |  |
| Duct Banks | **Duct Banks** | 2026-10-17 → 2026-10-22 (+5d) | 2026-10-25 → 2026-11-01 (+7d) |  |  |
| 4 Way | **4 Way** | 2026-10-17 → 2026-10-22 (+5d) | 2026-10-25 → 2026-11-01 (+7d) |  |  |
| B2.33 71 00 02 154 | Excavation | 2026-10-17 → 2026-10-22 (+5d) | 2026-10-18 → 2026-10-25 (+7d) |  | 11.32d → 11.34d |
| B2.33 71 00 02 155 | Shuttering, Steel Fixing Incl. UPVC Pipe & Conc. Cast | 2026-10-19 → 2026-10-25 (+6d) | 2026-10-21 → 2026-10-28 (+7d) |  | 87.32d → 87.34d |
| B2.33 71 00 02 156 | Backfilling & Warrning Tape | 2026-10-22 → 2026-10-28 (+6d) | 2026-10-25 → 2026-11-01 (+7d) |  | 87.32d → 87.34d |
| Drawpits | **Drawpits** | 2026-10-19 → 2026-10-25 (+6d) | 2026-11-30 → 2026-11-24 (-6d) |  |  |
| B2.33 71 00 02 157 | Excavation | 2026-10-19 → 2026-10-25 (+6d) | 2026-10-20 → 2026-10-27 (+7d) |  | 87.32d → 87.34d |
| B2.33 71 00 02 158 | Drawpits Installation | 2026-10-21 → 2026-10-27 (+6d) | 2026-10-22 → 2026-10-29 (+7d) |  | 89.32d → 89.34d |
| B2.33 71 00 02 159 | Backfilling & Warrning Tape | 2026-11-28 → 2026-11-21 (-7d) | 2026-11-30 → 2026-11-24 (-6d) |  | 59.32d → 70.58d |
| Cables | **Cables** | 2026-11-02 → 2026-10-31 (-2d) | 2026-12-06 → 2026-11-11 (-25d) |  |  |
| 4C,16+1C,16mm2 | **4C,16+1C,16mm2** | 2026-11-02 → 2026-10-31 (-2d) | 2026-12-06 → 2026-11-11 (-25d) |  |  |
| B2.33 71 19 182 | Land Adjustment | 2026-11-02 → 2026-10-31 (-2d) | 2026-11-04 → 2026-11-03 (-1d) |  | 1.32d → 9.08d |
| B2.33 71 49.23.172 | Cable Pulling | 2026-11-05 → 2026-11-03 (-2d) | 2026-11-08 → 2026-11-07 (-1d) |  | 77.32d → 85.08d |
| B2.33 71 19 192 | Backfilling | 2026-12-03 → 2026-11-08 (-25d) | 2026-12-06 → 2026-11-11 (-25d) |  | 56.32d → 83.34d |
| SL Poles | **SL Poles** | 2026-11-21 → 2026-11-28 (+7d) | 2026-12-09 → 2026-12-16 (+7d) |  |  |
| Pole (16 M Dbl Arm) | **Pole (16 M Double Arm)** | 2026-11-21 → 2026-11-28 (+7d) | 2026-12-09 → 2026-12-16 (+7d) |  |  |
| B2.33 71 16.103 | Excavation | 2026-11-21 → 2026-11-28 (+7d) | 2026-11-23 → 2026-11-30 (+7d) |  |  |
| B2.33 71 16.104 | PC & RC Foundation | 2026-11-24 → 2026-12-01 (+7d) | 2026-11-26 → 2026-12-03 (+7d) |  |  |
| B2.33 71 16.105 | Lighting Poles Installation Incl power box, Cables | 2026-11-28 → 2026-12-05 (+7d) | 2026-11-29 → 2026-12-06 (+7d) |  |  |
| B2.26.56.19.19 | Lighting Luminares Inst | 2026-12-06 → 2026-12-13 (+7d) | 2026-12-08 → 2026-12-15 (+7d) |  |  |
| B2.33 71 16.106 | Backfilling, Grouting & Chamfering | 2026-12-06 → 2026-12-13 (+7d) | 2026-12-09 → 2026-12-16 (+7d) |  |  |
| SL Pillars | **SL Pillars** | 2026-11-30 → 2026-12-07 (+7d) | 2026-12-05 → 2026-12-09 (+4d) |  |  |
| B2.33 71 26 033 | Pillars Installation (Internal Wiring) | 2026-11-30 → 2026-12-07 (+7d) | 2026-12-01 → 2026-12-08 (+7d) |  |  |
| B2.33 71 26 044 | KWH meter mounting a frame installation | 2026-12-05 → 2026-12-09 (+4d) | 2026-12-05 → 2026-12-09 (+4d) |  | 62.32d → 64.32d |
| Earth & Road Works | **Earth & Road Works** |  | 2026-12-13 → 2026-12-20 (+7d) |  |  |
| Earth Layers | **Earth Layers** |  | 2026-10-08 → 2026-10-15 (+7d) |  |  |
| B1.2.32 11 13.01.14_R | Subgrade(Rem) | 2026-10-07 → 2026-10-14 (+7d) | 2026-10-08 → 2026-10-15 (+7d) |  |  |
| B1.2.32 11 23.01.14_R | Aggregate Base Course(Rem) | 2026-10-07 → 2026-10-14 (+7d) | 2026-10-08 → 2026-10-15 (+7d) |  |  |
| Interlock | **Interlock** | 2026-12-09 → 2026-12-16 (+7d) | 2026-12-12 → 2026-12-19 (+7d) |  |  |
| B1.2.32 14 13.13.14 | 60mm thick - Interlocking Block Pavers | 2026-12-09 → 2026-12-16 (+7d) | 2026-12-12 → 2026-12-19 (+7d) |  |  |
| Curbstone | **Curbstone** | 2026-11-21 → 2026-11-28 (+7d) | 2026-12-06 → 2026-12-13 (+7d) |  |  |
| Pre Install | **Pre-Installation** | 2026-11-21 → 2026-11-28 (+7d) | 2026-11-26 → 2026-12-03 (+7d) |  |  |
| B2.31 23 00.391 | Excavation | 2026-11-21 → 2026-11-28 (+7d) | 2026-11-22 → 2026-11-29 (+7d) |  |  |
| B1.2.32 14 13.13.214 | PCC | 2026-11-23 → 2026-11-30 (+7d) | 2026-11-24 → 2026-12-01 (+7d) |  |  |
| 32 16 13.0014 | Haunching | 2026-11-25 → 2026-12-02 (+7d) | 2026-11-26 → 2026-12-03 (+7d) |  |  |
| Installation | **Installation** | 2026-11-28 → 2026-12-05 (+7d) | 2026-12-06 → 2026-12-13 (+7d) |  |  |
| B1.2.32 16.13.01.14 | Curb Stone, Type K1 | 2026-11-28 → 2026-12-05 (+7d) | 2026-11-29 → 2026-12-06 (+7d) |  |  |
| B1.2.32 16.13.02.13 | Dropped Curb, Type K3 | 2026-11-30 → 2026-12-07 (+7d) | 2026-12-01 → 2026-12-08 (+7d) |  |  |
| B1.2.32 16.13.03.14 | Edge Curb, Type K4 | 2026-12-02 → 2026-12-09 (+7d) | 2026-12-03 → 2026-12-10 (+7d) |  |  |
| B1.2.32 16.13.0414 | Heel Curb, Type K5 | 2026-12-05 → 2026-12-12 (+7d) | 2026-12-06 → 2026-12-13 (+7d) |  |  |
| B1.2.32 16.13.05.13 | Transition Curb | 2026-12-05 → 2026-12-12 (+7d) | 2026-12-06 → 2026-12-13 (+7d) |  |  |
| Finishing | **Finishing** | 2026-12-05 → 2026-12-12 (+7d) | 2026-12-06 → 2026-12-13 (+7d) |  |  |
| 32 16 13.014 | Finishing, Fareface | 2026-12-05 → 2026-12-12 (+7d) | 2026-12-06 → 2026-12-13 (+7d) |  |  |
| Asphalt Layers | **Asphalt Layers** |  | 2026-12-10 → 2026-12-17 (+7d) |  |  |
| B1.2.32 11 26.01.14_R | Bituminous Base Course including Prime Coat (MC1) and tack coat (RC2)(Rem) |  | 2026-10-08 → 2026-10-15 (+7d) | 11% → 12% | 52.54d → 52.56d |
| B1.2.32 12 16.01.14 | Bituminous concrete Wearing Course, including tack coat (RC2) | 2026-12-07 → 2026-12-14 (+7d) | 2026-12-10 → 2026-12-17 (+7d) |  |  |
| Pavement Marking | **Pavement Marking** | 2026-12-12 → 2026-12-19 (+7d) | 2026-12-13 → 2026-12-20 (+7d) |  |  |
| B1.2.32 17 23.01.14 | Retroreflective Thermoplastic White Traffic lines | 2026-12-12 → 2026-12-19 (+7d) | 2026-12-13 → 2026-12-20 (+7d) |  |  |
| B1.2.32 17 23.02.14 | Retroreflective Thermoplastic Yellow, Traffic lines | 2026-12-12 → 2026-12-19 (+7d) | 2026-12-13 → 2026-12-20 (+7d) |  |  |
| Traffic Signs | **Traffic Signs** | 2026-11-21 → 2026-11-28 (+7d) | 2026-12-13 → 2026-12-20 (+7d) |  |  |
| Pre Install | **Pre-Installation** | 2026-11-21 → 2026-11-28 (+7d) | 2026-11-24 → 2026-12-01 (+7d) |  |  |
| B2.31 23 00.401 | Excavation | 2026-11-21 → 2026-11-28 (+7d) | 2026-11-22 → 2026-11-29 (+7d) |  |  |
| 10 14 53.014 | Foundation | 2026-11-23 → 2026-11-30 (+7d) | 2026-11-24 → 2026-12-01 (+7d) |  |  |
| Installation | **Installation** | 2026-12-12 → 2026-12-19 (+7d) | 2026-12-13 → 2026-12-20 (+7d) |  |  |
| B1.2.10 14 53.0114 | 1 Sheet Alumenium, Single post | 2026-12-12 → 2026-12-19 (+7d) | 2026-12-13 → 2026-12-20 (+7d) |  |  |
| Landscape | **Landscape** | 2026-11-09 → 2026-10-31 (-9d) | 2026-11-30 → 2026-11-22 (-8d) |  |  |
| Fences | **Fences** | 2026-11-09 → 2026-10-31 (-9d) | 2026-11-30 → 2026-11-22 (-8d) |  |  |
| (ZATCA HCIS) | **Steel fence (ZATCA HCIS)** | 2026-11-09 → 2026-10-31 (-9d) | 2026-11-30 → 2026-11-22 (-8d) |  |  |
| B7.32 31 26.01-190 | Earthwork | 2026-11-09 → 2026-10-31 (-9d) | 2026-11-15 → 2026-11-07 (-8d) |  | 7.32d → 20.82d |
| B7.32 31 26.01-192 | Foundation | 2026-11-16 → 2026-11-07 (-9d) | 2026-11-22 → 2026-11-14 (-8d) |  | 7.32d → 20.82d |
| B7.32 31 26.01-194 | Fence Installation | 2026-11-23 → 2026-11-14 (-9d) | 2026-11-30 → 2026-11-22 (-8d) |  | 7.32d → 20.82d |
| Customs Rd 02 | **Customs Road 02** |  | 2026-12-15 → 2026-12-12 (-3d) |  |  |
| Wet Networks | **Wet Networks** |  | 2026-12-15 → 2026-11-14 (-31d) |  |  |
| Sewerage Network | **Sewerage Network** |  | 2026-10-26 → 2026-11-02 (+7d) |  |  |
| GRP | **GRP Pipes** |  | 2026-10-12 → 2026-10-14 (+2d) |  |  |

| ID | Task | Start | Finish | Complete | Total float |
| --- | --- | --- | --- | --- | --- |
| 200 | **?150** |  | 2026-10-12 → 2026-10-14 (+2d) |  |  |
| 1 | **Depth From 1.5m to 2.5m** |  | 2026-10-12 → 2026-10-14 (+2d) |  |  |
| B5.33 31 00.01.25_R | Embedment & Test(Rem) |  | 2026-10-11 → 2026-10-14 (+3d) | 12% → 80% | 110.1d → 112.59d |
| B5.33 31 00.01.33_R | Backfilling & Warrning Tape(Rem) |  | 2026-10-12 A | 17% → 100% | 109.31d → none |
| 1 | **?200** |  | 2026-10-12 → 2026-10-14 (+2d) |  |  |
| 4 | **Depth From 2.5m to 3.5m** |  | 2026-10-12 → 2026-10-14 (+2d) |  |  |
| B5.33 31 00.01.27_R | Embedment & Test(Rem) |  | 2026-10-11 → 2026-10-14 (+3d) | 17% → 80% | 110.1d → 112.59d |
| B5.33 31 00.01.35_R | Backfilling & Warrning Tape(Rem) |  | 2026-10-12 A | 17% → 100% | 109.31d → none |
| 3 | **Depth From 3.5m to 4.5m** |  | 2026-10-11 → 2026-10-14 (+3d) |  |  |
| B5.33 31 00.01.29_R | Embedment & Test(Rem) |  | 2026-10-11 → 2026-10-14 (+3d) | 17% → 80% | 110.1d → 112.59d |
| 1 | **Depth From 4.5m to 5.5m** |  | 2026-10-12 → 2026-10-14 (+2d) |  |  |
| B5.33 31 00.01.31_R | Embedment & Test(Rem) |  | 2026-10-11 → 2026-10-14 (+3d) | 17% → 80% | 110.1d → 112.59d |
| B5.33 31 00.01.39_R | Backfilling & Warrning Tape(Rem) |  | 2026-10-12 A | 17% → 100% | 109.31d → none |
| Manholes | **Manholes ?1200** |  | 2026-10-13 → 2026-10-20 (+7d) |  |  |
| 2 | **Depth From 0.0m to 1.5m** |  | 2026-10-10 → 2026-10-17 (+7d) |  |  |
| B6.33 05 39.01.867 | Backfilling |  | 2026-10-10 → 2026-10-17 (+7d) |  |  |
| B6.33 05 39.01.837_R | Blinding Conc, & RC Base(Rem) |  | 2026-10-08 → 2026-10-15 (+7d) |  |  |
| B6.33 05 39.01.847_R | Manhole Installation(Rem) |  | 2026-10-07 → 2026-10-14 (+7d) |  |  |
| B6.33 05 39.01.857_R | Test, Internal Finishing, Benching & Cover(Rem) |  | 2026-10-08 → 2026-10-15 (+7d) |  |  |
| 3 | **Depth From 1.5m to 2.5m** |  | 2026-10-10 → 2026-10-17 (+7d) |  |  |
| B6.33 05 39.01.907 | Test, Internal Finishing, Benching & Cover |  | 2026-10-10 → 2026-10-17 (+7d) |  |  |
| B6.33 05 39.01.917_R | Backfilling(Rem) |  | 2026-10-10 → 2026-10-17 (+7d) |  |  |
| B6.33 05 39.01.887_R | Blinding Conc, & RC Base(Rem) |  | 2026-10-08 → 2026-10-15 (+7d) |  |  |
| B6.33 05 39.01.897_R | Manhole Installation(Rem) |  | 2026-10-07 → 2026-10-14 (+7d) |  |  |
| 4 | **Depth From 2.5m to 3.5m** |  | 2026-10-10 → 2026-10-17 (+7d) |  |  |
| B6.33 05 39.01.957 | Test, Internal Finishing, Benching & Cover |  | 2026-10-10 → 2026-10-17 (+7d) |  |  |
| B6.33 05 39.01.967_R | Backfilling(Rem) |  | 2026-10-10 → 2026-10-17 (+7d) |  |  |
| B6.33 05 39.01.937_R | Blinding Conc, & RC Base(Rem) |  | 2026-10-08 → 2026-10-15 (+7d) |  |  |
| B6.33 05 39.01.947_R | Manhole Installation(Rem) |  | 2026-10-07 → 2026-10-14 (+7d) |  |  |
| 1 | **Depth From 4.5m to 5.5m** |  | 2026-10-13 → 2026-10-20 (+7d) |  |  |
| B6.33 05 39.01.987_R | Blinding Conc, & RC Base(Rem) |  | 2026-10-08 → 2026-10-15 (+7d) |  |  |
| B6.33 05 39.01.997_R | Manhole Installation(Rem) |  | 2026-10-07 → 2026-10-14 (+7d) |  |  |
| B6.33 05 39.01.1007_R | Test, Internal Finishing, Benching & Cover(Rem) |  | 2026-10-08 → 2026-10-15 (+7d) |  |  |
| B6.33 05 39.01.1017 | Backfilling |  | 2026-10-10 → 2026-10-17 (+7d) |  |  |
| 5 | **Depth From 4.5m to 5.5m with back drop** |  | 2026-10-13 → 2026-10-20 (+7d) |  |  |
| B6.33 05 39.01.4277 | Blinding Conc, & RC Base |  | 2026-10-08 → 2026-10-15 (+7d) |  |  |
| B6.33 05 39.01.4287 | Manhole Installation |  | 2026-10-08 → 2026-10-15 (+7d) |  |  |
| B6.33 05 39.01.4297 | Test, Internal Finishing, Benching & Cover |  | 2026-10-10 → 2026-10-17 (+7d) |  |  |
| B6.33 05 39.01.4317 | Backfilling |  | 2026-10-13 → 2026-10-20 (+7d) |  | 107.33d → 107.32d |
| 2 | **Valves & Chambers** | 2026-10-07 → 2026-10-14 (+7d) | 2026-10-26 → 2026-11-02 (+7d) |  |  |
| Gate | **Gate Valves** | 2026-10-07 → 2026-10-14 (+7d) | 2026-10-11 → 2026-10-18 (+7d) |  |  |
| B3.33 14 19.01.93 | Burried Isolation Valve Installation | 2026-10-07 → 2026-10-14 (+7d) | 2026-10-08 → 2026-10-15 (+7d) |  |  |
| B3.33 14 19.01.103 | Spindle & Surface Box | 2026-10-10 → 2026-10-17 (+7d) | 2026-10-11 → 2026-10-18 (+7d) |  |  |
| Washout V in Ch | **Washout Valves in Chambers** | 2026-10-07 → 2026-10-14 (+7d) | 2026-10-26 → 2026-11-02 (+7d) |  |  |
| B3.33 14 19.01.43 | Land Adjustment & Compaction | 2026-10-07 → 2026-10-14 (+7d) | 2026-10-10 → 2026-10-17 (+7d) |  |  |
| B3.33 14 19.01.53 | Foundations | 2026-10-11 → 2026-10-18 (+7d) | 2026-10-13 → 2026-10-20 (+7d) |  |  |
| B3.33 14 19.01.63 | Chambers Walls Conc Cast In Situ | 2026-10-14 → 2026-10-21 (+7d) | 2026-10-17 → 2026-10-24 (+7d) |  |  |
| B3.33 14 19.01.73 | Chamber Curing, Finishing & Steel Cover | 2026-10-18 → 2026-10-25 (+7d) | 2026-10-21 → 2026-10-28 (+7d) |  |  |
| B3.33 14 19.01.83 | Valve & Fitting Installation | 2026-10-22 → 2026-10-29 (+7d) | 2026-10-26 → 2026-11-02 (+7d) |  |  |
| Stormwater Network | **Stormwater Network** |  | 2026-10-19 → 2026-10-26 (+7d) |  |  |
| GRP | **GRP** |  | 2026-10-11 → 2026-10-18 (+7d) |  |  |
| ?40011 | **?400** |  | 2026-10-11 → 2026-10-18 (+7d) |  |  |
| 3 | **Depth From 1.5m to 2.5m** |  | 2026-10-11 → 2026-10-18 (+7d) |  |  |
| B6.33 42 11.01-1.7_R | Embedment & Test(Rem) | 2026-10-07 → 2026-10-14 (+7d) | 2026-10-11 → 2026-10-18 (+7d) |  |  |
| B6.33 42 11.01-1.9_R | Backfilling & Warrning Tape(Rem) | 2026-10-07 → 2026-10-14 (+7d) | 2026-10-11 → 2026-10-18 (+7d) |  |  |
| Strom Manholes | **Manholes** |  | 2026-10-19 → 2026-10-26 (+7d) |  |  |
| 1 | **?1200** |  | 2026-10-19 → 2026-10-26 (+7d) |  |  |
| 3 | **Depth From 1.5m to 2.5m** |  | 2026-10-19 → 2026-10-26 (+7d) |  |  |
| B6.33 05 39.01.3607 | Test, Internal Finishing, Benching & Cover | 2026-10-07 → 2026-10-14 (+7d) | 2026-10-12 → 2026-10-19 (+7d) |  | 56.32d → 102.32d |
| B6.33 05 39.01.3617 | Backfilling | 2026-10-13 → 2026-10-20 (+7d) | 2026-10-19 → 2026-10-26 (+7d) |  | 56.32d → 102.32d |
| Catch Basins | **Catch Basins** |  | 2026-10-18 → 2026-10-25 (+7d) |  |  |
| Sing | **Single** |  | 2026-10-10 → 2026-10-17 (+7d) |  |  |
| B6.33 05 40.01.410_R | Excavation, Compaction & Vapour Barrier(Rem) | 2026-10-07 → 2026-10-14 (+7d) | 2026-10-10 → 2026-10-17 (+7d) |  |  |
| B6.33 05 40.01.420_R | Blinding Conc.(Rem) | 2026-10-07 → 2026-10-14 (+7d) | 2026-10-10 → 2026-10-17 (+7d) |  |  |
| B6.33 05 40.01.430_R | Catch Basin Installation(Rem) | 2026-10-07 → 2026-10-14 (+7d) | 2026-10-10 → 2026-10-17 (+7d) |  |  |
| B6.33 05 40.01.440_R | Backfilling, DI Frame & Grate Cover Fixing(Rem) | 2026-10-07 → 2026-10-14 (+7d) | 2026-10-10 → 2026-10-17 (+7d) |  |  |
| Dou | **Double** |  | 2026-10-18 → 2026-10-25 (+7d) |  |  |
| B6.33 05 40.01.890_R | Excavation, Compaction & Vapour Barrier(Rem) | 2026-10-07 → 2026-10-14 (+7d) | 2026-10-10 → 2026-10-17 (+7d) |  |  |
| B6.33 05 40.01.900_R | Blinding Conc.(Rem) | 2026-10-07 → 2026-10-14 (+7d) | 2026-10-10 → 2026-10-17 (+7d) |  |  |
| B6.33 05 40.01.910_R | Catch Basin Installation(Rem) | 2026-10-08 → 2026-10-14 (+6d) | 2026-10-11 → 2026-10-18 (+7d) |  | 35.2d → 35.21d |

| ID | Task | Start | Finish | Complete | Total float |
| --- | --- | --- | --- | --- | --- |
| B6.33 05 40.01.920 | Backfilling, DI Frame & Grate Cover Fixing | 2026-10-11 → 2026-10-18 (+7d) | 2026-10-18 → 2026-10-25 (+7d) |  | 35.2d → 35.21d |
| Potable Water | **Potable Water Network** | 2026-10-20 → 2026-09-27 (-23d) | 2026-11-08 → 2026-10-18 (-21d) |  |  |
| HDPE | **HDPE Pipes** | 2026-10-20 → 2026-09-27 (-23d) | 2026-11-08 → 2026-10-18 (-21d) |  |  |
| ?110mm | **?110mm** | 2026-10-20 → 2026-09-27 (-23d) | 2026-11-08 → 2026-10-18 (-21d) |  |  |
| Depth: 1.51m - 2.5m | **Depth: 0.51m - 1.5m** | 2026-10-20 → 2026-09-27 (-23d) | 2026-11-08 → 2026-10-18 (-21d) |  |  |
| B3.33 14 13-191 | Excavation | 2026-10-20 → 2026-09-27 A (-23d) | 2026-10-22 → 2026-10-17 (-5d) | 0% → 19% | 56.32d → 110.89d |
| B3.33 14 13-193 | Sand Bedding | 2026-10-24 → 2026-09-30 A (-24d) | 2026-10-26 → 2026-10-17 (-9d) | 0% → 19% | 71.32d → 110.89d |
| B3.33 14 13-195 | Pipe Laying | 2026-10-27 → 2026-10-03 A (-24d) | 2026-10-29 → 2026-10-17 (-12d) | 0% → 19% | 71.32d → 110.89d |
| B3.33 14 13-197 | Embedment & Test | 2026-10-31 → 2026-10-07 A (-24d) | 2026-11-03 → 2026-10-18 (-16d) | 0% → 19% | 71.32d → 110.08d |
| B3.33 14 13-199 | Backfilling & Warrning Tape | 2026-11-04 → 2026-10-11 A (-24d) | 2026-11-08 → 2026-10-18 (-21d) | 0% → 19% | 71.32d → 110.08d |
| Fire Fighting | **Fire Fighting Network** | 2026-10-24 → 2026-09-30 (-24d) | 2026-12-15 → 2026-11-14 (-31d) |  |  |
| HDPE | **HDPE Pipes** | 2026-10-24 → 2026-09-30 (-24d) | 2026-11-18 → 2026-10-20 (-29d) |  |  |
| ?250mm | **?250mm** | 2026-10-24 → 2026-09-30 (-24d) | 2026-11-18 → 2026-10-20 (-29d) |  |  |
| Depth: 1.51m - 2.5m | **Depth: 0.51m - 1.5m** | 2026-10-24 → 2026-09-30 (-24d) | 2026-11-18 → 2026-10-20 (-29d) |  |  |
| B3.1. 33 14 13-119 | Excavation | 2026-10-24 → 2026-09-30 A (-24d) | 2026-10-27 → 2026-10-18 (-9d) | 0% → 12% | 56.32d → 109.8d |
| B3.1. 33 14 13-1111 | Sand Bedding | 2026-10-28 → 2026-10-04 A (-24d) | 2026-11-01 → 2026-10-18 (-14d) | 0% → 12% | 56.32d → 109.8d |
| B3.1. 33 14 13-1113 | Pipe Laying | 2026-11-02 → 2026-10-09 A (-24d) | 2026-11-05 → 2026-10-18 (-18d) | 0% → 12% | 56.32d → 95.8d |
| B3.1. 33 14 13-1115 | Embedment & Test | 2026-11-07 → 2026-10-11 A (-27d) | 2026-11-12 → 2026-10-20 (-23d) | 0% → 12% | 56.32d → 87.04d |
| B3.1. 33 14 13-1117 | Backfilling & Warrning Tape | 2026-11-14 → 2026-10-12 A (-33d) | 2026-11-18 → 2026-10-19 (-30d) | 0% → 12% | 56.32d → 88.92d |
| Valves & Chambers | **Valves & Chambers** | 2026-11-14 → 2026-10-20 (-25d) | 2026-12-07 → 2026-11-14 (-23d) |  |  |
| 2 | **Air Valves** | 2026-11-14 → 2026-10-20 (-25d) | 2026-12-07 → 2026-11-14 (-23d) |  |  |
| 4 | **Air valves on less than 315 mm. (In Chamber)** | 2026-11-14 → 2026-10-20 (-25d) | 2026-12-07 → 2026-11-14 (-23d) |  |  |
| B3.33 05 63.02.67 | Land Adjustment & Compaction | 2026-11-14 → 2026-10-20 (-25d) | 2026-11-17 → 2026-10-25 (-23d) |  | 60.32d → 87.04d |
| B3.33 05 63.02.65 | Foundations | 2026-11-18 → 2026-10-25 (-24d) | 2026-11-22 → 2026-10-29 (-24d) |  | 60.32d → 87.04d |
| B3.33 05 63.02.68 | Chambers Walls Conc Cast In Situ | 2026-11-23 → 2026-10-29 (-25d) | 2026-11-26 → 2026-11-03 (-23d) |  | 60.32d → 87.04d |
| B3.33 05 63.02.66 | Chamber Curing, Finishing & Steel Cover | 2026-11-28 → 2026-11-03 (-25d) | 2026-12-02 → 2026-11-09 (-23d) |  | 60.32d → 87.04d |
| B3.33 05 63.02.69 | Valve & Fitting Installation | 2026-12-03 → 2026-11-09 (-24d) | 2026-12-07 → 2026-11-14 (-23d) |  | 60.32d → 87.04d |
| 3 | **Fire Hydrant** | 2026-11-07 → 2026-10-18 (-20d) | 2026-12-15 → 2026-11-09 (-36d) |  |  |
| B3.33 14 19.01.fh38 | Riser Pipe & Flanged Fittings Installation | 2026-11-07 → 2026-10-18 (-20d) | 2026-11-10 → 2026-10-22 (-19d) |  | 73.32d → 95.8d |
| B3.33 14 19.01.fh37 | Firehydrant Fixing/Installation | 2026-11-11 → 2026-10-22 (-20d) | 2026-11-16 → 2026-10-28 (-19d) |  | 73.32d → 95.8d |
| B3.33 14 19.01.fh39 | Backfilling & Compaction | 2026-12-10 → 2026-11-03 (-37d) | 2026-12-15 → 2026-11-09 (-36d) |  | 53.32d → 90.8d |
| Dry Networks | **Dry Networks** | 2026-10-18 → 2026-10-25 (+7d) |  |  |  |
| MV | **Medium Voltage Network** | 2026-10-18 → 2026-10-25 (+7d) | 2026-10-31 → 2026-11-07 (+7d) |  |  |
| Cables | **Cables** | 2026-10-18 → 2026-10-25 (+7d) | 2026-10-31 → 2026-11-07 (+7d) |  |  |
| 3C,500mm2 | **3C,500mm2** | 2026-10-18 → 2026-10-25 (+7d) | 2026-10-31 → 2026-11-07 (+7d) |  |  |
| B2.33 71 49.23.83 | Cable 13.8 kV Unarmored | 2026-10-18 → 2026-10-25 (+7d) | 2026-10-22 → 2026-10-29 (+7d) |  | 73.2d → 73.21d |
| B2.33 71 49.23.84 | Straight joints cables | 2026-10-22 → 2026-10-29 (+7d) | 2026-10-26 → 2026-11-02 (+7d) |  | 73.2d → 73.21d |
| B2.33 71 49.23.85 | Cable Termination | 2026-10-26 → 2026-11-02 (+7d) | 2026-10-31 → 2026-11-07 (+7d) |  | 73.2d → 73.21d |
| LV Network | **Low Voltage Network** | 2026-10-18 → 2026-10-25 (+7d) | 2026-11-24 → 2026-11-07 (-17d) |  |  |
| Duct Banks | **Duct Banks** | 2026-10-18 → 2026-10-25 (+7d) | 2026-11-24 → 2026-11-07 (-17d) |  |  |
| 6 Way | **6 Way** | 2026-10-18 → 2026-10-25 (+7d) | 2026-11-21 → 2026-11-03 (-18d) |  |  |
| B2.33 71 00 02 136 | Excavation | 2026-10-18 → 2026-10-25 (+7d) | 2026-10-20 → 2026-10-27 (+7d) |  | 35.2d → 35.21d |
| B2.33 71 00 02 137 | Shuttering, Steel Fixing Incl. UPVC Pipe & Conc. Cast | 2026-10-20 → 2026-10-27 (+7d) | 2026-10-24 → 2026-10-31 (+7d) |  | 84.2d → 84.21d |
| B2.33 71 00 02 138 | Backfilling & Warrning Tape | 2026-11-18 → 2026-10-31 (-18d) | 2026-11-21 → 2026-11-03 (-18d) |  | 62.32d → 84.21d |
| 8 Way | **8 Way** | 2026-10-20 → 2026-10-27 (+7d) | 2026-11-24 → 2026-11-07 (-17d) |  |  |
| B2.33 71 00 02 139 | Excavation | 2026-10-20 → 2026-10-27 (+7d) | 2026-10-22 → 2026-10-29 (+7d) |  | 35.2d → 35.21d |
| B2.33 71 00 02 140 | Shuttering, Steel Fixing Incl. UPVC Pipe & Conc. Cast | 2026-10-22 → 2026-10-29 (+7d) | 2026-10-26 → 2026-11-02 (+7d) |  | 85.2d → 85.21d |
| B2.33 71 00 02 141 | Backfilling & Warrning Tape | 2026-11-22 → 2026-11-03 (-19d) | 2026-11-24 → 2026-11-07 (-17d) |  | 62.32d → 84.21d |
| Cables | **Cables** | 2026-11-02 → 2026-10-31 (-2d) | 2026-11-05 → 2026-11-04 (-1d) |  |  |
| 4C,10+1C,10mm2 | **4C,10+1C,10mm2** | 2026-11-02 → 2026-10-31 (-2d) | 2026-11-03 → 2026-11-02 (-1d) |  |  |
| B2.33 71 00 01 15 | Cable Pulling | 2026-11-02 → 2026-10-31 (-2d) | 2026-11-03 → 2026-11-02 (-1d) |  | 4.32d → 12.08d |
| 4C,50+1C,25mm2 | **4C,50+1C,25mm2** | 2026-11-04 → 2026-11-02 (-2d) | 2026-11-05 → 2026-11-04 (-1d) |  |  |
| B2.33 71 00 01 16 | Cable Pulling | 2026-11-04 → 2026-11-02 (-2d) | 2026-11-05 → 2026-11-04 (-1d) |  | 4.32d → 12.08d |
| Street Lighting | **Street Lighting** | 2026-11-19 → 2026-10-25 (-25d) |  |  |  |
| Cables | **Cables** | 2026-12-03 → 2026-11-08 (-25d) | 2026-12-09 → 2026-11-15 (-24d) |  |  |
| 4C,10+1C,10mm2 | **4C,10+1C,10mm2** | 2026-12-03 → 2026-11-08 (-25d) | 2026-12-09 → 2026-11-15 (-24d) |  |  |
| B2.33 71 19 142 | Land Adjustment | 2026-12-03 → 2026-11-08 (-25d) | 2026-12-05 → 2026-11-10 (-25d) |  | 56.32d → 83.34d |
| B2.33 71 49.23.152 | Cable Pulling | 2026-12-06 → 2026-11-10 (-26d) | 2026-12-07 → 2026-11-12 (-25d) |  | 56.32d → 83.34d |
| B2.33 71 19 152 | Backfilling | 2026-12-08 → 2026-11-12 (-26d) | 2026-12-09 → 2026-11-15 (-24d) |  | 56.32d → 83.34d |
| SL Poles | **SL Poles** | 2026-11-19 → 2026-10-25 (-25d) | 2026-12-05 → 2026-11-17 (-18d) |  |  |
| Pole (10 M Dbl Arm) | **Pole (10 M Double Arm)** | 2026-11-19 → 2026-10-25 (-25d) | 2026-12-02 → 2026-11-08 (-24d) |  |  |
| B2.33 71 16.79 | Excavation | 2026-11-19 → 2026-10-25 (-25d) | 2026-11-21 → 2026-10-27 (-25d) |  | 56.32d → 83.34d |
| B2.33 71 16.80 | PC & RC Foundation | 2026-11-22 → 2026-10-27 (-26d) | 2026-11-23 → 2026-10-29 (-25d) |  | 56.32d → 83.34d |
| B2.33 71 16.81 | Lighting Poles Installation Incl power box, Cables | 2026-11-24 → 2026-10-29 (-26d) | 2026-11-26 → 2026-11-02 (-24d) |  | 56.32d → 83.34d |
| B2.26.56.19.13 | Lighting Luminares Inst | 2026-11-28 → 2026-11-02 (-26d) | 2026-11-29 → 2026-11-04 (-25d) |  | 56.32d → 83.34d |
| B2.33 71 16.82 | Backfilling, Grouting & Chamfering | 2026-11-30 → 2026-11-04 (-26d) | 2026-12-02 → 2026-11-08 (-24d) |  | 56.32d → 83.34d |
| Pole (16 M Dbl Arm) | **Pole (16 M Double Arm)** | 2026-11-22 → 2026-10-27 (-26d) | 2026-12-05 → 2026-11-17 (-18d) |  |  |
| B2.33 71 16.83 | Excavation | 2026-11-22 → 2026-10-27 (-26d) | 2026-11-23 → 2026-10-29 (-25d) |  | 60.32d → 87.34d |
| B2.33 71 16.84 | PC & RC Foundation | 2026-11-24 → 2026-10-29 (-26d) | 2026-11-26 → 2026-11-02 (-24d) |  | 60.32d → 87.34d |
| B2.33 71 16.85 | Lighting Poles Installation Incl power box, Cables | 2026-11-28 → 2026-11-02 (-26d) | 2026-11-30 → 2026-11-05 (-25d) |  | 60.32d → 87.34d |

| ID | Task | Start | Finish | Total float |
| --- | --- | --- | --- | --- |
| B2.26.56.19.14 | Lighting Luminares Inst | 2026-12-01 → 2026-11-05 (-26d) | 2026-12-02 → 2026-11-08 (-24d) | 60.32d → 87.34d |
| B2.33 71 16.86 | Backfilling, Grouting & Chamfering | 2026-12-03 → 2026-11-16 (-17d) | 2026-12-05 → 2026-11-17 (-18d) | 60.32d → 81.32d |
| SL Pillars | **SL Pillars** | 2026-12-01 → 2026-11-05 (-26d) | 2026-12-03 → 2026-11-09 (-24d) |  |
| B2.33 71 26 032 | Pillars Installation (Internal Wiring) | 2026-12-01 → 2026-11-05 (-26d) | 2026-12-02 → 2026-11-08 (-24d) | 62.32d → 89.34d |
| B2.33 71 26 043 | KWH meter mounting a frame installation | 2026-12-03 → 2026-11-08 (-25d) | 2026-12-03 → 2026-11-09 (-24d) | 62.32d → 89.34d |
| Earthing | **Earthing** | 2026-12-01 → 2026-11-11 (-20d) |  |  |
| B2.33 71 19 41 | Land Adjustment | 2026-12-01 → 2026-11-11 (-20d) | 2026-12-03 → 2026-11-14 (-19d) | 60.32d → 83.32d |
| B2.33 71 19 42 | Earth Rods & Conduits | 2026-12-05 → 2026-11-15 (-20d) | 2026-12-05 → 2026-11-15 (-20d) | 60.32d → 83.32d |
| Telecommunication | **Telecommunication Network** | 2026-10-22 → 2026-10-29 (+7d) | 2026-11-15 → 2026-11-22 (+7d) |  |
| Ducts | **Ducts** | 2026-10-22 → 2026-10-29 (+7d) | 2026-11-09 → 2026-11-16 (+7d) |  |
| (6*50mm) | **Size (6*50mm) HDPE ducts** | 2026-10-22 → 2026-10-29 (+7d) | 2026-11-01 → 2026-11-08 (+7d) |  |
| B2.1.33 81 26.132 | Excavation | 2026-10-22 → 2026-10-29 (+7d) | 2026-10-25 → 2026-11-01 (+7d) | 35.2d → 35.21d |
| B2.1.33 81 26.133 | HDPE Pipe, Shuttering, Steel Fixing & Conc. Cast | 2026-10-25 → 2026-11-01 (+7d) | 2026-10-29 → 2026-11-05 (+7d) | 71.2d → 71.21d |
| B2.1.33 81 26.134 | Backfilling & Warrning Tape | 2026-10-29 → 2026-11-05 (+7d) | 2026-11-01 → 2026-11-08 (+7d) | 71.2d → 71.21d |
| (6*50mm+2*32mm) | **Size (6*50mm+2*32mm) HDPE ducts** | 2026-10-25 → 2026-11-01 (+7d) | 2026-11-04 → 2026-11-11 (+7d) |  |
| B2.1.33 81 26.135 | Excavation | 2026-10-25 → 2026-11-01 (+7d) | 2026-10-27 → 2026-11-03 (+7d) | 35.2d → 35.21d |
| B2.1.33 81 26.136 | HDPE Pipe, Shuttering, Steel Fixing & Conc. Cast | 2026-10-27 → 2026-11-03 (+7d) | 2026-10-31 → 2026-11-07 (+7d) | 86.2d → 86.21d |
| B2.1.33 81 26.137 | Backfilling & Warrning Tape | 2026-11-02 → 2026-11-09 (+7d) | 2026-11-04 → 2026-11-11 (+7d) |  |
| (6*50mm+4*32mm) | **Size (6*50mm+4*32mm) HDPE ducts** | 2026-10-27 → 2026-11-03 (+7d) | 2026-11-05 → 2026-11-12 (+7d) |  |
| B2.1.33 81 26.138 | Excavation | 2026-10-27 → 2026-11-03 (+7d) | 2026-10-29 → 2026-11-05 (+7d) | 35.2d → 35.21d |
| B2.1.33 81 26.139 | HDPE Pipe, Shuttering, Steel Fixing & Conc. Cast | 2026-10-29 → 2026-11-05 (+7d) | 2026-11-02 → 2026-11-09 (+7d) | 84.2d → 84.21d |
| B2.1.33 81 26.140 | Backfilling & Warrning Tape | 2026-11-02 → 2026-11-09 (+7d) | 2026-11-05 → 2026-11-12 (+7d) | 84.2d → 84.21d |
| (2*32mm) | **Size (2*32mm) HDPE ducts** | 2026-10-29 → 2026-11-05 (+7d) | 2026-11-07 → 2026-11-14 (+7d) |  |
| B2.1.33 81 26.141 | Excavation | 2026-10-29 → 2026-11-05 (+7d) | 2026-11-01 → 2026-11-08 (+7d) | 35.2d → 35.21d |
| B2.1.33 81 26.142 | HDPE Pipe, Shuttering, Steel Fixing & Conc. Cast | 2026-11-01 → 2026-11-08 (+7d) | 2026-11-03 → 2026-11-10 (+7d) | 36.2d → 36.21d |
| B2.1.33 81 26.143 | Backfilling & Warrning Tape | 2026-11-03 → 2026-11-10 (+7d) | 2026-11-07 → 2026-11-14 (+7d) | 36.2d → 36.21d |
| (4*32mm) | **Size (4*32mm) HDPE ducts** | 2026-10-29 → 2026-11-05 (+7d) | 2026-11-07 → 2026-11-14 (+7d) |  |
| B2.1.33 81 26.144 | Excavation | 2026-10-29 → 2026-11-05 (+7d) | 2026-11-01 → 2026-11-08 (+7d) | 35.2d → 35.21d |
| B2.1.33 81 26.145 | HDPE Pipe, Shuttering, Steel Fixing & Conc. Cast | 2026-11-01 → 2026-11-08 (+7d) | 2026-11-03 → 2026-11-10 (+7d) | 85.2d → 85.21d |
| B2.1.33 81 26.146 | Backfilling & Warrning Tape | 2026-11-03 → 2026-11-10 (+7d) | 2026-11-07 → 2026-11-14 (+7d) | 85.2d → 85.21d |
| (6*50mm+6*32mm) | **Size (6*50mm+6*32mm) HDPE ducts** | 2026-11-01 → 2026-11-08 (+7d) | 2026-11-09 → 2026-11-16 (+7d) |  |
| B2.1.33 81 26.147 | Excavation | 2026-11-01 → 2026-11-08 (+7d) | 2026-11-03 → 2026-11-10 (+7d) | 35.2d → 35.21d |
| B2.1.33 81 26.148 | HDPE Pipe, Shuttering, Steel Fixing & Conc. Cast | 2026-11-03 → 2026-11-10 (+7d) | 2026-11-05 → 2026-11-12 (+7d) | 67.2d → 67.21d |
| B2.1.33 81 26.149 | Backfilling & Warrning Tape | 2026-11-05 → 2026-11-12 (+7d) | 2026-11-09 → 2026-11-16 (+7d) | 67.2d → 67.21d |
| Manholes | **Manholes** | 2026-11-03 → 2026-11-10 (+7d) | 2026-11-15 → 2026-11-22 (+7d) |  |
| Manhole Type 1 | **Manhole Type 1** | 2026-11-03 → 2026-11-10 (+7d) | 2026-11-11 → 2026-11-18 (+7d) |  |
| B2.31 23 00.623 | Excavation | 2026-11-03 → 2026-11-10 (+7d) | 2026-11-05 → 2026-11-12 (+7d) | 35.2d → 35.21d |
| B2.33 71 00.254 | Manhole Installation | 2026-11-05 → 2026-11-12 (+7d) | 2026-11-08 → 2026-11-15 (+7d) | 35.2d → 35.21d |
| B2.33 71 00.255 | Backfilling & Warrning Tape | 2026-11-08 → 2026-11-15 (+7d) | 2026-11-11 → 2026-11-18 (+7d) | 35.2d → 35.21d |
| Manhole Type 2 | **Manhole Type 2** | 2026-11-05 → 2026-11-12 (+7d) | 2026-11-15 → 2026-11-22 (+7d) |  |
| B2.31 23 00.625 | Excavation | 2026-11-05 → 2026-11-12 (+7d) | 2026-11-08 → 2026-11-15 (+7d) | 37.2d → 37.21d |
| B2.33 71 00.258 | Manhole Installation | 2026-11-08 → 2026-11-15 (+7d) | 2026-11-11 → 2026-11-18 (+7d) | 37.2d → 37.21d |
| B2.33 71 00.259 | Backfilling & Warrning Tape | 2026-11-11 → 2026-11-18 (+7d) | 2026-11-15 → 2026-11-22 (+7d) | 37.2d → 37.21d |
| Crossing Ducts | **Road Crossing Ducts** | 2026-11-03 → 2026-11-10 (+7d) | 2026-11-11 → 2026-11-18 (+7d) |  |
| 1 | **Size (6X50mm) HDPE** | 2026-11-03 → 2026-11-10 (+7d) | 2026-11-11 → 2026-11-18 (+7d) |  |
| B2.31 23 00.622 | Excavation | 2026-11-03 → 2026-11-10 (+7d) | 2026-11-05 → 2026-11-12 (+7d) | 67.2d → 67.21d |
| B2.33 71 00.252 | Shuttering, Steel Fixing Incl. UPVC Pipe & Conc. Cast | 2026-11-05 → 2026-11-12 (+7d) | 2026-11-08 → 2026-11-15 (+7d) | 67.2d → 67.21d |
| B2.33 71 00.253 | Backfilling & Warrning Tape | 2026-11-08 → 2026-11-15 (+7d) | 2026-11-11 → 2026-11-18 (+7d) | 67.2d → 67.21d |
| Earth & Road Works | **Earth & Road Works** |  | 2026-12-03 → 2026-11-25 (-8d) |  |
| Earth Layers | **Earth Layers** |  | 2026-10-11 → 2026-10-18 (+7d) |  |
| B1.2.32 11 13.01.13_R | Subgrade(Rem) | 2026-10-10 → 2026-10-17 (+7d) | 2026-10-11 → 2026-10-18 (+7d) |  |
| B1.2.32 11 23.01.13_R | Aggregate Base Course(Rem) | 2026-10-10 → 2026-10-17 (+7d) | 2026-10-11 → 2026-10-18 (+7d) |  |
| Interlock | **Interlock** | 2026-10-25 → 2026-10-15 (-10d) | 2026-10-27 → 2026-10-19 (-8d) |  |
| B1.2.32 14 13.13.13 | 60mm thick - Interlocking Block Pavers | 2026-10-25 → 2026-10-15 (-10d) | 2026-10-27 → 2026-10-19 (-8d) | 7.32d → 20.82d |
| Curbstone | **Curbstone** | 2026-10-28 → 2026-10-19 (-9d) | 2026-11-12 → 2026-11-15 (+3d) |  |
| Pre Install | **Pre-Installation** | 2026-10-28 → 2026-10-19 (-9d) | 2026-11-07 → 2026-10-29 (-9d) |  |
| B2.31 23 00.361 | Excavation | 2026-10-28 → 2026-10-19 (-9d) | 2026-10-29 → 2026-10-21 (-8d) | 7.32d → 20.82d |
| B1.2.32 14 13.13.213 | PCC | 2026-10-31 → 2026-10-21 (-10d) | 2026-11-02 → 2026-10-25 (-8d) | 21.32d → 34.82d |
| 32 16 13.0013 | Haunching | 2026-11-03 → 2026-10-25 (-9d) | 2026-11-07 → 2026-10-29 (-9d) | 21.32d → 34.82d |
| Installation | **Installation** | 2026-11-08 → 2026-10-29 (-10d) | 2026-11-10 → 2026-11-02 (-8d) |  |
| B1.2.32 16.13.01.13 | Curb Stone, Type K1 | 2026-11-08 → 2026-10-29 (-10d) | 2026-11-10 → 2026-11-02 (-8d) | 21.32d → 34.82d |
| B1.2.32 16.13.02.12 | Dropped Curb, Type K3 | 2026-11-09 → 2026-10-31 (-9d) | 2026-11-10 → 2026-11-02 (-8d) | 21.32d → 34.82d |
| B1.2.32 16.13.03.13 | Edge Curb, Type K4 | 2026-11-09 → 2026-10-31 (-9d) | 2026-11-10 → 2026-11-02 (-8d) | 21.32d → 34.82d |
| B1.2.32 16.13.0413 | Heel Curb, Type K5 | 2026-11-09 → 2026-10-31 (-9d) | 2026-11-10 → 2026-11-02 (-8d) | 21.32d → 34.82d |
| B1.2.32 16.13.05.12 | Transition Curb | 2026-11-09 → 2026-10-31 (-9d) | 2026-11-10 → 2026-11-02 (-8d) | 21.32d → 34.82d |
| Finishing | **Finishing** | 2026-11-11 → 2026-11-12 (+1d) | 2026-11-12 → 2026-11-15 (+3d) |  |
| 32 16 13.013 | Finishing, Fareface | 2026-11-11 → 2026-11-12 (+1d) | 2026-11-12 → 2026-11-15 (+3d) | 21.32d → 26d |
| Asphalt Layers | **Asphalt Layers** |  | 2026-11-29 → 2026-11-21 (-8d) |  |
| B1.2.32 11 26.01.13_R | Bituminous Base Course including Prime Coat (MC1) and tack coat (RC2)(Rem) | 2026-10-10 → 2026-10-17 (+7d) | 2026-10-11 → 2026-10-18 (+7d) |  |
| B1.2.32 12 16.01.13 | Bituminous concrete Wearing Course, including tack coat (RC2) | 2026-11-24 → 2026-11-15 (-9d) | 2026-11-29 → 2026-11-21 (-8d) | 12.32d → 25.82d |

| ID | Task | Start | Finish | Complete | Total float |
| --- | --- | --- | --- | --- | --- |
| Pavement Marking | **Pavement Marking** | 2026-11-30 → 2026-11-21 (-9d) | 2026-12-01 → 2026-11-23 (-8d) |  |  |
| B1.2.32 17 23.01.13 | Retroreflective Thermoplastic White Traffic lines | 2026-11-30 → 2026-11-21 (-9d) | 2026-12-01 → 2026-11-23 (-8d) |  | 56.32d → 69.82d |
| B1.2.32 17 23.02.13 | Retroreflective Thermoplastic Yellow, Traffic lines | 2026-11-30 → 2026-11-21 (-9d) | 2026-12-01 → 2026-11-23 (-8d) |  | 56.32d → 69.82d |
| Traffic Signs | **Traffic Signs** | 2026-10-31 → 2026-10-21 (-10d) | 2026-12-03 → 2026-11-25 (-8d) |  |  |
| Pre Install | **Pre-Installation** | 2026-10-31 → 2026-10-21 (-10d) | 2026-11-03 → 2026-10-26 (-8d) |  |  |
| B2.31 23 00.371 | Excavation | 2026-10-31 → 2026-10-21 (-10d) | 2026-11-01 → 2026-10-24 (-8d) |  | 7.32d → 20.82d |
| 10 14 53.013 | Foundation | 2026-11-02 → 2026-10-24 (-9d) | 2026-11-03 → 2026-10-26 (-8d) |  | 80.32d → 93.82d |
| Installation | **Installation** | 2026-12-02 → 2026-11-23 (-9d) | 2026-12-03 → 2026-11-25 (-8d) |  |  |
| B1.2.10 14 14.01.13 | Ground mounted, 1 Sheet Alumenium, Single post | 2026-12-02 → 2026-11-23 (-9d) | 2026-12-03 → 2026-11-25 (-8d) |  | 56.32d → 69.82d |
| B1.2.10 14 53.0113 | 1 Sheet Alumenium, Single post | 2026-12-02 → 2026-11-23 (-9d) | 2026-12-03 → 2026-11-25 (-8d) |  | 56.32d → 69.82d |
| Landscape | **Landscape** | 2026-11-02 → 2026-10-24 (-9d) | 2026-11-23 → 2026-11-15 (-8d) |  |  |
| Fences | **Fences** | 2026-11-02 → 2026-10-24 (-9d) | 2026-11-23 → 2026-11-15 (-8d) |  |  |
| (ZATCA HCIS) | **Steel fence (ZATCA HCIS)** | 2026-11-02 → 2026-10-24 (-9d) | 2026-11-23 → 2026-11-15 (-8d) |  |  |
| B7.32 31 26.01-19 | Earthwork | 2026-11-02 → 2026-10-24 (-9d) | 2026-11-08 → 2026-10-31 (-8d) |  | 7.32d → 20.82d |
| B7.32 31 26.01-111 | Foundation | 2026-11-09 → 2026-10-31 (-9d) | 2026-11-16 → 2026-11-08 (-8d) |  | 7.32d → 20.82d |
| B7.32 31 26.01-113 | Fence Installation | 2026-11-17 → 2026-11-08 (-9d) | 2026-11-23 → 2026-11-15 (-8d) |  | 7.32d → 20.82d |
| Wet Networks | **Wet Networks** |  | 2026-12-09 → 2026-11-17 (-22d) |  |  |
| Sewerage Network | **Sewerage Network** |  | 2026-11-08 → 2026-11-15 (+7d) |  |  |
| GRP | **GRP Pipes** |  | 2026-10-17 → 2026-10-14 (-3d) |  |  |
| 200 | **?150** |  | 2026-10-17 → 2026-10-14 (-3d) |  |  |
| 1 | **Depth From 1.5m to 2.5m** |  | 2026-10-12 → 2026-10-14 (+2d) |  |  |
| B5.33 31 00.01.02.28_R | Pipe Laying(Rem) |  | 2026-10-10 A | 12% → 100% | 110.96d → none |
| B5.33 31 00.01.02.32_R | Embedment & Test(Rem) |  | 2026-10-11 → 2026-10-14 (+3d) | 12% → 80% | 110.1d → 112.59d |
| B5.33 31 00.01.02.36_R | Backfilling & Warrning Tape(Rem) |  | 2026-10-12 A | 12% → 100% | 109.31d → none |
| 4 | **Depth From 2.5m to 3.5m** |  | 2026-10-17 → 2026-10-14 (-3d) |  |  |
| B5.33 31 00.01.02.34_R | Embedment & Test(Rem) |  | 2026-10-11 → 2026-10-14 (+3d) | 12% → 80% | 84.1d → 112.59d |
| B5.33 31 00.01.02.38_R | Backfilling & Warrning Tape(Rem) |  | 2026-10-17 → 2026-09-30 A (-17d) | 17% → 100% | 78.52d → none |
| Manholes | **Manholes ?1200** |  | 2026-11-08 → 2026-11-15 (+7d) |  |  |
| 3 | **Depth From 1.5m to 2.5m** |  | 2026-11-08 → 2026-11-15 (+7d) |  |  |
| B6.33 05 39.01.747_R | Manhole Installation(Rem) |  | 2026-10-07 → 2026-10-14 (+7d) |  |  |
| B6.33 05 39.01.757_R | Test, Internal Finishing, Benching & Cover(Rem) |  | 2026-10-08 → 2026-10-15 (+7d) |  |  |
| B6.33 05 39.01.767_R | Backfilling(Rem) |  | 2026-11-08 → 2026-11-15 (+7d) |  |  |
| 4 | **Depth From 2.5m to 3.5m** |  | 2026-11-08 → 2026-11-15 (+7d) |  |  |
| B6.33 05 39.01.797_R | Manhole Installation(Rem) |  | 2026-10-07 → 2026-10-14 (+7d) |  |  |
| B6.33 05 39.01.807_R | Test, Internal Finishing, Benching & Cover(Rem) |  | 2026-10-08 → 2026-10-15 (+7d) |  |  |
| B6.33 05 39.01.817_R | Backfilling(Rem) |  | 2026-11-08 → 2026-11-15 (+7d) |  |  |
| GRP1 | **HDPE Pipes** | 2026-10-07 → 2026-10-14 (+7d) | 2026-11-08 → 2026-11-15 (+7d) |  |  |
| 200 | **?160** | 2026-10-07 → 2026-10-14 (+7d) | 2026-11-08 → 2026-11-15 (+7d) |  |  |
| 1 | **Depth From 0.0m to 1.5m** | 2026-10-07 → 2026-10-14 (+7d) | 2026-11-08 → 2026-11-15 (+7d) |  |  |
| B5.33 31 23.01-1.20 | Excavation | 2026-10-07 → 2026-10-14 (+7d) | 2026-10-18 → 2026-10-25 (+7d) |  |  |
| B5.33 31 23.01-1.22 | Sand Bedding | 2026-10-19 → 2026-10-26 (+7d) | 2026-10-21 → 2026-10-28 (+7d) |  |  |
| B5.33 31 23.01-1.24 | Pipe Laying | 2026-10-22 → 2026-10-29 (+7d) | 2026-10-25 → 2026-11-01 (+7d) |  |  |
| B5.33 31 23.01-1.26 | Embedment & Test | 2026-10-26 → 2026-11-02 (+7d) | 2026-10-31 → 2026-11-07 (+7d) |  |  |
| B5.33 31 23.01-1.28 | Backfilling & Warrning Tape | 2026-11-01 → 2026-11-08 (+7d) | 2026-11-08 → 2026-11-15 (+7d) |  |  |
| Stormwater Network | **Stormwater Network** |  | 2026-11-03 → 2026-11-10 (+7d) |  |  |
| Box Cul. | **Box Cul.** |  | 2026-11-03 → 2026-11-10 (+7d) |  |  |
| B6. 33 42 13.46_R | Box Reinforced Conc. Slab(Rem) |  | 2026-10-07 → 2026-10-14 (+7d) | 90% → 95% | 52.62d → 52.77d |
| B6. 33 42 13.56_R | Curing & Water Proofing(Rem) |  | 2026-10-07 → 2026-10-14 (+7d) | 75% → 80% | 45.3d → 45.42d |
| B6. 33 42 13.66 | Backfilling & Warrning Tape | 2026-10-07 → 2026-10-14 (+7d) | 2026-10-14 → 2026-10-21 (+7d) |  | 50.3d → 50.42d |
| Conc. Ch | **Concrete Chambers** |  | 2026-11-03 → 2026-11-10 (+7d) |  |  |
| Conc. Ch 2.53.51 | **Size 3.0 x 3.0 m, depth 1.5 to 2.5** |  | 2026-10-20 → 2026-10-27 (+7d) |  |  |
| B6.33 05 63.013 | Cast Iron Steps Installation, Epoxy Paint & Internal Finishing | 2026-10-07 → 2026-10-14 (+7d) | 2026-10-15 → 2026-10-22 (+7d) |  | 45.3d → 45.42d |
| B6.33 05 63.014 | Waterproofing Tanking Membrane & Protection | 2026-10-15 → 2026-10-22 (+7d) | 2026-10-20 → 2026-10-27 (+7d) |  | 45.3d → 45.42d |
| Conc. Ch 3.54.5 | **Size 3.0 x 1.5 m, depth 1.5 to 2.5** |  | 2026-10-25 → 2026-11-01 (+7d) |  |  |
| B6.33 05 63.023 | Cast Iron Steps Installation, Epoxy Paint & Internal Finishing | 2026-10-07 → 2026-10-14 (+7d) | 2026-10-13 → 2026-10-20 (+7d) |  | 51.3d → 51.42d |
| B6.33 05 63.024 | Waterproofing Tanking Membrane & Protection | 2026-10-20 → 2026-10-27 (+7d) | 2026-10-25 → 2026-11-01 (+7d) |  | 45.3d → 45.42d |
| Conc. Ch 3.54.51 | **Size 2.5 x 1.5 m, depth 1.5 to 2.5** |  | 2026-10-29 → 2026-11-05 (+7d) |  |  |
| B6.33 05 63.033 | Cast Iron Steps Installation, Epoxy Paint & Internal Finishing | 2026-10-07 → 2026-10-14 (+7d) | 2026-10-12 → 2026-10-19 (+7d) |  | 56.3d → 56.42d |
| B6.33 05 63.034 | Waterproofing Tanking Membrane & Protection | 2026-10-25 → 2026-11-01 (+7d) | 2026-10-29 → 2026-11-05 (+7d) |  | 45.3d → 45.42d |
| Conc. Ch 2.53.5 | **Size 2.0 x 1.5 m, depth 2.5 to 3.5** |  | 2026-11-03 → 2026-11-10 (+7d) |  |  |
| B6.33 05 63.043 | Cast Iron Steps Installation, Epoxy Paint & Internal Finishing | 2026-10-07 → 2026-10-14 (+7d) | 2026-10-12 → 2026-10-19 (+7d) |  | 48.3d → 48.42d |
| B6.33 05 63.044 | Waterproofing Tanking Membrane & Protection | 2026-10-29 → 2026-11-05 (+7d) | 2026-11-03 → 2026-11-10 (+7d) |  | 45.3d → 45.42d |
| Potable Water | **Potable Water Network** |  | 2026-10-11 → 2026-10-18 (+7d) |  |  |
| HDPE | **HDPE Pipes** |  | 2026-10-11 → 2026-10-18 (+7d) |  |  |
| ?110mm | **?110mm** |  | 2026-10-11 → 2026-10-18 (+7d) |  |  |
| Depth: 0.0m - 1.5m | **Depth: 0.0m - 1.5m** |  | 2026-10-10 → 2026-10-17 (+7d) |  |  |
| B3.33 14 13-91_R | Excavation(Rem) | 2026-10-07 → 2026-10-08 A (+1d) | 2026-10-10 → 2026-10-17 (+7d) | 0% → 19% |  |
| B3.33 14 13-95_R | Sand Bedding(Rem) | 2026-10-07 → 2026-10-10 A (+3d) | 2026-10-10 → 2026-10-17 (+7d) | 0% → 19% | 15.72d → 15.84d |
| B3.33 14 13-99_R | Pipe Laying(Rem) | 2026-10-07 → 2026-10-11 A (+4d) | 2026-10-10 → 2026-10-17 (+7d) | 0% → 19% | 15.72d → 15.84d |
| B3.33 14 13-103_R | Embedment & Test(Rem) | 2026-10-07 → 2026-10-12 A (+5d) | 2026-10-10 → 2026-10-17 (+7d) | 0% → 19% | 15.72d → 15.84d |

| ID | Task | Start | Finish | Complete | Total float |
| --- | --- | --- | --- | --- | --- |
| B3.33 14 13-107_R | Backfilling & Warrning Tape(Rem) | 2026-10-07 → 2026-10-13 A (+6d) | 2026-10-10 → 2026-10-17 (+7d) | 0% → 19% | 15.72d → 15.84d |
| Depth: 1.51m - 2.5m | **Depth: 1.51m - 2.5m** |  | 2026-10-11 → 2026-10-18 (+7d) |  |  |
| B3.33 14 13-101_R | Pipe Laying(Rem) | 2026-10-07 → 2026-10-14 (+7d) | 2026-10-10 → 2026-10-17 (+7d) |  |  |
| B3.33 14 13-93_R | Excavation(Rem) | 2026-10-07 → 2026-10-14 (+7d) | 2026-10-10 → 2026-10-17 (+7d) |  |  |
| B3.33 14 13-97_R | Sand Bedding(Rem) | 2026-10-07 → 2026-10-14 (+7d) | 2026-10-10 → 2026-10-17 (+7d) |  |  |
| B3.33 14 13-105_R | Embedment & Test(Rem) | 2026-10-07 → 2026-10-14 (+7d) | 2026-10-10 → 2026-10-17 (+7d) |  |  |
| B3.33 14 13-109_R | Backfilling & Warrning Tape(Rem) | 2026-10-07 → 2026-10-14 (+7d) | 2026-10-11 → 2026-10-18 (+7d) |  |  |
| Fire Fighting | **Fire Fighting Network** |  | 2026-12-09 → 2026-11-17 (-22d) |  |  |
| HDPE | **HDPE Pipes** |  | 2026-12-03 → 2026-10-20 (-44d) |  |  |
| ?250mm | **?250mm** |  | 2026-12-03 → 2026-10-20 (-44d) |  |  |
| Depth: 0.0m - 1.5m | **Depth: 0.0m - 1.5m** |  | 2026-12-03 → 2026-10-19 (-45d) |  |  |
| B3.1. 33 14 13-11107 | Backfilling & Warrning Tape | 2026-11-29 → 2026-10-06 A (-54d) | 2026-12-03 → 2026-10-19 (-45d) | 0% → 12% | 53.32d → 98.92d |
| Depth: 1.51m - 2.5m | **Depth: 1.51m - 2.5m** | 2026-10-11 → 2026-10-04 (-7d) | 2026-11-24 → 2026-10-20 (-35d) |  |  |
| B3.1. 33 14 13-1193 | Excavation | 2026-10-11 → 2026-10-04 A (-7d) | 2026-10-14 → 2026-10-18 (+4d) | 0% → 12% | 53.32d → 109.8d |
| B3.1. 33 14 13-1197 | Sand Bedding | 2026-10-15 → 2026-10-05 A (-10d) | 2026-10-19 → 2026-10-18 (-1d) | 0% → 12% | 53.32d → 109.8d |
| B3.1. 33 14 13-11101 | Pipe Laying | 2026-10-20 → 2026-10-07 A (-13d) | 2026-10-24 → 2026-10-18 (-6d) | 0% → 12% | 53.32d → 90.8d |
| B3.1. 33 14 13-11105 | Embedment & Test | 2026-10-25 → 2026-10-10 A (-15d) | 2026-10-31 → 2026-10-20 (-11d) | 0% → 12% | 53.32d → 84.04d |
| B3.1. 33 14 13-11109 | Backfilling & Warrning Tape | 2026-11-19 → 2026-10-12 A (-38d) | 2026-11-24 → 2026-10-19 (-36d) | 0% → 12% | 66.32d → 103.92d |
| Valves & Chambers | **Valves & Chambers** | 2026-11-01 → 2026-10-20 (-12d) | 2026-11-28 → 2026-11-17 (-11d) |  |  |
| 2 | **Air Valves** | 2026-11-01 → 2026-10-20 (-12d) | 2026-11-28 → 2026-11-17 (-11d) |  |  |
| 4 | **Air valves on less than 315 mm. (In Chamber)** | 2026-11-01 → 2026-10-20 (-12d) | 2026-11-28 → 2026-11-17 (-11d) |  |  |
| B3.33 05 63.02.62 | Land Adjustment & Compaction | 2026-11-01 → 2026-10-20 (-12d) | 2026-11-04 → 2026-10-25 (-10d) |  | 53.32d → 84.04d |
| B3.33 05 63.02.60 | Foundations | 2026-11-05 → 2026-10-25 (-11d) | 2026-11-10 → 2026-10-31 (-10d) |  | 53.32d → 84.04d |
| B3.33 05 63.02.63 | Chambers Walls Conc Cast In Situ | 2026-11-11 → 2026-10-31 (-11d) | 2026-11-16 → 2026-11-05 (-11d) |  | 53.32d → 84.04d |
| B3.33 05 63.02.61 | Chamber Curing, Finishing & Steel Cover | 2026-11-17 → 2026-11-05 (-12d) | 2026-11-23 → 2026-11-12 (-11d) |  | 53.32d → 84.04d |
| B3.33 05 63.02.64 | Valve & Fitting Installation | 2026-11-24 → 2026-11-12 (-12d) | 2026-11-28 → 2026-11-17 (-11d) |  | 53.32d → 84.04d |
| 3 | **Fire Hydrant** | 2026-10-25 → 2026-10-18 (-7d) | 2026-12-09 → 2026-11-03 (-36d) |  |  |
| B3.33 14 19.01.fh35 | Riser Pipe & Flanged Fittings Installation | 2026-10-25 → 2026-10-18 (-7d) | 2026-10-28 → 2026-10-22 (-6d) |  | 79.32d → 90.8d |
| B3.33 14 19.01.fh34 | Firehydrant Fixing/Installation | 2026-10-29 → 2026-10-22 (-7d) | 2026-11-03 → 2026-10-28 (-6d) |  | 79.32d → 90.8d |
| B3.33 14 19.01.fh36 | Backfilling & Compaction | 2026-12-05 → 2026-10-28 (-38d) | 2026-12-09 → 2026-11-03 (-36d) |  | 53.32d → 90.8d |
| Dry Networks | **Dry Networks** |  | 2026-12-05 → 2026-12-10 (+5d) |  |  |
| MV | **Medium Voltage Network** | 2026-10-17 → 2026-10-14 (-3d) | 2026-11-02 → 2026-10-29 (-4d) |  |  |
| Duct Banks | **Duct Banks** | 2026-10-17 → 2026-10-14 (-3d) | 2026-11-02 → 2026-10-29 (-4d) |  |  |
| 2 Way | **2 Way** | 2026-10-17 → 2026-10-14 (-3d) | 2026-11-02 → 2026-10-29 (-4d) |  |  |
| B2.31 23 00.640 | Excavation | 2026-10-17 → 2026-10-14 (-3d) | 2026-10-21 → 2026-10-18 (-3d) |  | 78.52d → 87.32d |
| B2.33 71 00.288 | Shuttering, Steel Fixing Incl. UPVC Pipe & Conc. Cast | 2026-10-21 → 2026-10-19 (-2d) | 2026-10-29 → 2026-10-26 (-3d) |  | 86.52d → 95.32d |
| B2.33 71 00.289 | Backfilling & Warrning Tape | 2026-10-29 → 2026-10-27 (-2d) | 2026-11-02 → 2026-10-29 (-4d) |  | 86.52d → 95.32d |
| LV Network | **Low Voltage Network** | 2026-10-10 → 2026-10-17 (+7d) | 2026-12-05 → 2026-12-10 (+5d) |  |  |
| Duct Banks | **Duct Banks** | 2026-10-21 → 2026-10-19 (-2d) | 2026-12-05 → 2026-12-10 (+5d) |  |  |
| 2 Way | **2 Way** | 2026-10-21 → 2026-10-19 (-2d) | 2026-12-05 → 2026-12-10 (+5d) |  |  |
| B2.33 71 00 02 112 | Excavation | 2026-10-21 → 2026-10-19 (-2d) | 2026-10-24 → 2026-10-20 (-4d) |  | 78.52d → 87.32d |
| B2.33 71 00 02 113 | Shuttering, Steel Fixing Incl. UPVC Pipe & Conc. Cast | 2026-10-24 → 2026-10-21 (-3d) | 2026-10-27 → 2026-10-24 (-3d) |  | 92.52d → 101.32d |
| B2.33 71 00 02 114 | Backfilling & Warrning Tape | 2026-12-02 → 2026-12-08 (+6d) | 2026-12-05 → 2026-12-10 (+5d) |  | 62.32d → 63.32d |
| 4 Way | **4 Way** | 2026-10-24 → 2026-10-21 (-3d) | 2026-11-02 → 2026-10-29 (-4d) |  |  |
| B2.33 71 00 02 115 | Excavation | 2026-10-24 → 2026-10-21 (-3d) | 2026-10-26 → 2026-10-22 (-4d) |  | 78.52d → 87.32d |
| B2.33 71 00 02 116 | Shuttering, Steel Fixing Incl. UPVC Pipe & Conc. Cast | 2026-10-26 → 2026-10-24 (-2d) | 2026-10-29 → 2026-10-26 (-3d) |  | 87.52d → 96.32d |
| B2.33 71 00 02 117 | Backfilling & Warrning Tape | 2026-10-29 → 2026-10-27 (-2d) | 2026-11-02 → 2026-10-29 (-4d) |  | 87.52d → 96.32d |
| 6 Way | **6 Way** | 2026-10-26 → 2026-10-24 (-2d) | 2026-11-04 → 2026-11-01 (-3d) |  |  |
| B2.33 71 00 02 118 | Excavation | 2026-10-26 → 2026-10-24 (-2d) | 2026-10-28 → 2026-10-25 (-3d) |  | 78.52d → 87.32d |
| B2.33 71 00 02 119 | Shuttering, Steel Fixing Incl. UPVC Pipe & Conc. Cast | 2026-10-28 → 2026-10-26 (-2d) | 2026-11-01 → 2026-10-28 (-4d) |  | 80.52d → 89.32d |
| B2.33 71 00 02 120 | Backfilling & Warrning Tape | 2026-11-01 → 2026-10-29 (-3d) | 2026-11-04 → 2026-11-01 (-3d) |  | 85.52d → 94.32d |
| 8 Way | **8 Way** | 2026-10-28 → 2026-10-26 (-2d) | 2026-11-07 → 2026-11-03 (-4d) |  |  |
| B2.33 71 00 02 121 | Excavation | 2026-10-28 → 2026-10-26 (-2d) | 2026-10-31 → 2026-10-27 (-4d) |  | 78.52d → 87.32d |
| B2.33 71 00 02 122 | Shuttering, Steel Fixing Incl. UPVC Pipe & Conc. Cast | 2026-10-31 → 2026-10-28 (-3d) | 2026-11-03 → 2026-10-31 (-3d) |  | 78.52d → 87.32d |
| B2.33 71 00 02 123 | Backfilling & Warrning Tape | 2026-11-03 → 2026-11-01 (-2d) | 2026-11-07 → 2026-11-03 (-4d) |  | 83.52d → 92.32d |
| Cables | **Cables** | 2026-10-10 → 2026-10-17 (+7d) | 2026-11-05 → 2026-11-02 (-3d) |  |  |
| 4C,10+1C,10mm2 | **4C,10+1C,10mm2** | 2026-10-10 → 2026-10-17 (+7d) | 2026-10-11 → 2026-10-18 (+7d) |  |  |
| B2.33 71 00 01 12 | Cable Pulling | 2026-10-10 → 2026-10-17 (+7d) | 2026-10-11 → 2026-10-18 (+7d) |  |  |
| 4C,50+1C,25mm2 | **4C,50+1C,25mm2** | 2026-11-03 → 2026-11-01 (-2d) | 2026-11-05 → 2026-11-02 (-3d) |  |  |
| B2.33 71 00 01 13 | Cable Pulling | 2026-11-03 → 2026-11-01 (-2d) | 2026-11-05 → 2026-11-02 (-3d) |  | 78.52d → 87.32d |
| Street Lighting | **Street Lighting** |  | 2026-11-12 → 2026-11-16 (+4d) |  |  |
| SL Poles | **SL Poles** |  | 2026-11-10 → 2026-11-09 (-1d) |  |  |
| Pole (10 M Sngl Arm) | **Pole (10 M Single Arm)** |  | 2026-10-15 → 2026-10-22 (+7d) |  |  |
| B2.33 71 16.71_R | Excavation(Rem) | 2026-10-07 → 2026-10-14 (+7d) | 2026-10-10 → 2026-10-17 (+7d) |  |  |
| B2.33 71 16.72_R | PC & RC Foundation(Rem) | 2026-10-07 → 2026-10-14 (+7d) | 2026-10-10 → 2026-10-17 (+7d) |  |  |
| B2.33 71 16.73_R | Lighting Poles Installation Incl power box, Cables(Rem) | 2026-10-07 → 2026-10-14 (+7d) | 2026-10-10 → 2026-10-17 (+7d) |  |  |
| B2.26.56.19.11 | Lighting Luminares Inst | 2026-10-10 → 2026-10-17 (+7d) | 2026-10-12 → 2026-10-19 (+7d) |  |  |
| B2.33 71 16.74 | Backfilling, Grouting & Chamfering | 2026-10-12 → 2026-10-19 (+7d) | 2026-10-15 → 2026-10-22 (+7d) |  |  |
| Pole (10 M Dbl Arm) | **Pole (10 M Double Arm)** |  | 2026-10-24 → 2026-10-31 (+7d) |  |  |
| B2.33 71 16.75_R | Excavation(Rem) | 2026-10-17 → 2026-10-22 (+5d) | 2026-10-18 → 2026-10-25 (+7d) |  | 11.32d → 11.34d |

| ID | Task | Start | Finish | Complete | Total float |
| --- | --- | --- | --- | --- | --- |
| B2.33 71 16.76_R | PC & RC Foundation(Rem) | 2026-10-17 → 2026-10-22 (+5d) | 2026-10-18 → 2026-10-25 (+7d) |  | 11.32d → 11.34d |
| B2.33 71 16.77_R | Lighting Poles Installation Incl power box, Cables(Rem) | 2026-10-17 → 2026-10-22 (+5d) | 2026-10-18 → 2026-10-25 (+7d) |  | 11.32d → 11.34d |
| B2.26.56.19.12 | Lighting Luminares Inst | 2026-10-19 → 2026-10-25 (+6d) | 2026-10-20 → 2026-10-27 (+7d) |  | 11.32d → 11.34d |
| B2.33 71 16.78 | Backfilling, Grouting & Chamfering | 2026-10-21 → 2026-10-27 (+6d) | 2026-10-24 → 2026-10-31 (+7d) |  | 11.32d → 11.34d |
| Pole (12 M Sngl Arm) | **Pole (12 M Single Arm)** |  | 2026-11-10 → 2026-11-09 (-1d) |  |  |
| B2.33 71 16.116_R | Excavation(Rem) | 2026-11-03 → 2026-11-01 (-2d) | 2026-11-04 → 2026-11-03 (-1d) |  | 1.32d → 9.08d |
| B2.33 71 16.126_R | PC & RC Foundation(Rem) | 2026-11-03 → 2026-11-01 (-2d) | 2026-11-04 → 2026-11-03 (-1d) |  | 1.32d → 9.08d |
| B2.33 71 16.136_R | Lighting Poles Installation Incl power box, Cables(Rem) | 2026-11-03 → 2026-11-01 (-2d) | 2026-11-04 → 2026-11-03 (-1d) |  | 1.32d → 9.08d |
| B2.26.56.19.29 | Lighting Luminares Inst | 2026-11-05 → 2026-11-03 (-2d) | 2026-11-07 → 2026-11-05 (-2d) |  | 1.32d → 9.08d |
| B2.33 71 16.146 | Backfilling, Grouting & Chamfering | 2026-11-08 → 2026-11-05 (-3d) | 2026-11-10 → 2026-11-09 (-1d) |  | 1.32d → 9.08d |
| Earthing | **Earthing** | 2026-11-05 → 2026-11-09 (+4d) | 2026-11-12 → 2026-11-16 (+4d) |  |  |
| B2.33 71 19 38 | Land Adjustment | 2026-11-05 → 2026-11-09 (+4d) | 2026-11-07 → 2026-11-10 (+3d) |  | 5.32d → 8.32d |
| B2.33 71 19 39 | Earth Rods & Conduits | 2026-11-08 → 2026-11-11 (+3d) | 2026-11-10 → 2026-11-14 (+4d) |  | 5.32d → 8.32d |
| B2.33 71 19 40 | Backfilling | 2026-11-11 → 2026-11-15 (+4d) | 2026-11-12 → 2026-11-16 (+4d) |  | 5.32d → 8.32d |
| Earth Layers | **Earth Layers** |  | 2026-10-08 → 2026-10-15 (+7d) |  |  |
| B1.2.32 11 13.01.12_R | Subgrade(Rem) | 2026-10-07 → 2026-10-14 (+7d) | 2026-10-08 → 2026-10-15 (+7d) |  |  |
| Interlock | **Interlock** | 2026-11-18 → 2026-11-17 (-1d) | 2026-11-21 → 2026-11-19 (-2d) |  |  |
| B1.2.32 14 13.13.12 | 60mm thick - Interlocking Block Pavers | 2026-11-18 → 2026-11-17 (-1d) | 2026-11-21 → 2026-11-19 (-2d) |  | 1.32d → 8.32d |
| Curbstone | **Curbstone** | 2026-11-22 → 2026-11-21 (-1d) | 2026-12-09 → 2026-12-08 (-1d) |  |  |
| Pre Install | **Pre-Installation** | 2026-11-22 → 2026-11-21 (-1d) | 2026-11-28 → 2026-11-26 (-2d) |  |  |
| B2.31 23 00.331 | Excavation | 2026-11-22 → 2026-11-21 (-1d) | 2026-11-23 → 2026-11-22 (-1d) |  | 1.32d → 8.32d |
| B1.2.32 14 13.13.212 | PCC | 2026-11-24 → 2026-11-23 (-1d) | 2026-11-25 → 2026-11-24 (-1d) |  | 1.32d → 8.32d |
| 32 16 13.0012 | Haunching | 2026-11-26 → 2026-11-25 (-1d) | 2026-11-28 → 2026-11-26 (-2d) |  | 1.32d → 8.32d |
| Installation | **Installation** | 2026-11-29 → 2026-11-28 (-1d) | 2026-12-07 → 2026-12-06 (-1d) |  |  |
| B1.2.32 16.13.01.12 | Curb Stone, Type K1 | 2026-11-29 → 2026-11-28 (-1d) | 2026-11-30 → 2026-11-29 (-1d) |  | 1.32d → 8.32d |
| B1.2.32 16.13.02.11 | Dropped Curb, Type K3 | 2026-12-01 → 2026-11-30 (-1d) | 2026-12-01 → 2026-11-30 (-1d) |  | 1.32d → 8.32d |
| B1.2.32 16.13.03.12 | Edge Curb, Type K4 | 2026-12-02 → 2026-12-01 (-1d) | 2026-12-03 → 2026-12-02 (-1d) |  | 1.32d → 8.32d |
| B1.2.32 16.13.0412 | Heel Curb, Type K5 | 2026-12-05 → 2026-12-03 (-2d) | 2026-12-06 → 2026-12-05 (-1d) |  | 1.32d → 8.32d |
| B1.2.32 16.13.05.11 | Transition Curb | 2026-12-07 → 2026-12-06 (-1d) | 2026-12-07 → 2026-12-06 (-1d) |  | 1.32d → 8.32d |
| Finishing | **Finishing** | 2026-12-08 → 2026-12-07 (-1d) | 2026-12-09 → 2026-12-08 (-1d) |  |  |
| 32 16 13.012 | Finishing, Fareface | 2026-12-08 → 2026-12-07 (-1d) | 2026-12-09 → 2026-12-08 (-1d) |  | 1.32d → 8.32d |
| Asphalt Layers | **Asphalt Layers** |  | 2026-12-12 → 2026-12-10 (-2d) |  |  |
| B1.2.32 11 26.01.12_R | Bituminous Base Course including Prime Coat (MC1) and tack coat (RC2)(Rem) | 2026-10-07 → 2026-10-14 (+7d) | 2026-10-08 → 2026-10-15 (+7d) |  |  |
| B1.2.32 12 16.01.12 | Bituminous concrete Wearing Course, including tack coat (RC2) | 2026-12-10 → 2026-12-09 (-1d) | 2026-12-12 → 2026-12-10 (-2d) |  | 1.32d → 8.32d |
| Pavement Marking | **Pavement Marking** | 2026-12-13 → 2026-12-12 (-1d) | 2026-12-16 → 2026-12-15 (-1d) |  |  |
| B1.2.32 17 23.02.12 | Retroreflective Thermoplastic Yellow, Traffic lines | 2026-12-13 → 2026-12-12 (-1d) | 2026-12-14 → 2026-12-13 (-1d) |  | 52.32d → 59.32d |
| B1.2.32 17 23.01.12 | Retroreflective Thermoplastic White Traffic lines | 2026-12-15 → 2026-12-14 (-1d) | 2026-12-16 → 2026-12-15 (-1d) |  | 52.32d → 59.32d |
| Traffic Signs | **Traffic Signs** | 2026-11-24 → 2026-11-23 (-1d) |  |  |  |
| Pre Install | **Pre-Installation** | 2026-11-24 → 2026-11-23 (-1d) | 2026-11-25 → 2026-11-24 (-1d) |  |  |
| 10 14 53.012 | Foundation | 2026-11-24 → 2026-11-23 (-1d) | 2026-11-25 → 2026-11-24 (-1d) |  | 13.32d → 20.32d |
| B2.31 23 00.341 | Excavation | 2026-11-24 → 2026-11-23 (-1d) | 2026-11-24 → 2026-11-23 (-1d) |  | 5.32d → 12.32d |
| Installation | **Installation** | 2026-12-15 → 2026-12-14 (-1d) |  |  |  |
| B1.2.10 14 53.0112 | 1 Sheet Alumenium, Single post | 2026-12-15 → 2026-12-14 (-1d) |  |  | 52.32d → 59d |
| Landscape | **Landscape** |  | 2026-12-05 → 2026-12-03 (-2d) |  |  |
| Fences | **Fences** |  | 2026-12-05 → 2026-12-03 (-2d) |  |  |
| (ZATCA HCIS) | **Steel fence (ZATCA HCIS)** |  | 2026-12-05 → 2026-12-03 (-2d) |  |  |
| B7.32 31 26.01-1_R | Earthwork(Rem) | 2026-11-19 → 2026-11-18 (-1d) | 2026-11-24 → 2026-11-23 (-1d) |  | 5.32d → 12.32d |
| B7.32 31 26.01-3_R | Foundation(Rem) | 2026-11-19 → 2026-11-18 (-1d) | 2026-11-25 → 2026-11-24 (-1d) |  | 5.32d → 12.32d |
| B7.32 31 26.01-5 | Fence Installation | 2026-11-26 → 2026-11-25 (-1d) | 2026-12-05 → 2026-12-03 (-2d) |  | 5.32d → 12.32d |
| 11 | **Underground Concrete Structures & Waterproofing** | 2026-10-11 → 2026-10-14 (+3d) | 2026-10-22 → 2026-10-26 (+4d) |  |  |
| B5.1.31 23 16.01.13 | Reinforced Concrete Walls | 2026-10-11 → 2026-10-14 (+3d) | 2026-10-14 → 2026-10-18 (+4d) |  | 15.32d → 18.32d |
| B5.1.31 23 16.01.15 | Water proofing Membrane with protection board | 2026-10-19 → 2026-10-22 (+3d) | 2026-10-20 → 2026-10-24 (+4d) |  | 12.32d → 15.32d |
| B5.1.31 23 16.01.21 | Backfilling around underground chambers | 2026-10-21 → 2026-10-25 (+4d) | 2026-10-22 → 2026-10-26 (+4d) |  | 12.32d → 15.32d |
| 2 | **Sub-Structure & Foundations** |  | 2026-10-12 → 2026-10-15 (+3d) |  |  |
| B5.1.31 23 16.01.9_R | Footings for wet well & Chambers(Rem) | 2026-10-07 → 2026-09-27 A (-10d) | 2026-10-10 → 2026-10-11 A (+1d) | 0% → 100% | 12.32d → none |
| B5.1.31 23 16.01.11 | Slab on grade and ground beams | 2026-10-11 → 2026-10-14 (+3d) | 2026-10-12 → 2026-10-15 (+3d) |  | 12.32d → 15.32d |
| 10 | **Superstructure - Control Room & Roof Slabs** | 2026-10-13 → 2026-10-17 (+4d) | 2026-10-24 → 2026-10-27 (+3d) |  |  |
| B5.1.31 23 16.01.17 | Reinforced Concrete Columns | 2026-10-13 → 2026-10-17 (+4d) | 2026-10-15 → 2026-10-19 (+4d) |  | 12.32d → 15.32d |
| B5.1.31 23 16.01.23 | Concrete masonry unit (200mm) walls | 2026-10-17 → 2026-10-20 (+3d) | 2026-10-19 → 2026-10-22 (+3d) |  | 15.32d → 18.32d |
| B5.1.31 23 16.01.27 | Roof Slab for wet well & Chambers | 2026-10-20 → 2026-10-24 (+4d) | 2026-10-24 → 2026-10-27 (+3d) |  | 15.32d → 18.32d |
| 12 | **Waterproofing, Roofing & External Enclosure** | 2026-10-20 → 2026-10-24 (+4d) | 2026-11-14 → 2026-11-17 (+3d) |  |  |
| B5.1.31 23 16.01.29 | External plastering | 2026-10-20 → 2026-10-24 (+4d) | 2026-10-24 → 2026-10-27 (+3d) |  | 30.32d → 33.32d |
| B5.1.31 23 16.01.39 | Water proofing Membrane for roof | 2026-10-25 → 2026-10-28 (+3d) | 2026-10-27 → 2026-10-31 (+4d) |  | 15.32d → 18.32d |
| B5.1.31 23 16.01.55 | Vapor retarders for roof | 2026-10-28 → 2026-11-01 (+4d) | 2026-10-31 → 2026-11-03 (+3d) |  | 15.32d → 18.32d |
| B5.1.31 23 16.01.71 | Geotextile membrane | 2026-11-01 → 2026-11-04 (+3d) | 2026-11-03 → 2026-11-07 (+4d) |  | 15.32d → 18.32d |
| B5.1.31 23 16.01.89 | Gravel for Control Room Roof | 2026-11-04 → 2026-11-08 (+4d) | 2026-11-07 → 2026-11-10 (+3d) |  | 15.32d → 18.32d |
| B5.1.31 23 16.01.99 | 50mm slab on grade | 2026-11-08 → 2026-11-11 (+3d) | 2026-11-10 → 2026-11-14 (+4d) |  | 15.32d → 18.32d |
| B5.1.31 23 16.01.107 | Stone copping 30mm thickness | 2026-11-11 → 2026-11-15 (+4d) | 2026-11-14 → 2026-11-17 (+3d) |  | 15.32d → 18.32d |
| 13 | **Internal Chamber Works (Wet Well, Valve, Screening)** | 2026-10-24 → 2026-10-27 (+3d) | 2026-11-18 → 2026-11-12 (-6d) |  |  |
| B5.1.31 23 16.01.31 | Sloped screed for internal floors for wet well and valve chamber | 2026-10-24 → 2026-10-27 (+3d) | 2026-10-25 → 2026-10-28 (+3d) |  | 12.32d → 15.32d |

| ID | Task | Start | Finish | Complete | Total float |
| --- | --- | --- | --- | --- | --- |
| B5.1.31 23 16.01.41 | Sloped screed for internal floors for Screening chamber | 2026-10-26 → 2026-10-29 (+3d) | 2026-10-28 → 2026-11-01 (+4d) |  | 17.32d → 20.32d |
| B5.1.31 23 16.01.43 | Epoxy paint for internal side and floors for wet well and valve chamber | 2026-10-26 → 2026-10-29 (+3d) | 2026-10-27 → 2026-10-31 (+4d) |  | 12.32d → 15.32d |
| B5.1.31 23 16.01.57 | Epoxy paint for internal side and floors for Screening chamber | 2026-10-29 → 2026-11-02 (+4d) | 2026-11-01 → 2026-11-04 (+3d) |  | 17.32d → 20.32d |
| B5.1.31 23 16.01.73 | Stainless steel A36 ladders for screening chamber for screening chamber, wet well & valve chamber | 2026-11-02 → 2026-11-05 (+3d) | 2026-11-04 → 2026-11-08 (+4d) |  | 19.32d → 22.32d |
| B5.1.31 23 16.01.91 | Stainless steel A36 covers | 2026-11-05 → 2026-11-09 (+4d) | 2026-11-07 → 2026-11-10 (+3d) |  | 19.32d → 22.32d |
| B5.1.31 23 16.01.101 | Medium duty lockable D.I. cover | 2026-11-17 → 2026-11-11 (-6d) | 2026-11-18 → 2026-11-12 (-6d) |  | 11.32d → 22.32d |
| 3 | **Control Room Internal Finishes** | 2026-10-17 → 2026-10-20 (+3d) | 2026-11-21 → 2026-11-19 (-2d) |  |  |
| B5.1.31 23 16.01.19 | Vapor retarders below slab on grade | 2026-10-17 → 2026-10-20 (+3d) | 2026-10-18 → 2026-10-21 (+3d) |  | 12.32d → 15.32d |
| B5.1.31 23 16.01.25 | Water proofing Paint below slab on grade | 2026-10-19 → 2026-10-22 (+3d) | 2026-10-21 → 2026-10-25 (+4d) |  | 29.32d → 32.32d |
| B5.1.31 23 16.01.45 | Internal plastering | 2026-10-28 → 2026-11-01 (+4d) | 2026-10-31 → 2026-11-03 (+3d) |  | 12.32d → 15.32d |
| B5.1.31 23 16.01.59 | Internal painting (Acrylic) | 2026-11-01 → 2026-11-04 (+3d) | 2026-11-03 → 2026-11-07 (+4d) |  | 12.32d → 15.32d |
| B5.1.31 23 16.01.61 | External painting | 2026-11-11 → 2026-11-15 (+4d) | 2026-11-14 → 2026-11-17 (+3d) |  | 15.32d → 18.32d |
| B5.1.31 23 16.01.75 | Steel Door SD1 | 2026-11-11 → 2026-11-15 (+4d) | 2026-11-12 → 2026-11-16 (+4d) |  | 16.32d → 19.32d |
| B5.1.31 23 16.01.97 | Aluminum signage | 2026-11-19 → 2026-11-18 (-1d) | 2026-11-21 → 2026-11-19 (-2d) |  | 11.32d → 18.32d |
| 4 | **Mechanical & Process Equipment Installation** | 2026-10-25 → 2026-10-27 (+2d) | 2026-11-25 → 2026-11-22 (-3d) |  |  |
| B5.1.31 23 16.01.33 | Buried ductile iron pipes installation | 2026-11-02 → 2026-10-27 (-6d) | 2026-11-04 → 2026-10-29 (-6d) |  | 11.32d → 22.32d |
| B5.1.31 23 16.01.47 | JIB Crane installation | 2026-10-25 → 2026-10-28 (+3d) | 2026-10-27 → 2026-10-31 (+4d) |  | 18.32d → 21.32d |
| B5.1.31 23 16.01.49 | Double flanged ductile iron pipe installation | 2026-11-05 → 2026-10-31 (-5d) | 2026-11-07 → 2026-11-01 (-6d) |  | 11.32d → 22.32d |
| B5.1.31 23 16.01.63 | Submersible - wet installed pump installation | 2026-11-08 → 2026-11-01 (-7d) | 2026-11-10 → 2026-11-03 (-7d) |  | 9.32d → 21.32d |
| B5.1.31 23 16.01.65 | Manually operated Gate Valve DN150 installation | 2026-11-08 → 2026-11-02 (-6d) | 2026-11-09 → 2026-11-03 (-6d) |  | 11.32d → 22.32d |
| B5.1.31 23 16.01.77 | Non-return Valve DN150 installation | 2026-11-10 → 2026-11-04 (-6d) | 2026-11-11 → 2026-11-05 (-6d) |  | 11.32d → 22.32d |
| B5.1.31 23 16.01.79 | Basket screens | 2026-11-11 → 2026-11-05 (-6d) | 2026-11-14 → 2026-11-08 (-6d) |  | 9.32d → 20.32d |
| B5.1.31 23 16.01.93 | Odor Control Unit | 2026-11-15 → 2026-11-09 (-6d) | 2026-11-16 → 2026-11-10 (-6d) |  | 9.32d → 20.32d |
| B5.1.31 23 16.01.95 | Screening container | 2026-11-15 → 2026-11-09 (-6d) | 2026-11-16 → 2026-11-10 (-6d) |  | 11.32d → 22.32d |
| B5.1.31 23 16.01.103 | Surge Tank | 2026-11-17 → 2026-11-11 (-6d) | 2026-11-18 → 2026-11-12 (-6d) |  | 9.32d → 20.32d |
| B5.1.31 23 16.01.109 | Electrically operated penstock installation | 2026-11-19 → 2026-11-14 (-5d) | 2026-11-21 → 2026-11-15 (-6d) |  | 9.32d → 20.32d |
| B5.1.31 23 16.01.111 | Scupper installation | 2026-11-11 → 2026-11-15 (+4d) | 2026-11-14 → 2026-11-17 (+3d) |  | 17.32d → 20.32d |
| B5.1.31 23 16.01.115 | DX wall mounted Split/AC installation | 2026-11-22 → 2026-11-16 (-6d) | 2026-11-23 → 2026-11-17 (-6d) |  | 9.32d → 20.32d |
| B5.1.31 23 16.01.119 | Fire extinguishers (CO2, Powder) placement | 2026-11-24 → 2026-11-21 (-3d) | 2026-11-25 → 2026-11-22 (-3d) |  | 9.32d → 18.32d |
| 5 | **Electrical & Control Systems** | 2026-10-07 → 2026-10-14 (+7d) |  |  |  |
| B5.1.31 23 16.01.5 | Grounding and lightning system | 2026-10-07 → 2026-10-14 (+7d) | 2026-10-10 → 2026-10-17 (+7d) |  |  |
| B5.1.31 23 16.01.35 | 4Cx 95mm2 Cable from SEC/Generator to ATS and MCC-SPS | 2026-10-24 → 2026-10-27 (+3d) | 2026-10-26 → 2026-10-29 (+3d) |  | 25.32d → 28.32d |
| B5.1. 26 32 12 .05 | Positive displacement rotary type pump installation | 2026-11-04 → 2026-10-28 (-7d) | 2026-11-07 → 2026-10-31 (-7d) |  | 9.32d → 21.32d |
| B5.1.31 23 16.01.51 | Standby Diesel Generator Set installation | 2026-11-11 → 2026-10-31 (-11d) | 2026-11-14 → 2026-11-02 (-12d) |  | 12.32d → 28.32d |
| B5.1.31 23 16.01.67 | 2.084m3 capacity underground fuel tank installation | 2026-11-15 → 2026-11-03 (-12d) | 2026-11-16 → 2026-11-04 (-12d) |  | 12.32d → 28.32d |
| B5.1.31 23 16.01.83 | Manually operated fuel pump installation | 2026-11-17 → 2026-11-05 (-12d) | 2026-11-18 → 2026-11-07 (-11d) |  | 12.32d → 28.32d |
| B5.1.31 23 16.01.81 | MCC - 160AT/250AF, 400V, 3PH, 60HZ | 2026-11-04 → 2026-11-08 (+4d) | 2026-11-05 → 2026-11-09 (+4d) |  | 12.32d → 15.32d |
| B5.1. 26 32 12 .03 | ATS | 2026-11-07 → 2026-11-10 (+3d) | 2026-11-08 → 2026-11-11 (+3d) |  | 12.32d → 15.32d |
| B5.1.31 23 16.01.105 | DB-SPS Panel | 2026-11-09 → 2026-11-12 (+3d) | 2026-11-10 → 2026-11-14 (+4d) |  | 12.32d → 15.32d |
| B5.1. 26 29 00 .02 | Local Control Panel, IP 65 | 2026-11-11 → 2026-11-15 (+4d) | 2026-11-12 → 2026-11-16 (+4d) |  | 12.32d → 15.32d |
| B5.1.31 23 16.01.113 | ELP Panels | 2026-11-14 → 2026-11-17 (+3d) | 2026-11-15 → 2026-11-18 (+3d) |  | 12.32d → 15.32d |
| B5.1.31 23 16.01.117 | Isolator/disconnect switches installation | 2026-11-16 → 2026-11-19 (+3d) | 2026-11-17 → 2026-11-21 (+4d) |  | 12.32d → 15.32d |
| 6 | **External Works & Site Finishing** | 2026-10-24 → 2026-10-27 (+3d) | 2026-11-05 → 2026-11-09 (+4d) |  |  |
| B5.1.31 23 16.01.37 | Precast Concrete curbstone - Type K1 | 2026-10-24 → 2026-10-27 (+3d) | 2026-10-26 → 2026-10-29 (+3d) |  | 24.32d → 27.32d |
| B5.1.31 23 16.01.53 | Electrical Hand Hole (EHH-1) 600mm x 600mm x 800mm | 2026-10-27 → 2026-10-31 (+4d) | 2026-10-29 → 2026-11-02 (+4d) |  | 24.32d → 27.32d |
| B5.1.31 23 16.01.69 | Precast Concrete curbstone - Type K4 | 2026-10-31 → 2026-11-03 (+3d) | 2026-11-01 → 2026-11-04 (+3d) |  | 24.32d → 27.32d |
| B5.1.31 23 16.01.87 | Electrical Hand Hole (EHH-2) 400mm x 400mm x 600mm | 2026-11-02 → 2026-11-05 (+3d) | 2026-11-03 → 2026-11-07 (+4d) |  | 24.32d → 27.32d |
| B5.1.31 23 16.01.85 | Steel fence (ZATCA HCIS) including Steel gate size (7*2.7)m | 2026-11-04 → 2026-11-08 (+4d) | 2026-11-05 → 2026-11-09 (+4d) |  | 24.32d → 27.32d |
| Zone 04 | **Zone 04** |  | 2027-01-05 → 2027-01-12 (+7d) |  |  |
| Road 02 | **Road 02** |  | 2026-12-30 → 2027-01-06 (+7d) |  |  |
| Wet Networks | **Wet Networks** |  | 2026-12-09 → 2026-12-10 (+1d) |  |  |
| Sewerage Network | **Sewerage Network** |  | 2026-10-08 → 2026-10-15 (+7d) |  |  |
| Manholes | **Manholes ?1200** |  | 2026-10-08 → 2026-10-15 (+7d) |  |  |
| 2 | **Depth From 0.0m to 1.5m** |  | 2026-10-08 → 2026-10-15 (+7d) |  |  |
| B6.33 05 39.01.1407_R | Test, Internal Finishing, Benching & Cover(Rem) |  | 2026-10-08 → 2026-10-15 (+7d) |  |  |
| 3 | **Depth From 1.5m to 2.5m** |  | 2026-10-08 → 2026-10-15 (+7d) |  |  |
| B6.33 05 39.01.1447_R | Manhole Installation(Rem) |  | 2026-10-07 A | 50% → 100% | 112.75d → none |
| B6.33 05 39.01.1457_R | Test, Internal Finishing, Benching & Cover(Rem) |  | 2026-10-08 → 2026-10-15 (+7d) |  |  |
| 4 | **Depth From 2.5m to 3.5m** |  | 2026-10-08 → 2026-10-15 (+7d) |  |  |
| B6.33 05 39.01.1507_R | Test, Internal Finishing, Benching & Cover(Rem) |  | 2026-10-08 → 2026-10-15 (+7d) |  |  |
| B6.33 05 39.01.1497_R | Manhole Installation(Rem) |  | 2026-10-07 → 2026-10-06 A (-1d) | 50% → 100% | 112.75d → none |
| 1 | **Depth From 3.5m to 4.5m** |  | 2026-10-08 → 2026-10-15 (+7d) |  |  |
| B6.33 05 39.01.1557_R | Test, Internal Finishing, Benching & Cover(Rem) |  | 2026-10-08 → 2026-10-15 (+7d) |  |  |
| B6.33 05 39.01.1547_R | Manhole Installation(Rem) |  | 2026-10-07 → 2026-10-06 A (-1d) | 50% → 100% | 112.75d → none |
| 1 | **Depth From 3.5m to 4.5m Backdrop** |  | 2026-10-08 → 2026-10-15 (+7d) |  |  |
| B6.33 05 39.01.1597_R | Manhole Installation(Rem) |  | 2026-10-07 → 2026-10-05 A (-2d) | 50% → 100% | 112.75d → none |
| B6.33 05 39.01.1607_R | Test, Internal Finishing, Benching & Cover(Rem) |  | 2026-10-08 → 2026-10-15 (+7d) |  |  |
| Stormwater Network | **Stormwater Network** |  | 2026-10-07 → 2026-10-14 (+7d) |  |  |
| GRP | **GRP** |  | 2026-10-07 → 2026-10-14 (+7d) |  |  |
| ?4002 | **?600** |  | 2026-10-07 → 2026-10-14 (+7d) |  |  |

| ID | Task | Start | Finish | Complete | Total float |
| --- | --- | --- | --- | --- | --- |
| 4 | **Depth From 1.5m to 2.5m** |  | 2026-10-07 → 2026-10-14 (+7d) |  |  |
| B6.33 42 11.05-1.47_R | Embedment & Test(Rem) |  | 2026-10-07 → 2026-10-14 (+7d) |  |  |
| B6.33 42 11.05-1.61_R | Backfilling & Warrning Tape(Rem) |  | 2026-10-07 → 2026-10-14 (+7d) |  |  |
| B6.33 42 11.05-1.5_R | Excavation(Rem) |  | 2026-10-07 → 2026-10-14 (+7d) |  |  |
| B6.33 42 11.05-1.33_R | Pipe Laying(Rem) |  | 2026-10-07 → 2026-10-14 (+7d) |  |  |
| B6.33 42 11.05-1.19_R | Sand Bedding(Rem) |  | 2026-10-07 → 2026-10-14 (+7d) |  |  |
| ?40021 | **?700** |  | 2026-10-07 → 2026-10-14 (+7d) |  |  |
| 4 | **Depth From 1.5m to 2.5m** |  | 2026-10-07 → 2026-10-14 (+7d) |  |  |
| B6.33 42 11.05-1.7_R | Excavation(Rem) |  | 2026-10-07 → 2026-10-14 (+7d) |  |  |
| B6.33 42 11.05-1.21_R | Sand Bedding(Rem) |  | 2026-10-07 → 2026-10-14 (+7d) |  |  |
| B6.33 42 11.05-1.35_R | Pipe Laying(Rem) |  | 2026-10-07 → 2026-10-14 (+7d) |  |  |
| B6.33 42 11.05-1.49_R | Embedment & Test(Rem) |  | 2026-10-07 → 2026-10-14 (+7d) |  |  |
| B6.33 42 11.05-1.63_R | Backfilling & Warrning Tape(Rem) |  | 2026-10-07 → 2026-10-14 (+7d) |  |  |
| ?400111 | **?1300** |  | 2026-10-07 → 2026-10-14 (+7d) |  |  |
| 3 | **Depth From 2.5m to 3.5m** |  | 2026-10-07 → 2026-10-14 (+7d) |  |  |
| B6.33 42 11.05-1.27_R | Sand Bedding(Rem) |  | 2026-10-07 → 2026-10-14 (+7d) |  |  |
| B6.33 42 11.05-1.69_R | Backfilling & Warrning Tape(Rem) |  | 2026-10-07 → 2026-10-14 (+7d) |  |  |
| B6.33 42 11.05-1.55_R | Embedment & Test(Rem) |  | 2026-10-07 → 2026-10-14 (+7d) |  |  |
| B6.33 42 11.05-1.41_R | Pipe Laying(Rem) |  | 2026-10-07 → 2026-10-14 (+7d) |  |  |
| Potable Water | **Potable Water Network** |  | 2026-12-02 → 2026-11-08 (-24d) |  |  |
| HDPE | **HDPE Pipes** |  | 2026-10-10 → 2026-10-17 (+7d) |  |  |
| ?110mm | **?110mm** |  | 2026-10-10 → 2026-10-17 (+7d) |  |  |
| Depth: 1.51m - 2.5m | **Depth: 1.51m - 2.5m** |  | 2026-10-10 → 2026-10-17 (+7d) |  |  |
| B3.33 14 13-10101_R | Pipe Laying(Rem) | 2026-10-07 → 2026-10-14 (+7d) | 2026-10-10 → 2026-10-17 (+7d) |  |  |
| B3.33 14 13-10105_R | Embedment & Test(Rem) | 2026-10-07 → 2026-10-14 (+7d) | 2026-10-10 → 2026-10-17 (+7d) |  |  |
| B3.33 14 13-10109_R | Backfilling & Warrning Tape(Rem) | 2026-10-07 → 2026-10-14 (+7d) | 2026-10-10 → 2026-10-17 (+7d) |  |  |
| B3.33 14 13-1093_R | Excavation(Rem) | 2026-10-07 → 2026-10-14 (+7d) | 2026-10-10 → 2026-10-17 (+7d) |  | 62.32d → 84.32d |
| B3.33 14 13-1097_R | Sand Bedding(Rem) | 2026-10-07 → 2026-10-14 (+7d) | 2026-10-10 → 2026-10-17 (+7d) |  |  |
| Crossing | **Plots and Buildings Crossing** | 2026-10-11 → 2026-10-18 (+7d) | 2026-11-01 → 2026-11-08 (+7d) |  |  |
| B3.33 14 13.02.25 | Earthwork | 2026-10-11 → 2026-10-18 (+7d) | 2026-10-18 → 2026-10-25 (+7d) |  | 62.32d → 84.32d |
| B3.33 14 13.02.26 | Sand Bedding | 2026-10-19 → 2026-10-26 (+7d) | 2026-10-24 → 2026-10-31 (+7d) |  |  |
| B3.33 14 13.02.27 | Tee, Pipe (Crossing) Installation & Backfilling | 2026-10-25 → 2026-11-01 (+7d) | 2026-11-01 → 2026-11-08 (+7d) |  |  |
| Valves & Chambers | **Valves & Chambers** | 2026-10-11 → 2026-09-24 (-17d) | 2026-12-02 → 2026-10-11 (-52d) |  |  |
| GV | **Gate Valves** | 2026-10-11 → 2026-10-06 (-5d) | 2026-10-17 → 2026-10-10 (-7d) |  |  |
| 1 | **Gate valves dia (110) mm** | 2026-10-11 → 2026-10-06 (-5d) | 2026-10-17 → 2026-10-10 (-7d) |  |  |
| B3.33 14 19.01.114 | Burried Isolation Valve Installation | 2026-10-11 → 2026-10-06 A (-5d) | 2026-10-13 → 2026-10-07 A (-6d) | 0% → 100% | 101.32d → none |
| B3.33 14 19.01.115 | Spindle & Surface Box | 2026-10-14 → 2026-10-08 A (-6d) | 2026-10-17 → 2026-10-10 A (-7d) | 0% → 100% | 101.32d → none |
| 2 | **Air Valves** | 2026-10-27 → 2026-09-24 (-33d) | 2026-12-02 → 2026-10-11 (-52d) |  |  |
| 4 | **Air valves on less than 315 mm. (In Chamber)** | 2026-10-27 → 2026-09-24 (-33d) | 2026-12-02 → 2026-10-11 (-52d) |  |  |
| B3.33 05 63.02.32 | Land Adjustment & Compaction | 2026-10-27 → 2026-09-24 A (-33d) | 2026-10-31 → 2026-09-26 A (-35d) | 0% → 100% | 75.07d → none |
| B3.33 05 63.02.30 | Foundations | 2026-10-31 → 2026-09-27 A (-34d) | 2026-11-04 → 2026-09-30 A (-35d) | 0% → 100% | 75.07d → none |
| B3.33 05 63.02.33 | Chambers Walls Conc Cast In Situ | 2026-11-04 → 2026-10-01 A (-34d) | 2026-11-09 → 2026-10-05 A (-35d) | 0% → 100% | 75.07d → none |
| B3.33 05 63.02.31 | Chamber Curing, Finishing & Steel Cover | 2026-11-09 → 2026-10-05 A (-35d) | 2026-11-15 → 2026-10-11 A (-35d) | 0% → 100% | 75.07d → none |
| B3.33 05 63.02.34 | Valve & Fitting Installation | 2026-11-28 → 2026-10-10 A (-49d) | 2026-12-02 → 2026-10-11 A (-52d) | 0% → 100% | 64.32d → none |
| Fire Fighting | **Fire Fighting Network** |  | 2026-11-09 → 2026-10-21 (-19d) |  |  |
| Valves & Chambers | **Valves & Chambers** |  | 2026-11-09 → 2026-10-17 (-23d) |  |  |
| GV | **Gate Valves** |  | 2026-10-11 → 2026-10-15 (+4d) |  |  |
| 1 | **Gate valves dia (250) mm** |  | 2026-10-11 → 2026-10-15 (+4d) |  |  |
| B3.33 14 19.01.131 | Spindle & Surface Box | 2026-10-07 → 2026-10-06 A (-1d) | 2026-10-11 → 2026-10-15 (+4d) | 0% → 50% | 69.32d → 111.32d |
| 2 | **Air Valves** | 2026-10-10 → 2026-10-01 (-9d) | 2026-11-09 → 2026-10-17 (-23d) |  |  |
| 4 | **Air valves on less than 315 mm. (In Chamber)** | 2026-10-10 → 2026-10-01 (-9d) | 2026-11-09 → 2026-10-17 (-23d) |  |  |
| B3.33 05 63.02.72 | Land Adjustment & Compaction | 2026-10-10 → 2026-10-01 A (-9d) | 2026-10-14 → 2026-10-15 (+1d) | 0% → 50% | 85.31d → 111.32d |
| B3.33 05 63.02.70 | Foundations | 2026-10-14 → 2026-10-04 A (-10d) | 2026-10-20 → 2026-10-17 (-3d) | 0% → 50% | 85.31d → 110.82d |
| B3.33 05 63.02.73 | Chambers Walls Conc Cast In Situ | 2026-10-20 → 2026-10-07 A (-13d) | 2026-10-26 → 2026-10-17 (-9d) | 0% → 50% | 85.31d → 110.82d |
| B3.33 05 63.02.71 | Chamber Curing, Finishing & Steel Cover | 2026-10-26 → 2026-10-10 A (-16d) | 2026-11-02 → 2026-10-17 (-16d) | 0% → 50% | 85.31d → 110.32d |
| B3.33 05 63.02.74 | Valve & Fitting Installation | 2026-11-02 → 2026-10-12 A (-21d) | 2026-11-09 → 2026-10-17 (-23d) | 0% → 50% | 85.31d → 110.32d |
| Washout Valves | **Washout Valves** |  | 2026-11-09 → 2026-10-17 (-23d) |  |  |
| 4 | **Washout valves on 110-400 mm. (In Chamber)** |  | 2026-11-09 → 2026-10-17 (-23d) |  |  |
| B3.33 05 63.01.55_R | Foundations(Rem) | 2026-10-07 → 2026-10-06 A (-1d) | 2026-10-11 → 2026-10-15 (+4d) | 0% → 50% | 109.32d → 111.57d |
| B3.33 05 63.01.56_R | Chamber Curing, Finishing & Steel Cover(Rem) | 2026-10-07 → 2026-10-08 A (+1d) | 2026-10-11 → 2026-10-15 (+4d) | 0% → 50% | 109.32d → 111.32d |
| B3.33 05 63.01.58_R | Chambers Walls Conc Cast In Situ(Rem) | 2026-10-07 → 2026-10-11 A (+4d) | 2026-10-11 → 2026-10-15 (+4d) | 0% → 50% | 109.32d → 111.57d |
| B3.33 05 63.01.59_R | Valve & Fitting Installation(Rem) | 2026-11-04 → 2026-10-13 A (-22d) | 2026-11-09 → 2026-10-17 (-23d) | 0% → 50% | 85.31d → 110.32d |
| 3 | **Fire Hydrant** |  | 2026-10-14 → 2026-10-21 (+7d) |  |  |
| B3.33 14 19.01.fh40_R | Firehydrant Fixing/Installation(Rem) | 2026-10-07 → 2026-10-14 (+7d) | 2026-10-12 → 2026-10-19 (+7d) |  | 74.37d → 99.37d |
| B3.33 14 19.01.fh41_R | Riser Pipe & Flanged Fittings Installation(Rem) | 2026-10-07 → 2026-10-14 (+7d) | 2026-10-11 → 2026-10-18 (+7d) |  | 74.37d → 99.37d |
| B3.33 14 19.01.fh42_R | Backfilling & Compaction(Rem) | 2026-10-07 → 2026-10-14 (+7d) | 2026-10-14 → 2026-10-21 (+7d) |  | 74.37d → 99.37d |
| TSE Network | **TSE Network** |  | 2026-12-09 → 2026-12-10 (+1d) |  |  |
| HDPE | **HDPE Pipes** |  | 2026-10-25 → 2026-11-01 (+7d) |  |  |
| ?110mm | **?110mm** |  | 2026-10-25 → 2026-11-01 (+7d) |  |  |
| Depth: 0.0m - 1.5m | **Depth: 0.0m - 1.5m** |  | 2026-10-25 → 2026-11-01 (+7d) |  |  |

| ID | Task | Start | Finish | Complete | Total float |
| --- | --- | --- | --- | --- | --- |
| B4.33 14 13.01-0120_R | Embedment & Test(Rem) | 2026-10-07 → 2026-10-14 (+7d) | 2026-10-12 → 2026-10-19 (+7d) |  |  |
| B4.33 14 13.01-0124_R | Backfilling & Warrning Tape(Rem) | 2026-10-20 → 2026-10-27 (+7d) | 2026-10-25 → 2026-11-01 (+7d) |  |  |
| Valves & Chambers | **Valves & Chambers** |  | 2026-12-09 → 2026-12-10 (+1d) |  |  |
| GV | **Gate Valves** |  | 2026-10-10 → 2026-10-17 (+7d) |  |  |
| 1 | **Gate valves dia (250) mm** |  | 2026-10-10 → 2026-10-17 (+7d) |  |  |
| B3.33 14 19.01.141 | Spindle & Surface Box | 2026-10-07 → 2026-10-14 (+7d) | 2026-10-10 → 2026-10-17 (+7d) |  |  |
| 2 | **Air Valves** | 2026-10-26 → 2026-11-02 (+7d) | 2026-12-09 → 2026-12-10 (+1d) |  |  |
| 4 | **Air valves on less than 315 mm. (In Chamber)** | 2026-10-26 → 2026-11-02 (+7d) | 2026-12-09 → 2026-12-10 (+1d) |  |  |
| B3.33 05 63.02.97 | Land Adjustment & Compaction | 2026-10-26 → 2026-11-02 (+7d) | 2026-10-28 → 2026-11-04 (+7d) |  |  |
| B3.33 05 63.02.95 | Foundations | 2026-10-29 → 2026-11-05 (+7d) | 2026-11-02 → 2026-11-09 (+7d) |  |  |
| B3.33 05 63.02.98 | Chambers Walls Conc Cast In Situ | 2026-11-03 → 2026-11-10 (+7d) | 2026-11-07 → 2026-11-14 (+7d) |  |  |
| B3.33 05 63.02.96 | Chamber Curing, Finishing & Steel Cover | 2026-11-08 → 2026-11-15 (+7d) | 2026-11-12 → 2026-11-19 (+7d) |  |  |
| B3.33 05 63.02.99 | Valve & Fitting Installation | 2026-12-07 → 2026-12-08 (+1d) | 2026-12-09 → 2026-12-10 (+1d) |  | 20.32d → 25.32d |
| Washout Valves | **Washout Valves** | 2026-10-29 → 2026-11-05 (+7d) | 2026-11-22 → 2026-11-29 (+7d) |  |  |
| 4 | **Washout valves on 110-400 mm. (In Chamber)** | 2026-10-29 → 2026-11-05 (+7d) | 2026-11-22 → 2026-11-29 (+7d) |  |  |
| B3.33 05 63.01.72 | Land Adjustment & Compaction | 2026-10-29 → 2026-11-05 (+7d) | 2026-11-01 → 2026-11-08 (+7d) |  |  |
| B3.33 05 63.01.70 | Foundations | 2026-11-02 → 2026-11-09 (+7d) | 2026-11-05 → 2026-11-12 (+7d) |  |  |
| B3.33 05 63.01.73 | Chambers Walls Conc Cast In Situ | 2026-11-07 → 2026-11-14 (+7d) | 2026-11-10 → 2026-11-17 (+7d) |  |  |
| B3.33 05 63.01.71 | Chamber Curing, Finishing & Steel Cover | 2026-11-11 → 2026-11-18 (+7d) | 2026-11-16 → 2026-11-23 (+7d) |  |  |
| B3.33 05 63.01.74 | Valve & Fitting Installation | 2026-11-17 → 2026-11-24 (+7d) | 2026-11-22 → 2026-11-29 (+7d) |  |  |
| Solenoid valves | **Solenoid valves** | 2026-11-23 → 2026-10-14 (-40d) | 2026-12-06 → 2026-11-07 (-29d) |  |  |
| Solenoid valve ?1.0 | **1 Solenoid valve ?1.0 inch with box** | 2026-11-23 → 2026-10-14 (-40d) | 2026-12-01 → 2026-10-31 (-31d) |  |  |
| B4.32 84 13.49 | Pull Box Installation | 2026-11-28 → 2026-10-14 (-45d) | 2026-11-30 → 2026-10-18 (-43d) |  | 22.32d → 65.72d |
| B4.32 84 13.13 | Cable Laying Two-Wire Decoder (12 AWG) | 2026-11-23 → 2026-10-17 (-37d) | 2026-11-25 → 2026-10-20 (-36d) |  | 20.32d → 58.07d |
| B4.32 84 13.14 | Solenoid Valve Box Installation | 2026-11-25 → 2026-10-24 (-32d) | 2026-11-28 → 2026-10-27 (-32d) |  | 24.32d → 58.07d |
| B4.32 84 13.15 | Bubblers Installation | 2026-11-29 → 2026-10-27 (-33d) | 2026-12-01 → 2026-10-31 (-31d) |  | 24.32d → 58.07d |
| Solenoid valve ?1.5 | **1 Solenoid valve ?1.5 inch with box** | 2026-11-26 → 2026-10-14 (-43d) | 2026-12-06 → 2026-11-07 (-29d) |  |  |
| B4.32 84 13.50 | Pull Box Installation | 2026-11-28 → 2026-10-14 (-45d) | 2026-11-30 → 2026-10-18 (-43d) |  | 22.32d → 65.72d |
| B4.32 84 13.16 | Cable Laying Two-Wire Decoder (12 AWG) | 2026-11-26 → 2026-10-20 (-37d) | 2026-11-29 → 2026-10-24 (-36d) |  | 20.32d → 58.07d |
| B4.32 84 13.17 | Solenoid Valve Box Installation | 2026-11-30 → 2026-10-24 (-37d) | 2026-12-02 → 2026-10-27 (-36d) |  | 20.32d → 58.07d |
| B4.32 84 13.18 | Bubblers Installation | 2026-12-03 → 2026-11-04 (-29d) | 2026-12-06 → 2026-11-07 (-29d) |  | 20.32d → 51.32d |
| Solenoid valve ?2.0 | **1 Solenoid valve ?2.0 inch with box** | 2026-11-30 → 2026-10-18 (-43d) | 2026-12-06 → 2026-11-07 (-29d) |  |  |
| B4.32 84 13.51 | Pull Box Installation | 2026-12-01 → 2026-10-18 (-44d) | 2026-12-03 → 2026-10-21 (-43d) |  | 22.32d → 65.72d |
| B4.32 84 13.10 | Cable Laying Two-Wire Decoder (12 AWG) | 2026-11-30 → 2026-10-24 (-37d) | 2026-12-02 → 2026-10-27 (-36d) |  | 20.32d → 58.07d |
| B4.32 84 13.03 | Solenoid Valve Box Installation | 2026-11-30 → 2026-10-24 (-37d) | 2026-12-02 → 2026-10-27 (-36d) |  | 20.32d → 58.07d |
| B4.32 84 13.12 | Bubblers Installation | 2026-12-03 → 2026-11-04 (-29d) | 2026-12-06 → 2026-11-07 (-29d) |  | 20.32d → 51.32d |
| MV Network | **Medium Voltage Network** | 2026-10-07 → 2026-09-26 (-11d) | 2026-11-08 → 2026-10-21 (-18d) |  |  |
| Duct Banks | **Duct Banks** | 2026-10-19 → 2026-09-26 (-23d) | 2026-11-08 → 2026-10-15 (-24d) |  |  |
| 4 Way | **2 Way** | 2026-10-19 → 2026-09-26 (-23d) | 2026-11-08 → 2026-10-15 (-24d) |  |  |
| B2.31 23 00.642 | Excavation | 2026-10-19 → 2026-09-26 A (-23d) | 2026-10-22 → 2026-10-03 A (-19d) | 0% → 100% | 62.32d → none |
| B2.33 71 00.292 | Shuttering, Steel Fixing Incl. UPVC Pipe & Conc. Cast | 2026-10-24 → 2026-09-30 A (-24d) | 2026-10-31 → 2026-10-15 (-16d) | 0% → 75% | 62.32d → 111.57d |
| B2.33 71 00.293 | Backfilling & Warrning Tape | 2026-11-01 → 2026-10-01 A (-31d) | 2026-11-08 → 2026-10-15 (-24d) | 0% → 75% | 62.32d → 88.57d |
| Cables | **Cables** |  | 2026-10-18 → 2026-10-21 (+3d) |  |  |
| 3C,500mm2 | **3C,500mm2** |  | 2026-10-18 → 2026-10-21 (+3d) |  |  |
| B2.33 71 49.23.89 | Cable 13.8 kV Unarmored | 2026-10-07 A | 2026-10-11 → 2026-10-14 (+3d) | 0% → 75% | 75.32d → 78.32d |
| B2.33 71 49.23.90 | Straight joints cables | 2026-10-12 → 2026-10-15 (+3d) | 2026-10-14 → 2026-10-18 (+4d) |  | 75.32d → 78.32d |
| B2.33 71 49.23.91 | Cable Termination | 2026-10-15 → 2026-10-19 (+4d) | 2026-10-18 → 2026-10-21 (+3d) |  | 75.32d → 78.32d |
| LV Network | **Low Voltage Network** | 2026-11-07 → 2026-10-15 (-23d) | 2026-11-21 → 2026-11-07 (-14d) |  |  |
| Duct Banks | **Duct Banks** | 2026-11-09 → 2026-10-15 (-25d) | 2026-11-21 → 2026-10-28 (-24d) |  |  |
| 2 Way | **2 Way** | 2026-11-09 → 2026-10-15 (-25d) | 2026-11-17 → 2026-10-25 (-23d) |  |  |
| B2.33 71 00 02 145 | Excavation | 2026-11-09 → 2026-10-15 (-25d) | 2026-11-10 → 2026-10-18 (-23d) |  | 62.32d → 88.57d |
| B2.33 71 00 02 146 | Shuttering, Steel Fixing Incl. UPVC Pipe & Conc. Cast | 2026-11-11 → 2026-10-18 (-24d) | 2026-11-14 → 2026-10-21 (-24d) |  | 62.32d → 88.57d |
| B2.33 71 00 02 147 | Backfilling & Warrning Tape | 2026-11-15 → 2026-10-21 (-25d) | 2026-11-17 → 2026-10-25 (-23d) |  | 62.32d → 88.57d |
| 4 Way | **4 Way** | 2026-11-11 → 2026-10-18 (-24d) | 2026-11-19 → 2026-10-27 (-23d) |  |  |
| B2.33 71 00 02 151 | Excavation | 2026-11-11 → 2026-10-18 (-24d) | 2026-11-14 → 2026-10-21 (-24d) |  | 65.32d → 91.57d |
| B2.33 71 00 02 152 | Shuttering, Steel Fixing Incl. UPVC Pipe & Conc. Cast | 2026-11-15 → 2026-10-21 (-25d) | 2026-11-16 → 2026-10-24 (-23d) |  | 66.32d → 92.57d |
| B2.33 71 00 02 153 | Backfilling & Warrning Tape | 2026-11-17 → 2026-10-24 (-24d) | 2026-11-19 → 2026-10-27 (-23d) |  | 66.32d → 92.57d |
| 6 Way | **6 Way** | 2026-11-11 → 2026-10-18 (-24d) | 2026-11-21 → 2026-10-28 (-24d) |  |  |
| B2.33 71 00 02 148 | Excavation | 2026-11-11 → 2026-10-18 (-24d) | 2026-11-14 → 2026-10-21 (-24d) |  | 65.32d → 91.57d |
| B2.33 71 00 02 149 | Shuttering, Steel Fixing Incl. UPVC Pipe & Conc. Cast | 2026-11-15 → 2026-10-21 (-25d) | 2026-11-17 → 2026-10-25 (-23d) |  | 65.32d → 91.57d |
| B2.33 71 00 02 150 | Backfilling & Warrning Tape | 2026-11-18 → 2026-10-25 (-24d) | 2026-11-21 → 2026-10-28 (-24d) |  | 65.32d → 91.57d |
| Cables | **Cables** | 2026-11-07 → 2026-11-04 (-3d) | 2026-11-08 → 2026-11-07 (-1d) |  |  |
| 4C,10+1C,10mm2 | **4C,10+1C,10mm2** | 2026-11-07 → 2026-11-04 (-3d) | 2026-11-08 → 2026-11-07 (-1d) |  |  |
| B2.33 71 00 01 19 | Cable Pulling | 2026-11-07 → 2026-11-04 (-3d) | 2026-11-08 → 2026-11-07 (-1d) |  | 4.32d → 12.08d |
| 4C,50+1C,25mm2 | **4C,50+1C,25mm2** | 2026-11-07 → 2026-11-04 (-3d) | 2026-11-08 → 2026-11-07 (-1d) |  |  |
| B2.33 71 00 01 20 | Cable Pulling | 2026-11-07 → 2026-11-04 (-3d) | 2026-11-08 → 2026-11-07 (-1d) |  | 4.32d → 12.08d |
| Street Lighting | **Street Lighting** |  | 2026-11-14 → 2026-11-21 (+7d) |  |  |
| Duct Banks | **Duct Banks** | 2026-10-15 → 2026-10-22 (+7d) | 2026-10-21 → 2026-10-28 (+7d) |  |  |
| 4 Way | **4 Way** | 2026-10-15 → 2026-10-22 (+7d) | 2026-10-21 → 2026-10-28 (+7d) |  |  |
| B2.33 71 00 02 79 | Excavation | 2026-10-15 → 2026-10-22 (+7d) | 2026-10-17 → 2026-10-24 (+7d) |  |  |

| ID | Task | Start | Finish | Total float |
| --- | --- | --- | --- | --- |
| B2.33 71 00 02 80 | Shuttering, Steel Fixing Incl. UPVC Pipe & Conc. Cast | 2026-10-18 → 2026-10-25 (+7d) | 2026-10-19 → 2026-10-26 (+7d) |  |
| B2.33 71 00 02 81 | Backfilling & Warrning Tape | 2026-10-20 → 2026-10-27 (+7d) | 2026-10-21 → 2026-10-28 (+7d) |  |
| Drawpits | **Drawpits** | 2026-10-18 → 2026-10-25 (+7d) | 2026-10-24 → 2026-10-31 (+7d) |  |
| B2.33 71 00 02 82 | Excavation | 2026-10-18 → 2026-10-25 (+7d) | 2026-10-19 → 2026-10-26 (+7d) |  |
| B2.33 71 00 02 83 | Drawpits Installation | 2026-10-20 → 2026-10-27 (+7d) | 2026-10-21 → 2026-10-28 (+7d) |  |
| B2.33 71 00 02 84 | Backfilling & Warrning Tape | 2026-10-22 → 2026-10-29 (+7d) | 2026-10-24 → 2026-10-31 (+7d) |  |
| Cables | **Cables** | 2026-11-04 → 2026-11-11 (+7d) | 2026-11-11 → 2026-11-18 (+7d) |  |
| 4C,10+1C,10mm2 | **4C,10+1C,10mm2** | 2026-11-04 → 2026-11-11 (+7d) | 2026-11-11 → 2026-11-18 (+7d) |  |
| B2.33 71 19 202 | Land Adjustment | 2026-11-04 → 2026-11-11 (+7d) | 2026-11-07 → 2026-11-14 (+7d) |  |
| B2.33 71 49.23.182 | Cable Pulling | 2026-11-07 → 2026-11-14 (+7d) | 2026-11-09 → 2026-11-16 (+7d) |  |
| B2.33 71 19 212 | Backfilling | 2026-11-09 → 2026-11-16 (+7d) | 2026-11-11 → 2026-11-18 (+7d) |  |
| SL Poles | **SL Poles** |  | 2026-10-15 → 2026-10-22 (+7d) |  |
| Pole (10 M Sngl Arm) | **Pole (10 M Single Arm)** |  | 2026-10-15 → 2026-10-22 (+7d) |  |
| B2.33 71 16.91_R | Excavation(Rem) | 2026-10-07 → 2026-10-14 (+7d) | 2026-10-08 → 2026-10-15 (+7d) |  |
| B2.33 71 16.92_R | PC & RC Foundation(Rem) | 2026-10-10 → 2026-10-17 (+7d) | 2026-10-11 → 2026-10-18 (+7d) |  |
| B2.33 71 16.93_R | Lighting Poles Installation Incl power box, Cables(Rem) | 2026-10-10 → 2026-10-17 (+7d) | 2026-10-11 → 2026-10-18 (+7d) |  |
| B2.26.56.19.16_R | Lighting Luminares Inst(Rem) | 2026-10-12 → 2026-10-19 (+7d) | 2026-10-13 → 2026-10-20 (+7d) |  |
| B2.33 71 16.94 | Backfilling, Grouting & Chamfering | 2026-10-14 → 2026-10-21 (+7d) | 2026-10-15 → 2026-10-22 (+7d) |  |
| SL Pillars | **SL Pillars** | 2026-11-09 → 2026-11-16 (+7d) | 2026-11-14 → 2026-11-21 (+7d) |  |
| B2.33 71 26 034 | Pillars Installation (Internal Wiring) | 2026-11-09 → 2026-11-16 (+7d) | 2026-11-11 → 2026-11-18 (+7d) |  |
| B2.33 71 26 045 | KWH meter mounting a frame installation | 2026-11-11 → 2026-11-18 (+7d) | 2026-11-14 → 2026-11-21 (+7d) |  |
| Earthing | **Earthing** | 2026-10-15 → 2026-10-22 (+7d) | 2026-10-24 → 2026-10-31 (+7d) |  |
| B2.33 71 19 44 | Land Adjustment | 2026-10-15 → 2026-10-22 (+7d) | 2026-10-17 → 2026-10-24 (+7d) |  |
| B2.33 71 19 45 | Earth Rods & Conduits | 2026-10-18 → 2026-10-25 (+7d) | 2026-10-19 → 2026-10-26 (+7d) |  |
| B2.33 71 19 46 | Backfilling | 2026-10-21 → 2026-10-28 (+7d) | 2026-10-24 → 2026-10-31 (+7d) |  |
| Telecommunication | **Telecommunication Network** |  | 2026-10-26 → 2026-11-02 (+7d) |  |
| Ducts | **Ducts** |  | 2026-10-25 → 2026-11-01 (+7d) |  |
| (6*50mm) | **Size (6*50mm) HDPE ducts** |  | 2026-10-25 → 2026-11-01 (+7d) |  |
| B2.1.33 81 26.162_R | Excavation(Rem) | 2026-10-25 → 2026-11-01 (+7d) | 2026-10-25 → 2026-11-01 (+7d) |  |
| B2.1.33 81 26.163_R | HDPE Pipe, Shuttering, Steel Fixing & Conc. Cast(Rem) | 2026-10-25 → 2026-11-01 (+7d) | 2026-10-25 → 2026-11-01 (+7d) |  |
| B2.1.33 81 26.164_R | Backfilling & Warrning Tape(Rem) | 2026-10-25 → 2026-11-01 (+7d) | 2026-10-25 → 2026-11-01 (+7d) |  |
| (6*50mm+2*32mm) | **Size (6*50mm+2*32mm) HDPE ducts** |  | 2026-10-25 → 2026-11-01 (+7d) |  |
| B2.1.33 81 26.165_R | Excavation(Rem) | 2026-10-25 → 2026-11-01 (+7d) | 2026-10-25 → 2026-11-01 (+7d) |  |
| B2.1.33 81 26.166_R | HDPE Pipe, Shuttering, Steel Fixing & Conc. Cast(Rem) | 2026-10-25 → 2026-11-01 (+7d) | 2026-10-25 → 2026-11-01 (+7d) |  |
| B2.1.33 81 26.167_R | Backfilling & Warrning Tape(Rem) | 2026-10-25 → 2026-11-01 (+7d) | 2026-10-25 → 2026-11-01 (+7d) |  |
| (6*50mm+4*32mm) | **Size (6*50mm+4*32mm) HDPE ducts** |  | 2026-10-25 → 2026-11-01 (+7d) |  |
| B2.1.33 81 26.168_R | Excavation(Rem) | 2026-10-25 → 2026-11-01 (+7d) | 2026-10-25 → 2026-11-01 (+7d) |  |
| B2.1.33 81 26.169_R | HDPE Pipe, Shuttering, Steel Fixing & Conc. Cast(Rem) | 2026-10-25 → 2026-11-01 (+7d) | 2026-10-25 → 2026-11-01 (+7d) |  |
| B2.1.33 81 26.170_R | Backfilling & Warrning Tape(Rem) | 2026-10-25 → 2026-11-01 (+7d) | 2026-10-25 → 2026-11-01 (+7d) |  |
| (2*32mm) | **Size (2*32mm) HDPE ducts** |  | 2026-10-25 → 2026-11-01 (+7d) |  |
| B2.1.33 81 26.171_R | Excavation(Rem) | 2026-10-25 → 2026-11-01 (+7d) | 2026-10-25 → 2026-11-01 (+7d) |  |
| B2.1.33 81 26.172_R | HDPE Pipe, Shuttering, Steel Fixing & Conc. Cast(Rem) | 2026-10-25 → 2026-11-01 (+7d) | 2026-10-25 → 2026-11-01 (+7d) |  |
| B2.1.33 81 26.173_R | Backfilling & Warrning Tape(Rem) | 2026-10-25 → 2026-11-01 (+7d) | 2026-10-25 → 2026-11-01 (+7d) |  |
| Manholes | **Manholes** |  | 2026-10-26 → 2026-11-02 (+7d) |  |
| Manhole Type 1 | **Manhole Type 1** |  | 2026-10-26 → 2026-11-02 (+7d) |  |
| B2.31 23 00.630_R | Excavation(Rem) | 2026-10-25 → 2026-11-01 (+7d) | 2026-10-26 → 2026-11-02 (+7d) |  |
| B2.33 71 00.268_R | Manhole Installation(Rem) | 2026-10-25 → 2026-11-01 (+7d) | 2026-10-26 → 2026-11-02 (+7d) |  |
| B2.33 71 00.269_R | Backfilling & Warrning Tape(Rem) | 2026-10-25 → 2026-11-01 (+7d) | 2026-10-26 → 2026-11-02 (+7d) |  |
| Manhole Type 2 | **Manhole Type 2** |  | 2026-10-26 → 2026-11-02 (+7d) |  |
| B2.31 23 00.631_R | Excavation(Rem) | 2026-10-25 → 2026-11-01 (+7d) | 2026-10-26 → 2026-11-02 (+7d) |  |
| B2.33 71 00.270_R | Manhole Installation(Rem) | 2026-10-25 → 2026-11-01 (+7d) | 2026-10-26 → 2026-11-02 (+7d) |  |
| B2.33 71 00.271_R | Backfilling & Warrning Tape(Rem) | 2026-10-25 → 2026-11-01 (+7d) | 2026-10-26 → 2026-11-02 (+7d) |  |
| Crossing Ducts | **Road Crossing Ducts** |  | 2026-10-26 → 2026-11-02 (+7d) |  |
| 1 | **Size (6X50mm) HDPE** |  | 2026-10-26 → 2026-11-02 (+7d) |  |
| B2.31 23 00.629_R | Excavation(Rem) | 2026-10-26 → 2026-11-02 (+7d) | 2026-10-26 → 2026-11-02 (+7d) |  |
| B2.33 71 00.266_R | Shuttering, Steel Fixing Incl. UPVC Pipe & Conc. Cast(Rem) | 2026-10-26 → 2026-11-02 (+7d) | 2026-10-26 → 2026-11-02 (+7d) |  |
| B2.33 71 00.267_R | Backfilling & Warrning Tape(Rem) | 2026-10-26 → 2026-11-02 (+7d) | 2026-10-26 → 2026-11-02 (+7d) |  |
| Earth & Road Works | **Earth & Road Works** |  | 2026-12-12 → 2026-12-16 (+4d) |  |
| Earth Layers | **Earth Layers** |  | 2026-10-11 → 2026-10-18 (+7d) |  |
| B1.2.32 11 13.01.15_R | Subgrade(Rem) | 2026-10-07 → 2026-10-14 (+7d) | 2026-10-10 → 2026-10-17 (+7d) |  |
| B1.2.32 11 23.01.15_R | Aggregate Base Course(Rem) | 2026-10-07 → 2026-10-14 (+7d) | 2026-10-11 → 2026-10-18 (+7d) |  |
| Interlock | **Interlock** | 2026-11-07 → 2026-11-04 (-3d) | 2026-11-09 → 2026-11-08 (-1d) |  |
| B1.2.32 14 13.13.15 | 60mm thick - Interlocking Block Pavers | 2026-11-07 → 2026-11-04 (-3d) | 2026-11-09 → 2026-11-08 (-1d) | 4.32d → 12.08d |
| Curbstone | **Curbstone** | 2026-11-10 → 2026-11-08 (-2d) | 2026-11-30 → 2026-11-29 (-1d) |  |
| Pre Install | **Pre-Installation** | 2026-11-10 → 2026-11-08 (-2d) | 2026-11-16 → 2026-11-15 (-1d) |  |
| B2.31 23 00.421 | Excavation | 2026-11-10 → 2026-11-08 (-2d) | 2026-11-11 → 2026-11-10 (-1d) | 4.32d → 12.08d |
| B1.2.32 14 13.13.215 | PCC | 2026-11-12 → 2026-11-10 (-2d) | 2026-11-14 → 2026-11-12 (-2d) | 4.32d → 12.08d |
| 32 16 13.0015 | Haunching | 2026-11-15 → 2026-11-12 (-3d) | 2026-11-16 → 2026-11-15 (-1d) | 4.32d → 12.08d |
| Installation | **Installation** | 2026-11-17 → 2026-11-15 (-2d) | 2026-11-28 → 2026-11-26 (-2d) |  |
| B1.2.32 16.13.01.15 | Curb Stone, Type K1 | 2026-11-17 → 2026-11-15 (-2d) | 2026-11-18 → 2026-11-17 (-1d) | 4.32d → 12.08d |

| ID | Task | Start | Finish | Complete | Total float |
| --- | --- | --- | --- | --- | --- |
| B1.2.32 16.13.02.14 | Dropped Curb, Type K3 | 2026-11-19 → 2026-11-17 (-2d) | 2026-11-21 → 2026-11-19 (-2d) |  | 4.32d → 12.08d |
| B1.2.32 16.13.03.15 | Edge Curb, Type K4 | 2026-11-22 → 2026-11-19 (-3d) | 2026-11-23 → 2026-11-22 (-1d) |  | 4.32d → 12.08d |
| B1.2.32 16.13.0415 | Heel Curb, Type K5 | 2026-11-24 → 2026-11-22 (-2d) | 2026-11-25 → 2026-11-24 (-1d) |  | 4.32d → 12.08d |
| B1.2.32 16.13.05.14 | Transition Curb | 2026-11-26 → 2026-11-24 (-2d) | 2026-11-28 → 2026-11-26 (-2d) |  | 4.32d → 12.08d |
| Finishing | **Finishing** | 2026-11-29 → 2026-11-26 (-3d) | 2026-11-30 → 2026-11-29 (-1d) |  |  |
| 32 16 13.015 | Finishing, Fareface | 2026-11-29 → 2026-11-26 (-3d) | 2026-11-30 → 2026-11-29 (-1d) |  | 4.32d → 12.08d |
| Asphalt Layers | **Asphalt Layers** | 2026-10-21 → 2026-10-18 (-3d) | 2026-12-02 → 2026-12-01 (-1d) |  |  |
| B1.2.32 11 26.01.15 | Bituminous Base Course including Prime Coat (MC1) and tack coat (RC2) | 2026-10-21 → 2026-10-18 (-3d) | 2026-10-27 → 2026-10-24 (-3d) |  | 34.07d → 42.82d |
| B1.2.32 12 16.01.15 | Bituminous concrete Wearing Course, including tack coat (RC2) | 2026-12-01 → 2026-11-29 (-2d) | 2026-12-02 → 2026-12-01 (-1d) |  | 4.32d → 12.08d |
| Pavement Marking | **Pavement Marking** | 2026-12-06 → 2026-12-09 (+3d) | 2026-12-09 → 2026-12-14 (+5d) |  |  |
| B1.2.32 17 23.02.15 | Retroreflective Thermoplastic Yellow, Traffic lines | 2026-12-06 → 2026-12-09 (+3d) | 2026-12-07 → 2026-12-12 (+5d) |  | 23.32d → 26d |
| B1.2.32 17 23.01.15 | Retroreflective Thermoplastic White Traffic lines | 2026-12-08 → 2026-12-12 (+4d) | 2026-12-09 → 2026-12-14 (+5d) |  | 23.32d → 26d |
| Traffic Signs | **Traffic Signs** | 2026-11-12 → 2026-11-10 (-2d) | 2026-12-12 → 2026-12-16 (+4d) |  |  |
| Pre Install | **Pre-Installation** | 2026-11-12 → 2026-11-10 (-2d) | 2026-11-16 → 2026-11-15 (-1d) |  |  |
| B2.31 23 00.431 | Excavation | 2026-11-12 → 2026-11-10 (-2d) | 2026-11-14 → 2026-11-12 (-2d) |  | 6.32d → 14.08d |
| 10 14 53.015 | Foundation | 2026-11-15 → 2026-11-12 (-3d) | 2026-11-16 → 2026-11-15 (-1d) |  | 16.32d → 24.08d |
| Installation | **Installation** | 2026-12-08 → 2026-12-12 (+4d) | 2026-12-12 → 2026-12-16 (+4d) |  |  |
| B1.2.10 14 53.0115 | 1 Sheet Alumenium, Single post | 2026-12-08 → 2026-12-12 (+4d) | 2026-12-09 → 2026-12-14 (+5d) |  | 25.32d → 28d |
| B1.2.10 14 53.0215 | 2 Sheet Alumenium, Single post | 2026-12-10 → 2026-12-14 (+4d) | 2026-12-12 → 2026-12-16 (+4d) |  | 23.32d → 26d |
| B1.2.10 14 53.0315 | 1 Sheet Alumenium, Double post | 2026-12-10 → 2026-12-14 (+4d) | 2026-12-12 → 2026-12-16 (+4d) |  | 23.32d → 26d |
| Guard Rail | **Guard Rail** | 2026-10-07 → 2026-10-14 (+7d) | 2026-10-19 → 2026-10-26 (+7d) |  |  |
| B2.31 23 00.664 | Excavation | 2026-10-07 → 2026-10-14 (+7d) | 2026-10-10 → 2026-10-17 (+7d) |  |  |
| 10 14 53.25 | Foundation | 2026-10-13 → 2026-10-20 (+7d) | 2026-10-14 → 2026-10-21 (+7d) |  |  |
| B1.2.10 14 53.338 | W-Beam Guard Rail Installation | 2026-10-15 → 2026-10-22 (+7d) | 2026-10-19 → 2026-10-26 (+7d) |  |  |
| Road Misc. | **Miscellaneous** | 2026-12-03 → 2026-12-01 (-2d) | 2026-12-05 → 2026-12-03 (-2d) |  |  |
| B1.2.32 12 19.13.015 | Speed Tables | 2026-12-03 → 2026-12-01 (-2d) | 2026-12-05 → 2026-12-03 (-2d) |  | 23.32d → 31.08d |
| Landscape | **Landscape** | 2026-11-15 → 2026-10-14 (-32d) | 2026-12-30 → 2027-01-06 (+7d) |  |  |
| Fences | **Fences** | 2026-11-15 → 2026-11-12 (-3d) | 2026-12-03 → 2026-12-02 (-1d) |  |  |
| (ZATCA HCIS) | **Steel fence (ZATCA HCIS)** | 2026-11-15 → 2026-11-12 (-3d) | 2026-12-03 → 2026-12-02 (-1d) |  |  |
| B7.32 31 26.01-191 | Earthwork | 2026-11-15 → 2026-11-12 (-3d) | 2026-11-21 → 2026-11-19 (-2d) |  | 6.32d → 14.08d |
| B7.32 31 26.01-193 | Foundation | 2026-11-22 → 2026-11-19 (-3d) | 2026-11-28 → 2026-11-26 (-2d) |  | 6.32d → 14.08d |
| B7.32 31 26.01-195 | Fence Installation | 2026-11-29 → 2026-11-26 (-3d) | 2026-12-03 → 2026-12-02 (-1d) |  | 6.32d → 14.08d |
| Geotextile | **Geotextile** | 2026-11-30 → 2026-10-14 (-47d) | 2026-12-05 → 2026-11-25 (-10d) |  |  |
| B7.31 32 19.23.6 | Geotextile to protect trees planting soil | 2026-11-30 → 2026-10-14 (-47d) | 2026-12-05 → 2026-10-20 (-46d) |  | 19.32d → 64.42d |
| B7.31 32 19.23.7 | Geotextile below gravel bed | 2026-11-30 → 2026-11-19 (-11d) | 2026-12-05 → 2026-11-25 (-10d) |  | 19.32d → 34.08d |
| Trees | **Trees** | 2026-12-24 → 2026-12-31 (+7d) | 2026-12-30 → 2027-01-06 (+7d) |  |  |
| B7.32 93 43.07 | Tamarindus indica | 2026-12-24 → 2026-12-31 (+7d) | 2026-12-30 → 2027-01-06 (+7d) |  |  |
| Road 03 | **Road 03** |  | 2026-12-30 → 2027-01-06 (+7d) |  |  |
| Wet Networks | **Wet Networks** |  | 2026-11-07 → 2026-11-14 (+7d) |  |  |
| Sewerage Network | **Sewerage Network** |  | 2026-10-08 → 2026-10-15 (+7d) |  |  |
| Manholes | **Manholes ?1200** |  | 2026-10-08 → 2026-10-15 (+7d) |  |  |
| 3 | **Depth From 1.5m to 2.5m** |  | 2026-10-08 → 2026-10-15 (+7d) |  |  |
| B6.33 05 39.01.1657_R | Test, Internal Finishing, Benching & Cover(Rem) |  | 2026-10-08 → 2026-10-15 (+7d) |  |  |
| 4 | **Depth From 2.5m to 3.5m** |  | 2026-10-08 → 2026-10-15 (+7d) |  |  |
| B6.33 05 39.01.1697_R | Manhole Installation(Rem) |  | 2026-10-07 → 2026-10-01 A (-6d) | 50% → 100% | 112.75d → none |
| B6.33 05 39.01.1707_R | Test, Internal Finishing, Benching & Cover(Rem) |  | 2026-10-08 → 2026-10-15 (+7d) |  |  |
| Stormwater Network | **Stormwater Network** |  | 2026-10-07 → 2026-10-14 (+7d) |  |  |
| GRP | **GRP** |  | 2026-10-07 → 2026-10-14 (+7d) |  |  |
| ?4001 | **?400** |  | 2026-10-07 → 2026-10-14 (+7d) |  |  |
| 3 | **Depth From 1.5m to 2.5m** |  | 2026-10-07 → 2026-10-14 (+7d) |  |  |
| B6.33 42 11.01-134_R | Backfilling & Warrning Tape(Rem) |  | 2026-10-07 → 2026-10-14 (+7d) |  |  |
| ?4002 | **?600** |  | 2026-10-07 → 2026-10-14 (+7d) |  |  |
| 4 | **Depth From 1.5m to 2.5m** |  | 2026-10-07 → 2026-10-14 (+7d) |  |  |
| B6.33 42 11.01-136_R | Backfilling & Warrning Tape(Rem) |  | 2026-10-07 → 2026-10-14 (+7d) |  |  |
| B6.33 42 11.01-130_R | Embedment & Test(Rem) |  | 2026-10-07 → 2026-10-14 (+7d) |  |  |
| B6.33 42 11.01-118_R | Sand Bedding(Rem) |  | 2026-10-07 → 2026-10-14 (+7d) |  |  |
| B6.33 42 11.01-124_R | Pipe Laying(Rem) |  | 2026-10-07 → 2026-10-14 (+7d) |  |  |
| ?40021 | **?700** |  | 2026-10-07 → 2026-10-14 (+7d) |  |  |
| 4 | **Depth From 1.5m to 2.5m** |  | 2026-10-07 → 2026-10-14 (+7d) |  |  |
| B6.33 42 11.01-132_R | Embedment & Test(Rem) |  | 2026-10-07 → 2026-10-14 (+7d) |  |  |
| Strom Manholes | **Manholes** |  | 2026-10-07 → 2026-10-03 (-4d) |  |  |
| 1 | **?1200** |  | 2026-10-07 → 2026-10-03 (-4d) |  |  |
| 4 | **Depth From 1.5m to 2.5m** |  | 2026-10-07 → 2026-10-03 (-4d) |  |  |
| B6.33 05 39.01.4007_R | Test, Internal Finishing, Benching & Cover(Rem) | 2026-09-30 A → 2026-08-30 A (-31d) | 2026-10-07 A → 2026-10-03 A (-4d) |  |  |
| Potable Water | **Potable Water Network** |  | 2026-10-25 → 2026-10-24 (-1d) |  |  |
| HDPE | **HDPE Pipes** |  | 2026-10-10 → 2026-10-17 (+7d) |  |  |
| ?110mm | **?110mm** |  | 2026-10-10 → 2026-10-17 (+7d) |  |  |
| Depth: 1.51m - 2.5m | **Depth: 1.51m - 2.5m** |  | 2026-10-10 → 2026-10-17 (+7d) |  |  |
| B3.33 14 13-11101_R | Pipe Laying(Rem) | 2026-10-07 → 2026-10-14 (+7d) | 2026-10-10 → 2026-10-17 (+7d) |  |  |
| B3.33 14 13-11105_R | Embedment & Test(Rem) | 2026-10-07 → 2026-10-14 (+7d) | 2026-10-10 → 2026-10-17 (+7d) |  |  |

| ID | Task | Start | Finish | Complete | Total float |
| --- | --- | --- | --- | --- | --- |
| B3.33 14 13-1193_R | Excavation(Rem) | 2026-10-07 → 2026-10-14 (+7d) | 2026-10-10 → 2026-10-17 (+7d) |  | 88.32d → 110.32d |
| B3.33 14 13-1197_R | Sand Bedding(Rem) | 2026-10-07 → 2026-10-14 (+7d) | 2026-10-10 → 2026-10-17 (+7d) |  |  |
| B3.33 14 13-11109_R | Backfilling & Warrning Tape(Rem) | 2026-10-07 → 2026-10-14 (+7d) | 2026-10-10 → 2026-10-17 (+7d) |  |  |
| Crossing | **Plots and Buildings Crossing** | 2026-10-10 → 2026-10-14 (+4d) | 2026-10-19 → 2026-10-24 (+5d) |  |  |
| B3.33 14 13.02.28 | Earthwork | 2026-10-10 → 2026-10-14 (+4d) | 2026-10-12 → 2026-10-17 (+5d) |  | 88.32d → 90.32d |
| B3.33 14 13.02.29 | Sand Bedding | 2026-10-13 → 2026-10-18 (+5d) | 2026-10-15 → 2026-10-20 (+5d) |  | 88.32d → 90.32d |
| B3.33 14 13.02.30 | Tee, Pipe (Crossing) Installation & Backfilling | 2026-10-17 → 2026-10-21 (+4d) | 2026-10-19 → 2026-10-24 (+5d) |  | 88.32d → 90.32d |
| Valves & Chambers | **Valves & Chambers** |  | 2026-10-25 → 2026-10-12 (-13d) |  |  |
| GV | **Gate Valves** |  | 2026-10-10 → 2026-10-05 (-5d) |  |  |
| 1 | **Gate valves dia (110) mm** |  | 2026-10-10 → 2026-10-05 (-5d) |  |  |
| B3.33 14 19.01.117 | Spindle & Surface Box | 2026-10-07 → 2026-10-04 A (-3d) | 2026-10-10 → 2026-10-05 A (-5d) | 0% → 100% | 110.32d → none |
| 2 | **Air Valves** |  | 2026-10-25 → 2026-10-12 (-13d) |  |  |
| 4 | **Air valves on less than 315 mm. (In Chamber)** |  | 2026-10-25 → 2026-10-12 (-13d) |  |  |
| B3.33 05 63.02.37_R | Land Adjustment & Compaction(Rem) | 2026-10-07 → 2026-09-28 A (-9d) | 2026-10-08 → 2026-10-07 A (-1d) | 0% → 100% | 88.32d → none |
| B3.33 05 63.02.35_R | Foundations(Rem) | 2026-10-07 → 2026-09-30 A (-7d) | 2026-10-10 A | 0% → 100% | 99.32d → none |
| B3.33 05 63.02.38_R | Chambers Walls Conc Cast In Situ(Rem) | 2026-10-07 → 2026-10-01 A (-6d) | 2026-10-10 → 2026-10-11 A (+1d) | 0% → 100% | 99.32d → none |
| B3.33 05 63.02.36_R | Chamber Curing, Finishing & Steel Cover(Rem) | 2026-10-07 → 2026-10-03 A (-4d) | 2026-10-10 → 2026-10-12 A (+2d) | 0% → 100% | 99.32d → none |
| B3.33 05 63.02.39 | Valve & Fitting Installation | 2026-10-20 → 2026-10-08 A (-12d) | 2026-10-25 → 2026-10-10 A (-15d) | 0% → 100% | 91.32d → none |
| Fire Fighting | **Fire Fighting Network** |  | 2026-11-07 → 2026-11-14 (+7d) |  |  |
| Valves & Chambers | **Valves & Chambers** |  | 2026-10-21 → 2026-10-17 (-4d) |  |  |
| GV | **Gate Valves** |  | 2026-10-21 → 2026-10-15 (-6d) |  |  |
| 1 | **Gate valves dia (250) mm** |  | 2026-10-21 → 2026-10-15 (-6d) |  |  |
| B3.33 14 19.01.133 | Spindle & Surface Box | 2026-10-18 → 2026-10-11 A (-7d) | 2026-10-21 → 2026-10-15 (-6d) | 0% → 50% | 64.32d → 111.32d |
| 2 | **Air Valves** |  | 2026-10-13 → 2026-10-17 (+4d) |  |  |
| 4 | **Air valves on less than 315 mm. (In Chamber)** |  | 2026-10-13 → 2026-10-17 (+4d) |  |  |
| B3.33 05 63.02.79 | Valve & Fitting Installation | 2026-10-07 A | 2026-10-13 → 2026-10-17 (+4d) | 0% → 50% | 92.32d → 110.32d |
| 3 | **Fire Hydrant** |  | 2026-11-07 → 2026-11-14 (+7d) |  |  |
| B3.33 14 19.01.fh43_R | Firehydrant Fixing/Installation(Rem) | 2026-10-07 → 2026-10-14 (+7d) | 2026-10-11 → 2026-10-18 (+7d) |  | 77.82d → 102.82d |
| B3.33 14 19.01.fh44_R | Riser Pipe & Flanged Fittings Installation(Rem) | 2026-10-07 → 2026-10-14 (+7d) | 2026-10-10 → 2026-10-17 (+7d) |  | 78.32d → 103.32d |
| B3.33 14 19.01.fh45 | Backfilling & Compaction | 2026-10-31 → 2026-11-07 (+7d) | 2026-11-07 → 2026-11-14 (+7d) |  | 61.32d → 86.32d |
| Dry Networks | **Dry Networks** |  | 2026-11-07 → 2026-11-14 (+7d) |  |  |
| MV Network | **Medium Voltage Network** |  | 2026-10-14 → 2026-10-21 (+7d) |  |  |
| Duct Banks | **Duct Banks** |  | 2026-10-14 → 2026-10-21 (+7d) |  |  |
| 4 Way | **2 Way** |  | 2026-10-14 → 2026-10-21 (+7d) |  |  |
| B2.31 23 00.643_R | Excavation(Rem) | 2026-10-07 → 2026-10-14 (+7d) | 2026-10-10 → 2026-10-17 (+7d) |  |  |
| B2.33 71 00.294_R | Shuttering, Steel Fixing Incl. UPVC Pipe & Conc. Cast(Rem) | 2026-10-07 → 2026-10-14 (+7d) | 2026-10-10 → 2026-10-17 (+7d) |  |  |
| B2.33 71 00.295 | Backfilling & Warrning Tape | 2026-10-11 → 2026-10-18 (+7d) | 2026-10-14 → 2026-10-21 (+7d) |  |  |
| Street Lighting | **Street Lighting** |  | 2026-11-07 → 2026-11-14 (+7d) |  |  |
| Duct Banks | **Duct Banks** |  | 2026-10-17 → 2026-10-24 (+7d) |  |  |
| 4 Way | **4 Way** |  | 2026-10-17 → 2026-10-24 (+7d) |  |  |
| B2.33 71 00 02 85_R | Excavation(Rem) | 2026-10-11 → 2026-10-18 (+7d) | 2026-10-12 → 2026-10-19 (+7d) |  |  |
| B2.33 71 00 02 86_R | Shuttering, Steel Fixing Incl. UPVC Pipe & Conc. Cast(Rem) | 2026-10-13 → 2026-10-20 (+7d) | 2026-10-14 → 2026-10-21 (+7d) |  |  |
| B2.33 71 00 02 87_R | Backfilling & Warrning Tape(Rem) | 2026-10-15 → 2026-10-22 (+7d) | 2026-10-17 → 2026-10-24 (+7d) |  |  |
| Drawpits | **Drawpits** | 2026-10-13 → 2026-10-20 (+7d) | 2026-10-19 → 2026-10-26 (+7d) |  |  |
| B2.33 71 00 02 88 | Excavation | 2026-10-13 → 2026-10-20 (+7d) | 2026-10-14 → 2026-10-21 (+7d) |  |  |
| B2.33 71 00 02 89 | Drawpits Installation | 2026-10-15 → 2026-10-22 (+7d) | 2026-10-17 → 2026-10-24 (+7d) |  |  |
| B2.33 71 00 02 90 | Backfilling & Warrning Tape | 2026-10-18 → 2026-10-25 (+7d) | 2026-10-19 → 2026-10-26 (+7d) |  |  |
| Cables | **Cables** |  | 2026-11-02 → 2026-11-09 (+7d) |  |  |
| 4C,10+1C,10mm2 | **4C,10+1C,10mm2** |  | 2026-11-02 → 2026-11-09 (+7d) |  |  |
| B2.33 71 19 222_R | Land Adjustment(Rem) | 2026-10-26 → 2026-11-02 (+7d) | 2026-10-28 → 2026-11-04 (+7d) |  |  |
| B2.33 71 49.23.192_R | Cable Pulling(Rem) | 2026-10-28 → 2026-11-04 (+7d) | 2026-10-31 → 2026-11-07 (+7d) |  |  |
| B2.33 71 19 232_R | Backfilling(Rem) | 2026-10-31 → 2026-11-07 (+7d) | 2026-11-02 → 2026-11-09 (+7d) |  |  |
| SL Poles | **SL Poles** |  | 2026-10-13 → 2026-10-20 (+7d) |  |  |
| Pole (10 M Sngl Arm) | **Pole (10 M Single Arm)** |  | 2026-10-13 → 2026-10-20 (+7d) |  |  |
| B2.33 71 16.95_R | Excavation(Rem) | 2026-10-07 → 2026-10-14 (+7d) | 2026-10-08 → 2026-10-15 (+7d) |  |  |
| B2.33 71 16.96_R | PC & RC Foundation(Rem) | 2026-10-07 → 2026-10-14 (+7d) | 2026-10-08 → 2026-10-15 (+7d) |  |  |
| B2.33 71 16.97_R | Lighting Poles Installation Incl power box, Cables(Rem) | 2026-10-07 → 2026-10-14 (+7d) | 2026-10-08 → 2026-10-15 (+7d) |  |  |
| B2.26.56.19.17 | Lighting Luminares Inst | 2026-10-10 → 2026-10-17 (+7d) | 2026-10-11 → 2026-10-18 (+7d) |  |  |
| B2.33 71 16.98 | Backfilling, Grouting & Chamfering | 2026-10-12 → 2026-10-19 (+7d) | 2026-10-13 → 2026-10-20 (+7d) |  |  |
| Earthing | **Earthing** | 2026-10-31 → 2026-11-07 (+7d) | 2026-11-07 → 2026-11-14 (+7d) |  |  |
| B2.33 71 19 47 | Land Adjustment | 2026-10-31 → 2026-11-07 (+7d) | 2026-11-02 → 2026-11-09 (+7d) |  |  |
| B2.33 71 19 48 | Earth Rods & Conduits | 2026-11-02 → 2026-11-09 (+7d) | 2026-11-04 → 2026-11-11 (+7d) |  |  |
| B2.33 71 19 49 | Backfilling | 2026-11-04 → 2026-11-11 (+7d) | 2026-11-07 → 2026-11-14 (+7d) |  |  |
| Telecommunication | **Telecommunication Network** |  | 2026-10-20 → 2026-10-27 (+7d) |  |  |
| Ducts | **Ducts** |  | 2026-10-11 → 2026-10-18 (+7d) |  |  |
| (6*50mm) | **Size (6*50mm) HDPE ducts** |  | 2026-10-11 → 2026-10-18 (+7d) |  |  |
| B2.1.33 81 26.174_R | Excavation(Rem) | 2026-10-07 → 2026-10-14 (+7d) | 2026-10-08 → 2026-10-15 (+7d) |  |  |
| B2.1.33 81 26.175_R | HDPE Pipe, Shuttering, Steel Fixing & Conc. Cast(Rem) | 2026-10-07 → 2026-10-14 (+7d) | 2026-10-08 → 2026-10-15 (+7d) |  |  |
| B2.1.33 81 26.176 | Backfilling & Warrning Tape | 2026-10-10 → 2026-10-17 (+7d) | 2026-10-11 → 2026-10-18 (+7d) |  |  |
| (6*50mm+2*32mm) | **Size (6*50mm+2*32mm) HDPE ducts** |  | 2026-10-11 → 2026-10-18 (+7d) |  |  |

| ID | Task | Start | Finish | Complete | Total float |
| --- | --- | --- | --- | --- | --- |
| B2.1.33 81 26.177_R | Excavation(Rem) | 2026-10-07 → 2026-10-14 (+7d) | 2026-10-08 → 2026-10-15 (+7d) |  |  |
| B2.1.33 81 26.178_R | HDPE Pipe, Shuttering, Steel Fixing & Conc. Cast(Rem) | 2026-10-07 → 2026-10-14 (+7d) | 2026-10-08 → 2026-10-15 (+7d) |  |  |
| B2.1.33 81 26.179 | Backfilling & Warrning Tape | 2026-10-10 → 2026-10-17 (+7d) | 2026-10-11 → 2026-10-18 (+7d) |  |  |
| (6*50mm+4*32mm) | **Size (6*50mm+4*32mm) HDPE ducts** |  | 2026-10-11 → 2026-10-18 (+7d) |  |  |
| B2.1.33 81 26.180_R | Excavation(Rem) | 2026-10-07 → 2026-10-14 (+7d) | 2026-10-08 → 2026-10-15 (+7d) |  |  |
| B2.1.33 81 26.181_R | HDPE Pipe, Shuttering, Steel Fixing & Conc. Cast(Rem) | 2026-10-07 → 2026-10-14 (+7d) | 2026-10-08 → 2026-10-15 (+7d) |  |  |
| B2.1.33 81 26.182 | Backfilling & Warrning Tape | 2026-10-10 → 2026-10-17 (+7d) | 2026-10-11 → 2026-10-18 (+7d) |  |  |
| Manholes | **Manholes** | 2026-10-10 → 2026-10-17 (+7d) | 2026-10-20 → 2026-10-27 (+7d) |  |  |
| Manhole Type 1 | **Manhole Type 1** | 2026-10-10 → 2026-10-17 (+7d) | 2026-10-15 → 2026-10-22 (+7d) |  |  |
| B2.31 23 00.633 | Excavation | 2026-10-10 → 2026-10-17 (+7d) | 2026-10-11 → 2026-10-18 (+7d) |  |  |
| B2.33 71 00.274 | Manhole Installation | 2026-10-12 → 2026-10-19 (+7d) | 2026-10-13 → 2026-10-20 (+7d) |  |  |
| B2.33 71 00.275 | Backfilling & Warrning Tape | 2026-10-14 → 2026-10-21 (+7d) | 2026-10-15 → 2026-10-22 (+7d) |  |  |
| Manhole Type 2 | **Manhole Type 2** | 2026-10-12 → 2026-10-19 (+7d) | 2026-10-20 → 2026-10-27 (+7d) |  |  |
| B2.31 23 00.634 | Excavation | 2026-10-12 → 2026-10-19 (+7d) | 2026-10-14 → 2026-10-21 (+7d) |  |  |
| B2.33 71 00.276 | Manhole Installation | 2026-10-15 → 2026-10-22 (+7d) | 2026-10-17 → 2026-10-24 (+7d) |  |  |
| B2.33 71 00.277 | Backfilling & Warrning Tape | 2026-10-18 → 2026-10-25 (+7d) | 2026-10-20 → 2026-10-27 (+7d) |  |  |
| Crossing Ducts | **Road Crossing Ducts** | 2026-10-11 → 2026-10-18 (+7d) | 2026-10-17 → 2026-10-24 (+7d) |  |  |
| 1 | **Size (6X50mm) HDPE** | 2026-10-11 → 2026-10-18 (+7d) | 2026-10-17 → 2026-10-24 (+7d) |  |  |
| B2.31 23 00.632 | Excavation | 2026-10-11 → 2026-10-18 (+7d) | 2026-10-12 → 2026-10-19 (+7d) |  |  |
| B2.33 71 00.272 | Shuttering, Steel Fixing Incl. UPVC Pipe & Conc. Cast | 2026-10-13 → 2026-10-20 (+7d) | 2026-10-14 → 2026-10-21 (+7d) |  |  |
| B2.33 71 00.273 | Backfilling & Warrning Tape | 2026-10-15 → 2026-10-22 (+7d) | 2026-10-17 → 2026-10-24 (+7d) |  |  |
| Earth & Road Works | **Earth & Road Works** |  | 2026-12-19 → 2026-12-26 (+7d) |  |  |
| Earth Layers | **Earth Layers** |  | 2026-10-08 → 2026-10-15 (+7d) |  |  |
| B1.2.32 11 23.01.16_R | Aggregate Base Course(Rem) | 2026-10-07 → 2026-10-14 (+7d) | 2026-10-08 → 2026-10-15 (+7d) |  |  |
| Interlock | **Interlock** | 2026-10-08 → 2026-10-15 (+7d) | 2026-10-12 → 2026-10-19 (+7d) |  |  |
| B1.2.32 14 13.13.16 | 60mm thick - Interlocking Block Pavers | 2026-10-08 → 2026-10-15 (+7d) | 2026-10-12 → 2026-10-19 (+7d) |  |  |
| Curbstone | **Curbstone** | 2026-10-12 → 2026-10-19 (+7d) | 2026-11-01 → 2026-11-08 (+7d) |  |  |
| Pre Install | **Pre-Installation** | 2026-10-12 → 2026-10-19 (+7d) | 2026-10-19 → 2026-10-26 (+7d) |  |  |
| B2.31 23 00.451 | Excavation | 2026-10-12 → 2026-10-19 (+7d) | 2026-10-14 → 2026-10-21 (+7d) |  |  |
| B1.2.32 14 13.13.216 | PCC | 2026-10-14 → 2026-10-21 (+7d) | 2026-10-17 → 2026-10-24 (+7d) |  |  |
| 32 16 13.0016 | Haunching | 2026-10-17 → 2026-10-24 (+7d) | 2026-10-19 → 2026-10-26 (+7d) |  |  |
| Installation | **Installation** | 2026-10-19 → 2026-10-26 (+7d) | 2026-10-29 → 2026-11-05 (+7d) |  |  |
| B1.2.32 16.13.01.16 | Curb Stone, Type K1 | 2026-10-19 → 2026-10-26 (+7d) | 2026-10-22 → 2026-10-29 (+7d) |  |  |
| B1.2.32 16.13.02.15 | Dropped Curb, Type K3 | 2026-10-22 → 2026-10-29 (+7d) | 2026-10-24 → 2026-10-31 (+7d) |  |  |
| B1.2.32 16.13.03.16 | Edge Curb, Type K4 | 2026-10-24 → 2026-10-31 (+7d) | 2026-10-25 → 2026-11-01 (+7d) |  |  |
| B1.2.32 16.13.0416 | Heel Curb, Type K5 | 2026-10-25 → 2026-11-01 (+7d) | 2026-10-27 → 2026-11-03 (+7d) |  |  |
| B1.2.32 16.13.05.15 | Transition Curb | 2026-10-27 → 2026-11-03 (+7d) | 2026-10-29 → 2026-11-05 (+7d) |  |  |
| Finishing | **Finishing** | 2026-10-29 → 2026-11-05 (+7d) | 2026-11-01 → 2026-11-08 (+7d) |  |  |
| 32 16 13.016 | Finishing, Fareface | 2026-10-29 → 2026-11-05 (+7d) | 2026-11-01 → 2026-11-08 (+7d) |  |  |
| Asphalt Layers | **Asphalt Layers** |  | 2026-12-08 → 2026-12-07 (-1d) |  |  |
| B1.2.32 11 26.01.16 | Bituminous Base Course including Prime Coat (MC1) and tack coat (RC2) | 2026-10-08 A | 2026-10-11 → 2026-10-14 (+3d) | 0% → 50% | 49.82d → 52.32d |
| B1.2.32 12 16.01.16 | Bituminous concrete Wearing Course, including tack coat (RC2) | 2026-12-03 → 2026-12-01 (-2d) | 2026-12-08 → 2026-12-07 (-1d) |  | 4.32d → 12.08d |
| Pavement Marking | **Pavement Marking** | 2026-12-14 → 2026-12-21 (+7d) | 2026-12-19 → 2026-12-26 (+7d) |  |  |
| B1.2.32 17 23.02.16 | Retroreflective Thermoplastic Yellow, Traffic lines | 2026-12-14 → 2026-12-21 (+7d) | 2026-12-16 → 2026-12-23 (+7d) |  |  |
| B1.2.32 17 23.01.16 | Retroreflective Thermoplastic White Traffic lines | 2026-12-16 → 2026-12-23 (+7d) | 2026-12-19 → 2026-12-26 (+7d) |  |  |
| Road Misc. | **Miscellaneous** | 2026-12-09 → 2026-12-07 (-2d) | 2026-12-16 → 2026-12-23 (+7d) |  |  |
| B1.2.32 12 19.13.15 | Wheels stoppers (precast concrete) | 2026-12-09 → 2026-12-07 (-2d) | 2026-12-10 → 2026-12-09 (-1d) |  | 55.32d → 63.08d |
| B1.2.32 12 19.13.016 | Speed Tables | 2026-12-14 → 2026-12-21 (+7d) | 2026-12-16 → 2026-12-23 (+7d) |  |  |
| Landscape | **Landscape** | 2026-12-24 → 2026-12-31 (+7d) | 2026-12-30 → 2027-01-06 (+7d) |  |  |
| Trees | **Trees** | 2026-12-24 → 2026-12-31 (+7d) | 2026-12-30 → 2027-01-06 (+7d) |  |  |
| B7.32 93 43.02-191 | Tamarindus indica | 2026-12-24 → 2026-12-31 (+7d) | 2026-12-30 → 2027-01-06 (+7d) |  |  |
| Road 04 | **Road 04** |  | 2027-01-05 → 2027-01-12 (+7d) |  |  |
| Wet Networks | **Wet Networks** |  | 2026-11-19 → 2026-11-17 (-2d) |  |  |
| Stormwater Network | **Stormwater Network** |  | 2026-10-07 → 2026-10-14 (+7d) |  |  |
| GRP | **GRP** |  | 2026-10-07 → 2026-10-14 (+7d) |  |  |
| ?40021 | **?700** |  | 2026-10-07 → 2026-10-14 (+7d) |  |  |
| 4 | **Depth From 1.5m to 2.5m** |  | 2026-10-07 → 2026-10-14 (+7d) |  |  |
| B6.33 42 11.01-1.38_R | Embedment & Test(Rem) |  | 2026-10-07 → 2026-10-14 (+7d) |  |  |
| B6.33 42 11.01-1.46_R | Backfilling & Warrning Tape(Rem) |  | 2026-10-07 → 2026-10-14 (+7d) |  |  |
| B6.33 42 11.01-1.30_R | Pipe Laying(Rem) |  | 2026-10-07 → 2026-10-14 (+7d) |  |  |
| ?400211 | **?800** |  | 2026-10-07 → 2026-10-14 (+7d) |  |  |
| 4 | **Depth From 1.5m to 2.5m** |  | 2026-10-07 → 2026-10-14 (+7d) |  |  |
| B6.33 42 11.01-1.40_R | Embedment & Test(Rem) |  | 2026-10-07 → 2026-10-14 (+7d) |  |  |
| B6.33 42 11.01-1.48_R | Backfilling & Warrning Tape(Rem) |  | 2026-10-07 → 2026-10-14 (+7d) |  |  |
| B6.33 42 11.01-1.32_R | Pipe Laying(Rem) |  | 2026-10-07 → 2026-10-14 (+7d) |  |  |
| Sewerage Network | **Sewerage Network** |  | 2026-10-11 → 2026-10-15 (+4d) |  |  |
| B5.33 31 00.01.0238_R | Embedment & Test(Rem) | 2026-10-07 A | 2026-10-11 A | 0% → 100% | 109.51d → none |
| 1 | **Depth From 3.5m to 4.5m** |  | 2026-10-11 → 2026-10-10 (-1d) |  |  |
| B5.33 31 00.01.0240_R | Embedment & Test(Rem) | 2026-10-07 A | 2026-10-11 → 2026-10-10 A (-1d) | 0% → 100% | 109.32d → none |
| Manholes | **Manholes ?1200** |  | 2026-10-08 → 2026-10-15 (+7d) |  |  |

| ID | Task | Start | Finish | Complete | Total float |
| --- | --- | --- | --- | --- | --- |
| 3 | **Depth From 1.5m to 2.5m** |  | 2026-10-08 → 2026-10-15 (+7d) |  |  |
| B6.33 05 39.01.1757_R | Test, Internal Finishing, Benching & Cover(Rem) |  | 2026-10-08 → 2026-10-15 (+7d) |  |  |
| 1 | **Depth From 3.5m to 4.5m** |  | 2026-10-08 → 2026-10-15 (+7d) |  |  |
| B6.33 05 39.01.1857_R | Test, Internal Finishing, Benching & Cover(Rem) |  | 2026-10-08 → 2026-10-15 (+7d) |  |  |
| Potable Water | **Potable Water Network** |  | 2026-10-27 → 2026-11-02 (+6d) |  |  |
| HDPE | **HDPE Pipes** |  | 2026-10-10 → 2026-10-17 (+7d) |  |  |
| ?110mm | **?110mm** |  | 2026-10-10 → 2026-10-17 (+7d) |  |  |
| Depth: 1.51m - 2.5m | **Depth: 1.51m - 2.5m** |  | 2026-10-10 → 2026-10-17 (+7d) |  |  |
| B3.33 14 13.01.01101_R | Pipe Laying(Rem) | 2026-10-07 → 2026-10-14 (+7d) | 2026-10-10 → 2026-10-17 (+7d) |  |  |
| B3.33 14 13.01.01105_R | Embedment & Test(Rem) | 2026-10-07 → 2026-10-14 (+7d) | 2026-10-10 → 2026-10-17 (+7d) |  |  |
| B3.33 14 13.01.01109_R | Backfilling & Warrning Tape(Rem) | 2026-10-07 → 2026-10-14 (+7d) | 2026-10-08 → 2026-10-15 (+7d) |  |  |
| Crossing | **Plots and Buildings Crossing** | 2026-10-07 → 2026-10-14 (+7d) | 2026-10-27 → 2026-11-02 (+6d) |  |  |
| B3.33 14 13.02.31 | Earthwork | 2026-10-07 → 2026-10-14 (+7d) | 2026-10-14 → 2026-10-21 (+7d) |  | 63.82d → 89.32d |
| B3.33 14 13.02.32 | Sand Bedding | 2026-10-15 → 2026-10-22 (+7d) | 2026-10-18 → 2026-10-25 (+7d) |  |  |
| B3.33 14 13.02.33 | Tee, Pipe (Crossing) Installation & Backfilling | 2026-10-20 → 2026-10-26 (+6d) | 2026-10-27 → 2026-11-02 (+6d) |  | 88.32d → 89.32d |
| Valves & Chambers | **Valves & Chambers** |  | 2026-10-20 → 2026-10-08 (-12d) |  |  |
| GV | **Gate Valves** |  | 2026-10-19 → 2026-09-17 (-32d) |  |  |
| 1 | **Gate valves dia (110) mm** |  | 2026-10-19 → 2026-09-17 (-32d) |  |  |
| B3.33 14 19.01.119 | Spindle & Surface Box | 2026-10-17 → 2026-09-14 A (-33d) | 2026-10-19 → 2026-09-17 A (-32d) | 0% → 100% | 91.32d → none |
| Washout Valves | **Washout Valves** |  | 2026-10-20 → 2026-10-08 (-12d) |  |  |
| 4 | **Washout valves on 110-400 mm. (In Chamber)** |  | 2026-10-20 → 2026-10-08 (-12d) |  |  |
| B3.33 05 63.01.27_R | Land Adjustment & Compaction(Rem) | 2026-10-12 → 2026-09-12 A (-30d) | 2026-10-14 → 2026-09-21 A (-23d) | 0% → 100% | 63.82d → none |
| B3.33 05 63.01.25_R | Foundations(Rem) | 2026-10-12 → 2026-09-19 A (-23d) | 2026-10-14 → 2026-09-26 A (-18d) | 0% → 100% | 63.82d → none |
| B3.33 05 63.01.28_R | Chambers Walls Conc Cast In Situ(Rem) | 2026-10-12 → 2026-09-19 A (-23d) | 2026-10-14 → 2026-09-28 A (-16d) | 0% → 100% | 63.82d → none |
| B3.33 05 63.01.26_R | Chamber Curing, Finishing & Steel Cover(Rem) | 2026-10-12 → 2026-09-27 A (-15d) | 2026-10-14 → 2026-10-05 A (-9d) | 0% → 100% | 63.82d → none |
| B3.33 05 63.01.29 | Valve & Fitting Installation | 2026-10-14 → 2026-10-01 A (-13d) | 2026-10-20 → 2026-10-08 A (-12d) | 0% → 100% | 63.82d → none |
| Fire Fighting | **Fire Fighting Network** |  | 2026-11-19 → 2026-11-17 (-2d) |  |  |
| Valves & Chambers | **Valves & Chambers** |  | 2026-11-19 → 2026-11-17 (-2d) |  |  |
| GV | **Gate Valves** |  | 2026-11-19 → 2026-11-17 (-2d) |  |  |
| 1 | **Gate valves dia (250) mm** |  | 2026-11-19 → 2026-11-17 (-2d) |  |  |
| B3.33 14 19.01.134_R | Burried Isolation Valve Installation(Rem) | 2026-11-11 → 2026-09-14 A (-58d) | 2026-11-15 → 2026-11-17 (+2d) | 0% → 50% | 60.32d → 83.32d |
| B3.33 14 19.01.135 | Spindle & Surface Box | 2026-11-16 → 2026-09-21 A (-56d) | 2026-11-19 → 2026-10-15 (-35d) | 0% → 50% | 60.32d → 111.32d |
| 2 | **Air Valves** |  | 2026-10-18 → 2026-10-17 (-1d) |  |  |
| 4 | **Air valves on less than 315 mm. (In Chamber)** |  | 2026-10-18 → 2026-10-17 (-1d) |  |  |
| B3.33 05 63.02.82_R | Land Adjustment & Compaction(Rem) | 2026-10-07 → 2026-09-06 A (-31d) | 2026-10-10 → 2026-10-15 (+5d) | 0% → 50% | 65.32d → 111.82d |
| B3.33 05 63.02.80_R | Foundations(Rem) | 2026-10-07 → 2026-09-13 A (-24d) | 2026-10-11 → 2026-10-15 (+4d) | 0% → 50% | 65.32d → 111.57d |
| B3.33 05 63.02.83_R | Chambers Walls Conc Cast In Situ(Rem) | 2026-10-07 → 2026-09-13 A (-24d) | 2026-10-11 → 2026-10-15 (+4d) | 0% → 50% | 65.32d → 111.57d |
| B3.33 05 63.02.81_R | Chamber Curing, Finishing & Steel Cover(Rem) | 2026-10-07 → 2026-09-24 A (-13d) | 2026-10-11 → 2026-10-15 (+4d) | 0% → 50% | 65.32d → 111.32d |
| B3.33 05 63.02.84 | Valve & Fitting Installation | 2026-10-12 → 2026-09-28 A (-14d) | 2026-10-18 → 2026-10-17 (-1d) | 0% → 50% | 65.32d → 72.32d |
| Washout Valves | **Washout Valves** |  | 2026-10-18 → 2026-10-17 (-1d) |  |  |
| 4 | **Washout valves on 110-400 mm. (In Chamber)** |  | 2026-10-18 → 2026-10-17 (-1d) |  |  |
| B3.33 05 63.01.62_R | Land Adjustment & Compaction(Rem) | 2026-10-07 → 2026-09-16 A (-21d) | 2026-10-10 → 2026-10-15 (+5d) | 0% → 50% | 65.32d → 111.82d |
| B3.33 05 63.01.60_R | Foundations(Rem) | 2026-10-07 → 2026-09-19 A (-18d) | 2026-10-11 → 2026-10-15 (+4d) | 0% → 50% | 65.32d → 111.57d |
| B3.33 05 63.01.63_R | Chambers Walls Conc Cast In Situ(Rem) | 2026-10-07 → 2026-09-22 A (-15d) | 2026-10-11 → 2026-10-15 (+4d) | 0% → 50% | 65.32d → 111.57d |
| B3.33 05 63.01.61_R | Chamber Curing, Finishing & Steel Cover(Rem) | 2026-10-07 → 2026-10-03 A (-4d) | 2026-10-11 → 2026-10-15 (+4d) | 0% → 50% | 65.32d → 111.32d |
| B3.33 05 63.01.64 | Valve & Fitting Installation | 2026-10-12 → 2026-10-07 A (-5d) | 2026-10-18 → 2026-10-17 (-1d) | 0% → 50% | 65.32d → 72.32d |
| 3 | **Fire Hydrant** |  | 2026-11-19 → 2026-10-21 (-29d) |  |  |
| B3.33 14 19.01.fh46_R | Firehydrant Fixing/Installation(Rem) | 2026-10-07 → 2026-10-14 (+7d) | 2026-10-12 → 2026-10-19 (+7d) |  | 91.37d → 106.37d |
| B3.33 14 19.01.fh47_R | Riser Pipe & Flanged Fittings Installation(Rem) | 2026-10-07 → 2026-10-14 (+7d) | 2026-10-11 → 2026-10-18 (+7d) |  | 91.37d → 106.37d |
| B3.33 14 19.01.fh48_R | Backfilling & Compaction(Rem) | 2026-11-12 → 2026-10-14 (-29d) | 2026-11-19 → 2026-10-21 (-29d) |  | 60.32d → 106.37d |
| Dry Networks | **Dry Networks** | 2026-10-07 → 2026-10-14 (+7d) | 2026-11-21 → 2026-11-28 (+7d) |  |  |
| MV Network | **Medium Voltage Network** | 2026-10-07 → 2026-10-14 (+7d) | 2026-10-26 → 2026-11-02 (+7d) |  |  |
| Duct Banks | **Duct Banks** | 2026-10-07 → 2026-10-14 (+7d) | 2026-10-26 → 2026-11-02 (+7d) |  |  |
| 4 Way | **2 Way** | 2026-10-07 → 2026-10-14 (+7d) | 2026-10-26 → 2026-11-02 (+7d) |  |  |
| B2.31 23 00.644 | Excavation | 2026-10-07 → 2026-10-14 (+7d) | 2026-10-11 → 2026-10-18 (+7d) |  |  |
| B2.33 71 00.296 | Shuttering, Steel Fixing Incl. UPVC Pipe & Conc. Cast | 2026-10-12 → 2026-10-19 (+7d) | 2026-10-19 → 2026-10-26 (+7d) |  |  |
| B2.33 71 00.297 | Backfilling & Warrning Tape | 2026-10-20 → 2026-10-27 (+7d) | 2026-10-26 → 2026-11-02 (+7d) |  |  |
| Street Lighting | **Street Lighting** | 2026-10-24 → 2026-10-31 (+7d) | 2026-11-09 → 2026-11-16 (+7d) |  |  |
| SL Poles | **SL Poles** | 2026-10-24 → 2026-10-31 (+7d) | 2026-11-04 → 2026-11-11 (+7d) |  |  |
| Pole (10 M Sngl Arm) | **Pole (10 M Single Arm)** | 2026-10-24 → 2026-10-31 (+7d) | 2026-11-04 → 2026-11-11 (+7d) |  |  |
| B2.33 71 16.99 | Excavation | 2026-10-24 → 2026-10-31 (+7d) | 2026-10-26 → 2026-11-02 (+7d) |  |  |
| B2.33 71 16.100 | PC & RC Foundation | 2026-10-26 → 2026-11-02 (+7d) | 2026-10-28 → 2026-11-04 (+7d) |  |  |
| B2.33 71 16.101 | Lighting Poles Installation Incl power box, Cables | 2026-10-28 → 2026-11-04 (+7d) | 2026-10-31 → 2026-11-07 (+7d) |  |  |
| B2.26.56.19.18 | Lighting Luminares Inst | 2026-10-31 → 2026-11-07 (+7d) | 2026-11-02 → 2026-11-09 (+7d) |  |  |
| B2.33 71 16.102 | Backfilling, Grouting & Chamfering | 2026-11-02 → 2026-11-09 (+7d) | 2026-11-04 → 2026-11-11 (+7d) |  |  |
| Earthing | **Earthing** | 2026-11-02 → 2026-11-09 (+7d) | 2026-11-09 → 2026-11-16 (+7d) |  |  |
| B2.33 71 19 50 | Land Adjustment | 2026-11-02 → 2026-11-09 (+7d) | 2026-11-04 → 2026-11-11 (+7d) |  |  |
| B2.33 71 19 51 | Earth Rods & Conduits | 2026-11-04 → 2026-11-11 (+7d) | 2026-11-07 → 2026-11-14 (+7d) |  |  |
| B2.33 71 19 52 | Backfilling | 2026-11-07 → 2026-11-14 (+7d) | 2026-11-09 → 2026-11-16 (+7d) |  |  |
| Telecommunication | **Telecommunication Network** | 2026-10-27 → 2026-11-03 (+7d) | 2026-11-21 → 2026-11-28 (+7d) |  |  |

| ID | Task | Start | Finish | Complete | Total float |
| --- | --- | --- | --- | --- | --- |
| Ducts | **Ducts** | 2026-10-27 → 2026-11-03 (+7d) | 2026-11-17 → 2026-11-24 (+7d) |  |  |
| (6*50mm) | **Size (6*50mm) HDPE ducts** | 2026-10-27 → 2026-11-03 (+7d) | 2026-10-31 → 2026-11-07 (+7d) |  |  |
| B2.1.33 81 26.183 | Excavation | 2026-10-27 → 2026-11-03 (+7d) | 2026-10-28 → 2026-11-04 (+7d) |  |  |
| B2.1.33 81 26.184 | HDPE Pipe, Shuttering, Steel Fixing & Conc. Cast | 2026-10-29 → 2026-11-05 (+7d) | 2026-10-31 → 2026-11-07 (+7d) |  |  |
| B2.1.33 81 26.185 | Backfilling & Warrning Tape | 2026-10-29 → 2026-11-05 (+7d) | 2026-10-31 → 2026-11-07 (+7d) |  |  |
| (6*50mm+2*32mm) | **Size (6*50mm+2*32mm) HDPE ducts** | 2026-10-29 → 2026-11-05 (+7d) | 2026-11-04 → 2026-11-11 (+7d) |  |  |
| B2.1.33 81 26.186 | Excavation | 2026-10-29 → 2026-11-05 (+7d) | 2026-10-31 → 2026-11-07 (+7d) |  |  |
| B2.1.33 81 26.187 | HDPE Pipe, Shuttering, Steel Fixing & Conc. Cast | 2026-11-01 → 2026-11-08 (+7d) | 2026-11-02 → 2026-11-09 (+7d) |  |  |
| B2.1.33 81 26.188 | Backfilling & Warrning Tape | 2026-11-03 → 2026-11-10 (+7d) | 2026-11-04 → 2026-11-11 (+7d) |  |  |
| (6*50mm+4*32mm) | **Size (6*50mm+4*32mm) HDPE ducts** | 2026-11-01 → 2026-11-08 (+7d) | 2026-11-17 → 2026-11-24 (+7d) |  |  |
| B2.1.33 81 26.189 | Excavation | 2026-11-01 → 2026-11-08 (+7d) | 2026-11-02 → 2026-11-09 (+7d) |  |  |
| B2.1.33 81 26.190 | HDPE Pipe, Shuttering, Steel Fixing & Conc. Cast | 2026-11-03 → 2026-11-10 (+7d) | 2026-11-04 → 2026-11-11 (+7d) |  |  |
| B2.1.33 81 26.191 | Backfilling & Warrning Tape | 2026-11-15 → 2026-11-22 (+7d) | 2026-11-17 → 2026-11-24 (+7d) |  | 37.2d → 37.21d |
| (2*32mm) | **Size (2*32mm) HDPE ducts** | 2026-11-03 → 2026-11-10 (+7d) | 2026-11-09 → 2026-11-16 (+7d) |  |  |
| B2.1.33 81 26.192 | Excavation | 2026-11-03 → 2026-11-10 (+7d) | 2026-11-04 → 2026-11-11 (+7d) |  |  |
| B2.1.33 81 26.193 | HDPE Pipe, Shuttering, Steel Fixing & Conc. Cast | 2026-11-05 → 2026-11-12 (+7d) | 2026-11-07 → 2026-11-14 (+7d) |  |  |
| B2.1.33 81 26.194 | Backfilling & Warrning Tape | 2026-11-08 → 2026-11-15 (+7d) | 2026-11-09 → 2026-11-16 (+7d) |  |  |
| Manholes | **Manholes** | 2026-11-05 → 2026-11-12 (+7d) | 2026-11-21 → 2026-11-28 (+7d) |  |  |
| Manhole Type 1 | **Manhole Type 1** | 2026-11-05 → 2026-11-12 (+7d) | 2026-11-21 → 2026-11-28 (+7d) |  |  |
| B2.31 23 00.636 | Excavation | 2026-11-05 → 2026-11-12 (+7d) | 2026-11-07 → 2026-11-14 (+7d) |  |  |
| B2.33 71 00.280 | Manhole Installation | 2026-11-08 → 2026-11-15 (+7d) | 2026-11-09 → 2026-11-16 (+7d) |  |  |
| B2.33 71 00.281 | Backfilling & Warrning Tape | 2026-11-19 → 2026-11-26 (+7d) | 2026-11-21 → 2026-11-28 (+7d) |  |  |
| Manhole Type 2 | **Manhole Type 2** | 2026-11-08 → 2026-11-15 (+7d) | 2026-11-14 → 2026-11-21 (+7d) |  |  |
| B2.31 23 00.637 | Excavation | 2026-11-08 → 2026-11-15 (+7d) | 2026-11-09 → 2026-11-16 (+7d) |  |  |
| B2.33 71 00.282 | Manhole Installation | 2026-11-10 → 2026-11-17 (+7d) | 2026-11-11 → 2026-11-18 (+7d) |  |  |
| B2.33 71 00.283 | Backfilling & Warrning Tape | 2026-11-12 → 2026-11-19 (+7d) | 2026-11-14 → 2026-11-21 (+7d) |  |  |
| Earth & Road Works | **Earth & Road Works** |  | 2026-11-08 → 2026-11-15 (+7d) |  |  |
| Earth Layers | **Earth Layers** |  | 2026-10-08 → 2026-10-15 (+7d) |  |  |
| B1.2.32 11 23.01.17_R | Aggregate Base Course(Rem) | 2026-10-07 → 2026-10-14 (+7d) | 2026-10-08 → 2026-10-15 (+7d) |  |  |
| Interlock | **Interlock** | 2026-10-08 → 2026-10-15 (+7d) | 2026-10-12 → 2026-10-19 (+7d) |  |  |
| B1.2.32 14 13.13.17 | 60mm thick - Interlocking Block Pavers | 2026-10-08 → 2026-10-15 (+7d) | 2026-10-12 → 2026-10-19 (+7d) |  |  |
| Curbstone | **Curbstone** | 2026-10-12 → 2026-10-19 (+7d) | 2026-11-01 → 2026-11-08 (+7d) |  |  |
| Pre Install | **Pre-Installation** | 2026-10-12 → 2026-10-19 (+7d) | 2026-10-20 → 2026-10-27 (+7d) |  |  |
| B2.31 23 00.481 | Excavation | 2026-10-12 → 2026-10-19 (+7d) | 2026-10-14 → 2026-10-21 (+7d) |  |  |
| B1.2.32 14 13.13.217 | PCC | 2026-10-14 → 2026-10-21 (+7d) | 2026-10-17 → 2026-10-24 (+7d) |  |  |
| 32 16 13.0017 | Haunching | 2026-10-17 → 2026-10-24 (+7d) | 2026-10-20 → 2026-10-27 (+7d) |  |  |
| Installation | **Installation** | 2026-10-20 → 2026-10-27 (+7d) | 2026-10-29 → 2026-11-05 (+7d) |  |  |
| B1.2.32 16.13.01.17 | Curb Stone, Type K1 | 2026-10-20 → 2026-10-27 (+7d) | 2026-10-24 → 2026-10-31 (+7d) |  |  |
| B1.2.32 16.13.02.16 | Dropped Curb, Type K3 | 2026-10-24 → 2026-10-31 (+7d) | 2026-10-25 → 2026-11-01 (+7d) |  |  |
| B1.2.32 16.13.03.17 | Edge Curb, Type K4 | 2026-10-25 → 2026-11-01 (+7d) | 2026-10-27 → 2026-11-03 (+7d) |  |  |
| B1.2.32 16.13.0417 | Heel Curb, Type K5 | 2026-10-25 → 2026-11-01 (+7d) | 2026-10-27 → 2026-11-03 (+7d) |  |  |
| B1.2.32 16.13.05.16 | Transition Curb | 2026-10-27 → 2026-11-03 (+7d) | 2026-10-29 → 2026-11-05 (+7d) |  |  |
| Finishing | **Finishing** | 2026-10-29 → 2026-11-05 (+7d) | 2026-11-01 → 2026-11-08 (+7d) |  |  |
| 32 16 13.017 | Finishing, Fareface | 2026-10-29 → 2026-11-05 (+7d) | 2026-11-01 → 2026-11-08 (+7d) |  |  |
| Asphalt Layers | **Asphalt Layers** | 2026-10-08 → 2026-10-06 (-2d) | 2026-11-03 → 2026-11-10 (+7d) |  |  |
| B1.2.32 11 26.01.17 | Bituminous Base Course including Prime Coat (MC1) and tack coat (RC2) | 2026-10-08 → 2026-10-06 A (-2d) | 2026-10-11 → 2026-10-14 (+3d) | 0% → 50% | 34.02d → 36.32d |
| B1.2.32 12 16.01.17 | Bituminous concrete Wearing Course, including tack coat (RC2) | 2026-11-01 → 2026-11-08 (+7d) | 2026-11-03 → 2026-11-10 (+7d) |  |  |
| Pavement Marking | **Pavement Marking** | 2026-11-05 → 2026-11-12 (+7d) | 2026-11-08 → 2026-11-15 (+7d) |  |  |
| B1.2.32 17 23.01.17 | Retroreflective Thermoplastic White Traffic lines | 2026-11-05 → 2026-11-12 (+7d) | 2026-11-08 → 2026-11-15 (+7d) |  |  |
| B1.2.32 17 23.02.17 | Retroreflective Thermoplastic Yellow, Traffic lines | 2026-11-05 → 2026-11-12 (+7d) | 2026-11-08 → 2026-11-15 (+7d) |  |  |
| Road Misc. | **Miscellaneous** | 2026-11-03 → 2026-11-10 (+7d) | 2026-11-05 → 2026-11-12 (+7d) |  |  |
| B1.2.32 12 19.13.017 | Speed Tables | 2026-11-03 → 2026-11-10 (+7d) | 2026-11-05 → 2026-11-12 (+7d) |  |  |
| B1.2.32 12 19.13.16 | Wheels stoppers (precast concrete) | 2026-11-03 → 2026-11-10 (+7d) | 2026-11-05 → 2026-11-12 (+7d) |  |  |
| Landscape | **Landscape** | 2026-12-30 → 2027-01-06 (+7d) | 2027-01-05 → 2027-01-12 (+7d) |  |  |
| Trees | **Trees** | 2026-12-30 → 2027-01-06 (+7d) | 2027-01-05 → 2027-01-12 (+7d) |  |  |
| B7.32 93 43.03 | Tamarindus indica | 2026-12-30 → 2027-01-06 (+7d) | 2027-01-05 → 2027-01-12 (+7d) |  |  |
| Prov. Sum | **Provisional Sum** | 2026-12-14 → 2026-12-18 (+4d) | 2026-12-29 → 2027-01-04 (+6d) |  |  |
| Prov.Sum 01 | Additional Works | 2026-12-14 → 2026-12-18 (+4d) | 2026-12-29 → 2027-01-04 (+6d) |  | 8d → 9d |
| T&C | **Testing & Commissioning** |  | 2027-01-03 → 2027-01-09 (+6d) |  |  |
| Zone 01 | **Zone 01** |  | 2026-12-27 → 2027-01-02 (+6d) |  |  |
| Wet | **Wet Networks & Stations** |  | 2026-12-12 → 2026-12-17 (+5d) |  |  |
| Sewer | **Sewerage Network** |  | 2026-12-12 → 2026-12-17 (+5d) |  |  |
| T&C-Sew-01 | Testing & Commissioning for Sewerage Network |  | 2026-12-12 → 2026-12-17 (+5d) |  | 23.32d → 24.32d |
| Storm | **Storm Network** |  | 2026-12-12 → 2026-12-17 (+5d) |  |  |
| T&C-Strm-01 | Testing & Commissioning for Storm Network |  | 2026-12-12 → 2026-12-17 (+5d) |  | 11.92d → 12.92d |
| Potable | **Potable Network** | 2026-12-05 → 2026-12-10 (+5d) | 2026-12-12 → 2026-12-17 (+5d) |  |  |
| T&C-Pot-01 | Testing & Commissioning for Potable Network | 2026-12-05 → 2026-12-10 (+5d) | 2026-12-12 → 2026-12-17 (+5d) |  | 18.32d → 19.32d |
| Fire Fighting | **Fire Fighting Network** | 2026-12-06 → 2026-12-12 (+6d) | 2026-12-12 → 2026-12-17 (+5d) |  |  |
| T&C-FF-01 | Testing & Commissioning for Fire Fighting Network | 2026-12-06 → 2026-12-12 (+6d) | 2026-12-12 → 2026-12-17 (+5d) |  | 18.32d → 19.32d |
| TSE | **TSE Network** | 2026-12-06 → 2026-12-12 (+6d) | 2026-12-12 → 2026-12-17 (+5d) |  |  |

| ID | Task | Start | Finish | Total float |
| --- | --- | --- | --- | --- |
| T&C-TSE-01 | Testing & Commissioning for TSE Network | 2026-12-06 → 2026-12-12 (+6d) | 2026-12-12 → 2026-12-17 (+5d) | 18.32d → 19.32d |
| Dry | **Dry Networks** | 2026-12-13 → 2026-12-19 (+6d) | 2026-12-27 → 2027-01-02 (+6d) |  |
| MV | **Medium Voltage Network** | 2026-12-13 → 2026-12-19 (+6d) | 2026-12-16 → 2026-12-22 (+6d) |  |
| T&C-MV-01 | Testing & Commissioning for Medium Voltage Network | 2026-12-13 → 2026-12-19 (+6d) | 2026-12-16 → 2026-12-22 (+6d) | 1.32d → 2.32d |
| LV | **Low Voltage Network** | 2026-12-17 → 2026-12-23 (+6d) | 2026-12-20 → 2026-12-26 (+6d) |  |
| T&C-LV-01 | Testing & Commissioning for Low Voltage Network | 2026-12-17 → 2026-12-23 (+6d) | 2026-12-20 → 2026-12-26 (+6d) | 3.32d → 4.32d |
| Telecom | **Telecommunication Network** | 2026-12-21 → 2026-12-27 (+6d) | 2026-12-27 → 2027-01-02 (+6d) |  |
| T&C-Telecom-01 | Testing & Commissioning for Telecommunication Network | 2026-12-21 → 2026-12-27 (+6d) | 2026-12-27 → 2027-01-02 (+6d) | 8.32d → 9.32d |
| SL | **Street Lighting** | 2026-12-13 → 2026-12-19 (+6d) | 2026-12-19 → 2026-12-24 (+5d) |  |
| T&C-SL-01 | Testing & Commissioning for Street Lighting Network | 2026-12-13 → 2026-12-19 (+6d) | 2026-12-19 → 2026-12-24 (+5d) | 15.32d → 16.32d |
| Zone 02 | **Zone 02** | 2026-12-06 → 2026-11-25 (-11d) | 2026-12-30 → 2027-01-05 (+6d) |  |
| Wet | **Wet Networks & Stations** | 2026-12-06 → 2026-11-25 (-11d) | 2026-12-21 → 2026-12-26 (+5d) |  |
| Sewer | **Sewerage Network** | 2026-12-13 → 2026-12-19 (+6d) | 2026-12-19 → 2026-12-24 (+5d) |  |
| T&C-Sew-1 | Testing & Commissioning for Sewerage Network | 2026-12-13 → 2026-12-19 (+6d) | 2026-12-19 → 2026-12-24 (+5d) | 23.32d → 24.32d |
| Storm | **Storm Network** | 2026-12-13 → 2026-12-19 (+6d) | 2026-12-20 → 2026-12-26 (+6d) |  |
| T&C-Strm-1 | Testing & Commissioning for Storm Network | 2026-12-13 → 2026-12-19 (+6d) | 2026-12-20 → 2026-12-26 (+6d) | 24.32d → 25.32d |
| Potable | **Potable Network** | 2026-12-13 → 2026-12-19 (+6d) | 2026-12-19 → 2026-12-24 (+5d) |  |
| T&C-Pot-1 | Testing & Commissioning for Potable Network | 2026-12-13 → 2026-12-19 (+6d) | 2026-12-19 → 2026-12-24 (+5d) | 27.32d → 28.32d |
| Fire Fighting | **Fire Fighting Network** | 2026-12-06 → 2026-12-12 (+6d) | 2026-12-12 → 2026-12-17 (+5d) |  |
| T&C-FF-1 | Testing & Commissioning for Fire Fighting Network | 2026-12-06 → 2026-12-12 (+6d) | 2026-12-12 → 2026-12-17 (+5d) | 30.32d → 31.32d |
| TSE | **TSE Network** | 2026-12-13 → 2026-12-19 (+6d) | 2026-12-19 → 2026-12-24 (+5d) |  |
| T&C-TSE-1 | Testing & Commissioning for TSE Network | 2026-12-13 → 2026-12-19 (+6d) | 2026-12-19 → 2026-12-24 (+5d) | 18.32d → 19.32d |
| Pot Pump St. | **Potable Water Pump Station** | 2026-12-17 → 2026-11-25 (-22d) | 2026-12-21 → 2026-12-12 (-9d) |  |
| T&C-PumpS-23 | Testing & Commissioning for Instrumentation for Process Systems | 2026-12-17 → 2026-11-25 (-22d) | 2026-12-21 → 2026-11-30 (-21d) | 1.32d → 25.92d |
| T&C-PumpS-3 | Testing & Commissioning for PLC System | 2026-12-17 → 2026-11-25 (-22d) | 2026-12-21 → 2026-11-30 (-21d) | 1.32d → 25.92d |
| T&C-PumpS-13 | Testing & Commissioning for Process Control Wiring | 2026-12-17 → 2026-12-07 (-10d) | 2026-12-21 → 2026-12-12 (-9d) | 1.32d → 15.96d |
| Dry | **Dry Networks** | 2026-12-13 → 2026-12-19 (+6d) | 2026-12-30 → 2027-01-05 (+6d) |  |
| MV | **Medium Voltage Network** | 2026-12-17 → 2026-12-23 (+6d) | 2026-12-21 → 2026-12-27 (+6d) |  |
| T&C-MV-1 | Testing & Commissioning for Medium Voltage Network | 2026-12-17 → 2026-12-23 (+6d) | 2026-12-21 → 2026-12-27 (+6d) | 1.32d → 2.32d |
| LV | **Low Voltage Network** | 2026-12-21 → 2026-12-27 (+6d) | 2026-12-23 → 2026-12-29 (+6d) |  |
| T&C-LV-1 | Testing & Commissioning for Low Voltage Network | 2026-12-21 → 2026-12-27 (+6d) | 2026-12-23 → 2026-12-29 (+6d) | 3.32d → 4.32d |
| Telecom | **Telecommunication Network** | 2026-12-24 → 2026-12-30 (+6d) | 2026-12-30 → 2027-01-05 (+6d) |  |
| T&C-Telecom-1 | Testing & Commissioning for Telecommunication Network | 2026-12-24 → 2026-12-30 (+6d) | 2026-12-30 → 2027-01-05 (+6d) | 5.32d → 6.32d |
| SL | **Street Lighting** | 2026-12-13 → 2026-12-19 (+6d) | 2026-12-19 → 2026-12-24 (+5d) |  |
| T&C-SL-1 | Testing & Commissioning for Street Lighting Network | 2026-12-13 → 2026-12-19 (+6d) | 2026-12-19 → 2026-12-24 (+5d) | 15.32d → 16.32d |
| Zone 03 | **Zone 03** |  | 2026-12-30 → 2027-01-05 (+6d) |  |
| Wet | **Wet Networks & Stations** |  | 2026-12-28 → 2027-01-02 (+5d) |  |
| Sewer | **Sewerage Network** |  | 2026-10-07 → 2026-10-14 (+7d) |  |
| T&C-Sew-11 | Testing & Commissioning for Sewerage Network |  | 2026-10-07 → 2026-10-14 (+7d) |  |
| Storm | **Storm Network** |  | 2026-12-20 → 2026-12-26 (+6d) |  |
| T&C-Strm-11 | Testing & Commissioning for Storm Network |  | 2026-12-20 → 2026-12-26 (+6d) | 24.32d → 25.32d |
| Potable | **Potable Network** | 2026-12-13 → 2026-12-19 (+6d) | 2026-12-19 → 2026-12-24 (+5d) |  |
| T&C-Pot-11 | Testing & Commissioning for Potable Network | 2026-12-13 → 2026-12-19 (+6d) | 2026-12-19 → 2026-12-24 (+5d) | 27.32d → 28.32d |
| Fire Fighting | **Fire Fighting Network** | 2026-12-13 → 2026-12-19 (+6d) | 2026-12-15 → 2026-12-21 (+6d) |  |
| T&C-FF-11 | Testing & Commissioning for Fire Fighting Network | 2026-12-13 → 2026-12-19 (+6d) | 2026-12-15 → 2026-12-21 (+6d) | 30.32d → 31.32d |
| TSE | **TSE Network** | 2026-12-20 → 2026-12-26 (+6d) | 2026-12-27 → 2027-01-02 (+6d) |  |
| T&C-TSE-11 | Testing & Commissioning for TSE Network | 2026-12-20 → 2026-12-26 (+6d) | 2026-12-27 → 2027-01-02 (+6d) | 18.32d → 19.32d |
| Sewer Lift St. | **Sewer Lift Station** | 2026-12-22 → 2026-12-19 (-3d) | 2026-12-28 → 2026-12-24 (-4d) |  |
| T&C-LiftS-33 | Testing & Commissioning for PLC System | 2026-12-22 → 2026-12-19 (-3d) | 2026-12-28 → 2026-12-24 (-4d) | 1.32d → 10.32d |
| T&C-LiftS-43 | Testing & Commissioning for Process Control Wiring | 2026-12-22 → 2026-12-19 (-3d) | 2026-12-28 → 2026-12-24 (-4d) | 1.32d → 10.32d |
| T&C-LiftS-53 | Testing & Commissioning for Instrumentation for Process Systems | 2026-12-22 → 2026-12-19 (-3d) | 2026-12-28 → 2026-12-24 (-4d) | 1.32d → 10.32d |
| Dry | **Dry Networks** | 2026-12-16 → 2026-12-22 (+6d) | 2026-12-30 → 2027-01-05 (+6d) |  |
| MV | **Medium Voltage Network** | 2026-12-22 → 2026-12-28 (+6d) | 2026-12-26 → 2026-12-31 (+5d) |  |
| T&C-MV-11 | Testing & Commissioning for Medium Voltage Network | 2026-12-22 → 2026-12-28 (+6d) | 2026-12-26 → 2026-12-31 (+5d) | 1.32d → 2.32d |
| LV | **Low Voltage Network** | 2026-12-24 → 2026-12-30 (+6d) | 2026-12-27 → 2027-01-02 (+6d) |  |
| T&C-LV-11 | Testing & Commissioning for Low Voltage Network | 2026-12-24 → 2026-12-30 (+6d) | 2026-12-27 → 2027-01-02 (+6d) | 3.32d → 4.32d |
| Telecom | **Telecommunication Network** | 2026-12-24 → 2026-12-30 (+6d) | 2026-12-30 → 2027-01-05 (+6d) |  |
| T&C-Telecom-11 | Testing & Commissioning for Telecommunication Network | 2026-12-24 → 2026-12-30 (+6d) | 2026-12-30 → 2027-01-05 (+6d) | 5.32d → 6.32d |
| SL | **Street Lighting** | 2026-12-16 → 2026-12-22 (+6d) | 2026-12-19 → 2026-12-24 (+5d) |  |
| T&C-SL-11 | Testing & Commissioning for Street Lighting Network | 2026-12-16 → 2026-12-22 (+6d) | 2026-12-19 → 2026-12-24 (+5d) | 15.32d → 16.32d |
| Zone 04 | **Zone 04** |  | 2027-01-03 → 2027-01-09 (+6d) |  |
| Wet | **Wet Networks & Stations** |  | 2027-01-03 → 2027-01-09 (+6d) |  |
| Sewer | **Sewerage Network** |  | 2026-12-12 → 2026-12-17 (+5d) |  |
| T&C-Sew-21 | Testing & Commissioning for Sewerage Network |  | 2026-12-12 → 2026-12-17 (+5d) | 29.32d → 30.32d |
| Storm | **Storm Network** |  | 2026-10-07 → 2026-10-14 (+7d) |  |
| T&C-Strm-21 | Testing & Commissioning for Storm Network |  | 2026-10-07 → 2026-10-14 (+7d) |  |
| Potable | **Potable Network** | 2026-12-13 → 2026-12-19 (+6d) | 2026-12-19 → 2026-12-24 (+5d) |  |
| T&C-Pot-21 | Testing & Commissioning for Potable Network | 2026-12-13 → 2026-12-19 (+6d) | 2026-12-19 → 2026-12-24 (+5d) | 27.32d → 28.32d |
| Fire Fighting | **Fire Fighting Network** | 2026-12-08 → 2026-12-14 (+6d) | 2026-12-15 → 2026-12-21 (+6d) |  |
| T&C-FF-21 | Testing & Commissioning for Fire Fighting Network | 2026-12-08 → 2026-12-14 (+6d) | 2026-12-15 → 2026-12-21 (+6d) | 30.32d → 31.32d |

| ID | Task | Start | Finish | Total float |
| --- | --- | --- | --- | --- |
| TSE | **TSE Network** | 2026-12-28 → 2027-01-03 (+6d) | 2027-01-03 → 2027-01-09 (+6d) |  |
| T&C-TSE-21 | Testing & Commissioning for TSE Network | 2026-12-28 → 2027-01-03 (+6d) | 2027-01-03 → 2027-01-09 (+6d) | 18.32d → 19.32d |
| Dry | **Dry Networks** | 2026-12-13 → 2026-12-19 (+6d) | 2026-12-30 → 2027-01-05 (+6d) |  |
| MV | **Medium Voltage Network** | 2026-12-27 → 2027-01-02 (+6d) | 2026-12-30 → 2027-01-05 (+6d) |  |
| T&C-MV-21 | Testing & Commissioning for Medium Voltage Network | 2026-12-27 → 2027-01-02 (+6d) | 2026-12-30 → 2027-01-05 (+6d) | 1.32d → 2.32d |
| LV | **Low Voltage Network** | 2026-12-28 → 2027-01-03 (+6d) | 2026-12-30 → 2027-01-05 (+6d) |  |
| T&C-LV-21 | Testing & Commissioning for Low Voltage Network | 2026-12-28 → 2027-01-03 (+6d) | 2026-12-30 → 2027-01-05 (+6d) | 3.32d → 4.32d |
| Telecom | **Telecommunication Network** | 2026-12-24 → 2026-12-30 (+6d) | 2026-12-30 → 2027-01-05 (+6d) |  |
| T&C-Telecom-21 | Testing & Commissioning for Telecommunication Network | 2026-12-24 → 2026-12-30 (+6d) | 2026-12-30 → 2027-01-05 (+6d) | 5.32d → 6.32d |
| SL | **Street Lighting** | 2026-12-13 → 2026-12-19 (+6d) | 2026-12-20 → 2026-12-26 (+6d) |  |
| T&C-SL-21 | Testing & Commissioning for Street Lighting Network | 2026-12-13 → 2026-12-19 (+6d) | 2026-12-20 → 2026-12-26 (+6d) | 14.32d → 15.32d |
| Closeout | **Project Closeout** | 2026-12-16 → 2026-12-12 (-4d) | 2027-02-15 → 2027-02-22 (+7d) |  |
| Engineering | **Engineering** | 2026-12-16 → 2026-12-12 (-4d) | 2027-01-11 → 2027-01-16 (+5d) |  |
| AS-Built | **AS-Built** | 2026-12-16 → 2026-12-12 (-4d) | 2027-01-11 → 2027-01-16 (+5d) |  |
| SDS | **Wet Networks & Stations** | 2026-12-16 → 2026-12-12 (-4d) | 2027-01-10 → 2027-01-16 (+6d) |  |
| Sewer | **Sewerage Network** | 2026-12-20 → 2026-12-26 (+6d) | 2026-12-23 → 2026-12-29 (+6d) |  |
| Close.Asblt.01-1 | AS-Built Drawings Submittal - Sewerage Network | 2026-12-20 → 2026-12-26 (+6d) | 2026-12-23 → 2026-12-29 (+6d) | 25.32d → 26.32d |
| Storm | **Storm Network** | 2026-12-24 → 2026-12-30 (+6d) | 2026-12-28 → 2027-01-03 (+6d) |  |
| Close.Asblt.01-2 | AS-Built Drawings Submittal - Storm Network | 2026-12-24 → 2026-12-30 (+6d) | 2026-12-28 → 2027-01-03 (+6d) | 25.32d → 26.32d |
| Potable | **Potable Network** | 2027-01-05 → 2027-01-11 (+6d) | 2027-01-09 → 2027-01-14 (+5d) |  |
| Close.Asblt.01-3 | AS-Built Drawings Submittal - Potable Network | 2027-01-05 → 2027-01-11 (+6d) | 2027-01-09 → 2027-01-14 (+5d) | 19.32d → 20.32d |
| Fire Fighting | **Fire Fighting Network** | 2026-12-16 → 2026-12-22 (+6d) | 2026-12-20 → 2026-12-26 (+6d) |  |
| Close.Asblt.01-5 | AS-Built Drawings Submittal - Fire Fighting Network | 2026-12-16 → 2026-12-22 (+6d) | 2026-12-20 → 2026-12-26 (+6d) | 30.32d → 31.32d |
| TSE | **TSE Network** | 2027-01-06 → 2027-01-12 (+6d) | 2027-01-10 → 2027-01-16 (+6d) |  |
| Close.Asblt.01-4 | AS-Built Drawings Submittal - TSE Network | 2027-01-06 → 2027-01-12 (+6d) | 2027-01-10 → 2027-01-16 (+6d) | 18.32d → 19.32d |
| Pot Pump St. | **Potable Water Pump Station** | 2026-12-22 → 2026-12-12 (-10d) | 2026-12-26 → 2026-12-16 (-10d) |  |
| Close.Asblt.01-21 | AS-Built Drawings Submittal - Potable Water Pump Station - Mech | 2026-12-22 → 2026-12-12 (-10d) | 2026-12-26 → 2026-12-16 (-10d) | 31.32d → 45.96d |
| Close.Asblt.01-31 | AS-Built Drawings Submittal - Potable Water Pump Station - Elec. | 2026-12-22 → 2026-12-12 (-10d) | 2026-12-26 → 2026-12-16 (-10d) | 31.32d → 45.96d |
| Close.Asblt.01-6 | AS-Built Drawings Submittal - Potable Water Pump Station - Civil & Arch | 2026-12-22 → 2026-12-12 (-10d) | 2026-12-26 → 2026-12-16 (-10d) | 19.32d → 33.96d |
| Sewer Lift St. | **Sewer Lift Station** | 2026-12-29 → 2026-12-26 (-3d) | 2027-01-02 → 2026-12-29 (-4d) |  |
| Close.Asblt.01-41 | AS-Built Drawings Submittal - Sewer Lift Station - Civil & Arch | 2026-12-29 → 2026-12-26 (-3d) | 2027-01-02 → 2026-12-29 (-4d) | 17.32d → 26.32d |
| Close.Asblt.01-51 | AS-Built Drawings Submittal - Sewer Lift Station - Mech | 2026-12-29 → 2026-12-26 (-3d) | 2027-01-02 → 2026-12-29 (-4d) | 17.32d → 26.32d |
| Close.Asblt.01-61 | AS-Built Drawings Submittal - Sewer Lift Station - Elec. | 2026-12-29 → 2026-12-26 (-3d) | 2027-01-02 → 2026-12-29 (-4d) | 17.32d → 26.32d |
| 1 | **Dry Networks** | 2026-12-21 → 2026-12-27 (+6d) | 2027-01-11 → 2027-01-14 (+3d) |  |
| MV | **Medium Voltage Network** | 2027-01-03 → 2027-01-06 (+3d) | 2027-01-06 → 2027-01-10 (+4d) |  |
| Close.MV.Asblt.01-8 | AS-Built Drawings Submittal - Medium Voltage Network | 2027-01-03 → 2027-01-06 (+3d) | 2027-01-06 → 2027-01-10 (+4d) | 17.32d → 20.32d |
| LV | **Low Voltage Network** | 2027-01-07 → 2027-01-11 (+4d) | 2027-01-11 → 2027-01-14 (+3d) |  |
| Close.LV.Asblt.01-9 | AS-Built Drawings Submittal - Low Voltage Network | 2027-01-07 → 2027-01-11 (+4d) | 2027-01-11 → 2027-01-14 (+3d) | 17.32d → 20.32d |
| Telecom | **Telecommunication Network** | 2026-12-31 → 2027-01-06 (+6d) | 2027-01-04 → 2027-01-10 (+6d) |  |
| Close.Tele.Asblt.01 | AS-Built Drawings Submittal - Telecommunication Network | 2026-12-31 → 2027-01-06 (+6d) | 2027-01-04 → 2027-01-10 (+6d) | 23.32d → 24.32d |
| SL | **Street Lighting** | 2026-12-21 → 2026-12-27 (+6d) | 2026-12-24 → 2026-12-30 (+6d) |  |
| Close.SL.Asblt.01-11 | AS-Built Drawings Submittal - Street Lighting | 2026-12-21 → 2026-12-27 (+6d) | 2026-12-24 → 2026-12-30 (+6d) | 26.32d → 27.32d |
| O & M Manuals | **O & M Manuals** | 2026-12-20 → 2026-12-12 (-8d) | 2027-01-06 → 2027-01-12 (+6d) |  |
| SDS | **Wet Networks & Stations** | 2026-12-20 → 2026-12-12 (-8d) | 2027-01-05 → 2027-01-11 (+6d) |  |
| Sewer | **Sewerage Network** | 2026-12-20 → 2026-12-26 (+6d) | 2026-12-21 → 2026-12-27 (+6d) |  |
| Clsout.13.2.1.131 | O & M Manuals Submittals | 2026-12-20 → 2026-12-26 (+6d) | 2026-12-21 → 2026-12-27 (+6d) | 23.32d → 24.32d |
| Storm | **Storm Network** | 2026-12-22 → 2026-12-28 (+6d) | 2026-12-23 → 2026-12-29 (+6d) |  |
| Clsout.13.2.1.141 | O & M Manuals Submittals | 2026-12-22 → 2026-12-28 (+6d) | 2026-12-23 → 2026-12-29 (+6d) | 23.32d → 24.32d |
| Potable | **Potable Network** | 2026-12-24 → 2026-12-30 (+6d) | 2026-12-26 → 2026-12-31 (+5d) |  |
| Clsout.13.2.1.151 | O & M Manuals Submittals | 2026-12-24 → 2026-12-30 (+6d) | 2026-12-26 → 2026-12-31 (+5d) | 23.32d → 24.32d |
| Fire Fighting | **Fire Fighting Network** | 2026-12-27 → 2027-01-02 (+6d) | 2026-12-28 → 2027-01-03 (+6d) |  |
| Clsout.13.2.1.171 | O & M Manuals Submittals | 2026-12-27 → 2027-01-02 (+6d) | 2026-12-28 → 2027-01-03 (+6d) | 23.32d → 24.32d |
| TSE | **TSE Network** | 2027-01-04 → 2027-01-10 (+6d) | 2027-01-05 → 2027-01-11 (+6d) |  |
| Clsout.13.2.1.161 | O & M Manuals Submittals | 2027-01-04 → 2027-01-10 (+6d) | 2027-01-05 → 2027-01-11 (+6d) | 18.32d → 19.32d |
| Pot Pump St. | **Potable Water Pump Station** | 2026-12-22 → 2026-12-12 (-10d) | 2026-12-23 → 2026-12-14 (-9d) |  |
| Clsout.13.2.1.181 | O & M Manuals Submittals | 2026-12-22 → 2026-12-12 (-10d) | 2026-12-23 → 2026-12-14 (-9d) | 13.32d → 27.96d |
| Sewer Lift St. | **Sewer Lift Station** | 2026-12-29 → 2026-12-26 (-3d) | 2026-12-30 → 2026-12-27 (-3d) |  |
| Clsout.13.2.1.191 | O & M Manuals Submittals | 2026-12-29 → 2026-12-26 (-3d) | 2026-12-30 → 2026-12-27 (-3d) | 7.32d → 16.32d |
| 1 | **Dry Networks** | 2026-12-31 → 2027-01-06 (+6d) | 2027-01-06 → 2027-01-12 (+6d) |  |
| MV | **Medium Voltage Network** | 2026-12-31 → 2027-01-06 (+6d) | 2027-01-02 → 2027-01-07 (+5d) |  |
| Clsout.13.2.1.201 | O & M Manuals Submittals | 2026-12-31 → 2027-01-06 (+6d) | 2027-01-02 → 2027-01-07 (+5d) | 1.32d → 2.32d |
| LV | **Low Voltage Network** | 2027-01-03 → 2027-01-09 (+6d) | 2027-01-04 → 2027-01-10 (+6d) |  |
| Clsout.13.2.1.211 | O & M Manuals Submittals | 2027-01-03 → 2027-01-09 (+6d) | 2027-01-04 → 2027-01-10 (+6d) | 1.32d → 2.32d |
| Telecom | **Telecommunication Network** | 2027-01-05 → 2027-01-11 (+6d) | 2027-01-06 → 2027-01-12 (+6d) |  |
| Clsout.13.2.1.221 | O & M Manuals Submittals | 2027-01-05 → 2027-01-11 (+6d) | 2027-01-06 → 2027-01-12 (+6d) | 1.32d → 2.32d |
| SL | **Street Lighting** | 2027-01-05 → 2027-01-11 (+6d) | 2027-01-06 → 2027-01-12 (+6d) |  |
| Clsout.13.2.1.231 | O & M Manuals Submittals | 2027-01-05 → 2027-01-11 (+6d) | 2027-01-06 → 2027-01-12 (+6d) | 1.32d → 2.32d |
| Spare Parts | **Operational Spare Parts & Guarantee Certificates/Docs.** | 2026-12-20 → 2026-12-12 (-8d) | 2027-01-06 → 2027-01-12 (+6d) |  |
| SDS | **Wet Networks & Stations** | 2026-12-20 → 2026-12-12 (-8d) | 2027-01-05 → 2027-01-11 (+6d) |  |
| Sewer | **Sewerage Network** | 2026-12-20 → 2026-12-26 (+6d) | 2026-12-21 → 2026-12-27 (+6d) |  |

| ID | Task | Start | Finish | Total float |
| --- | --- | --- | --- | --- |
| Clsout.13.2.1.241 | Operational Spare Parts & Guarantee Certificates/Docs. | 2026-12-20 → 2026-12-26 (+6d) | 2026-12-21 → 2026-12-27 (+6d) | 23.32d → 24.32d |
| Storm | **Storm Network** | 2026-12-22 → 2026-12-28 (+6d) | 2026-12-23 → 2026-12-29 (+6d) |  |
| Clsout.13.2.1.251 | Operational Spare Parts & Guarantee Certificates/Docs. | 2026-12-22 → 2026-12-28 (+6d) | 2026-12-23 → 2026-12-29 (+6d) | 23.32d → 24.32d |
| Potable | **Potable Network** | 2026-12-24 → 2026-12-30 (+6d) | 2026-12-26 → 2026-12-31 (+5d) |  |
| Clsout.13.2.1.261 | Operational Spare Parts & Guarantee Certificates/Docs. | 2026-12-24 → 2026-12-30 (+6d) | 2026-12-26 → 2026-12-31 (+5d) | 23.32d → 24.32d |
| Fire Fighting | **Fire Fighting Network** | 2026-12-27 → 2027-01-02 (+6d) | 2026-12-28 → 2027-01-03 (+6d) |  |
| Clsout.13.2.1.281 | Operational Spare Parts & Guarantee Certificates/Docs. | 2026-12-27 → 2027-01-02 (+6d) | 2026-12-28 → 2027-01-03 (+6d) | 23.32d → 24.32d |
| TSE | **TSE Network** | 2027-01-04 → 2027-01-10 (+6d) | 2027-01-05 → 2027-01-11 (+6d) |  |
| Clsout.13.2.1.271 | Operational Spare Parts & Guarantee Certificates/Docs. | 2027-01-04 → 2027-01-10 (+6d) | 2027-01-05 → 2027-01-11 (+6d) | 18.32d → 19.32d |
| Pot Pump St. | **Potable Water Pump Station** | 2026-12-22 → 2026-12-12 (-10d) | 2026-12-23 → 2026-12-14 (-9d) |  |
| Clsout.13.2.1.291 | Operational Spare Parts & Guarantee Certificates/Docs. | 2026-12-22 → 2026-12-12 (-10d) | 2026-12-23 → 2026-12-14 (-9d) | 5.32d → 19.96d |
| Sewer Lift St. | **Sewer Lift Station** | 2026-12-29 → 2026-12-26 (-3d) | 2026-12-30 → 2026-12-27 (-3d) |  |
| Clsout.13.2.1.301 | Operational Spare Parts & Guarantee Certificates/Docs. | 2026-12-29 → 2026-12-26 (-3d) | 2026-12-30 → 2026-12-27 (-3d) | 1.32d → 10.32d |
| 1 | **Dry Networks** | 2026-12-21 → 2026-12-27 (+6d) | 2027-01-06 → 2027-01-12 (+6d) |  |
| MV | **Medium Voltage Network** | 2026-12-31 → 2027-01-06 (+6d) | 2027-01-02 → 2027-01-07 (+5d) |  |
| Clsout.13.2.1.351 | Operational Spare Parts & Guarantee Certificates/Docs. | 2026-12-31 → 2027-01-06 (+6d) | 2027-01-02 → 2027-01-07 (+5d) | 1.32d → 2.32d |
| LV | **Low Voltage Network** | 2027-01-03 → 2027-01-09 (+6d) | 2027-01-04 → 2027-01-10 (+6d) |  |
| Clsout.13.2.1.341 | Operational Spare Parts & Guarantee Certificates/Docs. | 2027-01-03 → 2027-01-09 (+6d) | 2027-01-04 → 2027-01-10 (+6d) | 1.32d → 2.32d |
| Telecom | **Telecommunication Network** | 2027-01-05 → 2027-01-11 (+6d) | 2027-01-06 → 2027-01-12 (+6d) |  |
| Clsout.13.2.1.321 | Operational Spare Parts & Guarantee Certificates/Docs. | 2027-01-05 → 2027-01-11 (+6d) | 2027-01-06 → 2027-01-12 (+6d) | 1.32d → 2.32d |
| SL | **Street Lighting** | 2026-12-21 → 2026-12-27 (+6d) | 2026-12-22 → 2026-12-28 (+6d) |  |
| Clsout.13.2.1.311 | Operational Spare Parts & Guarantee Certificates/Docs. | 2026-12-21 → 2026-12-27 (+6d) | 2026-12-22 → 2026-12-28 (+6d) | 30.32d → 31.32d |
| Snagging | **Snagging** | 2027-01-09 → 2027-01-16 (+7d) | 2027-01-31 → 2027-02-07 (+7d) |  |
| Clsout.13.2.1.1 | Punch List | 2027-01-09 → 2027-01-16 (+7d) | 2027-01-13 → 2027-01-20 (+7d) |  |
| Clsout.13.2.1.2 | Rectifying / Closing | 2027-01-13 → 2027-01-20 (+7d) | 2027-01-29 → 2027-02-04 (+6d) |  |
| Clsout.13.2.1.4 | Desnagging | 2027-01-27 → 2027-02-02 (+6d) | 2027-01-31 → 2027-02-07 (+7d) |  |
| Demobilization | **Demobilization** | 2027-01-31 → 2027-02-07 (+7d) | 2027-02-13 → 2027-02-20 (+7d) |  |
| Clsout.13.2.1.7 | Demobilization of Manpower | 2027-01-31 → 2027-02-07 (+7d) | 2027-02-04 → 2027-02-11 (+7d) |  |
| Clsout.13.2.1.8 | Demobilization of Equipments | 2027-02-04 → 2027-02-11 (+7d) | 2027-02-10 → 2027-02-17 (+7d) |  |
| Clsout.13.2.1.10 | Restoration Of Ground Surfaces | 2027-02-06 → 2027-02-13 (+7d) | 2027-02-10 → 2027-02-17 (+7d) |  |
| Clsout.13.2.1.9 | Demoblization of Offices & Facilities & Site Clean-up | 2027-02-06 → 2027-02-13 (+7d) | 2027-02-13 → 2027-02-20 (+7d) |  |
| Handing Over | **Handing Over** | 2027-02-13 → 2027-02-20 (+7d) | 2027-02-15 → 2027-02-22 (+7d) |  |
| Clsout.13.2.1.11 | Project Handing Over | 2027-02-13 → 2027-02-20 (+7d) | 2027-02-15 → 2027-02-22 (+7d) |  |
