# Development of Infrastructure for phase 1 of the Logistics area - Acceleration Plan BOQ 02

How a schedule from Primavera P6 changed from version to version. A marks actual dates.

## Version 1 (data date 2026-09-15, saved 2026-10-06, file DAM2 -02-09- Recovery.xer)

| ID | WBS | Task | Duration | Start | Finish | Predecessors | Complete | Total float |
| --- | --- | --- | --- | --- | --- | --- | --- | --- |
|  | Milstones | **Milestones** |  | 2025-07-30 | 2027-01-29 |  |  |  |
|  | Cont. Milstones | **Contractual Milestones** |  | 2025-07-30 | 2027-01-29 |  |  |  |
| DMM-Mil-1 |  | Project Commencement (Start) - Kickoff | 0d | 2025-07-30 A | 2025-07-30 A |  | 100% |  |
| DMM-Mil-38 |  | Mobilization - Finish | 0d | 2025-11-25 A | 2025-11-25 A | DMM2-Mob-010 FF, DMM2-Mob-025 FF, DMM2-Mob-026 FF, DMM2-Mob-04 FF, DMM2-Mob-05 FF, DMM2-Mob-06 FF, DMM2-Mob-07 FF, DMM2-Mob-08 FF, DMM2-Mob-09 FF, DMM2-Mob-34 FF, DMM2-Mob-012 FF, DMM2-Mob-019 FF, DMM2-Mob-020 FF, DMM2-Mob-021 FF, DMM2-Mob-022 FF, DMM2-Mob-023 FF, DMM2-Mob-024 FF | 100% |  |
| DMM-Mil-4 |  | Engineering - Finish | 0d | 2026-10-05 | 2026-10-05 | DMM2-Eng-SD-02 FF, DMM2-Eng-SD-04 FF, DMM2-Eng-SD-06 FF, DMM2-Eng-SD-38 FF, DMM2-Eng-SD-58 FF, DMM2-Eng-SD-08 FF, DMM2-Eng-SD-09 FF, DMM2-Eng-SD-012 FF, DMM2-Eng-SD-014 FF, DMM2-Eng-SD-016 FF, DMM2-Eng-SD-018 FF, DMM2-Eng-SD-020 FF, DMM2-Eng-SD-022 FF, DMM2-Eng-SD-024 FF, DMM2-Eng-SD-026 FF, DMM2-Eng-SD-028 FF, DMM2-Eng-PQ-148 FF, DMM2-Eng-PQ-158 FF, DMM2-Eng-PQ-168 FF, DMM2-Eng-PQ-178 FF, DMM2-Eng-PQ-188 FF, DMM2-Eng-PQ-1928 FF, DMM2-Eng-PQ-198 FF, DMM2-Eng-PQ-208 FF, DMM2-Eng-PQ-218 FF, DMM2-Eng-PQ-228 FF, DMM2-Eng-PQ-238 FF, DMM2-Eng-PQ-248 FF, DMM2-Eng-PQ-258 FF, DMM2-Eng-PQ-268 FF, DMM2-Eng-PQ-278 FF, DMM2-Eng-PQ-288 FF, DMM2-Eng-PQ-1628 FF, DMM2-Eng-PQ-1638 FF, DMM2-Eng-PQ-298 FF, DMM2-Eng-PQ-308 FF, DMM2-Eng-PQ-318 FF, DMM2-Eng-PQ-328 FF, DMM2-Eng-PQ-1758 FF, DMM2-Eng-PQ-338 FF, DMM2-Eng-PQ-348 FF, DMM2-Eng-PQ-358 FF, DMM2-Eng-PQ-368 FF, DMM2-Eng-PQ-1688 FF, DMM2-Eng-PQ-1698 FF, DMM2-Eng-PQ-1708 FF, DMM2-Eng-PQ-1718 FF, DMM2-Eng-PQ-378 FF, DMM2-Eng-PQ-388 FF, DMM2-Eng-PQ-398 FF, DMM2-Eng-PQ-1728 FF, DMM2-Eng-PQ-1738 FF, DMM2-Eng-PQ-1748 FF, DMM2-Eng-PQ-408 FF, DMM2-Eng-PQ-418 FF, DMM2-Eng-PQ-428 FF, DMM2-Eng-PQ-438 FF, DMM2-Eng-PQ-448 FF, DMM2-Eng-PQ-458 FF, DMM2-Eng-PQ-468 FF, DMM2-Eng-PQ-478 FF, DMM2-Eng-PQ-488 FF, DMM2-Eng-PQ-498 FF, DMM2-Eng-PQ-1768 FF, DMM2-Eng-PQ-1778 FF, DMM2-Eng-PQ-1788 FF, DMM2-Eng-PQ-1798 FF, DMM2-Eng-PQ-1808 FF, DMM2-Eng-PQ-1818 FF, DMM2-Eng-PQ-1828 FF, DMM2-Eng-PQ-1838 FF, DMM2-Eng-PQ-508 FF, DMM2-Eng-PQ-518 FF, DMM2-Eng-PQ-528 FF, DMM2-Eng-PQ-538 FF, DMM2-Eng-PQ-548 FF, DMM2-Eng-PQ-558 FF, DMM2-Eng-PQ-568 FF, DMM2-Eng-PQ-578 FF, DMM2-Eng-PQ-588 FF, DMM2-Eng-PQ-598 FF, DMM2-Eng-PQ-608 FF, DMM2-Eng-PQ-618 FF, DMM2-Eng-PQ-628 FF, DMM2-Eng-PQ-638 FF, DMM2-Eng-PQ-1848 FF, DMM2-Eng-PQ-1858 FF, DMM2-Eng-PQ-1868 FF, DMM2-Eng-PQ-1878 FF, DMM2-Eng-PQ-1888 FF, DMM2-Eng-PQ-1898 FF, DMM2-Eng-PQ-1908 FF, DMM2-Eng-PQ-1938 FF, DMM2-Eng-PQ-648 FF, DMM2-Eng-PQ-658 FF, DMM2-Eng-PQ-668 FF, DMM2-Eng-PQ-678 FF, DMM2-Eng-PQ-688 FF, DMM2-Eng-PQ-698 FF, DMM2-Eng-PQ-708 FF, DMM2-Eng-PQ-718 FF, DMM2-Eng-PQ-728 FF, DMM2-Eng-PQ-738 FF, DMM2-Eng-PQ-748 FF, DMM2-Eng-PQ-758 FF, DMM2-Eng-PQ-768 FF, DMM2-Eng-PQ-778 FF, DMM2-Eng-PQ-788 FF, DMM2-Eng-PQ-798 FF, DMM2-Eng-PQ-808 FF, DMM2-Eng-PQ-818 FF, DMM2-Eng-PQ-828 FF, DMM2-Eng-PQ-838 FF, DMM2-Eng-PQ-848 FF, DMM2-Eng-PQ-858 FF, DMM2-Eng-PQ-868 FF, DMM2-Eng-PQ-878 FF, DMM2-Eng-PQ-888 FF, DMM2-Eng-PQ-898 FF, DMM2-Eng-PQ-908 FF, DMM2-Eng-PQ-918 FF, DMM2-Eng-PQ-938 FF, DMM2-Eng-PQ-948 FF, DMM2-Eng-PQ-958 FF, DMM2-Eng-PQ-968 FF, DMM2-Eng-PQ-978 FF, DMM2-Eng-PQ-988 FF, DMM2-Eng-PQ-1008 FF, DMM2-Eng-PQ-998 FF, DMM2-Eng-PQ-1018 FF, DMM2-Eng-PQ-1028 FF, DMM2-Eng-PQ-1038 FF, DMM2-Eng-PQ-1048 FF, DMM2-Eng-PQ-1058 FF, DMM2-Eng-PQ-1068 FF, DMM2-Eng-PQ-1078 FF, DMM2-Eng-PQ-1088 FF, DMM2-Eng-PQ-1098 FF, DMM2-Eng-PQ-1108 FF, DMM2-Eng-PQ-1118 FF, DMM2-Eng-PQ-1128 FF, DMM2-Eng-PQ-1138 FF, DMM2-Eng-PQ-1148 FF, DMM2-Eng-PQ-1158 FF, DMM2-Eng-PQ-1168 FF, DMM2-Eng-PQ-1178 FF, DMM2-Eng-PQ-1188 FF, DMM2-Eng-PQ-1198 FF, DMM2-Eng-PQ-1208 FF, DMM2-Eng-PQ-1218 FF, DMM2-Eng-PQ-1228 FF, DMM2-Eng-PQ-1238 FF, DMM2-Eng-PQ-1248 FF, DMM2-Eng-PQ-1258 FF, DMM2-Eng-PQ-1268 FF, DMM2-Eng-PQ-1278 FF, DMM2-Eng-PQ-1288 FF, DMM2-Eng-PQ-1298 FF, DMM2-Eng-PQ-1308 FF, DMM2-Eng-PQ-1318 FF, DMM2-Eng-PQ-1328 FF, DMM2-Eng-PQ-1338 FF, DMM2-Eng-PQ-1348 FF, DMM2-Eng-PQ-1358 FF, DMM2-Eng-PQ-1368 FF, DMM2-Eng-PQ-1378 FF, DMM2-Eng-PQ-1388 FF, DMM2-Eng-PQ-1398 FF, DMM2-Eng-PQ-1408 FF, DMM2-Eng-PQ-1418 FF, DMM2-Eng-PQ-1428 FF, DMM2-Eng-PQ-1438 FF, DMM2-Eng-PQ-1448 FF, DMM2-Eng-PQ-1458 FF, DMM2-Eng-PQ-1468 FF, DMM2-Eng-PQ-1478 FF, DMM2-Eng-PQ-1488 FF, DMM2-Eng-PQ-1498 FF, DMM2-Eng-PQ-1508 FF, DMM2-Eng-PQ-1518 FF, DMM2-Eng-PQ-1528 FF, DMM2-Eng-PQ-1538 FF, DMM2-Eng-PQ-1548 FF, DMM2-Eng-PQ-1558 FF, DMM2-Eng-PQ-1568 FF, DMM2-Eng-PQ-1578 FF, DMM2-Eng-PQ-1588 FF, DMM2-Eng-PQ-1598 FF, DMM2-Eng-PQ-1608 FF, DMM2-Eng-PQ-1618 FF, DMM2-Eng-SD-010 FF, DMM2-Eng-MS-338 FF, DMM2-Eng-PQ-041, DMM2-Eng-PQ-1548, DMM2-Eng-PQ-1398, DMM2-Proc-PO-0141, DMM2-Eng-PQ-1558, DMM2-Eng-PQ-042, DMM2-Proc-PO-01 |  | 8d |
| DMM-Mil-2 |  | Medium Voltage Network - Finish | 0d | 2026-11-08 | 2026-11-08 | B2.33 71 00.297 FF, B2.33 71 00.295 FF, B2.33 71 00.293 FF, B2.33 71 00.289 FF, B2.33 71 00.291 FF, B2.33 71 00 02 45 FF, B2.33 71 00.287 FF, B2.33 71 00.285 FF, B2.33 71 00.213 FF, B2.33 71 00.021 FF, B1.2.31 23 16.01.16, B2 33 73 00.01.19 |  | 71d |
| DMM-Mil-3 |  | Road Works & Asphalt - Finish | 0d | 2026-11-22 | 2026-11-22 | B1.2.32 11 26.01.1 FF, B1.2.32 11 26.01.10 FF, B1.2.32 11 26.01.11 FF, B1.2.32 11 26.01.12 FF, B1.2.32 11 26.01.13 FF, B1.2.32 11 26.01.14 FF, B1.2.32 11 26.01.15 FF, B1.2.32 11 26.01.16 FF, B1.2.32 11 26.01.17 FF, B1.2.32 11 26.01.2 FF, B1.2.32 11 26.01.3 FF, B1.2.32 11 26.01.4 FF, B1.2.32 11 26.01.5 FF, B1.2.32 11 26.01.6 FF, B1.2.32 11 26.01.7 FF, B1.2.32 11 26.01.8 FF, B1.2.32 11 26.01.9 FF, DMM-Mil-48 FF |  | 25d |
| DMM-Mil-28 |  | Project Commencement Finish | 0d | 2027-01-29 | 2027-01-29 | Clsout.13.2.1.11 FF, DMM-Mil-5 FF, DMM-Mil-10 FF, DMM-Mil-7 FF, DMM-Mil-11 FF, DMM-Mil-8 FF, DMM-Mil-6 FF, DMM-Mil-12 FF, DMM-Mil-9 FF, DMM-Mil-17 FF, DMM-Mil-18 FF, DMM-Mil-15 FF, DMM-Mil-16 FF, DMM-Mil-13 FF, DMM-Mil-14 FF, DMM2-Mob-44 FF, DMM-Mil-2 FF |  | 0d |
|  | Control | **Control Milestones** |  | 2026-10-21 | 2026-11-30 |  |  |  |
|  | Networks Milstones | **Networks & Stations** |  | 2026-10-24 | 2026-11-30 |  |  |  |
| DMM-Mil-5 |  | Sewerage Network - Finish | 0d | 2026-10-24 | 2026-10-24 | B6.33 05 39.01.817 FF, B6.33 05 39.01.1017 FF, B5.33 31 00.01.0248 FF, B3.33 14 19.01.33, B5.33 05 63.015 FF |  | 84d |
| DMM-Mil-7 |  | Potable Water Network - Finish | 0d | 2026-11-12 | 2026-11-12 | B3.33 14 19.01.fm18 FF, B3.33 05 63.02.34 FF, B3.33 14 13-10107 FF, B3.33 14 13.02.013, B3.33 14 19.01.109 |  | 67d |
| DMM-Mil-10 |  | Low Voltage Network - Finish | 0d | 2026-11-16 | 2026-11-16 | B2.33 71 26 031 FF, B2.33 71 26 032 FF, B2.33 71 26 013, B2.33 71 26 26, B2.33 71 26 32, B2.33 71 26 023 FF, B2.33 71 26 29 FF, B2.33 71 00 02 114 |  | 64d |
| DMM-Mil-8 |  | TSE Network - Finish | 0d | 2026-11-17 | 2026-11-17 | B3.33 05 63.01.74 FF, B3.33 05 63.02.99 FF |  | 63d |
| DMM-Mil-18 |  | Sewage Lift Station - Finish | 0d | 2026-11-22 | 2026-11-22 | B5.1.31 23 16.01.149 FF |  | 34d |
| DMM-Mil-48 |  | Bituminous concrete Wearing Course - Finish | 0d | 2026-11-22 | 2026-11-22 | B1.2.32 12 16.01.9 FF, B1.2.32 12 16.01.17 FF, B1.2.32 12 16.01.2 FF, B1.2.32 12 16.01.13 FF, B1.2.32 12 16.01.6 FF, B1.2.32 12 16.01.1 FF, B1.2.32 12 16.01.4 FF, B1.2.32 12 16.01.11 FF, B1.2.32 12 16.01.10 FF, B1.2.32 12 16.01.12 FF, B1.2.32 12 16.01.8 FF, B1.2.32 12 16.01.7 FF, B1.2.32 12 16.01.14 FF, B1.2.32 12 16.01.5 FF, B1.2.32 12 16.01.15 FF, B1.2.32 12 16.01.3 FF, B1.2.32 12 16.01.16 FF, B1.2.10 14 53.328 FF, 32 16 13.011 |  | 0d |
| DMM-Mil-11 |  | Fire Fighting Network - Finish | 0d | 2026-11-25 | 2026-11-25 | B3.33 14 19.01.fm51 FF, B3.33 05 63.02.59, B3.33 14 19.01.fh21, B3.33 05 63.01.59 FF, B3.33 14 19.01.fh30 FF, B3.33 05 63.02.49 FF, B3.33 14 19.01.fh39, B3.33 05 63.02.69 |  | 56d |
| DMM-Mil-12 |  | Street Lighting Network - Finish | 0d | 2026-11-25 | 2026-11-25 | B2.33 71 26 045 FF, B2.33 71 26 034 FF, B2.33 71 26 033 FF, B2.33 71 26 032 FF, B2.33 71 26 031 FF, B2.33 71 26 03 FF, B2.33 71 19 43, B2.33 71 26 044, B2.33 71 19 31 |  | 56d |
| DMM-Mil-17 |  | Potable Water Pump Station - Finish | 0d | 2026-11-26 | 2026-11-26 | B3.2.32 11 23.01.249 FF, B3.2.32 11 23.01.250 |  | 3d |
| DMM-Mil-9 |  | Telecommunication Network - Finish | 0d | 2026-11-28 | 2026-11-28 | B2.1.33 81 26.194 FF, B2.1.33 81 26.191 FF, B2.33 71 00.283 FF, B2.33 71 00.281 FF, B2.1.33 81 26.188 FF, B2.1.33 81 26.185 FF, B2.33 71 00.239, B2.1.33 81 26.119, B2.33 71 00.243 |  | 54.88d |
| DMM-Mil-6 |  | Storm Water Network - Finish | 0d | 2026-11-30 | 2026-11-30 | B6.33 05 63.044 FF, B6.33 05 63.07.4 FF, B6.33 05 13.09.5 |  | 13d |
|  | Zonewise | **Zonewise Milestones** |  | 2026-10-21 | 2026-11-29 |  |  |  |
| DMM-Mil-13 |  | Zone 01 - Finish | 0d | 2026-10-21 | 2026-10-21 | B1.2.32 17 23.01.1 FF, 32 16 134 FF, B1.2.32 12 16.01.1 FF, B1.2.32 12 16.01.2 FF |  | 41d |
| DMM-Mil-15 |  | Zone 03 - Finish | 0d | 2026-11-22 | 2026-11-22 | B5.1.31 23 16.01.149 FF |  | 59d |
| DMM-Mil-14 |  | Zone 02 - Finish | 0d | 2026-11-29 | 2026-11-29 | B1.2.10 14 14.025 FF |  | 36.76d |
| DMM-Mil-16 |  | Zone 04 - Finish | 0d | 2026-11-29 | 2026-11-29 | B1.2.32 17 23.01.17 FF, B1.2.32 17 23.01.16 FF, B1.2.32 17 23.02.17 FF, B1.2.32 12 16.01.15 FF, B1.2.32 12 16.01.16 FF, B1.2.32 12 16.01.17 FF |  | 53d |
|  | 2 | **Mobilization** |  | 2025-07-30 | 2027-01-29 |  |  |  |
|  | Site | **Site Facilities and Offices** |  | 2025-07-30 | 2027-01-29 |  |  |  |
| DMM2-Mob-34 |  | Site Delivery | 1d | 2025-07-30 A | 2025-07-30 A | DMM-Mil-1 SS | 100% |  |
| DMM2-Mob-44 |  | Level of Effort (Indirect Resources) | 454d | 2025-07-30 A | 2027-01-29 | DMM-Mil-1 SS | 74% | 0d |
| DMM2-Mob-010 |  | Equipment Mobilization | 27d | 2025-08-10 A | 2025-09-10 A | DMM2-Mob-34 | 100% |  |
| DMM2-Mob-08 |  | Site Access Roads Clearing & Grubbing | 7d | 2025-08-10 A | 2025-08-18 A | DMM2-Mob-34, DMM2-Mob-010 | 100% |  |
| DMM2-Mob-09 |  | Manpower Crews & Project Staff Mobilization | 50d | 2025-08-11 A | 2025-10-08 A | DMM2-Mob-34, DMM2-Mob-07 SS | 100% |  |
| DMM2-Mob-06 |  | Project Main Signboards Installation | 5d | 2025-08-17 A | 2025-08-23 A | DMM2-Mob-34 | 100% |  |
| DMM2-Mob-026 |  | Site Utilities, Cabins, Offices Electrical & Sanitary Wares | 14d | 2025-08-20 A | 2025-09-04 A | DMM2-Mob-34, DMM2-Mob-08, DMM2-Mob-07, DMM2-Mob-02, DMM2-Mob-03 | 100% |  |
| DMM2-Mob-025 |  | Nurse Room Installation & Equiping | 15d | 2025-09-10 A | 2025-09-28 A | DMM2-Mob-34, DMM2-Mob-08 | 100% |  |
| DMM2-Mob-04 |  | Store & Laydown Area | 21d | 2025-09-10 A | 2025-10-05 A | DMM2-Mob-34, DMM2-Mob-08 | 100% |  |
| DMM2-Mob-05 |  | Project Laboratory Installation & Equiping | 27d | 2025-09-17 A | 2025-10-19 A | DMM2-Mob-34, DMM2-Mob-08 | 100% |  |
| DMM2-Mob-07 |  | Offices, Parking Slots, Gates Installation | 39d | 2025-09-20 A | 2025-11-04 A | DMM2-Mob-34, DMM2-Mob-08 | 100% |  |
|  | Preliminaries | **Preliminary Works** |  | 2025-08-11 | 2025-11-19 |  |  |  |
|  | Soil | **Soil Investigation** |  | 2025-08-27 | 2025-09-22 |  |  |  |
| DMM2-Mob-011 |  | Prepare & Submit | 5d | 2025-08-27 A | 2025-09-01 A | DMM2-Mob-07, DMM2-Mob-09 | 100% |  |
| DMM2-Mob-012 |  | Review & Approval | 18d | 2025-09-02 A | 2025-09-22 A | DMM2-Mob-011 | 100% |  |
|  | Surveying | **Quality Plans** |  | 2025-08-26 | 2025-09-20 |  |  |  |
| DMM2-Mob-014 |  | Prepare & Submit | 7d | 2025-08-26 A | 2025-09-02 A | DMM2-Mob-07, DMM2-Mob-09 | 100% |  |
| DMM2-Mob-019 |  | Review & Approval | 15d | 2025-09-03 A | 2025-09-20 A | DMM2-Mob-014 | 100% |  |
|  | Baseline | **Baseline Schedule** |  | 2025-08-16 | 2025-11-19 |  |  |  |
| DMM2-Mob-015 |  | Prepare & Submit | 77d | 2025-08-16 A | 2025-11-13 A | DMM2-Mob-07 SS, DMM2-Mob-09 SS | 100% |  |
| DMM2-Mob-020 |  | Review & Approval | 4d | 2025-11-15 A | 2025-11-19 A | DMM2-Mob-015 | 100% |  |
|  | HSE | **HSE Plans** |  | 2025-08-11 | 2025-11-04 |  |  |  |
| DMM2-Mob-016 |  | Prepare & Submit | 12d | 2025-08-11 A | 2025-08-24 A | DMM2-Mob-07, DMM2-Mob-09 | 100% |  |
| DMM2-Mob-021 |  | Review & Approval | 24d | 2025-10-08 A | 2025-11-04 A | DMM2-Mob-016 | 100% |  |
|  | Mobilization | **Site Mobilization Plan** |  | 2025-08-11 | 2025-08-19 |  |  |  |
| DMM2-Mob-017 |  | Prepare & Submit | 2d | 2025-08-11 A | 2025-08-12 A | DMM2-Mob-07, DMM2-Mob-09 | 100% |  |
| DMM2-Mob-022 |  | Review & Approval | 6d | 2025-08-13 A | 2025-08-19 A | DMM2-Mob-017 | 100% |  |
|  | Organization Chart | **Organization Chart and Recruitment Plan** |  | 2025-08-13 | 2025-08-18 |  |  |  |
| DMM2-Mob-018 |  | Prepare & Submit | 2d | 2025-08-13 A | 2025-08-14 A | DMM2-Mob-07, DMM2-Mob-09 | 100% |  |
| DMM2-Mob-023 |  | Review & Approval | 3d | 2025-08-16 A | 2025-08-18 A | DMM2-Mob-018 | 100% |  |
|  | PMP | **Project Management Plans** |  | 2025-08-18 | 2025-09-20 |  |  |  |
| DMM2-Mob-013 |  | Prepare & Submit | 20d | 2025-08-18 A | 2025-09-09 A | DMM2-Mob-07, DMM2-Mob-09 | 100% |  |
| DMM2-Mob-024 |  | Review & Approval | 9d | 2025-09-10 A | 2025-09-20 A | DMM2-Mob-013 | 100% |  |
|  | Permits | **Authorities Permits & Approvals** |  | 2025-08-09 | 2025-11-06 |  |  |  |
| DMM2-Mob-02 |  | Electric Current Permission | 14d | 2025-08-09 A | 2025-08-24 A | DMM2-Mob-34 | 100% |  |
| DMM2-Mob-03 |  | Water & Sewer Permission | 6d | 2025-08-12 A | 2025-08-18 A | DMM2-Mob-34 | 100% |  |
| DMM2-Mob-01 |  | Dewatering Plan & Permission | 41d | 2025-09-20 A | 2025-11-06 A | DMM-Mil-38 | 100% |  |
|  | Eng | **Engineering** |  | 2025-08-11 | 2026-10-05 |  |  |  |
|  | SD | **Shop Drawing** |  | 2025-08-30 | 2026-01-14 |  |  |  |
|  | 2 | **Submittals & Approvals** |  | 2025-08-30 | 2026-01-14 |  |  |  |
|  | Site Grading | **Earth & Road Works** |  | 2025-09-24 | 2025-11-11 |  |  |  |
| DMM2-Eng-SD-01 |  | Prepare & Submit | 35d | 2025-09-24 A | 2025-11-03 A | DMM2-Mob-09, DMM2-Mob-07 | 100% |  |

| ID | WBS | Task | Duration | Start | Finish | Predecessors | Complete |
| --- | --- | --- | --- | --- | --- | --- | --- |
| DMM2-Eng-SD-02 |  | Review & Approval | 31d | 2025-10-07 A | 2025-11-11 A | DMM2-Eng-SD-01 | 100% |
|  | Landscape | **Landscape Works** |  | 2025-10-26 | 2026-01-03 |  |  |
| DMM2-Eng-SD-03 |  | Prepare & Submit | 40.01d | 2025-10-26 A | 2025-12-11 A | DMM2-Mob-09, DMM2-Mob-07, DMM2-Eng-SD-01 SS | 100% |
| DMM2-Eng-SD-04 |  | Review & Approval | 55.18d | 2025-10-30 A | 2026-01-03 A | DMM2-Eng-SD-03 | 100% |
|  | Guard Room | **Guard Rooms** |  | 2025-10-15 | 2025-12-25 |  |  |
|  | 1 | **Civil & Architecture** |  | 2025-10-15 | 2025-11-06 |  |  |
| DMM2-Eng-SD-05 |  | Prepare & Submit | 5d | 2025-10-15 A | 2025-10-20 A | DMM2-Mob-09, DMM2-Mob-07, DMM2-Eng-SD-03 | 100% |
| DMM2-Eng-SD-06 |  | Review & Approval | 15d | 2025-10-21 A | 2025-11-06 A | DMM2-Eng-SD-05 | 100% |
|  | 3 | **Mechanical** |  | 2025-10-25 | 2025-11-19 |  |  |
| DMM2-Eng-SD-28 |  | Prepare & Submit | 18d | 2025-10-25 A | 2025-11-13 A | DMM2-Mob-09, DMM2-Mob-07, DMM2-Eng-SD-05 SS | 100% |
| DMM2-Eng-SD-38 |  | Review & Approval | 6d | 2025-11-13 A | 2025-11-19 A | DMM2-Eng-SD-28 | 100% |
|  | 2 | **Electrical** |  | 2025-11-10 | 2025-12-25 |  |  |
| DMM2-Eng-SD-48 |  | Prepare & Submit | 26.96d | 2025-11-10 A | 2025-12-10 A | DMM2-Mob-09, DMM2-Mob-07, DMM2-Eng-SD-28 SS | 100% |
| DMM2-Eng-SD-58 |  | Review & Approval | 36.44d | 2025-11-13 A | 2025-12-25 A | DMM2-Eng-SD-48 | 100% |
|  | SDS | **Wet Networks & Stations** |  | 2025-08-30 | 2026-01-14 |  |  |
|  | Sewer | **Sewerage Network** |  | 2025-09-08 | 2025-10-22 |  |  |
| DMM2-Eng-SD-07 |  | Prepare & Submit | 35d | 2025-09-08 A | 2025-10-19 A | DMM2-Mob-09 SS, DMM2-Mob-07, DMM2-Eng-SD-48 | 100% |
| DMM2-Eng-SD-08 |  | Review & Approval | 3d | 2025-10-20 A | 2025-10-22 A | DMM2-Eng-SD-07 | 100% |
|  | Storm | **Storm Network** |  | 2025-08-30 | 2025-10-30 |  |  |
| DMM2-Eng-SD-09 |  | Prepare & Submit | 48d | 2025-08-30 A | 2025-10-25 A | DMM2-Mob-09, DMM2-Mob-07, DMM2-Eng-SD-07 | 100% |
| DMM2-Eng-SD-010 |  | Review & Approval | 5d | 2025-10-26 A | 2025-10-30 A | DMM2-Eng-SD-09 | 100% |
|  | Potable | **Potable Network** |  | 2025-09-16 | 2025-11-03 |  |  |
| DMM2-Eng-SD-011 |  | Prepare & Submit | 35d | 2025-09-16 A | 2025-10-27 A | DMM2-Mob-09, DMM2-Mob-07, DMM2-Eng-SD-09 | 100% |
| DMM2-Eng-SD-012 |  | Review & Approval | 6d | 2025-10-28 A | 2025-11-03 A | DMM2-Eng-SD-011 | 100% |
|  | TSE | **TSE Network** |  | 2025-10-29 | 2026-01-14 |  |  |
| DMM2-Eng-SD-013 |  | Prepare & Submit | 37.34d | 2025-10-29 A | 2025-12-11 A | DMM2-Mob-09, DMM2-Mob-07, DMM2-Eng-SD-011 SS | 100% |
| DMM2-Eng-SD-014 |  | Review & Approval | 63d | 2025-11-03 A | 2026-01-14 A | DMM2-Eng-SD-013 | 100% |
|  | Fire Fighting | **Fire Fighting Network** |  | 2025-10-11 | 2025-11-10 |  |  |
| DMM2-Eng-SD-015 |  | Prepare & Submit | 19d | 2025-10-11 A | 2025-11-01 A | DMM2-Mob-09, DMM2-Mob-07, DMM2-Eng-SD-013 SS | 100% |
| DMM2-Eng-SD-016 |  | Review & Approval | 8d | 2025-11-02 A | 2025-11-10 A | DMM2-Eng-SD-015 | 100% |
|  | Pot Pump St. | **Potable Water Pump Station** |  | 2025-10-16 | 2026-01-01 |  |  |
| DMM2-Eng-SD-017 |  | Prepare & Submit | 48d | 2025-10-16 A | 2025-12-10 A | DMM2-Mob-09, DMM2-Mob-07, DMM2-Eng-SD-015 | 100% |
| DMM2-Eng-SD-018 |  | Review & Approval | 63.47d | 2025-10-20 A | 2026-01-01 A | DMM2-Eng-SD-017 | 100% |
|  | Sewer Lift St. | **Sewer Lift Station** |  | 2025-11-25 | 2025-12-24 |  |  |
| DMM2-Eng-SD-019 |  | Prepare & Submit | 15d | 2025-11-25 A | 2025-12-11 A | DMM2-Mob-09, DMM2-Mob-07, DMM2-Eng-SD-017 SS | 100% |
| DMM2-Eng-SD-020 |  | Review & Approval | 21.64d | 2025-11-30 A | 2025-12-24 A | DMM2-Eng-SD-019 | 100% |
|  | 1 | **Dry Networks** |  | 2025-09-27 | 2025-10-20 |  |  |
|  | MV | **Medium Voltage Network** |  | 2025-09-27 | 2025-10-16 |  |  |
| DMM2-Eng-SD-021 |  | Prepare & Submit | 13d | 2025-09-27 A | 2025-10-11 A | DMM2-Mob-09, DMM2-Mob-07, DMM2-Eng-SD-019 | 100% |
| DMM2-Eng-SD-022 |  | Review & Approval | 5d | 2025-10-12 A | 2025-10-16 A | DMM2-Eng-SD-021 | 100% |
|  | LV | **Low Voltage Network** |  | 2025-10-04 | 2025-10-16 |  |  |
| DMM2-Eng-SD-023 |  | Prepare & Submit | 7d | 2025-10-04 A | 2025-10-11 A | DMM2-Mob-09, DMM2-Mob-07, DMM2-Eng-SD-021 | 100% |
| DMM2-Eng-SD-024 |  | Review & Approval | 5d | 2025-10-12 A | 2025-10-16 A | DMM2-Eng-SD-023 | 100% |
|  | Telecom | **Telecommunication Network** |  | 2025-10-02 | 2025-10-20 |  |  |
| DMM2-Eng-SD-025 |  | Prepare & Submit | 12d | 2025-10-02 A | 2025-10-15 A | DMM2-Mob-09, DMM2-Mob-07, DMM2-Eng-SD-023 SS | 100% |
| DMM2-Eng-SD-026 |  | Review & Approval | 4d | 2025-10-16 A | 2025-10-20 A | DMM2-Eng-SD-025 | 100% |
|  | SL | **Street Lighting** |  | 2025-10-01 | 2025-10-16 |  |  |
| DMM2-Eng-SD-027 |  | Prepare & Submit | 9d | 2025-10-01 A | 2025-10-11 A | DMM2-Mob-09, DMM2-Mob-07, DMM2-Eng-SD-025 | 100% |
| DMM2-Eng-SD-028 |  | Review & Approval | 5d | 2025-10-12 A | 2025-10-16 A | DMM2-Eng-SD-027 | 100% |
|  | Prequalification | **Prequalifications & Materials Submissions** |  | 2025-08-11 | 2026-10-05 |  |  |
|  | Prequal Submit | **Submittals** |  | 2025-08-31 | 2026-09-22 |  |  |
|  | Site Grading | **Earth & Road Works** |  | 2025-10-14 | 2026-01-18 |  |  |
| DMM2-Eng-PQ-02 |  | Prepare & Submit for Agg. Base Coarse | 2d | 2025-10-14 A | 2025-10-15 A | DMM2-Mob-09, DMM2-Eng-PQ-04 | 100% |
| DMM2-Eng-PQ-03 |  | Prepare & Submit for Asphalt Materials | 24.75d | 2025-10-14 A | 2025-11-11 A | DMM2-Mob-09, DMM2-Eng-PQ-02 | 100% |
| DMM2-Eng-PQ-04 |  | Prepare & Submit for Subgrade Materials | 29d | 2025-10-14 A | 2025-11-16 A | DMM2-Mob-09, DMM2-Eng-PQ-01 | 100% |
| DMM2-Eng-PQ-01 |  | Prepare & Submit for Embankment & Backfilling Materials | 1d | 2025-10-15 A | 2025-10-15 A | DMM2-Mob-09 SS, DMM2-Eng-PQ-1918 | 100% |
| DMM2-Eng-PQ-1918 |  | Prepare & Submit for Concrete Materials | 1d | 2025-10-20 A | 2025-10-20 A | DMM2-Mob-09 | 100% |
| DMM2-Eng-PQ-011 |  | Prepare & Submit for Interlock Materials | 2d | 2025-11-16 A | 2025-11-17 A | DMM2-Mob-09, DMM2-Eng-PQ-05 | 100% |
| DMM2-Eng-PQ-05 |  | Prepare & Submit for Curbstone Materials | 2d | 2025-12-17 A | 2025-12-18 A | DMM2-Mob-09, DMM2-Eng-PQ-03 | 100% |
| DMM2-Eng-PQ-014 |  | Prepare & Submit for Traffic Signs Materials | 2d | 2025-12-31 A | 2026-01-01 A | DMM2-Mob-09 SS, DMM2-Eng-PQ-011 | 100% |
| DMM2-Eng-PQ-012 |  | Prepare & Submit for Pavement Markings Materials | 2d | 2026-01-05 A | 2026-01-06 A | DMM2-Mob-09, DMM2-Eng-PQ-015 | 100% |
| DMM2-Eng-PQ-013 |  | Prepare & Submit for Wheels Stopper (precast concrete) Materials | 2d | 2026-01-14 A | 2026-01-15 A | DMM2-Mob-09 SS | 100% |
| DMM2-Eng-PQ-015 |  | Prepare & Submit for ground Mounted Information Signs Materials | 2d | 2026-01-17 A | 2026-01-18 A | DMM2-Mob-09, DMM2-Eng-PQ-014 | 100% |
|  | SDS | **Wet Networks & Stations** |  | 2025-08-31 | 2026-09-19 |  |  |
|  | Storm | **Storm Network** |  | 2025-10-01 | 2025-11-20 |  |  |
| DMM2-Eng-PQ-064 |  | Prepare & Submit for GRP Pipes Materials | 44d | 2025-10-01 A | 2025-11-20 A | DMM2-Mob-09, DMM2-Eng-PQ-065 | 100% |
| DMM2-Eng-PQ-065 |  | Prepare & Submit for Steel Reinforcement Materials | 2d | 2025-10-09 A | 2025-10-11 A | DMM2-Mob-09 | 100% |
| DMM2-Eng-PQ-068 |  | Prepare & Submit for uPVC Pipes Materials | 2d | 2025-10-29 A | 2025-10-30 A | DMM2-Mob-09, DMM2-Eng-PQ-064 | 100% |
| DMM2-Eng-PQ-066 |  | Prepare & Submit for Inlet Manholes Materials | 2d | 2025-11-02 A | 2025-11-03 A | DMM2-Mob-09 SS, DMM2-Eng-PQ-068 | 100% |
| DMM2-Eng-PQ-067 |  | Prepare & Submit for Concrete Chambers & Catch Basin Materials | 2d | 2025-11-02 A | 2025-11-03 A | DMM2-Mob-09, DMM2-Eng-PQ-065, DMM2-Eng-PQ-066 | 100% |

| ID | WBS | Task | Duration | Start | Finish | Predecessors | Complete | Total float |
| --- | --- | --- | --- | --- | --- | --- | --- | --- |
|  | Sewer | **Sewerage Network** |  | 2025-08-31 | 2025-11-03 |  |  |  |
| DMM2-Eng-PQ-071 |  | Prepare & Submit for Valves Materials | 2d | 2025-08-31 A | 2025-09-01 A | DMM2-Mob-09 SS, DMM2-Eng-PQ-069 | 100% |  |
| DMM2-Eng-PQ-069 |  | Prepare & Submit for HDPE Pipes Materials | 2d | 2025-10-06 A | 2025-10-07 A | DMM2-Mob-09 SS | 100% |  |
| DMM2-Eng-PQ-070 |  | Prepare & Submit for Valves Chambers Materials | 2d | 2025-11-02 A | 2025-11-03 A | DMM2-Mob-09, DMM2-Eng-PQ-071 | 100% |  |
| DMM2-Eng-PQ-072 |  | Prepare & Submit for Discharge Chamber Materials | 2d | 2025-11-02 A | 2025-11-03 A | DMM2-Mob-09, DMM2-Eng-PQ-070 | 100% |  |
|  | Potable | **Potable Network** |  | 2025-08-31 | 2025-12-13 |  |  |  |
| DMM2-Eng-PQ-077 |  | Prepare & Submit for Valves Materials | 2d | 2025-08-31 A | 2025-09-01 A | DMM2-Mob-09 SS, DMM2-Eng-PQ-076 | 100% |  |
| DMM2-Eng-PQ-076 |  | Prepare & Submit for HDPE Pipes Materials | 2d | 2025-10-06 A | 2025-10-07 A | DMM2-Mob-09 | 100% |  |
| DMM2-Eng-PQ-078 |  | Prepare & Submit for Valves & Flow Meter Chambers Materials | 2d | 2025-11-02 A | 2025-11-03 A | DMM2-Mob-09, DMM2-Eng-PQ-079 | 100% |  |
| DMM2-Eng-PQ-079 |  | Prepare & Submit for Flow Meter Materials | 3d | 2025-12-10 A | 2025-12-13 A | DMM2-Mob-09, DMM2-Eng-PQ-077 | 100% |  |
|  | TSE | **TSE Network** |  | 2025-08-31 | 2026-02-22 |  |  |  |
| DMM2-Eng-PQ-082 |  | Prepare & Submit for Valves Materials | 2d | 2025-08-31 A | 2025-09-01 A | DMM2-Mob-09, DMM2-Eng-PQ-080 | 100% |  |
| DMM2-Eng-PQ-080 |  | Prepare & Submit for HDPE Pipes Materials | 2d | 2025-10-06 A | 2025-10-07 A | DMM2-Mob-09 SS | 100% |  |
| DMM2-Eng-PQ-081 |  | Prepare & Submit for Solenoid Primary Control Valves Materials | 2.25d | 2026-02-18 A | 2026-02-22 A | DMM2-Mob-09, DMM2-Eng-PQ-082 | 100% |  |
| DMM2-Eng-PQ-1648 |  | Prepare & Submit for Dripper Materials | 2.25d | 2026-02-18 A | 2026-02-22 A | DMM2-Mob-09, DMM2-Eng-PQ-081 | 100% |  |
| DMM2-Eng-PQ-1658 |  | Prepare & Submit for Bubbler Materials | 2.25d | 2026-02-18 A | 2026-02-22 A | DMM2-Mob-09, DMM2-Eng-PQ-1648 | 100% |  |
| DMM2-Eng-PQ-1668 |  | Prepare & Submit for Pull Box Materials | 2.25d | 2026-02-18 A | 2026-02-22 A | DMM2-Mob-09, DMM2-Eng-PQ-1658, DMM2-Eng-PQ-1658 FF | 100% |  |
| DMM2-Eng-PQ-1678 |  | Prepare & Submit for Two wire decoder cable 12 awg Materials | 2.25d | 2026-02-18 A | 2026-02-22 A | DMM2-Mob-09, DMM2-Eng-PQ-1668, DMM2-Eng-PQ-1668 FF | 100% |  |
|  | Fire Fighting | **Fire Fighting Network** |  | 2025-08-31 | 2025-11-03 |  |  |  |
| DMM2-Eng-PQ-074 |  | Prepare & Submit for Valves Materials | 2d | 2025-08-31 A | 2025-09-01 A | DMM2-Mob-09 SS, DMM2-Eng-PQ-073 | 100% |  |
| DMM2-Eng-PQ-1948 |  | Prepare & Submit for Firehydrant Materials | 2d | 2025-08-31 A | 2025-09-01 A | DMM2-Mob-09, DMM2-Eng-PQ-075 | 100% |  |
| DMM2-Eng-PQ-073 |  | Prepare & Submit for HDPE Pipes Materials | 2d | 2025-10-06 A | 2025-10-07 A | DMM2-Mob-09 | 100% |  |
| DMM2-Eng-PQ-075 |  | Prepare & Submit for Valves Chambers Materials | 2d | 2025-11-02 A | 2025-11-03 A | DMM2-Mob-09, DMM2-Eng-PQ-074 | 100% |  |
|  | Pot Pump St. | **Potable Water Pump Station** |  | 2025-08-31 | 2026-09-19 |  |  |  |
|  | 1 | **Civil & Architecture** |  | 2025-11-10 | 2026-07-12 |  |  |  |
| DMM2-Eng-PQ-0114 |  | Prepare & Submit for CMU Walls Materials | 2d | 2025-11-10 A | 2025-11-11 A | DMM2-Mob-09 SS, DMM2-Eng-PQ-0113 | 100% |  |
| DMM2-Eng-PQ-0118 |  | Prepare & Submit for Gravel Materials | 2d | 2025-12-31 A | 2026-01-01 A | DMM2-Mob-09 | 100% |  |
| DMM2-Eng-PQ-0113 |  | Prepare & Submit for Stairs Materials | 3d | 2026-05-02 A | 2026-05-04 A | DMM2-Mob-09 | 100% |  |
| DMM2-Eng-PQ-0115 |  | Prepare & Submit for Stainless Steel Ladder Materials | 3d | 2026-05-02 A | 2026-05-04 A | DMM2-Mob-09, DMM2-Eng-PQ-0114 | 100% |  |
| DMM2-Eng-PQ-0116 |  | Prepare & Submit for Steel shutter Door Materials | 3d | 2026-05-02 A | 2026-05-04 A | DMM2-Mob-09, DMM2-Eng-PQ-0115 | 100% |  |
| DMM2-Eng-PQ-0119 |  | Prepare & Submit for Handrail Materials | 3d | 2026-05-02 A | 2026-05-04 A | DMM2-Mob-09 | 100% |  |
| DMM2-Eng-PQ-0117 |  | Prepare & Submit for Metal Railing Materials | 2d | 2026-07-11 A | 2026-07-12 A | DMM2-Mob-09 SS | 100% |  |
|  | 3 | **Mechanical** |  | 2025-08-31 | 2026-09-19 |  |  |  |
| DMM2-Eng-PQ-0122 |  | Prepare & Submit for Butterfly Valve Materials | 2d | 2025-08-31 A | 2025-09-01 A | DMM2-Mob-09, DMM2-Eng-PQ-1958 | 100% |  |
| DMM2-Eng-PQ-1958 |  | Prepare & Submit for Valves Materials | 13d | 2025-08-31 A | 2025-09-14 A | DMM2-Mob-09, DMM2-Eng-PQ-0129 SS | 100% |  |
| DMM2-Eng-PQ-0126 |  | Prepare & Submit for FM200 Supression System Materials | 2d | 2025-09-24 A | 2025-09-25 A | DMM2-Mob-09 SS, DMM2-Mob-09 | 100% |  |
| DMM2-Eng-PQ-0120 |  | Prepare & Submit for Water Pumps Materials | 2d | 2025-10-20 A | 2025-10-21 A | DMM2-Mob-09 SS | 100% |  |
| DMM2-Eng-PQ-0121 |  | Prepare & Submit for Fire Pumps Materials | 2d | 2025-10-20 A | 2025-10-21 A | DMM2-Mob-09, DMM2-Eng-PQ-0120 | 100% |  |
| DMM2-Eng-PQ-0123 |  | Prepare & Submit for OverHead Crane Materials | 1.25d | 2025-11-19 A | 2025-11-20 A | DMM2-Mob-09, DMM2-Eng-PQ-0121 SS | 100% |  |
| DMM2-Eng-PQ-1968 |  | Prepare & Submit for Electromagnetic Flow Meters | 8d | 2025-12-11 A | 2025-12-20 A | DMM2-Mob-09, DMM2-Eng-PQ-1988 SS | 100% |  |
| DMM2-Eng-PQ-0128 |  | Prepare & Submit for Exhaust Fans Materials | 4d | 2026-01-21 A | 2026-01-25 A | DMM2-Mob-09 SS, DMM2-Eng-PQ-0122 SS | 100% |  |
| DMM2-Eng-PQ-1978 |  | Prepare & Submit for Fans Materials | 3d | 2026-01-21 A | 2026-01-24 A | DMM2-Mob-09, DMM2-Eng-PQ-0128 SS | 100% |  |
| DMM2-Eng-PQ-0129 |  | Prepare & Submit for Chlorine Cylinder Racks Materials | 1d | 2026-02-07 A | 2026-02-08 A | DMM2-Mob-09, DMM2-Eng-PQ-0130 | 100% |  |
| DMM2-Eng-PQ-0130 |  | Prepare & Submit for Chlorinators Materials | 1.5d | 2026-02-07 A | 2026-02-08 A | DMM2-Mob-09, DMM2-Eng-PQ-0123 | 100% |  |
| DMM2-Eng-PQ-0131 |  | Prepare & Submit for Discharge Line Analyzer Materials | 1.5d | 2026-02-07 A | 2026-02-08 A | DMM2-Mob-09, DMM2-Eng-PQ-0130, DMM2-Eng-PQ-0124 | 100% |  |
| DMM2-Eng-PQ-0132 |  | Prepare & Submit for Emergency shower Materials | 1.5d | 2026-02-07 A | 2026-02-08 A | DMM2-Mob-09 SS, DMM2-Eng-PQ-0133 SS | 100% |  |
| DMM2-Eng-PQ-0124 |  | Prepare & Submit for Strainers Materials | 1.42d | 2026-02-07 A | 2026-02-08 A | DMM2-Mob-09, DMM2-Eng-PQ-0123, DMM2-Eng-PQ-1978 | 100% |  |
| DMM2-Eng-PQ-0133 |  | Prepare & Submit for Trench Drain Materials | 3d | 2026-07-02 A | 2026-07-05 A | DMM2-Mob-09, DMM2-Eng-PQ-1968 | 100% |  |
| DMM2-Eng-PQ-0125 |  | Prepare & Submit for Sand Trap Louver Materials | 3d | 2026-07-06 A | 2026-07-08 A | DMM2-Mob-09, DMM2-Eng-PQ-0124 SS, DMM2-Eng-PQ-0126 | 100% |  |
| DMM2-Eng-PQ-1988 |  | Prepare & Submit for Louvers Materials | 4d | 2026-07-07 A | 2026-07-11 A | DMM2-Mob-09, DMM2-Eng-PQ-0131 | 100% |  |
| DMM2-Eng-PQ-0127 |  | Prepare & Submit for Hose Bibb Materials | 3d | 2026-09-16 | 2026-09-19 | DMM2-Mob-09, DMM2-Eng-PQ-0132 |  | 17d |
|  | 2 | **Electrical** |  | 2025-09-24 | 2026-02-12 |  |  |  |
| DMM2-Eng-PQ-1998 |  | Prepare & Submit for Addressable Fire Alarm System Materials | 2d | 2025-09-24 A | 2025-09-25 A | DMM2-Mob-09 | 100% |  |
| DMM2-Eng-PQ-0134 |  | Prepare & Submit for Switches and Circuit Breakers Materials | 2d | 2026-02-11 A | 2026-02-12 A | DMM2-Mob-09 | 100% |  |
|  | Sewer Lift St. | **Sewer Lift Station** |  | 2025-08-31 | 2026-08-12 |  |  |  |
|  | 1 | **Civil & Architecture** |  | 2025-12-04 | 2026-08-12 |  |  |  |
| DMM2-Eng-PQ-090 |  | Prepare & Submit for Geotextile Membrane Materials | 2d | 2025-12-04 A | 2025-12-06 A | DMM2-Mob-09 SS | 100% |  |
| DMM2-Eng-PQ-084 |  | Prepare & Submit for Metal Covers Materials | 2d | 2026-01-07 A | 2026-01-08 A | DMM2-Mob-09 | 100% |  |
| DMM2-Eng-PQ-083 |  | Prepare & Submit for Metal Ladders Materials | 3d | 2026-05-02 A | 2026-05-04 A | DMM2-Mob-09 SS | 100% |  |
| DMM2-Eng-PQ-085 |  | Prepare & Submit for Internal Painting (Acrylic) Materials | 4d | 2026-08-03 A | 2026-08-06 A | DMM2-Mob-09 | 100% |  |
| DMM2-Eng-PQ-086 |  | Prepare & Submit for Signages Materials | 4d | 2026-08-09 A | 2026-08-12 A | DMM2-Mob-09 SS | 100% |  |
|  | 3 | **Mechanical** |  | 2025-08-31 | 2026-05-24 |  |  |  |
| DMM2-Eng-PQ-091 |  | Prepare & Submit for Non Return Valve (Flap) Materials | 18d | 2025-08-31 A | 2025-09-20 A | DMM2-Mob-09, DMM2-Eng-PQ-087 | 100% |  |
| DMM2-Eng-PQ-087 |  | Prepare & Submit for Submersible Pumps Materials | 2d | 2025-10-20 A | 2025-10-21 A | DMM2-Mob-09 | 100% |  |
| DMM2-Eng-PQ-088 |  | Prepare & Submit for Double Flanged DI Pipes Materials | 2d | 2025-10-29 A | 2025-10-30 A | DMM2-Mob-09 | 100% |  |
| DMM2-Eng-PQ-089 |  | Prepare & Submit for Buried Flanged DI Pipes Materials | 2d | 2025-10-29 A | 2025-10-30 A | DMM2-Mob-09 SS, DMM2-Eng-PQ-088 | 100% |  |
| DMM2-Eng-PQ-093 |  | Prepare & Submit for Odor Control Unit Materials | 2d | 2025-11-19 A | 2025-11-20 A | DMM2-Mob-09, DMM2-Eng-PQ-092 | 100% |  |
| DMM2-Eng-PQ-095 |  | Prepare & Submit for JIB Crane Materials | 2d | 2025-11-19 A | 2025-11-20 A | DMM2-Mob-09, DMM2-Eng-PQ-094 SS | 100% |  |
| DMM2-Eng-PQ-092 |  | Prepare & Submit for Basket Screens Materials | 31.4d | 2025-12-30 A | 2026-02-04 A | DMM2-Mob-09, DMM2-Eng-PQ-091 | 100% |  |
| DMM2-Eng-PQ-094 |  | Prepare & Submit for Surge Tank Materials | 113d | 2025-12-31 A | 2026-05-24 A | DMM2-Mob-09 SS, DMM2-Eng-PQ-093 SS | 100% |  |

| ID | WBS | Task | Duration | Start | Finish | Predecessors | Complete |
| --- | --- | --- | --- | --- | --- | --- | --- |
| DMM2-Eng-PQ-096 |  | Prepare & Submit for Penstock Materials | 31d | 2025-12-31 A | 2026-02-04 A | DMM2-Mob-09, DMM2-Eng-PQ-095 | 100% |
| DMM2-Eng-PQ-097 |  | Prepare & Submit for Screening Container Materials | 30.12d | 2025-12-31 A | 2026-02-04 A | DMM2-Mob-09, DMM2-Eng-PQ-096 SS | 100% |
| DMM2-Eng-PQ-098 |  | Prepare & Submit for Scupper Materials | 31d | 2025-12-31 A | 2026-02-04 A | DMM2-Mob-09 SS, DMM2-Eng-PQ-097 SS | 100% |
|  | 2 | **Electrical** |  | 2025-10-14 | 2026-03-18 |  |  |
| DMM2-Eng-PQ-0101 |  | Prepare & Submit for Low Voltage Cables Materials | 2d | 2025-10-14 A | 2025-10-15 A | DMM2-Mob-09 | 100% |
| DMM2-Eng-PQ-0103 |  | Prepare & Submit for Fuel Pump Materials | 2d | 2025-10-20 A | 2025-10-21 A | DMM2-Mob-09, DMM2-Eng-PQ-0102 | 100% |
| DMM2-Eng-PQ-0106 |  | Prepare & Submit for Displacement Rotary Type Pump Materials | 2d | 2025-10-20 A | 2025-10-21 A | DMM2-Mob-09 SS, DMM2-Eng-PQ-0105 | 100% |
| DMM2-Eng-PQ-0102 |  | Prepare & Submit for Standby Diesel Generator Materials | 2d | 2025-10-29 A | 2025-10-30 A | DMM2-Mob-09 SS | 100% |
| DMM2-Eng-PQ-0110 |  | Prepare & Submit for PLC System Materials | 2d | 2025-10-29 A | 2025-10-30 A | DMM2-Mob-09, DMM2-Eng-PQ-0106 | 100% |
| DMM2-Eng-PQ-0107 |  | Prepare & Submit for Electrical Hand Holes Materials | 2d | 2025-11-02 A | 2025-11-03 A | DMM2-Mob-09 | 100% |
| DMM2-Eng-PQ-0108 |  | Prepare & Submit for Galvanized Steel Pole Materials | 2d | 2025-12-13 A | 2025-12-14 A | DMM2-Mob-09 | 100% |
| DMM2-Eng-PQ-0100 |  | Prepare & Submit for Local Control Panel Materials | 1d | 2025-12-15 A | 2025-12-15 A | DMM2-Mob-09 | 100% |
| DMM2-Eng-PQ-0104 |  | Prepare & Submit for Automatic Transfer (Switch ATS) Materials | 1d | 2025-12-15 A | 2025-12-15 A | DMM2-Mob-09 SS, DMM2-Eng-PQ-0103 | 100% |
| DMM2-Eng-PQ-099 |  | Prepare & Submit for Motor Control Center (MCC) Materials | 1d | 2025-12-15 A | 2025-12-15 A | DMM2-Mob-09 | 100% |
| DMM2-Eng-PQ-0111 |  | Prepare & Submit for Process Control Wiring Materials | 2d | 2025-12-21 A | 2025-12-22 A | DMM2-Mob-09 | 100% |
| DMM2-Eng-PQ-0105 |  | Prepare & Submit for Under Ground Fuel Tank Materials | 4d | 2025-12-24 A | 2025-12-28 A | DMM2-Mob-09 SS, DMM2-Eng-PQ-0104 | 100% |
| DMM2-Eng-PQ-0112 |  | Prepare & Submit for Instrumentation for Process Systems Materials | 2d | 2026-01-18 A | 2026-01-19 A | DMM2-Mob-09 | 100% |
| DMM2-Eng-PQ-0109 |  | Prepare & Submit for Surfaced Mounted Light (LED) Materials | 24d | 2026-02-11 A | 2026-03-18 A | DMM2-Mob-09 | 100% |
|  | SDS1 | **Dry Networks** |  | 2025-10-06 | 2026-02-07 |  |  |
|  | MV | **Medium Voltage Network** |  | 2025-12-20 | 2026-01-05 |  |  |
| DMM2-Eng-PQ-0135 |  | Prepare & Submit for MV Cables Materials | 7d | 2025-12-20 A | 2025-12-27 A | DMM2-Mob-09 SS, DMM2-Eng-PQ-0112 | 100% |
| DMM2-Eng-PQ-0136 |  | Prepare & Submit for Straight Joints, Termination Materials | 3d | 2025-12-20 A | 2025-12-22 A | DMM2-Mob-09 | 100% |
| DMM2-Eng-PQ-0137 |  | Prepare & Submit for Unit Substation Materials | 1d | 2026-01-02 A | 2026-01-03 A | DMM2-Mob-09 SS | 100% |
| DMM2-Eng-PQ-0138 |  | Prepare & Submit for RMU Materials | 3d | 2026-01-03 A | 2026-01-05 A | DMM2-Mob-09 | 100% |
|  | LV | **Low Voltage Network** |  | 2025-10-14 | 2026-01-15 |  |  |
| DMM2-Eng-PQ-0139 |  | Prepare & Submit for LV Cables Materials | 2d | 2025-10-14 A | 2025-10-15 A | DMM2-Mob-09 | 100% |
| DMM2-Eng-PQ-0140 |  | Prepare & Submit for LV Pillars Materials | 1d | 2026-01-15 A | 2026-01-15 A | DMM2-Mob-09 | 100% |
| DMM2-Eng-PQ-1999 |  | Prepare & Submit for LV Panels Materials | 1d | 2026-01-15 A | 2026-01-15 A | DMM2-Eng-PQ-0139 | 100% |
|  | Telecom | **Telecommunication Network** |  | 2025-10-06 | 2025-11-03 |  |  |
| DMM2-Eng-PQ-0147 |  | Prepare & Submit for HDPE Ducts Materials | 2d | 2025-10-06 A | 2025-10-07 A | DMM2-Mob-09 | 100% |
| DMM2-Eng-PQ-0148 |  | Prepare & Submit for Manholes Type 1&2 Materials | 2d | 2025-11-02 A | 2025-11-03 A | DMM2-Mob-09 SS | 100% |
|  | SL | **Street Lighting** |  | 2025-11-02 | 2026-02-07 |  |  |
| DMM2-Eng-PQ-0146 |  | Prepare & Submit for SL Drawpits Materials | 2d | 2025-11-02 A | 2025-11-03 A | DMM2-Mob-09 SS, DMM2-Eng-PQ-0145 | 100% |
| DMM2-Eng-PQ-0142 |  | Prepare & Submit for SL Cables Materials | 3d | 2025-12-20 A | 2025-12-22 A | DMM2-Mob-09 SS, DMM2-Eng-PQ-0141 | 100% |
| DMM2-Eng-PQ-0143 |  | Prepare & Submit for SL Poles Materials | 2d | 2025-12-24 A | 2025-12-25 A | DMM2-Mob-09, DMM2-Eng-PQ-0142 | 100% |
| DMM2-Eng-PQ-0144 |  | Prepare & Submit for SL Luminares Materials | 2d | 2025-12-24 A | 2025-12-25 A | DMM2-Mob-09, DMM2-Eng-PQ-0143 SS | 100% |
| DMM2-Eng-PQ-0141 |  | Prepare & Submit for SL Pillars Materials | 1d | 2026-01-15 A | 2026-01-15 A | DMM2-Mob-09 | 100% |
| DMM2-Eng-PQ-0145 |  | Prepare & Submit for SL Earthing Materials | 4d | 2026-02-03 A | 2026-02-07 A | DMM2-Mob-09, DMM2-Eng-PQ-0144 | 100% |
|  | Landscape | **Landscape Works** |  | 2025-11-09 | 2026-05-19 |  |  |
| DMM2-Eng-PQ-018 |  | Prepare & Submit for Fences (ZATCA HCIS) Materials | 2d | 2025-11-09 A | 2025-11-10 A | DMM2-Mob-09, DMM2-Eng-PQ-017 | 100% |
| DMM2-Eng-PQ-08 |  | Prepare & Submit for Geotextile Layers Materials | 2d | 2025-12-04 A | 2025-12-06 A | DMM2-Mob-09, DMM2-Eng-PQ-07 | 100% |
| DMM2-Eng-PQ-019 |  | Prepare & Submit for Fences (MODON) Materials | 3d | 2025-12-10 A | 2025-12-13 A | DMM2-Mob-09 SS, DMM2-Eng-PQ-018 SS | 100% |
| DMM2-Eng-PQ-017 |  | Prepare & Submit for Gravel/Stone Mulch Materials | 4d | 2025-12-17 A | 2025-12-21 A | DMM2-Mob-09 SS, DMM2-Eng-PQ-016 | 100% |
| DMM2-Eng-PQ-06 |  | Prepare & Submit for Trees Materials | 35d | 2025-12-31 A | 2026-02-09 A | DMM2-Mob-09 | 100% |
| DMM2-Eng-PQ-07 |  | Prepare & Submit for Ornamental Grasses Materials | 34.25d | 2025-12-31 A | 2026-02-09 A | DMM2-Mob-09, DMM2-Eng-PQ-06 SS | 100% |
| DMM2-Eng-PQ-09 |  | Prepare & Submit for Plastic edge Materials | 34.88d | 2025-12-31 A | 2026-02-09 A | DMM2-Mob-09, DMM2-Eng-PQ-08 | 100% |
| DMM2-Eng-PQ-016 |  | Prepare & Submit for Plants Materials | 32.62d | 2026-01-03 A | 2026-02-09 A | DMM2-Mob-09, DMM2-Eng-PQ-010 SS | 100% |
| DMM2-Eng-PQ-010 |  | Prepare & Submit for Large Shrubs Materials | 31.88d | 2026-01-04 A | 2026-02-09 A | DMM2-Mob-09 SS, DMM2-Eng-PQ-09 | 100% |
| DMM2-Eng-PQ-020 |  | Prepare & Submit for Vehicle Steel Gate Materials | 7d | 2026-05-12 A | 2026-05-19 A | DMM2-Mob-09 SS, DMM2-Eng-PQ-019 | 100% |
| DMM2-Eng-PQ-021 |  | Prepare & Submit for Vehicle and Pedestrian Steel Gate Materials | 7d | 2026-05-12 A | 2026-05-19 A | DMM2-Mob-09, DMM2-Eng-PQ-020 | 100% |
|  | Guard Room | **Guard Rooms** |  | 2025-10-14 | 2026-09-22 |  |  |
|  | GR MAT Civil | **Civil & Architecture** |  | 2025-10-19 | 2026-08-13 |  |  |
| DMM2-Eng-PQ-022 |  | Prepare & Submit for Lean Concrete Materials | 2d | 2025-10-19 A | 2025-10-20 A | DMM2-Mob-09 | 100% |
| DMM2-Eng-PQ-024 |  | Prepare & Submit for Screed Concrete Materials | 2d | 2025-10-19 A | 2025-10-20 A | DMM2-Mob-09, DMM2-Eng-PQ-023 | 100% |
| DMM2-Eng-PQ-025 |  | Prepare & Submit for Foam Concrete Materials | 2d | 2025-10-19 A | 2025-10-20 A | DMM2-Mob-09, DMM2-Eng-PQ-024 | 100% |
| DMM2-Eng-PQ-026 |  | Prepare & Submit for Reinforced Concrete Materials | 2d | 2025-10-19 A | 2025-10-20 A | DMM2-Mob-09, DMM2-Eng-PQ-025 SS | 100% |
| DMM2-Eng-PQ-031 |  | Prepare & Submit for Concrete Masonry Materials | 3d | 2025-11-09 A | 2025-11-11 A | DMM2-Mob-09, DMM2-Eng-PQ-029 | 100% |
| DMM2-Eng-PQ-027 |  | Prepare & Submit for Vapor Retarders Materials | 4d | 2025-12-06 A | 2025-12-09 A | DMM2-Mob-09, DMM2-Eng-PQ-026 | 100% |
| DMM2-Eng-PQ-028 |  | Prepare & Submit for Board Insulation Materials | 4d | 2025-12-06 A | 2025-12-09 A | DMM2-Mob-09 SS | 100% |
| DMM2-Eng-PQ-023 |  | Prepare & Submit for Stone Coping Materials | 2d | 2025-12-17 A | 2025-12-18 A | DMM2-Mob-09, DMM2-Eng-PQ-022 | 100% |
| DMM2-Eng-PQ-030 |  | Prepare & Submit for Water proofing Membrane Materials | 2d | 2025-12-17 A | 2025-12-18 A | DMM2-Mob-09 SS | 100% |
| DMM2-Eng-PQ-029 |  | Prepare & Submit for Fluid-Applied Water Proofing Paint Materials | 2d | 2026-03-04 A | 2026-03-07 A | DMM2-Mob-09, DMM2-Eng-PQ-027 | 100% |
| DMM2-Eng-PQ-036 |  | Prepare & Submit for Steel Doors Materials | 1d | 2026-04-10 A | 2026-04-11 A | DMM2-Mob-09 SS | 100% |
| DMM2-Eng-PQ-032 |  | Prepare & Submit for Porcelain Flooring Tiles Materials | 2d | 2026-05-10 A | 2026-05-11 A | DMM2-Mob-09, DMM2-Eng-PQ-031 | 100% |
| DMM2-Eng-PQ-034 |  | Prepare & Submit for Painting Materials | 2d | 2026-05-13 A | 2026-05-14 A | DMM2-Mob-09, DMM2-Eng-PQ-033 SS | 100% |
| DMM2-Eng-PQ-037 |  | Prepare & Submit for Wood Doors Materials | 2d | 2026-05-17 A | 2026-05-18 A | DMM2-Mob-09, DMM2-Eng-PQ-035 | 100% |
| DMM2-Eng-PQ-038 |  | Prepare & Submit for Aluminum Windows Materials | 2d | 2026-05-20 A | 2026-05-21 A | DMM2-Mob-09, DMM2-Eng-PQ-037 | 100% |
| DMM2-Eng-PQ-035 |  | Prepare & Submit for Raised Floor System Materials | 3d | 2026-08-08 A | 2026-08-10 A | DMM2-Mob-09, DMM2-Eng-PQ-034 | 100% |
| DMM2-Eng-PQ-033 |  | Prepare & Submit for gypsum Board Suspended Ceiling Materials | 2d | 2026-08-12 A | 2026-08-13 A | DMM2-Mob-09, DMM2-Eng-PQ-032 | 100% |
|  | GR MAT Mech | **Mechanical** |  | 2025-10-25 | 2026-09-22 |  |  |

| ID | WBS | Task | Duration | Start | Finish | Predecessors | Complete | Total float |
| --- | --- | --- | --- | --- | --- | --- | --- | --- |
| DMM2-Eng-PQ-042 |  | Prepare & Submit for DX Wall Mounted Split/AC Materials | 6d | 2025-10-25 A | 2025-10-30 A | DMM2-Mob-09 | 100% |  |
| DMM2-Eng-PQ-040 |  | Prepare & Submit for uPVC Pipes Materials | 2d | 2025-10-29 A | 2025-10-30 A | DMM2-Mob-09 SS | 100% |  |
| DMM2-Eng-PQ-045 |  | Prepare & Submit for Floor Drain Materials | 2d | 2025-11-02 A | 2025-11-03 A | DMM2-Mob-09 | 100% |  |
| DMM2-Eng-PQ-047 |  | Prepare & Submit for Manhole Materials | 2d | 2025-11-02 A | 2025-11-03 A | DMM2-Mob-09, DMM2-Eng-PQ-043 | 100% |  |
| DMM2-Eng-PQ-051 |  | Prepare & Submit for Fire Extinguishers (CO2 & Powder) Materials | 2d | 2025-11-30 A | 2025-12-01 A | DMM2-Mob-09 | 100% |  |
| DMM2-Eng-PQ-039 |  | Prepare & Submit for Exhaust Axial Fans Materials | 4d | 2026-05-14 A | 2026-05-18 A | DMM2-Mob-09 | 100% |  |
| DMM2-Eng-PQ-043 |  | Prepare & Submit for Scupper Materials | 3d | 2026-07-28 A | 2026-07-30 A | DMM2-Mob-09, DMM2-Eng-PQ-042 | 100% |  |
| DMM2-Eng-PQ-041 |  | Prepare & Submit for PPR Pipes Materials | 2d | 2026-09-16 | 2026-09-17 | DMM2-Mob-09, DMM2-Eng-PQ-039 |  | 16d |
| DMM2-Eng-PQ-044 |  | Prepare & Submit for Clean out Materials | 2d | 2026-09-16 | 2026-09-17 | DMM2-Mob-09, DMM2-Eng-PQ-043 |  | 8d |
| DMM2-Eng-PQ-046 |  | Prepare & Submit for Electrical Water Heater Materials | 2d | 2026-09-16 | 2026-09-17 | DMM2-Mob-09, DMM2-Eng-PQ-045 |  | 16d |
| DMM2-Eng-PQ-048 |  | Prepare & Submit for Shower Materials | 2d | 2026-09-16 | 2026-09-17 | DMM2-Mob-09, DMM2-Eng-PQ-047 |  | 12d |
| DMM2-Eng-PQ-049 |  | Prepare & Submit for Toilet Materials | 2d | 2026-09-19 | 2026-09-20 | DMM2-Mob-09, DMM2-Eng-PQ-048 |  | 12d |
| DMM2-Eng-PQ-050 |  | Prepare & Submit for Semi Pedestal Sink Materials | 2d | 2026-09-21 | 2026-09-22 | DMM2-Mob-09, DMM2-Eng-PQ-049 |  | 12d |
|  | GR MAT Elec | **Electrical** |  | 2025-10-14 | 2026-09-17 |  |  |  |
| DMM2-Eng-PQ-053 |  | Prepare & Submit for Low Voltage Cable Materials | 2d | 2025-10-14 A | 2025-10-15 A | DMM2-Mob-09 | 100% |  |
| DMM2-Eng-PQ-056 |  | Prepare & Submit for Ground Wires, Rods, Pits, Clamping Materials | 2d | 2025-10-14 A | 2025-10-15 A | DMM2-Mob-09, DMM2-Eng-PQ-055 | 100% |  |
| DMM2-Eng-PQ-058 |  | Prepare & Submit for Fire Alarm System Materials | 10d | 2025-12-24 A | 2026-01-04 A | DMM2-Mob-09 | 100% |  |
| DMM2-Eng-PQ-054 |  | Prepare & Submit for Lighting Materials | 2d | 2026-01-07 A | 2026-01-08 A | DMM2-Mob-09 | 100% |  |
| DMM2-Eng-PQ-057 |  | Prepare & Submit for Enclosed Switches and Circuit Breakers Materials | 2d | 2026-01-07 A | 2026-01-08 A | DMM2-Mob-09, DMM2-Eng-PQ-056 | 100% |  |
| DMM2-Eng-PQ-052 |  | Prepare & Submit for Panelboards Materials | 4.26d | 2026-02-05 A | 2026-02-10 A | DMM2-Mob-09 | 100% |  |
| DMM2-Eng-PQ-055 |  | Prepare & Submit for Wiring Devices Materials | 2d | 2026-02-08 A | 2026-02-09 A | DMM2-Mob-09, DMM2-Eng-PQ-054 | 100% |  |
| DMM2-Eng-PQ-060 |  | Prepare & Submit for Data Cabinet Materials | 5d | 2026-05-03 A | 2026-05-07 A | DMM2-Mob-09 SS | 100% |  |
| DMM2-Eng-PQ-059 |  | Prepare & Submit for Data and Voice System Materials | 19d | 2026-05-17 A | 2026-06-11 A | DMM2-Mob-09 | 100% |  |
| DMM2-Eng-PQ-061 |  | Prepare & Submit for Data/ Voice RJ45 Outlet Materials | 3d | 2026-05-17 A | 2026-05-19 A | DMM2-Mob-09 | 100% |  |
| DMM2-Eng-PQ-062 |  | Prepare & Submit for PC Workstation Materials | 2d | 2026-09-16 | 2026-09-17 | DMM2-Mob-09 |  | 16d |
| DMM2-Eng-PQ-063 |  | Prepare & Submit for 50 inch Screen Materials | 2d | 2026-09-16 | 2026-09-17 | DMM2-Mob-09 |  | 16d |
|  | Approvals | **Approvals** |  | 2025-08-11 | 2026-10-05 |  |  |  |
|  | Site Grading | **Earth & Road Works** |  | 2025-10-15 | 2026-07-29 |  |  |  |
| DMM2-Eng-PQ-148 |  | Review & Approval for Embankment & Backfilling Materials | 2d | 2025-10-15 A | 2025-10-16 A | DMM2-Eng-PQ-01 | 100% |  |
| DMM2-Eng-PQ-158 |  | Review & Approval for Agg. Base Coarse | 2d | 2025-10-15 A | 2025-10-16 A | DMM2-Eng-PQ-02 | 100% |  |
| DMM2-Eng-PQ-168 |  | Review & Approval for Asphalt Materials | 2d | 2025-10-15 A | 2025-10-16 A | DMM2-Eng-PQ-03 | 100% |  |
| DMM2-Eng-PQ-178 |  | Review & Approval for Subgrade Materials | 2d | 2025-10-15 A | 2025-10-16 A | DMM2-Eng-PQ-04 | 100% |  |
| DMM2-Eng-PQ-1928 |  | Review & Approval for Concrete Materials | 2d | 2025-10-20 A | 2025-10-21 A | DMM2-Eng-PQ-1918 | 100% |  |
| DMM2-Eng-PQ-198 |  | Review & Approval for Interlock Materials | 2d | 2025-11-17 A | 2025-11-18 A | DMM2-Eng-PQ-011, DMM2-Eng-PQ-188 | 100% |  |
| DMM2-Eng-PQ-188 |  | Review & Approval for Curbstone Materials | 2d | 2026-01-07 A | 2026-01-08 A | DMM2-Eng-PQ-05 | 100% |  |
| DMM2-Eng-PQ-218 |  | Review & Approval for Wheels Stopper (precast concrete) Materials | 4.27d | 2026-01-31 A | 2026-02-04 A | DMM2-Eng-PQ-013 | 100% |  |
| DMM2-Eng-PQ-228 |  | Review & Approval for Traffic Signs Materials | 4d | 2026-07-15 A | 2026-07-19 A | DMM2-Eng-PQ-014 | 100% |  |
| DMM2-Eng-PQ-238 |  | Review & Approval for Ground Mounted Information Signs Materials | 5d | 2026-07-25 A | 2026-07-29 A | DMM2-Eng-PQ-015, DMM2-Eng-PQ-208 | 100% |  |
| DMM2-Eng-PQ-208 |  | Review & Approval for Pavement Markings Materials | 3d | 2026-07-26 A | 2026-07-28 A | DMM2-Eng-PQ-012, DMM2-Eng-PQ-198 | 100% |  |
|  | SDS | **Wet Networks & Stations** |  | 2025-08-11 | 2026-09-22 |  |  |  |
|  | Storm | **Storm Network** |  | 2025-10-05 | 2025-11-15 |  |  |  |
| DMM2-Eng-PQ-248 |  | Review & Approval for GRP Pipes Materials | 2d | 2025-10-05 A | 2025-10-06 A | DMM2-Eng-PQ-064 | 100% |  |
| DMM2-Eng-PQ-288 |  | Review & Approval for uPVC Pipes Materials | 2d | 2025-11-04 A | 2025-11-05 A | DMM2-Eng-PQ-068 | 100% |  |
| DMM2-Eng-PQ-268 |  | Review & Approval for Inlet Manholes Materials | 2d | 2025-11-11 A | 2025-11-12 A | DMM2-Eng-PQ-066 | 100% |  |
| DMM2-Eng-PQ-278 |  | Review & Approval for Concrete Chambers & Catch Basin Materials | 2d | 2025-11-11 A | 2025-11-12 A | DMM2-Eng-PQ-067 | 100% |  |
| DMM2-Eng-PQ-258 |  | Review & Approval for Steel Reinforcement Materials | 2d | 2025-11-13 A | 2025-11-15 A | DMM2-Eng-PQ-065 | 100% |  |
|  | Sewer | **Sewerage Network** |  | 2025-09-06 | 2025-11-12 |  |  |  |
| DMM2-Eng-PQ-318 |  | Review & Approval for Valves Materials | 2d | 2025-09-06 A | 2025-09-07 A | DMM2-Eng-PQ-071 | 100% |  |
| DMM2-Eng-PQ-1628 |  | Review & Approval for GRP Pipes Materials | 2d | 2025-10-05 A | 2025-10-06 A | DMM2-Eng-PQ-064, DMM2-Eng-PQ-328 | 100% |  |
| DMM2-Eng-PQ-298 |  | Review & Approval for HDPE Pipes Materials | 2d | 2025-10-11 A | 2025-10-12 A | DMM2-Eng-PQ-069 | 100% |  |
| DMM2-Eng-PQ-1638 |  | Review & Approval for Inlet Manholes Materials | 2d | 2025-11-11 A | 2025-11-12 A | DMM2-Eng-PQ-066, DMM2-Eng-PQ-318 | 100% |  |
| DMM2-Eng-PQ-308 |  | Review & Approval for Valves Chambers Materials | 2d | 2025-11-11 A | 2025-11-12 A | DMM2-Eng-PQ-070 | 100% |  |
| DMM2-Eng-PQ-328 |  | Review & Approval for Discharge Chamber Materials | 2d | 2025-11-11 A | 2025-11-12 A | DMM2-Eng-PQ-072, DMM2-Eng-PQ-1638 | 100% |  |
|  | Potable | **Potable Network** |  | 2025-09-06 | 2025-12-25 |  |  |  |
| DMM2-Eng-PQ-348 |  | Review & Approval for Valves Materials | 2d | 2025-09-06 A | 2025-09-07 A | DMM2-Eng-PQ-077 | 100% |  |
| DMM2-Eng-PQ-338 |  | Review & Approval for HDPE Pipes Materials | 2d | 2025-10-11 A | 2025-10-12 A | DMM2-Eng-PQ-076 | 100% |  |
| DMM2-Eng-PQ-1758 |  | Review & Approval for Flow Meter Chamber Materials | 2d | 2025-11-11 A | 2025-11-12 A | DMM2-Eng-PQ-078, DMM2-Eng-PQ-368 | 100% |  |
| DMM2-Eng-PQ-358 |  | Review & Approval for Valves Chambers Materials | 2d | 2025-11-11 A | 2025-11-12 A | DMM2-Eng-PQ-078, DMM2-Eng-PQ-338 | 100% |  |
| DMM2-Eng-PQ-368 |  | Review & Approval for Flow Meter Materials | 4d | 2025-12-22 A | 2025-12-25 A | DMM2-Eng-PQ-079, DMM2-Eng-PQ-358 | 100% |  |
|  | TSE | **TSE Network** |  | 2025-09-06 | 2026-01-14 |  |  |  |
| DMM2-Eng-PQ-398 |  | Review & Approval for Valves Materials | 2d | 2025-09-06 A | 2025-09-07 A | DMM2-Eng-PQ-082, DMM2-Eng-PQ-388 | 100% |  |
| DMM2-Eng-PQ-378 |  | Review & Approval for HDPE Pipes Materials | 2d | 2025-10-11 A | 2025-10-12 A | DMM2-Eng-PQ-080 | 100% |  |
| DMM2-Eng-PQ-1688 |  | Review & Approval for Dripper Materials | 2d | 2026-01-13 A | 2026-01-14 A | DMM2-Eng-PQ-1648 | 100% |  |
| DMM2-Eng-PQ-1698 |  | Review & Approval for Bubbler Materials | 2d | 2026-01-13 A | 2026-01-14 A | DMM2-Eng-PQ-1658, DMM2-Eng-PQ-1688 | 100% |  |
| DMM2-Eng-PQ-1708 |  | Review & Approval for Pull Box Materials | 2d | 2026-01-13 A | 2026-01-14 A | DMM2-Eng-PQ-1668 | 100% |  |
| DMM2-Eng-PQ-1718 |  | Review & Approval for Two Wire Decoder Cable 12 awg Materials | 2d | 2026-01-13 A | 2026-01-14 A | DMM2-Eng-PQ-1678 | 100% |  |
| DMM2-Eng-PQ-388 |  | Review & Approval for Solenoid Primary Control Valves Materials | 2d | 2026-01-13 A | 2026-01-14 A | DMM2-Eng-PQ-081, DMM2-Eng-PQ-1698 | 100% |  |
|  | Fire Fighting | **Fire Fighting Network** |  | 2025-09-06 | 2025-12-13 |  |  |  |
| DMM2-Eng-PQ-418 |  | Review & Approval for Valves Materials | 2d | 2025-09-06 A | 2025-09-07 A | DMM2-Eng-PQ-074 | 100% |  |
| DMM2-Eng-PQ-1728 |  | Review & Approval for Fire Hydrant Materials | 2d | 2025-09-09 A | 2025-09-10 A | DMM2-Eng-PQ-1948 | 100% |  |

| ID | WBS | Task | Duration | Start | Finish | Predecessors | Complete | Total float |
| --- | --- | --- | --- | --- | --- | --- | --- | --- |
| DMM2-Eng-PQ-408 |  | Review & Approval for HDPE Pipes Materials | 2d | 2025-10-11 A | 2025-10-12 A | DMM2-Eng-PQ-073 | 100% |  |
| DMM2-Eng-PQ-1748 |  | Review & Approval for Flow Meter Chamber Materials | 2d | 2025-11-11 A | 2025-11-12 A | DMM2-Eng-PQ-075 | 100% |  |
| DMM2-Eng-PQ-428 |  | Review & Approval for Valves Chambers Materials | 2d | 2025-11-11 A | 2025-11-12 A | DMM2-Eng-PQ-075 | 100% |  |
| DMM2-Eng-PQ-1738 |  | Review & Approval for Flow Meter Materials | 1d | 2025-12-13 A | 2025-12-13 A | DMM2-Eng-PQ-079 | 100% |  |
|  | Pot Pump St. | **Potable Water Pump Station** |  | 2025-08-11 | 2026-09-22 |  |  |  |
|  | 1 | **Civil & Architecture** |  | 2025-08-11 | 2026-07-12 |  |  |  |
| DMM2-Eng-PQ-448 |  | Review & Approval for CMU Walls Materials | 6d | 2025-08-11 A | 2025-08-17 A | DMM2-Eng-PQ-0114 | 100% |  |
| DMM2-Eng-PQ-488 |  | Review & Approval for Gravel Materials | 7d | 2025-11-18 A | 2025-11-25 A | DMM2-Eng-PQ-0118 | 100% |  |
| DMM2-Eng-PQ-438 |  | Review & Approval for Stairs Materials | 3d | 2026-05-02 A | 2026-05-04 A | DMM2-Eng-PQ-0113 | 100% |  |
| DMM2-Eng-PQ-458 |  | Review & Approval for Stainless Steel Ladder Materials | 3d | 2026-05-02 A | 2026-05-04 A | DMM2-Eng-PQ-0115 | 100% |  |
| DMM2-Eng-PQ-468 |  | Review & Approval for Steel shutter Door Materials | 6d | 2026-05-02 A | 2026-05-07 A | DMM2-Eng-PQ-0116 | 100% |  |
| DMM2-Eng-PQ-498 |  | Review & Approval for Handrail Materials | 6d | 2026-05-02 A | 2026-05-07 A | DMM2-Eng-PQ-0119 | 100% |  |
| DMM2-Eng-PQ-478 |  | Review & Approval for Metal Railing Materials | 2d | 2026-07-11 A | 2026-07-12 A | DMM2-Eng-PQ-0117 | 100% |  |
|  | 3 | **Mechanical** |  | 2025-09-06 | 2026-09-22 |  |  |  |
| DMM2-Eng-PQ-1788 |  | Review & Approval for Gate Valves Materials | 2d | 2025-09-06 A | 2025-09-07 A | DMM2-Eng-PQ-1958 | 100% |  |
| DMM2-Eng-PQ-1798 |  | Review & Approval for Non Return (Flap) Valves Materials | 2d | 2025-09-06 A | 2025-09-07 A | DMM2-Eng-PQ-091 | 100% |  |
| DMM2-Eng-PQ-528 |  | Review & Approval for Butterfly Valve Materials | 2d | 2025-09-06 A | 2025-09-07 A | DMM2-Eng-PQ-0122 | 100% |  |
| DMM2-Eng-PQ-568 |  | Review & Approval for FM200 Supression System Materials | 2d | 2025-10-06 A | 2025-10-07 A | DMM2-Eng-PQ-0126 | 100% |  |
| DMM2-Eng-PQ-1768 |  | Review & Approval for Submersible Pumps Materials | 2d | 2025-10-28 A | 2025-10-29 A | DMM2-Eng-PQ-087 | 100% |  |
| DMM2-Eng-PQ-508 |  | Review & Approval for Water Pumps Materials | 2d | 2025-10-28 A | 2025-10-29 A | DMM2-Eng-PQ-0120 | 100% |  |
| DMM2-Eng-PQ-518 |  | Review & Approval for Fire Pumps Materials | 2d | 2025-10-28 A | 2025-10-29 A | DMM2-Eng-PQ-0121 | 100% |  |
| DMM2-Eng-PQ-1778 |  | Review & Approval for DI Pipes Materials | 2d | 2025-11-10 A | 2025-11-11 A | DMM2-Eng-PQ-088, DMM2-Eng-PQ-089 | 100% |  |
| DMM2-Eng-PQ-538 |  | Review & Approval for OverHead Crane Materials | 2d | 2025-11-22 A | 2025-11-23 A | DMM2-Eng-PQ-0123 | 100% |  |
| DMM2-Eng-PQ-1808 |  | Review & Approval for Electromagnetic Flow Meters Materials | 5d | 2025-12-21 A | 2025-12-25 A | DMM2-Eng-PQ-1968 | 100% |  |
| DMM2-Eng-PQ-608 |  | Review & Approval for Chlorinators Materials | 1d | 2026-01-12 A | 2026-01-12 A | DMM2-Eng-PQ-0130 | 100% |  |
| DMM2-Eng-PQ-1818 |  | Review & Approval for Surge Tank Materials | 1d | 2026-01-14 A | 2026-01-14 A | DMM2-Eng-PQ-094 | 100% |  |
| DMM2-Eng-PQ-1828 |  | Review & Approval for Fans Materials | 2d | 2026-01-25 A | 2026-01-26 A | DMM2-Eng-PQ-1978 | 100% |  |
| DMM2-Eng-PQ-588 |  | Review & Approval for Exhaust Fans Materials | 1d | 2026-01-25 A | 2026-01-25 A | DMM2-Eng-PQ-0128 | 100% |  |
| DMM2-Eng-PQ-548 |  | Review & Approval for Strainers Materials | 3.83d | 2026-01-31 A | 2026-02-03 A | DMM2-Eng-PQ-0124 | 100% |  |
| DMM2-Eng-PQ-598 |  | Review & Approval for Chlorine Cylinder Racks Materials | 3.83d | 2026-01-31 A | 2026-02-03 A | DMM2-Eng-PQ-0129 | 100% |  |
| DMM2-Eng-PQ-618 |  | Review & Approval for Discharge Line Analyzer Materials | 3.83d | 2026-01-31 A | 2026-02-03 A | DMM2-Eng-PQ-0131 | 100% |  |
| DMM2-Eng-PQ-628 |  | Review & Approval for Emergency shower Materials | 3.83d | 2026-01-31 A | 2026-02-03 A | DMM2-Eng-PQ-0132 | 100% |  |
| DMM2-Eng-PQ-638 |  | Review & Approval for Trench Drain Materials | 6d | 2026-08-09 A | 2026-08-15 A | DMM2-Eng-PQ-0133 | 100% |  |
| DMM2-Eng-PQ-558 |  | Review & Approval for Sand Trap Louver Materials | 5d | 2026-08-10 A | 2026-08-15 A | DMM2-Eng-PQ-0125 | 100% |  |
| DMM2-Eng-PQ-1838 |  | Review & Approval for Louvers Materials | 2d | 2026-08-16 A | 2026-08-17 A | DMM2-Eng-PQ-1988 | 100% |  |
| DMM2-Eng-PQ-578 |  | Review & Approval for Hose Bibb Materials | 3d | 2026-09-20 | 2026-09-22 | DMM2-Eng-PQ-0127, DMM2-Eng-PQ-0126 |  | 17d |
|  | 2 | **Electrical** |  | 2025-10-08 | 2026-01-22 |  |  |  |
| DMM2-Eng-PQ-1898 |  | Review & Approval for Addressable Fire Alarm System Materials | 2d | 2025-10-08 A | 2025-10-09 A | DMM2-Eng-PQ-1998 | 100% |  |
| DMM2-Eng-PQ-648 |  | Review & Approval for LV Cables Materials | 2d | 2025-10-20 A | 2025-10-21 A | DMM2-Eng-PQ-0101 | 100% |  |
| DMM2-Eng-PQ-1888 |  | Review & Approval for Generators Materials | 2d | 2025-11-11 A | 2025-11-12 A | DMM2-Eng-PQ-0102 | 100% |  |
| DMM2-Eng-PQ-1858 |  | Review & Approval for Motor Control Center (MCC) Materials | 5d | 2025-12-17 A | 2025-12-22 A | DMM2-Eng-PQ-099 | 100% |  |
| DMM2-Eng-PQ-1868 |  | Review & Approval for Local Control Panel Materials - Pump | 4d | 2025-12-17 A | 2025-12-21 A | DMM2-Eng-PQ-0100, DMM2-Eng-PQ-1858 | 100% |  |
| DMM2-Eng-PQ-1878 |  | Review & Approval for Panelboards Materials | 4d | 2025-12-17 A | 2025-12-21 A | DMM2-Eng-PQ-0100 | 100% |  |
| DMM2-Eng-PQ-1938 |  | Review & Approval for Automatic Transfer Switch ATS panel Materials | 2d | 2025-12-17 A | 2025-12-18 A | DMM2-Eng-PQ-0104, DMM2-Eng-PQ-1868 | 100% |  |
| DMM2-Eng-PQ-1848 |  | Review & Approval for Switches and Circuit Breakers Materials | 4d | 2026-01-10 A | 2026-01-13 A | DMM2-Eng-PQ-0134 | 100% |  |
| DMM2-Eng-PQ-1908 |  | Review & Approval for PLC System Materials | 2d | 2026-01-21 A | 2026-01-22 A | DMM2-Eng-PQ-0110 | 100% |  |
|  | Sewer Lift St. | **Sewer Lift Station** |  | 2025-09-06 | 2026-09-22 |  |  |  |
|  | 1 | **Civil & Architecture** |  | 2025-12-14 | 2026-09-22 |  |  |  |
| DMM2-Eng-PQ-668 |  | Review & Approval for Metal Covers Materials | 5d | 2025-12-14 A | 2025-12-18 A | DMM2-Eng-PQ-084 | 100% |  |
| DMM2-Eng-PQ-658 |  | Review & Approval for Metal Ladders Materials | 6d | 2026-05-02 A | 2026-05-07 A | DMM2-Eng-PQ-083 | 100% |  |
| DMM2-Eng-PQ-678 |  | Review & Approval for Internal painting (Acrylic) Materials | 5d | 2026-05-13 A | 2026-05-18 A | DMM2-Eng-PQ-085 | 100% |  |
| DMM2-Eng-PQ-688 |  | Review & Approval for Signages Materials | 6d | 2026-09-16 | 2026-09-22 | DMM2-Eng-PQ-086 |  | 18d |
|  | 3 | **Mechanical** |  | 2025-09-06 | 2026-08-10 |  |  |  |
| DMM2-Eng-PQ-738 |  | Review & Approval for Non Return Valve (Flap) Materials | 2d | 2025-09-06 A | 2025-09-07 A | DMM2-Eng-PQ-091 | 100% |  |
| DMM2-Eng-PQ-698 |  | Review & Approval for Submersible Pumps Materials | 2d | 2025-10-28 A | 2025-10-29 A | DMM2-Eng-PQ-087 | 100% |  |
| DMM2-Eng-PQ-708 |  | Review & Approval for Double Flanged DI Pipes Materials | 2d | 2025-11-10 A | 2025-11-11 A | DMM2-Eng-PQ-088 | 100% |  |
| DMM2-Eng-PQ-718 |  | Review & Approval for Buried Flanged DI Pipes Materials | 2d | 2025-11-10 A | 2025-11-11 A | DMM2-Eng-PQ-089 | 100% |  |
| DMM2-Eng-PQ-778 |  | Review & Approval for JIB Crane Materials | 2d | 2025-11-22 A | 2025-11-23 A | DMM2-Eng-PQ-095, DMM2-Eng-PQ-768 | 100% |  |
| DMM2-Eng-PQ-758 |  | Review & Approval for Odor Control Unit Materials | 3d | 2025-12-03 A | 2025-12-06 A | DMM2-Eng-PQ-093 | 100% |  |
| DMM2-Eng-PQ-728 |  | Review & Approval for Geotextile Membrane Materials | 3d | 2025-12-04 A | 2025-12-07 A | DMM2-Eng-PQ-090 | 100% |  |
| DMM2-Eng-PQ-748 |  | Review & Approval for Basket Screens Materials | 5.75d | 2026-02-07 A | 2026-02-12 A | DMM2-Eng-PQ-092 | 100% |  |
| DMM2-Eng-PQ-788 |  | Review & Approval for Penstock Materials | 5.75d | 2026-02-07 A | 2026-02-12 A | DMM2-Eng-PQ-096 | 100% |  |
| DMM2-Eng-PQ-798 |  | Review & Approval for Screening Container Materials | 5.75d | 2026-02-07 A | 2026-02-12 A | DMM2-Eng-PQ-097, DMM2-Eng-PQ-788 | 100% |  |
| DMM2-Eng-PQ-808 |  | Review & Approval for Scupper Materials | 5.75d | 2026-02-07 A | 2026-02-12 A | DMM2-Eng-PQ-098, DMM2-Eng-PQ-798 | 100% |  |
| DMM2-Eng-PQ-768 |  | Review & Approval for Surge Tank Materials | 90d | 2026-04-23 A | 2026-08-10 A | DMM2-Eng-PQ-094, DMM2-Eng-PQ-758 | 100% |  |
|  | 2 | **Electrical** |  | 2025-10-20 | 2026-05-12 |  |  |  |
| DMM2-Eng-PQ-838 |  | Review & Approval for Low Voltage Cables Materials | 2d | 2025-10-20 A | 2025-10-21 A | DMM2-Eng-PQ-0101 | 100% |  |
| DMM2-Eng-PQ-858 |  | Review & Approval for Fuel Pump Materials | 2d | 2025-10-28 A | 2025-10-29 A | DMM2-Eng-PQ-0103 | 100% |  |
| DMM2-Eng-PQ-888 |  | Review & Approval for Displacement Rotary Type Pump Materials | 2d | 2025-10-28 A | 2025-10-29 A | DMM2-Eng-PQ-0106 | 100% |  |
| DMM2-Eng-PQ-848 |  | Review & Approval for Standby Diesel Generator Materials | 2d | 2025-11-11 A | 2025-11-12 A | DMM2-Eng-PQ-0102 | 100% |  |

| ID | WBS | Task | Duration | Start | Finish | Predecessors | Complete | Total float |
| --- | --- | --- | --- | --- | --- | --- | --- | --- |
| DMM2-Eng-PQ-898 |  | Review & Approval for Electrical Hand Holes Materials | 2d | 2025-11-11 A | 2025-11-12 A | DMM2-Eng-PQ-0107 | 100% |  |
| DMM2-Eng-PQ-818 |  | Review & Approval for Motor Control Center (MCC) Materials | 4d | 2025-12-17 A | 2025-12-21 A | DMM2-Eng-PQ-099 | 100% |  |
| DMM2-Eng-PQ-828 |  | Review & Approval for Local Control Panel Materials - Lift | 4d | 2025-12-17 A | 2025-12-21 A | DMM2-Eng-PQ-0100 | 100% |  |
| DMM2-Eng-PQ-868 |  | Review & Approval for Automatic Transfer (Switch ATS) Materials | 4d | 2025-12-17 A | 2025-12-21 A | DMM2-Eng-PQ-0104, DMM2-Eng-PQ-818 | 100% |  |
| DMM2-Eng-PQ-908 |  | Review & Approval for Galvanized Steel Pole Materials | 5d | 2025-12-24 A | 2025-12-29 A | DMM2-Eng-PQ-0108 | 100% |  |
| DMM2-Eng-PQ-938 |  | Review & Approval for Process Control Wiring Materials | 5d | 2025-12-24 A | 2025-12-29 A | DMM2-Eng-PQ-0111 | 100% |  |
| DMM2-Eng-PQ-2002 |  | Review & Approval for PLC Materials - Lift | 2d | 2026-01-21 A | 2026-01-22 A | DMM2-Eng-PQ-0110 | 100% |  |
| DMM2-Eng-PQ-948 |  | Review & Approval for Instrumentation for Process Systems Materials | 1d | 2026-01-21 A | 2026-01-21 A | DMM2-Eng-PQ-0112, DMM2-Eng-PQ-868 | 100% |  |
| DMM2-Eng-PQ-918 |  | Review & Approval for Surfaced Mounted Light (LED) Materials | 8d | 2026-02-05 A | 2026-02-15 A | DMM2-Eng-PQ-0109 | 100% |  |
| DMM2-Eng-PQ-878 |  | Review & Approval for Under Ground Fuel Tank Materials | 4d | 2026-05-09 A | 2026-05-12 A | DMM2-Eng-PQ-0105 | 100% |  |
|  | SDS1 | **Dry Networks** |  | 2025-10-28 | 2026-02-09 |  |  |  |
|  | MV | **Medium Voltage Network** |  | 2025-12-22 | 2026-01-17 |  |  |  |
| DMM2-Eng-PQ-968 |  | Review & Approval for Straight Joints, Termination Materials | 4d | 2025-12-22 A | 2025-12-25 A | DMM2-Eng-PQ-0136 | 100% |  |
| DMM2-Eng-PQ-958 |  | Review & Approval for MV Cables Materials | 2d | 2025-12-27 A | 2025-12-28 A | DMM2-Eng-PQ-0135 | 100% |  |
| DMM2-Eng-PQ-978 |  | Review & Approval for Unit Substation Materials | 2d | 2026-01-15 A | 2026-01-17 A | DMM2-Eng-PQ-0137, DMM2-Eng-PQ-2002 | 100% |  |
| DMM2-Eng-PQ-988 |  | Review & Approval for RMU Materials | 2d | 2026-01-15 A | 2026-01-17 A | DMM2-Eng-PQ-0138, DMM2-Eng-PQ-2002 | 100% |  |
|  | LV | **Low Voltage Network** |  | 2025-10-28 | 2026-02-09 |  |  |  |
| DMM2-Eng-PQ-998 |  | Review & Approval for LV Cables Materials | 2d | 2025-10-28 A | 2025-10-29 A | DMM2-Eng-PQ-0139 | 100% |  |
| DMM2-Eng-PQ-1008 |  | Review & Approval for LV Pillars Materials | 6d | 2026-02-03 A | 2026-02-09 A | DMM2-Eng-PQ-0140 | 100% |  |
| DMM2-Eng-PQ-2000 |  | Review & Approval for LV Panels Materials | 6d | 2026-02-03 A | 2026-02-09 A | DMM2-Eng-PQ-1999 | 100% |  |
|  | Telecom | **Telecommunication Network** |  | 2025-11-11 | 2026-01-13 |  |  |  |
| DMM2-Eng-PQ-1028 |  | Review & Approval for Manholes Type 1&2 Materials | 2d | 2025-11-11 A | 2025-11-12 A | DMM2-Eng-PQ-0148 | 100% |  |
| DMM2-Eng-PQ-1018 |  | Review & Approval for HDPE Ducts Materials | 5d | 2026-01-08 A | 2026-01-13 A | DMM2-Eng-PQ-0147 | 100% |  |
|  | SL | **Street Lighting** |  | 2025-10-28 | 2026-02-05 |  |  |  |
| DMM2-Eng-PQ-1048 |  | Review & Approval for SL Cables Materials | 2d | 2025-10-28 A | 2025-10-29 A | DMM2-Eng-PQ-0142 | 100% |  |
| DMM2-Eng-PQ-1088 |  | Review & Approval for SL Drawpits Materials | 2d | 2025-11-11 A | 2025-11-12 A | DMM2-Eng-PQ-0146 | 100% |  |
| DMM2-Eng-PQ-1058 |  | Review & Approval for SL Poles Materials | 2d | 2025-12-27 A | 2025-12-28 A | DMM2-Eng-PQ-0143 | 100% |  |
| DMM2-Eng-PQ-1068 |  | Review & Approval for SL Luminares Materials | 2d | 2025-12-27 A | 2025-12-28 A | DMM2-Eng-PQ-0144 | 100% |  |
| DMM2-Eng-PQ-1038 |  | Review & Approval for SL Pillars Materials | 4d | 2026-02-02 A | 2026-02-05 A | DMM2-Eng-PQ-0141 | 100% |  |
| DMM2-Eng-PQ-1078 |  | Review & Approval for SL Earthing Materials | 4d | 2026-02-02 A | 2026-02-05 A | DMM2-Eng-PQ-0145 | 100% |  |
|  | Landscape | **Landscape Works** |  | 2025-10-24 | 2026-05-16 |  |  |  |
| DMM2-Eng-PQ-1118 |  | Review & Approval for Geotextile Layers Materials | 6d | 2025-10-24 A | 2025-10-30 A | DMM2-Eng-PQ-08 | 100% |  |
| DMM2-Eng-PQ-1178 |  | Review & Approval Prepare & Submit for Fences (MODON) Materials | 2d | 2025-11-18 A | 2025-11-19 A | DMM2-Eng-PQ-019 | 100% |  |
| DMM2-Eng-PQ-1158 |  | Review & Approval for Gravel/Stone Mulch Materials | 2d | 2026-01-04 A | 2026-01-05 A | DMM2-Eng-PQ-017 | 100% |  |
| DMM2-Eng-PQ-1098 |  | Review & Approval for Trees Materials | 3.75d | 2026-02-05 A | 2026-02-09 A | DMM2-Eng-PQ-06, DMM2-Eng-PQ-148 | 100% |  |
| DMM2-Eng-PQ-1108 |  | Review & Approval for Ornamental Grasses Materials | 4d | 2026-02-05 A | 2026-02-09 A | DMM2-Eng-PQ-07, DMM2-Eng-PQ-1138 | 100% |  |
| DMM2-Eng-PQ-1128 |  | Review & Approval for Plastic edge Materials | 13d | 2026-02-05 A | 2026-02-21 A | DMM2-Eng-PQ-09 | 100% |  |
| DMM2-Eng-PQ-1138 |  | Review & Approval for Large Shrubs Materials | 1.75d | 2026-02-05 A | 2026-02-07 A | DMM2-Eng-PQ-010, DMM2-Eng-PQ-1148 | 100% |  |
| DMM2-Eng-PQ-1148 |  | Review & Approval for Plants Materials | 1.75d | 2026-02-05 A | 2026-02-07 A | DMM2-Eng-PQ-016, DMM2-Eng-PQ-1098 | 100% |  |
| DMM2-Eng-PQ-1168 |  | Review & Approval for Fences (ZATCA HCIS) Materials | 4d | 2026-05-12 A | 2026-05-16 A | DMM2-Eng-PQ-018 | 100% |  |
| DMM2-Eng-PQ-1188 |  | Review & Approval for Vehicle Steel Gate Materials | 4d | 2026-05-12 A | 2026-05-16 A | DMM2-Eng-PQ-020 | 100% |  |
| DMM2-Eng-PQ-1198 |  | Review & Approval for Vehicle and Pedestrian Steel Gate Materials | 4d | 2026-05-12 A | 2026-05-16 A | DMM2-Eng-PQ-021 | 100% |  |
|  | Guard Room | **Guard Rooms** |  | 2025-10-01 | 2026-10-05 |  |  |  |
|  | GR MAT Civil | **Civil & Architecture** |  | 2025-10-20 | 2026-08-13 |  |  |  |
| DMM2-Eng-PQ-1208 |  | Review & Approval for Lean Concrete Materials | 2d | 2025-10-20 A | 2025-10-21 A | DMM2-Eng-PQ-022 | 100% |  |
| DMM2-Eng-PQ-1228 |  | Review & Approval for Screed Concrete Materials | 2d | 2025-10-20 A | 2025-10-21 A | DMM2-Eng-PQ-024, DMM2-Eng-PQ-1338 | 100% |  |
| DMM2-Eng-PQ-1238 |  | Review & Approval for Foam Concrete Materials | 2d | 2025-10-20 A | 2025-10-21 A | DMM2-Eng-PQ-025 | 100% |  |
| DMM2-Eng-PQ-1248 |  | Review & Approval for Reinforced Concrete Materials | 2d | 2025-11-13 A | 2025-11-15 A | DMM2-Eng-PQ-026 | 100% |  |
| DMM2-Eng-PQ-1218 |  | Review & Approval for Stone Coping Materials | 3d | 2025-12-04 A | 2025-12-07 A | DMM2-Eng-PQ-023 | 100% |  |
| DMM2-Eng-PQ-1288 |  | Review & Approval for Water proofing Membrane Materials | 3d | 2025-12-04 A | 2025-12-07 A | DMM2-Eng-PQ-030, DMM2-Eng-PQ-1238 | 100% |  |
| DMM2-Eng-PQ-1258 |  | Review & Approval for Vapor Retarders Materials | 3d | 2025-12-09 A | 2025-12-11 A | DMM2-Eng-PQ-027 | 100% |  |
| DMM2-Eng-PQ-1268 |  | Review & Approval for Board Insulation Materials | 3d | 2025-12-09 A | 2025-12-11 A | DMM2-Eng-PQ-028 | 100% |  |
| DMM2-Eng-PQ-1358 |  | Review & Approval for Wood Doors Materials | 2d | 2026-01-10 A | 2026-01-11 A | DMM2-Eng-PQ-037, DMM2-Eng-PQ-1348 | 100% |  |
| DMM2-Eng-PQ-1318 |  | Review & Approval for gypsum Board Suspended Ceiling Materials | 1d | 2026-01-19 A | 2026-01-19 A | DMM2-Eng-PQ-033, DMM2-Eng-PQ-1268 | 100% |  |
| DMM2-Eng-PQ-1368 |  | Review & Approval for Aluminum Windows Materials | 6d | 2026-04-22 A | 2026-04-28 A | DMM2-Eng-PQ-038 | 100% |  |
| DMM2-Eng-PQ-1328 |  | Review & Approval for Painting Materials | 7d | 2026-04-28 A | 2026-05-05 A | DMM2-Eng-PQ-034 | 100% |  |
| DMM2-Eng-PQ-1278 |  | Review & Approval for Fluid-Applied Water Proofing Paint Materials | 6d | 2026-05-10 A | 2026-05-16 A | DMM2-Eng-PQ-029 | 100% |  |
| DMM2-Eng-PQ-1348 |  | Review & Approval for Steel Doors Materials | 5d | 2026-05-13 A | 2026-05-18 A | DMM2-Eng-PQ-036 | 100% |  |
| DMM2-Eng-PQ-1298 |  | Review & Approval for Concrete Masonry Materials | 3d | 2026-05-16 A | 2026-05-18 A | DMM2-Eng-PQ-031 | 100% |  |
| DMM2-Eng-PQ-1308 |  | Review & Approval for Porcelain Flooring Tiles Materials | 3d | 2026-08-08 A | 2026-08-10 A | DMM2-Eng-PQ-032, DMM2-Eng-PQ-1298 | 100% |  |
| DMM2-Eng-PQ-1338 |  | Review & Approval for Raised Floor System Materials | 2d | 2026-08-12 A | 2026-08-13 A | DMM2-Eng-PQ-035 | 100% |  |
|  | GR MAT Mech | **Mechanical** |  | 2025-10-01 | 2026-10-05 |  |  |  |
| DMM2-Eng-PQ-1498 |  | Review & Approval for Fire Extinguishers (CO2 & Powder) Materials | 2d | 2025-10-01 A | 2025-10-02 A | DMM2-Eng-PQ-051 | 100% |  |
| DMM2-Eng-PQ-1388 |  | Review & Approval for uPVC Pipes Materials | 2d | 2025-11-11 A | 2025-11-12 A | DMM2-Eng-PQ-040 | 100% |  |
| DMM2-Eng-PQ-1458 |  | Review & Approval for Manhole Materials | 2d | 2025-11-11 A | 2025-11-12 A | DMM2-Eng-PQ-047 | 100% |  |
| DMM2-Eng-PQ-1398 |  | Review & Approval for PPR Pipes Materials | 1d | 2026-01-19 A | 2026-01-19 A | DMM2-Mob-09 | 100% |  |
| DMM2-Eng-PQ-1418 |  | Review & Approval for Scupper Materials | 3d | 2026-07-20 A | 2026-07-22 A | DMM2-Eng-PQ-043 | 100% |  |
| DMM2-Eng-PQ-1378 |  | Review & Approval for Exhaust Axial Fans Materials | 9d | 2026-08-30 A | 2026-09-08 A | DMM2-Eng-PQ-039 | 100% |  |
| DMM2-Eng-PQ-1408 |  | Review & Approval for DX Wall Mounted Split/AC Materials | 6d | 2026-09-19 | 2026-09-26 | DMM2-Eng-PQ-042, DMM2-Eng-PQ-041 |  | 16d |
| DMM2-Eng-PQ-1428 |  | Review & Approval for Clean out Materials | 4d | 2026-09-19 | 2026-09-22 | DMM2-Eng-PQ-044, DMM2-Eng-PQ-1418, DMM2-Eng-PQ-045 |  | 8d |

| ID | WBS | Task | Duration | Start | Finish | Predecessors | Complete | Total float |
| --- | --- | --- | --- | --- | --- | --- | --- | --- |
| DMM2-Eng-PQ-1468 |  | Review & Approval for Shower Materials | 6d | 2026-09-19 | 2026-09-26 | DMM2-Eng-PQ-048 |  | 16d |
| DMM2-Eng-PQ-1478 |  | Review & Approval for Toilet Materials | 6d | 2026-09-21 | 2026-09-28 | DMM2-Eng-PQ-049 |  | 14d |
| DMM2-Eng-PQ-1438 |  | Review & Approval for Floor Drain Materials | 4d | 2026-09-24 | 2026-09-28 | DMM2-Eng-PQ-045, DMM2-Eng-PQ-1428, DMM2-Eng-PQ-044 |  | 8d |
| DMM2-Eng-PQ-1488 |  | Review & Approval for Semi Pedestal Sink Materials | 6d | 2026-09-24 | 2026-09-30 | DMM2-Eng-PQ-050, DMM2-Eng-PQ-051 |  | 12d |
| DMM2-Eng-PQ-1448 |  | Review & Approval for Electrical Water Heater Materials | 6d | 2026-09-29 | 2026-10-05 | DMM2-Eng-PQ-046, DMM2-Eng-PQ-1438 |  | 8d |
|  | GR MAT Elec | **Electrical** |  | 2025-10-28 | 2026-09-26 |  |  |  |
| DMM2-Eng-PQ-1518 |  | Review & Approval for Low Voltage Cable Materials | 2d | 2025-10-28 A | 2025-10-29 A | DMM2-Eng-PQ-053 | 100% |  |
| DMM2-Eng-PQ-1568 |  | Review & Approval for Fire Alarm System Materials | 5d | 2025-12-25 A | 2025-12-30 A | DMM2-Eng-PQ-058, DMM2-Eng-PQ-1558 | 100% |  |
| DMM2-Eng-PQ-1558 |  | Review & Approval for Enclosed Switches and Circuit Breakers Materials | 2d | 2026-01-11 A | 2026-01-12 A | DMM2-Eng-PQ-057, DMM2-Eng-PQ-056 | 100% |  |
| DMM2-Eng-PQ-1508 |  | Review & Approval for Panelboards Materials | 48.25d | 2026-02-25 A | 2026-05-02 A | DMM2-Eng-PQ-052 | 100% |  |
| DMM2-Eng-PQ-1528 |  | Review & Approval for Lighting Materials | 5d | 2026-05-07 A | 2026-05-12 A | DMM2-Eng-PQ-054 | 100% |  |
| DMM2-Eng-PQ-1538 |  | Review & Approval for Wiring Devices Materials | 6d | 2026-09-16 | 2026-09-22 | DMM2-Eng-PQ-055, DMM2-Eng-PQ-1518 |  | 18d |
| DMM2-Eng-PQ-1548 |  | Review & Approval for Ground Wires, Rods, Pits, Clamping Materials | 6d | 2026-09-16 | 2026-09-22 | DMM2-Eng-PQ-056, DMM2-Eng-SD-58, DMM2-Eng-PQ-057 |  | 18d |
| DMM2-Eng-PQ-1578 |  | Review & Approval for Data and Voice System Materials | 6d | 2026-09-16 | 2026-09-22 | DMM2-Eng-PQ-059, DMM2-Eng-PQ-1568 |  | 18d |
| DMM2-Eng-PQ-1588 |  | Review & Approval for Data Cabinet Materials | 6d | 2026-09-16 | 2026-09-22 | DMM2-Eng-PQ-060 |  | 18d |
| DMM2-Eng-PQ-1598 |  | Review & Approval for Data/ Voice RJ45 Outlet Materials | 6d | 2026-09-16 | 2026-09-22 | DMM2-Eng-PQ-061 |  | 18d |
| DMM2-Eng-PQ-1608 |  | Review & Approval for PC Workstation Materials | 6d | 2026-09-19 | 2026-09-26 | DMM2-Eng-PQ-062 |  | 16d |
| DMM2-Eng-PQ-1618 |  | Review & Approval for 50 inch Screen Materials | 6d | 2026-09-19 | 2026-09-26 | DMM2-Eng-PQ-063 |  | 16d |
|  | MSs | **Method Statements** |  | 2025-08-28 | 2026-09-16 |  |  |  |
|  | 2 | **Submittals & Approvals** |  | 2025-08-28 | 2026-09-16 |  |  |  |
|  | Site Grading | **Earth & Road Works** |  | 2025-09-14 | 2025-09-30 |  |  |  |
| DMM2-Eng-MS-68 |  | Prepare & Submit for Earth & Road Layers Application | 7d | 2025-09-14 A | 2025-09-21 A | DMM2-Eng-SD-01 SS | 100% |  |
| DMM2-Eng-MS-78 |  | Review & Approval | 5d | 2025-09-25 A | 2025-09-30 A | DMM2-Eng-MS-68 | 100% |  |
|  | Landscape | **Landscape Works** |  | 2025-12-14 | 2026-01-18 |  |  |  |
| DMM2-Eng-MS-88 |  | Prepare & Submit (Components Installation, Trees, Fences & Gates, etc..) | 29.7d | 2025-12-14 A | 2026-01-17 A | DMM2-Eng-MS-68 SS | 100% |  |
| DMM2-Eng-MS-98 |  | Review & Approval | 18.33d | 2025-12-28 A | 2026-01-18 A | DMM2-Eng-MS-88 | 100% |  |
|  | Guard Room | **Guard Rooms** |  | 2025-09-30 | 2026-09-16 |  |  |  |
|  | 1 | **Civil & Architecture** |  | 2025-09-30 | 2025-10-15 |  |  |  |
| DMM2-Eng-MS-108 |  | Prepare & Submit (Earthwork, Concrete, Finishes) | 7d | 2025-09-30 A | 2025-10-07 A | DMM2-Eng-MS-88 | 100% |  |
| DMM2-Eng-MS-118 |  | Review & Approval | 7d | 2025-10-08 A | 2025-10-15 A | DMM2-Eng-MS-108, DMM2-Eng-MS-98 | 100% |  |
|  | 3 | **Mechanical** |  | 2026-05-17 | 2026-05-31 |  |  |  |
| DMM2-Eng-MS-348 |  | Prepare & Submit (Components Installation) & Testing | 0.63d | 2026-05-17 A | 2026-05-17 A | DMM2-Eng-MS-108 SS | 100% |  |
| DMM2-Eng-MS-358 |  | Review & Approval | 0.94d | 2026-05-31 A | 2026-05-31 A | DMM2-Eng-MS-348 | 100% |  |
|  | 2 | **Electrical** |  | 2025-12-08 | 2026-09-16 |  |  |  |
| DMM2-Eng-MS-368 |  | Prepare & Submit (Components Installation) & Testing | 56.77d | 2025-12-08 A | 2026-02-11 A | DMM2-Eng-MS-348 SS | 100% |  |
| DMM2-Eng-MS-378 |  | Review & Approval | 226d | 2025-12-10 A | 2026-09-16 | DMM2-Eng-MS-368 | 70% | 115d |
|  | SDS | **Wet Networks & Stations** |  | 2025-08-28 | 2026-09-16 |  |  |  |
|  | Sewer | **Sewerage Network** |  | 2025-09-08 | 2025-09-30 |  |  |  |
| DMM2-Eng-MS-128 |  | Prepare & Submit | 13d | 2025-09-08 A | 2025-09-22 A | DMM2-Eng-MS-368 | 100% |  |
| DMM2-Eng-MS-138 |  | Review & Approval | 7d | 2025-09-22 A | 2025-09-30 A | DMM2-Eng-MS-128, DMM2-Eng-MS-78, DMM2-Eng-MS-358 | 100% |  |
|  | Storm | **Storm Network** |  | 2025-08-28 | 2025-09-22 |  |  |  |
| DMM2-Eng-MS-158 |  | Review & Approval | 7d | 2025-08-28 A | 2025-09-04 A | DMM2-Eng-MS-148, DMM2-Eng-MS-118, DMM2-Eng-MS-378 SS | 100% |  |
| DMM2-Eng-MS-148 |  | Prepare & Submit | 13d | 2025-09-08 A | 2025-09-22 A | DMM2-Eng-MS-128 | 100% |  |
|  | Potable | **Potable Network** |  | 2025-09-01 | 2025-09-22 |  |  |  |
| DMM2-Eng-MS-178 |  | Review & Approval | 5d | 2025-09-01 A | 2025-09-06 A | DMM2-Eng-MS-168, DMM2-Eng-MS-138 | 100% |  |
| DMM2-Eng-MS-168 |  | Prepare & Submit | 13d | 2025-09-08 A | 2025-09-22 A | DMM2-Eng-MS-148 | 100% |  |
|  | TSE | **TSE Network** |  | 2025-09-01 | 2025-09-22 |  |  |  |
| DMM2-Eng-MS-198 |  | Review & Approval | 5d | 2025-09-01 A | 2025-09-06 A | DMM2-Eng-MS-188 | 100% |  |
| DMM2-Eng-MS-188 |  | Prepare & Submit | 13d | 2025-09-08 A | 2025-09-22 A | DMM2-Eng-MS-168 SS | 100% |  |
|  | Fire Fighting | **Fire Fighting Network** |  | 2025-09-01 | 2025-09-22 |  |  |  |
| DMM2-Eng-MS-218 |  | Review & Approval | 7d | 2025-09-01 A | 2025-09-08 A | DMM2-Eng-MS-208 | 100% |  |
| DMM2-Eng-MS-208 |  | Prepare & Submit | 13d | 2025-09-08 A | 2025-09-22 A | DMM2-Eng-MS-188 SS | 100% |  |
|  | Pot Pump St. | **Potable Water Pump Station** |  | 2025-12-13 | 2026-09-16 |  |  |  |
| DMM2-Eng-MS-228 |  | Prepare & Submit | 224d | 2025-12-13 A | 2026-09-16 | DMM2-Eng-MS-208 | 91% | 115d |
| DMM2-Eng-MS-238 |  | Review & Approval | 223d | 2025-12-14 A | 2026-09-16 | DMM2-Eng-MS-158, DMM2-Eng-MS-228 SS | 91% | 115d |
|  | Sewer Lift St. | **Sewer Lift Station** |  | 2025-12-13 | 2026-09-16 |  |  |  |
| DMM2-Eng-MS-248 |  | Prepare & Submit | 224d | 2025-12-13 A | 2026-09-16 | DMM2-Eng-MS-228 SS | 91% | 115d |
| DMM2-Eng-MS-258 |  | Review & Approval | 223d | 2025-12-14 A | 2026-09-16 | DMM2-Eng-MS-198, DMM2-Eng-MS-178, DMM2-Eng-MS-248 SS | 91% | 115d |
|  | 1 | **Dry Networks** |  | 2025-10-04 | 2025-10-21 |  |  |  |
|  | MV | **Medium Voltage Network** |  | 2025-10-04 | 2025-10-21 |  |  |  |
| DMM2-Eng-MS-268 |  | Prepare & Submit | 5d | 2025-10-04 A | 2025-10-08 A | DMM2-Eng-MS-248 SS | 100% |  |
| DMM2-Eng-MS-278 |  | Review & Approval | 10d | 2025-10-11 A | 2025-10-21 A | DMM2-Eng-MS-268, DMM2-Eng-MS-218 | 100% |  |
|  | LV | **Low Voltage Network** |  | 2025-10-04 | 2025-10-21 |  |  |  |
| DMM2-Eng-MS-288 |  | Prepare & Submit | 5d | 2025-10-04 A | 2025-10-08 A | DMM2-Eng-MS-268 | 100% |  |
| DMM2-Eng-MS-298 |  | Review & Approval | 10d | 2025-10-11 A | 2025-10-21 A | DMM2-Eng-MS-288, DMM2-Eng-MS-258 SS, DMM2-Eng-MS-238 SS | 100% |  |
|  | Telecom | **Telecommunication Network** |  | 2025-10-04 | 2025-10-21 |  |  |  |
| DMM2-Eng-MS-308 |  | Prepare & Submit | 5d | 2025-10-04 A | 2025-10-08 A | DMM2-Eng-MS-288 SS | 100% |  |
| DMM2-Eng-MS-318 |  | Review & Approval | 10d | 2025-10-11 A | 2025-10-21 A | DMM2-Eng-MS-308 | 100% |  |
|  | SL | **Street Lighting** |  | 2025-10-04 | 2025-10-21 |  |  |  |
| DMM2-Eng-MS-328 |  | Prepare & Submit | 5d | 2025-10-04 A | 2025-10-08 A | DMM2-Eng-MS-308 | 100% |  |

| ID | WBS | Task | Duration | Start | Finish | Predecessors | Complete | Total float |
| --- | --- | --- | --- | --- | --- | --- | --- | --- |
| DMM2-Eng-MS-338 |  | Review & Approval | 10d | 2025-10-11 A | 2025-10-21 A | DMM2-Eng-MS-328, DMM2-Eng-MS-318, DMM2-Eng-MS-298, DMM2-Eng-MS-278 | 100% |  |
|  | Procurement | **Procurement** |  | 2025-09-25 | 2026-12-09 |  |  |  |
|  | PR & PO | **PR & PO** |  | 2025-09-25 | 2026-10-07 |  |  |  |
|  | Site Grading | **Earth & Road Works** |  | 2025-10-09 | 2026-10-07 |  |  |  |
| DMM2-Proc-PO-04 |  | PR & PO for Subgrade Materials | 6d | 2025-10-09 A | 2025-10-15 A | DMM2-Eng-PQ-178, DMM2-Mob-012, DMM2-Eng-SD-02 | 100% |  |
| DMM2-Proc-PO-02 |  | PR & PO for Agg. Base Coarse | 4.37d | 2025-10-16 A | 2025-10-21 A | DMM2-Eng-PQ-158, DMM2-Mob-012, DMM2-Eng-SD-02 | 100% |  |
| DMM2-Proc-PO-01 |  | PR & PO for Embankment & Backfilling Materials | 6d | 2025-10-18 A | 2025-10-23 A | DMM2-Eng-PQ-148, DMM2-Mob-012, DMM2-Eng-SD-02 | 100% |  |
| DMM2-Proc-PO-03 |  | PR & PO for Asphalt Materials | 6d | 2025-11-12 A | 2025-11-18 A | DMM2-Eng-PQ-168, DMM2-Mob-012, DMM2-Eng-SD-02 | 100% |  |
| DMM2-Proc-PO-06 |  | PR & PO for Interlock Materials | 2d | 2026-02-01 A | 2026-02-02 A | DMM2-Eng-PQ-198, DMM2-Mob-012, DMM2-Eng-SD-02, DMM2-Proc-PO-05 | 100% |  |
| DMM2-Proc-PO-08 |  | PR & PO for Wheels Stopper (precast concrete) Materials | 2d | 2026-02-04 A | 2026-02-05 A | DMM2-Eng-PQ-218, DMM2-Mob-012, DMM2-Eng-SD-02 | 100% |  |
| DMM2-Proc-PO-148 |  | PR & PO for Concrete Materials | 4d | 2026-02-04 A | 2026-02-08 A | DMM2-Eng-PQ-1928, DMM2-Mob-012, DMM2-Eng-SD-02 | 100% |  |
| DMM2-Proc-PO-05 |  | PR & PO for Curbstone Materials | 2d | 2026-02-05 A | 2026-02-07 A | DMM2-Eng-PQ-188, DMM2-Mob-012, DMM2-Eng-SD-02, DMM2-Proc-PO-08 | 100% |  |
| DMM2-Proc-PO-09 |  | PR & PO for Traffic Signs Materials | 2d | 2026-09-16 | 2026-09-17 | DMM2-Eng-PQ-228, DMM2-Mob-012, DMM2-Eng-SD-02, DMM2-Proc-PO-148, DMM2-Proc-PO-03 |  | 20d |
| DMM2-Proc-PO-07 |  | PR & PO for Pavement Markings Materials | 2d | 2026-09-19 | 2026-09-20 | DMM2-Eng-PQ-208, DMM2-Mob-012, DMM2-Eng-SD-02, DMM2-Proc-PO-06, DMM2-Proc-PO-09, DMM2-Proc-PO-01 |  | 20d |
| DMM2-Proc-PO-010 |  | PR & PO for ground Mounted Information Signs Materials | 2d | 2026-10-06 | 2026-10-07 | DMM2-Eng-PQ-238, DMM2-Mob-012, DMM2-Eng-SD-02, DMM2-Proc-PO-0100, DMM-Mil-4, DMM2-Proc-PO-07, DMM2-Proc-PO-01 |  | 8d |
|  | Wet | **Wet Networks & Stations** |  | 2025-09-25 | 2026-10-03 |  |  |  |
|  | Storm | **Storm Network** |  | 2025-10-14 | 2025-12-28 |  |  |  |
| DMM2-Proc-PO-011 |  | PR & PO for GRP Pipes Materials | 4d | 2025-10-14 A | 2025-10-19 A | DMM2-Eng-PQ-248, DMM2-Eng-SD-09 | 100% |  |
| DMM2-Proc-PO-012 |  | PR & PO for Steel Reinforcement Materials | 2.87d | 2025-10-27 A | 2025-10-29 A | DMM2-Eng-PQ-258, DMM2-Eng-SD-09 | 100% |  |
| DMM2-Proc-PO-015 |  | PR & PO for uPVC Pipes Materials | 6d | 2025-10-27 A | 2025-11-03 A | DMM2-Eng-PQ-288, DMM2-Eng-SD-09, DMM2-Proc-PO-011 | 100% |  |
| DMM2-Proc-PO-013 |  | PR & PO for Inlet Manholes Materials | 2d | 2025-12-27 A | 2025-12-28 A | DMM2-Eng-PQ-268, DMM2-Eng-SD-09, DMM2-Proc-PO-011 | 100% |  |
| DMM2-Proc-PO-014 |  | PR & PO for Concrete Chambers & Catch Basin Materials | 2d | 2025-12-27 A | 2025-12-28 A | DMM2-Eng-PQ-278, DMM2-Eng-SD-09 | 100% |  |
|  | Sewer | **Sewerage Network** |  | 2025-10-12 | 2026-09-17 |  |  |  |
| DMM2-Proc-PO-016 |  | PR & PO for HDPE Pipes Materials | 6d | 2025-10-12 A | 2025-10-18 A | DMM2-Eng-PQ-298, DMM2-Eng-SD-08 | 100% |  |
| DMM2-Proc-PO-018 |  | PR & PO for Valves Materials | 1.75d | 2026-02-01 A | 2026-02-02 A | DMM2-Eng-PQ-318, DMM2-Eng-SD-08, DMM2-Proc-PO-016 | 100% |  |
| DMM2-Proc-PO-017 |  | PR & PO for Valves Chambers Materials | 2d | 2026-04-09 A | 2026-04-11 A | DMM2-Eng-PQ-308, DMM2-Eng-SD-08, DMM2-Proc-PO-018 | 100% |  |
| DMM2-Proc-PO-019 |  | PR & PO for Discharge Chamber Materials | 2d | 2026-09-16 | 2026-09-17 | DMM2-Eng-PQ-328, DMM2-Eng-SD-08, DMM2-Proc-PO-017, DMM2-Proc-PO-011 |  | 92d |
|  | Potable | **Potable Network** |  | 2025-10-12 | 2026-04-11 |  |  |  |
| DMM2-Proc-PO-020 |  | PR & PO for HDPE Pipes Materials | 6d | 2025-10-12 A | 2025-10-19 A | DMM2-Eng-PQ-338, DMM2-Eng-SD-012, DMM2-Proc-PO-016, DMM2-Proc-PO-0112 | 100% |  |
| DMM2-Proc-PO-023 |  | PR & PO for Flow Meter Materials | 6d | 2025-11-14 A | 2025-11-20 A | DMM2-Eng-PQ-368, DMM2-Eng-SD-012, DMM2-Proc-PO-022 | 100% |  |
| DMM2-Proc-PO-021 |  | PR & PO for Valves Materials | 1.75d | 2026-02-01 A | 2026-02-02 A | DMM2-Eng-PQ-348, DMM2-Eng-SD-012, DMM2-Proc-PO-020 | 100% |  |
| DMM2-Proc-PO-022 |  | PR & PO for Valves Chambers Materials | 2d | 2026-04-09 A | 2026-04-11 A | DMM2-Eng-PQ-358, DMM2-Eng-SD-012, DMM2-Proc-PO-021 | 100% |  |
|  | TSE | **TSE Network** |  | 2025-10-11 | 2026-02-28 |  |  |  |
| DMM2-Proc-PO-024 |  | PR & PO for HDPE Pipes Materials | 6d | 2025-10-11 A | 2025-10-16 A | DMM2-Eng-PQ-378, DMM2-Eng-SD-014, DMM2-Proc-PO-020, DMM2-Proc-PO-025, DMM2-Proc-PO-026 | 100% |  |
| DMM2-Proc-PO-026 |  | PR & PO for Valves Materials | 7d | 2026-01-13 A | 2026-01-20 A | DMM2-Eng-PQ-398, DMM2-Eng-SD-014 | 100% |  |
| DMM2-Proc-PO-025 |  | PR & PO for Solenoid Primary Control Valves Materials | 3d | 2026-02-24 A | 2026-02-28 A | DMM2-Eng-PQ-388, DMM2-Eng-SD-014 | 100% |  |
|  | Fire Fighting | **Fire Fighting Network** |  | 2025-09-25 | 2026-04-11 |  |  |  |
| DMM2-Proc-PO-158 |  | PR & PO for Fire Hydrant Materials | 6d | 2025-09-25 A | 2025-10-02 A | DMM2-Eng-PQ-1728, DMM2-Eng-SD-016, DMM2-Proc-PO-028 | 100% |  |
| DMM2-Proc-PO-027 |  | PR & PO for HDPE Pipes Materials | 6d | 2025-10-09 A | 2025-10-16 A | DMM2-Eng-PQ-408, DMM2-Eng-SD-016, DMM2-Proc-PO-024 | 100% |  |
| DMM2-Proc-PO-028 |  | PR & PO for Valves Materials | 1.75d | 2026-02-01 A | 2026-02-02 A | DMM2-Eng-PQ-418, DMM2-Eng-SD-016, DMM2-Proc-PO-027 | 100% |  |
| DMM2-Proc-PO-029 |  | PR & PO for Valves Chambers Materials | 2d | 2026-04-09 A | 2026-04-11 A | DMM2-Eng-PQ-428, DMM2-Eng-SD-016, DMM2-Proc-PO-158 | 100% |  |
|  | Pot Pump St. | **Potable Water Pump Station** |  | 2025-10-29 | 2026-10-03 |  |  |  |
|  | 1 | **Civil & Architecture** |  | 2026-09-16 | 2026-09-26 |  |  |  |
| DMM2-Proc-PO-030 |  | PR & PO for Stairs Materials | 2d | 2026-09-16 | 2026-09-17 | DMM2-Eng-PQ-438, DMM2-Eng-SD-018 |  | 3d |
| DMM2-Proc-PO-031 |  | PR & PO for CMU Walls Materials | 2d | 2026-09-16 | 2026-09-17 | DMM2-Eng-PQ-448, DMM2-Eng-SD-018 |  | 17d |
| DMM2-Proc-PO-035 |  | PR & PO for Gravel Materials | 2d | 2026-09-16 | 2026-09-17 | DMM2-Eng-PQ-488, DMM2-Eng-SD-018 |  | 52d |
| DMM2-Proc-PO-032 |  | PR & PO for Stainless Steel Ladder Materials | 2d | 2026-09-19 | 2026-09-20 | DMM2-Eng-PQ-458 SS, DMM2-Eng-SD-018, DMM2-Proc-PO-030, DMM2-Proc-PO-0143, DMM2-Proc-PO-0117 |  | 3d |
| DMM2-Proc-PO-034 |  | PR & PO for Metal Railing Materials | 2d | 2026-09-21 | 2026-09-22 | DMM2-Eng-PQ-478 SS, DMM2-Eng-SD-018, DMM2-Proc-PO-032 |  | 3d |
| DMM2-Proc-PO-036 |  | PR & PO for Handrail Materials | 2d | 2026-09-21 | 2026-09-22 | DMM2-Eng-PQ-498, DMM2-Eng-SD-018, DMM2-Proc-PO-034 SS |  | 3d |
| DMM2-Proc-PO-033 |  | PR & PO for Steel shutter Door Materials | 2d | 2026-09-24 | 2026-09-26 | DMM2-Eng-PQ-468, DMM2-Eng-SD-018, DMM2-Proc-PO-036 |  | 23d |
|  | 3 | **Mechanical** |  | 2025-10-29 | 2026-10-03 |  |  |  |
| DMM2-Proc-PO-037 |  | PR & PO for Water Pumps Materials | 10d | 2025-10-29 A | 2025-11-09 A | DMM2-Eng-PQ-508, DMM2-Eng-SD-018 | 100% |  |
| DMM2-Proc-PO-038 |  | PR & PO for Fire Pumps Materials | 10d | 2025-11-02 A | 2025-11-12 A | DMM2-Eng-PQ-518, DMM2-Eng-SD-018, DMM2-Proc-PO-037 | 100% |  |
| DMM2-Proc-PO-043 |  | PR & PO for FM200 Supression System Materials | 10d | 2025-11-02 A | 2025-11-13 A | DMM2-Eng-PQ-568, DMM2-Eng-SD-018 | 100% |  |
| DMM2-Proc-PO-040 |  | PR & PO for OverHead Crane Materials | 2d | 2026-01-06 A | 2026-01-07 A | DMM2-Eng-PQ-538, DMM2-Eng-SD-018, DMM2-Proc-PO-039 | 100% |  |
| DMM2-Proc-PO-168 |  | PR & PO for Gate Valves Materials | 2d | 2026-01-10 A | 2026-01-11 A | DMM2-Eng-PQ-1788, DMM2-Eng-SD-018, DMM2-Proc-PO-040 | 100% |  |
| DMM2-Proc-PO-178 |  | PR & PO for Electromagnetic Flow Meters | 7.99d | 2026-01-17 A | 2026-01-26 A | DMM2-Eng-PQ-1808, DMM2-Eng-SD-018, DMM2-Eng-PQ-628 | 100% |  |
| DMM2-Proc-PO-039 |  | PR & PO for Butterfly Valve Materials | 1d | 2026-01-26 A | 2026-01-26 A | DMM2-Eng-PQ-528, DMM2-Eng-SD-018, DMM2-Proc-PO-038 | 100% |  |
| DMM2-Proc-PO-042 |  | PR & PO for Sand Trap Louver Materials | 2d | 2026-09-16 | 2026-09-17 | DMM2-Eng-PQ-558, DMM2-Eng-SD-018 |  | 4d |
| DMM2-Proc-PO-188 |  | PR & PO for Fans Materials | 2d | 2026-09-16 | 2026-09-17 | DMM2-Eng-PQ-1828, DMM2-Eng-SD-018, DMM2-Eng-PQ-828 |  | 22d |
| DMM2-Proc-PO-198 |  | PR & PO for Louvers Materials | 2d | 2026-09-16 | 2026-09-17 | DMM2-Eng-PQ-1838, DMM2-Eng-SD-018, DMM2-Eng-PQ-1088 |  | 42d |
| DMM2-Proc-PO-041 |  | PR & PO for Strainers Materials | 2d | 2026-09-19 | 2026-09-20 | DMM2-Eng-PQ-548, DMM2-Eng-SD-018, DMM2-Proc-PO-038, DMM2-Proc-PO-042 |  | 4d |
| DMM2-Proc-PO-045 |  | PR & PO for Exhaust Fans Materials | 2d | 2026-09-21 | 2026-09-22 | DMM2-Eng-PQ-588, DMM2-Eng-SD-018, DMM2-Proc-PO-041 |  | 4d |
| DMM2-Proc-PO-050 |  | PR & PO for Trench Drain Materials | 2d | 2026-09-22 | 2026-09-24 | DMM2-Eng-PQ-638, DMM2-Eng-SD-018, DMM2-Proc-PO-168, DMM2-Proc-Delv-2648 |  | 40d |
| DMM2-Proc-PO-044 |  | PR & PO for Hose Bibb Materials | 2d | 2026-09-24 | 2026-09-26 | DMM2-Eng-PQ-578, DMM2-Eng-SD-018, DMM2-Eng-PQ-698 |  | 17d |
| DMM2-Proc-PO-046 |  | PR & PO for Chlorine Cylinder Racks Materials | 2d | 2026-09-24 | 2026-09-26 | DMM2-Eng-PQ-598, DMM2-Eng-SD-018, DMM2-Proc-PO-045 |  | 4d |
| DMM2-Proc-PO-047 |  | PR & PO for Chlorinators Materials | 2d | 2026-09-27 | 2026-09-28 | DMM2-Eng-PQ-608, DMM2-Eng-SD-018, DMM2-Proc-PO-046 |  | 13d |
| DMM2-Proc-PO-048 |  | PR & PO for Discharge Line Analyzer Materials | 2d | 2026-09-29 | 2026-09-30 | DMM2-Eng-PQ-618, DMM2-Eng-SD-018, DMM2-Proc-PO-047 |  | 13d |
| DMM2-Proc-PO-049 |  | PR & PO for Emergency shower Materials | 2d | 2026-10-01 | 2026-10-03 | DMM2-Eng-PQ-628, DMM2-Eng-SD-018, DMM2-Proc-PO-048, DMM2-Eng-PQ-1808 |  | 17d |
|  | 2 | **Electrical** |  | 2026-09-16 | 2026-09-17 |  |  |  |

| ID | WBS | Task | Duration | Start | Finish | Predecessors | Complete | Total float |
| --- | --- | --- | --- | --- | --- | --- | --- | --- |
| DMM2-Proc-PO-051 |  | PR & PO for Switches and Circuit Breakers Materials | 2d | 2026-09-16 | 2026-09-17 | DMM2-Eng-PQ-1848, DMM2-Eng-SD-018, DMM2-Eng-PQ-1088 |  | 57d |
|  | Sewer Lift St. | **Sewer Lift Station** |  | 2025-10-26 | 2026-09-28 |  |  |  |
|  | 1 | **Civil & Architecture** |  | 2026-09-16 | 2026-09-28 |  |  |  |
| DMM2-Proc-PO-052 |  | PR & PO for Metal Ladders Materials | 2d | 2026-09-16 | 2026-09-17 | DMM2-Eng-PQ-658, DMM2-Eng-SD-020 |  | 21d |
| DMM2-Proc-PO-054 |  | PR & PO for Internal painting (Acrylic) Materials | 2d | 2026-09-19 | 2026-09-20 | DMM2-Eng-PQ-678, DMM2-Eng-SD-020, DMM2-Proc-PO-052, DMM2-Proc-PO-097, DMM2-Eng-PQ-698 |  | 21d |
| DMM2-Proc-PO-055 |  | PR & PO for Signages Materials | 2d | 2026-09-24 | 2026-09-26 | DMM2-Eng-PQ-688, DMM2-Eng-SD-020, DMM2-Proc-PO-052, DMM2-Eng-PQ-1078 |  | 33d |
| DMM2-Proc-PO-053 |  | PR & PO for Metal Covers Materials | 2d | 2026-09-27 | 2026-09-28 | DMM2-Eng-PQ-668, DMM2-Eng-SD-020, DMM2-Proc-PO-055, DMM2-Eng-PQ-1088 |  | 34d |
|  | 3 | **Mechanical** |  | 2025-10-30 | 2026-09-17 |  |  |  |
| DMM2-Proc-PO-056 |  | PR & PO for Submersible Pumps Materials | 10d | 2025-10-30 A | 2025-11-10 A | DMM2-Eng-PQ-698, DMM2-Eng-SD-020, DMM2-Eng-PQ-678, DMM2-Eng-SD-018 | 100% |  |
| DMM2-Proc-PO-057 |  | PR & PO for Double Flanged DI Pipes Materials | 10d | 2025-10-30 A | 2025-11-10 A | DMM2-Eng-PQ-708, DMM2-Eng-SD-020, DMM2-Proc-PO-056 | 100% |  |
| DMM2-Proc-PO-058 |  | PR & PO for Buried Flanged DI Pipes Materials | 12.15d | 2025-10-30 A | 2025-11-13 A | DMM2-Eng-PQ-718, DMM2-Eng-SD-020, DMM2-Proc-PO-057 | 100% |  |
| DMM2-Proc-PO-059 |  | PR & PO for Geotextile Membrane Materials | 1d | 2025-11-08 A | 2025-11-09 A | DMM2-Eng-PQ-728, DMM2-Eng-SD-020, DMM2-Proc-PO-058 | 100% |  |
| DMM2-Proc-PO-064 |  | PR & PO for JIB Crane Materials | 2d | 2025-12-10 A | 2025-12-11 A | DMM2-Eng-PQ-778, DMM2-Eng-SD-020, DMM2-Eng-PQ-768 | 100% |  |
| DMM2-Proc-PO-062 |  | PR & PO for Odor Control Unit Materials | 2d | 2026-01-01 A | 2026-01-03 A | DMM2-Eng-PQ-758, DMM2-Eng-SD-020, DMM2-Proc-PO-056 | 100% |  |
| DMM2-Proc-PO-061 |  | PR & PO for Basket Screens Materials | 1d | 2026-01-03 A | 2026-01-03 A | DMM2-Eng-PQ-748, DMM2-Eng-SD-020, DMM2-Proc-PO-060 | 100% |  |
| DMM2-Proc-PO-060 |  | PR & PO for Non Return Valve (Flap) Materials | 1d | 2026-01-19 A | 2026-01-19 A | DMM2-Eng-PQ-738, DMM2-Eng-SD-020, DMM2-Proc-PO-059 | 100% |  |
| DMM2-Proc-PO-066 |  | PR & PO for Screening Container Materials | 1.19d | 2026-08-16 A | 2026-08-17 A | DMM2-Eng-PQ-798, DMM2-Eng-SD-020, DMM2-Proc-PO-062 | 100% |  |
| DMM2-Proc-PO-065 |  | PR & PO for Penstock Materials | 2d | 2026-08-19 A | 2026-08-20 A | DMM2-Eng-PQ-788, DMM2-Eng-SD-020, DMM2-Proc-PO-064, DMM2-Proc-PO-063 | 100% |  |
| DMM2-Proc-PO-063 |  | PR & PO for Surge Tank Materials | 4.42d | 2026-08-30 A | 2026-09-03 A | DMM2-Eng-PQ-768, DMM2-Eng-SD-020, DMM2-Proc-PO-059, DMM2-Proc-PO-168, DMM2-Eng-PQ-778 | 100% |  |
| DMM2-Proc-PO-067 |  | PR & PO for Scupper Materials | 2d | 2026-09-16 | 2026-09-17 | DMM2-Eng-PQ-808, DMM2-Eng-SD-020, DMM2-Proc-PO-066 |  | 27d |
|  | 2 | **Electrical** |  | 2025-10-26 | 2026-09-17 |  |  |  |
| DMM2-Proc-PO-072 |  | PR & PO for Fuel Pump Materials | 10d | 2025-10-26 A | 2025-11-05 A | DMM2-Eng-PQ-858, DMM2-Eng-SD-020, DMM2-Proc-PO-071 | 100% |  |
| DMM2-Proc-PO-075 |  | PR & PO for Displacement Rotary Type Pump Materials | 10d | 2025-10-28 A | 2025-11-09 A | DMM2-Eng-PQ-888, DMM2-Eng-SD-020, DMM2-Proc-PO-074 | 100% |  |
| DMM2-Proc-PO-076 |  | PR & PO for Electrical Hand Holes Materials | 2d | 2025-12-08 A | 2025-12-09 A | DMM2-Eng-PQ-898, DMM2-Eng-SD-020 | 100% |  |
| DMM2-Proc-PO-080 |  | PR & PO for Process Control Wiring Materials | 1.25d | 2025-12-14 A | 2025-12-15 A | DMM2-Eng-PQ-938, DMM2-Eng-SD-020, DMM2-Proc-PO-079, DMM2-Proc-PO-208, DMM2-Proc-PO-076, DMM2-Proc-PO-077, DMM2-Eng-PQ-918 | 100% |  |
| DMM2-Proc-PO-068 |  | PR & PO for Motor Control Center (MCC) Materials | 1d | 2025-12-20 A | 2025-12-20 A | DMM2-Eng-PQ-818, DMM2-Eng-SD-020 | 100% |  |
| DMM2-Proc-PO-070 |  | PR & PO for Low Voltage Cables Materials | 1.75d | 2025-12-23 A | 2025-12-24 A | DMM2-Eng-PQ-838, DMM2-Eng-SD-020, DMM2-Proc-PO-069, DMM2-Proc-PO-080 | 100% |  |
| DMM2-Proc-PO-079 |  | PR & PO for PLC System Materials | 2d | 2025-12-28 A | 2025-12-29 A | DMM2-Eng-PQ-1908, DMM2-Eng-SD-020 | 100% |  |
| DMM2-Proc-PO-069 |  | PR & PO for Local Control Panel Materials | 2d | 2025-12-29 A | 2025-12-30 A | DMM2-Eng-PQ-828, DMM2-Eng-SD-020, DMM2-Proc-PO-068, DMM2-Proc-PO-081, DMM2-Proc-PO-0109, DMM2-Eng-PQ-1828, DMM2-Eng-SD-38 | 100% |  |
| DMM2-Proc-PO-071 |  | PR & PO for Standby Diesel Generator Materials | 4d | 2025-12-29 A | 2026-01-01 A | DMM2-Eng-PQ-848, DMM2-Eng-SD-020, DMM2-Proc-PO-070 | 100% |  |
| DMM2-Proc-PO-077 |  | PR & PO for Galvanized Steel Pole Materials | 1d | 2025-12-31 A | 2025-12-31 A | DMM2-Eng-PQ-908, DMM2-Eng-SD-020 | 100% |  |
| DMM2-Proc-PO-208 |  | PR & PO for Addressable Fire Alarm Materials | 1d | 2026-01-03 A | 2026-01-03 A | DMM2-Eng-PQ-1898, DMM2-Eng-SD-020 | 100% |  |
| DMM2-Proc-PO-073 |  | PR & PO for Automatic Transfer (Switch ATS) Materials | 2d | 2026-01-10 A | 2026-01-11 A | DMM2-Eng-PQ-868, DMM2-Eng-SD-020, DMM2-Proc-PO-072, DMM2-Proc-PO-070 | 100% |  |
| DMM2-Proc-PO-081 |  | PR & PO for Instrumentation for Process Systems Materials | 1d | 2026-01-26 A | 2026-01-26 A | DMM2-Eng-PQ-948, DMM2-Eng-SD-020 | 100% |  |
| DMM2-Proc-PO-074 |  | PR & PO for Under Ground Fuel Tank Materials | 1d | 2026-06-02 A | 2026-06-02 A | DMM2-Eng-PQ-878, DMM2-Eng-SD-020, DMM2-Proc-PO-073 | 100% |  |
| DMM2-Proc-PO-078 |  | PR & PO for Surfaced Mounted Light (LED) Materials | 2d | 2026-09-16 | 2026-09-17 | DMM2-Eng-PQ-918, DMM2-Eng-SD-020, DMM2-Eng-PQ-938 |  | 33d |
|  | Dry | **Dry Networks** |  | 2025-12-16 | 2026-04-06 |  |  |  |
|  | MV | **Medium Voltage Network** |  | 2025-12-25 | 2026-02-03 |  |  |  |
| DMM2-Proc-PO-082 |  | PR & PO for MV Cables Materials | 2d | 2025-12-25 A | 2025-12-27 A | DMM2-Eng-PQ-958, DMM2-Eng-SD-022 | 100% |  |
| DMM2-Proc-PO-084 |  | PR & PO for Unit Substation Materials | 2d | 2026-01-05 A | 2026-01-06 A | DMM2-Eng-PQ-978, DMM2-Eng-SD-022, DMM2-Proc-PO-083 | 100% |  |
| DMM2-Proc-PO-085 |  | PR & PO for RMU Materials | 2d | 2026-01-08 A | 2026-01-10 A | DMM2-Eng-PQ-988, DMM2-Eng-SD-022, DMM2-Proc-PO-084 | 100% |  |
| DMM2-Proc-PO-083 |  | PR & PO for Straight Joints, Termination Materials | 6.06d | 2026-01-27 A | 2026-02-03 A | DMM2-Eng-PQ-968, DMM2-Eng-SD-022, DMM2-Proc-PO-082 | 100% |  |
|  | LV | **Low Voltage Network** |  | 2025-12-24 | 2026-02-12 |  |  |  |
| DMM2-Proc-PO-086 |  | PR & PO for LV Cables Materials | 3d | 2025-12-24 A | 2025-12-27 A | DMM2-Eng-PQ-998, DMM2-Eng-SD-024 | 100% |  |
| DMM2-Proc-PO-087 |  | PR & PO for LV Pillars Materials | 8d | 2026-02-04 A | 2026-02-12 A | DMM2-Eng-PQ-1008, DMM2-Eng-SD-024, DMM2-Proc-PO-086 | 100% |  |
| DMM2-Proc-PO-209 |  | PR & PO for LV Panels Materials | 8d | 2026-02-04 A | 2026-02-12 A | DMM2-Eng-PQ-2000, DMM2-Eng-SD-024, DMM2-Proc-PO-087 | 100% |  |
|  | Telecom | **Telecommunication Network** |  | 2025-12-16 | 2025-12-31 |  |  |  |
| DMM2-Proc-PO-088 |  | PR & PO for HDPE Ducts Materials | 2d | 2025-12-16 A | 2025-12-17 A | DMM2-Eng-PQ-1018, DMM2-Eng-SD-026 | 100% |  |
| DMM2-Proc-PO-089 |  | PR & PO for Manholes Type 1&2 Materials | 3d | 2025-12-29 A | 2025-12-31 A | DMM2-Eng-PQ-1028, DMM2-Eng-SD-026, DMM2-Proc-PO-088 | 100% |  |
|  | SL | **Street Lighting** |  | 2025-12-17 | 2026-04-06 |  |  |  |
| DMM2-Proc-PO-092 |  | PR & PO for SL Poles Materials | 5d | 2025-12-17 A | 2025-12-22 A | DMM2-Eng-PQ-1058, DMM2-Eng-SD-028, DMM2-Proc-PO-091 | 100% |  |
| DMM2-Proc-PO-091 |  | PR & PO for SL Cables Materials | 3d | 2025-12-24 A | 2025-12-27 A | DMM2-Eng-PQ-1048, DMM2-Eng-SD-028, DMM2-Proc-PO-090 | 100% |  |
| DMM2-Proc-PO-093 |  | PR & PO for SL Luminares Materials | 5d | 2025-12-24 A | 2025-12-29 A | DMM2-Eng-PQ-1068, DMM2-Eng-SD-028, DMM2-Proc-PO-092 | 100% |  |
| DMM2-Proc-PO-090 |  | PR & PO for SL Pillars Materials | 8d | 2026-02-04 A | 2026-02-12 A | DMM2-Eng-PQ-1038, DMM2-Eng-SD-028 | 100% |  |
| DMM2-Proc-PO-094 |  | PR & PO for SL Earthing Materials | 11d | 2026-03-25 A | 2026-04-06 A | DMM2-Eng-PQ-1078, DMM2-Eng-SD-028, DMM2-Proc-PO-093, DMM2-Proc-PO-0141, DMM2-Proc-PO-043, DMM2-Eng-SD-58, DMM2-Eng-SD-38, DMM2-Eng-PQ-1248, DMM2-Eng-SD-020, DMM2-Eng-PQ-1528, DMM2-Eng-PQ-1398 | 100% |  |
| DMM2-Proc-PO-095 |  | PR & PO for SL Drawpits Materials | 6d | 2026-03-29 A | 2026-04-04 A | DMM2-Eng-PQ-1088, DMM2-Eng-SD-028, DMM2-Proc-PO-094, DMM2-Proc-PO-0136, DMM2-Proc-PO-0132, DMM2-Proc-PO-0102, DMM2-Proc-PO-0116, DMM2-Proc-PO-0115, DMM2-Proc-PO-099, DMM2-Proc-PO-0101, DMM2-Eng-PQ-1188, DMM2-Eng-PQ-668, DMM2-Eng-SD-38, DMM2-Eng-PQ-1418, DMM2-Eng-PQ-1838, DMM2-Eng-PQ-1368, DMM2-Eng-PQ-1178, DMM2-Eng-PQ-1348, DMM2-Eng-PQ-1848, DMM2-Eng-PQ-1358, DMM2-Eng-PQ-1338, DMM2-Eng-PQ-1168, DMM2-Eng-SD-58, DMM2-Eng-PQ-1558 | 100% |  |
|  | Landscape | **Landscape Works** |  | 2025-12-09 | 2026-09-17 |  |  |  |
| DMM2-Proc-PO-098 |  | PR & PO for Geotextile Layers Materials | 2d | 2025-12-09 A | 2025-12-10 A | DMM2-Eng-PQ-1118, DMM2-Eng-SD-04 | 100% |  |
| DMM2-Proc-PO-0100 |  | PR & PO for Large Shrubs Materials | 2.25d | 2026-02-26 A | 2026-03-01 A | DMM2-Eng-PQ-1138, DMM2-Eng-SD-04 | 100% |  |
| DMM2-Proc-PO-0101 |  | PR & PO for Plants Materials | 2.25d | 2026-02-26 A | 2026-03-01 A | DMM2-Eng-PQ-1148, DMM2-Eng-SD-04 | 100% |  |
| DMM2-Proc-PO-0102 |  | PR & PO for Gravel/Stone Mulch Materials | 2.25d | 2026-02-26 A | 2026-03-01 A | DMM2-Eng-PQ-1158, DMM2-Eng-SD-04 | 100% |  |
| DMM2-Proc-PO-096 |  | PR & PO for Trees Materials | 2.25d | 2026-02-26 A | 2026-03-01 A | DMM2-Eng-PQ-1098, DMM2-Eng-SD-04 | 100% |  |
| DMM2-Proc-PO-097 |  | PR & PO for Ornamental Grasses Materials | 2.25d | 2026-02-26 A | 2026-03-01 A | DMM2-Eng-PQ-1108, DMM2-Eng-SD-04, DMM2-Eng-PQ-1198 | 100% |  |
| DMM2-Proc-PO-099 |  | PR & PO for Plastic edge Materials | 2.25d | 2026-02-26 A | 2026-03-01 A | DMM2-Eng-PQ-1128, DMM2-Eng-SD-04 | 100% |  |
| DMM2-Proc-PO-0103 |  | PR & PO for Fences (ZATCA HCIS) Materials | 2d | 2026-09-16 | 2026-09-17 | DMM2-Eng-PQ-1168, DMM2-Eng-SD-04, DMM2-Proc-PO-098, DMM2-Eng-PQ-1088 |  | 62d |
| DMM2-Proc-PO-0104 |  | PR & PO Prepare & Submit for Fences (MODON) Materials | 2d | 2026-09-16 | 2026-09-17 | DMM2-Eng-PQ-1178, DMM2-Eng-SD-04, DMM2-Eng-PQ-1088 |  | 52d |
| DMM2-Proc-PO-0105 |  | PR & PO for Vehicle Steel Gate Materials | 2d | 2026-09-16 | 2026-09-17 | DMM2-Eng-PQ-1188, DMM2-Eng-SD-04, DMM2-Eng-PQ-1088 |  | 42d |
| DMM2-Proc-PO-0106 |  | PR & PO for Vehicle and Pedestrian Steel Gate Materials | 2d | 2026-09-16 | 2026-09-17 | DMM2-Eng-PQ-1198, DMM2-Eng-SD-04, DMM2-Eng-PQ-1108 |  | 8d |
|  | Guard Room | **Guard Rooms** |  | 2025-10-24 | 2026-10-07 |  |  |  |
|  | GR MAT Civil | **Civil & Architecture** |  | 2025-10-24 | 2026-09-22 |  |  |  |

| ID | WBS | Task | Duration | Start | Finish | Predecessors | Complete | Total float |
| --- | --- | --- | --- | --- | --- | --- | --- | --- |
| DMM2-Proc-PO-0112 |  | PR & PO for Vapor Retarders Materials | 10d | 2025-10-24 A | 2025-11-04 A | DMM2-Eng-PQ-1258, DMM2-Eng-SD-06 | 100% |  |
| DMM2-Proc-PO-0115 |  | PR & PO for Water proofing Membrane Materials | 10d | 2025-10-24 A | 2025-11-04 A | DMM2-Eng-PQ-1288, DMM2-Eng-SD-06 | 100% |  |
| DMM2-Proc-PO-0109 |  | PR & PO for Screed Concrete Materials | 10d | 2026-02-02 A | 2026-02-14 A | DMM2-Eng-PQ-1228, DMM2-Eng-SD-06, DMM2-Eng-PQ-1278 | 100% |  |
| DMM2-Proc-PO-0107 |  | PR & PO for Lean Concrete Materials | 1.25d | 2026-02-04 A | 2026-02-05 A | DMM2-Eng-PQ-1208, DMM2-Eng-SD-06 | 100% |  |
| DMM2-Proc-PO-0110 |  | PR & PO for Foam Concrete Materials | 6d | 2026-02-05 A | 2026-02-12 A | DMM2-Eng-PQ-1238, DMM2-Eng-SD-06, DMM2-Eng-PQ-1218 | 100% |  |
| DMM2-Proc-PO-0116 |  | PR & PO for Concrete Masonry Materials | 5.75d | 2026-02-14 A | 2026-02-21 A | DMM2-Eng-PQ-1298, DMM2-Eng-SD-06 | 100% |  |
| DMM2-Proc-PO-0108 |  | PR & PO for Stone Coping Materials | 2d | 2026-09-16 | 2026-09-17 | DMM2-Eng-PQ-1218, DMM2-Eng-SD-06, DMM2-Proc-PO-0107, DMM2-Proc-PO-096, DMM2-Eng-PQ-1238 |  | 33d |
| DMM2-Proc-PO-0114 |  | PR & PO for Fluid-Applied Water Proofing Paint Materials | 2d | 2026-09-16 | 2026-09-17 | DMM2-Eng-PQ-1278, DMM2-Eng-SD-06, DMM2-Eng-PQ-1228 |  | 44d |
| DMM2-Proc-PO-0117 |  | PR & PO for Porcelain Flooring Tiles Materials | 2d | 2026-09-16 | 2026-09-17 | DMM2-Eng-PQ-1308, DMM2-Eng-SD-06 |  | 3d |
| DMM2-Proc-PO-0118 |  | PR & PO for gypsum Board Suspended Ceiling Materials | 2d | 2026-09-16 | 2026-09-17 | DMM2-Eng-PQ-1318, DMM2-Eng-SD-06 |  | 33d |
| DMM2-Proc-PO-0119 |  | PR & PO for Painting Materials | 2d | 2026-09-16 | 2026-09-17 | DMM2-Eng-PQ-1328, DMM2-Eng-SD-06 |  | 21d |
| DMM2-Proc-PO-0120 |  | PR & PO for Raised Floor System Materials | 2d | 2026-09-16 | 2026-09-17 | DMM2-Eng-PQ-1338, DMM2-Eng-SD-06, DMM2-Eng-PQ-1088 |  | 46d |
| DMM2-Proc-PO-0121 |  | PR & PO for Steel Doors Materials | 2d | 2026-09-16 | 2026-09-17 | DMM2-Eng-PQ-1348, DMM2-Eng-SD-06, DMM2-Eng-PQ-1088 |  | 44d |
| DMM2-Proc-PO-0122 |  | PR & PO for Wood Doors Materials | 2d | 2026-09-16 | 2026-09-17 | DMM2-Eng-PQ-1358, DMM2-Eng-SD-06, DMM2-Eng-PQ-1088 |  | 49d |
| DMM2-Proc-PO-0123 |  | PR & PO for Aluminum Windows Materials | 2d | 2026-09-16 | 2026-09-17 | DMM2-Eng-PQ-1368, DMM2-Eng-SD-06, DMM2-Eng-PQ-1088 |  | 39d |
| DMM2-Proc-PO-0111 |  | PR & PO for Reinforced Concrete Materials | 2d | 2026-09-19 | 2026-09-20 | DMM2-Eng-PQ-1248, DMM2-Eng-SD-06, DMM2-Proc-PO-0110, DMM2-Proc-PO-0119, B8.31 23 16.0139, DMM2-Eng-PQ-1078 |  | 21d |
| DMM2-Proc-PO-0113 |  | PR & PO for Board Insulation Materials | 2d | 2026-09-21 | 2026-09-22 | DMM2-Eng-PQ-1268, DMM2-Eng-SD-06, DMM2-Proc-PO-0111, B8.31 23 16.0141, DMM2-Proc-PO-094 |  | 21d |
|  | GR MAT Mech | **Mechanical** |  | 2025-12-04 | 2026-10-07 |  |  |  |
| DMM2-Proc-PO-0132 |  | PR & PO for Manhole Materials | 4d | 2025-12-04 A | 2025-12-08 A | DMM2-Eng-PQ-1458, DMM2-Eng-SD-38 | 100% |  |
| DMM2-Proc-PO-0136 |  | PR & PO for Fire Extinguishers (CO2 & Powder) Materials | 3d | 2025-12-06 A | 2025-12-08 A | DMM2-Eng-PQ-1498, DMM2-Eng-SD-38 | 100% |  |
| DMM2-Proc-PO-0125 |  | PR & PO for uPVC Pipes Materials | 5d | 2025-12-14 A | 2025-12-18 A | DMM2-Eng-PQ-1388, DMM2-Eng-SD-38 | 100% |  |
| DMM2-Proc-PO-0130 |  | PR & PO for Floor Drain Materials | 2d | 2026-08-30 A | 2026-08-31 A | DMM2-Eng-SD-38, DMM2-Eng-PQ-1088 | 100% |  |
| DMM2-Proc-PO-0124 |  | PR & PO for Exhaust Axial Fans Materials | 2d | 2026-09-16 | 2026-09-17 | DMM2-Eng-PQ-1378, DMM2-Eng-SD-38, DMM2-Eng-PQ-1388 |  | 36d |
| DMM2-Proc-PO-0126 |  | PR & PO for PPR Pipes Materials | 2d | 2026-09-16 | 2026-09-17 | DMM2-Eng-PQ-1398, DMM2-Eng-SD-38, DMM2-Proc-PO-0125, DMM2-Eng-PQ-1078 |  | 13d |
| DMM2-Proc-PO-0128 |  | PR & PO for Scupper Materials | 2d | 2026-09-16 | 2026-09-17 | DMM2-Eng-PQ-1418, DMM2-Eng-SD-38, DMM2-Eng-PQ-1088 |  | 17d |
| DMM2-Proc-PO-0129 |  | PR & PO for Clean out Materials | 1d | 2026-09-24 | 2026-09-24 | DMM2-Eng-PQ-1428, DMM2-Eng-SD-38 |  | 16d |
| DMM2-Proc-PO-0127 |  | PR & PO for DX Wall Mounted Split/AC Materials | 2d | 2026-09-27 | 2026-09-28 | DMM2-Eng-PQ-1408, DMM2-Eng-SD-38, DMM2-Proc-PO-0126, DMM2-Eng-PQ-1078 |  | 36d |
| DMM2-Proc-PO-0133 |  | PR & PO for Shower Materials | 2d | 2026-09-27 | 2026-09-28 | DMM2-Eng-PQ-1468, DMM2-Eng-SD-38, DMM2-Eng-PQ-1088 |  | 40d |
| DMM2-Proc-PO-0134 |  | PR & PO for Toilet Materials | 2d | 2026-09-29 | 2026-09-30 | DMM2-Eng-PQ-1478, DMM2-Eng-SD-38, DMM2-Eng-PQ-1088 |  | 35d |
| DMM2-Proc-PO-0135 |  | PR & PO for Semi Pedestal Sink Materials | 2d | 2026-10-01 | 2026-10-03 | DMM2-Eng-PQ-1488, DMM2-Eng-SD-38, DMM2-Eng-PQ-1088 |  | 36d |
| DMM2-Proc-PO-0131 |  | PR & PO for Electrical Water Heater Materials | 2d | 2026-10-06 | 2026-10-07 | DMM2-Eng-PQ-1448, DMM2-Eng-SD-38, DMM2-Eng-PQ-828 |  | 10d |
|  | GR MAT Elec | **Electrical** |  | 2025-12-16 | 2026-09-28 |  |  |  |
| DMM2-Proc-PO-0138 |  | PR & PO for Low Voltage Cable Materials | 10d | 2025-12-16 A | 2025-12-27 A | DMM2-Eng-PQ-1518, DMM2-Eng-SD-58, DMM2-Eng-PQ-1508 | 100% |  |
| DMM2-Proc-PO-0141 |  | PR & PO for Ground Wires, Rods, Pits, Clamping Materials | 1.25d | 2025-12-27 A | 2025-12-28 A | DMM2-Eng-SD-58, DMM2-Eng-PQ-056 | 100% |  |
| DMM2-Proc-PO-0137 |  | PR & PO for Panelboards Materials | 2d | 2026-09-16 | 2026-09-17 | DMM2-Eng-PQ-1508, DMM2-Eng-SD-58, DMM2-Eng-PQ-1518 |  | 38d |
| DMM2-Proc-PO-0139 |  | PR & PO for Lighting Materials | 2d | 2026-09-16 | 2026-09-17 | DMM2-Eng-PQ-1528, DMM2-Eng-SD-58, DMM2-Proc-PO-0138, DMM2-Eng-PQ-1078 |  | 33d |
| DMM2-Proc-PO-0142 |  | PR & PO for Enclosed Switches and Circuit Breakers Materials | 2d | 2026-09-16 | 2026-09-17 | DMM2-Eng-PQ-1558, DMM2-Eng-SD-58, DMM2-Eng-PQ-1088 |  | 36d |
| DMM2-Proc-PO-0143 |  | PR & PO for Fire Alarm System Materials | 2d | 2026-09-16 | 2026-09-17 | DMM2-Eng-PQ-1568, DMM2-Eng-SD-58 |  | 3d |
| DMM2-Proc-PO-0140 |  | PR & PO for Wiring Devices Materials | 2d | 2026-09-24 | 2026-09-26 | DMM2-Eng-PQ-1538, DMM2-Eng-SD-58, DMM2-Proc-PO-0139, DMM2-Proc-PO-0118, DMM2-Eng-PQ-1078 |  | 29d |
| DMM2-Proc-PO-0145 |  | PR & PO for Data Cabinet Materials | 2d | 2026-09-24 | 2026-09-26 | DMM2-Eng-PQ-1588, DMM2-Eng-SD-58, DMM2-Proc-PO-0141, DMM2-Proc-PO-0113 |  | 34d |
| DMM2-Proc-PO-0146 |  | PR & PO for Data/ Voice RJ45 Outlet Materials | 2d | 2026-09-27 | 2026-09-28 | DMM2-Eng-PQ-1598, DMM2-Eng-SD-58, DMM2-Proc-PO-0145 |  | 34d |
| DMM2-Proc-PO-0147 |  | PR & PO for PC Workstation Materials | 2d | 2026-09-27 | 2026-09-28 | DMM2-Eng-PQ-1608, DMM2-Eng-SD-58, DMM2-Proc-PO-0139, DMM2-Eng-PQ-1078 |  | 39d |
| DMM2-Proc-PO-0148 |  | PR & PO for 50 inch Screen Materials | 2d | 2026-09-27 | 2026-09-28 | DMM2-Eng-PQ-1618, DMM2-Eng-SD-58, DMM2-Eng-PQ-1088 |  | 41d |
|  | Mauf. & Delivery | **Manufacturing & Delivery** |  | 2025-10-05 | 2026-12-09 |  |  |  |
|  | Long Lead | **Long Lead Items** |  | 2025-10-11 | 2026-11-02 |  |  |  |
|  | Zone 01 | **Zone 01** |  | 2025-10-11 | 2026-10-10 |  |  |  |
|  | SDS | **Wet Networks & Stations** |  | 2025-10-11 | 2026-10-10 |  |  |  |
|  | Sewer | **Sewerage Network** |  | 2025-11-24 | 2026-02-16 |  |  |  |
| DMM2-Proc-Delv-1888 |  | Manuf. & Delivery for GRP Pipes Materials | 28.43d | 2025-11-24 A | 2025-12-27 A | DMM2-Proc-PO-011, B5.33 31 00.02.021 SS, DMM2-Eng-PQ-328 | 100% |  |
| DMM2-Proc-Delv-1898 |  | Manuf. & Delivery for Inlet Manholes Materials | 50.97d | 2025-12-20 A | 2026-02-16 A | DMM2-Proc-PO-013, B5.33 05 13.011 SS | 100% |  |
|  | Storm | **Storm Network** |  | 2025-11-24 | 2026-05-25 |  |  |  |
| DMM2-Proc-Delv-508 |  | Manuf. & Delivery for GRP Pipes Materials | 34.84d | 2025-11-24 A | 2026-01-03 A | DMM2-Proc-PO-011, B6.33 42 11.021 SS | 100% |  |
| DMM2-Proc-Delv-528 |  | Manuf. & Delivery for Inlet Manholes Materials | 62.15d | 2025-12-20 A | 2026-03-07 A | DMM2-Proc-PO-013, B6.33 05 13.011 SS | 100% |  |
| DMM2-Proc-Delv-538 |  | Manuf. & Delivery for Catch Basin Materials | 118d | 2025-12-27 A | 2026-05-25 A | DMM2-Proc-PO-014, B6.33 05 63.071 SS | 100% |  |
|  | Potable | **Potable Network** |  | 2025-12-03 | 2026-09-20 |  |  |  |
| DMM2-Proc-Delv-598 |  | Manuf. & Delivery for HDPE Pipes Materials | 86.21d | 2025-12-03 A | 2026-03-26 A | DMM2-Proc-PO-020 | 100% |  |
| DMM2-Proc-Delv-608 |  | Manuf. & Delivery for Valves Materials | 13.25d | 2026-02-07 A | 2026-02-24 A | DMM2-Proc-PO-021, B3.33 14 13.01.021 SS | 100% |  |
| DMM2-Proc-Delv-618 |  | Manuf. & Delivery for Valves Chambers Materials | 111d | 2026-05-10 A | 2026-09-20 | DMM2-Proc-PO-022, B3.33 05 63.02.011 SS | 75% | 112d |
|  | Fire Fighting | **Fire Fighting Network** |  | 2025-10-11 | 2026-04-12 |  |  |  |
| DMM2-Proc-Delv-1958 |  | Manuf. & Delivery for Fire Hydrant Materials | 145.46d | 2025-10-11 A | 2026-04-11 A | DMM2-Proc-PO-158, B3.33 14 19.01.fh2 SS | 100% |  |
| DMM2-Proc-Delv-668 |  | Manuf. & Delivery for HDPE Pipes Materials | 102.29d | 2025-11-11 A | 2026-03-18 A | DMM2-Proc-PO-027, B3.1. 33 14 13.011 SS | 100% |  |
| DMM2-Proc-Delv-678 |  | Manuf. & Delivery for Valves Materials | 1.75d | 2026-02-28 A | 2026-03-02 A | DMM2-Proc-PO-028, B3.1. 33 14 13.021 SS | 100% |  |
| DMM2-Proc-Delv-688 |  | Manuf. & Delivery for Valves Chambers Materials | 29.5d | 2026-02-28 A | 2026-04-12 A | DMM2-Proc-PO-029, B3.33 05 63.02.42 SS | 100% |  |
|  | TSE | **TSE Network** |  | 2025-11-27 | 2026-10-10 |  |  |  |
| DMM2-Proc-Delv-638 |  | Manuf. & Delivery for HDPE Pipes Materials | 110.06d | 2025-11-27 A | 2026-04-18 A | DMM2-Proc-PO-024, B4.33 14 13.071 SS | 100% |  |
| DMM2-Proc-Delv-658 |  | Manuf. & Delivery for Valves Materials | 1.75d | 2026-02-28 A | 2026-03-02 A | DMM2-Proc-PO-026, B4.33 14 13.061 SS | 100% |  |
| DMM2-Proc-Delv-648 |  | Manuf. & Delivery for Solenoid Primary Control Valves Materials | 20d | 2026-09-16 | 2026-10-10 | DMM2-Proc-PO-025, B4.33 14 13.063 SS |  | 25d |
|  | SDS1 | **Dry Networks** |  | 2025-12-28 | 2026-09-20 |  |  |  |
|  | MV | **Medium Voltage Network** |  | 2025-12-28 | 2026-01-04 |  |  |  |
| DMM2-Proc-Delv-1218 |  | Manuf. & Delivery for MV Cables Materials | 7d | 2025-12-28 A | 2026-01-04 A | DMM2-Proc-PO-082 | 100% |  |

| ID | WBS | Task | Duration | Start | Finish | Predecessors | Complete | Total float |
| --- | --- | --- | --- | --- | --- | --- | --- | --- |
|  | LV | **Low Voltage Network** |  | 2025-12-28 | 2026-04-15 |  |  |  |
| DMM2-Proc-Delv-1258 |  | Manuf. & Delivery for LV Cables Materials | 82.5d | 2025-12-28 A | 2026-04-15 A | DMM2-Proc-PO-086, B2.33 71 00 02 97 SS | 100% |  |
|  | Telecom | **Telecommunication Network** |  | 2026-02-01 | 2026-03-31 |  |  |  |
| DMM2-Proc-Delv-1278 |  | Manuf. & Delivery for HDPE Ducts Materials | 1.25d | 2026-02-01 A | 2026-02-02 A | DMM2-Proc-PO-088, B2.31 23 00.591 SS | 100% |  |
| DMM2-Proc-Delv-1288 |  | Manuf. & Delivery for Manholes Type 1&2 Materials | 15.87d | 2026-03-04 A | 2026-03-31 A | DMM2-Proc-PO-089 | 100% |  |
|  | SL | **Street Lighting** |  | 2025-12-28 | 2026-09-20 |  |  |  |
| DMM2-Proc-Delv-1308 |  | Manuf. & Delivery for SL Cables Materials | 83d | 2025-12-28 A | 2026-04-15 A | DMM2-Proc-PO-091, B2.33 71 00 02 100 | 100% |  |
| DMM2-Proc-Delv-1318 |  | Manuf. & Delivery for SL Poles Materials | 72.28d | 2025-12-28 A | 2026-04-04 A | DMM2-Proc-PO-092, B2.33 71 16.021 SS | 100% |  |
| DMM2-Proc-Delv-1328 |  | Manuf. & Delivery for SL Luminares Materials | 214d | 2025-12-28 A | 2026-09-20 | DMM2-Proc-PO-093, B2.33 71 16.021 SS | 80% | 112d |
|  | Zone 02 | **Zone 02** |  | 2025-12-08 | 2026-11-02 |  |  |  |
|  | SDS | **Wet Networks & Stations** |  | 2025-12-08 | 2026-11-02 |  |  |  |
|  | Sewer | **Sewerage Network** |  | 2025-12-16 | 2026-10-10 |  |  |  |
| DMM2-Proc-Delv-2298 |  | Manuf. & Delivery for HDPE Pipes Materials | 66.5d | 2025-12-16 A | 2026-03-09 A | DMM2-Proc-PO-016, B5.33 31 23.021 SS | 100% |  |
| DMM2-Proc-Delv-3628 |  | Manuf. & Delivery for GRP Pipes Materials | 57.32d | 2025-12-25 A | 2026-03-08 A | DMM2-Proc-PO-011, DMM2-Proc-Delv-1888 | 100% |  |
| DMM2-Proc-Delv-2328 |  | Manuf. & Delivery for Discharge Chamber Materials | 220d | 2025-12-28 A | 2026-09-28 | DMM2-Proc-Delv-3638 SS, DMM2-Proc-PO-019 FF |  | 84d |
| DMM2-Proc-Delv-3638 |  | Manuf. & Delivery for Inlet Manholes Materials | 52d | 2025-12-28 A | 2026-03-02 A | DMM2-Proc-PO-013, DMM2-Proc-Delv-1898 | 100% |  |
| DMM2-Proc-Delv-2318 |  | Manuf. & Delivery for Valves Materials | 38d | 2026-02-01 A | 2026-03-29 A | DMM2-Proc-PO-018, B5.33 31 23.021 SS | 100% |  |
| DMM2-Proc-Delv-2308 |  | Manuf. & Delivery for Valves Chambers Materials | 15d | 2026-09-22 | 2026-10-10 | DMM2-Proc-PO-017, B3.33 14 19.01.26 SS+1d |  | 92d |
|  | Storm | **Storm Network** |  | 2025-12-15 | 2026-05-25 |  |  |  |
| DMM2-Proc-Delv-2248 |  | Manuf. & Delivery for GRP Pipes Materials | 55.76d | 2025-12-15 A | 2026-02-18 A | DMM2-Proc-PO-011, DMM2-Proc-Delv-508 | 100% |  |
| DMM2-Proc-Delv-2268 |  | Manuf. & Delivery for Inlet Manholes Materials | 68.75d | 2025-12-28 A | 2026-03-30 A | DMM2-Proc-PO-013, DMM2-Proc-Delv-528, DMM2-Proc-Delv-7510 SS | 100% |  |
| DMM2-Proc-Delv-2278 |  | Manuf. & Delivery for Concrete Chambers & Catch Basin Materials | 117d | 2025-12-28 A | 2026-05-25 A | DMM2-Proc-PO-014, DMM2-Proc-Delv-538 | 100% |  |
|  | Potable | **Potable Network** |  | 2026-02-03 | 2026-09-20 |  |  |  |
| DMM2-Proc-Delv-2338 |  | Manuf. & Delivery for HDPE Pipes Materials | 23.49d | 2026-02-03 A | 2026-03-07 A | DMM2-Proc-PO-020, DMM2-Proc-Delv-598, DMM2-Proc-PO-023 | 100% |  |
| DMM2-Proc-Delv-2348 |  | Manuf. & Delivery for Valves Materials | 0.82d | 2026-02-21 A | 2026-02-23 A | DMM2-Proc-PO-021, DMM2-Proc-Delv-608 | 100% |  |
| DMM2-Proc-Delv-2358 |  | Manuf. & Delivery for Valves Chambers Materials | 6d | 2026-05-21 A | 2026-06-01 A | DMM2-Proc-PO-022, DMM2-Proc-Delv-618 SS | 100% |  |
| DMM2-Proc-Delv-2368 |  | Manuf. & Delivery for Flow Meter Materials | 4d | 2026-09-16 | 2026-09-20 | DMM2-Proc-PO-023, DMM2-Proc-Delv-2348 |  | 71d |
| DMM2-Proc-Delv-3648 |  | Manuf. & Delivery for Flow Meter Chamber Materials | 4d | 2026-09-16 | 2026-09-20 | DMM2-Proc-Delv-2368 FF |  | 71d |
|  | Fire Fighting | **Fire Fighting Network** |  | 2026-02-04 | 2026-09-28 |  |  |  |
| DMM2-Proc-Delv-2408 |  | Manuf. & Delivery for HDPE Pipes Materials | 12.36d | 2026-02-04 A | 2026-02-18 A | DMM2-Proc-PO-027, DMM2-Proc-Delv-668 | 100% |  |
| DMM2-Proc-Delv-2418 |  | Manuf. & Delivery for Valves Materials | 3.75d | 2026-02-18 A | 2026-02-25 A | DMM2-Proc-PO-028, DMM2-Proc-Delv-678 | 100% |  |
| DMM2-Proc-Delv-3698 |  | Manuf. & Delivery for Fire Hydrant Materials | 17.27d | 2026-03-05 A | 2026-04-02 A | DMM2-Proc-PO-158, DMM2-Proc-Delv-1958 | 100% |  |
| DMM2-Proc-Delv-2428 |  | Manuf. & Delivery for Valves Chambers Materials | 96d | 2026-06-08 A | 2026-09-28 | DMM2-Proc-PO-029, DMM2-Proc-Delv-688 | 33% | 106d |
|  | TSE | **TSE Network** |  | 2025-12-08 | 2026-11-02 |  |  |  |
| DMM2-Proc-Delv-2378 |  | Manuf. & Delivery for HDPE Pipes Materials | 95.18d | 2025-12-08 A | 2026-04-12 A | DMM2-Proc-PO-024, DMM2-Proc-Delv-638 | 100% |  |
| DMM2-Proc-Delv-2398 |  | Manuf. & Delivery for Valves Materials | 38.92d | 2026-02-15 A | 2026-04-13 A | DMM2-Proc-PO-026, DMM2-Proc-Delv-658 | 100% |  |
| DMM2-Proc-Delv-2388 |  | Manuf. & Delivery for Solenoid Primary Control Valves Materials | 20d | 2026-10-11 | 2026-11-02 | DMM2-Proc-PO-025, DMM2-Proc-Delv-648 |  | 29d |
|  | Pot Pump St. | **Potable Water Pump Station** |  | 2026-02-08 | 2026-10-26 |  |  |  |
|  | 3 | **Mechanical** |  | 2026-02-08 | 2026-10-15 |  |  |  |
| DMM2-Proc-Delv-2508 |  | Manuf. & Delivery for Water Pumps Materials | 142.93d | 2026-02-08 A | 2026-08-10 A | DMM2-Proc-PO-037, B1.1.31 23 19.02 SS, B1.1.31 23 23.102 | 100% |  |
| DMM2-Proc-Delv-2518 |  | Manuf. & Delivery for Fire Pumps Materials | 155d | 2026-03-25 A | 2026-09-27 | DMM2-Proc-PO-038, B1.1.31 23 23.102 | 80% | 29d |
| DMM2-Proc-Delv-3748 |  | Manuf. & Delivery for Gate Valves Materials | 17d | 2026-04-09 A | 2026-04-28 A | DMM2-Proc-PO-168, DMM2-Proc-PO-021, B1.1.31 23 23.102, DMM2-Proc-Delv-3738 SS+25d | 100% |  |
| DMM2-Proc-Delv-3728 |  | Manuf. & Delivery for Submersible Pumps Materials | 58.8d | 2026-06-03 A | 2026-08-10 A | DMM2-Proc-PO-056, B1.1.31 23 23.102 | 100% |  |
| DMM2-Proc-Delv-2538 |  | Manuf. & Delivery for OverHead Crane Materials | 99d | 2026-06-07 A | 2026-09-30 | DMM2-Proc-PO-040, B1.1.31 23 23.102, DMM2-Proc-Delv-3738 SS+10d | 80% | 18d |
| DMM2-Proc-Delv-2528 |  | Manuf. & Delivery for Butterfly Valve Materials | 92d | 2026-06-17 A | 2026-10-03 | DMM2-Proc-PO-039, B1.1.31 23 23.102, DMM2-Proc-Delv-3738 SS+15d | 80% | 18d |
| DMM2-Proc-Delv-3768 |  | Manuf. & Delivery for Electromagnetic Flow Meters Materials | 90d | 2026-06-20 A | 2026-10-03 | DMM2-Proc-PO-178, B1.1.31 23 23.102, DMM2-Proc-Delv-3738 SS+25d | 80% | 40d |
| DMM2-Proc-Delv-3758 |  | Manuf. & Delivery for Non Return (Flap) Materials | 87d | 2026-06-23 A | 2026-10-03 | DMM2-Proc-PO-060, B1.1.31 23 23.102, DMM2-Proc-Delv-3738 SS+20d | 80% | 7d |
| DMM2-Proc-Delv-3738 |  | Manuf. & Delivery for DI Pipes Materials | 78d | 2026-06-24 A | 2026-09-22 | DMM2-Proc-PO-057, DMM2-Proc-PO-058, B1.1.31 23 23.102 | 80% | 13d |
| DMM2-Proc-Delv-3778 |  | Manuf. & Delivery for Surge Tank Materials | 25d | 2026-09-16 | 2026-10-15 | DMM2-Proc-PO-063, B1.1.31 23 23.102, DMM2-Proc-Delv-3738 SS+10d, DMM2-Proc-PO-064 |  | 13d |
|  | 2 | **Electrical** |  | 2026-02-18 | 2026-10-26 |  |  |  |
| DMM2-Proc-Delv-3868 |  | Manuf. & Delivery for PLC System Materials | 177d | 2026-02-18 A | 2026-09-30 | DMM2-Proc-PO-079, DMM2-Proc-Delv-2508 SS+25d | 80% | 46d |
| DMM2-Proc-Delv-3808 |  | Manuf. & Delivery for Motor Control Center (MCC) Materials | 172.25d | 2026-02-21 A | 2026-09-27 | DMM2-Proc-PO-068, DMM2-Proc-Delv-3768 SS | 80% | 25d |
| DMM2-Proc-Delv-3848 |  | Manuf. & Delivery for Generators Materials | 2d | 2026-04-14 A | 2026-04-15 A | DMM2-Proc-PO-071, B1.1.31 23 23.102 SS | 100% |  |
| DMM2-Proc-Delv-2648 |  | Manuf. & Delivery for LV Cables Materials | 127d | 2026-04-22 A | 2026-09-21 | DMM2-Proc-PO-070, DMM2-Proc-Delv-1258 | 80% | 7d |
| DMM2-Proc-Delv-3828 |  | Manuf. & Delivery for Local Control Panel Materials | 106.2d | 2026-05-15 A | 2026-09-21 | DMM2-Proc-PO-069, DMM2-Proc-Delv-2538 SS+20d | 80% | 33.8d |
| DMM2-Proc-Delv-3858 |  | Manuf. & Delivery for Addressable Fire Alarm System Materials | 25d | 2026-09-16 | 2026-10-15 | DMM2-Proc-PO-208, DMM2-Proc-Delv-3808 SS+10d |  | 25d |
| DMM2-Proc-Delv-3878 |  | Manuf. & Delivery for Automatic Transfer Switch ATS panel Materials | 19d | 2026-09-16 | 2026-10-08 | DMM2-Proc-PO-073, B1.1.31 23 23.102 SS+5d |  | 31d |
| DMM2-Proc-Delv-3838 |  | Manuf. & Delivery for Panelboards Materials | 16d | 2026-10-08 | 2026-10-26 | DMM2-Proc-PO-069, B1.1.31 23 23.102 SS+10d, DMM2-Proc-PO-188, DMM2-Proc-PO-0131 |  | 10d |
|  | SDS1 | **Dry Networks** |  | 2025-12-28 | 2026-10-10 |  |  |  |
|  | MV | **Medium Voltage Network** |  | 2026-01-06 | 2026-09-28 |  |  |  |
| DMM2-Proc-Delv-2958 |  | Manuf. & Delivery for MV Cables Materials | 1d | 2026-01-06 A | 2026-01-06 A | DMM2-Proc-PO-082, DMM2-Proc-Delv-1218 | 100% |  |
| DMM2-Proc-Delv-2978 |  | Manuf. & Delivery for Unit Substation Materials | 205d | 2026-01-14 A | 2026-09-28 | DMM2-Proc-PO-084 | 90% | 106d |
| DMM2-Proc-Delv-2988 |  | Manuf. & Delivery for RMU Materials | 205d | 2026-01-14 A | 2026-09-28 | DMM2-Proc-PO-085 | 90% | 106d |
|  | LV | **Low Voltage Network** |  | 2026-03-25 | 2026-09-12 |  |  |  |
| DMM2-Proc-Delv-2998 |  | Manuf. & Delivery for LV Cables Materials | 142.95d | 2026-03-25 A | 2026-09-12 A | DMM2-Proc-PO-086 | 100% |  |
|  | Telecom | **Telecommunication Network** |  | 2026-01-21 | 2026-04-12 |  |  |  |
| DMM2-Proc-Delv-3018 |  | Manuf. & Delivery for HDPE Ducts Materials | 9d | 2026-01-21 A | 2026-02-01 A | DMM2-Proc-PO-088, DMM2-Proc-Delv-1278 | 100% |  |
| DMM2-Proc-Delv-3028 |  | Manuf. & Delivery for Manholes Type 1&2 Materials | 24.5d | 2026-03-08 A | 2026-04-12 A | DMM2-Proc-PO-089, DMM2-Proc-Delv-1288 | 100% |  |
|  | SL | **Street Lighting** |  | 2025-12-28 | 2026-10-10 |  |  |  |
| DMM2-Proc-Delv-3068 |  | Manuf. & Delivery for SL Luminares Materials | 214d | 2025-12-28 A | 2026-09-20 | DMM2-Proc-PO-093, DMM2-Proc-Delv-1328 SS | 80% | 112d |

| ID | WBS | Task | Duration | Start | Finish | Predecessors | Complete | Total float |
| --- | --- | --- | --- | --- | --- | --- | --- | --- |
| DMM2-Proc-Delv-3058 |  | Manuf. & Delivery for SL Poles Materials | 31.25d | 2026-02-18 A | 2026-04-08 A | DMM2-Proc-PO-092, DMM2-Proc-Delv-1318 | 100% |  |
| DMM2-Proc-Delv-3038 |  | Manuf. & Delivery for SL Pillars Materials | 167d | 2026-03-24 A | 2026-10-10 | DMM2-Proc-PO-090 | 80% | 96d |
| DMM2-Proc-Delv-3048 |  | Manuf. & Delivery for SL Cables Materials | 143.97d | 2026-03-25 A | 2026-09-13 A | DMM2-Proc-PO-091, DMM2-Proc-Delv-1308 | 100% |  |
|  | Zone 03 | **Zone 03** |  | 2025-11-24 | 2026-11-02 |  |  |  |
|  | SDS | **Wet Networks & Stations** |  | 2025-11-24 | 2026-11-02 |  |  |  |
|  | Sewer | **Sewerage Network** |  | 2025-11-24 | 2026-10-08 |  |  |  |
| DMM2-Proc-Delv-5368 |  | Manuf. & Delivery for GRP Pipes Materials | 81.07d | 2025-11-24 A | 2026-03-02 A | DMM2-Proc-PO-011, DMM2-Proc-Delv-3628 | 100% |  |
| DMM2-Proc-Delv-4038 |  | Manuf. & Delivery for HDPE Pipes Materials | 242.75d | 2025-12-11 A | 2026-10-08 | DMM2-Proc-PO-016, DMM2-Proc-Delv-2298 |  | 97d |
| DMM2-Proc-Delv-5378 |  | Manuf. & Delivery for Inlet Manholes Materials | 53.22d | 2025-12-28 A | 2026-03-03 A | DMM2-Proc-PO-013, DMM2-Proc-Delv-3638 | 100% |  |
| DMM2-Proc-Delv-4048 |  | Manuf. & Delivery for Valves Chambers Materials | 15d | 2026-09-16 | 2026-10-04 | DMM2-Proc-PO-017, B6.33 05 39.01.1747 |  | 96d |
| DMM2-Proc-Delv-4058 |  | Manuf. & Delivery for Valves Materials | 15d | 2026-09-16 | 2026-10-04 | DMM2-Proc-PO-018, DMM2-Proc-Delv-2318 |  | 75d |
|  | Storm | **Storm Network** |  | 2025-12-21 | 2026-08-26 |  |  |  |
| DMM2-Proc-Delv-3988 |  | Manuf. & Delivery for GRP Pipes Materials | 69.17d | 2025-12-21 A | 2026-03-24 A | DMM2-Proc-PO-011, DMM2-Proc-Delv-2248 | 100% |  |
| DMM2-Proc-Delv-4008 |  | Manuf. & Delivery for Inlet Manholes Materials | 77.33d | 2025-12-28 A | 2026-04-09 A | DMM2-Proc-PO-013, DMM2-Proc-Delv-2268 | 100% |  |
| DMM2-Proc-Delv-4018 |  | Manuf. & Delivery for Concrete Chambers & Catch Basin Materials | 193d | 2025-12-28 A | 2026-08-26 A | DMM2-Proc-PO-014, DMM2-Proc-Delv-2278, DMM2-Proc-PO-069 | 100% |  |
|  | Potable | **Potable Network** |  | 2025-11-28 | 2026-09-19 |  |  |  |
| DMM2-Proc-Delv-4078 |  | Manuf. & Delivery for HDPE Pipes Materials | 102.06d | 2025-11-28 A | 2026-04-09 A | DMM2-Proc-PO-020, DMM2-Proc-Delv-2338 | 100% |  |
| DMM2-Proc-Delv-4088 |  | Manuf. & Delivery for Valves Materials | 12d | 2026-03-01 A | 2026-03-18 A | DMM2-Proc-PO-021, DMM2-Proc-Delv-2348 | 100% |  |
| DMM2-Proc-Delv-4098 |  | Manuf. & Delivery for Valves Chambers Materials | 105d | 2026-05-15 A | 2026-09-19 | DMM2-Proc-PO-022, DMM2-Proc-Delv-2358 | 80% | 113d |
|  | Fire Fighting | **Fire Fighting Network** |  | 2025-11-28 | 2026-09-17 |  |  |  |
| DMM2-Proc-Delv-4148 |  | Manuf. & Delivery for HDPE Pipes Materials | 91.39d | 2025-11-28 A | 2026-03-28 A | DMM2-Proc-PO-027, DMM2-Proc-Delv-2408 | 100% |  |
| DMM2-Proc-Delv-4158 |  | Manuf. & Delivery for Valves Materials | 6.22d | 2026-04-06 A | 2026-04-13 A | DMM2-Proc-PO-028, DMM2-Proc-Delv-2418 | 100% |  |
| DMM2-Proc-Delv-5438 |  | Manuf. & Delivery for Fire Hydrant Materials | 24.37d | 2026-04-22 A | 2026-05-20 A | DMM2-Proc-PO-158, DMM2-Proc-Delv-3698 | 100% |  |
| DMM2-Proc-Delv-4168 |  | Manuf. & Delivery for Valves Chambers Materials | 106d | 2026-05-13 A | 2026-09-17 | DMM2-Proc-PO-029, DMM2-Proc-Delv-2428 SS | 80% | 114d |
|  | TSE | **TSE Network** |  | 2025-12-07 | 2026-11-02 |  |  |  |
| DMM2-Proc-Delv-4118 |  | Manuf. & Delivery for HDPE Pipes Materials | 83.03d | 2025-12-07 A | 2026-03-26 A | DMM2-Proc-PO-024, DMM2-Proc-Delv-2378 | 100% |  |
| DMM2-Proc-Delv-4138 |  | Manuf. & Delivery for Valves Materials | 26.22d | 2026-03-06 A | 2026-04-13 A | DMM2-Proc-PO-026, DMM2-Proc-Delv-2398 | 100% |  |
| DMM2-Proc-Delv-4128 |  | Manuf. & Delivery for Solenoid Primary Control Valves Materials | 10d | 2026-10-22 | 2026-11-02 | DMM2-Proc-PO-025 FF, DMM2-Proc-Delv-2388 FF |  | 29d |
|  | Sewer Lift St. | **Sewer Lift Station** |  | 2025-12-24 | 2026-10-21 |  |  |  |
|  | 3 | **Mechanical** |  | 2025-12-24 | 2026-10-21 |  |  |  |
| DMM2-Proc-Delv-4518 |  | Manuf. & Delivery for JIB Crane Materials | 243d | 2025-12-24 A | 2026-10-04 | DMM2-Proc-PO-064 | 47% | 20d |
| DMM2-Proc-Delv-4448 |  | Manuf. & Delivery for Double Flanged DI Pipes Materials | 231d | 2025-12-26 A | 2026-10-10 | DMM2-Proc-PO-057, DMM2-Proc-Delv-7439 SS |  | 13d |
| DMM2-Proc-Delv-4478 |  | Manuf. & Delivery for Non Return Valve (Flap) Materials | 207d | 2026-01-24 A | 2026-10-10 | DMM2-Proc-PO-060 |  | 22d |
| DMM2-Proc-Delv-4488 |  | Manuf. & Delivery for Basket Screens Materials | 20d | 2026-09-16 | 2026-10-10 | DMM2-Proc-PO-061 |  | 21d |
| DMM2-Proc-Delv-4508 |  | Manuf. & Delivery for Surge Tank Materials | 30d | 2026-09-16 | 2026-10-21 | DMM2-Proc-PO-063, DMM2-Proc-PO-071 |  | 14d |
| DMM2-Proc-Delv-4438 |  | Manuf. & Delivery for Submersible Pumps Materials | 13d | 2026-09-27 | 2026-10-11 | DMM2-Proc-PO-056, DMM2-Proc-PO-054, DMM2-Proc-PO-044 |  | 17d |
| DMM2-Proc-Delv-4458 |  | Manuf. & Delivery for Buried Flanged DI Pipes Materials | 2d | 2026-10-11 | 2026-10-12 | DMM2-Proc-PO-058, DMM2-Proc-Delv-4448, DMM2-Proc-PO-071 |  | 13d |
| DMM2-Proc-Delv-4498 |  | Manuf. & Delivery for Odor Control Unit Materials | 3d | 2026-10-11 | 2026-10-13 | DMM2-Proc-PO-062, DMM2-Proc-Delv-4558 SS, DMM2-Proc-Delv-4488 |  | 21d |
|  | 2 | **Electrical** |  | 2026-01-05 | 2026-10-14 |  |  |  |
| DMM2-Proc-Delv-4608 |  | Manuf. & Delivery for Automatic Transfer (Switch ATS) Materials | 243d | 2026-01-05 A | 2026-10-10 | DMM2-Proc-PO-073, DMM2-Proc-PO-065 FF |  | 20d |
| DMM2-Proc-Delv-4628 |  | Manuf. & Delivery for Displacement Rotary Type Pump Materials | 219d | 2026-01-14 A | 2026-10-14 | DMM2-Proc-PO-075 | 43% | 11d |
| DMM2-Proc-Delv-4668 |  | Manuf. & Delivery for PLC System Materials | 174.5d | 2026-02-28 A | 2026-10-04 | DMM2-Proc-PO-079, DMM2-Proc-Delv-4628 SS, DMM2-Proc-Delv-4578 SS, DMM2-Proc-Delv-4518 SS | 80% | 41d |
| DMM2-Proc-Delv-4578 |  | Manuf. & Delivery for Low Voltage Cables Materials | 152d | 2026-04-05 A | 2026-10-04 | DMM2-Proc-PO-070, DMM2-Proc-Delv-4478 SS | 50% | 35d |
| DMM2-Proc-Delv-4588 |  | Manuf. & Delivery for Standby Diesel Generator Materials | 2d | 2026-04-14 A | 2026-04-15 A | DMM2-Proc-PO-071, DMM2-Proc-PO-058, DMM2-Proc-PO-0138 | 100% |  |
| DMM2-Proc-Delv-4598 |  | Manuf. & Delivery for Fuel Pump Materials | 131d | 2026-05-05 A | 2026-10-10 | DMM2-Proc-PO-072, DMM2-Proc-Delv-4608 SS | 50% | 21d |
| DMM2-Proc-Delv-4558 |  | Manuf. & Delivery for Motor Control Center (MCC) Materials | 3d | 2026-09-19 | 2026-09-21 | DMM2-Proc-PO-068 SS, DMM2-Proc-Delv-7458 SS, DMM2-Proc-PO-065 SS |  | 33d |
| DMM2-Proc-Delv-4568 |  | Manuf. & Delivery for Local Control Panel Materials | 3d | 2026-10-11 | 2026-10-13 | DMM2-Proc-PO-069, DMM2-Proc-Delv-7454 |  | 21d |
|  | SDS1 | **Dry Networks** |  | 2026-01-06 | 2026-10-10 |  |  |  |
|  | MV | **Medium Voltage Network** |  | 2026-01-06 | 2026-10-10 |  |  |  |
| DMM2-Proc-Delv-4698 |  | Manuf. & Delivery for MV Cables Materials | 9.91d | 2026-01-06 A | 2026-01-17 A | DMM2-Proc-PO-082, DMM2-Proc-Delv-2958 | 100% |  |
| DMM2-Proc-Delv-4728 |  | Manuf. & Delivery for RMU Materials | 146d | 2026-04-17 A | 2026-10-10 | DMM2-Proc-PO-085, DMM2-Proc-Delv-2988 SS | 80% | 96d |
| DMM2-Proc-Delv-4718 |  | Manuf. & Delivery for Unit Substation Materials | 145d | 2026-04-19 A | 2026-10-10 | DMM2-Proc-PO-084, DMM2-Proc-Delv-6438, DMM2-Proc-Delv-2978 SS | 80% | 96d |
|  | LV | **Low Voltage Network** |  | 2026-03-11 | 2026-10-10 |  |  |  |
| DMM2-Proc-Delv-4738 |  | Manuf. & Delivery for LV Cables Materials | 147.44d | 2026-03-11 A | 2026-09-10 A | DMM2-Proc-PO-086, DMM2-Proc-Delv-2998, DMM2-Proc-Delv-2648 SS | 100% |  |
| DMM2-Proc-Delv-7199 |  | Manuf. & Delivery for LV Panels Materials | 153d | 2026-04-09 A | 2026-10-10 | DMM2-Proc-PO-209, DMM2-Proc-Delv-2998 | 80% | 70d |
| DMM2-Proc-Delv-4748 |  | Manuf. & Delivery for LV Pillars Materials | 149d | 2026-04-14 A | 2026-10-10 | DMM2-Proc-PO-087 | 80% | 70d |
|  | Telecom | **Telecommunication Network** |  | 2026-01-21 | 2026-04-05 |  |  |  |
| DMM2-Proc-Delv-4758 |  | Manuf. & Delivery for HDPE Ducts Materials | 9d | 2026-01-21 A | 2026-02-01 A | DMM2-Proc-PO-088, DMM2-Proc-Delv-3018 | 100% |  |
| DMM2-Proc-Delv-4768 |  | Manuf. & Delivery for Manholes Type 1&2 Materials | 14d | 2026-03-15 A | 2026-04-05 A | DMM2-Proc-PO-089, DMM2-Proc-Delv-3028 | 100% |  |
|  | SL | **Street Lighting** |  | 2026-02-10 | 2026-10-10 |  |  |  |
| DMM2-Proc-Delv-4798 |  | Manuf. & Delivery for SL Poles Materials | 181.75d | 2026-02-10 A | 2026-09-28 | DMM2-Proc-PO-092, DMM2-Proc-Delv-3058 | 90% | 106d |
| DMM2-Proc-Delv-4778 |  | Manuf. & Delivery for SL Pillars Materials | 165d | 2026-03-26 A | 2026-10-10 | DMM2-Proc-PO-090, DMM2-Proc-Delv-3038 SS, DMM2-Proc-Delv-7199 SS | 90% | 96d |
| DMM2-Proc-Delv-4788 |  | Manuf. & Delivery for SL Cables Materials | 144d | 2026-04-08 A | 2026-09-28 | DMM2-Proc-PO-091, DMM2-Proc-Delv-3048, DMM2-Proc-Delv-3048 FF | 90% | 106d |
| DMM2-Proc-Delv-4808 |  | Manuf. & Delivery for SL Luminares Materials | 141d | 2026-04-12 A | 2026-09-28 | DMM2-Proc-PO-093, DMM2-Proc-Delv-3068 SS | 90% | 106d |
|  | Zone 04 | **Zone 04** |  | 2025-12-09 | 2026-10-15 |  |  |  |
|  | SDS | **Wet Networks & Stations** |  | 2025-12-09 | 2026-10-15 |  |  |  |
|  | Sewer | **Sewerage Network** |  | 2026-01-10 | 2026-04-16 |  |  |  |
| DMM2-Proc-Delv-7108 |  | Manuf. & Delivery for GRP Pipes Materials | 72.6d | 2026-01-10 A | 2026-04-16 A | DMM2-Proc-Delv-5368 | 100% |  |
| DMM2-Proc-Delv-7118 |  | Manuf. & Delivery for Inlet Manholes Materials | 4.88d | 2026-03-04 A | 2026-03-11 A | DMM2-Proc-PO-013, DMM2-Proc-Delv-5378 | 100% |  |
|  | Storm | **Storm Network** |  | 2026-01-26 | 2026-10-04 |  |  |  |

| ID | WBS | Task | Duration | Start | Finish | Predecessors | Complete | Total float |
| --- | --- | --- | --- | --- | --- | --- | --- | --- |
| DMM2-Proc-Delv-5728 |  | Manuf. & Delivery for GRP Pipes Materials | 33.65d | 2026-01-26 A | 2026-03-12 A | DMM2-Proc-Delv-3988 | 100% |  |
| DMM2-Proc-Delv-5748 |  | Manuf. & Delivery for Inlet Manholes Materials | 151.67d | 2026-03-30 A | 2026-09-28 | DMM2-Proc-PO-013, DMM2-Proc-Delv-4008 | 90% | 45d |
| DMM2-Proc-Delv-5758 |  | Manuf. & Delivery for Concrete Chambers & Catch Basin Materials | 142d | 2026-04-16 A | 2026-10-04 | DMM2-Proc-Delv-5748 FF | 40% | 40d |
|  | Potable | **Potable Network** |  | 2026-01-31 | 2026-09-19 |  |  |  |
| DMM2-Proc-Delv-5818 |  | Manuf. & Delivery for HDPE Pipes Materials | 62.53d | 2026-01-31 A | 2026-04-26 A | DMM2-Proc-PO-020, DMM2-Proc-Delv-4078 | 100% |  |
| DMM2-Proc-Delv-5828 |  | Manuf. & Delivery for Valves Materials | 67.72d | 2026-03-09 A | 2026-06-07 A | DMM2-Proc-PO-021, DMM2-Proc-Delv-4088 | 100% |  |
| DMM2-Proc-Delv-5838 |  | Manuf. & Delivery for Valves Chambers Materials | 86.4d | 2026-06-10 A | 2026-09-19 | DMM2-Proc-PO-022, DMM2-Proc-Delv-4098 SS | 80% | 113d |
|  | Fire Fighting | **Fire Fighting Network** |  | 2026-02-05 | 2026-09-19 |  |  |  |
| DMM2-Proc-Delv-5888 |  | Manuf. & Delivery for HDPE Pipes Materials | 55.8d | 2026-02-05 A | 2026-04-23 A | DMM2-Proc-PO-027, DMM2-Proc-Delv-4148 | 100% |  |
| DMM2-Proc-Delv-5898 |  | Manuf. & Delivery for Valves Materials | 24.75d | 2026-02-08 A | 2026-03-16 A | DMM2-Proc-PO-028, DMM2-Proc-Delv-4158 | 100% |  |
| DMM2-Proc-Delv-7178 |  | Manuf. & Delivery for Fire Hydrant Materials | 51.45d | 2026-04-01 A | 2026-06-04 A | DMM2-Proc-PO-158, DMM2-Proc-Delv-5438 | 100% |  |
| DMM2-Proc-Delv-5908 |  | Manuf. & Delivery for Valves Chambers Materials | 87d | 2026-06-10 A | 2026-09-19 | DMM2-Proc-PO-029, DMM2-Proc-Delv-4168 SS | 80% | 87d |
|  | TSE | **TSE Network** |  | 2025-12-09 | 2026-10-15 |  |  |  |
| DMM2-Proc-Delv-5858 |  | Manuf. & Delivery for HDPE Pipes Materials | 235.61d | 2025-12-09 A | 2026-09-17 | DMM2-Proc-PO-024, DMM2-Proc-Delv-4118 | 90% | 11d |
| DMM2-Proc-Delv-5878 |  | Manuf. & Delivery for Valves Materials | 157.38d | 2026-03-18 A | 2026-09-17 | DMM2-Proc-PO-026, DMM2-Proc-Delv-4138 | 80% | 114d |
| DMM2-Proc-Delv-5868 |  | Manuf. & Delivery for Solenoid Primary Control Valves Materials | 25d | 2026-09-16 | 2026-10-15 | DMM2-Proc-PO-025, DMM2-Proc-Delv-4118 |  | 44d |
|  | SDS1 | **Dry Networks** |  | 2026-01-15 | 2026-10-10 |  |  |  |
|  | MV | **Medium Voltage Network** |  | 2026-01-15 | 2026-10-10 |  |  |  |
| DMM2-Proc-Delv-6438 |  | Manuf. & Delivery for MV Cables Materials | 0.25d | 2026-01-15 A | 2026-01-17 A | DMM2-Proc-PO-082, DMM2-Proc-Delv-4698 | 100% |  |
| DMM2-Proc-Delv-6458 |  | Manuf. & Delivery for Unit Substation Materials | 192.75d | 2026-02-09 A | 2026-10-10 | DMM2-Proc-PO-084, DMM2-Proc-Delv-4718 SS | 80% | 93d |
| DMM2-Proc-Delv-6468 |  | Manuf. & Delivery for RMU Materials | 192.75d | 2026-02-09 A | 2026-10-10 | DMM2-Proc-PO-085, DMM2-Proc-Delv-4728 SS | 80% | 26d |
|  | LV | **Low Voltage Network** |  | 2026-04-25 | 2026-09-10 |  |  |  |
| DMM2-Proc-Delv-6478 |  | Manuf. & Delivery for LV Cables Materials | 115.19d | 2026-04-25 A | 2026-09-10 A | DMM2-Proc-PO-086, DMM2-Proc-Delv-4738, DMM2-Proc-Delv-4578 SS | 100% |  |
|  | Telecom | **Telecommunication Network** |  | 2026-01-21 | 2026-04-15 |  |  |  |
| DMM2-Proc-Delv-6498 |  | Manuf. & Delivery for HDPE Ducts Materials | 9d | 2026-01-21 A | 2026-02-01 A | DMM2-Proc-PO-088, DMM2-Proc-Delv-4758 | 100% |  |
| DMM2-Proc-Delv-6508 |  | Manuf. & Delivery for Manholes Type 1&2 Materials | 3d | 2026-04-13 A | 2026-04-15 A | DMM2-Proc-PO-089, DMM2-Proc-Delv-4768 | 100% |  |
|  | SL | **Street Lighting** |  | 2026-02-03 | 2026-10-10 |  |  |  |
| DMM2-Proc-Delv-6548 |  | Manuf. & Delivery for SL Luminares Materials | 187.75d | 2026-02-03 A | 2026-09-28 | DMM2-Proc-PO-093, DMM2-Proc-Delv-4808 SS | 90% | 90d |
| DMM2-Proc-Delv-6538 |  | Manuf. & Delivery for SL Poles Materials | 179d | 2026-02-13 A | 2026-09-28 | DMM2-Proc-PO-092, DMM2-Proc-Delv-4798 SS | 90% | 106d |
| DMM2-Proc-Delv-6528 |  | Manuf. & Delivery for SL Cables Materials | 162.25d | 2026-02-17 A | 2026-09-12 A | DMM2-Proc-PO-091, DMM2-Proc-Delv-4788 SS | 100% |  |
| DMM2-Proc-Delv-6518 |  | Manuf. & Delivery for SL Pillars Materials | 71d | 2026-07-19 A | 2026-10-10 | DMM2-Proc-PO-090, DMM2-Proc-Delv-4748 SS, DMM2-Proc-Delv-4778 SS | 50% | 87d |
|  | Short Lead | **Short Lead Items** |  | 2025-10-05 | 2026-12-09 |  |  |  |
|  | Zone 01 | **Zone 01** |  | 2025-10-05 | 2026-12-09 |  |  |  |
|  | Site Grading | **Earth & Road Works** |  | 2025-10-05 | 2026-11-03 |  |  |  |
| DMM2-Proc-Delv-7200 |  | Manuf. & Delivery for Embankment & Backfilling Materials | 37.38d | 2025-10-05 A | 2025-11-17 A | DMM2-Proc-PO-01, DMM2-Eng-PQ-238, DMM2-Eng-SD-02, DMM2-Eng-PQ-208 | 100% |  |
| DMM2-Proc-Delv-7203 |  | Manuf. & Delivery for Subgrade Materials | 128.24d | 2025-11-18 A | 2026-04-29 A | DMM2-Proc-PO-04, DMM2-Proc-Delv-7200 | 100% |  |
| DMM2-Proc-Delv-7201 |  | Manuf. & Delivery for Agg. Base Coarse | 143.76d | 2026-05-03 A | 2026-10-22 | DMM2-Proc-PO-02, DMM2-Proc-Delv-7203 | 90% | 85d |
| DMM2-Proc-Delv-7202 |  | Manuf. & Delivery for Asphalt Materials | 149.76d | 2026-06-02 A | 2026-10-27 | DMM2-Proc-PO-03, DMM2-Proc-Delv-7201 SS | 40% | 22d |
| DMM2-Proc-Delv-7204 |  | Manuf. & Delivery for Curbstone Materials | 31d | 2026-08-26 A | 2026-10-04 | DMM2-Proc-PO-05, DMM2-Proc-Delv-7205 FF |  | 27d |
| DMM2-Proc-Delv-7205 |  | Manuf. & Delivery for Interlock Materials | 15d | 2026-09-16 | 2026-10-04 | DMM2-Proc-PO-06 |  | 7d |
| DMM2-Proc-Delv-7206 |  | Manuf. & Delivery for Pavement Markings Materials | 10d | 2026-10-05 | 2026-10-15 | DMM2-Proc-PO-07, DMM2-Proc-Delv-7204, DMM2-Proc-Delv-7200 |  | 35d |
| DMM2-Proc-Delv-7209 |  | Manuf. & Delivery for ground Mounted Information Signs Materials | 10d | 2026-10-08 | 2026-10-19 | DMM2-Proc-PO-010 |  | 74d |
| DMM2-Proc-Delv-7208 |  | Manuf. & Delivery for Traffic Signs Materials | 10d | 2026-10-17 | 2026-10-27 | DMM2-Proc-PO-09, DMM2-Proc-Delv-7206 |  | 35d |
| DMM2-Proc-Delv-7207 |  | Manuf. & Delivery for Wheels Stopper (precast concrete) Materials | 2d | 2026-11-02 | 2026-11-03 | DMM2-Proc-PO-08, DMM2-Proc-Delv-7503 FF |  | 71d |
|  | SDS | **Wet Networks & Stations** |  | 2025-12-07 | 2026-10-13 |  |  |  |
|  | Storm | **Storm Network** |  | 2025-12-07 | 2025-12-18 |  |  |  |
| DMM2-Proc-Delv-7213 |  | Manuf. & Delivery for uPVC Pipes Materials | 10.42d | 2025-12-07 A | 2025-12-18 A | DMM2-Proc-PO-015, DMM2-Proc-PO-014 | 100% |  |
|  | TSE | **TSE Network** |  | 2026-09-27 | 2026-10-13 |  |  |  |
| DMM2-Proc-Delv-7256 |  | Manuf. & Delivery for Dripper Materials | 15d | 2026-09-27 | 2026-10-13 | DMM2-Proc-Delv-648 FF+3d |  | 28d |
| DMM2-Proc-Delv-7257 |  | Manuf. & Delivery for Bubbler Materials | 15d | 2026-09-27 | 2026-10-13 | DMM2-Proc-Delv-648 FF+3d |  | 34d |
| DMM2-Proc-Delv-7258 |  | Manuf. & Delivery for Pull Box Materials | 15d | 2026-09-27 | 2026-10-13 | DMM2-Proc-Delv-648 FF+3d |  | 27d |
| DMM2-Proc-Delv-7259 |  | Manuf. & Delivery for Two Wire Decoder Cable 12 awg Materials | 15d | 2026-09-27 | 2026-10-13 | DMM2-Proc-Delv-648 FF+3d |  | 25d |
|  | SDS1 | **Dry Networks** |  | 2026-09-29 | 2026-10-07 |  |  |  |
|  | MV | **Medium Voltage Network** |  |  |  |  |  |  |
|  | SL | **Street Lighting** |  | 2026-09-29 | 2026-10-07 |  |  |  |
| DMM2-Proc-Delv-7240 |  | Manuf. & Delivery for SL Earthing Materials | 5d | 2026-09-29 | 2026-10-04 | DMM2-Proc-PO-094, DMM2-Proc-PO-0147, DMM2-Proc-PO-0140, DMM2-Proc-PO-0127, DMM2-Proc-PO-0111, DMM2-Proc-PO-055, DMM2-Proc-PO-0139, DMM2-Proc-PO-0126 |  | 91d |
| DMM2-Proc-Delv-7241 |  | Manuf. & Delivery for SL Drawpits Materials | 4d | 2026-10-04 | 2026-10-07 | DMM2-Proc-PO-095, DMM2-Proc-PO-0105, DMM2-Proc-PO-053, DMM2-Proc-PO-0129, DMM2-Proc-PO-0130, DMM2-Proc-PO-0128, DMM2-Proc-PO-198, DMM2-Proc-PO-0123, DMM2-Proc-PO-0104, DMM2-Proc-PO-0121, DMM2-Proc-PO-0135, DMM2-Proc-PO-051, DMM2-Proc-PO-0122, DMM2-Proc-PO-0120, DMM2-Proc-PO-0103, DMM2-Proc-PO-0134, DMM2-Proc-PO-0133, DMM2-Proc-PO-0148, DMM2-Proc-PO-0142 |  | 88d |
|  | Landscape | **Landscape Works** |  | 2026-09-16 | 2026-12-09 |  |  |  |
| DMM2-Proc-Delv-7242 |  | Manuf. & Delivery for Trees Materials | 30d | 2026-09-16 | 2026-10-21 | DMM2-Proc-PO-096 |  | 29d |
| DMM2-Proc-Delv-7244 |  | Manuf. & Delivery for Geotextile Layers Materials | 30d | 2026-09-16 | 2026-10-21 | DMM2-Proc-PO-098 |  | 7d |
| DMM2-Proc-Delv-7246 |  | Manuf. & Delivery for Large Shrubs Materials | 12d | 2026-09-16 | 2026-09-30 | DMM2-Proc-PO-0100 |  | 39d |
| DMM2-Proc-Delv-7248 |  | Manuf. & Delivery for Gravel/Stone Mulch Materials | 20d | 2026-09-16 | 2026-10-10 | DMM2-Proc-PO-0102 |  | 17d |
| DMM2-Proc-Delv-7252 |  | Manuf. & Delivery for Vehicle and Pedestrian Steel Gate Materials | 30d | 2026-09-19 | 2026-10-24 | DMM2-Proc-PO-0106, DMM2-Proc-PO-097 |  | 8d |
| DMM2-Proc-Delv-7251 |  | Manuf. & Delivery for Vehicle Steel Gate Materials | 10d | 2026-10-25 | 2026-11-04 | DMM2-Proc-PO-0105, DMM2-Proc-Delv-7252, DMM2-Proc-PO-095 |  | 12d |
| DMM2-Proc-Delv-7245 |  | Manuf. & Delivery for Plastic edge Materials | 10d | 2026-10-31 | 2026-11-10 | DMM2-Proc-PO-099, DMM2-Proc-Delv-7334 |  | 7d |
| DMM2-Proc-Delv-7250 |  | Manuf. & Delivery Prepare & Submit for Fences (MODON) Materials | 10d | 2026-11-05 | 2026-11-16 | DMM2-Proc-PO-0104, DMM2-Proc-Delv-7251, DMM2-Proc-PO-095 |  | 12d |
| DMM2-Proc-Delv-7247 |  | Manuf. & Delivery for Plants Materials | 15d | 2026-11-11 | 2026-11-28 | DMM2-Proc-PO-0101, DMM2-Proc-Delv-7245, DMM2-Proc-Delv-7541 |  | 10d |
| DMM2-Proc-Delv-7249 |  | Manuf. & Delivery for Fences (ZATCA HCIS) Materials | 10d | 2026-11-17 | 2026-11-28 | DMM2-Proc-PO-0103, DMM2-Proc-Delv-7250 |  | 12d |
| DMM2-Proc-Delv-7243 |  | Manuf. & Delivery for Ornamental Grasses Materials | 10d | 2026-11-29 | 2026-12-09 | DMM2-Proc-PO-097, DMM2-Proc-Delv-7247, DMM2-Proc-Delv-7328, DMM2-Proc-PO-0106 |  | 12d |
|  | Zone 02 | **Zone 02** |  | 2025-10-22 | 2026-12-03 |  |  |  |

| ID | WBS | Task | Duration | Start | Finish | Predecessors | Complete | Total float |
| --- | --- | --- | --- | --- | --- | --- | --- | --- |
|  | Site Grading | **Earth & Road Works** |  | 2025-10-22 | 2026-11-08 |  |  |  |
| DMM2-Proc-Delv-7263 |  | Manuf. & Delivery for Embankment & Backfilling Materials | 113.7d | 2025-10-22 A | 2026-03-09 A | DMM2-Proc-PO-01, DMM2-Proc-Delv-7200 | 100% |  |
| DMM2-Proc-Delv-7266 |  | Manuf. & Delivery for Subgrade Materials | 112.86d | 2025-12-07 A | 2026-04-29 A | DMM2-Proc-PO-04, DMM2-Proc-Delv-7203 | 100% |  |
| DMM2-Proc-Delv-7264 |  | Manuf. & Delivery for Agg. Base Coarse | 111.76d | 2026-05-12 A | 2026-09-24 | DMM2-Proc-PO-02, DMM2-Proc-Delv-7201 SS | 30% | 109d |
| DMM2-Proc-Delv-7267 |  | Manuf. & Delivery for Curbstone Materials | 8d | 2026-10-05 | 2026-10-13 | DMM2-Proc-PO-05, DMM2-Proc-Delv-7204 |  | 27d |
| DMM2-Proc-Delv-7268 |  | Manuf. & Delivery for Interlock Materials | 15d | 2026-10-05 | 2026-10-21 | DMM2-Proc-PO-06, DMM2-Proc-Delv-7205 |  | 7d |
| DMM2-Proc-Delv-7265 |  | Manuf. & Delivery for Asphalt Materials | 10d | 2026-10-17 | 2026-10-27 | DMM2-Proc-PO-03, DMM2-Proc-Delv-7202 FF |  | 22d |
| DMM2-Proc-Delv-7269 |  | Manuf. & Delivery for Pavement Markings Materials | 10d | 2026-10-17 | 2026-10-27 | DMM2-Proc-PO-07, DMM2-Proc-Delv-7206 |  | 35d |
| DMM2-Proc-Delv-7272 |  | Manuf. & Delivery for ground Mounted Information Signs Materials | 10d | 2026-10-20 | 2026-10-31 | DMM2-Proc-PO-010, DMM2-Proc-Delv-7209 |  | 74d |
| DMM2-Proc-Delv-7271 |  | Manuf. & Delivery for Traffic Signs Materials | 10d | 2026-10-28 | 2026-11-08 | DMM2-Proc-PO-09, DMM2-Proc-Delv-7208 |  | 35d |
| DMM2-Proc-Delv-7270 |  | Manuf. & Delivery for Wheels Stopper (precast concrete) Materials | 2d | 2026-11-02 | 2026-11-03 | DMM2-Proc-PO-08, DMM2-Proc-Delv-7207 SS |  | 71d |
|  | SDS | **Wet Networks & Stations** |  | 2025-12-09 | 2026-11-01 |  |  |  |
|  | Storm | **Storm Network** |  | 2025-12-09 | 2026-10-07 |  |  |  |
| DMM2-Proc-Delv-7277 |  | Manuf. & Delivery for uPVC Pipes Materials | 231.18d | 2025-12-09 A | 2026-09-22 | DMM2-Proc-Delv-7213 | 78% | 110d |
| DMM2-Proc-Delv-7274 |  | Manuf. & Delivery for Steel Reinforcement Materials | 116d | 2026-05-20 A | 2026-10-07 | DMM2-Proc-PO-012 | 40% | 98d |
|  | TSE | **TSE Network** |  | 2026-10-03 | 2026-10-13 |  |  |  |
| DMM2-Proc-Delv-7382 |  | Manuf. & Delivery for Pull Box Materials | 10d | 2026-10-03 | 2026-10-13 | DMM2-Proc-Delv-7258 FF |  | 27d |
| DMM2-Proc-Delv-7383 |  | Manuf. & Delivery for Two Wire Decoder Cable 12 awg Materials | 10d | 2026-10-03 | 2026-10-13 | DMM2-Proc-Delv-7259 FF |  | 25d |
| DMM2-Proc-Delv-7380 |  | Manuf. & Delivery for Dripper Materials | 7d | 2026-10-06 | 2026-10-13 | DMM2-Proc-Delv-7256 FF |  | 28d |
| DMM2-Proc-Delv-7381 |  | Manuf. & Delivery for Bubbler Materials | 7d | 2026-10-06 | 2026-10-13 | DMM2-Proc-Delv-7257 FF |  | 34d |
|  | Pot Pump St. | **Potable Water Pump Station** |  | 2026-09-19 | 2026-11-01 |  |  |  |
|  | 1 | **Civil & Architecture** |  | 2026-09-19 | 2026-10-20 |  |  |  |
| DMM2-Proc-Delv-7293 |  | Manuf. & Delivery for CMU Walls Materials | 3d | 2026-09-19 | 2026-09-21 | DMM2-Proc-PO-031 |  | 17d |
| DMM2-Proc-Delv-7297 |  | Manuf. & Delivery for Gravel Materials | 2d | 2026-09-19 | 2026-09-20 | DMM2-Proc-PO-035 |  | 52d |
| DMM2-Proc-Delv-7294 |  | Manuf. & Delivery for Stainless Steel Ladder Materials | 15d | 2026-09-22 | 2026-10-10 | DMM2-Proc-PO-032, DMM2-Proc-Delv-2648 |  | 20d |
| DMM2-Proc-Delv-7298 |  | Manuf. & Delivery for Handrail Materials | 15d | 2026-09-24 | 2026-10-11 | DMM2-Proc-PO-036 |  | 3d |
| DMM2-Proc-Delv-7292 |  | Manuf. & Delivery for Stairs Materials | 8d | 2026-10-04 | 2026-10-12 | DMM2-Proc-PO-030, DMM2-Proc-Delv-2648, DMM2-Proc-Delv-2528 |  | 18d |
| DMM2-Proc-Delv-7295 |  | Manuf. & Delivery for Steel shutter Door Materials | 15d | 2026-10-04 | 2026-10-20 | DMM2-Proc-PO-033, DMM2-Proc-PO-178, DMM2-Proc-PO-049 |  | 17d |
| DMM2-Proc-Delv-7296 |  | Manuf. & Delivery for Metal Railing Materials | 8d | 2026-10-12 | 2026-10-20 | DMM2-Proc-PO-034, DMM2-Proc-Delv-7295 FF |  | 17d |
|  | 3 | **Mechanical** |  | 2026-09-19 | 2026-11-01 |  |  |  |
| DMM2-Proc-Delv-7304 |  | Manuf. & Delivery for Sand Trap Louver Materials | 10d | 2026-09-19 | 2026-09-30 | DMM2-Proc-PO-042 |  | 9d |
| DMM2-Proc-Delv-7393 |  | Manuf. & Delivery for Fans Materials | 10d | 2026-09-19 | 2026-09-30 | DMM2-Proc-PO-188, DMM2-Proc-PO-069 |  | 22d |
| DMM2-Proc-Delv-7312 |  | Manuf. & Delivery for Trench Drain Materials | 6d | 2026-09-26 | 2026-10-01 | DMM2-Proc-PO-050 |  | 40d |
| DMM2-Proc-Delv-7306 |  | Manuf. & Delivery for Hose Bibb Materials | 10d | 2026-09-27 | 2026-10-07 | DMM2-Proc-PO-044, DMM2-Proc-PO-056 |  | 36d |
| DMM2-Proc-Delv-7308 |  | Manuf. & Delivery for Chlorine Cylinder Racks Materials | 20d | 2026-09-27 | 2026-10-19 | DMM2-Proc-PO-046, DMM2-Proc-Delv-2648 |  | 4d |
| DMM2-Proc-Delv-7309 |  | Manuf. & Delivery for Chlorinators Materials | 8d | 2026-09-29 | 2026-10-07 | DMM2-Proc-PO-047, DMM2-Proc-Delv-2648 |  | 16d |
| DMM2-Proc-Delv-7310 |  | Manuf. & Delivery for Discharge Line Analyzer Materials | 9d | 2026-10-01 | 2026-10-11 | DMM2-Proc-PO-048, DMM2-Proc-Delv-2648 |  | 13d |
| DMM2-Proc-Delv-7394 |  | Manuf. & Delivery for Louvers Materials | 15d | 2026-10-01 | 2026-10-18 | DMM2-Proc-PO-198, DMM2-Proc-Delv-7393, DMM2-Proc-PO-095 |  | 32d |
| DMM2-Proc-Delv-7305 |  | Manuf. & Delivery for FM200 Supression System Materials | 15d | 2026-10-04 | 2026-10-20 | DMM2-Proc-PO-043, DMM2-Proc-Delv-2648, DMM2-Proc-Delv-7304, DMM2-Proc-Delv-3748, DMM2-Proc-Delv-3758 |  | 7d |
| DMM2-Proc-Delv-7311 |  | Manuf. & Delivery for Emergency shower Materials | 10d | 2026-10-04 | 2026-10-14 | DMM2-Proc-PO-049, DMM2-Proc-PO-178, DMM2-Proc-PO-014 |  | 32d |
| DMM2-Proc-Delv-7307 |  | Manuf. & Delivery for Exhaust Fans Materials | 10d | 2026-10-12 | 2026-10-22 | DMM2-Proc-PO-045, DMM2-Proc-Delv-7298 |  | 3d |
| DMM2-Proc-Delv-7303 |  | Manuf. & Delivery for Strainers Materials | 10d | 2026-10-21 | 2026-11-01 | DMM2-Proc-PO-041, DMM2-Proc-Delv-7296 |  | 17d |
|  | 2 | **Electrical** |  | 2026-10-19 | 2026-10-24 |  |  |  |
| DMM2-Proc-Delv-7396 |  | Manuf. & Delivery for Switches and Circuit Breakers Materials | 5d | 2026-10-19 | 2026-10-24 | DMM2-Proc-PO-051, DMM2-Proc-Delv-7394, DMM2-Proc-PO-095 |  | 32d |
|  | SDS1 | **Dry Networks** |  |  |  |  |  |  |
|  | MV | **Medium Voltage Network** |  |  |  |  |  |  |
|  | SL | **Street Lighting** |  |  |  |  |  |  |
|  | Landscape | **Landscape Works** |  | 2026-10-01 | 2026-12-03 |  |  |  |
| DMM2-Proc-Delv-7332 |  | Manuf. & Delivery for Large Shrubs Materials | 3d | 2026-10-01 | 2026-10-04 | DMM2-Proc-PO-0100, DMM2-Proc-Delv-7246, DMM2-Proc-Delv-7540 |  | 39d |
| DMM2-Proc-Delv-7328 |  | Manuf. & Delivery for Trees Materials | 15d | 2026-10-22 | 2026-11-08 | DMM2-Proc-PO-096, DMM2-Proc-Delv-7242, DMM2-Proc-Delv-7246 |  | 29d |
| DMM2-Proc-Delv-7330 |  | Manuf. & Delivery for Geotextile Layers Materials | 10d | 2026-10-22 | 2026-11-02 | DMM2-Proc-PO-098, DMM2-Proc-Delv-7244 |  | 11d |
| DMM2-Proc-Delv-7334 |  | Manuf. & Delivery for Gravel/Stone Mulch Materials | 7d | 2026-10-22 | 2026-10-29 | DMM2-Proc-PO-0102, DMM2-Proc-Delv-7248, DMM2-Proc-Delv-7244 |  | 7d |
| DMM2-Proc-Delv-7338 |  | Manuf. & Delivery for Vehicle and Pedestrian Steel Gate Materials | 10d | 2026-10-25 | 2026-11-04 | DMM2-Proc-PO-0106, DMM2-Proc-Delv-7252 |  | 8d |
| DMM2-Proc-Delv-7337 |  | Manuf. & Delivery for Vehicle Steel Gate Materials | 10d | 2026-11-05 | 2026-11-16 | DMM2-Proc-PO-0105, DMM2-Proc-Delv-7251 |  | 16d |
| DMM2-Proc-Delv-7331 |  | Manuf. & Delivery for Plastic edge Materials | 10d | 2026-11-11 | 2026-11-22 | DMM2-Proc-PO-099, DMM2-Proc-Delv-7245 |  | 7d |
| DMM2-Proc-Delv-7335 |  | Manuf. & Delivery for Fences (ZATCA HCIS) Materials | 15d | 2026-11-17 | 2026-12-03 | DMM2-Proc-PO-0103, DMM2-Proc-Delv-7249 SS |  | 12d |
| DMM2-Proc-Delv-7336 |  | Manuf. & Delivery for Fences (MODON) Materials | 15d | 2026-11-17 | 2026-12-03 | DMM2-Proc-PO-0104, DMM2-Proc-Delv-7250 SS, DMM2-Proc-Delv-7249 SS |  | 12d |
| DMM2-Proc-Delv-7329 |  | Manuf. & Delivery for Ornamental Grasses Materials | 3d | 2026-11-29 | 2026-12-01 | DMM2-Proc-PO-097, DMM2-Proc-Delv-7243 SS |  | 12d |
| DMM2-Proc-Delv-7333 |  | Manuf. & Delivery for Plants Materials | 5d | 2026-11-29 | 2026-12-03 | DMM2-Proc-PO-0101, DMM2-Proc-Delv-7247, DMM2-Proc-Delv-7331 |  | 10d |
|  | Guard Room | **Guard Rooms** |  | 2026-09-16 | 2026-10-27 |  |  |  |
|  | GR MAT Civil | **Civil & Architecture** |  | 2026-09-16 | 2026-10-18 |  |  |  |
| DMM2-Proc-Delv-7343 |  | Manuf. & Delivery for Water proofing Membrane Materials | 5d | 2026-09-16 | 2026-09-21 | DMM2-Proc-PO-0115 |  | 46d |
| DMM2-Proc-Delv-7342 |  | Manuf. & Delivery for Fluid-Applied Water Proofing Paint Materials | 3d | 2026-09-19 | 2026-09-21 | DMM2-Proc-PO-0114 |  | 44d |
| DMM2-Proc-Delv-7345 |  | Manuf. & Delivery for Porcelain Flooring Tiles Materials | 15d | 2026-09-19 | 2026-10-06 | DMM2-Proc-PO-0117 |  | 21d |
| DMM2-Proc-Delv-7344 |  | Manuf. & Delivery for Concrete Masonry Materials | 5d | 2026-09-22 | 2026-09-28 | DMM2-Proc-Delv-7293 |  | 17d |
| DMM2-Proc-Delv-7341 |  | Manuf. & Delivery for Board Insulation Materials | 7d | 2026-09-29 | 2026-10-06 | DMM2-Proc-PO-0113, DMM2-Proc-Delv-7344 |  | 17d |
| DMM2-Proc-Delv-7339 |  | Manuf. & Delivery for Stone Coping Materials | 3d | 2026-10-07 | 2026-10-10 | DMM2-Proc-PO-0108, DMM2-Proc-Delv-7341, DMM2-Proc-PO-0110 |  | 18d |
| DMM2-Proc-Delv-7340 |  | Manuf. & Delivery for Vapor Retarders Materials | 5d | 2026-10-07 | 2026-10-12 | DMM2-Proc-PO-0112, DMM2-Proc-Delv-7345, DMM2-Proc-Delv-7343, B8.31 23 16.019 |  | 34d |
| DMM2-Proc-Delv-7346 |  | Manuf. & Delivery for gypsum Board Suspended Ceiling Materials | 3d | 2026-10-07 | 2026-10-10 | DMM2-Proc-PO-0118, DMM2-Proc-Delv-7341 |  | 31d |
| DMM2-Proc-Delv-7348 |  | Manuf. & Delivery for Raised Floor System Materials | 3d | 2026-10-07 | 2026-10-10 | DMM2-Proc-PO-0120, DMM2-Proc-Delv-7341, DMM2-Proc-PO-095 |  | 31d |

| ID | WBS | Task | Duration | Start | Finish | Predecessors | Complete | Total float |
| --- | --- | --- | --- | --- | --- | --- | --- | --- |
| DMM2-Proc-Delv-7349 |  | Manuf. & Delivery for Steel Doors Materials | 5d | 2026-10-07 | 2026-10-12 | DMM2-Proc-PO-0121, DMM2-Proc-Delv-7345, DMM2-Proc-PO-095 |  | 29d |
| DMM2-Proc-Delv-7351 |  | Manuf. & Delivery for Aluminum Windows Materials | 3d | 2026-10-07 | 2026-10-10 | DMM2-Proc-PO-0123, DMM2-Proc-Delv-7341, DMM2-Proc-PO-095 |  | 24d |
| DMM2-Proc-Delv-7347 |  | Manuf. & Delivery for Painting Materials | 2d | 2026-10-11 | 2026-10-12 | DMM2-Proc-PO-0119 SS, DMM2-Proc-Delv-7346, DMM2-Proc-Delv-7340 SS, B8.31 23 16.019 |  | 31d |
| DMM2-Proc-Delv-7350 |  | Manuf. & Delivery for Wood Doors Materials | 5d | 2026-10-13 | 2026-10-18 | DMM2-Proc-PO-0122, DMM2-Proc-Delv-7349, DMM2-Proc-PO-095 |  | 29d |
|  | GR MAT Mech | **Mechanical** |  | 2026-09-16 | 2026-10-22 |  |  |  |
| DMM2-Proc-Delv-7353 |  | Manuf. & Delivery for uPVC Pipes Materials | 2d | 2026-09-16 | 2026-09-17 | DMM2-Proc-PO-0125 |  | 8d |
| DMM2-Proc-Delv-7360 |  | Manuf. & Delivery for Manhole Materials | 3d | 2026-09-16 | 2026-09-19 | DMM2-Proc-PO-0132 |  | 25d |
| DMM2-Proc-Delv-7354 |  | Manuf. & Delivery for PPR Pipes Materials | 3d | 2026-09-19 | 2026-09-21 | DMM2-Proc-PO-0126 |  | 13d |
| DMM2-Proc-Delv-7356 |  | Manuf. & Delivery for Scupper Materials | 3d | 2026-09-19 | 2026-09-21 | DMM2-Proc-PO-0128, B8.31 23 16.0111, DMM2-Proc-PO-095 |  | 17d |
| DMM2-Proc-Delv-7358 |  | Manuf. & Delivery for Floor Drain Materials | 2d | 2026-09-22 | 2026-09-24 | DMM2-Proc-PO-0130, DMM2-Proc-Delv-7354, DMM2-Proc-PO-069, DMM2-Proc-PO-095, DMM2-Proc-PO-014 |  | 19d |
| DMM2-Proc-Delv-7357 |  | Manuf. & Delivery for Clean out Materials | 1d | 2026-09-26 | 2026-09-26 | DMM2-Proc-PO-0129 |  | 16d |
| DMM2-Proc-Delv-7362 |  | Manuf. & Delivery for Toilet Materials | 3d | 2026-10-01 | 2026-10-04 | DMM2-Proc-PO-0134, DMM2-Proc-PO-095 |  | 35d |
| DMM2-Proc-Delv-7361 |  | Manuf. & Delivery for Shower Materials | 2d | 2026-10-05 | 2026-10-06 | DMM2-Proc-PO-0133, DMM2-Proc-Delv-7363 SS, DMM2-Proc-PO-095 |  | 35d |
| DMM2-Proc-Delv-7363 |  | Manuf. & Delivery for Semi Pedestal Sink Materials | 2d | 2026-10-05 | 2026-10-06 | DMM2-Proc-PO-0135, DMM2-Proc-Delv-7356, DMM2-Proc-Delv-7362, DMM2-Proc-PO-095 |  | 35d |
| DMM2-Proc-Delv-7352 |  | Manuf. & Delivery for Exhaust Axial Fans Materials | 3d | 2026-10-11 | 2026-10-13 | DMM2-Proc-PO-0124, DMM2-Proc-Delv-7339, DMM2-Proc-PO-0125 |  | 18d |
| DMM2-Proc-Delv-7364 |  | Manuf. & Delivery for Fire Extinguishers (CO2 & Powder) Materials | 3d | 2026-10-12 | 2026-10-14 | DMM2-Proc-PO-0136, DMM2-Proc-Delv-7371 |  | 17d |
| DMM2-Proc-Delv-7359 |  | Manuf. & Delivery for Electrical Water Heater Materials | 5d | 2026-10-15 | 2026-10-20 | DMM2-Proc-PO-0131, DMM2-Proc-Delv-7364, DMM2-Proc-Delv-7370, DMM2-Proc-Delv-7352 |  | 17d |
| DMM2-Proc-Delv-7355 |  | Manuf. & Delivery for DX Wall Mounted Split/AC Materials | 2d | 2026-10-21 | 2026-10-22 | DMM2-Proc-PO-0127, DMM2-Proc-Delv-7359, DMM2-Proc-PO-094 |  | 17d |
|  | GR MAT Elec | **Electrical** |  | 2026-09-19 | 2026-10-27 |  |  |  |
| DMM2-Proc-Delv-7370 |  | Manuf. & Delivery for Enclosed Switches and Circuit Breakers Materials | 3d | 2026-09-19 | 2026-09-21 | DMM2-Proc-PO-0142, DMM2-Proc-PO-095 |  | 36d |
| DMM2-Proc-Delv-7367 |  | Manuf. & Delivery for Lighting Materials | 5d | 2026-09-29 | 2026-10-04 | DMM2-Proc-PO-0139, DMM2-Proc-Delv-7344, DMM2-Proc-PO-094 |  | 41d |
| DMM2-Proc-Delv-7368 |  | Manuf. & Delivery for Wiring Devices Materials | 4d | 2026-09-29 | 2026-10-03 | DMM2-Proc-PO-0140, DMM2-Proc-Delv-7344, DMM2-Proc-PO-0141, DMM2-Proc-PO-094 |  | 27d |
| DMM2-Proc-Delv-7369 |  | Manuf. & Delivery for Ground Wires, Rods, Pits, Clamping Materials | 4d | 2026-09-29 | 2026-10-03 | DMM2-Proc-PO-0141, DMM2-Proc-Delv-7344, DMM2-Eng-PQ-1548, DMM2-Proc-PO-0140 |  | 35d |
| DMM2-Proc-Delv-7375 |  | Manuf. & Delivery for PC Workstation Materials | 2d | 2026-10-04 | 2026-10-05 | DMM2-Proc-PO-0147, DMM2-Proc-Delv-7369, DMM2-Proc-PO-094 |  | 35d |
| DMM2-Proc-Delv-7366 |  | Manuf. & Delivery for Low Voltage Cable Materials | 4d | 2026-10-07 | 2026-10-11 | DMM2-Proc-PO-0138, DMM2-Proc-Delv-7341, DMM2-Proc-PO-0137, DMM2-Proc-PO-071 |  | 23d |
| DMM2-Proc-Delv-7371 |  | Manuf. & Delivery for Fire Alarm System Materials | 4d | 2026-10-07 | 2026-10-11 | DMM2-Proc-PO-0143, DMM2-Proc-Delv-7341 |  | 17d |
| DMM2-Proc-Delv-7376 |  | Manuf. & Delivery for 50 inch Screen Materials | 3d | 2026-10-11 | 2026-10-13 | DMM2-Proc-PO-0148, DMM2-Proc-Delv-7339, DMM2-Proc-Delv-7375, DMM2-Proc-PO-095 |  | 31d |
| DMM2-Proc-Delv-7374 |  | Manuf. & Delivery for Data/ Voice RJ45 Outlet Materials | 3d | 2026-10-12 | 2026-10-14 | DMM2-Proc-PO-0146, DMM2-Proc-Delv-7371 |  | 23d |
| DMM2-Proc-Delv-7373 |  | Manuf. & Delivery for Data Cabinet Materials | 5d | 2026-10-15 | 2026-10-20 | DMM2-Proc-PO-0145, DMM2-Proc-Delv-7374 |  | 23d |
| DMM2-Proc-Delv-7365 |  | Manuf. & Delivery for Panelboards Materials | 1d | 2026-10-27 | 2026-10-27 | DMM2-Proc-PO-0137, DMM2-Proc-Delv-3838, DMM2-Proc-PO-0138 |  | 10d |
|  | Zone 03 | **Zone 03** |  | 2025-11-03 | 2026-11-11 |  |  |  |
|  | Site Grading | **Earth & Road Works** |  | 2025-11-03 | 2026-11-11 |  |  |  |
| DMM2-Proc-Delv-7403 |  | Manuf. & Delivery for Embankment & Backfilling Materials | 135.75d | 2025-11-03 A | 2026-04-22 A | DMM2-Proc-PO-01, DMM2-Proc-Delv-7263 | 100% |  |
| DMM2-Proc-Delv-7406 |  | Manuf. & Delivery for Subgrade Materials | 101.77d | 2025-12-19 A | 2026-04-29 A | DMM2-Proc-PO-04, DMM2-Proc-Delv-7266 | 100% |  |
| DMM2-Proc-Delv-7404 |  | Manuf. & Delivery for Agg. Base Coarse | 112.76d | 2026-05-10 A | 2026-09-22 | DMM2-Proc-PO-02, DMM2-Proc-Delv-7264 SS | 40% | 110d |
| DMM2-Proc-Delv-7405 |  | Manuf. & Delivery for Asphalt Materials | 98.26d | 2026-06-06 A | 2026-09-29 | DMM2-Proc-PO-03, DMM2-Proc-Delv-7500, DMM2-Proc-Delv-7498 SS | 30% | 7.5d |
| DMM2-Proc-Delv-7408 |  | Manuf. & Delivery for Interlock Materials | 15d | 2026-09-16 | 2026-10-04 | DMM2-Proc-PO-06 |  | 4d |
| DMM2-Proc-Delv-7407 |  | Manuf. & Delivery for Curbstone Materials | 5d | 2026-09-29 | 2026-10-05 | DMM2-Proc-PO-05, DMM2-Proc-Delv-7405 |  | 8.5d |
| DMM2-Proc-Delv-7412 |  | Manuf. & Delivery for ground Mounted Information Signs Materials | 5d | 2026-10-08 | 2026-10-13 | DMM2-Proc-PO-010 |  | 8d |
| DMM2-Proc-Delv-7409 |  | Manuf. & Delivery for Pavement Markings Materials | 4d | 2026-10-28 | 2026-11-01 | DMM2-Proc-PO-07, DMM2-Proc-Delv-7269 |  | 35d |
| DMM2-Proc-Delv-7410 |  | Manuf. & Delivery for Wheels Stopper (precast concrete) Materials | 2d | 2026-11-02 | 2026-11-03 | DMM2-Proc-PO-08, DMM2-Proc-Delv-7270 SS |  | 71d |
| DMM2-Proc-Delv-7411 |  | Manuf. & Delivery for Traffic Signs Materials | 3d | 2026-11-09 | 2026-11-11 | DMM2-Proc-PO-09, DMM2-Proc-Delv-7271, DMM2-Proc-Delv-7501 |  | 35d |
|  | SDS | **Wet Networks & Stations** |  | 2026-01-12 | 2026-10-31 |  |  |  |
|  | Storm | **Storm Network** |  | 2026-05-18 | 2026-09-24 |  |  |  |
| DMM2-Proc-Delv-7417 |  | Manuf. & Delivery for uPVC Pipes Materials | 104.41d | 2026-05-18 A | 2026-09-22 | DMM2-Proc-Delv-7277 SS | 80% | 110.8d |
| DMM2-Proc-Delv-7414 |  | Manuf. & Delivery for Steel Reinforcement Materials | 99d | 2026-06-01 A | 2026-09-24 | DMM2-Proc-Delv-7274 SS | 50% | 109d |
|  | TSE | **TSE Network** |  | 2026-10-14 | 2026-10-31 |  |  |  |
| DMM2-Proc-Delv-7490 |  | Manuf. & Delivery for Dripper Materials | 7d | 2026-10-14 | 2026-10-21 | DMM2-Proc-Delv-7380, B3.1. 33 14 13-4 |  | 28d |
| DMM2-Proc-Delv-7491 |  | Manuf. & Delivery for Bubbler Materials | 15d | 2026-10-14 | 2026-10-31 | DMM2-Proc-Delv-7381 |  | 34d |
| DMM2-Proc-Delv-7492 |  | Manuf. & Delivery for Pull Box Materials | 15d | 2026-10-14 | 2026-10-31 | DMM2-Proc-Delv-7382 |  | 27d |
| DMM2-Proc-Delv-7493 |  | Manuf. & Delivery for Two Wire Decoder Cable 12 awg Materials | 15d | 2026-10-14 | 2026-10-31 | DMM2-Proc-Delv-7383 |  | 25d |
|  | Sewer Lift St. | **Sewer Lift Station** |  | 2026-01-12 | 2026-10-17 |  |  |  |
|  | 1 | **Civil & Architecture** |  | 2026-09-19 | 2026-10-15 |  |  |  |
| DMM2-Proc-Delv-7432 |  | Manuf. & Delivery for Metal Ladders Materials | 3d | 2026-09-19 | 2026-09-21 | DMM2-Proc-PO-052 |  | 33d |
| DMM2-Proc-Delv-7434 |  | Manuf. & Delivery for Internal painting (Acrylic) Materials | 4d | 2026-09-21 | 2026-09-26 | DMM2-Proc-PO-054, DMM2-Proc-PO-056 |  | 27d |
| DMM2-Proc-Delv-7435 |  | Manuf. & Delivery for Signages Materials | 3d | 2026-10-11 | 2026-10-13 | DMM2-Proc-PO-055, DMM2-Proc-Delv-7434, DMM2-Proc-Delv-4598, DMM2-Proc-PO-094 |  | 21d |
| DMM2-Proc-Delv-7433 |  | Manuf. & Delivery for Metal Covers Materials | 2d | 2026-10-14 | 2026-10-15 | DMM2-Proc-PO-053, DMM2-Proc-Delv-7435, DMM2-Proc-PO-095 |  | 21d |
|  | 3 | **Mechanical** |  | 2026-01-12 | 2026-10-17 |  |  |  |
| DMM2-Proc-Delv-7439 |  | Manuf. & Delivery for Geotextile Membrane Materials | 211d | 2026-01-12 A | 2026-10-03 | DMM2-Proc-PO-059 | 30% | 24d |
| DMM2-Proc-Delv-7445 |  | Manuf. & Delivery for Penstock Materials | 15d | 2026-09-16 | 2026-10-04 | DMM2-Proc-PO-065 |  | 33d |
| DMM2-Proc-Delv-7447 |  | Manuf. & Delivery for Scupper Materials | 20d | 2026-09-19 | 2026-10-12 | DMM2-Proc-PO-067, DMM2-Proc-PO-013 |  | 27d |
| DMM2-Proc-Delv-7446 |  | Manuf. & Delivery for Screening Container Materials | 4d | 2026-10-13 | 2026-10-17 | DMM2-Proc-PO-066, DMM2-Proc-Delv-4458 |  | 20d |
|  | 2 | **Electrical** |  | 2026-09-16 | 2026-10-14 |  |  |  |
| DMM2-Proc-Delv-7454 |  | Manuf. & Delivery for Under Ground Fuel Tank Materials | 20d | 2026-09-16 | 2026-10-10 | DMM2-Proc-PO-074 |  | 21d |
| DMM2-Proc-Delv-7456 |  | Manuf. & Delivery for Electrical Hand Holes Materials | 3d | 2026-09-19 | 2026-09-21 | DMM2-Proc-PO-076, DMM2-Proc-Delv-7432 SS |  | 33d |
| DMM2-Proc-Delv-7457 |  | Manuf. & Delivery for Galvanized Steel Pole Materials | 3d | 2026-09-19 | 2026-09-21 | DMM2-Proc-PO-077, DMM2-Proc-Delv-7456 SS |  | 33d |
| DMM2-Proc-Delv-7458 |  | Manuf. & Delivery for Surfaced Mounted Light (LED) Materials | 3d | 2026-09-19 | 2026-09-21 | DMM2-Proc-PO-078, DMM2-Proc-Delv-7457 SS, DMM2-Proc-PO-080 |  | 33d |
| DMM2-Proc-Delv-7460 |  | Manuf. & Delivery for Process Control Wiring Materials | 2d | 2026-10-05 | 2026-10-06 | DMM2-Proc-PO-080, DMM2-Proc-Delv-7461 SS, DMM2-Proc-PO-078 |  | 45d |
| DMM2-Proc-Delv-7461 |  | Manuf. & Delivery for Instrumentation for Process Systems Materials | 9d | 2026-10-05 | 2026-10-14 | DMM2-Proc-PO-081, DMM2-Proc-Delv-4668 |  | 41d |
|  | SDS1 | **Dry Networks** |  |  |  |  |  |  |

| ID | WBS | Task | Duration | Start | Finish | Predecessors | Complete | Total float |
| --- | --- | --- | --- | --- | --- | --- | --- | --- |
|  | MV | **Medium Voltage Network** |  |  |  |  |  |  |
|  | SL | **Street Lighting** |  |  |  |  |  |  |
|  | Zone 04 | **Zone 04** |  | 2025-11-07 | 2026-11-09 |  |  |  |
|  | Site Grading | **Earth & Road Works** |  | 2025-11-07 | 2026-11-03 |  |  |  |
| DMM2-Proc-Delv-7497 |  | Manuf. & Delivery for Embankment & Backfilling Materials | 34.7d | 2025-11-07 A | 2025-12-17 A | DMM2-Proc-PO-01, DMM2-Proc-Delv-7403 | 100% |  |
| DMM2-Proc-Delv-7500 |  | Manuf. & Delivery for Subgrade Materials | 105.4d | 2025-12-15 A | 2026-04-29 A | DMM2-Proc-PO-04, DMM2-Proc-Delv-7406 | 100% |  |
| DMM2-Proc-Delv-7498 |  | Manuf. & Delivery for Agg. Base Coarse | 95.96d | 2026-06-04 A | 2026-09-26 | DMM2-Proc-PO-02, DMM2-Proc-Delv-7404 SS | 10% | 108.8d |
| DMM2-Proc-Delv-7499 |  | Manuf. & Delivery for Asphalt Materials | 7d | 2026-09-29 | 2026-10-07 | DMM2-Proc-PO-03, DMM2-Proc-Delv-7405 |  | 7.5d |
| DMM2-Proc-Delv-7501 |  | Manuf. & Delivery for Curbstone Materials | 8d | 2026-10-05 | 2026-10-14 | DMM2-Proc-PO-05, DMM2-Proc-Delv-7407 |  | 8.5d |
| DMM2-Proc-Delv-7502 |  | Manuf. & Delivery for Interlock Materials | 8d | 2026-10-07 | 2026-10-17 | DMM2-Proc-PO-06, DMM2-Proc-Delv-7408, DMM2-Proc-Delv-7499 |  | 7.5d |
| DMM2-Proc-Delv-7506 |  | Manuf. & Delivery for ground Mounted Information Signs Materials | 5d | 2026-10-14 | 2026-10-19 | DMM2-Proc-PO-010, DMM2-Proc-Delv-7412 |  | 8d |
| DMM2-Proc-Delv-7505 |  | Manuf. & Delivery for Traffic Signs Materials | 3d | 2026-10-17 | 2026-10-20 | DMM2-Proc-PO-09, DMM2-Proc-Delv-7502 |  | 7.5d |
| DMM2-Proc-Delv-7503 |  | Manuf. & Delivery for Pavement Markings Materials | 2d | 2026-11-02 | 2026-11-03 | DMM2-Proc-PO-07, DMM2-Proc-Delv-7409 |  | 35d |
| DMM2-Proc-Delv-7504 |  | Manuf. & Delivery for Wheels Stopper (precast concrete) Materials | 2d | 2026-11-02 | 2026-11-03 | DMM2-Proc-PO-08, DMM2-Proc-Delv-7410 SS |  | 71d |
|  | SDS | **Wet Networks & Stations** |  | 2026-04-30 | 2026-11-04 |  |  |  |
|  | Storm | **Storm Network** |  | 2026-04-30 | 2026-09-29 |  |  |  |
| DMM2-Proc-Delv-7510 |  | Manuf. & Delivery for uPVC Pipes Materials | 124.61d | 2026-04-30 A | 2026-09-29 | DMM2-Proc-Delv-7417 SS | 60% | 105.6d |
|  | TSE | **TSE Network** |  | 2026-10-31 | 2026-11-04 |  |  |  |
| DMM2-Proc-Delv-7554 |  | Manuf. & Delivery for Bubbler Materials | 1d | 2026-10-31 | 2026-10-31 | DMM2-Proc-Delv-7491 FF |  | 34d |
| DMM2-Proc-Delv-7556 |  | Manuf. & Delivery for Two Wire Decoder Cable 12 awg Materials | 1d | 2026-10-31 | 2026-10-31 | DMM2-Proc-Delv-7493 FF |  | 25d |
| DMM2-Proc-Delv-7555 |  | Manuf. & Delivery for Pull Box Materials | 4d | 2026-11-01 | 2026-11-04 | DMM2-Proc-Delv-7492 |  | 27d |
|  | SDS1 | **Dry Networks** |  |  |  |  |  |  |
|  | MV | **Medium Voltage Network** |  |  |  |  |  |  |
|  | SL | **Street Lighting** |  |  |  |  |  |  |
|  | Landscape | **Landscape Works** |  | 2026-09-16 | 2026-11-09 |  |  |  |
| DMM2-Proc-Delv-7540 |  | Manuf. & Delivery for Ornamental Grasses Materials | 3d | 2026-09-16 | 2026-09-19 | DMM2-Proc-PO-097 |  | 48d |
| DMM2-Proc-Delv-7543 |  | Manuf. & Delivery for Large Shrubs Materials | 3d | 2026-09-16 | 2026-09-19 | DMM2-Proc-PO-0100 |  | 51d |
| DMM2-Proc-Delv-7539 |  | Manuf. & Delivery for Trees Materials | 3d | 2026-10-22 | 2026-10-25 | DMM2-Proc-PO-096, DMM2-Proc-Delv-7242 |  | 39d |
| DMM2-Proc-Delv-7541 |  | Manuf. & Delivery for Geotextile Layers Materials | 6d | 2026-11-03 | 2026-11-09 | DMM2-Proc-PO-098, DMM2-Proc-Delv-7330 |  | 11d |
|  | Construction | **Construction** |  | 2025-09-06 | 2026-12-21 |  |  |  |
| Mil.Cons.Fin |  | Construction - Finish Milstone | 0d | 2026-12-21 | 2026-12-21 | Prov.Sum 01 FF |  | 0d |
|  | Prior | **Zonewise Survey Works** |  | 2025-09-06 | 2025-11-01 |  |  |  |
| DMM2-Cons-Surv-Z01 |  | Control Points, Benchmarks & Coordinations - Zone 01 | 8d | 2025-09-06 A | 2025-09-14 A | DMM2-Mob-34, DMM2-Mob-09, DMM2-Mob-08, DMM2-Mob-022 | 100% |  |
| DMM2-Cons-Surv-Z02 |  | Control Points, Benchmarks & Coordinations - Zone 02 | 6d | 2025-09-22 A | 2025-09-29 A | DMM2-Cons-Surv-Z01 | 100% |  |
| DMM2-Cons-Surv-Z03 |  | Control Points, Benchmarks & Coordinations - Zone 03 | 5.62d | 2025-10-12 A | 2025-10-18 A | DMM2-Cons-Surv-Z02 | 100% |  |
| DMM2-Cons-Surv-Z04 |  | Control Points, Benchmarks & Coordinations - Zone 04 | 6.88d | 2025-10-25 A | 2025-11-01 A | DMM2-Cons-Surv-Z03 | 100% |  |
|  | Zone 01 | **Zone 01** |  | 2025-09-18 | 2026-11-30 |  |  |  |
|  | Dewatering | **Earthworks & Site Grading** |  | 2025-09-18 | 2026-09-30 |  |  |  |
| B1.1.31 23 19.01 |  | Dewatering | 16d | 2025-09-18 A | 2025-10-07 A | DMM2-Cons-Surv-Z01, DMM2-Mob-01 | 100% |  |
| B1.1.31 23 16.01 |  | Excavation (all types of soil) | 281.99d | 2025-10-09 A | 2026-09-20 | B1.1.31 23 19.01 | 92% | 112.01d |
| B1.1.31 23 23.01 |  | Engineering Backfiling - Road 01 - Part 01 | 42.72d | 2025-10-14 A | 2025-12-02 A | B1.1.31 23 16.01 SS | 100% |  |
| B1.1.31 23 23.22 |  | Engineering Backfiling - Service Road | 279d | 2025-10-22 A | 2026-09-30 | B1.1.31 23 23.01, B1.1.31 23 23.32 | 12% | 13d |
| B1.1.31 23 23.32 |  | Engineering Backfiling - Road 01 - Part 02 | 35.43d | 2025-10-25 A | 2025-12-04 A | B1.1.31 23 23.01 | 100% |  |
|  | RD 01 | **Road 01** |  | 2025-11-11 | 2026-11-12 |  |  |  |
|  | Wet Networks | **Wet Networks** |  | 2025-11-11 | 2026-11-10 |  |  |  |
|  | Sewerage Network | **Sewerage Network** |  | 2025-11-11 | 2026-09-20 |  |  |  |
|  | GRP | **GRP Pipes** |  | 2025-11-11 | 2026-03-15 |  |  |  |
|  | 200 | **?200** |  | 2025-11-11 | 2026-03-15 |  |  |  |
|  | 3 | **Depth From 1.5m to 2.5m** |  | 2025-11-11 | 2026-03-11 |  |  |  |
| B5.33 31 00.02.021 |  | Excavation | 43.19d | 2025-11-11 A | 2025-12-31 A | B1.1.31 23 23.32 | 100% |  |
| B5.33 31 00.02.022 |  | Sand Bedding | 21.99d | 2025-12-06 A | 2025-12-31 A | B5.33 31 00.02.021 | 100% |  |
| B5.33 31 00.02.023 |  | Pipe Laying | 31.08d | 2025-12-09 A | 2026-01-14 A | B5.33 31 00.02.022 | 100% |  |
| B5.33 31 00.02.024 |  | Embedment & Test | 69.66d | 2025-12-14 A | 2026-03-11 A | B5.33 31 00.02.023 | 100% |  |
| B5.33 31 00.02.025 |  | Backfilling & Warrning Tape | 54.66d | 2025-12-25 A | 2026-03-04 A | B5.33 31 00.02.024 | 100% |  |
|  | 2 | **Depth From 2.5m to 3.5m** |  | 2026-01-04 | 2026-03-14 |  |  |  |
| B5.33 31 00.02.031 |  | Excavation | 6.85d | 2026-01-04 A | 2026-01-11 A | B5.33 31 00.02.021 | 100% |  |
| B5.33 31 00.02.032 |  | Sand Bedding | 5.85d | 2026-01-06 A | 2026-01-12 A | B5.33 31 00.02.031 | 100% |  |
| B5.33 31 00.02.033 |  | Pipe Laying | 29.17d | 2026-01-08 A | 2026-02-11 A | B5.33 31 00.02.032 | 100% |  |
| B5.33 31 00.02.034 |  | Embedment & Test | 48.29d | 2026-01-10 A | 2026-03-14 A | B5.33 31 00.02.033 | 100% |  |
| B5.33 31 00.02.035 |  | Backfilling & Warrning Tape | 44.8d | 2026-01-12 A | 2026-03-11 A | B5.33 31 00.02.034 | 100% |  |
|  | 1 | **Depth From 3.5m to 4.5m** |  | 2026-01-05 | 2026-03-15 |  |  |  |
| B5.33 31 00.02.041 |  | Excavation | 6.97d | 2026-01-05 A | 2026-01-12 A | B5.33 31 00.02.031 | 100% |  |
| B5.33 31 00.02.042 |  | Sand Bedding | 5.31d | 2026-01-07 A | 2026-01-13 A | B5.33 31 00.02.041 | 100% |  |
| B5.33 31 00.02.043 |  | Pipe Laying | 6.31d | 2026-01-08 A | 2026-01-15 A | B5.33 31 00.02.042 | 100% |  |
| B5.33 31 00.02.044 |  | Embedment & Test | 49.04d | 2026-01-10 A | 2026-03-15 A | B5.33 31 00.02.043 | 100% |  |
| B5.33 31 00.02.045 |  | Backfilling & Warrning Tape | 41.67d | 2026-01-17 A | 2026-03-14 A | B5.33 31 00.02.044, B5.33 31 00.02.034 | 100% |  |
|  | 150 | **?150** |  | 2025-12-18 | 2026-01-04 |  |  |  |
|  | 1 | **Depth From 1.5m to 2.5m** |  | 2025-12-18 | 2026-01-04 |  |  |  |
| B5.33 31 00.01.021 |  | Excavation | 1d | 2025-12-18 A | 2025-12-20 A | B5.33 31 00.02.041 | 100% |  |
| B5.33 31 00.01.022 |  | Sand Bedding | 2.02d | 2025-12-20 A | 2025-12-22 A | B5.33 31 00.01.021 | 100% |  |

| ID | WBS | Task | Duration | Start | Finish | Predecessors | Complete | Total float |
| --- | --- | --- | --- | --- | --- | --- | --- | --- |
| B5.33 31 00.01.023 |  | Pipe Laying | 0.91d | 2025-12-23 A | 2025-12-24 A | B5.33 31 00.01.022 | 100% |  |
| B5.33 31 00.01.024 |  | Embedment & Test | 1.35d | 2025-12-25 A | 2025-12-27 A | B5.33 31 00.01.023 | 100% |  |
| B5.33 31 00.01.025 |  | Backfilling & Warrning Tape | 5.06d | 2025-12-29 A | 2026-01-04 A | B5.33 31 00.01.024, B5.33 31 00.02.025, B5.33 31 00.02.035 | 100% |  |
|  | Manholes | **Manholes ?1200** |  | 2025-11-12 | 2026-09-20 |  |  |  |
|  | 2 | **Depth From 0.0m to 1.5m** |  | 2025-11-12 | 2026-09-19 |  |  |  |
| B5.33 05 13.011 |  | Excavation & Compaction | 48.2d | 2025-11-12 A | 2026-01-07 A | B5.33 31 00.01.021 | 100% |  |
| B5.33 05 13.012 |  | Blinding Conc, & RC Base | 1.5d | 2026-02-25 A | 2026-02-26 A | B5.33 05 13.011 | 100% |  |
| B5.33 05 13.013 |  | Manhole Installation | 4d | 2026-03-18 A | 2026-03-28 A | B5.33 05 13.012 | 100% |  |
| B5.33 05 13.014 |  | Test, Internal Finishing, Benching & Cover | 93.04d | 2026-06-03 A | 2026-09-19 | B5.33 05 13.013 | 43% | 113d |
| B5.33 05 13.015 |  | Backfilling | 5d | 2026-06-11 A | 2026-06-17 A | B5.33 05 13.014 SS | 100% |  |
|  | 3 | **Depth From 1.5m to 2.5m** |  | 2025-12-18 | 2026-09-20 |  |  |  |
| B5.33 05 13.021 |  | Excavation & Compaction | 23.2d | 2025-12-18 A | 2026-01-14 A | B5.33 05 13.011 | 100% |  |
| B5.33 05 13.022 |  | Blinding Conc, & RC Base | 2.25d | 2026-02-25 A | 2026-02-28 A | B5.33 05 13.021 | 100% |  |
| B5.33 05 13.023 |  | Manhole Installation | 2d | 2026-04-01 A | 2026-04-02 A | B5.33 05 13.022 | 100% |  |
| B5.33 05 13.024 |  | Test, Internal Finishing, Benching & Cover | 93.04d | 2026-06-03 A | 2026-09-20 | B5.33 05 13.023 | 43% | 112.96d |
| B5.33 05 13.025 |  | Backfilling | 5d | 2026-06-11 A | 2026-06-17 A | B5.33 05 13.024 SS | 100% |  |
|  | 4 | **Depth From 2.5m to 3.5m** |  | 2025-12-21 | 2026-09-20 |  |  |  |
| B5.33 05 13.031 |  | Excavation & Compaction | 24.2d | 2025-12-21 A | 2026-01-18 A | B5.33 05 13.021 | 100% |  |
| B5.33 05 13.032 |  | Blinding Conc, & RC Base | 2.25d | 2026-02-28 A | 2026-03-02 A | B5.33 05 13.031 | 100% |  |
| B5.33 05 13.033 |  | Manhole Installation | 2d | 2026-04-08 A | 2026-04-09 A | B5.33 05 13.032 | 100% |  |
| B5.33 05 13.034 |  | Test, Internal Finishing, Benching & Cover | 93.04d | 2026-06-03 A | 2026-09-20 | B5.33 05 13.033 | 43% | 112.96d |
| B5.33 05 13.035 |  | Backfilling | 5d | 2026-06-11 A | 2026-06-17 A | B5.33 05 13.025, B5.33 31 00.02.035, B5.33 05 13.034 SS | 100% |  |
|  | 4 | **Depth From 2.5m to 3.5m Backdrop** |  | 2026-01-07 | 2026-09-20 |  |  |  |
| B5.33 05 13.041 |  | Excavation & Compaction | 1d | 2026-01-07 A | 2026-01-08 A | B5.33 05 13.031 | 100% |  |
| B5.33 05 13.042 |  | Blinding Conc, & RC Base | 3d | 2026-04-15 A | 2026-04-18 A | B5.33 05 13.041 | 100% |  |
| B5.33 05 13.043 |  | Manhole Installation | 55.5d | 2026-04-18 A | 2026-06-25 A | B5.33 05 13.042 | 100% |  |
| B5.33 05 13.044 |  | Test, Internal Finishing, Benching & Cover | 92.24d | 2026-06-03 A | 2026-09-20 | B5.33 05 13.043 | 43% | 112.96d |
| B5.33 05 13.045 |  | Backfilling | 5d | 2026-06-11 A | 2026-06-17 A | B5.33 31 00.02.045, B5.33 05 13.035, B5.33 05 13.044 SS | 100% |  |
|  | 1 | **Depth From 3.5m to 4.5m** |  | 2026-01-03 | 2026-09-20 |  |  |  |
| B5.33 05 13.051 |  | Excavation & Compaction | 1d | 2026-01-03 A | 2026-01-04 A | B5.33 05 13.041 | 100% |  |
| B5.33 05 13.052 |  | Blinding Conc, & RC Base | 1.5d | 2026-03-04 A | 2026-03-05 A | B5.33 05 13.051 | 100% |  |
| B5.33 05 13.053 |  | Manhole Installation | 5d | 2026-04-22 A | 2026-04-27 A | B5.33 05 13.052 | 100% |  |
| B5.33 05 13.054 |  | Test, Internal Finishing, Benching & Cover | 93.04d | 2026-06-03 A | 2026-09-20 | B5.33 05 13.053 | 43% | 112.96d |
| B5.33 05 13.055 |  | Backfilling | 5d | 2026-06-11 A | 2026-06-17 A | B5.33 05 13.045, B5.33 05 13.054 SS | 100% |  |
|  | 1 | **Depth From 3.5m to 4.5m Backdrop** |  | 2026-01-05 | 2026-09-20 |  |  |  |
| B5.33 05 13.061 |  | Excavation & Compaction | 1d | 2026-01-05 A | 2026-01-06 A | B5.33 05 13.051 | 100% |  |
| B5.33 05 13.062 |  | Blinding Conc, & RC Base | 20.25d | 2026-04-29 A | 2026-05-23 A | B5.33 05 13.061 | 100% |  |
| B5.33 05 13.063 |  | Manhole Installation | 20.5d | 2026-04-30 A | 2026-05-24 A | B5.33 05 13.062 | 100% |  |
| B5.33 05 13.064 |  | Test, Internal Finishing, Benching & Cover | 93.04d | 2026-06-03 A | 2026-09-20 | B5.33 05 13.063 | 43% | 112.96d |
| B5.33 05 13.065 |  | Backfilling | 5d | 2026-06-11 A | 2026-06-17 A | B5.33 05 13.055, B5.33 05 13.064 SS | 100% |  |
|  | Storm | **Storm Network** |  | 2025-12-15 | 2026-09-19 |  |  |  |
|  | GRP | **GRP** |  | 2025-12-15 | 2026-03-30 |  |  |  |
|  | ?400 | **?400** |  | 2025-12-15 | 2026-03-12 |  |  |  |
|  | 3 | **Depth From 1.5m to 2.5m** |  | 2025-12-15 | 2026-03-12 |  |  |  |
| B6.33 42 11.021 |  | Excavation | 3.09d | 2025-12-15 A | 2025-12-18 A | B5.33 05 13.015 | 100% |  |
| B6.33 42 11.022 |  | Sand Bedding | 2d | 2025-12-18 A | 2025-12-21 A | B6.33 42 11.021 | 100% |  |
| B6.33 42 11.023 |  | Pipe Laying | 21.29d | 2025-12-21 A | 2026-01-14 A | B6.33 42 11.022 | 100% |  |
| B6.33 42 11.024 |  | Embedment & Test | 21d | 2025-12-22 A | 2026-01-15 A | B6.33 42 11.023 | 100% |  |
| B6.33 42 11.025 |  | Backfilling & Warrning Tape | 61.33d | 2025-12-24 A | 2026-03-12 A | B6.33 42 11.024 | 100% |  |
|  | ?4001 | **?500** |  | 2025-12-18 | 2026-03-22 |  |  |  |
|  | 3 | **Depth From 1.5m to 2.5m** |  | 2025-12-18 | 2026-03-18 |  |  |  |
| B6.33 42 11.041 |  | Excavation | 22.85d | 2025-12-18 A | 2026-01-14 A | B6.33 42 11.021 | 100% |  |
| B6.33 42 11.042 |  | Sand Bedding | 23.25d | 2025-12-21 A | 2026-01-17 A | B6.33 42 11.041 | 100% |  |
| B6.33 42 11.043 |  | Pipe Laying | 22d | 2025-12-24 A | 2026-01-19 A | B6.33 42 11.042 | 100% |  |
| B6.33 42 11.044 |  | Embedment & Test | 58.12d | 2025-12-27 A | 2026-03-11 A | B6.33 42 11.043 | 100% |  |
| B6.33 42 11.045 |  | Backfilling & Warrning Tape | 60.63d | 2025-12-29 A | 2026-03-18 A | B6.33 42 11.044 | 100% |  |
|  | 4 | **Depth From 2.5m to 3.5m** |  | 2026-01-03 | 2026-03-22 |  |  |  |
| B6.33 42 11.051 |  | Excavation | 10.19d | 2026-01-03 A | 2026-01-14 A | B6.33 42 11.041 | 100% |  |
| B6.33 42 11.052 |  | Sand Bedding | 9.5d | 2026-01-06 A | 2026-01-17 A | B6.33 42 11.051 | 100% |  |
| B6.33 42 11.053 |  | Pipe Laying | 32.04d | 2026-01-07 A | 2026-02-14 A | B6.33 42 11.052 | 100% |  |
| B6.33 42 11.054 |  | Embedment & Test | 51.73d | 2026-01-10 A | 2026-03-19 A | B6.33 42 11.053 | 100% |  |
| B6.33 42 11.055 |  | Backfilling & Warrning Tape | 48.73d | 2026-01-13 A | 2026-03-22 A | B6.33 42 11.054 | 100% |  |
|  | ?4002 | **?600** |  | 2026-01-10 | 2026-03-30 |  |  |  |
|  | 3 | **Depth From 1.5m to 2.5m** |  | 2026-01-10 | 2026-03-30 |  |  |  |
| B6.33 42 11.0401 |  | Excavation | 2.01d | 2026-01-10 A | 2026-01-12 A | B6.33 42 11.051 | 100% |  |
| B6.33 42 11.0402 |  | Sand Bedding | 1.01d | 2026-01-12 A | 2026-01-13 A | B6.33 42 11.0401 | 100% |  |
| B6.33 42 11.0403 |  | Pipe Laying | 2.01d | 2026-01-13 A | 2026-01-15 A | B6.33 42 11.0402 | 100% |  |
| B6.33 42 11.0404 |  | Embedment & Test | 43.04d | 2026-01-21 A | 2026-03-25 A | B6.33 42 11.0403 | 100% |  |
| B6.33 42 11.0405 |  | Backfilling & Warrning Tape | 43.05d | 2026-01-26 A | 2026-03-30 A | B6.33 42 11.0404, B6.33 42 11.025 | 100% |  |
|  | ?40021 | **?700** |  | 2026-01-06 | 2026-03-18 |  |  |  |

| ID | WBS | Task | Duration | Start | Finish | Predecessors | Complete | Total float |
| --- | --- | --- | --- | --- | --- | --- | --- | --- |
|  | 4 | **Depth From 2.5m to 3.5m** |  | 2026-01-06 | 2026-03-18 |  |  |  |
| B6.33 42 11.111 |  | Excavation | 2.77d | 2026-01-06 A | 2026-01-10 A | B6.33 42 11.0401 | 100% |  |
| B6.33 42 11.112 |  | Sand Bedding | 1.77d | 2026-01-08 A | 2026-01-11 A | B6.33 42 11.111 | 100% |  |
| B6.33 42 11.113 |  | Pipe Laying | 2.77d | 2026-01-10 A | 2026-01-13 A | B6.33 42 11.112 | 100% |  |
| B6.33 42 11.114 |  | Embedment & Test | 41.29d | 2026-01-21 A | 2026-03-18 A | B6.33 42 11.113 | 100% |  |
| B6.33 42 11.115 |  | Backfilling & Warrning Tape | 35.8d | 2026-01-26 A | 2026-03-16 A | B6.33 42 11.114 | 100% |  |
|  | Strom Manholes | **Manholes** |  | 2025-12-27 | 2026-09-19 |  |  |  |
|  | 1 | **?1200** |  | 2025-12-27 | 2026-09-19 |  |  |  |
|  | 3 | **Depth From 1.5m to 2.5m** |  | 2025-12-27 | 2026-09-19 |  |  |  |
| B6.33 05 13.011 |  | Excavation & Compaction | 1.86d | 2025-12-27 A | 2025-12-28 A | B5.33 05 13.061, B6.33 42 11.021 | 100% |  |
| B6.33 05 13.012 |  | Blinding Conc, & RC Base | 0.75d | 2026-03-18 A | 2026-03-19 A | B6.33 05 13.011 | 100% |  |
| B6.33 05 13.013 |  | Manhole Installation | 12.6d | 2026-06-10 A | 2026-06-24 A | B6.33 05 13.012 | 100% |  |
| B6.33 05 13.014 |  | Test, Internal Finishing, Benching & Cover | 79d | 2026-06-18 A | 2026-09-19 | B6.33 05 13.013 | 90% | 113d |
| B6.33 05 13.015 |  | Backfilling | 10.5d | 2026-06-21 A | 2026-07-02 A | B6.33 05 13.014 SS | 100% |  |
|  | 4 | **Depth From 2.5m to 3.5m** |  | 2026-01-08 | 2026-09-19 |  |  |  |
| B6.33 05 13.021 |  | Excavation & Compaction | 0.48d | 2026-01-08 A | 2026-01-10 A | B6.33 05 13.011 | 100% |  |
| B6.33 05 13.022 |  | Blinding Conc, & RC Base | 1.5d | 2026-03-04 A | 2026-03-05 A | B6.33 05 13.021 | 100% |  |
| B6.33 05 13.023 |  | Manhole Installation | 0.5d | 2026-03-07 A | 2026-03-07 A | B6.33 05 13.022 | 100% |  |
| B6.33 05 13.025 |  | Backfilling | 26.5d | 2026-06-03 A | 2026-07-04 A | B6.33 05 13.024 SS | 100% |  |
| B6.33 05 13.024 |  | Test, Internal Finishing, Benching & Cover | 80d | 2026-06-17 A | 2026-09-19 | B6.33 05 13.023 | 90% | 113d |
|  | 1 | **Depth From 3.5m to 4.5m** |  | 2026-01-28 | 2026-09-19 |  |  |  |
| B6.33 05 13.115 |  | Excavation & Compaction | 2d | 2026-01-28 A | 2026-01-29 A | B6.33 05 13.021 | 100% |  |
| B6.33 05 13.85 |  | Blinding Conc, & RC Base | 6d | 2026-04-19 A | 2026-04-25 A | B6.33 05 13.115 | 100% |  |
| B6.33 05 13.95 |  | Manhole Installation | 19.6d | 2026-06-10 A | 2026-07-02 A | B6.33 05 13.85 | 100% |  |
| B6.33 05 13.105 |  | Test, Internal Finishing, Benching & Cover | 79d | 2026-06-18 A | 2026-09-19 | B6.33 05 13.95 | 90% | 113d |
| B6.33 05 13.125 |  | Backfilling | 12.5d | 2026-06-21 A | 2026-07-05 A | B6.33 05 13.105 SS | 100% |  |
|  | 2 | **?1500** |  | 2026-03-04 | 2026-09-19 |  |  |  |
|  | 3 | **Depth From 1.5m to 2.5m** |  | 2026-03-04 | 2026-09-19 |  |  |  |
| B6.33 05 13.041 |  | Excavation & Compaction | 11.15d | 2026-03-04 A | 2026-03-25 A | B6.33 05 13.115 | 100% |  |
| B6.33 05 13.042 |  | Blinding Conc, & RC Base | 7d | 2026-03-14 A | 2026-03-28 A | B6.33 05 13.041 | 100% |  |
| B6.33 05 13.043 |  | Manhole Installation | 13.6d | 2026-06-10 A | 2026-06-25 A | B6.33 05 13.042 | 100% |  |
| B6.33 05 13.044 |  | Test, Internal Finishing, Benching & Cover | 79d | 2026-06-18 A | 2026-09-19 | B6.33 05 13.043 | 90% | 113d |
| B6.33 05 13.045 |  | Backfilling | 6.5d | 2026-06-22 A | 2026-06-29 A | B6.33 05 13.015, B6.33 05 13.044 SS | 100% |  |
|  | 4 | **Depth From 2.5m to 3.5m** |  | 2026-03-07 | 2026-09-19 |  |  |  |
| B6.33 05 13.051 |  | Excavation & Compaction | 5.38d | 2026-03-07 A | 2026-03-15 A | B6.33 05 13.041 | 100% |  |
| B6.33 05 13.052 |  | Blinding Conc, & RC Base | 2.5d | 2026-03-15 A | 2026-03-18 A | B6.33 05 13.051 | 100% |  |
| B6.33 05 13.053 |  | Manhole Installation | 1d | 2026-03-24 A | 2026-03-25 A | B6.33 05 13.052 | 100% |  |
| B6.33 05 13.054 |  | Test, Internal Finishing, Benching & Cover | 80d | 2026-06-17 A | 2026-09-19 | B6.33 05 13.053 | 90% | 113d |
| B6.33 05 13.055 |  | Backfilling | 4d | 2026-07-02 A | 2026-07-07 A | B6.33 05 13.054 SS | 100% |  |
|  | 3 | **?2000** |  | 2026-01-29 | 2026-09-19 |  |  |  |
|  | 4 | **Depth From 2.5m to 3.5m** |  | 2026-02-01 | 2026-09-19 |  |  |  |
| B6.33 05 13.071 |  | Excavation & Compaction | 2d | 2026-02-01 A | 2026-02-02 A | B6.33 05 13.051 | 100% |  |
| B6.33 05 13.072 |  | Blinding Conc, & RC Base | 3d | 2026-04-04 A | 2026-04-06 A | B6.33 05 13.071 | 100% |  |
| B6.33 05 13.073 |  | Manhole Installation | 18.6d | 2026-06-10 A | 2026-07-01 A | B6.33 05 13.072 | 100% |  |
| B6.33 05 13.074 |  | Test, Internal Finishing, Benching & Cover | 79d | 2026-06-18 A | 2026-09-19 | B6.33 05 13.073 | 90% | 113d |
| B6.33 05 13.075 |  | Backfilling | 11.5d | 2026-06-21 A | 2026-07-04 A | B6.33 05 13.074 SS | 100% |  |
|  | 1 | **Depth From 3.5m to 4.5m** |  | 2026-01-29 | 2026-09-19 |  |  |  |
| B6.33 05 13.081 |  | Excavation & Compaction | 2d | 2026-01-29 A | 2026-01-31 A | B6.33 05 13.071 | 100% |  |
| B6.33 05 13.082 |  | Blinding Conc, & RC Base | 3d | 2026-06-10 A | 2026-06-13 A | B6.33 05 13.081 | 100% |  |
| B6.33 05 13.083 |  | Manhole Installation | 15.6d | 2026-06-14 A | 2026-07-01 A | B6.33 05 13.082 | 100% |  |
| B6.33 05 13.084 |  | Test, Internal Finishing, Benching & Cover | 79d | 2026-06-18 A | 2026-09-19 | B6.33 05 13.083 | 90% | 113d |
| B6.33 05 13.085 |  | Backfilling | 14.5d | 2026-06-20 A | 2026-07-06 A | B6.33 05 13.084 SS, B6.33 05 13.01.06 SS | 100% |  |
|  | Catch Basins | **Catch Basins** |  | 2026-03-04 | 2026-09-19 |  |  |  |
|  | Sing | **Single** |  | 2026-03-23 | 2026-09-19 |  |  |  |
| B6.33 05 63.071 |  | Excavation, Compaction & Vapour Barrier | 50.34d | 2026-03-23 A | 2026-05-21 A | B6.33 05 13.041 | 100% |  |
| B6.33 05 63.073 |  | Blinding Conc. | 2d | 2026-05-21 A | 2026-05-24 A | B6.33 05 63.071 | 100% |  |
| B6.33 05 63.074 |  | Catch Basin Installation | 21.81d | 2026-05-24 A | 2026-06-23 A | B6.33 05 63.073 | 100% |  |
| B6.33 05 63.072 |  | Backfilling, DI Frame & Grate Cover Fixing | 79.85d | 2026-06-17 A | 2026-09-19 | B6.33 05 63.074, B6.33 42 11.351010 | 90% | 113d |
|  | Dou | **Double** |  | 2026-07-29 | 2026-09-19 |  |  |  |
| B6.33 05 63.081 |  | Excavation, Compaction & Vapour Barrier | 22.2d | 2026-07-29 A | 2026-08-24 A | B6.33 05 63.071 | 100% |  |
| B6.33 05 63.083 |  | Blinding Conc. | 23.2d | 2026-08-01 A | 2026-08-27 A | B6.33 05 63.081 | 100% |  |
| B6.33 05 63.084 |  | Catch Basin Installation | 24.3d | 2026-08-02 A | 2026-08-30 A | B6.33 05 63.083 | 100% |  |
| B6.33 05 63.082 |  | Backfilling, DI Frame & Grate Cover Fixing | 40d | 2026-08-03 A | 2026-09-19 | B6.33 05 63.084, B6.33 42 11.361010 | 90% | 0d |
|  | UPVC | **UPVC** |  | 2026-03-04 | 2026-08-25 |  |  |  |
|  | UPVC300 | **?300 From 0.0 to 1.5m** |  | 2026-03-04 | 2026-04-11 |  |  |  |
| B6.33 42 11.351010 |  | Fittings & Pipe Installation | 3d | 2026-03-04 A | 2026-03-09 A | B6.33 42 11.351000 | 100% |  |
| B6.33 42 11.351000 |  | Catch Basin Opening Prep. | 8d | 2026-04-01 A | 2026-04-11 A | B6.33 05 63.074 | 100% |  |
|  | UPVC3001 | **?400 From 0.0 to 1.5m** |  | 2026-04-12 | 2026-08-25 |  |  |  |
| B6.33 42 11.361010 |  | Fittings & Pipe Installation | 105.76d | 2026-04-12 A | 2026-08-18 A | B6.33 42 11.361000 | 100% |  |
| B6.33 42 11.361000 |  | Catch Basin Opening Prep. | 72.1d | 2026-06-02 A | 2026-08-25 A | B6.33 05 63.084 | 100% |  |

| ID | WBS | Task | Duration | Start | Finish | Predecessors | Complete | Total float |
| --- | --- | --- | --- | --- | --- | --- | --- | --- |
|  | Potable | **Potable Network** |  | 2026-02-01 | 2026-09-26 |  |  |  |
|  | HDPE | **HDPE Pipes** |  | 2026-02-01 | 2026-06-28 |  |  |  |
|  | ?110mm | **?110mm** |  | 2026-02-01 | 2026-06-28 |  |  |  |
|  | Depth: 0.0m - 1.5m | **Depth: 0.0m - 1.5m** |  | 2026-02-01 | 2026-06-24 |  |  |  |
| B3.33 14 13.01.011 |  | Excavation | 40.33d | 2026-02-01 A | 2026-04-01 A | B5.33 31 00.02.045, B5.33 05 13.061 | 100% |  |
| B3.33 14 13.01.012 |  | Sand Bedding | 30.37d | 2026-02-14 A | 2026-04-02 A | B3.33 14 13.01.011 | 100% |  |
| B3.33 14 13.01.013 |  | Pipe Laying | 30.62d | 2026-02-16 A | 2026-04-05 A | B3.33 14 13.01.012 | 100% |  |
| B3.33 14 13.01.014 |  | Embedment & Test | 33.76d | 2026-04-12 A | 2026-05-20 A | B3.33 14 13.01.013, B3.33 14 19.01.104 | 100% |  |
| B3.33 14 13.01.015 |  | Backfilling & Warrning Tape | 49.39d | 2026-04-23 A | 2026-06-24 A | B3.33 14 13.01.014, B3.33 14 13.02.15, B3.33 14 19.01.104 | 100% |  |
|  | Depth: 1.51m - 2.5m | **Depth: 1.51m - 2.5m** |  | 2026-02-02 | 2026-06-28 |  |  |  |
| B3.33 14 13.01.021 |  | Excavation | 49.83d | 2026-02-02 A | 2026-04-14 A | B3.33 14 13.01.011 | 100% |  |
| B3.33 14 13.01.022 |  | Sand Bedding | 35.99d | 2026-02-19 A | 2026-04-15 A | B3.33 14 13.01.021 | 100% |  |
| B3.33 14 13.01.023 |  | Pipe Laying | 66.87d | 2026-02-22 A | 2026-05-23 A | B3.33 14 13.01.022 | 100% |  |
| B3.33 14 13.01.024 |  | Embedment & Test | 60.49d | 2026-03-06 A | 2026-05-24 A | B3.33 14 13.01.023, B3.33 14 19.01.104 | 100% |  |
| B3.33 14 13.01.025 |  | Backfilling & Warrning Tape | 83.42d | 2026-03-11 A | 2026-06-28 A | B3.33 14 13.01.024 | 100% |  |
|  | Valves & Chambers | **Valves & Chambers** |  | 2026-02-25 | 2026-09-26 |  |  |  |
|  | GV | **Gate Valves** |  | 2026-02-25 | 2026-09-19 |  |  |  |
|  | 1 | **Gate valves dia (110) mm** |  | 2026-02-25 | 2026-09-19 |  |  |  |
| B3.33 14 19.01.104 |  | Burried Isolation Valve Installation | 24.25d | 2026-02-25 A | 2026-04-05 A | B3.33 14 13.01.023, B3.33 14 13.01.013 | 100% |  |
| B3.33 14 19.01.105 |  | Spindle & Surface Box | 3d | 2026-09-16 | 2026-09-19 | B3.33 14 19.01.104, B3.33 14 13.01.014 |  | 107d |
|  | 2 | **Air Valves** |  | 2026-06-11 | 2026-09-26 |  |  |  |
|  | 4 | **Air valves on less than 315 mm. (In Chamber)** |  | 2026-06-11 | 2026-09-26 |  |  |  |
| B3.33 05 63.02.011 |  | Land Adjustment & Compaction | 2d | 2026-06-11 A | 2026-06-14 A | B1.2.32 11 26.01.1 SS | 100% |  |
| B3.33 05 63.02.012 |  | Foundations | 1d | 2026-06-14 A | 2026-06-15 A | B3.33 05 63.02.011 | 100% |  |
| B3.33 05 63.02.013 |  | Chambers Walls Conc Cast In Situ | 1d | 2026-06-15 A | 2026-06-15 A | B3.33 05 63.02.012, DMM2-Proc-Delv-7414 SS | 100% |  |
| B3.33 05 63.02.014 |  | Chamber Curing, Finishing & Steel Cover | 81d | 2026-06-16 A | 2026-09-19 | B3.33 05 63.02.013 | 50% | 94d |
| B3.33 05 63.02.015 |  | Valve & Fitting Installation | 5d | 2026-09-20 | 2026-09-26 | B3.33 05 63.02.014 |  | 94d |
|  | Crossing | **Plots and Buildings Crossing** |  | 2026-05-20 | 2026-05-25 |  |  |  |
| B3.33 14 13.02.13 |  | Earthwork | 3d | 2026-05-20 A | 2026-05-23 A | B3.33 14 13.01.021 | 100% |  |
| B3.33 14 13.02.14 |  | Sand Bedding | 3d | 2026-05-21 A | 2026-05-24 A | B3.33 14 13.02.13 | 100% |  |
| B3.33 14 13.02.15 |  | Tee, Pipe (Crossing) Installation & Backfilling | 2d | 2026-05-24 A | 2026-05-25 A | B3.33 14 13.02.14 | 100% |  |
|  | Fire Fighting | **Fire Fighting Network** |  | 2026-02-02 | 2026-10-06 |  |  |  |
|  | HDPE | **HDPE Pipes** |  | 2026-02-02 | 2026-09-20 |  |  |  |
|  | ?250mm | **?250mm** |  | 2026-02-02 | 2026-09-20 |  |  |  |
|  | Depth: 0.0m - 1.5m | **Depth: 0.0m - 1.5m** |  | 2026-02-02 | 2026-09-20 |  |  |  |
| B3.1. 33 14 13.011 |  | Excavation | 51.14d | 2026-02-02 A | 2026-04-15 A | B3.33 14 13.01.015, B3.33 14 13.01.025 | 100% |  |
| B3.1. 33 14 13.012 |  | Sand Bedding | 50.85d | 2026-02-09 A | 2026-04-22 A | B3.1. 33 14 13.011 | 100% |  |
| B3.1. 33 14 13.013 |  | Pipe Laying | 38.1d | 2026-02-11 A | 2026-04-09 A | B3.1. 33 14 13.012 | 100% |  |
| B3.1. 33 14 13.014 |  | Embedment & Test | 4d | 2026-04-08 A | 2026-04-12 A | B3.1. 33 14 13.013, B3.33 14 19.01.120 | 100% |  |
| B3.1. 33 14 13.015 |  | Backfilling & Warrning Tape | 126d | 2026-04-20 A | 2026-09-20 | B3.1. 33 14 13.014 | 95% | 112d |
|  | Depth: 1.51m - 2.5m | **Depth: 1.51m - 2.5m** |  | 2026-02-02 | 2026-09-20 |  |  |  |
| B3.1. 33 14 13.021 |  | Excavation | 38.55d | 2026-02-02 A | 2026-04-01 A | B3.1. 33 14 13.011 | 100% |  |
| B3.1. 33 14 13.022 |  | Sand Bedding | 34.05d | 2026-02-10 A | 2026-04-04 A | B3.1. 33 14 13.021 | 100% |  |
| B3.1. 33 14 13.023 |  | Pipe Laying | 33.3d | 2026-02-12 A | 2026-04-05 A | B3.1. 33 14 13.022 | 100% |  |
| B3.1. 33 14 13.024 |  | Embedment & Test | 44.36d | 2026-04-29 A | 2026-06-24 A | B3.1. 33 14 13.023, B3.33 14 19.01.120 | 100% |  |
| B3.1. 33 14 13.025 |  | Backfilling & Warrning Tape | 114d | 2026-05-04 A | 2026-09-20 | B3.1. 33 14 13.024, B3.1. 33 14 13.014 | 95% | 112d |
|  | Valves & Chambers | **Valves & Chambers** |  | 2026-03-05 | 2026-10-06 |  |  |  |
|  | GV | **Gate Valves** |  | 2026-03-05 | 2026-10-06 |  |  |  |
|  | 1 | **Gate valves dia (250) mm** |  | 2026-03-05 | 2026-10-06 |  |  |  |
| B3.33 14 19.01.120 |  | Burried Isolation Valve Installation | 15.29d | 2026-03-05 A | 2026-03-31 A | B3.1. 33 14 13.023, B3.1. 33 14 13.013 | 100% |  |
| B3.33 14 19.01.121 |  | Spindle & Surface Box | 4d | 2026-10-03 | 2026-10-06 | B3.33 14 19.01.120, B3.33 14 19.01.133, B3.33 14 19.01.127 |  | 67d |
|  | 2 | **Air Valves** |  | 2026-06-10 | 2026-09-28 |  |  |  |
|  | 4 | **Air valves on less than 315 mm. (In Chamber)** |  | 2026-06-10 | 2026-09-28 |  |  |  |
| B3.33 05 63.02.42 |  | Land Adjustment & Compaction | 1.33d | 2026-06-10 A | 2026-06-11 A | B3.1. 33 14 13.021 | 100% |  |
| B3.33 05 63.02.40 |  | Foundations | 2d | 2026-06-13 A | 2026-06-14 A | B3.33 05 63.02.42 | 100% |  |
| B3.33 05 63.02.43 |  | Chambers Walls Conc Cast In Situ | 1d | 2026-06-15 A | 2026-06-15 A | B3.33 05 63.02.40 | 100% |  |
| B3.33 05 63.02.41 |  | Chamber Curing, Finishing & Steel Cover | 81d | 2026-06-16 A | 2026-09-20 | B3.33 05 63.02.43 | 50% | 63d |
| B3.33 05 63.02.44 |  | Valve & Fitting Installation | 6d | 2026-09-21 | 2026-09-28 | B3.33 05 63.02.41, B3.33 05 63.01.31 |  | 63d |
|  | Washout Valves | **Washout Valves** |  | 2026-05-02 | 2026-05-19 |  |  |  |
|  | 4 | **Washout valves on 110-400 mm. (In Chamber)** |  | 2026-05-02 | 2026-05-19 |  |  |  |
| B3.33 05 63.01.32 |  | Land Adjustment & Compaction | 6d | 2026-05-02 A | 2026-05-07 A | B3.33 05 63.02.42 | 100% |  |
| B3.33 05 63.01.30 |  | Foundations | 3d | 2026-05-09 A | 2026-05-11 A | B3.33 05 63.01.32 | 100% |  |
| B3.33 05 63.01.33 |  | Chambers Walls Conc Cast In Situ | 2d | 2026-05-14 A | 2026-05-16 A | B3.33 05 63.01.30 | 100% |  |
| B3.33 05 63.01.31 |  | Chamber Curing, Finishing & Steel Cover | 2d | 2026-05-17 A | 2026-05-18 A | B3.33 05 63.01.33 | 100% |  |
| B3.33 05 63.01.34 |  | Valve & Fitting Installation | 2d | 2026-05-18 A | 2026-05-19 A | B3.33 05 63.01.31, B3.1. 33 14 13.025 SS | 100% |  |
|  | 3 | **Fire Hydrant** |  | 2026-04-20 | 2026-05-16 |  |  |  |
| B3.33 14 19.01.fh2 |  | Riser Pipe & Flanged Fittings Installation | 10.54d | 2026-04-20 A | 2026-05-02 A | B3.1. 33 14 13.023, B3.1. 33 14 13.013 | 100% |  |
| B3.33 14 19.01.fh3 |  | Firehydrant Fixing/Installation | 15.31d | 2026-04-21 A | 2026-05-09 A | B3.33 14 19.01.fh2 | 100% |  |
| B3.33 14 19.01.fh5 |  | Backfilling & Compaction | 16.85d | 2026-04-27 A | 2026-05-16 A | B3.33 14 19.01.fh3, B3.1. 33 14 13-01106, B3.33 14 19.01.fh43 SS | 100% |  |
|  | TSE | **TSE Network** |  | 2026-03-02 | 2026-11-10 |  |  |  |

| ID | WBS | Task | Duration | Start | Finish | Predecessors | Complete | Total float |
| --- | --- | --- | --- | --- | --- | --- | --- | --- |
|  | HDPE | **HDPE Pipes** |  | 2026-03-02 | 2026-05-24 |  |  |  |
|  | ?110mm | **?110mm** |  | 2026-03-02 | 2026-05-20 |  |  |  |
|  | Depth: 0.0m - 1.5m | **Depth: 0.0m - 1.5m** |  | 2026-03-02 | 2026-05-20 |  |  |  |
| B4.33 14 13.071 |  | Excavation | 7.25d | 2026-03-02 A | 2026-03-13 A | B3.33 14 13.02.13, B3.1. 33 14 13.021 | 100% |  |
| B4.33 14 13.072 |  | Sand Bedding | 9.5d | 2026-03-04 A | 2026-03-20 A | B4.33 14 13.071 | 100% |  |
| B4.33 14 13.073 |  | Pipe Laying | 13.16d | 2026-03-07 A | 2026-03-30 A | B4.33 14 13.072 | 100% |  |
| B4.33 14 13.074 |  | Embedment & Test | 10.97d | 2026-03-26 A | 2026-04-08 A | B4.33 14 13.073, B3.33 14 19.01.136 | 100% |  |
| B4.33 14 13.075 |  | Backfilling & Warrning Tape | 46.15d | 2026-03-28 A | 2026-05-20 A | B4.33 14 13.074, B3.33 14 19.01.136 | 100% |  |
|  | ?90mm | **?90mm** |  | 2026-03-07 | 2026-05-24 |  |  |  |
|  | Depth: 0.0m - 1.5m | **Depth: 0.0m - 1.5m** |  | 2026-03-07 | 2026-05-24 |  |  |  |
| B4.33 14 13.061 |  | Excavation | 10.67d | 2026-03-07 A | 2026-03-26 A | B4.33 14 13.071 | 100% |  |
| B4.33 14 13.062 |  | Sand Bedding | 11.17d | 2026-03-09 A | 2026-03-29 A | B4.33 14 13.061 | 100% |  |
| B4.33 14 13.063 |  | Pipe Laying | 11.67d | 2026-03-11 A | 2026-03-31 A | B4.33 14 13.062 | 100% |  |
| B4.33 14 13.064 |  | Embedment & Test | 32.67d | 2026-04-15 A | 2026-05-23 A | B4.33 14 13.063, B3.33 14 19.01.136 | 100% |  |
| B4.33 14 13.065 |  | Backfilling & Warrning Tape | 27.06d | 2026-04-22 A | 2026-05-24 A | B4.33 14 13.064 | 100% |  |
|  | Valves & Chambers | **Valves & Chambers** |  | 2026-03-09 | 2026-11-10 |  |  |  |
|  | GV | **Gate Valves** |  | 2026-03-09 | 2026-09-19 |  |  |  |
|  | 1 | **Gate valves dia (250) mm** |  | 2026-03-09 | 2026-09-19 |  |  |  |
| B3.33 14 19.01.136 |  | Burried Isolation Valve Installation | 14.4d | 2026-03-09 A | 2026-04-02 A | B4.33 14 13.063, B4.33 14 13.073 | 100% |  |
| B3.33 14 19.01.137 |  | Spindle & Surface Box | 3d | 2026-09-16 | 2026-09-19 | B3.33 14 19.01.136, B4.33 14 13.074 |  | 60d |
|  | 2 | **Air Valves** |  | 2026-06-10 | 2026-09-26 |  |  |  |
|  | 4 | **Air valves on less than 315 mm. (In Chamber)** |  | 2026-06-10 | 2026-09-26 |  |  |  |
| B3.33 05 63.02.87 |  | Land Adjustment & Compaction | 2d | 2026-06-10 A | 2026-06-11 A | B4.33 14 13.061 | 100% |  |
| B3.33 05 63.02.85 |  | Foundations | 3d | 2026-06-13 A | 2026-06-15 A | B3.33 05 63.02.87 | 100% |  |
| B3.33 05 63.02.88 |  | Chambers Walls Conc Cast In Situ | 1d | 2026-06-14 A | 2026-06-14 A | B3.33 05 63.02.85 | 100% |  |
| B3.33 05 63.02.86 |  | Chamber Curing, Finishing & Steel Cover | 82d | 2026-06-15 A | 2026-09-19 | B3.33 05 63.02.88 | 50% | 5d |
| B3.33 05 63.02.89 |  | Valve & Fitting Installation | 5d | 2026-09-20 | 2026-09-26 | B3.33 05 63.02.86 |  | 5d |
|  | Washout Valves | **Washout Valves** |  | 2026-05-23 | 2026-11-10 |  |  |  |
|  | 4 | **Washout valves on 110-400 mm. (In Chamber)** |  | 2026-05-23 | 2026-11-10 |  |  |  |
| B3.33 05 63.01.67 |  | Land Adjustment & Compaction | 2d | 2026-05-23 A | 2026-05-24 A | B3.33 05 63.02.87, B3.33 05 63.02.87 FF | 100% |  |
| B3.33 05 63.01.65 |  | Foundations | 85.2d | 2026-06-10 A | 2026-09-19 | B3.33 05 63.01.67 | 60% | 113.8d |
| B3.33 05 63.01.68 |  | Chambers Walls Conc Cast In Situ | 84.2d | 2026-06-11 A | 2026-09-19 | B3.33 05 63.01.65 SS | 60% | 113.8d |
| B3.33 05 63.01.66 |  | Chamber Curing, Finishing & Steel Cover | 82.6d | 2026-06-14 A | 2026-09-19 | B3.33 05 63.01.68 SS | 60% | 66.4d |
| B3.33 05 63.01.69 |  | Valve & Fitting Installation | 3d | 2026-11-08 | 2026-11-10 | B3.33 05 63.01.66, B4.32 84 13.30 |  | 25d |
|  | Solenoid valves | **Solenoid valves** |  | 2026-10-14 | 2026-11-07 |  |  |  |
|  | Solenoid valve ?1.0 | **1 Solenoid valve ?1.0 inch with box** |  | 2026-10-14 | 2026-11-03 |  |  |  |
| B4.32 84 13.31 |  | Cable Laying Two-Wire Decoder (12 AWG) | 3d | 2026-10-14 | 2026-10-17 | B4.33 14 13.063, DMM2-Proc-Delv-7259 |  | 31d |
| B4.32 84 13.066 |  | Pull Box Installation | 3d | 2026-10-18 | 2026-10-20 | B4.32 84 13.31 |  | 31d |
| B4.32 84 13.32 |  | Solenoid Valve Box Installation | 3d | 2026-10-18 | 2026-10-20 | B4.32 84 13.31 |  | 34d |
| B4.32 84 13.33 |  | Bubblers Installation | 3d | 2026-11-01 | 2026-11-03 | B4.32 84 13.32, B4.32 84 13.39, B3.33 14 19.01.137, B4.33 14 13.074 |  | 25d |
|  | Solenoid valve ?1.5 | **1 Solenoid valve ?1.5 inch with box** |  | 2026-10-18 | 2026-10-27 |  |  |  |
| B4.32 84 13.34 |  | Cable Laying Two-Wire Decoder (12 AWG) | 3d | 2026-10-18 | 2026-10-20 | B4.32 84 13.31 |  | 31d |
| B4.32 84 13.067 |  | Pull Box Installation | 3d | 2026-10-21 | 2026-10-24 | B4.32 84 13.066 |  | 31d |
| B4.32 84 13.35 |  | Solenoid Valve Box Installation | 3d | 2026-10-21 | 2026-10-24 | B4.32 84 13.34 |  | 31d |
| B4.32 84 13.36 |  | Bubblers Installation | 3d | 2026-10-25 | 2026-10-27 | B4.32 84 13.35, B4.33 14 13.074 |  | 31d |
|  | Solenoid valve ?2.0 | **1 Solenoid valve ?2.0 inch with box** |  | 2026-10-21 | 2026-11-07 |  |  |  |
| B4.32 84 13.28 |  | Cable Laying Two-Wire Decoder (12 AWG) | 3d | 2026-10-21 | 2026-10-24 | B4.32 84 13.34 |  | 31d |
| B4.32 84 13.068 |  | Pull Box Installation | 3d | 2026-10-25 | 2026-10-27 | B4.32 84 13.067, B4.32 84 13.32, B3.33 14 19.01.137, B4.33 14 13.075 |  | 31d |
| B4.32 84 13.29 |  | Solenoid Valve Box Installation | 3d | 2026-10-25 | 2026-10-27 | B4.32 84 13.28 |  | 31d |
| B4.32 84 13.30 |  | Bubblers Installation | 3d | 2026-11-04 | 2026-11-07 | B4.32 84 13.29, B4.32 84 13.36, B4.32 84 13.068, B4.32 84 13.33 |  | 25d |
|  | Dry Networks | **Dry Networks** |  | 2026-04-30 | 2026-11-08 |  |  |  |
|  | MV Network | **Medium Voltage Network** |  | 2026-04-30 | 2026-10-03 |  |  |  |
|  | Duct Banks | **Duct Banks** |  | 2026-04-30 | 2026-09-19 |  |  |  |
|  | 4 Way | **4 Way** |  | 2026-04-30 | 2026-09-19 |  |  |  |
| B2.31 23 00.02 |  | Excavation | 2d | 2026-04-30 A | 2026-05-02 A | B3.33 14 13.01.015, B3.33 14 13.01.025 | 100% |  |
| B2.33 71 00.02 |  | Shuttering, Steel Fixing Incl. UPVC Pipe & Conc. Cast | 3d | 2026-05-06 A | 2026-05-09 A | B2.31 23 00.02 | 100% |  |
| B2.33 71 00.021 |  | Backfilling & Warrning Tape | 89d | 2026-06-07 A | 2026-09-19 | B2.33 71 00.02 | 71% | 57d |
|  | Cables | **Cables** |  | 2026-09-01 | 2026-10-03 |  |  |  |
|  | 3C,500mm2 | **3C,500mm2** |  | 2026-09-01 | 2026-10-03 |  |  |  |
| B2.33 71 49.23.01 |  | Cable 13.8 kV Unarmored | 10.1d | 2026-09-01 A | 2026-09-13 A | B1.2.32 11 26.01.1 SS | 100% |  |
| B2.33 71 49.23.02 |  | Straight joints cables | 3d | 2026-09-16 | 2026-09-19 | B2.33 71 49.23.01 |  | 85d |
| B2.33 71 49.23.03 |  | Cable Termination | 4d | 2026-09-29 | 2026-10-03 | B2.33 71 49.23.02, B2.33 71 49.23.91 |  | 78d |
|  | Low Voltage Network | **Low Voltage Network** |  | 2026-05-11 | 2026-11-08 |  |  |  |
|  | Duct Banks | **Duct Banks** |  | 2026-05-11 | 2026-11-08 |  |  |  |
|  | 2 Way | **2 Way** |  | 2026-05-11 | 2026-06-14 |  |  |  |
| B2.33 71 00 02 97 |  | Excavation | 3d | 2026-05-11 A | 2026-05-14 A | B4.33 14 13.065, B1.2.32 11 26.01.1 SS | 100% |  |
| B2.33 71 00 02 98 |  | Shuttering, Steel Fixing Incl. UPVC Pipe & Conc. Cast | 2d | 2026-05-16 A | 2026-05-18 A | B2.33 71 00 02 97 | 100% |  |
| B2.33 71 00 02 99 |  | Backfilling & Warrning Tape | 18d | 2026-05-19 A | 2026-06-14 A | B2.33 71 00 02 98 | 100% |  |
|  | 4 Way | **6 Way** |  | 2026-06-08 | 2026-11-08 |  |  |  |
| B2.33 71 00 02 100 |  | Excavation | 3d | 2026-06-08 A | 2026-06-10 A | B2.33 71 00 02 97 | 100% |  |

| ID | WBS | Task | Duration | Start | Finish | Predecessors | Complete | Total float |
| --- | --- | --- | --- | --- | --- | --- | --- | --- |
| B2.33 71 00 02 101 |  | Shuttering, Steel Fixing Incl. UPVC Pipe & Conc. Cast | 5d | 2026-09-09 A | 2026-09-17 | B2.33 71 00 02 100 |  | 105d |
| B2.33 71 00 02 102 |  | Backfilling & Warrning Tape | 3d | 2026-11-05 | 2026-11-08 | B2.33 71 00 02 101, B2.33 71 00 02 99 SS, B2.33 71 00 01 13, B2.33 71 00.267, B2.33 71 00 02 141, B2.33 71 00 02 153, B2.33 71 00 02 150, B2.33 71 00 02 99 |  | 65d |
|  | Street Lighting | **Street Lighting** |  | 2026-08-29 | 2026-11-07 |  |  |  |
|  | Cables | **Cables** |  | 2026-09-12 | 2026-11-07 |  |  |  |
|  | 4C,10+1C,10mm2 | **4C,10+1C,10mm2** |  | 2026-09-12 | 2026-11-07 |  |  |  |
| B2.33 71 19 62 |  | Land Adjustment | 5d | 2026-09-12 A | 2026-09-16 | B2.33 71 00 02 100, DMM2-Proc-PO-091 | 50% | 115d |
| B2.33 71 49.23.112 |  | Cable Pulling | 2d | 2026-09-14 A | 2026-09-17 | DMM2-Proc-Delv-1308, B2.33 71 19 62 SS | 50% | 103d |
| B2.33 71 19 72 |  | Backfilling | 3d | 2026-11-04 | 2026-11-07 | B2.33 71 49.23.112, B2.33 71 16.28 FF |  | 64d |
|  | Earthing | **Earthing** |  | 2026-09-19 | 2026-09-27 |  |  |  |
| B2.33 71 19 011 |  | Land Adjustment | 2d | 2026-09-19 | 2026-09-20 | B2.33 71 16.021 |  | 27d |
| B2.33 71 19 012 |  | Earth Rods & Conduits | 2d | 2026-09-21 | 2026-09-22 | B2.33 71 19 011, B2.1.33 81 26.11 |  | 27d |
| B2.33 71 19 013 |  | Backfilling | 3d | 2026-09-24 | 2026-09-27 | B2.33 71 19 012 |  | 27d |
|  | SL Poles | **SL Poles** |  | 2026-08-29 | 2026-10-06 |  |  |  |
|  | Pole (10 M Sngl Arm) | **Pole (10 M Single Arm)** |  | 2026-08-29 | 2026-10-06 |  |  |  |
| B2.33 71 16.021 |  | Excavation | 17.1d | 2026-08-29 A | 2026-09-17 | B1.2.32 11 26.01.1 SS | 92% | 27d |
| B2.33 71 16.022 |  | PC & RC Foundation | 16.1d | 2026-08-30 A | 2026-09-17 | B2.33 71 16.021 SS | 92% | 114d |
| B2.33 71 16.023 |  | Lighting Poles Installation Incl power box, Cables | 15.1d | 2026-08-31 A | 2026-09-17 | B2.33 71 16.022 SS | 92% | 114d |
| B2.26.56.19.01 |  | Lighting Luminares Inst | 7.52d | 2026-09-09 A | 2026-09-17 | B2.33 71 16.023 SS | 92% | 94d |
| B2.33 71 16.025 |  | Backfilling, Grouting & Chamfering | 3d | 2026-10-04 | 2026-10-06 | B2.26.56.19.01, B2.33 71 00 02 72 |  | 82d |
|  | Telecommunication | **Telecommunication Network** |  | 2026-06-30 | 2026-09-24 |  |  |  |
|  | Manholes | **Manholes** |  | 2026-09-09 | 2026-09-17 |  |  |  |
|  | Manhole Type 1 | **Manhole Type 1** |  | 2026-09-12 | 2026-09-17 |  |  |  |
| B2.31 23 00.571 |  | Excavation | 6d | 2026-09-12 A | 2026-09-17 | DMM2-Proc-PO-089, B2.33 71 00.021 SS | 88% | 114d |
| B2.33 71 00.141 |  | Manhole Installation | 4d | 2026-09-14 A | 2026-09-17 | DMM2-Proc-Delv-1288, B2.31 23 00.571 SS | 88% | 114d |
| B2.33 71 00.151 |  | Backfilling & Warrning Tape | 3d | 2026-09-15 A | 2026-09-17 | B2.33 71 00.181, B2.33 71 00.141 SS | 88% | 105d |
|  | Manhole Type 2 | **Manhole Type 2** |  | 2026-09-09 | 2026-09-17 |  |  |  |
| B2.31 23 00.581 |  | Excavation | 8d | 2026-09-09 A | 2026-09-17 | B2.31 23 00.571 SS | 88% | 114d |
| B2.33 71 00.161 |  | Manhole Installation | 6d | 2026-09-12 A | 2026-09-17 | B2.31 23 00.581 SS | 88% | 114d |
| B2.33 71 00.171 |  | Backfilling & Warrning Tape | 5d | 2026-09-13 A | 2026-09-17 | B2.33 71 00.161 SS | 88% | 105d |
|  | Crossing Ducts | **Road Crossing Ducts** |  | 2026-06-30 | 2026-07-15 |  |  |  |
|  | 1 | **Size (6*50mm) HDPE** |  | 2026-06-30 | 2026-07-15 |  |  |  |
| B2.31 23 00.591 |  | Excavation | 2d | 2026-06-30 A | 2026-07-02 A | B2.33 71 00.021 SS | 100% |  |
| B2.33 71 00.181 |  | Shuttering, Steel Fixing Incl. UPVC Pipe & Conc. Cast | 2d | 2026-07-02 A | 2026-07-05 A | B2.31 23 00.591 | 100% |  |
| B2.33 71 00.191 |  | Backfilling & Warrning Tape | 4.33d | 2026-07-10 A | 2026-07-15 A | B2.33 71 00.181 | 100% |  |
|  | 2 | **Size (2*32mm) HDPE** |  | 2026-07-02 | 2026-07-12 |  |  |  |
| B2.31 23 00.601 |  | Excavation | 1d | 2026-07-02 A | 2026-07-04 A | B2.31 23 00.591 | 100% |  |
| B2.33 71 00.201 |  | Shuttering, Steel Fixing Incl. UPVC Pipe & Conc. Cast | 4d | 2026-07-04 A | 2026-07-08 A | B2.31 23 00.601 | 100% |  |
| B2.33 71 00.211 |  | Backfilling & Warrning Tape | 3d | 2026-07-08 A | 2026-07-12 A | B2.33 71 00.201 | 100% |  |
|  | Ducts | **Ducts** |  | 2026-09-05 | 2026-09-17 |  |  |  |
|  | (6*50mm) | **Size (6*50mm) HDPE ducts** |  | 2026-09-05 | 2026-09-17 |  |  |  |
| B2.1.33 81 26.11 |  | Excavation | 2d | 2026-09-05 A | 2026-09-07 A | B2.1.33 81 26.180 SS | 100% |  |
| B2.1.33 81 26.12 |  | HDPE Pipe, Shuttering, Steel Fixing & Conc. Cast | 1d | 2026-09-07 A | 2026-09-08 A | B2.1.33 81 26.11 | 100% |  |
| B2.1.33 81 26.13 |  | Backfilling & Warrning Tape | 8d | 2026-09-09 A | 2026-09-17 | B2.33 71 00.171 SS | 88% | 93d |
|  | (6*50mm+2*32mm) | **Size (6*50mm+2*32mm) HDPE ducts** |  | 2026-09-06 | 2026-09-17 |  |  |  |
| B2.1.33 81 26.21 |  | Excavation | 2d | 2026-09-06 A | 2026-09-07 A | B2.1.33 81 26.11 | 100% |  |
| B2.1.33 81 26.22 |  | HDPE Pipe, Shuttering, Steel Fixing & Conc. Cast | 1d | 2026-09-07 A | 2026-09-08 A | B2.1.33 81 26.21 | 100% |  |
| B2.1.33 81 26.23 |  | Backfilling & Warrning Tape | 7d | 2026-09-10 A | 2026-09-17 | B2.1.33 81 26.13 SS | 88% | 109d |
|  | (6*50mm+4*32mm) | **Size (6*50mm+4*32mm) HDPE ducts** |  | 2026-09-06 | 2026-09-17 |  |  |  |
| B2.1.33 81 26.31 |  | Excavation | 10.94d | 2026-09-06 A | 2026-09-17 | B2.1.33 81 26.21 | 88% | 114d |
| B2.1.33 81 26.32 |  | HDPE Pipe, Shuttering, Steel Fixing & Conc. Cast | 7d | 2026-09-10 A | 2026-09-17 | B2.1.33 81 26.31 SS, B2.1.33 81 26.12 | 88% | 114d |
| B2.1.33 81 26.33 |  | Backfilling & Warrning Tape | 6d | 2026-09-12 A | 2026-09-17 | B2.1.33 81 26.32 SS | 88% | 114d |
|  | (2*32mm) | **Size (2*32mm) HDPE ducts** |  | 2026-09-06 | 2026-09-17 |  |  |  |
| B2.1.33 81 26.41 |  | Excavation | 10.94d | 2026-09-06 A | 2026-09-17 | B2.1.33 81 26.31 SS | 88% | 114d |
| B2.1.33 81 26.42 |  | HDPE Pipe, Shuttering, Steel Fixing & Conc. Cast | 7d | 2026-09-10 A | 2026-09-17 | B2.1.33 81 26.41 SS, B2.1.33 81 26.22 | 88% | 114d |
| B2.1.33 81 26.43 |  | Backfilling & Warrning Tape | 5d | 2026-09-13 A | 2026-09-17 | B2.1.33 81 26.42 SS | 88% | 110d |
|  | (4*32mm) | **Size (4*32mm) HDPE ducts** |  | 2026-09-07 | 2026-09-17 |  |  |  |
| B2.1.33 81 26.51 |  | Excavation | 9.94d | 2026-09-07 A | 2026-09-17 | B2.1.33 81 26.41 SS, B2.1.33 81 26.11 | 88% | 114d |
| B2.1.33 81 26.52 |  | HDPE Pipe, Shuttering, Steel Fixing & Conc. Cast | 7d | 2026-09-10 A | 2026-09-17 | B2.1.33 81 26.51 SS | 88% | 114d |
| B2.1.33 81 26.53 |  | Backfilling & Warrning Tape | 6d | 2026-09-12 A | 2026-09-17 | B2.1.33 81 26.52 SS, B2.1.33 81 26.33 SS | 88% | 110d |
|  | Demolishing | **Demolishing and Site Clearing** |  | 2026-09-06 | 2026-09-24 |  |  |  |
| B2.1.02 41 00.011 |  | Excavation | 11d | 2026-09-06 A | 2026-09-17 | B2.1.33 81 26.51 SS | 88% | 114d |
| B2.1.02 41 00.012 |  | Old Manholes Grubbing | 10d | 2026-09-07 A | 2026-09-17 | B2.1.02 41 00.011 SS | 88% | 114d |
| B2.1.02 41 00.013 |  | Old Network Components Grubbing | 8d | 2026-09-09 A | 2026-09-17 | B2.1.02 41 00.011 SS | 88% | 114d |
| B2.1.02 41 00.014 |  | New Manholes Installation | 6d | 2026-09-12 A | 2026-09-17 | B2.1.02 41 00.012 SS | 88% | 43d |
| B2.1.02 41 00.015 |  | New Network Components Installation | 5d | 2026-09-13 A | 2026-09-17 | B2.1.02 41 00.013 SS | 88% | 103d |
| B2.1.02 41 00.016 |  | Backfilling & Warrning Tape | 5d | 2026-09-19 | 2026-09-24 | B2.1.02 41 00.014 |  | 43d |
|  | Earth & Road Works | **Earth & Road Works** |  | 2025-11-22 | 2026-10-08 |  |  |  |
|  | Earth Works | **Earth Works - Roads** |  | 2025-11-22 | 2025-12-06 |  |  |  |
| B1.2.31 23 23.01.1 |  | Engineering Backfiling | 12.06d | 2025-11-22 A | 2025-12-06 A | B1.2.31 23 16.01.1 SS+2d | 100% |  |
| B1.2.31 23 16.01.1 |  | Roadway Excavation | 3.66d | 2025-11-27 A | 2025-12-01 A | B2.33 71 00.211, B2.33 71 00.021 SS | 100% |  |

| ID | WBS | Task | Duration | Start | Finish | Predecessors | Complete | Total float |
| --- | --- | --- | --- | --- | --- | --- | --- | --- |
|  | Earth Layers | **Earth Layers** |  | 2025-12-24 | 2026-09-22 |  |  |  |
| B1.2.32 11 13.01.1 |  | Subgrade | 217.9d | 2025-12-24 A | 2026-09-21 | B1.2.31 23 23.01.1 | 65% | 111.1d |
| B1.2.32 11 23.01.1 |  | Aggregate Base Course | 122d | 2026-04-29 A | 2026-09-22 | B1.2.32 11 13.01.1 FF | 90% | 110d |
|  | Interlock | **Interlock** |  | 2026-09-26 | 2026-09-28 |  |  |  |
| B1.2.32 14 13.13.1 |  | 60mm thick - Interlocking Block Pavers | 2d | 2026-09-26 | 2026-09-28 | 10 14 53.08 |  | 22.76d |
|  | Curbstone | **Curbstone** |  | 2026-09-12 | 2026-10-01 |  |  |  |
|  | Pre Install | **Pre-Installation** |  | 2026-09-12 | 2026-09-24 |  |  |  |
| 32 16 131 |  | Excavation | 2d | 2026-09-12 A | 2026-09-24 | B2.31 23 00.41 FF | 25% | 45d |
| 32 16 133 |  | Haunching | 3d | 2026-09-13 A | 2026-09-24 | 32 16 132 FF | 25% | 45d |
| 32 16 132 |  | PCC | 5.55d | 2026-09-14 A | 2026-09-24 | 32 16 131 FF | 25% | 45d |
|  | Installation | **Installation** |  | 2026-09-14 | 2026-10-01 |  |  |  |
| B1.2.32 16.13.01.1 |  | Curb Stone, Type K1 | 3.6d | 2026-09-14 A | 2026-09-28 | B1.2.32 14 13.13.1 FF, 32 16 133 SS | 10% | 42.76d |
| B1.2.32 16.13.03.1 |  | Edge Curb, Type K4 | 2d | 2026-09-28 | 2026-09-30 | B1.2.32 14 13.13.1, 32 16 133, B1.2.32 16.13.01.1 |  | 42.76d |
| B1.2.32 16.13.041 |  | Heel Curb, Type K5 | 1d | 2026-09-30 | 2026-10-01 | B1.2.32 14 13.13.1, 32 16 133, B1.2.32 16.13.03.1 |  | 42.76d |
|  | Finishing | **Finishing** |  | 2026-09-30 | 2026-10-01 |  |  |  |
| 32 16 134 |  | Finishing, Fareface | 1d | 2026-09-30 | 2026-10-01 | B1.2.32 16.13.01.1 SS, B1.2.32 16.13.03.1 SS, B1.2.32 16.13.041 SS |  | 42.76d |
|  | Asphalt Layers | **Asphalt Layers** |  | 2026-05-17 | 2026-09-29 |  |  |  |
| B1.2.32 11 26.01.1 |  | Bituminous Base Course including Prime Coat (MC1) and tack coat (RC2) | 106.03d | 2026-05-17 A | 2026-09-22 | B1.2.32 11 23.01.1 SS | 92% | 46d |
| B1.2.32 12 16.01.1 |  | Bituminous concrete Wearing Course, including tack coat (RC2) | 5d | 2026-09-24 | 2026-09-29 | B1.2.32 11 26.01.1 |  | 46d |
|  | Pavement Marking | **Pavement Marking** |  | 2026-10-03 | 2026-10-05 |  |  |  |
| B1.2.32 17 23.01.1 |  | Retroreflective Thermoplastic White Traffic lines | 3d | 2026-10-03 | 2026-10-05 | B1.2.32 12 16.01.1, B1.2.32 12 19.13.01, B1.2.32 17 23.02.1 SS |  | 55d |
| B1.2.32 17 23.02.1 |  | Retroreflective Thermoplastic Yellow, Traffic lines | 2d | 2026-10-03 | 2026-10-04 | B1.2.32 12 16.01.1, B1.2.32 12 19.13.01 |  | 55d |
|  | Traffic Signs | **Traffic Signs** |  | 2026-09-26 | 2026-10-08 |  |  |  |
|  | Pre Install | **Pre-Installation** |  | 2026-09-26 | 2026-10-01 |  |  |  |
| 10 14 53.1 |  | Excavation | 2d | 2026-09-26 | 2026-09-28 | B1.2.32 14 13.13.1 SS |  | 22.76d |
| 10 14 53.01 |  | Foundation | 3d | 2026-09-28 | 2026-10-01 | 10 14 53.1 |  | 27.76d |
|  | Installation | **Installation** |  | 2026-10-01 | 2026-10-08 |  |  |  |
| B1.2.10 14 53.011 |  | 1 Sheet Alumenium, Single post | 4d | 2026-10-01 | 2026-10-06 | 10 14 53.01 |  | 27.76d |
| B1.2.10 14 14.01.1 |  | Ground mounted, 1 Sheet Alumenium, Single post | 2d | 2026-10-06 | 2026-10-08 | B1.2.32 14 13.13.1, B1.2.10 14 53.021 SS |  | 27.76d |
| B1.2.10 14 53.021 |  | 2 Sheet Alumenium, Single post | 2d | 2026-10-06 | 2026-10-08 | B1.2.32 14 13.13.1, B1.2.10 14 53.011 |  | 27.76d |
|  | Road Misc. | **Miscellaneous** |  | 2026-09-30 | 2026-10-01 |  |  |  |
| B1.2.32 12 19.13.01 |  | Speed Tables | 2d | 2026-09-30 | 2026-10-01 | B1.2.32 12 16.01.1 |  | 55d |
|  | Landscape | **Landscape** |  | 2026-05-14 | 2026-11-12 |  |  |  |
|  | Geotextile | **Geotextile** |  | 2026-10-21 | 2026-11-04 |  |  |  |
| B7.31 32 19.23.01 |  | Geotextile to protect trees planting soil | 6d | 2026-10-21 | 2026-10-28 | B7.32 31 26.03.043, B7.32 31 26.03.023, B7.32 31 26.023 |  | 22.76d |
| B7.31 32 19.23.02 |  | Geotextile below gravel bed | 6d | 2026-10-28 | 2026-11-04 | B7.31 32 19.23.01, B7.32 31 26.03.043, B7.32 31 26.03.023, B7.32 31 26.023 |  | 22.76d |
|  | Steel fence (MODON) | **Steel fence (MODON)** |  | 2026-05-14 | 2026-09-30 |  |  |  |
| B7.32 31 26.021 |  | Earthwork | 105d | 2026-05-14 A | 2026-09-28 | 10 14 53.1 FF | 70% | 22.76d |
| B7.32 31 26.022 |  | Foundation | 102.2d | 2026-05-17 A | 2026-09-21 | B7.32 31 26.021 SS | 70% | 40.8d |
| B7.32 31 26.023 |  | Fence Installation | 7d | 2026-09-21 | 2026-09-30 | B7.32 31 26.022 |  | 40.8d |
|  | Gates | **Gates** |  | 2026-09-28 | 2026-10-21 |  |  |  |
|  | Gates (1.6x 2.7)m | **Size (1.6x 2.7)m** |  | 2026-09-28 | 2026-10-15 |  |  |  |
| B7.32 31 26.03.021 |  | Earthwork | 5d | 2026-09-28 | 2026-10-04 | B7.32 31 26.021 |  | 22.76d |
| B7.32 31 26.03.022 |  | Foundation | 5d | 2026-10-04 | 2026-10-10 | B7.32 31 26.03.021 |  | 27.76d |
| B7.32 31 26.03.023 |  | Gate Installation | 5d | 2026-10-10 | 2026-10-15 | B7.32 31 26.03.022 |  | 27.76d |
|  | Gates (4.5x 2.7)m | **Size (4.5x 2.7)m** |  | 2026-10-04 | 2026-10-21 |  |  |  |
| B7.32 31 26.03.041 |  | Earthwork | 5d | 2026-10-04 | 2026-10-10 | B7.32 31 26.03.021 |  | 22.76d |
| B7.32 31 26.03.042 |  | Foundation | 5d | 2026-10-10 | 2026-10-15 | B7.32 31 26.03.041 |  | 22.76d |
| B7.32 31 26.03.043 |  | Gate Installation | 5d | 2026-10-15 | 2026-10-21 | B7.32 31 26.03.042 |  | 22.76d |
|  | Trees | **Trees** |  | 2026-11-07 | 2026-11-12 |  |  |  |
| B7.32 93 43.02 |  | Cassia Glauca | 5d | 2026-11-07 | 2026-11-12 | B7.32 31 26.03.043, B7.32 31 26.03.023, B7.32 31 26.023, B7.31 32 19.23.01, B7.31 32 19.23.02, B7.32 93 33.02 |  | 20.76d |
|  | Service Road | **Service Road** |  | 2026-01-08 | 2026-11-30 |  |  |  |
|  | Wet Networks | **Wet Networks** |  | 2026-05-22 | 2026-11-30 |  |  |  |
|  | Storm | **Storm Network** |  | 2026-05-22 | 2026-11-30 |  |  |  |
|  | GRP | **GRP** |  | 2026-10-01 | 2026-11-09 |  |  |  |
|  | ?40011 | **?1300** |  | 2026-10-01 | 2026-10-22 |  |  |  |
|  | 3 | **Depth From 3.5m to 4.5m** |  | 2026-10-01 | 2026-10-22 |  |  |  |
| B6.33 42 11.26.1 |  | Excavation | 3d | 2026-10-01 | 2026-10-04 | B6.33 05 13.081, B1.1.31 23 23.22 |  | 13d |
| B6.33 42 11.26.2 |  | Sand Bedding | 3d | 2026-10-05 | 2026-10-07 | B6.33 42 11.26.1 |  | 73d |
| B6.33 42 11.26.3 |  | Pipe Laying | 3d | 2026-10-08 | 2026-10-11 | B6.33 42 11.26.2 |  | 73d |
| B6.33 42 11.26.4 |  | Embedment & Test | 4d | 2026-10-12 | 2026-10-15 | B6.33 42 11.26.3 |  | 73d |
| B6.33 42 11.26.5 |  | Backfilling & Warrning Tape | 6d | 2026-10-17 | 2026-10-22 | B6.33 42 11.26.4, B6.33 42 11.055, B6.33 42 11.0405 |  | 73d |
|  | ?40012 | **?1400** |  | 2026-10-05 | 2026-10-31 |  |  |  |
|  | 1 | **Depth From 3.5m to 4.5m** |  | 2026-10-05 | 2026-10-27 |  |  |  |
| B6.33 42 11.30.1 |  | Excavation | 3d | 2026-10-05 | 2026-10-07 | B6.33 42 11.26.1 |  | 13d |
| B6.33 42 11.30.2 |  | Sand Bedding | 3d | 2026-10-08 | 2026-10-11 | B6.33 42 11.30.1 |  | 75d |
| B6.33 42 11.30.3 |  | Pipe Laying | 3d | 2026-10-12 | 2026-10-14 | B6.33 42 11.30.2 |  | 75d |
| B6.33 42 11.30.4 |  | Embedment & Test | 5d | 2026-10-15 | 2026-10-20 | B6.33 42 11.30.3 |  | 75d |
| B6.33 42 11.30.5 |  | Backfilling & Warrning Tape | 6d | 2026-10-21 | 2026-10-27 | B6.33 42 11.30.4, B6.33 42 11.115 |  | 75d |
|  | 4 | **Depth From 2.5m to 3.5m** |  | 2026-10-08 | 2026-10-31 |  |  |  |

| ID | WBS | Task | Duration | Start | Finish | Predecessors | Complete | Total float |
| --- | --- | --- | --- | --- | --- | --- | --- | --- |
| B6.33 42 11.29.1 |  | Excavation | 3d | 2026-10-08 | 2026-10-11 | B6.33 42 11.30.1 |  | 13d |
| B6.33 42 11.29.2 |  | Sand Bedding | 3d | 2026-10-12 | 2026-10-14 | B6.33 42 11.29.1 |  | 72d |
| B6.33 42 11.29.3 |  | Pipe Laying | 3d | 2026-10-15 | 2026-10-18 | B6.33 42 11.29.2 |  | 72d |
| B6.33 42 11.29.4 |  | Embedment & Test | 5d | 2026-10-19 | 2026-10-24 | B6.33 42 11.29.3 |  | 72d |
| B6.33 42 11.29.5 |  | Backfilling & Warrning Tape | 6d | 2026-10-25 | 2026-10-31 | B6.33 42 11.29.4, B6.33 42 11.34-1.7 |  | 72d |
|  | ?400121 | **?1500** |  | 2026-10-12 | 2026-11-09 |  |  |  |
|  | 4 | **Depth From 2.5m to 3.5m** |  | 2026-10-12 | 2026-11-02 |  |  |  |
| B6.33 42 11.33.1 |  | Excavation | 3d | 2026-10-12 | 2026-10-14 | B6.33 42 11.29.1 |  | 13d |
| B6.33 42 11.33.2 |  | Sand Bedding | 3d | 2026-10-15 | 2026-10-18 | B6.33 42 11.33.1 |  | 70d |
| B6.33 42 11.33.3 |  | Pipe Laying | 3d | 2026-10-19 | 2026-10-21 | B6.33 42 11.33.2 |  | 70d |
| B6.33 42 11.33.4 |  | Embedment & Test | 4d | 2026-10-22 | 2026-10-26 | B6.33 42 11.33.3 |  | 70d |
| B6.33 42 11.33.5 |  | Backfilling & Warrning Tape | 6d | 2026-10-27 | 2026-11-02 | B6.33 42 11.33.4, B6.33 42 11.26.5 |  | 70d |
|  | 1 | **Depth From 3.5m to 4.5m** |  | 2026-10-15 | 2026-11-09 |  |  |  |
| B6.33 42 11.34.1 |  | Excavation | 3d | 2026-10-15 | 2026-10-18 | B6.33 42 11.33.1 |  | 13d |
| B6.33 42 11.34.2 |  | Sand Bedding | 3d | 2026-10-19 | 2026-10-21 | B6.33 42 11.34.1 |  | 72d |
| B6.33 42 11.34.3 |  | Pipe Laying | 3d | 2026-10-22 | 2026-10-25 | B6.33 42 11.34.2 |  | 72d |
| B6.33 42 11.34.4 |  | Embedment & Test | 5d | 2026-10-26 | 2026-10-31 | B6.33 42 11.34.3 |  | 72d |
| B6.33 42 11.34.5 |  | Backfilling & Warrning Tape | 6d | 2026-11-03 | 2026-11-09 | B6.33 42 11.34.4, B6.33 42 11.33.5, B6.33 42 11.30.5, B6.33 42 11.29.5 |  | 70d |
|  | Strom Manholes | **Manholes** |  | 2026-10-19 | 2026-11-21 |  |  |  |
|  | 3 | **?2000** |  | 2026-10-19 | 2026-11-21 |  |  |  |
|  | 4 | **Depth From 2.5m to 3.5m** |  | 2026-10-19 | 2026-11-10 |  |  |  |
| B6.33 05 13.07.1 |  | Excavation & Compaction | 3d | 2026-10-19 | 2026-10-21 | B6.33 42 11.34.1 |  | 13d |
| B6.33 05 13.07.2 |  | Blinding Conc, & RC Base | 4d | 2026-10-22 | 2026-10-26 | B6.33 05 13.07.1 |  | 25d |
| B6.33 05 13.07.3 |  | Manhole Installation | 3d | 2026-10-27 | 2026-10-29 | B6.33 05 13.07.2 |  | 25d |
| B6.33 05 13.07.4 |  | Test, Internal Finishing, Benching & Cover | 5d | 2026-10-31 | 2026-11-04 | B6.33 05 13.07.3 |  | 25d |
| B6.33 05 13.07.5 |  | Backfilling | 5d | 2026-11-05 | 2026-11-10 | B6.33 05 13.07.4, B6.33 05 13.055, B6.33 05 13.075, B6.33 05 13.085 |  | 25d |
|  | 1 | **Depth From 3.5m to 4.5m** |  | 2026-10-22 | 2026-11-15 |  |  |  |
| B6.33 05 13.08.1 |  | Excavation & Compaction | 3d | 2026-10-22 | 2026-10-25 | B6.33 05 13.07.1 |  | 13d |
| B6.33 05 13.08.2 |  | Blinding Conc, & RC Base | 4d | 2026-10-26 | 2026-10-29 | B6.33 05 13.08.1 |  | 21d |
| B6.33 05 13.08.3 |  | Manhole Installation | 3d | 2026-10-31 | 2026-11-02 | B6.33 05 13.08.2 |  | 21d |
| B6.33 05 13.08.4 |  | Test, Internal Finishing, Benching & Cover | 6d | 2026-11-03 | 2026-11-09 | B6.33 05 13.08.3 |  | 21d |
| B6.33 05 13.08.5 |  | Backfilling | 5d | 2026-11-10 | 2026-11-15 | B6.33 05 13.08.4, B6.33 05 13.05.06, B6.33 05 13.07.06 |  | 21d |
|  | 3 | **Depth From 4.5m to 5.5m** |  | 2026-10-26 | 2026-11-21 |  |  |  |
| B6.33 05 13.09.1 |  | Excavation & Compaction | 3d | 2026-10-26 | 2026-10-28 | B6.33 05 13.08.1 |  | 13d |
| B6.33 05 13.09.2 |  | Blinding Conc, & RC Base | 4d | 2026-10-29 | 2026-11-02 | B6.33 05 13.09.1 |  | 22d |
| B6.33 05 13.09.3 |  | Manhole Installation | 4d | 2026-11-03 | 2026-11-07 | B6.33 05 13.09.2 |  | 22d |
| B6.33 05 13.09.4 |  | Test, Internal Finishing, Benching & Cover | 6d | 2026-11-08 | 2026-11-14 | B6.33 05 13.09.3 |  | 22d |
| B6.33 05 13.09.5 |  | Backfilling | 5d | 2026-11-16 | 2026-11-21 | B6.33 05 13.09.4, B6.33 05 13.08.5, B6.33 05 13.07.5 |  | 21d |
|  | Catch Basins | **Catch Basins** |  | 2026-05-22 | 2026-11-30 |  |  |  |
|  | Sing | **Single** |  | 2026-05-22 | 2026-11-30 |  |  |  |
| B6.33 05 63.07.1 |  | Excavation, Compaction & Vapour Barrier | 98d | 2026-05-22 A | 2026-10-28 | B6.33 05 13.09.1 FF | 5% | 13d |
| B6.33 05 63.07.2 |  | Blinding Conc. | 97d | 2026-05-24 A | 2026-09-19 | B6.33 05 63.07.1 SS | 5% | 113d |
| B6.33 05 63.07.3 |  | Catch Basin Installation | 93d | 2026-06-03 A | 2026-09-20 | B6.33 05 63.07.2 SS | 5% | 112d |
| B6.33 05 63.07.4 |  | Backfilling, DI Frame & Grate Cover Fixing | 5d | 2026-11-25 | 2026-11-30 | B6.33 42 11.35.12, B6.33 05 40.01.760, B6.33 05 63.08.4 |  | 13d |
|  | Dou | **Double** |  | 2026-10-29 | 2026-11-24 |  |  |  |
| B6.33 05 63.08.1 |  | Excavation, Compaction & Vapour Barrier | 3d | 2026-10-29 | 2026-11-01 | B6.33 05 63.07.1, B1.1.31 23 19.02 |  | 13d |
| B6.33 05 63.08.2 |  | Blinding Conc. | 3d | 2026-11-02 | 2026-11-04 | B6.33 05 63.08.1, B6.33 42 11.31-1 1 |  | 13d |
| B6.33 05 63.08.3 |  | Catch Basin Installation | 4d | 2026-11-05 | 2026-11-09 | B6.33 05 63.08.2, DMM2-Proc-Delv-5758 |  | 13d |
| B6.33 05 63.08.4 |  | Backfilling, DI Frame & Grate Cover Fixing | 5d | 2026-11-19 | 2026-11-24 | B6.33 42 11.36.12, B6.33 42 11.35.12 |  | 13d |
|  | UPVC | **UPVC** |  | 2026-06-01 | 2026-11-18 |  |  |  |
|  | UPVC300 | **?300 From 0.0 to 1.5m** |  | 2026-06-01 | 2026-09-19 |  |  |  |
| B6.33 42 11.35.11 |  | Catch Basin Opening Prep. | 94d | 2026-06-01 A | 2026-09-19 | B6.33 05 63.07.3 SS | 4% | 113d |
| B6.33 42 11.35.12 |  | Fittings & Pipe Installation | 11.81d | 2026-06-01 A | 2026-06-14 A | B6.33 42 11.35.11 SS | 100% |  |
|  | UPVC3001 | **?400 From 0.0 to 1.5m** |  | 2026-11-10 | 2026-11-18 |  |  |  |
| B6.33 42 11.36.11 |  | Catch Basin Opening Prep. | 3d | 2026-11-10 | 2026-11-12 | B6.33 05 63.08.3 |  | 13d |
| B6.33 42 11.36.12 |  | Fittings & Pipe Installation | 5d | 2026-11-14 | 2026-11-18 | B6.33 42 11.36.11 |  | 13d |
|  | SDS1 | **Dry Networks** |  | 2026-09-28 | 2026-11-07 |  |  |  |
|  | SL | **Street Lighting** |  | 2026-09-28 | 2026-11-07 |  |  |  |
|  | Duct Banks | **Duct Banks** |  | 2026-10-11 | 2026-10-25 |  |  |  |
|  | 2 Way | **2 Way** |  | 2026-10-11 | 2026-10-15 |  |  |  |
| B2.33 71 00 02 011 |  | Excavation | 2d | 2026-10-11 | 2026-10-12 | B2.33 71 19 13 |  | 75d |
| B2.33 71 00 02 012 |  | Shuttering, Steel Fixing Incl. UPVC Pipe & Conc. Cast | 3d | 2026-10-13 | 2026-10-15 | B2.33 71 00 02 011 |  | 80d |
| B2.33 71 00 02 013 |  | Backfilling & Warrning Tape | 3d | 2026-10-13 | 2026-10-15 | B2.33 71 00 02 012 SS, B6.33 42 11.35.12 |  | 80d |
|  | 4 Way | **4 Way** |  | 2026-10-13 | 2026-10-25 |  |  |  |
| B2.33 71 00 02 021 |  | Excavation | 2d | 2026-10-13 | 2026-10-14 | B2.33 71 00 02 011 |  | 75d |
| B2.33 71 00 02 022 |  | Shuttering, Steel Fixing Incl. UPVC Pipe & Conc. Cast | 3d | 2026-10-15 | 2026-10-18 | B2.33 71 00 02 021 |  | 75d |
| B2.33 71 00 02 023 |  | Backfilling & Warrning Tape | 3d | 2026-10-21 | 2026-10-25 | B2.33 71 00 02 022, B6.33 42 11.35.12, B2.33 71 16.66 |  | 72.76d |
|  | Drawpits | **Drawpits** |  | 2026-10-15 | 2026-10-21 |  |  |  |
| B2.33 71 00 02 041 |  | Excavation | 2d | 2026-10-15 | 2026-10-17 | B2.33 71 00 02 021, B2.33 71 00 02 011 |  | 80d |
| B2.33 71 00 02 042 |  | Drawpits Installation | 2d | 2026-10-18 | 2026-10-19 | B2.33 71 00 02 041, DMM2-Proc-Delv-7241 |  | 80d |

| ID | WBS | Task | Duration | Start | Finish | Predecessors | Complete | Total float |
| --- | --- | --- | --- | --- | --- | --- | --- | --- |
| B2.33 71 00 02 043 |  | Backfilling & Warrning Tape | 2d | 2026-10-20 | 2026-10-21 | B2.33 71 00 02 042, B6.33 42 11.35.12 |  | 80d |
|  | Cables | **Cables** |  | 2026-09-30 | 2026-10-28 |  |  |  |
|  | 4C,10+1C,10mm2 | **4C,10+1C,10mm2** |  | 2026-09-30 | 2026-10-28 |  |  |  |
| B2.33 71 19 242 |  | Land Adjustment | 3d | 2026-09-30 | 2026-10-03 | B2.33 71 16.25 |  | 29d |
| B2.33 71 49.23.202 |  | Cable Pulling | 2d | 2026-10-04 | 2026-10-05 | B2.33 71 19 242 |  | 29d |
| B2.33 71 19 252 |  | Backfilling | 3d | 2026-10-25 | 2026-10-28 | B2.33 71 00 02 023 |  | 72.76d |
|  | SL Poles | **SL Poles** |  | 2026-09-28 | 2026-11-07 |  |  |  |
|  | Pole (10 M Sngl Arm) | **Pole (10 M Single Arm)** |  | 2026-09-28 | 2026-11-07 |  |  |  |
| B2.33 71 16.25 |  | Excavation | 2d | 2026-09-28 | 2026-09-29 | B2.33 71 19 013 |  | 27d |
| B2.33 71 16.26 |  | PC & RC Foundation | 3d | 2026-09-30 | 2026-10-03 | B2.33 71 16.25 |  | 27d |
| B2.33 71 16.27 |  | Lighting Poles Installation Incl power box, Cables | 4d | 2026-10-04 | 2026-10-07 | B2.33 71 16.26 |  | 27d |
| B2.26.56.19.1 |  | Lighting Luminares Inst | 3d | 2026-10-08 | 2026-10-11 | B2.33 71 16.27 |  | 84d |
| B2.33 71 16.28 |  | Backfilling, Grouting & Chamfering | 3d | 2026-11-04 | 2026-11-07 | B2.26.56.19.1, B2.1.02 41 00.18 SS, B2.33 71 00 02 013, B2.33 71 00 02 57 |  | 64d |
|  | Relocate SLP | **Relocate Lighting Poles** |  | 2026-09-30 | 2026-10-28 |  |  |  |
| B2.1.02 41 00.16 |  | Excavation (Evacuation Around Poles) | 2d | 2026-09-30 | 2026-10-01 | B2.33 71 16.25 |  | 87d |
| B2.1.02 41 00.17 |  | Old Poles Grubbing | 3d | 2026-10-03 | 2026-10-05 | B2.1.02 41 00.16 |  | 87d |
| B2.1.02 41 00.17a |  | Poles Transferring & Installation Incl. Foundation | 2d | 2026-10-06 | 2026-10-07 | B2.1.02 41 00.17 |  | 87d |
| B2.1.02 41 00.18 |  | Backfilling & Warrning Tape | 3d | 2026-10-25 | 2026-10-28 | B2.1.02 41 00.17a, B2.33 71 19 252 FF, B2.33 71 19 28 |  | 72.76d |
|  | Earthing | **Earthing** |  | 2026-10-08 | 2026-10-15 |  |  |  |
| B2.33 71 19 13 |  | Land Adjustment | 2d | 2026-10-08 | 2026-10-10 | B2.33 71 49.23.202, B2.33 71 16.27 |  | 27d |
| B2.33 71 19 14 |  | Earth Rods & Conduits | 2d | 2026-10-11 | 2026-10-12 | B2.33 71 19 13 |  | 27d |
| B2.33 71 19 15 |  | Backfilling | 3d | 2026-10-13 | 2026-10-15 | B2.33 71 19 14 |  | 27d |
|  | Earth & Road Works | **Earth & Road Works** |  | 2026-01-08 | 2026-10-26 |  |  |  |
|  | Earth Works | **Earth Works** |  | 2026-01-08 | 2026-10-01 |  |  |  |
| B1.2.31 23 16.01.2 |  | Roadway Excavation | 53.44d | 2026-01-08 A | 2026-03-24 A | B6.33 42 11.35.12 | 100% |  |
| B1.2.31 23 23.01.2 |  | Embankment Backfiling | 214d | 2026-01-10 A | 2026-10-01 | B1.2.31 23 16.01.2 | 12% | 103d |
|  | Earth Layers | **Earth Layers** |  | 2026-08-17 | 2026-09-19 |  |  |  |
| B1.2.32 11 23.01.2 |  | Aggregate Base Course | 32.24d | 2026-08-17 A | 2026-09-19 | B1.2.32 11 13.01.2 SS | 22% | 33d |
| B1.2.32 11 13.01.2 |  | Subgrade | 20d | 2026-08-31 A | 2026-09-19 | B1.2.31 23 23.01.2 SS | 50% | 113d |
|  | Interlock | **Interlock** |  | 2026-10-13 | 2026-10-15 |  |  |  |
| B1.2.32 14 13.13.2 |  | 60mm thick - Interlocking Block Pavers | 3d | 2026-10-13 | 2026-10-15 | B1.2.32 11 23.01.2 SS, B2.33 71 19 15 SS |  | 27d |
|  | Curbstone | **Curbstone** |  | 2026-09-20 | 2026-10-24 |  |  |  |
|  | Pre Install | **Pre-Installation** |  | 2026-09-20 | 2026-09-29 |  |  |  |
| 32 16 13.0021 |  | Excavation | 2d | 2026-09-20 | 2026-09-21 | B1.2.32 11 23.01.2 |  | 33d |
| 32 16 13.0023 |  | Haunching | 3d | 2026-09-22 | 2026-09-26 | 32 16 13.0021 |  | 39d |
| 32 16 13.0024 |  | PCC | 3d | 2026-09-27 | 2026-09-29 | 32 16 13.0023 |  | 39d |
|  | Installation | **Installation** |  | 2026-10-14 | 2026-10-18 |  |  |  |
| B1.2.32 16.13.01.2 |  | Curb Stone, Type K1 | 2d | 2026-10-14 | 2026-10-15 | B1.2.32 14 13.13.2 SS, 32 16 13.0024, DMM2-Proc-Delv-7267 |  | 27d |
| B1.2.32 16.13.03.2 |  | Edge Curb, Type K4 | 2d | 2026-10-14 | 2026-10-15 | B1.2.32 14 13.13.2 SS, B1.2.32 16.13.01.2 SS |  | 27d |
| B1.2.32 16.13.042 |  | Heel Curb, Type K5 | 2d | 2026-10-17 | 2026-10-18 | B1.2.32 14 13.13.2, B1.2.32 16.13.03.2 |  | 27d |
|  | Finishing | **Finishing** |  | 2026-10-22 | 2026-10-24 |  |  |  |
| 32 16 13.0022 |  | Finishing, Fareface | 2d | 2026-10-22 | 2026-10-24 | B1.2.32 16.13.01.2, B1.2.32 16.13.03.2, B1.2.32 16.13.042, B1.2.32 12 16.01.2 |  | 42d |
|  | Asphalt Layers | **Asphalt Layers** |  | 2026-08-26 | 2026-10-21 |  |  |  |
| B1.2.32 11 26.01.2 |  | Bituminous Base Course including Prime Coat (MC1) and tack coat (RC2) | 27d | 2026-08-26 A | 2026-09-20 | B1.2.32 11 23.01.2 FF |  | 52d |
| B1.2.32 12 16.01.2 |  | Bituminous concrete Wearing Course, including tack coat (RC2) | 5d | 2026-10-17 | 2026-10-21 | B1.2.32 11 26.01.2 SS, B1.2.32 16.13.042 SS |  | 27d |
|  | Pavement Marking | **Pavement Marking** |  | 2026-10-25 | 2026-10-26 |  |  |  |
| B1.2.32 17 23.01.2 |  | Retroreflective Thermoplastic White Traffic lines | 2d | 2026-10-25 | 2026-10-26 | B1.2.32 12 16.01.2, B1.2.32 12 19.13.02, 32 16 13.0022, B1.1.02 41 00.01 |  | 42d |
| B1.2.32 17 23.02.2 |  | Retroreflective Thermoplastic Yellow, Traffic lines | 2d | 2026-10-25 | 2026-10-26 | B1.2.32 12 16.01.2, B1.2.32 12 19.13.02, 32 16 13.0022 |  | 42d |
|  | Traffic Signs | **Traffic Signs** |  | 2026-09-22 | 2026-10-01 |  |  |  |
|  | Pre Install | **Pre-Installation** |  | 2026-09-22 | 2026-09-27 |  |  |  |
| B2.31 23 00.41 |  | Excavation | 2d | 2026-09-22 | 2026-09-24 | 32 16 13.0021 |  | 33d |
| 10 14 53.02 |  | Foundation | 2d | 2026-09-26 | 2026-09-27 | B2.31 23 00.41 |  | 33d |
|  | Installation | **Installation** |  | 2026-09-28 | 2026-10-01 |  |  |  |
| B1.2.10 14 53.317 |  | 1 Sheet Alumenium, Single post | 2d | 2026-09-28 | 2026-09-29 | 10 14 53.02 |  | 33d |
| B1.2.10 14 14.01.18 |  | Ground mounted, 1 Sheet Alumenium, Single post | 2d | 2026-09-30 | 2026-10-01 | 10 14 53.02, B1.2.10 14 53.318 SS |  | 33d |
| B1.2.10 14 53.318 |  | 2 Sheet Alumenium, Single post | 2d | 2026-09-30 | 2026-10-01 | 10 14 53.02, B1.2.10 14 53.317 |  | 33d |
|  | Road Misc. | **Miscellaneous** |  | 2026-10-22 | 2026-10-24 |  |  |  |
| B1.2.32 12 19.13.02 |  | Speed Tables | 2d | 2026-10-22 | 2026-10-24 | B1.2.32 12 16.01.2 |  | 42d |
|  | Demolishion | **Demolishing and Site Clearing** |  | 2026-01-17 | 2026-06-15 |  |  |  |
| B1.1.02 41 00.03 |  | Removal of concrete protection | 4d | 2026-01-17 A | 2026-01-20 A | B1.1.02 41 00.02 | 100% |  |
| B1.1.02 41 00.09 |  | Dismantling and relocation of existing inlets | 24.25d | 2026-03-06 A | 2026-04-11 A | B1.1.02 41 00.05 | 100% |  |
| B1.1.02 41 00.02 |  | Removal of bituminous concrete wearing course | 4d | 2026-04-06 A | 2026-04-10 A | B1.1.02 41 00.01 | 100% |  |
| B1.1.02 41 00.08 |  | Selective Tree Removal | 4d | 2026-04-06 A | 2026-04-09 A | B1.1.02 41 00.06 | 100% |  |
| B1.1.02 41 00.04 |  | Removal of riprap | 6d | 2026-04-15 A | 2026-04-21 A | B1.1.02 41 00.03 | 100% |  |
| B1.1.02 41 00.01 |  | Removal of curbstone | 4d | 2026-05-09 A | 2026-05-12 A | B2.31 23 00.02 | 100% |  |
| B1.1.02 41 00.10 |  | Dismantling and level adjustment for storm manholes | 2d | 2026-05-31 A | 2026-06-01 A | B1.1.02 41 00.09, B1.1.02 41 00.100 | 100% |  |
| B1.1.02 41 00.05 |  | Removal of traffic signs | 7d | 2026-06-08 A | 2026-06-15 A | B1.1.02 41 00.08 | 100% |  |
| B1.1.02 41 00.06 |  | Removal of culvert's wing walls | 7d | 2026-06-08 A | 2026-06-15 A | B1.1.02 41 00.04 | 100% |  |
| B1.1.02 41 00.101 |  | Removal of existing building | 7d | 2026-06-08 A | 2026-06-15 A | B1.1.02 41 00.10 | 100% |  |
|  | Zone 02 | **Zone 02** |  | 2025-09-18 | 2026-12-21 |  |  |  |

| ID | WBS | Task | Duration | Start | Finish | Predecessors | Complete | Total float |
| --- | --- | --- | --- | --- | --- | --- | --- | --- |
|  | Dewatering | **Earthworks & Site Grading** |  | 2025-09-18 | 2026-09-24 |  |  |  |
| B1.1.31 23 19.02 |  | Dewatering | 18.49d | 2025-09-18 A | 2025-10-12 A | B1.1.31 23 19.01 | 100% |  |
| B1.1.31 23 16.02 |  | Excavation (all types of soil) | 280.23d | 2025-10-14 A | 2026-09-24 | B1.1.31 23 19.02, B1.1.31 23 16.01 FF | 95% | 109.78d |
| B1.1.31 23 23.52 |  | Engineering Backfiling - Entrance Road 01 | 82.14d | 2025-10-28 A | 2026-02-01 A | B1.1.31 23 23.92, B1.1.31 23 23.92 FF | 100% |  |
| B1.1.31 23 23.72 |  | Engineering Backfiling - Management Road 01 | 82.14d | 2025-11-09 A | 2026-02-12 A | B1.1.31 23 23.62, B1.1.31 23 23.62 FF | 100% |  |
| B1.1.31 23 23.62 |  | Engineering Backfiling - Entrance Road 02 | 99.14d | 2025-11-12 A | 2026-03-15 A | B1.1.31 23 23.52, B1.1.31 23 23.52 FF | 100% |  |
| B1.1.31 23 23.42 |  | Engineering Backfiling - Commercial Road 01 | 89.64d | 2025-11-15 A | 2026-03-03 A | B1.1.31 23 23.72, B1.1.31 23 23.72 FF | 100% |  |
| B1.1.31 23 23.82 |  | Engineering Backfiling - Parking Roads | 75.1d | 2025-12-01 A | 2026-03-03 A | B1.1.31 23 23.42 | 100% |  |
| B1.1.31 23 23.102 |  | Engineering Backfiling - Pump Station | 25.81d | 2026-01-26 A | 2026-03-01 A | B1.1.31 23 23.02 | 100% |  |
| B1.1.31 23 23.02 |  | Engineering Backfiling - Arterial Roads | 27.67d | 2026-02-02 A | 2026-03-12 A | B1.1.31 23 23.82 | 100% |  |
| B1.1.31 23 23.112 |  | Engineering Backfiling - Guard Rooms | 29.01d | 2026-02-04 A | 2026-03-19 A | B1.1.31 23 23.102 | 100% |  |
| B1.1.31 23 23.92 |  | Engineering Backfiling - Service Road | 24.51d | 2026-02-18 A | 2026-04-01 A | B1.1.31 23 16.02 SS | 100% |  |
|  | Service Road | **Service Road** |  | 2026-02-13 | 2026-11-14 |  |  |  |
|  | Wet Networks | **Wet Networks** |  | 2026-08-09 | 2026-10-26 |  |  |  |
|  | Stormwater Network | **Stormwater Network** |  | 2026-08-09 | 2026-10-26 |  |  |  |
|  | GRP | **GRP** |  | 2026-08-11 | 2026-09-20 |  |  |  |
|  | ?40011 | **?1500** |  | 2026-08-11 | 2026-09-20 |  |  |  |
|  | 3 | **Depth From 2.5m to 3.5m** |  | 2026-08-13 | 2026-09-20 |  |  |  |
| B6.33 42 11.31-1 1 |  | Excavation | 2d | 2026-08-13 A | 2026-08-16 A | B1.1.31 23 19.02, B1.1.31 23 23.92 | 100% |  |
| B6.33 42 11.31-1 3 |  | Sand Bedding | 27.38d | 2026-08-16 A | 2026-09-19 | B6.33 42 11.31-1 1 | 67% | 113.72d |
| B6.33 42 11.31-1 5 |  | Pipe Laying | 26.38d | 2026-08-17 A | 2026-09-19 | B6.33 42 11.31-1 3 FF | 40% | 113.72d |
| B6.33 42 11.31-1 7 |  | Embedment & Test | 24.84d | 2026-08-20 A | 2026-09-19 | B6.33 42 11.31-1 5 FF | 67% | 113.16d |
| B6.33 42 11.31-1 9 |  | Backfilling & Warrning Tape | 23.12d | 2026-08-23 A | 2026-09-20 | B6.33 42 11.31-1 7 FF | 67% | 112.88d |
|  | 1 | **Depth From 3.5m to 4.5m** |  | 2026-08-11 | 2026-09-19 |  |  |  |
| B6.33 42 11.31-1 2 |  | Excavation | 5d | 2026-08-11 A | 2026-08-17 A | B6.33 42 11.31-1 1 | 100% |  |
| B6.33 42 11.31-1 4 |  | Sand Bedding | 28.38d | 2026-08-15 A | 2026-09-19 | B6.33 42 11.31-1 2 | 67% | 113.72d |
| B6.33 42 11.31-1 6 |  | Pipe Laying | 27.38d | 2026-08-16 A | 2026-09-19 | B6.33 42 11.31-1 4 FF | 67% | 113.72d |
| B6.33 42 11.31-1 8 |  | Embedment & Test | 24.84d | 2026-08-20 A | 2026-09-19 | B6.33 42 11.31-1 6 FF | 67% | 113.16d |
| B6.33 42 11.31-1 10 |  | Backfilling & Warrning Tape | 20.94d | 2026-08-25 A | 2026-09-19 | B6.33 42 11.31-1 8 FF | 67% | 113.06d |
|  | Strom Manholes | **Manholes** |  | 2026-08-10 | 2026-09-24 |  |  |  |
|  | 2 | **?1500** |  | 2026-08-15 | 2026-09-24 |  |  |  |
|  | 1 | **Depth From 2.5m to 3.5m** |  | 2026-08-15 | 2026-09-24 |  |  |  |
| B6.33 05 39.01.3327 |  | Excavation & Compaction | 1d | 2026-08-15 A | 2026-08-16 A | B6.33 42 11.31-1 2 | 100% |  |
| B6.33 05 39.01.3337 |  | Blinding Conc, & RC Base | 25d | 2026-08-19 A | 2026-09-17 | B6.33 05 39.01.3327 | 75% | 114d |
| B6.33 05 39.01.3347 |  | Manhole Installation | 22d | 2026-08-23 A | 2026-09-17 | B6.33 05 39.01.3337 SS | 75% | 109d |
| B6.33 05 39.01.3367 |  | Backfilling | 21.25d | 2026-08-24 A | 2026-09-24 | B6.33 05 39.01.3357 FF, B6.33 05 13.01 5 SS, B6.33 05 13.07 5 SS | 75% | 109d |
| B6.33 05 39.01.3357 |  | Test, Internal Finishing, Benching & Cover | 5d | 2026-09-19 | 2026-09-24 | B6.33 05 39.01.3347 |  | 109d |
|  | 3 | **?2000** |  | 2026-08-10 | 2026-09-24 |  |  |  |
|  | 3 | **Depth From 2.5m to 3.5m** |  | 2026-08-19 | 2026-09-24 |  |  |  |
| B6.33 05 39.01.3377 |  | Excavation & Compaction | 25d | 2026-08-19 A | 2026-09-17 | B6.33 05 39.01.3327 | 75% | 114d |
| B6.33 05 39.01.3387 |  | Blinding Conc, & RC Base | 23d | 2026-08-22 A | 2026-09-17 | B6.33 05 39.01.3377 SS | 75% | 114d |
| B6.33 05 39.01.3397 |  | Manhole Installation | 22d | 2026-08-23 A | 2026-09-17 | B6.33 05 39.01.3387 SS | 75% | 109d |
| B6.33 05 39.01.3417 |  | Backfilling | 20.25d | 2026-08-25 A | 2026-09-24 | B6.33 05 39.01.3407 FF | 75% | 109d |
| B6.33 05 39.01.3407 |  | Test, Internal Finishing, Benching & Cover | 5d | 2026-09-19 | 2026-09-24 | B6.33 05 39.01.3397 |  | 109d |
|  | 1 | **Depth From 3.5m to 4.5m** |  | 2026-08-13 | 2026-09-24 |  |  |  |
| B6.33 05 39.01.3427 |  | Excavation & Compaction | 30d | 2026-08-13 A | 2026-09-17 | B6.33 05 39.01.3377 SS | 75% | 114d |
| B6.33 05 39.01.3437 |  | Blinding Conc, & RC Base | 28d | 2026-08-16 A | 2026-09-17 | B6.33 05 39.01.3427 SS | 75% | 114d |
| B6.33 05 39.01.3447 |  | Manhole Installation | 25d | 2026-08-19 A | 2026-09-17 | B6.33 05 39.01.3437 SS | 75% | 109d |
| B6.33 05 39.01.3467 |  | Backfilling | 22d | 2026-08-23 A | 2026-09-24 | B6.33 05 39.01.3457 FF | 75% | 109d |
| B6.33 05 39.01.3457 |  | Test, Internal Finishing, Benching & Cover | 5d | 2026-09-19 | 2026-09-24 | B6.33 05 39.01.3447 |  | 109d |
|  | 2 | **Depth From 4.5m to 5.5m** |  | 2026-08-10 | 2026-09-24 |  |  |  |
| B6.33 05 39.01.3477 |  | Excavation & Compaction | 33d | 2026-08-10 A | 2026-09-17 | B6.33 05 39.01.3427 SS | 75% | 43d |
| B6.33 05 39.01.3487 |  | Blinding Conc, & RC Base | 30d | 2026-08-13 A | 2026-09-17 | B6.33 05 39.01.3477 SS | 75% | 114d |
| B6.33 05 39.01.3497 |  | Manhole Installation | 27d | 2026-08-17 A | 2026-09-17 | B6.33 05 39.01.3487 SS | 75% | 109d |
| B6.33 05 39.01.3517 |  | Backfilling | 24d | 2026-08-20 A | 2026-09-24 | B6.33 05 39.01.3507 FF, B6.33 05 39.01.3367 SS, B6.33 05 39.01.4017 SS | 75% | 109d |
| B6.33 05 39.01.3507 |  | Test, Internal Finishing, Benching & Cover | 5d | 2026-09-19 | 2026-09-24 | B6.33 05 39.01.3497 |  | 109d |
|  | Catch Basins | **Catch Basins** |  | 2026-08-09 | 2026-10-26 |  |  |  |
|  | Sing | **Single** |  | 2026-09-19 | 2026-10-19 |  |  |  |
| B6.33 05 40.01.330 |  | Excavation, Compaction & Vapour Barrier | 3d | 2026-09-19 | 2026-09-21 | B6.33 05 39.01.3477 |  | 43d |
| B6.33 05 40.01.340 |  | Blinding Conc. | 3d | 2026-09-22 | 2026-09-26 | B6.33 05 40.01.330 |  | 43d |
| B6.33 05 40.01.350 |  | Catch Basin Installation | 4d | 2026-09-27 | 2026-09-30 | B6.33 05 40.01.340 |  | 43d |
| B6.33 05 40.01.360 |  | Backfilling, DI Frame & Grate Cover Fixing | 6d | 2026-10-13 | 2026-10-19 | B6.33 42 11.36-1.2 |  | 43d |
|  | Dou | **Double** |  | 2026-09-22 | 2026-10-26 |  |  |  |
| B6.33 05 40.01.810 |  | Excavation, Compaction & Vapour Barrier | 3d | 2026-09-22 | 2026-09-26 | B6.33 05 40.01.330 |  | 44d |
| B6.33 05 40.01.820 |  | Blinding Conc. | 3d | 2026-09-27 | 2026-09-29 | B6.33 05 40.01.810 |  | 44d |
| B6.33 05 40.01.830 |  | Catch Basin Installation | 4d | 2026-10-01 | 2026-10-05 | B6.33 05 40.01.820, B6.33 05 40.01.350 |  | 43d |
| B6.33 05 40.01.840 |  | Backfilling, DI Frame & Grate Cover Fixing | 6d | 2026-10-20 | 2026-10-26 | B6.33 05 40.01.360, B6.33 05 63.053, B6.33 05 63.063 |  | 43d |
|  | UPVC | **UPVC** |  | 2026-08-09 | 2026-10-12 |  |  |  |
|  | UPVC300 | **?300 From 0.0 to 1.5m** |  | 2026-08-09 | 2026-10-08 |  |  |  |
| B6.33 42 11.35-1.2 |  | Fittings & Pipe Installation | 34.09d | 2026-08-09 A | 2026-10-08 | B6.33 42 11.35-1.1 FF | 45% | 97d |

| ID | WBS | Task | Duration | Start | Finish | Predecessors | Complete | Total float |
| --- | --- | --- | --- | --- | --- | --- | --- | --- |
| B6.33 42 11.35-1.1 |  | Catch Basin Opening Prep. | 3d | 2026-10-06 | 2026-10-08 | B6.33 05 40.01.830 |  | 43d |
|  | UPVC3001 | **?400 From 0.0 to 1.5m** |  | 2026-08-12 | 2026-10-12 |  |  |  |
| B6.33 42 11.36-1.2 |  | Fittings & Pipe Installation | 31.09d | 2026-08-12 A | 2026-10-12 | B6.33 42 11.36-1.1 FF | 36% | 43d |
| B6.33 42 11.36-1.1 |  | Catch Basin Opening Prep. | 3d | 2026-10-10 | 2026-10-12 | B6.33 42 11.35-1.1 |  | 43d |
|  | Dry Networks | **Dry Networks** |  | 2026-10-05 | 2026-11-09 |  |  |  |
|  | Street Lighting | **Street Lighting** |  | 2026-10-05 | 2026-11-09 |  |  |  |
|  | SL Poles | **SL Poles** |  | 2026-10-05 | 2026-10-21 |  |  |  |
|  | Pole (10 M Sngl Arm) | **Pole (10 M Single Arm)** |  | 2026-10-05 | 2026-10-21 |  |  |  |
| B2.33 71 16.63 |  | Excavation | 2d | 2026-10-05 | 2026-10-07 | B1.2.32 11 26.01.9 |  | 0.76d |
| B2.33 71 16.64 |  | PC & RC Foundation | 3d | 2026-10-07 | 2026-10-11 | B2.33 71 16.63 |  | 72.76d |
| B2.33 71 16.65 |  | Lighting Poles Installation Incl power box, Cables | 3d | 2026-10-11 | 2026-10-14 | B2.33 71 16.64 |  | 72.76d |
| B2.26.56.19.9 |  | Lighting Luminares Inst | 3d | 2026-10-14 | 2026-10-18 | B2.33 71 16.65 |  | 72.76d |
| B2.33 71 16.66 |  | Backfilling, Grouting & Chamfering | 3d | 2026-10-18 | 2026-10-21 | B2.26.56.19.9 |  | 72.76d |
|  | Earthing | **Earthing** |  | 2026-10-07 | 2026-11-09 |  |  |  |
| B2.33 71 19 32 |  | Land Adjustment | 2d | 2026-10-07 | 2026-10-10 | B2.33 71 16.63 |  | 0.76d |
| B2.33 71 19 33 |  | Earth Rods & Conduits | 2d | 2026-10-10 | 2026-10-12 | B2.33 71 19 32, DMM2-Proc-Delv-7240 |  | 86.76d |
| B2.33 71 19 34 |  | Backfilling | 3d | 2026-11-07 | 2026-11-09 | B2.33 71 19 33, B2.33 71 19 92 |  | 65d |
|  | LV Network | **Low Voltage Network** |  | 2026-10-10 | 2026-10-20 |  |  |  |
|  | MV Replacing | **Cable Replacement** |  | 2026-10-10 | 2026-10-20 |  |  |  |
| B2.33 71 49.23.101 |  | Excavation | 2d | 2026-10-10 | 2026-10-12 | B2.33 71 19 32 |  | 0.76d |
| B2.33 71 49.23.98 |  | Old Cable Grubbing | 2d | 2026-10-12 | 2026-10-14 | B2.33 71 49.23.101 |  | 0.76d |
| B2.33 71 49.23.99 |  | New Cable Installation | 2d | 2026-10-14 | 2026-10-17 | B2.33 71 49.23.98 |  | 0.76d |
| B2.33 71 49.23.100 |  | Backfilling & Warrning Tape | 3d | 2026-10-17 | 2026-10-20 | B2.33 71 49.23.99 |  | 0.76d |
|  | Earth & Road Works | **Earth & Road Works** |  | 2026-02-13 | 2026-11-14 |  |  |  |
|  | Earth Works | **Earth Works** |  | 2026-02-13 | 2026-09-24 |  |  |  |
| B1.2.31 23 23.01.9 |  | Embankment Backfiling | 16.63d | 2026-02-13 A | 2026-03-10 A | B1.2.31 23 23.01.10 | 100% |  |
| B1.2.31 23 16.01.9 |  | Roadway Excavation | 2d | 2026-09-21 | 2026-09-24 | B2.31 23 00.221 |  | 0.76d |
|  | Earth Layers | **Earth Layers** |  | 2026-09-24 | 2026-09-29 |  |  |  |
| B1.2.32 11 13.01.9 |  | Subgrade | 2d | 2026-09-24 | 2026-09-27 | B1.2.31 23 23.01.9, B1.1.31 23 23.112, B1.2.31 23 16.01.9 |  | 0.76d |
| B1.2.32 11 23.01.9 |  | Aggregate Base Course | 2d | 2026-09-27 | 2026-09-29 | B1.2.32 11 13.01.9 |  | 0.76d |
|  | Interlock | **Interlock** |  | 2026-10-20 | 2026-10-24 |  |  |  |
| B1.2.32 14 13.13.9 |  | 60mm thick - Interlocking Block Pavers | 3d | 2026-10-20 | 2026-10-24 | B2.33 71 49.23.100 |  | 0.76d |
|  | Curbstone | **Curbstone** |  | 2026-10-20 | 2026-11-04 |  |  |  |
|  | Pre Install | **Pre-Installation** |  | 2026-10-20 | 2026-10-27 |  |  |  |
| B2.31 23 00.241 |  | Excavation | 2d | 2026-10-20 | 2026-10-22 | B1.2.32 14 13.13.9 SS |  | 10.76d |
| B1.2.32 14 13.13.29 |  | PCC | 2d | 2026-10-22 | 2026-10-25 | B2.31 23 00.241 |  | 10.76d |
| 32 16 13.009 |  | Haunching | 2d | 2026-10-25 | 2026-10-27 | B1.2.32 14 13.13.29 |  | 10.76d |
|  | Installation | **Installation** |  | 2026-10-27 | 2026-11-04 |  |  |  |
| B1.2.32 16.13.01.9 |  | Curb Stone, Type K1 | 2d | 2026-10-27 | 2026-10-29 | 32 16 13.009 |  | 10.76d |
| B1.2.32 16.13.02.8 |  | Dropped Curb, Type K3 | 1d | 2026-10-29 | 2026-10-31 | 32 16 13.009, B1.2.32 16.13.01.9 |  | 10.76d |
| B1.2.32 16.13.03.9 |  | Edge Curb, Type K4 | 2d | 2026-10-31 | 2026-11-02 | 32 16 13.009, B1.2.32 16.13.02.8 |  | 10.76d |
| B1.2.32 16.13.049 |  | Heel Curb, Type K5 | 2d | 2026-11-02 | 2026-11-04 | 32 16 13.009, B1.2.32 16.13.03.9 |  | 10.76d |
|  | Finishing | **Finishing** |  | 2026-11-02 | 2026-11-04 |  |  |  |
| 32 16 13.09 |  | Finishing, Fareface | 2d | 2026-11-02 | 2026-11-04 | B1.2.32 16.13.01.9 SS, B1.2.32 16.13.02.8 SS, B1.2.32 16.13.03.9 SS, B1.2.32 16.13.049 SS |  | 10.76d |
|  | Asphalt Layers | **Asphalt Layers** |  | 2026-09-29 | 2026-11-10 |  |  |  |
| B1.2.32 11 26.01.9 |  | Bituminous Base Course including Prime Coat (MC1) and tack coat (RC2) | 5d | 2026-09-29 | 2026-10-05 | B1.2.32 11 23.01.9 |  | 0.76d |
| B1.2.32 12 16.01.9 |  | Bituminous concrete Wearing Course, including tack coat (RC2) | 5d | 2026-11-04 | 2026-11-10 | B1.2.32 11 26.01.9, 32 16 13.09 |  | 10.76d |
|  | Pavement Marking | **Pavement Marking** |  | 2026-11-12 | 2026-11-14 |  |  |  |
| B1.2.32 17 23.01.9 |  | Retroreflective Thermoplastic White Traffic lines | 1d | 2026-11-12 | 2026-11-14 | B1.2.32 12 16.01.9, B1.2.32 12 19.13.09 |  | 26.76d |
| B1.2.32 17 23.02.9 |  | Retroreflective Thermoplastic Yellow, Traffic lines | 1d | 2026-11-12 | 2026-11-14 | B1.2.32 12 16.01.9, B1.2.32 12 19.13.09 |  | 26.76d |
|  | Traffic Signs | **Traffic Signs** |  | 2026-10-20 | 2026-10-27 |  |  |  |
|  | Pre Install | **Pre-Installation** |  | 2026-10-20 | 2026-10-25 |  |  |  |
| B2.31 23 00.251 |  | Excavation | 2d | 2026-10-20 | 2026-10-22 | B1.2.32 14 13.13.9 SS |  | 0.76d |
| 10 14 53.09 |  | Foundation | 2d | 2026-10-22 | 2026-10-25 | B2.31 23 00.251 |  | 55.76d |
|  | Installation | **Installation** |  | 2026-10-25 | 2026-10-27 |  |  |  |
| B1.2.10 14 53.019 |  | 1 Sheet Alumenium, Single post | 2d | 2026-10-25 | 2026-10-27 | B1.2.32 14 13.13.9, 10 14 53.09, 32 16 13.016 |  | 55.76d |
|  | Road Misc. | **Miscellaneous** |  | 2026-11-10 | 2026-11-12 |  |  |  |
| B1.2.32 12 19.13.09 |  | Speed Tables | 2d | 2026-11-10 | 2026-11-12 | B1.2.32 12 16.01.9 |  | 26.76d |
|  | Enterance RD 01 | **Entrance Road 01** |  | 2025-12-03 | 2026-12-16 |  |  |  |
|  | Wet Networks | **Wet Networks** |  | 2026-02-18 | 2026-09-22 |  |  |  |
|  | Sewerage Network | **Sewerage Network** |  | 2026-03-11 | 2026-09-22 |  |  |  |
|  | GRP | **GRP Pipes** |  | 2026-03-11 | 2026-09-22 |  |  |  |
|  | 150 | **?150** |  | 2026-03-11 | 2026-09-21 |  |  |  |
|  | 1 | **Depth From 0.0m - 1.5m** |  | 2026-03-11 | 2026-09-21 |  |  |  |
| B5.33 31 00.01.2119 |  | Excavation | 36.36d | 2026-03-11 A | 2026-04-29 A | B5.33 31 00.01.025 | 100% |  |
| B5.33 31 00.01.2129 |  | Sand Bedding | 35.36d | 2026-03-14 A | 2026-04-30 A | B5.33 31 00.01.2119 | 100% |  |
| B5.33 31 00.01.2139 |  | Pipe Laying | 14.36d | 2026-03-17 A | 2026-04-08 A | B5.33 31 00.01.2129 | 100% |  |
| B5.33 31 00.01.2149 |  | Embedment & Test | 4.62d | 2026-05-06 A | 2026-05-11 A | B5.33 31 00.01.2139 | 100% |  |
| B5.33 31 00.01.2159 |  | Backfilling & Warrning Tape | 110.56d | 2026-05-11 A | 2026-09-21 | B5.33 31 00.01.2149 | 7% | 111d |
|  | 1 | **?200** |  | 2026-03-14 | 2026-09-22 |  |  |  |

| ID | WBS | Task | Duration | Start | Finish | Predecessors | Complete | Total float |
| --- | --- | --- | --- | --- | --- | --- | --- | --- |
|  | 1 | **Depth From 0.0m - 1.5m** |  | 2026-03-14 | 2026-09-22 |  |  |  |
| B5.33 31 00.01.2169 |  | Excavation | 44.36d | 2026-03-14 A | 2026-05-11 A | B5.33 31 00.01.2119 | 100% |  |
| B5.33 31 00.01.2179 |  | Sand Bedding | 45.36d | 2026-03-17 A | 2026-05-14 A | B5.33 31 00.01.2169 | 100% |  |
| B5.33 31 00.01.2189 |  | Pipe Laying | 47.11d | 2026-03-19 A | 2026-05-18 A | B5.33 31 00.01.2179 | 100% |  |
| B5.33 31 00.01.2199 |  | Embedment & Test | 143.02d | 2026-04-01 A | 2026-09-20 | B5.33 31 00.01.2189 | 11% | 112.42d |
| B5.33 31 00.01.2209 |  | Backfilling & Warrning Tape | 136.56d | 2026-04-10 A | 2026-09-22 | B5.33 31 00.01.2199 FF, B5.33 31 00.01.2159 SS | 10% | 110d |
|  | Stormwater Network | **Stormwater Network** |  | 2026-02-18 | 2026-09-19 |  |  |  |
|  | GRP | **GRP** |  | 2026-02-18 | 2026-06-24 |  |  |  |
|  | ?400 | **?400** |  | 2026-02-18 | 2026-05-20 |  |  |  |
|  | 3 | **Depth From 1.5m to 2.5m** |  | 2026-02-18 | 2026-05-20 |  |  |  |
| B6.33 42 11.02.02 |  | Excavation | 13.75d | 2026-02-18 A | 2026-03-13 A | B1.1.31 23 23.52, DMM2-Proc-Delv-7414 SS | 100% |  |
| B6.33 42 11.02.03 |  | Sand Bedding | 16d | 2026-02-21 A | 2026-03-20 A | B6.33 42 11.02.02 | 100% |  |
| B6.33 42 11.02.04 |  | Pipe Laying | 18.25d | 2026-02-23 A | 2026-03-27 A | B6.33 42 11.02.03 | 100% |  |
| B6.33 42 11.02.05 |  | Embedment & Test | 15.4d | 2026-04-02 A | 2026-04-20 A | B6.33 42 11.02.04 | 100% |  |
| B6.33 42 11.02.06 |  | Backfilling & Warrning Tape | 37.29d | 2026-04-07 A | 2026-05-20 A | B6.33 42 11.02.05 | 100% |  |
|  | ?4001 | **?500** |  | 2026-03-24 | 2026-06-23 |  |  |  |
|  | 3 | **Depth From 1.5m to 2.5m** |  | 2026-03-24 | 2026-06-23 |  |  |  |
| B6.33 42 11.04.02 |  | Excavation | 6.74d | 2026-03-24 A | 2026-04-01 A | B6.33 42 11.02.02 | 100% |  |
| B6.33 42 11.04.03 |  | Sand Bedding | 4.74d | 2026-03-26 A | 2026-04-01 A | B6.33 42 11.04.02 | 100% |  |
| B6.33 42 11.04.04 |  | Pipe Laying | 2.74d | 2026-03-29 A | 2026-04-01 A | B6.33 42 11.04.03 | 100% |  |
| B6.33 42 11.04.05 |  | Embedment & Test | 2.08d | 2026-03-30 A | 2026-04-01 A | B6.33 42 11.04.04 | 100% |  |
| B6.33 42 11.04.06 |  | Backfilling & Warrning Tape | 63.65d | 2026-04-06 A | 2026-06-23 A | B6.33 42 11.04.05 | 100% |  |
|  | ?4002 | **?600** |  | 2026-03-26 | 2026-05-05 |  |  |  |
|  | 4 | **Depth From 2.5m to 3.5m** |  | 2026-03-26 | 2026-05-05 |  |  |  |
| B6.33 42 11.08.02 |  | Excavation | 1.16d | 2026-03-26 A | 2026-03-28 A | B6.33 42 11.04.02 | 100% |  |
| B6.33 42 11.08.03 |  | Sand Bedding | 1.16d | 2026-03-29 A | 2026-03-30 A | B6.33 42 11.08.02 | 100% |  |
| B6.33 42 11.08.04 |  | Pipe Laying | 1.16d | 2026-03-31 A | 2026-04-01 A | B6.33 42 11.08.03 | 100% |  |
| B6.33 42 11.08.05 |  | Embedment & Test | 11.24d | 2026-04-01 A | 2026-04-14 A | B6.33 42 11.08.04 | 100% |  |
| B6.33 42 11.08.06 |  | Backfilling & Warrning Tape | 26.74d | 2026-04-04 A | 2026-05-05 A | B6.33 42 11.08.05 | 100% |  |
|  | ?40021 | **?700** |  | 2026-04-06 | 2026-06-24 |  |  |  |
|  | 4 | **Depth From 2.5m to 3.5m** |  | 2026-04-06 | 2026-06-24 |  |  |  |
| B6.33 42 11.11.02 |  | Excavation | 29.16d | 2026-04-06 A | 2026-05-10 A | B6.33 42 11.08.02 | 100% |  |
| B6.33 42 11.11.03 |  | Sand Bedding | 28.16d | 2026-04-09 A | 2026-05-12 A | B6.33 42 11.11.02 | 100% |  |
| B6.33 42 11.11.04 |  | Pipe Laying | 29.16d | 2026-04-11 A | 2026-05-14 A | B6.33 42 11.11.03 | 100% |  |
| B6.33 42 11.11.05 |  | Embedment & Test | 29.33d | 2026-04-13 A | 2026-05-17 A | B6.33 42 11.11.04 | 100% |  |
| B6.33 42 11.11.06 |  | Backfilling & Warrning Tape | 54.41d | 2026-04-18 A | 2026-06-24 A | B6.33 42 11.11.05, B6.33 42 11.045 | 100% |  |
|  | Strom Manholes | **Manholes** |  | 2026-02-26 | 2026-09-17 |  |  |  |
|  | 1 | **?1200** |  | 2026-02-26 | 2026-09-17 |  |  |  |
|  | 4 | **Depth From 1.5m to 2.5m** |  | 2026-02-26 | 2026-09-17 |  |  |  |
| B6.33 05 13.01.02 |  | Excavation & Compaction | 0.75d | 2026-02-26 A | 2026-02-28 A | B6.33 42 11.11.02 | 100% |  |
| B6.33 05 13.01.03 |  | Blinding Conc, & RC Base | 5d | 2026-05-01 A | 2026-05-06 A | B6.33 05 13.01.02 | 100% |  |
| B6.33 05 13.01.04 |  | Manhole Installation | 89d | 2026-06-06 A | 2026-09-17 | B6.33 05 13.01.03 | 85% | 114d |
| B6.33 05 13.01.05 |  | Test, Internal Finishing, Benching & Cover | 83d | 2026-06-13 A | 2026-09-17 | B6.33 05 13.01.04 SS | 85% | 114d |
| B6.33 05 13.01.06 |  | Backfilling | 77d | 2026-06-20 A | 2026-09-17 | B6.33 05 13.025, B6.33 05 13.01.05 SS | 85% | 114d |
|  | 2 | **?1500** |  | 2026-03-08 | 2026-09-17 |  |  |  |
|  | 4 | **Depth From 2.5m to 3.5m** |  | 2026-03-08 | 2026-09-17 |  |  |  |
| B6.33 05 13.05.02 |  | Excavation & Compaction | 0.75d | 2026-03-08 A | 2026-03-09 A | B6.33 05 13.01.02 | 100% |  |
| B6.33 05 13.05.03 |  | Blinding Conc, & RC Base | 89d | 2026-06-06 A | 2026-09-17 | B6.33 05 13.05.02 | 92% | 114d |
| B6.33 05 13.05.04 |  | Manhole Installation | 83d | 2026-06-13 A | 2026-09-17 | B6.33 05 13.05.03 SS | 92% | 114d |
| B6.33 05 13.05.05 |  | Test, Internal Finishing, Benching & Cover | 77d | 2026-06-20 A | 2026-09-17 | B6.33 05 13.05.04 SS | 92% | 114d |
| B6.33 05 13.05.06 |  | Backfilling | 76d | 2026-06-21 A | 2026-09-17 | B6.33 05 13.125, B6.33 05 13.05.05 SS | 92% | 65d |
|  | 3 | **?2000** |  | 2026-06-06 | 2026-09-17 |  |  |  |
|  | 4 | **Depth From 2.5m to 3.5m** |  | 2026-06-06 | 2026-09-17 |  |  |  |
| B6.33 05 13.07.02 |  | Excavation & Compaction | 89d | 2026-06-06 A | 2026-09-17 | B6.33 05 13.05.02 | 85% | 114d |
| B6.33 05 13.07.03 |  | Blinding Conc, & RC Base | 83d | 2026-06-13 A | 2026-09-17 | B6.33 05 13.07.02 SS | 85% | 114d |
| B6.33 05 13.07.04 |  | Manhole Installation | 77d | 2026-06-20 A | 2026-09-17 | B6.33 05 13.07.03 SS | 85% | 114d |
| B6.33 05 13.07.05 |  | Test, Internal Finishing, Benching & Cover | 75d | 2026-06-22 A | 2026-09-17 | B6.33 05 13.07.04 SS | 85% | 114d |
| B6.33 05 13.07.06 |  | Backfilling | 74d | 2026-06-23 A | 2026-09-17 | B6.33 05 13.045, B6.33 05 13.07.05 SS | 85% | 65d |
|  | Catch Basins | **Catch Basins** |  | 2026-04-19 | 2026-09-19 |  |  |  |
|  | Sing | **Single** |  | 2026-05-03 | 2026-09-17 |  |  |  |
| B6.33 05 40.01.170 |  | Excavation, Compaction & Vapour Barrier | 10d | 2026-05-03 A | 2026-05-13 A | B6.33 05 13.07.02 SS | 100% |  |
| B6.33 05 40.01.180 |  | Blinding Conc. | 111d | 2026-05-06 A | 2026-09-17 | B6.33 05 40.01.170 | 90% | 114d |
| B6.33 05 40.01.200 |  | Backfilling, DI Frame & Grate Cover Fixing | 94d | 2026-05-27 A | 2026-09-17 | B6.33 42 11.35-102 SS, B6.33 05 63.072 SS | 90% | 1d |
| B6.33 05 40.01.190 |  | Catch Basin Installation | 94d | 2026-05-30 A | 2026-09-17 | B6.33 05 40.01.180 SS, B6.33 05 13.05.04 SS | 90% | 114d |
|  | Dou | **Double** |  | 2026-05-11 | 2026-09-17 |  |  |  |
| B6.33 05 40.01.730 |  | Excavation, Compaction & Vapour Barrier | 107d | 2026-05-11 A | 2026-09-17 | B6.33 05 40.01.170 | 85% | 114d |
| B6.33 05 40.01.740 |  | Blinding Conc. | 105d | 2026-05-13 A | 2026-09-17 | B6.33 05 40.01.730 SS | 85% | 114d |
| B6.33 05 40.01.760 |  | Backfilling, DI Frame & Grate Cover Fixing | 102d | 2026-05-17 A | 2026-09-17 | B6.33 42 11.36-112 SS | 85% | 70d |
| B6.33 05 40.01.750 |  | Catch Basin Installation | 94.67d | 2026-05-25 A | 2026-09-17 | B6.33 05 40.01.740 SS | 85% | 114d |
|  | UPVC | **UPVC** |  | 2026-04-19 | 2026-09-19 |  |  |  |

| ID | WBS | Task | Duration | Start | Finish | Predecessors | Complete | Total float |
| --- | --- | --- | --- | --- | --- | --- | --- | --- |
|  | UPVC300 | **?300 From 0.0 to 1.5m** |  | 2026-04-19 | 2026-09-19 |  |  |  |
| B6.33 42 11.35-102 |  | Fittings & Pipe Installation | 126d | 2026-04-19 A | 2026-09-17 | B6.33 42 11.35-101 SS | 50% | 114d |
| B6.33 42 11.35-101 |  | Catch Basin Opening Prep. | 89.09d | 2026-06-06 A | 2026-09-19 | B6.33 05 40.01.190 SS | 83% | 113.91d |
|  | UPVC3001 | **?400 From 0.0 to 1.5m** |  | 2026-04-29 | 2026-09-19 |  |  |  |
| B6.33 42 11.36-112 |  | Fittings & Pipe Installation | 117.09d | 2026-04-29 A | 2026-09-19 | B6.33 42 11.36-111 SS | 83% | 113.91d |
| B6.33 42 11.36-111 |  | Catch Basin Opening Prep. | 89.09d | 2026-06-06 A | 2026-09-19 | B6.33 05 40.01.190 SS | 83% | 113.91d |
|  | Dry Networks | **Dry Networks** |  | 2026-09-16 | 2026-11-17 |  |  |  |
|  | MV | **Medium Voltage Network** |  | 2026-09-16 | 2026-10-17 |  |  |  |
|  | Duct Banks | **Duct Banks** |  | 2026-09-16 | 2026-10-17 |  |  |  |
|  | 4 Way | **4 Way** |  | 2026-09-16 | 2026-10-17 |  |  |  |
| B2.31 23 00.602 |  | Excavation | 3d | 2026-09-16 | 2026-09-19 | B6.33 42 11.02.06, B6.33 42 11.04.06, B6.33 42 11.08.06, B6.33 42 11.11.06 |  | 34d |
| B2.33 71 00.212 |  | Shuttering, Steel Fixing Incl. UPVC Pipe & Conc. Cast | 7d | 2026-09-20 | 2026-09-28 | B2.31 23 00.602 |  | 34d |
| B2.33 71 00.213 |  | Backfilling & Warrning Tape | 6d | 2026-10-11 | 2026-10-17 | B2.33 71 00.212, B2.33 71 49.23.69, B2.33 71 49.23.70 |  | 34d |
|  | Cables | **Cables** |  | 2026-09-29 | 2026-10-10 |  |  |  |
|  | 3C,500mm2 | **3C,500mm2** |  | 2026-09-29 | 2026-10-10 |  |  |  |
| B2.33 71 49.23.68 |  | Cable 13.8 kV Unarmored | 4d | 2026-09-29 | 2026-10-03 | B2.33 71 00.212 |  | 34d |
| B2.33 71 49.23.69 |  | Straight joints cables | 3d | 2026-10-04 | 2026-10-06 | B2.33 71 49.23.68 |  | 34d |
| B2.33 71 49.23.70 |  | Cable Termination | 3d | 2026-10-07 | 2026-10-10 | B2.33 71 49.23.69 |  | 34d |
|  | LV Network | **Low Voltage Network** |  | 2026-10-18 | 2026-10-31 |  |  |  |
|  | Duct Banks | **Duct Banks** |  | 2026-10-18 | 2026-10-31 |  |  |  |
|  | 2 Way | **2 Way** |  | 2026-10-18 | 2026-10-26 |  |  |  |
| B2.33 71 00 02 46 |  | Excavation | 2d | 2026-10-18 | 2026-10-19 | B2.33 71 00.213 |  | 62d |
| B2.33 71 00 02 47 |  | Shuttering, Steel Fixing Incl. UPVC Pipe & Conc. Cast | 3d | 2026-10-20 | 2026-10-22 | B2.33 71 00 02 46 |  | 67d |
| B2.33 71 00 02 48 |  | Backfilling & Warrning Tape | 3d | 2026-10-24 | 2026-10-26 | B2.33 71 00 02 47 |  | 67d |
|  | 4 Way | **4 Way** |  | 2026-10-20 | 2026-10-31 |  |  |  |
| B2.33 71 00 02 49 |  | Excavation | 2d | 2026-10-20 | 2026-10-21 | B2.33 71 00 02 46, DMM2-Proc-Delv-4748, DMM2-Proc-Delv-7199 |  | 62d |
| B2.33 71 00 02 50 |  | Shuttering, Steel Fixing Incl. UPVC Pipe & Conc. Cast | 3d | 2026-10-22 | 2026-10-25 | B2.33 71 00 02 49 |  | 66d |
| B2.33 71 00 02 51 |  | Backfilling & Warrning Tape | 3d | 2026-10-28 | 2026-10-31 | B2.33 71 00 02 50, B2.33 71 00 01 1, B2.33 71 00 02 48 |  | 66d |
|  | Cables | **Cables** |  | 2026-10-26 | 2026-10-27 |  |  |  |
|  | 4C,10+1C,10mm2 | **4C,10+1C,10mm2** |  | 2026-10-26 | 2026-10-27 |  |  |  |
| B2.33 71 00 01 1 |  | Cable Pulling | 2d | 2026-10-26 | 2026-10-27 | B2.33 71 00 02 50, B2.33 71 00 02 47 |  | 66d |
|  | Street Lighting | **Street Lighting** |  | 2026-10-18 | 2026-11-05 |  |  |  |
|  | Duct Banks | **Duct Banks** |  | 2026-10-22 | 2026-10-31 |  |  |  |
|  | 4 Way | **4 Way** |  | 2026-10-22 | 2026-10-31 |  |  |  |
| B2.33 71 00 02 52 |  | Excavation | 2d | 2026-10-22 | 2026-10-24 | B2.33 71 00 02 49 |  | 62d |
| B2.33 71 00 02 53 |  | Shuttering, Steel Fixing Incl. UPVC Pipe & Conc. Cast | 3d | 2026-10-25 | 2026-10-27 | B2.33 71 00 02 52 |  | 62d |
| B2.33 71 00 02 54 |  | Backfilling & Warrning Tape | 3d | 2026-10-28 | 2026-10-31 | B2.33 71 00 02 53, B2.33 71 16.54 |  | 67d |
|  | Drawpits | **Drawpits** |  | 2026-10-25 | 2026-11-03 |  |  |  |
| B2.33 71 00 02 55 |  | Excavation | 3d | 2026-10-25 | 2026-10-27 | B2.33 71 00 02 52 |  | 64d |
| B2.33 71 00 02 56 |  | Drawpits Installation | 3d | 2026-10-28 | 2026-10-31 | B2.33 71 00 02 55 |  | 64d |
| B2.33 71 00 02 57 |  | Backfilling & Warrning Tape | 3d | 2026-11-01 | 2026-11-03 | B2.33 71 00 02 56 |  | 64d |
|  | Cables | **Cables** |  | 2026-10-28 | 2026-11-05 |  |  |  |
|  | 4C,10+1C,10mm2 | **4C,10+1C,10mm2** |  | 2026-10-28 | 2026-11-05 |  |  |  |
| B2.33 71 19 82 |  | Land Adjustment | 3d | 2026-10-28 | 2026-10-31 | B2.33 71 00 02 53, B1.2.32 11 26.01.4 |  | 62d |
| B2.33 71 49.23.122 |  | Cable Pulling | 2d | 2026-11-01 | 2026-11-02 | B2.33 71 19 82 |  | 62d |
| B2.33 71 19 92 |  | Backfilling | 3d | 2026-11-03 | 2026-11-05 | B2.33 71 49.23.122 |  | 62d |
|  | SL Poles | **SL Poles** |  | 2026-10-18 | 2026-11-03 |  |  |  |
|  | Pole (10 M Sngl Arm) | **Pole (10 M Single Arm)** |  | 2026-10-18 | 2026-11-03 |  |  |  |
| B2.33 71 16.39 |  | Excavation | 3d | 2026-10-18 | 2026-10-20 | B2.33 71 00.213, B2.33 71 16.51, B1.2.32 11 26.01.4 |  | 69d |
| B2.33 71 16.40 |  | PC & RC Foundation | 3d | 2026-10-21 | 2026-10-24 | B2.33 71 16.39 |  | 69d |
| B2.33 71 16.41 |  | Lighting Poles Installation Incl power box, Cables | 3d | 2026-10-25 | 2026-10-27 | B2.33 71 16.40 |  | 69d |
| B2.26.56.19.3 |  | Lighting Luminares Inst | 2d | 2026-10-28 | 2026-10-29 | B2.33 71 16.41 |  | 69d |
| B2.33 71 16.42 |  | Backfilling, Grouting & Chamfering | 3d | 2026-10-31 | 2026-11-03 | B2.26.56.19.3, B2.33 71 16.70, B2.33 71 00 02 159 |  | 68.91d |
|  | Telecommunication | **Telecommunication Network** |  | 2026-11-01 | 2026-11-17 |  |  |  |
|  | Ducts | **Ducts** |  | 2026-11-01 | 2026-11-15 |  |  |  |
|  | (6*50mm) | **Size (6*50mm) HDPE ducts** |  | 2026-11-01 | 2026-11-10 |  |  |  |
| B2.1.33 81 26.69 |  | Excavation | 2d | 2026-11-01 | 2026-11-03 | B2.31 23 00.613 |  | 54.88d |
| B2.1.33 81 26.70 |  | HDPE Pipe, Shuttering, Steel Fixing & Conc. Cast | 3d | 2026-11-03 | 2026-11-07 | B2.1.33 81 26.69 |  | 63.88d |
| B2.1.33 81 26.71 |  | Backfilling & Warrning Tape | 3d | 2026-11-07 | 2026-11-10 | B2.1.33 81 26.70, B2.33 71 00.191, B2.33 71 00.171, B2.33 71 00.151 |  | 63.88d |
|  | (2*32mm) | **Size (2*32mm) HDPE ducts** |  | 2026-11-03 | 2026-11-12 |  |  |  |
| B2.1.33 81 26.78 |  | Excavation | 2d | 2026-11-03 | 2026-11-05 | B2.1.33 81 26.69 |  | 54.88d |
| B2.1.33 81 26.79 |  | HDPE Pipe, Shuttering, Steel Fixing & Conc. Cast | 3d | 2026-11-05 | 2026-11-09 | B2.1.33 81 26.78 |  | 61.88d |
| B2.1.33 81 26.80 |  | Backfilling & Warrning Tape | 3d | 2026-11-09 | 2026-11-12 | B2.1.33 81 26.79 |  | 61.88d |
|  | (4*32mm) | **Size (4*32mm) HDPE ducts** |  | 2026-11-05 | 2026-11-15 |  |  |  |
| B2.1.33 81 26.81 |  | Excavation | 2d | 2026-11-05 | 2026-11-08 | B2.1.33 81 26.78 |  | 59.88d |
| B2.1.33 81 26.82 |  | HDPE Pipe, Shuttering, Steel Fixing & Conc. Cast | 3d | 2026-11-08 | 2026-11-11 | B2.1.33 81 26.81 |  | 59.88d |
| B2.1.33 81 26.83 |  | Backfilling & Warrning Tape | 3d | 2026-11-11 | 2026-11-15 | B2.1.33 81 26.82 |  | 59.88d |
|  | Manholes | **Manholes** |  | 2026-11-05 | 2026-11-14 |  |  |  |
|  | Manhole Type 2 | **Manhole Type 2** |  | 2026-11-05 | 2026-11-14 |  |  |  |
| B2.31 23 00.607 |  | Excavation | 2d | 2026-11-05 | 2026-11-08 | B2.1.33 81 26.69, B2.1.33 81 26.78 |  | 54.88d |

| ID | WBS | Task | Duration | Start | Finish | Predecessors | Complete | Total float |
| --- | --- | --- | --- | --- | --- | --- | --- | --- |
| B2.33 71 00.222 |  | Manhole Installation | 2d | 2026-11-08 | 2026-11-10 | B2.31 23 00.607 |  | 60.88d |
| B2.33 71 00.223 |  | Backfilling & Warrning Tape | 3d | 2026-11-10 | 2026-11-14 | B2.33 71 00.222 |  | 60.88d |
|  | Crossing Ducts | **Road Crossing Ducts** |  | 2026-11-08 | 2026-11-17 |  |  |  |
|  | 1 | **Size (6*50mm) HDPE** |  | 2026-11-08 | 2026-11-17 |  |  |  |
| B2.31 23 00.608 |  | Excavation | 2d | 2026-11-08 | 2026-11-10 | B2.31 23 00.607 |  | 54.88d |
| B2.33 71 00.224 |  | Shuttering, Steel Fixing Incl. UPVC Pipe & Conc. Cast | 3d | 2026-11-10 | 2026-11-14 | B2.31 23 00.608 |  | 61.88d |
| B2.33 71 00.225 |  | Backfilling & Warrning Tape | 3d | 2026-11-14 | 2026-11-17 | B2.33 71 00.224, B2.1.33 81 26.176 |  | 61.88d |
|  | 2 | **Size (2*32mm) HDPE** |  | 2026-11-08 | 2026-11-14 |  |  |  |
| B2.31 23 00.609 |  | Excavation | 2d | 2026-11-08 | 2026-11-10 | B2.31 23 00.608 SS |  | 54.88d |
| B2.33 71 00.226 |  | Shuttering, Steel Fixing Incl. UPVC Pipe & Conc. Cast | 1d | 2026-11-10 | 2026-11-11 | B2.31 23 00.609 |  | 64.88d |
| B2.33 71 00.227 |  | Backfilling & Warrning Tape | 2d | 2026-11-11 | 2026-11-14 | B2.33 71 00.226, B2.1.33 81 26.68 SS |  | 64.88d |
|  | Earth & Road Works | **Earth & Road Works** |  | 2025-12-03 | 2026-11-19 |  |  |  |
|  | Earth Works | **Earth Works** |  | 2025-12-03 | 2026-03-08 |  |  |  |
| B1.2.31 23 16.01.4 |  | Roadway Excavation | 66.1d | 2025-12-03 A | 2026-02-18 A | DMM2-Eng-MS-78 | 100% |  |
| B1.2.31 23 23.01.4 |  | Embankment Backfiling | 74.52d | 2025-12-06 A | 2026-03-08 A | B1.2.31 23 16.01.4 | 100% |  |
|  | Earth Layers | **Earth Layers** |  | 2026-02-25 | 2026-09-17 |  |  |  |
| B1.2.32 11 13.01.4 |  | Subgrade | 162.28d | 2026-02-25 A | 2026-09-17 | B1.2.31 23 23.01.4 | 65% | 48.95d |
| B1.2.32 11 23.01.4 |  | Aggregate Base Course | 85.23d | 2026-06-10 A | 2026-09-17 | B1.2.32 11 13.01.4 FF | 59% | 48.77d |
|  | Interlock | **Interlock** |  | 2026-11-03 | 2026-11-05 |  |  |  |
| B1.2.32 14 13.13.4 |  | 60mm thick - Interlocking Block Pavers | 2d | 2026-11-03 | 2026-11-05 | B1.2.32 11 23.01.4, B2.33 71 16.42 |  | 68.91d |
|  | Curbstone | **Curbstone** |  | 2026-09-27 | 2026-10-13 |  |  |  |
|  | Pre Install | **Pre-Installation** |  | 2026-09-27 | 2026-10-04 |  |  |  |
| B2.31 23 00.91 |  | Excavation | 2d | 2026-09-27 | 2026-09-29 | B2.31 23 00.161 SS |  | 25.76d |
| B1.2.32 14 13.13.24 |  | PCC | 2d | 2026-09-29 | 2026-10-01 | B2.31 23 00.91 |  | 25.76d |
| 32 16 13.004 |  | Haunching | 2d | 2026-10-01 | 2026-10-04 | B1.2.32 14 13.13.24 |  | 25.76d |
|  | Installation | **Installation** |  | 2026-10-04 | 2026-10-11 |  |  |  |
| B1.2.32 16.13.01.4 |  | Curb Stone, Type K1 | 2d | 2026-10-04 | 2026-10-06 | 32 16 13.004 |  | 25.76d |
| B1.2.32 16.13.03.4 |  | Edge Curb, Type K4 | 2d | 2026-10-06 | 2026-10-08 | 32 16 13.004, B1.2.32 16.13.01.4 |  | 25.76d |
| B1.2.32 16.13.044 |  | Heel Curb, Type K5 | 2d | 2026-10-08 | 2026-10-11 | 32 16 13.004, B1.2.32 16.13.03.4 |  | 25.76d |
|  | Finishing | **Finishing** |  | 2026-10-11 | 2026-10-13 |  |  |  |
| 32 16 13.04 |  | Finishing, Fareface | 2d | 2026-10-11 | 2026-10-13 | B1.2.32 16.13.01.4, B1.2.32 16.13.03.4, B1.2.32 16.13.044, B1.2.10 14 14.01.18, B1.2.10 14 14.01.1 |  | 25.76d |
|  | Asphalt Layers | **Asphalt Layers** |  | 2026-09-21 | 2026-09-29 |  |  |  |
| B1.2.32 11 26.01.4 |  | Bituminous Base Course including Prime Coat (MC1) and tack coat (RC2) | 2d | 2026-09-21 | 2026-09-22 | B1.2.32 11 23.01.4, B1.2.32 11 26.01.5, B1.1.31 23 23.112 |  | 46d |
| B1.2.32 12 16.01.4 |  | Bituminous concrete Wearing Course, including tack coat (RC2) | 5d | 2026-09-24 | 2026-09-29 | B1.2.32 11 26.01.4 |  | 46d |
|  | Pavement Marking | **Pavement Marking** |  | 2026-09-30 | 2026-10-01 |  |  |  |
| B1.2.32 17 23.01.4 |  | Retroreflective Thermoplastic White Traffic lines | 2d | 2026-09-30 | 2026-10-01 | B1.2.32 12 16.01.4 |  | 98d |
| B1.2.32 17 23.02.4 |  | Retroreflective Thermoplastic Yellow, Traffic lines | 2d | 2026-09-30 | 2026-10-01 | B1.2.32 12 16.01.4 |  | 98d |
|  | Traffic Signs | **Traffic Signs** |  | 2026-09-27 | 2026-11-19 |  |  |  |
|  | Pre Install | **Pre-Installation** |  | 2026-09-27 | 2026-11-18 |  |  |  |
| B2.31 23 00.101 |  | Excavation | 2d | 2026-09-27 | 2026-09-29 | B2.31 23 00.91 SS |  | 28.76d |
| 10 14 53.04 |  | Foundation | 2d | 2026-11-17 | 2026-11-18 | B2.31 23 00.101, B7.31 32 19.23.3 |  | 8d |
|  | Installation | **Installation** |  | 2026-11-05 | 2026-11-19 |  |  |  |
| B1.2.10 14 53.014 |  | 1 Sheet Alumenium, Single post | 1d | 2026-11-05 | 2026-11-07 | B1.2.32 14 13.13.4, B1.2.32 17 23.02.4, B1.2.32 17 23.01.4 |  | 68.91d |
| B1.2.10 14 14.01.4 |  | Ground mounted, 1 Sheet Alumenium, Single post | 1d | 2026-11-19 | 2026-11-19 | B1.2.32 14 13.13.4, B1.2.32 17 23.02.4, B1.2.32 17 23.01.4, B1.2.10 14 14.026 |  | 57d |
|  | Landscape | **Landscape** |  | 2026-09-29 | 2026-12-16 |  |  |  |
|  | Fences | **Fences** |  | 2026-09-29 | 2026-12-16 |  |  |  |
|  | (ZATCA HCIS) | **Steel fence (ZATCA HCIS)** |  | 2026-09-29 | 2026-12-16 |  |  |  |
| B7.32 93 43.04.14 |  | Earthwork | 5d | 2026-09-29 | 2026-10-05 | B2.31 23 00.101 |  | 28.76d |
| B7.32 93 43.04.50 |  | Foundation | 6d | 2026-11-12 | 2026-11-18 | B7.32 93 43.04.14, 10 14 53.04 FF |  | 8d |
| B7.32 93 43.04.56 |  | Fence Installation | 5d | 2026-12-10 | 2026-12-16 | B7.32 93 43.04.50, DMM2-Proc-Delv-7335, DMM2-Proc-Delv-7328, B7.32 93 43.04.20 |  | 6.76d |
|  | (MODON) fence | **Steel fence (MODON)** |  | 2026-10-05 | 2026-12-07 |  |  |  |
| B7.32 93 43.04.12 |  | Earthwork | 6d | 2026-10-05 | 2026-10-12 | B7.32 93 43.04.14 |  | 28.76d |
| B7.32 93 43.04.48 |  | Foundation | 3d | 2026-11-19 | 2026-11-22 | B7.32 93 43.04.12, B7.32 93 43.04.50, B7.31 32 19.23.3 |  | 8d |
| B7.32 93 43.04.54 |  | Fence Installation | 3d | 2026-12-05 | 2026-12-07 | B7.32 93 43.04.48, DMM2-Proc-Delv-7336 |  | 12d |
|  | Gates | **Gates** |  | 2026-11-05 | 2026-11-29 |  |  |  |
|  | Size (4.35x 2.7)m | **Size (4.35x 2.7)m** |  | 2026-11-05 | 2026-11-29 |  |  |  |
| B7.32 93 43.04.10 |  | Earthwork | 5d | 2026-11-05 | 2026-11-10 | B7.32 93 43.04.12, DMM2-Proc-Delv-7338 |  | 8d |
| B7.32 93 43.04.46 |  | Foundation | 3d | 2026-11-23 | 2026-11-25 | B7.32 93 43.04.10, B7.32 93 43.04.48, B7.31 32 19.23.3 |  | 8d |
| B7.32 93 43.04.52 |  | Gate Installation | 3d | 2026-11-26 | 2026-11-29 | B7.32 93 43.04.46, DMM2-Proc-Delv-7337, B7.32 93 43.02.18, B7.32 93 43.02.24 |  | 8d |
|  | Geotextile | **Geotextile** |  | 2026-11-03 | 2026-11-16 |  |  |  |
| B7.31 32 19.23.2 |  | Geotextile to protect trees planting soil | 5d | 2026-11-03 | 2026-11-08 | DMM2-Proc-Delv-7330 |  | 32d |
| B7.31 32 19.23.3 |  | Geotextile below gravel bed | 5d | 2026-11-11 | 2026-11-16 | B7.32 93 43.04.10, DMM2-Proc-Delv-7330 |  | 8d |
|  | Trees | **Trees** |  | 2026-12-01 | 2026-12-07 |  |  |  |
| B7.32 93 43.01 |  | Azadirachta indica | 3d | 2026-12-01 | 2026-12-03 | B7.31 32 19.23.2 FF, DMM2-Proc-Delv-7333 FF |  | 10d |
| B7.32 93 43.04 |  | Delonix Regia | 3d | 2026-12-05 | 2026-12-07 | B1.2.32 11 13.01.4, B7.32 93 43.01, B1.2.32 12 16.01.4, DMM2-Proc-Delv-7333 |  | 10d |
| B7.32 93 43.06 |  | Schinus Molle | 3d | 2026-12-05 | 2026-12-07 | B1.2.32 11 13.01.4, B7.32 93 43.04 FF, B1.2.32 12 16.01.4, DMM2-Proc-Delv-7333 |  | 10d |
|  | Entrance Road 02 | **Entrance Road 02** |  | 2025-11-28 | 2026-12-21 |  |  |  |
|  | Wet Networks | **Wet Networks** |  | 2026-03-13 | 2026-11-09 |  |  |  |
|  | Sewerage Network | **Sewerage Network** |  | 2026-03-22 | 2026-10-24 |  |  |  |
|  | GRP | **GRP Pipes** |  | 2026-03-24 | 2026-09-22 |  |  |  |

| ID | WBS | Task | Duration | Start | Finish | Predecessors | Complete | Total float |
| --- | --- | --- | --- | --- | --- | --- | --- | --- |
|  | 200 | **?200** |  | 2026-03-24 | 2026-09-22 |  |  |  |
|  | 3 | **Depth From 1.5m to 2.5m** |  | 2026-03-24 | 2026-09-22 |  |  |  |
| B5.33 31 00.02.02 1 |  | Excavation | 6.76d | 2026-03-24 A | 2026-04-01 A | B5.33 31 00.01.2169, B1.1.31 23 23.62 | 100% |  |
| B5.33 31 00.02.02 2 |  | Sand Bedding | 7.58d | 2026-03-29 A | 2026-04-07 A | B5.33 31 00.02.02 1 | 100% |  |
| B5.33 31 00.02.02 3 |  | Pipe Laying | 7.58d | 2026-03-31 A | 2026-04-09 A | B5.33 31 00.02.02 2 | 100% |  |
| B5.33 31 00.02.02 4 |  | Embedment & Test | 26.48d | 2026-04-01 A | 2026-05-03 A | B5.33 31 00.02.02 3 | 100% |  |
| B5.33 31 00.02.02 5 |  | Backfilling & Warrning Tape | 139.79d | 2026-04-06 A | 2026-09-22 | B5.33 31 00.02.02 4 | 7% | 110d |
|  | Manholes | **Manholes ?1200** |  | 2026-03-22 | 2026-09-20 |  |  |  |
|  | 2 | **Depth From 0.0m to 1.5m** |  | 2026-03-29 | 2026-09-20 |  |  |  |
| B5.33 05 13.01 1 |  | Excavation & Compaction | 2d | 2026-03-29 A | 2026-03-31 A | B5.33 31 00.02.02 1 | 100% |  |
| B5.33 05 13.01 2 |  | Blinding Conc, & RC Base | 21d | 2026-04-29 A | 2026-05-23 A | B5.33 05 13.01 1 | 100% |  |
| B5.33 05 13.01 3 |  | Manhole Installation | 2d | 2026-05-24 A | 2026-05-25 A | B5.33 05 13.01 2 | 100% |  |
| B5.33 05 13.01 4 |  | Test, Internal Finishing, Benching & Cover | 80.56d | 2026-06-17 A | 2026-09-19 | B5.33 05 13.01 3 | 41% | 113.44d |
| B5.33 05 13.01 5 |  | Backfilling | 77.75d | 2026-06-21 A | 2026-09-20 | B5.33 05 13.065, B5.33 05 13.01 4 SS, B5.33 31 00.02.02 5 SS | 41% | 112.92d |
|  | 3 | **Depth From 1.5m to 2.5m** |  | 2026-03-22 | 2026-09-20 |  |  |  |
| B5.33 05 13.02 1 |  | Excavation & Compaction | 0.6d | 2026-03-22 A | 2026-03-24 A | B5.33 05 13.01 1 | 100% |  |
| B5.33 05 13.02 2 |  | Blinding Conc, & RC Base | 118.04d | 2026-04-29 A | 2026-09-19 | B5.33 05 13.02 1 | 41% | 113d |
| B5.33 05 13.02 3 |  | Manhole Installation | 88.52d | 2026-06-07 A | 2026-09-17 | B5.33 05 13.02 2 SS | 41% | 114.48d |
| B5.33 05 13.02 4 |  | Test, Internal Finishing, Benching & Cover | 83.56d | 2026-06-14 A | 2026-09-19 | B5.33 05 13.02 3 SS | 41% | 113.44d |
| B5.33 05 13.02 5 |  | Backfilling | 77.75d | 2026-06-21 A | 2026-09-20 | B5.33 05 13.02 4 SS, B5.33 05 13.01 5 SS | 41% | 107.92d |
|  | Sew Plot Connection | **Sewerage Plot Connection** |  | 2026-09-20 | 2026-10-08 |  |  |  |
| B5..33 31 16.011 |  | Excavation | 2d | 2026-09-20 | 2026-09-21 | B5.33 05 63.011, B1.1.31 23 23.2 |  | 93d |
| B5..33 31 16.012 |  | Sand Bedding | 2d | 2026-09-22 | 2026-09-24 | B5..33 31 16.011, B5.33 31 00.02.05.1 |  | 93d |
| B5..33 31 16.013 |  | Pipe Laying, Fittings | 3d | 2026-09-26 | 2026-09-28 | B5..33 31 16.012 |  | 93d |
| B5..33 31 16.014 |  | Embedment & Test | 4d | 2026-09-29 | 2026-10-03 | B5..33 31 16.013 |  | 93d |
| B5..33 31 16.015 |  | Backfilling & Warrning Tape | 5d | 2026-10-04 | 2026-10-08 | B5..33 31 16.014, B5.33 31 00.01.02.47 |  | 93d |
|  | Discharge Ch | **Discharge Chamber** |  | 2026-09-16 | 2026-10-24 |  |  |  |
| B5.33 05 63.011 |  | Excavation & Compaction | 3d | 2026-09-16 | 2026-09-19 | B5.33 05 13.02 1 |  | 88d |
| B5.33 05 63.012 |  | Blinding Conc, & RC Base | 3d | 2026-09-20 | 2026-09-22 | B5.33 05 63.011 |  | 88d |
| B5.33 05 63.013 |  | Chamber Installation | 6d | 2026-09-29 | 2026-10-05 | B5.33 05 63.012, DMM2-Proc-Delv-2328, DMM2-Proc-Delv-1888 |  | 84d |
| B5.33 05 63.014 |  | Test, Internal Finishing, Benching & Cover | 4d | 2026-10-06 | 2026-10-10 | B5.33 05 63.013 |  | 91d |
| B5.33 05 63.015 |  | Backfilling | 5d | 2026-10-19 | 2026-10-24 | B5.33 05 63.014, B5.33 05 13.02 5, B5.33 31 23.01-1.28, B6.33 05 39.01.767 |  | 84d |
|  | Stormwater Network | **Stormwater Network** |  | 2026-03-13 | 2026-11-09 |  |  |  |
|  | GRP | **GRP** |  | 2026-03-13 | 2026-11-09 |  |  |  |
|  | ?400 | **?400** |  | 2026-03-13 | 2026-11-09 |  |  |  |
|  | 3 | **Depth From 1.5m to 2.5m** |  | 2026-03-13 | 2026-11-09 |  |  |  |
| B6.33 42 11.02 1 |  | Excavation | 22.01d | 2026-03-13 A | 2026-04-14 A | B5.33 31 00.02.02 5 SS | 100% |  |
| B6.33 42 11.02 2 |  | Sand Bedding | 26.89d | 2026-03-15 A | 2026-04-21 A | B6.33 42 11.02 1 | 100% |  |
| B6.33 42 11.02 3 |  | Pipe Laying | 32.14d | 2026-03-16 A | 2026-04-28 A | B6.33 42 11.02 2 | 100% |  |
| B6.33 42 11.02 4 |  | Embedment & Test | 25.67d | 2026-04-01 A | 2026-05-02 A | B6.33 42 11.02 3 | 100% |  |
| B6.33 42 11.02 5 |  | Backfilling & Warrning Tape | 139.12d | 2026-04-05 A | 2026-11-09 | B6.33 42 11.02 4, B6.33 42 11.34.5 FF | 69% | 70d |
|  | Strom Manholes | **Manholes** |  | 2026-04-01 | 2026-09-17 |  |  |  |
|  | 1 | **?1200** |  | 2026-04-01 | 2026-09-17 |  |  |  |
|  | 3 | **Depth From 1.5m to 2.5m** |  | 2026-04-01 | 2026-09-17 |  |  |  |
| B6.33 05 13.01 1 |  | Excavation & Compaction | 2d | 2026-04-01 A | 2026-04-04 A | B6.33 42 11.02 1 | 100% |  |
| B6.33 05 13.01 2 |  | Blinding Conc, & RC Base | 15.17d | 2026-05-04 A | 2026-05-21 A | B6.33 05 13.01 1 | 100% |  |
| B6.33 05 13.01 3 |  | Manhole Installation | 86d | 2026-06-09 A | 2026-09-17 | B6.33 05 13.01 2 | 79% | 114d |
| B6.33 05 13.01 4 |  | Test, Internal Finishing, Benching & Cover | 84d | 2026-06-11 A | 2026-09-17 | B6.33 05 13.01 3 SS | 79% | 114d |
| B6.33 05 13.01 5 |  | Backfilling | 81d | 2026-06-15 A | 2026-09-17 | B6.33 05 13.01 4 SS, B6.33 05 39.01.3717 SS | 79% | 114d |
|  | 3 | **?2000** |  | 2026-04-04 | 2026-09-17 |  |  |  |
|  | 4 | **Depth From 2.5m to 3.5m** |  | 2026-04-04 | 2026-09-17 |  |  |  |
| B6.33 05 13.07 1 |  | Excavation & Compaction | 2d | 2026-04-04 A | 2026-04-06 A | B6.33 05 13.01 1 | 100% |  |
| B6.33 05 13.07 2 |  | Blinding Conc, & RC Base | 86d | 2026-06-09 A | 2026-09-17 | B6.33 05 13.07 1 | 79% | 114d |
| B6.33 05 13.07 4 |  | Test, Internal Finishing, Benching & Cover | 83d | 2026-06-13 A | 2026-09-17 | B6.33 05 13.07 3 SS | 88% | 114d |
| B6.33 05 13.07 3 |  | Manhole Installation | 82d | 2026-06-14 A | 2026-09-17 | B6.33 05 13.07 2 SS | 80% | 114d |
| B6.33 05 13.07 5 |  | Backfilling | 79d | 2026-06-17 A | 2026-09-17 | B6.33 05 13.07 4 SS | 80% | 114d |
|  | Catch Basins | **Catch Basins** |  | 2026-06-02 | 2026-09-30 |  |  |  |
|  | Sing | **Single** |  | 2026-06-07 | 2026-09-17 |  |  |  |
| B6.33 05 40.01.210 |  | Excavation, Compaction & Vapour Barrier | 88d | 2026-06-07 A | 2026-09-17 | B6.33 05 13.07 1 | 80% | 104d |
| B6.33 05 40.01.220 |  | Blinding Conc. | 86d | 2026-06-09 A | 2026-09-17 | B6.33 05 40.01.210 SS | 80% | 114d |
| B6.33 05 40.01.230 |  | Catch Basin Installation | 83d | 2026-06-13 A | 2026-09-17 | B6.33 05 40.01.220 SS | 80% | 114d |
| B6.33 05 40.01.240 |  | Backfilling, DI Frame & Grate Cover Fixing | 78d | 2026-06-18 A | 2026-09-17 | B6.33 42 11.35 2 SS | 80% | 75d |
|  | Dou | **Double** |  | 2026-09-19 | 2026-09-30 |  |  |  |
| B6.33 05 40.01.770 |  | Excavation, Compaction & Vapour Barrier | 3d | 2026-09-19 | 2026-09-21 | B6.33 05 40.01.210 |  | 104d |
| B6.33 05 40.01.800 |  | Backfilling, DI Frame & Grate Cover Fixing | 6d | 2026-09-19 | 2026-09-27 | B6.33 42 11.36 2 |  | 68.91d |
| B6.33 05 40.01.780 |  | Blinding Conc. | 3d | 2026-09-22 | 2026-09-26 | B6.33 05 40.01.770 |  | 104d |
| B6.33 05 40.01.790 |  | Catch Basin Installation | 4d | 2026-09-27 | 2026-09-30 | B6.33 05 40.01.780 |  | 104d |
|  | UPVC | **UPVC** |  | 2026-06-02 | 2026-09-30 |  |  |  |
|  | UPVC300 | **?300 From 0.0 to 1.5m** |  | 2026-06-02 | 2026-09-19 |  |  |  |
| B6.33 42 11.35 1 |  | Catch Basin Opening Prep. | 92.09d | 2026-06-02 A | 2026-09-19 | B6.33 05 40.01.230 SS | 68% | 113.91d |

| ID | WBS | Task | Duration | Start | Finish | Predecessors | Complete | Total float |
| --- | --- | --- | --- | --- | --- | --- | --- | --- |
| B6.33 42 11.35 2 |  | Fittings & Pipe Installation | 87.09d | 2026-06-08 A | 2026-09-19 | B6.33 42 11.35 1 SS | 68% | 113.91d |
|  | UPVC3001 | **?400 From 0.0 to 1.5m** |  | 2026-06-07 | 2026-09-30 |  |  |  |
| B6.33 42 11.36 2 |  | Fittings & Pipe Installation | 88.09d | 2026-06-07 A | 2026-09-19 | B6.33 42 11.36 1 SS | 68% | 68.91d |
| B6.33 42 11.36 1 |  | Catch Basin Opening Prep. | 86.09d | 2026-06-09 A | 2026-09-30 | B6.33 05 40.01.790 FF | 68% | 104d |
|  | Potable Water | **Potable Water Network** |  | 2026-04-20 | 2026-11-07 |  |  |  |
|  | HDPE | **HDPE Pipes** |  | 2026-05-05 | 2026-05-24 |  |  |  |
|  | ?110mm | **?110mm** |  | 2026-05-05 | 2026-05-24 |  |  |  |
|  | Depth: 1.51m - 2.5m | **Depth: 1.51m - 2.5m** |  | 2026-05-05 | 2026-05-24 |  |  |  |
| B3.33 14 13.01.02 1 |  | Excavation | 5d | 2026-05-05 A | 2026-05-11 A | B3.33 14 13.02.22 | 100% |  |
| B3.33 14 13.01.02 2 |  | Sand Bedding | 3d | 2026-05-12 A | 2026-05-16 A | B3.33 14 13.01.02 1 | 100% |  |
| B3.33 14 13.01.02 3 |  | Pipe Laying | 1d | 2026-05-16 A | 2026-05-17 A | B3.33 14 13.01.02 2 | 100% |  |
| B3.33 14 13.01.02 4 |  | Embedment & Test | 1d | 2026-05-17 A | 2026-05-18 A | B3.33 14 13.01.02 3, B3.33 14 19.01.108 | 100% |  |
| B3.33 14 13.01.02 5 |  | Backfilling & Warrning Tape | 5.45d | 2026-05-18 A | 2026-05-24 A | B3.33 14 13.01.02 4, B3.33 14 11.01.0118 SS | 100% |  |
|  | Crossing | **Plots and Buildings Crossing** |  | 2026-10-06 | 2026-10-25 |  |  |  |
| B3.33 14 13.02.011 |  | Earthwork | 7d | 2026-10-06 | 2026-10-13 | B3.33 14 13.01.02 1, B3.33 14 13.02.16 |  | 67d |
| B3.33 14 13.02.012 |  | Sand Bedding | 3d | 2026-10-14 | 2026-10-17 | B3.33 14 13.02.011 |  | 83d |
| B3.33 14 13.02.013 |  | Tee, Pipe (Crossing) Installation & Backfilling | 7d | 2026-10-18 | 2026-10-25 | B3.33 14 13.02.012, B3.33 14 13.02.27 |  | 83d |
|  | Valves & Chambers | **Valves & Chambers** |  | 2026-04-20 | 2026-11-07 |  |  |  |
|  | GV | **Gate Valves** |  | 2026-04-20 | 2026-10-21 |  |  |  |
|  | 1 | **Gate valves dia (110) mm** |  | 2026-04-20 | 2026-10-21 |  |  |  |
| B3.33 14 19.01.108 |  | Burried Isolation Valve Installation | 16d | 2026-04-20 A | 2026-05-09 A | B3.33 14 13.01.02 3 | 100% |  |
| B3.33 14 19.01.109 |  | Spindle & Surface Box | 3d | 2026-10-19 | 2026-10-21 | B3.33 14 19.01.108, B3.33 05 63.01.19, B3.33 14 19.01.115, B3.33 14 19.01.113 |  | 86d |
|  | Washout Valves | **Washout Valves** |  | 2026-10-14 | 2026-11-07 |  |  |  |
|  | 4 | **Washout valves on 110-400 mm. (In Chamber)** |  | 2026-10-14 | 2026-11-07 |  |  |  |
| B3.33 05 63.01.011 |  | Land Adjustment & Compaction | 3d | 2026-10-14 | 2026-10-17 | B3.33 14 13.02.011 |  | 67d |
| B3.33 05 63.01.012 |  | Foundations | 4d | 2026-10-18 | 2026-10-21 | B3.33 05 63.01.011 |  | 67d |
| B3.33 05 63.01.013 |  | Chambers Walls Conc Cast In Situ | 4d | 2026-10-22 | 2026-10-26 | B3.33 05 63.01.012 |  | 67d |
| B3.33 05 63.01.014 |  | Chamber Curing, Finishing & Steel Cover | 5d | 2026-10-27 | 2026-11-01 | B3.33 05 63.01.013 |  | 67d |
| B3.33 05 63.01.015 |  | Valve & Fitting Installation | 5d | 2026-11-02 | 2026-11-07 | B3.33 05 63.01.014, B3.33 05 63.02.24, B3.33 05 63.01.24 |  | 67d |
|  | Fire Fighting | **Fire Fighting Network** |  | 2026-06-03 | 2026-10-26 |  |  |  |
|  | HDPE | **HDPE Pipes** |  | 2026-06-03 | 2026-09-20 |  |  |  |
|  | ?250mm | **?250mm** |  | 2026-06-03 | 2026-09-20 |  |  |  |
|  | Depth: 1.51m - 2.5m | **Depth: 1.51m - 2.5m** |  | 2026-06-03 | 2026-09-20 |  |  |  |
| B3.1. 33 14 13.01 1 |  | Excavation | 91.62d | 2026-06-03 A | 2026-09-20 | B3.1. 33 14 13.22 SS | 89% | 64d |
| B3.1. 33 14 13.01 2 |  | Sand Bedding | 85.62d | 2026-06-10 A | 2026-09-20 | B3.1. 33 14 13.01 1 FF | 89% | 64d |
| B3.1. 33 14 13.01 3 |  | Pipe Laying | 79.62d | 2026-06-17 A | 2026-09-20 | B3.1. 33 14 13.01 2 FF | 89% | 64d |
| B3.1. 33 14 13.01 4 |  | Embedment & Test | 77.62d | 2026-06-20 A | 2026-09-20 | B3.1. 33 14 13.01 3 FF, B3.33 14 19.01.124 SS | 89% | 67d |
| B3.1. 33 14 13.01 5 |  | Backfilling & Warrning Tape | 75.62d | 2026-06-22 A | 2026-09-20 | B3.1. 33 14 13.01 4 FF | 89% | 87d |
|  | Valves & Chambers | **Valves & Chambers** |  | 2026-06-17 | 2026-10-26 |  |  |  |
|  | GV | **Gate Valves** |  | 2026-06-17 | 2026-10-12 |  |  |  |
|  | 1 | **Gate valves dia (250) mm** |  | 2026-06-17 | 2026-10-12 |  |  |  |
| B3.33 14 19.01.124 |  | Burried Isolation Valve Installation | 79.62d | 2026-06-17 A | 2026-09-20 | B3.1. 33 14 13.01 3 SS | 86% | 77d |
| B3.33 14 19.01.125 |  | Spindle & Surface Box | 4d | 2026-10-08 | 2026-10-12 | B3.33 14 19.01.124, B3.33 14 19.01.123 |  | 63d |
|  | Washout Valves | **Washout Valves** |  | 2026-09-21 | 2026-10-26 |  |  |  |
|  | 4 | **Washout valves on 110-400 mm. (In Chamber)** |  | 2026-09-21 | 2026-10-26 |  |  |  |
| B3.33 05 63.01.42 |  | Land Adjustment & Compaction | 4d | 2026-09-21 | 2026-09-26 | B3.1. 33 14 13.01 4 |  | 67d |
| B3.33 05 63.01.40 |  | Foundations | 5d | 2026-09-27 | 2026-10-01 | B3.33 05 63.01.42 |  | 67d |
| B3.33 05 63.01.43 |  | Chambers Walls Conc Cast In Situ | 5d | 2026-10-03 | 2026-10-07 | B3.33 05 63.01.40 |  | 67d |
| B3.33 05 63.01.41 |  | Chamber Curing, Finishing & Steel Cover | 6d | 2026-10-13 | 2026-10-19 | B3.33 05 63.01.43, B3.1. 33 14 13.26 |  | 63d |
| B3.33 05 63.01.44 |  | Valve & Fitting Installation | 6d | 2026-10-20 | 2026-10-26 | B3.33 05 63.01.41, B3.1. 33 14 13.01 5, B3.33 05 63.02.54, B3.33 05 63.01.49, B3.1. 33 14 13-01102, B3.1. 33 14 13-01100, B3.33 14 19.01.132 |  | 63d |
|  | 3 | **Fire Hydrant** |  | 2026-09-21 | 2026-10-10 |  |  |  |
| B3.33 14 19.01.fh23 |  | Riser Pipe & Flanged Fittings Installation | 4d | 2026-09-21 | 2026-09-26 | B3.1. 33 14 13.01 3 |  | 64d |
| B3.33 14 19.01.fh22 |  | Firehydrant Fixing/Installation | 5d | 2026-09-27 | 2026-10-01 | B3.33 14 19.01.fh23 |  | 64d |
| B3.33 14 19.01.fh24 |  | Backfilling & Compaction | 7d | 2026-10-03 | 2026-10-10 | B3.33 14 19.01.fh22 |  | 64d |
|  | Dry Networks | **Dry Networks** |  | 2026-09-21 | 2026-11-10 |  |  |  |
|  | MV | **Medium Voltage Network** |  | 2026-09-27 | 2026-10-28 |  |  |  |
|  | Duct Banks | **Duct Banks** |  | 2026-09-27 | 2026-10-17 |  |  |  |
|  | 4 Way | **2 Way** |  | 2026-09-27 | 2026-10-17 |  |  |  |
| B2.31 23 00.638 |  | Excavation | 4d | 2026-09-27 | 2026-10-01 | B6.33 05 40.01.240, B6.33 05 40.01.800 |  | 68.91d |
| B2.33 71 00.284 |  | Shuttering, Steel Fixing Incl. UPVC Pipe & Conc. Cast | 7d | 2026-10-01 | 2026-10-10 | B2.31 23 00.638 |  | 68.91d |
| B2.33 71 00.285 |  | Backfilling & Warrning Tape | 6d | 2026-10-10 | 2026-10-17 | B2.33 71 00.284 |  | 68.91d |
|  | Cables | **Cables** |  | 2026-10-18 | 2026-10-28 |  |  |  |
|  | 3C,500mm2 | **3C,500mm2** |  | 2026-10-18 | 2026-10-28 |  |  |  |
| B2.33 71 49.23.71 |  | Cable 13.8 kV Unarmored | 4d | 2026-10-18 | 2026-10-21 | B2.33 71 00 01 9 SS |  | 71d |
| B2.33 71 49.23.72 |  | Straight joints cables | 3d | 2026-10-22 | 2026-10-25 | B2.33 71 49.23.71 |  | 71d |
| B2.33 71 49.23.73 |  | Cable Termination | 3d | 2026-10-26 | 2026-10-28 | B2.33 71 49.23.72 |  | 71d |
|  | LV Network | **Low Voltage Network** |  | 2026-10-18 | 2026-10-21 |  |  |  |
|  | Cables | **Cables** |  | 2026-10-18 | 2026-10-21 |  |  |  |
|  | 4C,10+1C,10mm2 | **4C,10+1C,10mm2** |  | 2026-10-18 | 2026-10-21 |  |  |  |
| B2.33 71 00 01 9 |  | Cable Pulling | 4d | 2026-10-18 | 2026-10-21 | B2.33 71 49.23.132 |  | 71d |

| ID | WBS | Task | Duration | Start | Finish | Predecessors | Total float |
| --- | --- | --- | --- | --- | --- | --- | --- |
|  | Street Lighting | **Street Lighting** |  | 2026-09-21 | 2026-11-10 |  |  |
|  | Duct Banks | **Duct Banks** |  | 2026-10-17 | 2026-10-27 |  |  |
|  | 2 Way | **2 Way** |  | 2026-10-17 | 2026-10-27 |  |  |
| B2.33 71 00 02 58 |  | Excavation | 2d | 2026-10-17 | 2026-10-19 | B2.33 71 00.285 | 68.91d |
| B2.33 71 00 02 59 |  | Shuttering, Steel Fixing Incl. UPVC Pipe & Conc. Cast | 4d | 2026-10-19 | 2026-10-24 | B2.33 71 00 02 58 | 68.91d |
| B2.33 71 00 02 60 |  | Backfilling & Warrning Tape | 3d | 2026-10-24 | 2026-10-27 | B2.33 71 00 02 59, B2.33 71 00 02 87 | 68.91d |
|  | Drawpits | **Drawpits** |  | 2026-10-19 | 2026-10-26 |  |  |
| B2.33 71 00 02 61 |  | Excavation | 2d | 2026-10-19 | 2026-10-21 | B2.33 71 00 02 58 | 69.91d |
| B2.33 71 00 02 62 |  | Drawpits Installation | 2d | 2026-10-21 | 2026-10-24 | B2.33 71 00 02 61 | 69.91d |
| B2.33 71 00 02 63 |  | Backfilling & Warrning Tape | 2d | 2026-10-24 | 2026-10-26 | B2.33 71 00 02 62 | 69.91d |
|  | Cables | **Cables** |  | 2026-10-08 | 2026-11-10 |  |  |
|  | 4C,10+1C,10mm2 | **4C,10+1C,10mm2** |  | 2026-10-08 | 2026-11-10 |  |  |
| B2.33 71 19 102 |  | Land Adjustment | 3d | 2026-10-08 | 2026-10-11 | B2.33 71 16.46 | 71d |
| B2.33 71 49.23.132 |  | Cable Pulling | 5d | 2026-10-12 | 2026-10-17 | B2.33 71 19 102 | 71d |
| B2.33 71 19 112 |  | Backfilling | 3d | 2026-11-08 | 2026-11-10 | B2.33 71 49.23.132, B2.33 71 19 72 | 64d |
|  | SL Poles | **SL Poles** |  | 2026-09-21 | 2026-10-13 |  |  |
|  | Pole (10 M Sngl Arm) | **Pole (10 M Single Arm)** |  | 2026-09-21 | 2026-10-07 |  |  |
| B2.33 71 16.43 |  | Excavation | 2d | 2026-09-21 | 2026-09-22 | B1.2.32 11 26.01.5 | 67d |
| B2.33 71 16.44 |  | PC & RC Foundation | 3d | 2026-09-24 | 2026-09-27 | B2.33 71 16.43 | 71d |
| B2.33 71 16.45 |  | Lighting Poles Installation Incl power box, Cables | 3d | 2026-09-28 | 2026-09-30 | B2.33 71 16.44 | 71d |
| B2.26.56.19.4 |  | Lighting Luminares Inst | 3d | 2026-10-01 | 2026-10-04 | B2.33 71 16.45 | 71d |
| B2.33 71 16.46 |  | Backfilling, Grouting & Chamfering | 3d | 2026-10-05 | 2026-10-07 | B2.26.56.19.4 | 71d |
|  | Pole (10 M Dbl Arm) | **Pole (10 M Double Arm)** |  | 2026-09-24 | 2026-10-13 |  |  |
| B2.33 71 16.47 |  | Excavation | 2d | 2026-09-24 | 2026-09-26 | B2.33 71 16.43 | 67d |
| B2.33 71 16.48 |  | PC & RC Foundation | 4d | 2026-09-27 | 2026-09-30 | B2.33 71 16.47 | 67d |
| B2.33 71 16.49 |  | Lighting Poles Installation Incl power box, Cables | 3d | 2026-10-01 | 2026-10-04 | B2.33 71 16.48 | 67d |
| B2.26.56.19.5 |  | Lighting Luminares Inst | 3d | 2026-10-05 | 2026-10-07 | B2.33 71 16.49 | 67d |
| B2.33 71 16.50 |  | Backfilling, Grouting & Chamfering | 5d | 2026-10-08 | 2026-10-13 | B2.26.56.19.5 | 67d |
|  | SL Pillars | **SL Pillars** |  | 2026-10-05 | 2026-10-08 |  |  |
| B2.33 71 26 031 |  | Pillars Installation (Internal Wiring) | 2d | 2026-10-05 | 2026-10-06 | B2.33 71 16.49, B2.33 71 16.45 | 92d |
| B2.33 71 26 042 |  | KWH meter mounting a frame installation | 2d | 2026-10-07 | 2026-10-08 | B2.33 71 26 031 | 92d |
|  | Telecommunication | **Telecommunication Network** |  | 2026-10-15 | 2026-11-05 |  |  |
|  | Ducts | **Ducts** |  | 2026-10-15 | 2026-11-04 |  |  |
|  | (6*50mm) | **Size (6*50mm) HDPE ducts** |  | 2026-10-15 | 2026-11-01 |  |  |
| B2.1.33 81 26.84 |  | Excavation | 3d | 2026-10-15 | 2026-10-19 | B2.33 71 00.219 | 31.88d |
| B2.1.33 81 26.85 |  | HDPE Pipe, Shuttering, Steel Fixing & Conc. Cast | 4d | 2026-10-19 | 2026-10-24 | B2.1.33 81 26.84 | 71.88d |
| B2.1.33 81 26.86 |  | Backfilling & Warrning Tape | 3d | 2026-10-28 | 2026-11-01 | B2.1.33 81 26.85, B2.1.33 81 26.95, B2.33 71 00.253 | 67.88d |
|  | (6*50mm+2*32mm) | **Size (6*50mm+2*32mm) HDPE ducts** |  | 2026-10-19 | 2026-10-28 |  |  |
| B2.1.33 81 26.87 |  | Excavation | 2d | 2026-10-19 | 2026-10-21 | B2.1.33 81 26.84 | 31.88d |
| B2.1.33 81 26.88 |  | HDPE Pipe, Shuttering, Steel Fixing & Conc. Cast | 3d | 2026-10-21 | 2026-10-25 | B2.1.33 81 26.87 | 67.88d |
| B2.1.33 81 26.89 |  | Backfilling & Warrning Tape | 3d | 2026-10-25 | 2026-10-28 | B2.1.33 81 26.88, B2.33 71 00.249 | 67.88d |
|  | (2*32mm) | **Size (2*32mm) HDPE ducts** |  | 2026-10-19 | 2026-10-28 |  |  |
| B2.1.33 81 26.93 |  | Excavation | 2d | 2026-10-19 | 2026-10-21 | B2.1.33 81 26.87 SS | 31.88d |
| B2.1.33 81 26.94 |  | HDPE Pipe, Shuttering, Steel Fixing & Conc. Cast | 2d | 2026-10-21 | 2026-10-24 | B2.1.33 81 26.93 | 68.88d |
| B2.1.33 81 26.95 |  | Backfilling & Warrning Tape | 3d | 2026-10-25 | 2026-10-28 | B2.1.33 81 26.94, B2.1.33 81 26.89 SS, B2.1.33 81 26.149 | 67.88d |
|  | (4*32mm) | **Size (4*32mm) HDPE ducts** |  | 2026-10-21 | 2026-11-04 |  |  |
| B2.1.33 81 26.96 |  | Excavation | 2d | 2026-10-21 | 2026-10-24 | B2.1.33 81 26.93 | 31.88d |
| B2.1.33 81 26.97 |  | HDPE Pipe, Shuttering, Steel Fixing & Conc. Cast | 2d | 2026-10-24 | 2026-10-26 | B2.1.33 81 26.96 | 72.88d |
| B2.1.33 81 26.98 |  | Backfilling & Warrning Tape | 3d | 2026-11-01 | 2026-11-04 | B2.1.33 81 26.97, B2.1.33 81 26.86 | 67.88d |
|  | (6*50mm+6*32mm) | **Size (6*50mm+6*32mm) HDPE ducts** |  | 2026-10-24 | 2026-11-03 |  |  |
| B2.1.33 81 26.99 |  | Excavation | 3d | 2026-10-24 | 2026-10-27 | B2.1.33 81 26.96 | 31.88d |
| B2.1.33 81 26.100 |  | HDPE Pipe, Shuttering, Steel Fixing & Conc. Cast | 3d | 2026-10-27 | 2026-10-31 | B2.1.33 81 26.99 | 66.88d |
| B2.1.33 81 26.101 |  | Backfilling & Warrning Tape | 3d | 2026-10-31 | 2026-11-03 | B2.1.33 81 26.100 | 66.88d |
|  | (6*32mm) | **Size (6*32mm) HDPE ducts** |  | 2026-10-27 | 2026-11-04 |  |  |
| B2.1.33 81 26.102 |  | Excavation | 2d | 2026-10-27 | 2026-10-29 | B2.1.33 81 26.99 | 31.88d |
| B2.1.33 81 26.103 |  | HDPE Pipe, Shuttering, Steel Fixing & Conc. Cast | 2d | 2026-10-29 | 2026-11-01 | B2.1.33 81 26.102 | 67.88d |
| B2.1.33 81 26.104 |  | Backfilling & Warrning Tape | 3d | 2026-11-01 | 2026-11-04 | B2.1.33 81 26.103 | 67.88d |
|  | Manholes | **Manholes** |  | 2026-10-27 | 2026-11-05 |  |  |
|  | Manhole Type 1 | **Manhole Type 1** |  | 2026-10-27 | 2026-11-03 |  |  |
| B2.31 23 00.610 |  | Excavation | 2d | 2026-10-27 | 2026-10-29 | B2.1.33 81 26.102 SS | 31.88d |
| B2.33 71 00.228 |  | Manhole Installation | 2d | 2026-10-29 | 2026-11-01 | B2.31 23 00.610 | 66.88d |
| B2.33 71 00.229 |  | Backfilling & Warrning Tape | 2d | 2026-11-01 | 2026-11-03 | B2.33 71 00.228 | 66.88d |
|  | Manhole Type 2 | **Manhole Type 2** |  | 2026-10-29 | 2026-11-05 |  |  |
| B2.31 23 00.611 |  | Excavation | 2d | 2026-10-29 | 2026-11-01 | B2.31 23 00.610 | 31.88d |
| B2.33 71 00.230 |  | Manhole Installation | 2d | 2026-11-01 | 2026-11-03 | B2.31 23 00.611 | 66.88d |
| B2.33 71 00.231 |  | Backfilling & Warrning Tape | 2d | 2026-11-03 | 2026-11-05 | B2.33 71 00.230, B2.1.33 81 26.179, B2.33 71 00.275, B2.1.33 81 26.101, B2.33 71 00.229 | 66.88d |
|  | Crossing Ducts | **Road Crossing Ducts** |  | 2026-10-29 | 2026-11-05 |  |  |
|  | 2 | **Size (2*32mm) HDPE** |  | 2026-10-29 | 2026-11-05 |  |  |
| B2.31 23 00.613 |  | Excavation | 2d | 2026-10-29 | 2026-11-01 | B2.31 23 00.611 FF | 31.88d |
| B2.33 71 00.234 |  | Shuttering, Steel Fixing Incl. UPVC Pipe & Conc. Cast | 2d | 2026-11-01 | 2026-11-03 | B2.31 23 00.613 | 31.88d |

| ID | WBS | Task | Duration | Start | Finish | Predecessors | Complete | Total float |
| --- | --- | --- | --- | --- | --- | --- | --- | --- |
| B2.33 71 00.235 |  | Backfilling & Warrning Tape | 2d | 2026-11-03 | 2026-11-05 | B2.33 71 00.234 |  | 31.88d |
|  | Earth & Road Works | **Earth & Road Works** |  | 2025-11-28 | 2026-11-29 |  |  |  |
|  | Earth Works | **Earth Works** |  | 2025-11-28 | 2026-04-01 |  |  |  |
| B1.2.31 23 16.01.5 |  | Roadway Excavation | 95.1d | 2025-11-28 A | 2026-04-01 A | DMM2-Eng-MS-78 | 100% |  |
| B1.2.31 23 23.01.5 |  | Embankment Backfiling | 26.76d | 2025-11-30 A | 2025-12-31 A | B1.2.31 23 16.01.5 | 100% |  |
|  | Earth Layers | **Earth Layers** |  | 2026-02-28 | 2026-09-17 |  |  |  |
| B1.2.32 11 13.01.5 |  | Subgrade | 161.75d | 2026-02-28 A | 2026-09-17 | B1.2.31 23 23.01.5 | 65% | 43d |
| B1.2.32 11 23.01.5 |  | Aggregate Base Course | 92d | 2026-06-03 A | 2026-09-17 | B1.2.32 11 13.01.5 FF | 55% | 43d |
|  | Interlock | **Interlock** |  | 2026-10-27 | 2026-10-31 |  |  |  |
| B1.2.32 14 13.13.5 |  | 60mm thick - Interlocking Block Pavers | 3d | 2026-10-27 | 2026-10-31 | B2.33 71 16.50, B1.2.10 14 53.019 |  | 55.76d |
|  | Curbstone | **Curbstone** |  | 2026-10-22 | 2026-11-08 |  |  |  |
|  | Pre Install | **Pre-Installation** |  | 2026-10-22 | 2026-10-29 |  |  |  |
| B2.31 23 00.121 |  | Excavation | 2d | 2026-10-22 | 2026-10-25 | B2.31 23 00.251 |  | 0.76d |
| B1.2.32 14 13.13.25 |  | PCC | 2d | 2026-10-25 | 2026-10-27 | B2.31 23 00.121 |  | 0.76d |
| 32 16 13.005 |  | Haunching | 2d | 2026-10-27 | 2026-10-29 | B1.2.32 14 13.13.25 |  | 0.76d |
|  | Installation | **Installation** |  | 2026-10-28 | 2026-11-08 |  |  |  |
| B1.2.32 16.13.01.5 |  | Curb Stone, Type K1 | 3d | 2026-10-28 | 2026-11-01 | 32 16 13.005 SS+1d |  | 0.76d |
| B1.2.32 16.13.02.4 |  | Dropped Curb, Type K3 | 2d | 2026-10-29 | 2026-11-01 | B1.2.32 16.13.01.5 FF, 32 16 13.005 |  | 0.76d |
| B1.2.32 16.13.03.5 |  | Edge Curb, Type K4 | 2d | 2026-11-01 | 2026-11-03 | B1.2.32 16.13.02.4, 32 16 13.005 |  | 0.76d |
| B1.2.32 16.13.045 |  | Heel Curb, Type K5 | 2d | 2026-11-03 | 2026-11-05 | B1.2.32 16.13.03.5, 32 16 13.005 |  | 0.76d |
| B1.2.32 16.13.05.4 |  | Transition Curb | 2d | 2026-11-05 | 2026-11-08 | B1.2.32 16.13.045, 32 16 13.005 |  | 0.76d |
|  | Finishing | **Finishing** |  | 2026-11-05 | 2026-11-08 |  |  |  |
| 32 16 13.05 |  | Finishing, Fareface | 2d | 2026-11-05 | 2026-11-08 | B1.2.32 16.13.01.5, B1.2.32 16.13.02.4, B1.2.32 16.13.03.5, B1.2.32 16.13.045, B1.2.32 16.13.05.4 FF, B1.2.32 12 19.13.16 |  | 0.76d |
|  | Asphalt Layers | **Asphalt Layers** |  | 2026-09-19 | 2026-11-14 |  |  |  |
| B1.2.32 11 26.01.5 |  | Bituminous Base Course including Prime Coat (MC1) and tack coat (RC2) | 2d | 2026-09-19 | 2026-09-20 | B1.2.32 11 23.01.5, B1.1.31 23 23.112 |  | 43d |
| B1.2.32 12 16.01.5 |  | Bituminous concrete Wearing Course, including tack coat (RC2) | 5d | 2026-11-08 | 2026-11-14 | B1.2.32 11 26.01.5, B8.31 23 16.011, 32 16 13.05 |  | 2.76d |
|  | Pavement Marking | **Pavement Marking** |  | 2026-11-14 | 2026-11-16 |  |  |  |
| B1.2.32 17 23.02.5 |  | Retroreflective Thermoplastic Yellow, Traffic lines | 1d | 2026-11-14 | 2026-11-15 | B1.2.32 12 16.01.5 |  | 45.76d |
| B1.2.32 17 23.01.5 |  | Retroreflective Thermoplastic White Traffic lines | 1d | 2026-11-15 | 2026-11-16 | B1.2.32 12 16.01.5, B1.2.32 17 23.02.5 |  | 45.76d |
|  | Traffic Signs | **Traffic Signs** |  | 2026-11-05 | 2026-11-29 |  |  |  |
|  | Pre Install | **Pre-Installation** |  | 2026-11-05 | 2026-11-10 |  |  |  |
| B2.31 23 00.131 |  | Excavation | 2d | 2026-11-05 | 2026-11-08 | 32 16 13.05 SS |  | 0.76d |
| 10 14 53.05 |  | Foundation | 2d | 2026-11-08 | 2026-11-10 | B2.31 23 00.131 |  | 26.76d |
|  | Installation | **Installation** |  | 2026-11-22 | 2026-11-29 |  |  |  |
| B1.2.10 14 53.015 |  | 1 Sheet Alumenium, Single post | 2d | 2026-11-22 | 2026-11-24 | B1.2.32 14 13.13.5, B1.2.10 14 53.017 FF |  | 36.76d |
| B1.2.10 14 53.035 |  | 1 Sheet Alumenium, Double post | 2d | 2026-11-24 | 2026-11-26 | B1.2.32 14 13.13.5, B1.2.10 14 53.015 |  | 36.76d |
| B1.2.10 14 14.01.5 |  | Ground mounted, 1 Sheet Alumenium, Single post | 2d | 2026-11-26 | 2026-11-29 | B1.2.32 14 13.13.5, B1.2.10 14 53.035, B1.2.32 17 23.01.5 |  | 36.76d |
| B1.2.10 14 14.025 |  | Ground mounted, 1 Sheet Alumenium, Double post | 2d | 2026-11-26 | 2026-11-29 | B1.2.32 14 13.13.5, B1.2.10 14 14.01.5 SS |  | 36.76d |
|  | Landscape | **Landscape** |  | 2026-11-08 | 2026-12-21 |  |  |  |
|  | Fences | **Fences** |  | 2026-11-08 | 2026-12-10 |  |  |  |
|  | (MODON)l fence | **Steel fence (MODON)** |  | 2026-11-08 | 2026-12-10 |  |  |  |
| B7.32 93 43.04.16 |  | Earthwork | 3d | 2026-11-08 | 2026-11-11 | B2.31 23 00.131 |  | 0.76d |
| B7.32 93 43.04.18 |  | Foundation | 3d | 2026-11-30 | 2026-12-03 | B7.32 93 43.04.16, B7.31 32 19.23.5 |  | 0.76d |
| B7.32 93 43.04.20 |  | Fence Installation | 6d | 2026-12-03 | 2026-12-10 | B7.32 93 43.04.18, 10 14 53.05 |  | 6.76d |
|  | Gates | **Gates** |  | 2026-11-11 | 2026-12-21 |  |  |  |
|  | Size (4.1x 2.7)m | **Size (4.1x 2.7)m** |  | 2026-11-11 | 2026-12-13 |  |  |  |
| B7.32 93 43.04.22 |  | Earthwork | 4d | 2026-11-11 | 2026-11-16 | B7.32 93 43.04.16 |  | 0.76d |
| B7.32 93 43.04.24 |  | Foundation | 3d | 2026-12-03 | 2026-12-07 | B7.32 93 43.04.22, B7.31 32 19.23.5, B7.32 93 43.04.18 |  | 0.76d |
| B7.32 93 43.04.26 |  | Gate Installation | 5d | 2026-12-07 | 2026-12-13 | B7.32 93 43.04.24 |  | 1.76d |
|  | Size (3.35x 2.7)m | **Size (3.35x 2.7)m** |  | 2026-11-16 | 2026-12-16 |  |  |  |
| B7.32 93 43.04.28 |  | Earthwork | 3d | 2026-11-16 | 2026-11-19 | B7.32 93 43.04.22 |  | 0.76d |
| B7.32 93 43.04.30 |  | Foundation | 3d | 2026-12-07 | 2026-12-10 | B7.32 93 43.04.28, B7.31 32 19.23.5, B7.32 93 43.04.24 |  | 0.76d |
| B7.32 93 43.04.32 |  | Gate Installation | 5d | 2026-12-10 | 2026-12-16 | B7.32 93 43.04.30, B7.32 93 43.04.65, B7.32 93 43.04.68 |  | 1.76d |
|  | Size (4.35x 2.7)m | **Size (4.35x 2.7)m** |  | 2026-11-19 | 2026-12-17 |  |  |  |
| B7.32 93 43.04.34 |  | Earthwork | 3d | 2026-11-19 | 2026-11-23 | B7.32 93 43.04.28 |  | 0.76d |
| B7.32 93 43.04.36 |  | Foundation | 3d | 2026-12-10 | 2026-12-14 | B7.32 93 43.04.34, B7.31 32 19.23.5, B7.32 93 43.04.30 |  | 0.76d |
| B7.32 93 43.04.38 |  | Gate Installation | 3d | 2026-12-14 | 2026-12-17 | B7.32 93 43.04.36, B7.32 93 43.04.26 |  | 0.76d |
|  | Size (3.25x 2.7)m | **Size (3.25x 2.7)m** |  | 2026-11-23 | 2026-12-21 |  |  |  |
| B7.32 93 43.04.40 |  | Earthwork | 3d | 2026-11-23 | 2026-11-26 | B7.32 93 43.04.34 |  | 0.76d |
| B7.32 93 43.04.42 |  | Foundation | 3d | 2026-12-14 | 2026-12-17 | B7.32 93 43.04.40, B7.31 32 19.23.5, B7.32 93 43.04.36 |  | 0.76d |
| B7.32 93 43.04.44 |  | Gate Installation | 3d | 2026-12-17 | 2026-12-21 | B7.32 93 43.04.42, B7.32 93 43.04.71, B7.32 93 43.04.32, B7.32 93 43.04.38, B7.32 93 43.04.56 SS, B7.32 93 43.04.54 SS |  | 0.76d |
|  | Geotextile | **Geotextile** |  | 2026-11-26 | 2026-11-30 |  |  |  |
| B7.31 32 19.23.4 |  | Geotextile to protect trees planting soil | 3d | 2026-11-26 | 2026-11-29 | B1.2.32 12 16.01.5, B7.32 91 00.01 |  | 14d |
| B7.31 32 19.23.5 |  | Geotextile below gravel bed | 3d | 2026-11-26 | 2026-11-30 | B7.32 93 43.04.40 |  | 0.76d |
|  | Ornamental Grasses | **Ornamental Grasses** |  | 2026-12-12 | 2026-12-17 |  |  |  |
| B7.32 93 13.01 |  | Pennisetum setaceum | 5d | 2026-12-12 | 2026-12-17 | B7.31 32 19.23.4, B7.32 91 00.01.02, DMM2-Proc-Delv-7540, DMM2-Proc-Delv-7329, B7.32 93 43.06 SS, B7.32 93 43.03 SS, B7.32 93 33.03 FF |  | 3.76d |
|  | Large Shrubs | **Large Shrubs** |  | 2026-12-12 | 2026-12-17 |  |  |  |
| B7.32 93 33.03 |  | Tecomaria Capensis | 5d | 2026-12-12 | 2026-12-17 | B7.32 91 00.01.01, DMM2-Proc-Delv-7543, B7.32 91 00.02.02 |  | 3.76d |
|  | Miscellaneous | **Miscellaneous** |  | 2026-11-23 | 2026-12-12 |  |  |  |
| B7.32 91 00.01 |  | Plastic edge | 3d | 2026-11-23 | 2026-11-25 | B1.2.32 12 16.01.5, DMM2-Proc-Delv-7331 |  | 7d |

| ID | WBS | Task | Duration | Start | Finish | Predecessors | Complete | Total float |
| --- | --- | --- | --- | --- | --- | --- | --- | --- |
| B7.32 91 00.01.01 |  | 75mm thickness for shrubs and grasses | 5d | 2026-11-30 | 2026-12-06 | B7.32 91 00.01.02 SS, B7.32 91 00.02.01 SS |  | 3.76d |
| B7.32 91 00.01.02 |  | 75mm thickness for trees | 5d | 2026-11-30 | 2026-12-06 | B7.32 91 00.01 SS, B7.32 91 00.02.01 SS |  | 3.76d |
| B7.32 91 00.02.01 |  | Grey gravel bed - 30-50 mm diameter (G1) | 5d | 2026-11-30 | 2026-12-06 | B7.32 91 00.01, B7.31 32 19.23.5, DMM2-Proc-Delv-7334 |  | 3.76d |
| B7.32 91 00.02.02 |  | Grey gravel bed - 12-25 mm diameter (G2) | 5d | 2026-12-06 | 2026-12-12 | B7.32 91 00.02.01, B7.31 32 19.23.5, DMM2-Proc-Delv-7334 |  | 3.76d |
|  | Management Road 01 | **Management Road 01** |  | 2025-11-26 | 2026-11-28 |  |  |  |
|  | Wet Networks | **Wet Networks** |  | 2026-02-05 | 2026-10-17 |  |  |  |
|  | Stormwater Network | **Stormwater Network** |  | 2026-02-05 | 2026-09-20 |  |  |  |
|  | GRP | **GRP** |  | 2026-02-05 | 2026-09-20 |  |  |  |
|  | ?400 | **?400** |  | 2026-02-05 | 2026-04-18 |  |  |  |
|  | 3 | **Depth From 1.5m to 2.5m** |  | 2026-02-05 | 2026-04-18 |  |  |  |
| B6.33 42 11.01-101 |  | Excavation | 14.97d | 2026-02-05 A | 2026-02-25 A | B6.33 42 11.02 5 SS | 100% |  |
| B6.33 42 11.01-107 |  | Sand Bedding | 14.72d | 2026-02-07 A | 2026-02-26 A | B6.33 42 11.01-101 | 100% |  |
| B6.33 42 11.01-1013 |  | Pipe Laying | 12.47d | 2026-02-10 A | 2026-02-28 A | B6.33 42 11.01-107 | 100% |  |
| B6.33 42 11.01-1019 |  | Embedment & Test | 4d | 2026-04-08 A | 2026-04-12 A | B6.33 42 11.01-1013 | 100% |  |
| B6.33 42 11.01-1025 |  | Backfilling & Warrning Tape | 7d | 2026-04-11 A | 2026-04-18 A | B6.33 42 11.01-1019, B6.33 42 11.015 SS | 100% |  |
|  | ?4001 | **?500** |  | 2026-02-08 | 2026-04-21 |  |  |  |
|  | 3 | **Depth From 1.5m to 2.5m** |  | 2026-02-08 | 2026-04-21 |  |  |  |
| B6.33 42 11.01-102 |  | Excavation | 14.36d | 2026-02-08 A | 2026-02-28 A | B6.33 42 11.01-101 | 100% |  |
| B6.33 42 11.01-108 |  | Sand Bedding | 13.11d | 2026-02-10 A | 2026-03-01 A | B6.33 42 11.01-102 | 100% |  |
| B6.33 42 11.01-1014 |  | Pipe Laying | 12.86d | 2026-02-11 A | 2026-03-02 A | B6.33 42 11.01-108 | 100% |  |
| B6.33 42 11.01-1020 |  | Embedment & Test | 3d | 2026-04-08 A | 2026-04-11 A | B6.33 42 11.01-1014 | 100% |  |
| B6.33 42 11.01-1026 |  | Backfilling & Warrning Tape | 5d | 2026-04-16 A | 2026-04-21 A | B6.33 42 11.01-1020, B6.33 05 39.01.3417 SS | 100% |  |
|  | ?4002 | **?600** |  | 2026-04-08 | 2026-05-04 |  |  |  |
|  | 4 | **Depth From 1.5m to 2.5m** |  | 2026-04-08 | 2026-05-04 |  |  |  |
| B6.33 42 11.01-103 |  | Excavation | 2d | 2026-04-08 A | 2026-04-09 A | B6.33 42 11.01-102 | 100% |  |
| B6.33 42 11.01-109 |  | Sand Bedding | 2d | 2026-04-11 A | 2026-04-12 A | B6.33 42 11.01-103 | 100% |  |
| B6.33 42 11.01-1015 |  | Pipe Laying | 2d | 2026-04-13 A | 2026-04-14 A | B6.33 42 11.01-109 | 100% |  |
| B6.33 42 11.01-1021 |  | Embedment & Test | 3d | 2026-04-29 A | 2026-05-02 A | B6.33 42 11.01-1015 | 100% |  |
| B6.33 42 11.01-1027 |  | Backfilling & Warrning Tape | 4d | 2026-04-30 A | 2026-05-04 A | B6.33 42 11.01-1021, B6.33 05 39.01.3567 SS | 100% |  |
|  | ?40021 | **?700** |  | 2026-02-26 | 2026-05-04 |  |  |  |
|  | 4 | **Depth From 1.5m to 2.5m** |  | 2026-02-26 | 2026-05-04 |  |  |  |
| B6.33 42 11.01-104 |  | Excavation | 1.25d | 2026-02-26 A | 2026-02-28 A | B6.33 42 11.01-103 | 100% |  |
| B6.33 42 11.01-1010 |  | Sand Bedding | 0.5d | 2026-02-28 A | 2026-03-01 A | B6.33 42 11.01-104 | 100% |  |
| B6.33 42 11.01-1016 |  | Pipe Laying | 0.5d | 2026-03-01 A | 2026-03-02 A | B6.33 42 11.01-1010 | 100% |  |
| B6.33 42 11.01-1022 |  | Embedment & Test | 4d | 2026-04-29 A | 2026-05-03 A | B6.33 42 11.01-1016 | 100% |  |
| B6.33 42 11.01-1028 |  | Backfilling & Warrning Tape | 3d | 2026-05-02 A | 2026-05-04 A | B6.33 42 11.01-1022, B6.33 42 11.02.5 SS | 100% |  |
|  | ?400111 | **?1000** |  | 2026-02-26 | 2026-04-28 |  |  |  |
|  | 3 | **Depth From 1.5m to 2.5m** |  | 2026-02-26 | 2026-04-28 |  |  |  |
| B6.33 42 11.01-106 |  | Excavation | 0.75d | 2026-02-26 A | 2026-02-28 A | B6.33 42 11.01-104 | 100% |  |
| B6.33 42 11.01-1012 |  | Sand Bedding | 0.5d | 2026-02-28 A | 2026-03-01 A | B6.33 42 11.01-106 | 100% |  |
| B6.33 42 11.01-1018 |  | Pipe Laying | 0.75d | 2026-03-02 A | 2026-03-02 A | B6.33 42 11.01-1012 | 100% |  |
| B6.33 42 11.01-1024 |  | Embedment & Test | 4d | 2026-04-22 A | 2026-04-26 A | B6.33 42 11.01-1018 | 100% |  |
| B6.33 42 11.01-1030 |  | Backfilling & Warrning Tape | 5d | 2026-04-23 A | 2026-04-28 A | B6.33 42 11.01-1024, B6.33 42 11.01-1027 | 100% |  |
|  | ?40011 | **?1100** |  | 2026-04-15 | 2026-09-20 |  |  |  |
|  | 3 | **Depth From 2.5m to 3.5m** |  | 2026-04-15 | 2026-09-20 |  |  |  |
| B6.33 42 11.01-105 |  | Excavation | 50.23d | 2026-04-15 A | 2026-06-17 A | B6.33 42 11.01-104 | 100% |  |
| B6.33 42 11.01-1011 |  | Sand Bedding | 50.23d | 2026-04-18 A | 2026-06-20 A | B6.33 42 11.01-105 | 100% |  |
| B6.33 42 11.01-1017 |  | Pipe Laying | 123.55d | 2026-04-21 A | 2026-09-19 | B6.33 42 11.01-1011 | 69% | 113.72d |
| B6.33 42 11.01-1023 |  | Embedment & Test | 91.11d | 2026-06-03 A | 2026-09-19 | B6.33 42 11.01-1017 FF | 69% | 113.16d |
| B6.33 42 11.01-1029 |  | Backfilling & Warrning Tape | 87.4d | 2026-06-08 A | 2026-09-20 | B6.33 42 11.01-1025, B6.33 42 11.01-1023 SS | 69% | 112.88d |
|  | Strom Manholes | **Manholes** |  | 2026-02-08 | 2026-09-17 |  |  |  |
|  | 1 | **?1200** |  | 2026-02-08 | 2026-09-17 |  |  |  |
|  | 3 | **Depth From 1.5m to 2.5m** |  | 2026-02-08 | 2026-09-17 |  |  |  |
| B6.33 05 39.01.2927 |  | Excavation & Compaction | 13.93d | 2026-02-08 A | 2026-02-26 A | B6.33 42 11.01-105 | 100% |  |
| B6.33 05 39.01.2937 |  | Blinding Conc, & RC Base | 2d | 2026-04-08 A | 2026-04-09 A | B6.33 05 39.01.2927 | 100% |  |
| B6.33 05 39.01.2947 |  | Manhole Installation | 92.62d | 2026-06-01 A | 2026-09-17 | B6.33 05 39.01.2937 | 91% | 114d |
| B6.33 05 39.01.2957 |  | Test, Internal Finishing, Benching & Cover | 90.62d | 2026-06-03 A | 2026-09-17 | B6.33 05 39.01.2947 SS | 91% | 114d |
| B6.33 05 39.01.2967 |  | Backfilling | 86.62d | 2026-06-08 A | 2026-09-17 | B6.33 05 39.01.2957 SS, B6.33 42 11.01-1.46 SS | 91% | 114d |
|  | 2 | **?1500** |  | 2026-02-09 | 2026-09-17 |  |  |  |
|  | 1 | **Depth From 2.5m to 3.5m** |  | 2026-02-09 | 2026-09-17 |  |  |  |
| B6.33 05 39.01.3027 |  | Excavation & Compaction | 12.59d | 2026-02-09 A | 2026-02-26 A | B6.33 05 39.01.2927 | 100% |  |
| B6.33 05 39.01.3037 |  | Blinding Conc, & RC Base | 86.62d | 2026-06-08 A | 2026-09-17 | B6.33 05 39.01.3027 | 91% | 114d |
| B6.33 05 39.01.3047 |  | Manhole Installation | 81d | 2026-06-15 A | 2026-09-17 | B6.33 05 39.01.3037 SS | 91% | 114d |
| B6.33 05 39.01.3057 |  | Test, Internal Finishing, Benching & Cover | 75d | 2026-06-22 A | 2026-09-17 | B6.33 05 39.01.3047 SS | 91% | 114d |
| B6.33 05 39.01.3067 |  | Backfilling | 74d | 2026-06-23 A | 2026-09-17 | B6.33 05 39.01.3057 SS, B6.33 05 39.01.4267 SS | 91% | 114d |
|  | 3 | **?2000** |  | 2026-02-26 | 2026-09-17 |  |  |  |
|  | 1 | **Depth From 2.5m to 3.5m** |  | 2026-02-26 | 2026-09-17 |  |  |  |
| B6.33 05 39.01.3127 |  | Excavation & Compaction | 2d | 2026-02-26 A | 2026-03-01 A | B6.33 05 39.01.3027 | 100% |  |
| B6.33 05 39.01.3137 |  | Blinding Conc, & RC Base | 86.62d | 2026-06-08 A | 2026-09-17 | B6.33 05 39.01.3127 | 88% | 114d |
| B6.33 05 39.01.3147 |  | Manhole Installation | 75d | 2026-06-22 A | 2026-09-17 | B6.33 05 39.01.3137 SS | 88% | 114d |

| ID | WBS | Task | Duration | Start | Finish | Predecessors | Complete | Total float |
| --- | --- | --- | --- | --- | --- | --- | --- | --- |
| B6.33 05 39.01.3157 |  | Test, Internal Finishing, Benching & Cover | 74d | 2026-06-23 A | 2026-09-17 | B6.33 05 39.01.3147 SS | 88% | 114d |
| B6.33 05 39.01.3167 |  | Backfilling | 74d | 2026-06-23 A | 2026-09-17 | B6.33 05 39.01.3157 SS, B6.33 42 11.35-132 SS, B6.33 42 11.36-122 SS, B6.33 05 39.01.3067 SS | 88% | 114d |
|  | Catch Basins | **Catch Basins** |  | 2026-04-02 | 2026-09-19 |  |  |  |
|  | Sing | **Single** |  | 2026-06-08 | 2026-09-17 |  |  |  |
| B6.33 05 40.01.250 |  | Excavation, Compaction & Vapour Barrier | 86.62d | 2026-06-08 A | 2026-09-17 | B6.33 05 39.01.3127 | 91% | 114d |
| B6.33 05 40.01.260 |  | Blinding Conc. | 75d | 2026-06-22 A | 2026-09-17 | B6.33 05 40.01.250 SS | 91% | 114d |
| B6.33 05 40.01.270 |  | Catch Basin Installation | 74d | 2026-06-23 A | 2026-09-17 | B6.33 05 40.01.260 SS | 91% | 114d |
| B6.33 05 40.01.280 |  | Backfilling, DI Frame & Grate Cover Fixing | 74d | 2026-06-23 A | 2026-09-17 | B6.33 05 40.01.270 SS | 91% | 114d |
|  | UPVC | **UPVC** |  | 2026-04-02 | 2026-09-19 |  |  |  |
|  | UPVC300 | **?300 From 0.0 to 1.5m** |  | 2026-04-02 | 2026-09-17 |  |  |  |
| B6.33 42 11.35-131 |  | Catch Basin Opening Prep. | 140d | 2026-04-02 A | 2026-09-17 | B6.33 05 40.01.270 SS | 50% | 114d |
| B6.33 42 11.35-132 |  | Fittings & Pipe Installation | 138d | 2026-04-05 A | 2026-09-17 | B6.33 42 11.35-131 SS | 50% | 114d |
|  | UPVC3001 | **?400 From 0.0 to 1.5m** |  | 2026-06-08 | 2026-09-19 |  |  |  |
| B6.33 42 11.36-121 |  | Catch Basin Opening Prep. | 86.71d | 2026-06-08 A | 2026-09-19 | B6.33 05 40.01.270 SS | 83% | 113.91d |
| B6.33 42 11.36-122 |  | Fittings & Pipe Installation | 75d | 2026-06-23 A | 2026-09-19 | B6.33 42 11.36-121 SS | 67% | 113d |
|  | Potable Water | **Potable Water Network** |  | 2026-04-09 | 2026-10-01 |  |  |  |
|  | HDPE | **HDPE Pipes** |  | 2026-04-09 | 2026-09-19 |  |  |  |
|  | ?110mm | **?110mm** |  | 2026-04-09 | 2026-09-19 |  |  |  |
|  | Depth: 1.51m - 2.5m | **Depth: 1.51m - 2.5m** |  | 2026-04-09 | 2026-09-19 |  |  |  |
| B3.33 14 11.01.0110 |  | Excavation | 54.47d | 2026-04-09 A | 2026-06-16 A | DMM2-Proc-Delv-5818, B6.33 42 11.01-1029 SS | 100% |  |
| B3.33 14 11.01.0112 |  | Sand Bedding | 54.47d | 2026-04-11 A | 2026-06-17 A | B3.33 14 11.01.0110 | 100% |  |
| B3.33 14 11.01.0114 |  | Pipe Laying | 124.47d | 2026-04-13 A | 2026-09-09 A | B3.33 14 11.01.0112 | 100% |  |
| B3.33 14 11.01.0116 |  | Embedment & Test | 114.77d | 2026-04-27 A | 2026-09-12 A | B3.33 14 11.01.0114, B3.33 14 19.01.110 | 100% |  |
| B3.33 14 11.01.0118 |  | Backfilling & Warrning Tape | 117.18d | 2026-04-29 A | 2026-09-19 | B3.33 14 11.01.0116, B3.33 14 13.01.01.5 SS | 76% | 113.82d |
|  | Crossing | **Plots and Buildings Crossing** |  | 2026-09-16 | 2026-10-01 |  |  |  |
| B3.33 14 13.02.19 |  | Earthwork | 5d | 2026-09-16 | 2026-09-21 | B3.33 14 11.01.0110 |  | 89d |
| B3.33 14 13.02.20 |  | Sand Bedding | 3d | 2026-09-22 | 2026-09-26 | B3.33 14 13.02.19 |  | 89d |
| B3.33 14 13.02.21 |  | Tee, Pipe (Crossing) Installation & Backfilling | 5d | 2026-09-27 | 2026-10-01 | B3.33 14 13.02.20 |  | 89d |
|  | Valves & Chambers | **Valves & Chambers** |  | 2026-09-02 | 2026-09-19 |  |  |  |
|  | GV | **Gate Valves** |  | 2026-09-02 | 2026-09-19 |  |  |  |
|  | 1 | **Gate valves dia (110) mm** |  | 2026-09-02 | 2026-09-19 |  |  |  |
| B3.33 14 19.01.110 |  | Burried Isolation Valve Installation | 8d | 2026-09-02 A | 2026-09-12 A | B3.33 14 11.01.0114 | 100% |  |
| B3.33 14 19.01.111 |  | Spindle & Surface Box | 3d | 2026-09-16 | 2026-09-19 | B3.33 14 19.01.110, B3.33 14 19.01.105 FF |  | 107d |
|  | Fire Fighting | **Fire Fighting Network** |  | 2026-04-19 | 2026-10-01 |  |  |  |
|  | HDPE | **HDPE Pipes** |  | 2026-04-19 | 2026-09-14 |  |  |  |
|  | ?250mm | **?250mm** |  | 2026-04-19 | 2026-09-14 |  |  |  |
|  | Depth: 1.51m - 2.5m | **Depth: 1.51m - 2.5m** |  | 2026-04-19 | 2026-09-14 |  |  |  |
| B3.1. 33 14 13.0110 |  | Excavation | 44.24d | 2026-04-19 A | 2026-06-14 A | B3.33 14 11.01.0110 | 100% |  |
| B3.1. 33 14 13.0112 |  | Sand Bedding | 44.24d | 2026-04-21 A | 2026-06-16 A | B3.1. 33 14 13.0110 | 100% |  |
| B3.1. 33 14 13.0114 |  | Pipe Laying | 115.14d | 2026-04-23 A | 2026-09-09 A | B3.1. 33 14 13.0112, B3.1. 33 14 13.05 SS, B3.1. 33 14 13.6 SS | 100% |  |
| B3.1. 33 14 13.0116 |  | Embedment & Test | 116.28d | 2026-04-25 A | 2026-09-12 A | B3.1. 33 14 13.0114 | 100% |  |
| B3.1. 33 14 13.0118 |  | Backfilling & Warrning Tape | 113.82d | 2026-04-30 A | 2026-09-14 A | B3.1. 33 14 13.0116 | 100% |  |
|  | Valves & Chambers | **Valves & Chambers** |  | 2026-08-17 | 2026-10-01 |  |  |  |
|  | GV | **Gate Valves** |  | 2026-08-17 | 2026-09-20 |  |  |  |
|  | 1 | **Gate valves dia (250) mm** |  | 2026-08-17 | 2026-09-20 |  |  |  |
| B3.33 14 19.01.127 |  | Spindle & Surface Box | 23d | 2026-08-17 A | 2026-09-13 A | B3.1. 33 14 13..19 | 100% |  |
| B3.33 14 19.01.126 |  | Burried Isolation Valve Installation | 4d | 2026-09-16 | 2026-09-20 | B3.1. 33 14 13.0114 |  | 82d |
|  | 2 | **Air Valves** |  | 2026-09-07 | 2026-09-27 |  |  |  |
|  | 4 | **Air valves on less than 315 mm. (In Chamber)** |  | 2026-09-07 | 2026-09-27 |  |  |  |
| B3.33 05 63.02.52 |  | Land Adjustment & Compaction | 8.2d | 2026-09-07 A | 2026-09-19 | B3.1. 33 14 13.0116 SS | 75% | 113d |
| B3.33 05 63.02.50 |  | Foundations | 5.2d | 2026-09-10 A | 2026-09-19 | B3.33 05 63.02.52 SS | 75% | 113d |
| B3.33 05 63.02.53 |  | Chambers Walls Conc Cast In Situ | 4.2d | 2026-09-12 A | 2026-09-19 | B3.33 05 63.02.50 SS | 75% | 113d |
| B3.33 05 63.02.51 |  | Chamber Curing, Finishing & Steel Cover | 2.2d | 2026-09-14 A | 2026-09-19 | B3.33 05 63.02.53 SS | 75% | 67d |
| B3.33 05 63.02.54 |  | Valve & Fitting Installation | 6d | 2026-09-20 | 2026-09-27 | B3.33 05 63.02.51, B3.1. 33 14 13.0118, B3.1. 33 14 13-01102, B3.1. 33 14 13-01100 |  | 67d |
|  | Washout Valves | **Washout Valves** |  | 2026-09-07 | 2026-10-01 |  |  |  |
|  | 4 | **Washout valves on 110-400 mm. (In Chamber)** |  | 2026-09-07 | 2026-10-01 |  |  |  |
| B3.33 05 63.01.47 |  | Land Adjustment & Compaction | 1d | 2026-09-07 A | 2026-09-08 A | B3.1. 33 14 13.0116 SS | 100% |  |
| B3.33 05 63.01.45 |  | Foundations | 1d | 2026-09-10 A | 2026-09-12 A | B3.33 05 63.01.47 | 100% |  |
| B3.33 05 63.01.46 |  | Chamber Curing, Finishing & Steel Cover | 2d | 2026-09-12 A | 2026-09-14 A | B3.33 05 63.01.48 | 100% |  |
| B3.33 05 63.01.48 |  | Chambers Walls Conc Cast In Situ | 1d | 2026-09-12 A | 2026-09-13 A | B3.33 05 63.01.45 | 100% |  |
| B3.33 05 63.01.49 |  | Valve & Fitting Installation | 6d | 2026-09-24 | 2026-10-01 | B3.33 05 63.01.46, B3.33 14 19.01.fh27, B3.1. 33 14 13-01102, B3.1. 33 14 13-0196 |  | 78.05d |
|  | 3 | **Fire Hydrant** |  | 2026-06-09 | 2026-09-24 |  |  |  |
| B3.33 14 19.01.fh26 |  | Riser Pipe & Flanged Fittings Installation | 3d | 2026-06-09 A | 2026-06-13 A | B3.1. 33 14 13.0114 SS | 100% |  |
| B3.33 14 19.01.fh25 |  | Firehydrant Fixing/Installation | 78.56d | 2026-06-20 A | 2026-09-21 | B3.33 14 19.01.fh26 | 1% | 111.03d |
| B3.33 14 19.01.fh27 |  | Backfilling & Compaction | 77.54d | 2026-06-23 A | 2026-09-24 | B3.33 14 19.01.fh25 SS | 1% | 78.05d |
|  | TSE Network | **TSE Network** |  | 2026-06-04 | 2026-10-17 |  |  |  |
|  | HDPE | **HDPE Pipes** |  | 2026-06-04 | 2026-09-26 |  |  |  |
|  | ?125mm | **?125mm** |  | 2026-06-04 | 2026-09-26 |  |  |  |
|  | Depth: 0.0m - 1.5m | **Depth: 0.0m - 1.5m** |  | 2026-06-04 | 2026-09-26 |  |  |  |
| B4.33 14 13.0110 |  | Excavation | 91.46d | 2026-06-04 A | 2026-09-26 | B3.1. 33 14 13.0110, B3.33 05 63.02.89 FF | 18% | 25d |

| ID | WBS | Task | Duration | Start | Finish | Predecessors | Complete | Total float |
| --- | --- | --- | --- | --- | --- | --- | --- | --- |
| B4.33 14 13.0112 |  | Sand Bedding | 88.64d | 2026-06-07 A | 2026-09-26 | B4.33 14 13.0110 FF | 18% | 25d |
| B4.33 14 13.0114 |  | Pipe Laying | 86.64d | 2026-06-09 A | 2026-09-26 | B4.33 14 13.0112 FF | 18% | 25d |
| B4.33 14 13.0116 |  | Embedment & Test | 84.29d | 2026-06-14 A | 2026-09-26 | B4.33 14 13.0114 FF, B3.33 14 19.01.142 SS | 18% | 108d |
| B4.33 14 13.0118 |  | Backfilling & Warrning Tape | 80.11d | 2026-06-19 A | 2026-09-22 | B4.33 14 13.0116 SS, B3.33 14 19.01.143 FF, B3.33 14 19.01.163 FF | 18% | 98.89d |
|  | Valves & Chambers | **Valves & Chambers** |  | 2026-06-12 | 2026-10-17 |  |  |  |
|  | GV | **Gate Valves** |  | 2026-06-12 | 2026-09-21 |  |  |  |
|  | GV 100 | **Gate valves dia (100) mm** |  | 2026-06-12 | 2026-09-21 |  |  |  |
| B3.33 14 19.01.142 |  | Burried Isolation Valve Installation | 83d | 2026-06-12 A | 2026-09-17 | B4.33 14 13.0114 SS | 50% | 99d |
| B3.33 14 19.01.143 |  | Spindle & Surface Box | 3d | 2026-09-19 | 2026-09-21 | B3.33 14 19.01.142 |  | 99d |
|  | GV 150 | **Gate valves dia (150) mm** |  | 2026-06-14 | 2026-09-21 |  |  |  |
| B3.33 14 19.01.153 |  | Burried Isolation Valve Installation | 82d | 2026-06-14 A | 2026-09-17 | B3.33 14 19.01.142 SS | 50% | 99d |
| B3.33 14 19.01.163 |  | Spindle & Surface Box | 3d | 2026-09-19 | 2026-09-21 | B3.33 14 19.01.153 |  | 99d |
|  | Solenoid valves | **Solenoid valves** |  | 2026-09-27 | 2026-10-17 |  |  |  |
|  | Solenoid valve ?1.0 | **1 Solenoid valve ?1.0 inch with box** |  | 2026-09-30 | 2026-10-10 |  |  |  |
| B4.32 84 13.71 |  | Cable Laying Two-Wire Decoder (12 AWG) | 3d | 2026-09-30 | 2026-10-03 | B4.32 84 13.68 |  | 25d |
| B4.32 84 13.72 |  | Solenoid Valve Box Installation | 3d | 2026-10-04 | 2026-10-06 | B4.32 84 13.71 |  | 28d |
| B4.32 84 13.73 |  | Bubblers Installation | 3d | 2026-10-07 | 2026-10-10 | B4.32 84 13.72, B4.32 84 13.79 |  | 28d |
| B4.32 84 13.77 |  | Pull Box Installation | 3d | 2026-10-07 | 2026-10-10 | B4.32 84 13.71, B4.32 84 13.70 |  | 31d |
|  | Solenoid valve ?1.5 | **1 Solenoid valve ?1.5 inch with box** |  | 2026-09-27 | 2026-10-17 |  |  |  |
| B4.33 14 13.09 |  | Extra flexible dripline with 3.0LPH | 3d | 2026-09-27 | 2026-09-29 | B4.33 14 13.0114 |  | 31d |
| B4.32 84 13.04 |  | Dripper | 3d | 2026-09-30 | 2026-10-03 | B4.33 14 13.09 |  | 31d |
| B4.32 84 13.74 |  | Cable Laying Two-Wire Decoder (12 AWG) | 3d | 2026-10-04 | 2026-10-06 | B4.32 84 13.71 |  | 25d |
| B4.32 84 13.78 |  | Pull Box Installation | 3d | 2026-10-07 | 2026-10-10 | B4.32 84 13.74 |  | 25d |
| B4.32 84 13.75 |  | Solenoid Valve Box Installation | 3d | 2026-10-11 | 2026-10-13 | B4.32 84 13.78 |  | 25d |
| B4.32 84 13.76 |  | Bubblers Installation | 3d | 2026-10-14 | 2026-10-17 | B4.32 84 13.75, B4.32 84 13.73 |  | 25d |
|  | Solenoid valve ?2.0 | **1 Solenoid valve ?2.0 inch with box** |  | 2026-09-27 | 2026-10-06 |  |  |  |
| B4.32 84 13.68 |  | Cable Laying Two-Wire Decoder (12 AWG) | 3d | 2026-09-27 | 2026-09-29 | B4.33 14 13.0114 |  | 25d |
| B4.32 84 13.69 |  | Solenoid Valve Box Installation | 3d | 2026-09-30 | 2026-10-03 | B4.32 84 13.68 |  | 31d |
| B4.32 84 13.79 |  | Pull Box Installation | 3d | 2026-09-30 | 2026-10-03 | B4.32 84 13.68 |  | 31d |
| B4.32 84 13.70 |  | Bubblers Installation | 3d | 2026-10-04 | 2026-10-06 | B4.32 84 13.69, B4.32 84 13.04 |  | 31d |
|  | Dry Networks | **Dry Networks** |  | 2026-09-21 | 2026-11-28 |  |  |  |
|  | MV | **Medium Voltage Network** |  | 2026-09-21 | 2026-11-04 |  |  |  |
|  | Duct Banks | **Duct Banks** |  | 2026-09-22 | 2026-11-04 |  |  |  |
|  | 4 Way | **4 Way** |  | 2026-09-22 | 2026-11-04 |  |  |  |
| B2.31 23 00.639 |  | Excavation | 4d | 2026-09-22 | 2026-09-28 | B4.33 14 13.0118 |  | 98.89d |
| B2.33 71 00.286 |  | Shuttering, Steel Fixing Incl. UPVC Pipe & Conc. Cast | 4d | 2026-09-28 | 2026-10-03 | B2.31 23 00.639 |  | 98.89d |
| B2.33 71 00.287 |  | Backfilling & Warrning Tape | 4d | 2026-11-01 | 2026-11-04 | B2.33 71 00.286, B2.33 71 00.289, B2.33 71 00 02 45 |  | 74d |
|  | Cables | **Cables** |  | 2026-09-21 | 2026-10-13 |  |  |  |
|  | 3C,500mm2 | **3C,500mm2** |  | 2026-09-21 | 2026-10-13 |  |  |  |
| B2.33 71 49.23.74 |  | Cable 13.8 kV Unarmored | 4d | 2026-09-21 | 2026-09-26 | B1.2.32 11 26.01.6 |  | 85d |
| B2.33 71 49.23.75 |  | Straight joints cables | 3d | 2026-09-27 | 2026-09-29 | B2.33 71 49.23.74 |  | 85d |
| B2.33 71 49.23.76 |  | Cable Termination | 3d | 2026-10-10 | 2026-10-13 | B2.33 71 49.23.75, B2.33 71 49.23.85 |  | 76.88d |
|  | Street Lighting | **Street Lighting** |  | 2026-09-21 | 2026-10-12 |  |  |  |
|  | SL Poles | **SL Poles** |  | 2026-09-21 | 2026-10-10 |  |  |  |
|  | Pole (10 M Sngl Arm) | **Pole (10 M Single Arm)** |  | 2026-09-21 | 2026-10-10 |  |  |  |
| B2.33 71 16.51 |  | Excavation | 3d | 2026-09-21 | 2026-09-24 | B1.2.32 11 26.01.6 |  | 83d |
| B2.33 71 16.52 |  | PC & RC Foundation | 3d | 2026-09-26 | 2026-09-28 | B2.33 71 16.51 |  | 83d |
| B2.33 71 16.53 |  | Lighting Poles Installation Incl power box, Cables | 3d | 2026-09-29 | 2026-10-01 | B2.33 71 16.52 |  | 83d |
| B2.26.56.19.6 |  | Lighting Luminares Inst | 2d | 2026-10-03 | 2026-10-04 | B2.33 71 16.53 |  | 84d |
| B2.33 71 16.54 |  | Backfilling, Grouting & Chamfering | 3d | 2026-10-07 | 2026-10-10 | B2.26.56.19.6, B2.33 71 16.025 |  | 82d |
|  | Earthing | **Earthing** |  | 2026-10-03 | 2026-10-12 |  |  |  |
| B2.33 71 19 26 |  | Land Adjustment | 3d | 2026-10-03 | 2026-10-05 | B2.33 71 16.53 |  | 83d |
| B2.33 71 19 27 |  | Earth Rods & Conduits | 3d | 2026-10-06 | 2026-10-08 | B2.33 71 19 26 |  | 83d |
| B2.33 71 19 28 |  | Backfilling | 3d | 2026-10-10 | 2026-10-12 | B2.33 71 19 27 |  | 83d |
|  | Telecommunication | **Telecommunication Network** |  | 2026-11-10 | 2026-11-28 |  |  |  |
|  | Ducts | **Ducts** |  | 2026-11-10 | 2026-11-25 |  |  |  |
|  | (6*50mm) | **Size (6*50mm) HDPE ducts** |  | 2026-11-10 | 2026-11-18 |  |  |  |
| B2.1.33 81 26.105 |  | Excavation | 2d | 2026-11-10 | 2026-11-12 | DMM2-Proc-Delv-6508, DMM2-Proc-Delv-6498, DMM2-Proc-Delv-6508 FF, B2.31 23 00.609 |  | 54.88d |
| B2.1.33 81 26.106 |  | HDPE Pipe, Shuttering, Steel Fixing & Conc. Cast | 3d | 2026-11-12 | 2026-11-16 | B2.1.33 81 26.105 |  | 60.88d |
| B2.1.33 81 26.107 |  | Backfilling & Warrning Tape | 2d | 2026-11-16 | 2026-11-18 | B2.1.33 81 26.106, B2.1.33 81 26.43 |  | 60.88d |
|  | (6*50mm+2*32mm) | **Size (6*50mm+2*32mm) HDPE ducts** |  | 2026-11-12 | 2026-11-21 |  |  |  |
| B2.1.33 81 26.108 |  | Excavation | 2d | 2026-11-12 | 2026-11-15 | B2.1.33 81 26.105 |  | 54.88d |
| B2.1.33 81 26.109 |  | HDPE Pipe, Shuttering, Steel Fixing & Conc. Cast | 3d | 2026-11-15 | 2026-11-18 | B2.1.33 81 26.108 |  | 58.88d |
| B2.1.33 81 26.110 |  | Backfilling & Warrning Tape | 2d | 2026-11-18 | 2026-11-21 | B2.1.33 81 26.109 |  | 58.88d |
|  | (6*50mm+4*32mm) | **Size (6*50mm+4*32mm) HDPE ducts** |  | 2026-11-15 | 2026-11-23 |  |  |  |
| B2.1.33 81 26.111 |  | Excavation | 2d | 2026-11-15 | 2026-11-17 | B2.1.33 81 26.108 |  | 54.88d |
| B2.1.33 81 26.112 |  | HDPE Pipe, Shuttering, Steel Fixing & Conc. Cast | 3d | 2026-11-17 | 2026-11-21 | B2.1.33 81 26.111 |  | 56.88d |
| B2.1.33 81 26.113 |  | Backfilling & Warrning Tape | 2d | 2026-11-21 | 2026-11-23 | B2.1.33 81 26.112 |  | 56.88d |
|  | (2*32mm) | **Size (2*32mm) HDPE ducts** |  | 2026-11-17 | 2026-11-25 |  |  |  |
| B2.1.33 81 26.114 |  | Excavation | 2d | 2026-11-17 | 2026-11-19 | B2.1.33 81 26.111 |  | 54.88d |

| ID | WBS | Task | Duration | Start | Finish | Predecessors | Complete | Total float |
| --- | --- | --- | --- | --- | --- | --- | --- | --- |
| B2.1.33 81 26.115 |  | HDPE Pipe, Shuttering, Steel Fixing & Conc. Cast | 3d | 2026-11-19 | 2026-11-23 | B2.1.33 81 26.114 |  | 54.88d |
| B2.1.33 81 26.116 |  | Backfilling & Warrning Tape | 2d | 2026-11-23 | 2026-11-25 | B2.1.33 81 26.115, B2.1.33 81 26.137, B2.1.33 81 26.140 |  | 54.88d |
|  | (4*32mm) | **Size (4*32mm) HDPE ducts** |  | 2026-11-19 | 2026-11-25 |  |  |  |
| B2.1.33 81 26.117 |  | Excavation | 2d | 2026-11-19 | 2026-11-22 | B2.1.33 81 26.114 |  | 54.88d |
| B2.1.33 81 26.118 |  | HDPE Pipe, Shuttering, Steel Fixing & Conc. Cast | 1d | 2026-11-22 | 2026-11-23 | B2.1.33 81 26.117 |  | 56.88d |
| B2.1.33 81 26.119 |  | Backfilling & Warrning Tape | 2d | 2026-11-23 | 2026-11-25 | B2.1.33 81 26.118, B2.1.33 81 26.146, B2.33 71 00.225, B2.33 71 00.227 |  | 56.88d |
|  | Manholes | **Manholes** |  | 2026-11-22 | 2026-11-28 |  |  |  |
|  | Manhole Type 1 | **Manhole Type 1** |  | 2026-11-22 | 2026-11-28 |  |  |  |
| B2.31 23 00.617 |  | Excavation | 1d | 2026-11-22 | 2026-11-23 | B2.1.33 81 26.117 |  | 54.88d |
| B2.33 71 00.242 |  | Manhole Installation | 2d | 2026-11-23 | 2026-11-25 | B2.31 23 00.617 |  | 54.88d |
| B2.33 71 00.243 |  | Backfilling & Warrning Tape | 2d | 2026-11-25 | 2026-11-28 | B2.33 71 00.242, B2.1.33 81 26.110, B2.1.33 81 26.113 |  | 54.88d |
|  | Manhole Type 2 | **Manhole Type 2** |  | 2026-11-23 | 2026-11-28 |  |  |  |
| B2.31 23 00.615 |  | Excavation | 1d | 2026-11-23 | 2026-11-24 | B2.31 23 00.617 |  | 54.88d |
| B2.33 71 00.238 |  | Manhole Installation | 1d | 2026-11-24 | 2026-11-25 | B2.31 23 00.615 |  | 54.88d |
| B2.33 71 00.239 |  | Backfilling & Warrning Tape | 2d | 2026-11-25 | 2026-11-28 | B2.33 71 00.238, B2.1.33 81 26.116, B2.1.33 81 26.107, B2.33 71 00.241 |  | 54.88d |
|  | Crossing Ducts | **Road Crossing Ducts** |  | 2026-11-12 | 2026-11-21 |  |  |  |
|  | 1 | **Size (6*50mm) HDPE** |  | 2026-11-12 | 2026-11-21 |  |  |  |
| B2.31 23 00.616 |  | Excavation | 2d | 2026-11-12 | 2026-11-15 | B2.1.33 81 26.105 |  | 58.88d |
| B2.33 71 00.240 |  | Shuttering, Steel Fixing Incl. UPVC Pipe & Conc. Cast | 3d | 2026-11-15 | 2026-11-18 | B2.31 23 00.616 |  | 58.88d |
| B2.33 71 00.241 |  | Backfilling & Warrning Tape | 2d | 2026-11-18 | 2026-11-21 | B2.33 71 00.240, B2.1.33 81 26.53, B2.33 71 00.273 |  | 58.88d |
|  | Earth & Road Works | **Earth & Road Works** |  | 2025-11-26 | 2026-11-18 |  |  |  |
|  | Earth Works | **Earth Works** |  | 2025-11-26 | 2025-12-08 |  |  |  |
| B1.2.31 23 16.01.6 |  | Roadway Excavation | 8.25d | 2025-11-26 A | 2025-12-06 A | DMM2-Eng-MS-78 | 100% |  |
| B1.2.31 23 23.01.6 |  | Embankment Backfiling | 9d | 2025-11-29 A | 2025-12-08 A | B1.2.31 23 16.01.6 | 100% |  |
|  | Earth Layers | **Earth Layers** |  | 2026-02-08 | 2026-09-17 |  |  |  |
| B1.2.32 11 13.01.6 |  | Subgrade | 176d | 2026-02-08 A | 2026-09-17 | B1.2.31 23 23.01.6 | 65% | 48d |
| B1.2.32 11 23.01.6 |  | Aggregate Base Course | 8d | 2026-09-09 A | 2026-09-17 | B1.2.32 11 13.01.6 FF | 14% | 48d |
|  | Interlock | **Interlock** |  | 2026-09-30 | 2026-10-03 |  |  |  |
| B1.2.32 14 13.13.6 |  | 60mm thick - Interlocking Block Pavers | 3d | 2026-09-30 | 2026-10-03 | B1.2.32 14 13.13.8 SS |  | 22d |
|  | Curbstone | **Curbstone** |  | 2026-09-27 | 2026-10-18 |  |  |  |
|  | Pre Install | **Pre-Installation** |  | 2026-09-27 | 2026-10-04 |  |  |  |
| B2.31 23 00.151 |  | Excavation | 2d | 2026-09-27 | 2026-09-29 | B1.2.32 11 23.01.9 SS |  | 12.76d |
| B1.2.32 14 13.13.26 |  | PCC | 2d | 2026-09-29 | 2026-10-01 | B2.31 23 00.151 |  | 23.76d |
| 32 16 13.006 |  | Haunching | 2d | 2026-10-01 | 2026-10-04 | B1.2.32 14 13.13.26 |  | 23.76d |
|  | Installation | **Installation** |  | 2026-10-04 | 2026-10-15 |  |  |  |
| B1.2.32 16.13.01.6 |  | Curb Stone, Type K1 | 2d | 2026-10-04 | 2026-10-06 | 32 16 13.006 |  | 23.76d |
| B1.2.32 16.13.02.5 |  | Dropped Curb, Type K3 | 2d | 2026-10-06 | 2026-10-08 | B1.2.32 16.13.01.6, 32 16 13.006 |  | 23.76d |
| B1.2.32 16.13.03.6 |  | Edge Curb, Type K4 | 2d | 2026-10-08 | 2026-10-11 | B1.2.32 16.13.02.5, 32 16 13.006 |  | 23.76d |
| B1.2.32 16.13.046 |  | Heel Curb, Type K5 | 2d | 2026-10-11 | 2026-10-13 | B1.2.32 16.13.03.6, 32 16 13.006 |  | 23.76d |
| B1.2.32 16.13.05.5 |  | Transition Curb | 2d | 2026-10-13 | 2026-10-15 | B1.2.32 16.13.046, 32 16 13.006 |  | 23.76d |
|  | Finishing | **Finishing** |  | 2026-10-15 | 2026-10-18 |  |  |  |
| 32 16 13.06 |  | Finishing, Fareface | 2d | 2026-10-15 | 2026-10-18 | B1.2.32 16.13.01.6, B1.2.32 16.13.02.5, B1.2.32 16.13.03.6, B1.2.32 16.13.046, B1.2.32 16.13.05.5, 32 16 13.04 |  | 23.76d |
|  | Asphalt Layers | **Asphalt Layers** |  | 2026-09-19 | 2026-11-08 |  |  |  |
| B1.2.32 11 26.01.6 |  | Bituminous Base Course including Prime Coat (MC1) and tack coat (RC2) | 2d | 2026-09-19 | 2026-09-20 | B1.2.32 11 23.01.6 |  | 48d |
| B1.2.32 12 16.01.6 |  | Bituminous concrete Wearing Course, including tack coat (RC2) | 5d | 2026-11-02 | 2026-11-08 | B1.2.32 11 26.01.6, B7.32 93 43.04.44.14 |  | 12.76d |
|  | Pavement Marking | **Pavement Marking** |  | 2026-11-08 | 2026-11-10 |  |  |  |
| B1.2.32 17 23.01.6 |  | Retroreflective Thermoplastic White Traffic lines | 2d | 2026-11-08 | 2026-11-10 | B1.2.32 12 16.01.6 |  | 58.76d |
| B1.2.32 17 23.02.6 |  | Retroreflective Thermoplastic Yellow, Traffic lines | 2d | 2026-11-08 | 2026-11-10 | B1.2.32 12 16.01.6 |  | 58.76d |
|  | Traffic Signs | **Traffic Signs** |  | 2026-09-27 | 2026-11-18 |  |  |  |
|  | Pre Install | **Pre-Installation** |  | 2026-09-27 | 2026-10-21 |  |  |  |
| B2.31 23 00.161 |  | Excavation | 2d | 2026-09-27 | 2026-09-29 | B2.31 23 00.151 SS |  | 12.76d |
| 10 14 53.06 |  | Foundation | 2d | 2026-10-19 | 2026-10-21 | B2.31 23 00.161, B7.32 91 00.02.2, B7.32 91 00.02.12 |  | 73.76d |
|  | Installation | **Installation** |  | 2026-10-21 | 2026-11-18 |  |  |  |
| B1.2.10 14 53.016 |  | 1 Sheet Alumenium, Single post | 2d | 2026-10-21 | 2026-10-24 | 10 14 53.06 |  | 73.76d |
| B1.2.10 14 53.026 |  | 2 Sheet Alumenium, Single post | 2d | 2026-11-10 | 2026-11-12 | B1.2.10 14 53.016, 10 14 53.06, B1.2.32 17 23.01.6, B1.2.32 17 23.02.6 |  | 58.76d |
| B1.2.10 14 14.01.6 |  | Ground mounted, 1 Sheet Alumenium, Single post | 2d | 2026-11-15 | 2026-11-16 | B1.2.10 14 53.026, 10 14 53.06, B1.2.10 14 14.01.13 |  | 57d |
| B1.2.10 14 14.026 |  | Ground mounted, 1 Sheet Alumenium, Double post | 2d | 2026-11-17 | 2026-11-18 | B1.2.10 14 14.01.6, 10 14 53.06 |  | 57d |
|  | Landscape | **Landscape** |  | 2026-09-29 | 2026-11-07 |  |  |  |
|  | Large Shrubs | **Large Shrubs** |  | 2026-10-26 | 2026-11-07 |  |  |  |
| B7.32 93 33.01 |  | Dodonaea viscosa | 5d | 2026-10-26 | 2026-11-01 | B7.32 91 00.01.2, B7.32 91 00.1, DMM2-Proc-Delv-7543, DMM2-Proc-Delv-7332 |  | 20.76d |
| B7.32 93 33.02 |  | Leucophyllun Frutescens | 5d | 2026-11-01 | 2026-11-07 | B7.32 91 00.01.2, B7.32 93 33.01, B7.32 91 00.1, DMM2-Proc-Delv-7543, B7.32 91 00.01.12 |  | 20.76d |
|  | Fences | **Fences** |  | 2026-09-29 | 2026-11-02 |  |  |  |
|  | (ZATCA HCIS) | **Steel fence (ZATCA HCIS)** |  | 2026-09-29 | 2026-11-02 |  |  |  |
| B7.32 93 43.04.44.10 |  | Earthwork | 5d | 2026-09-29 | 2026-10-05 | B2.31 23 00.161 |  | 12.76d |
| B7.32 93 43.04.44.12 |  | Foundation | 6d | 2026-10-19 | 2026-10-26 | B7.32 93 43.04.44.10, B7.32 91 00.02.2, B7.32 91 00.02.12 |  | 12.76d |
| B7.32 93 43.04.44.14 |  | Fence Installation | 6d | 2026-10-26 | 2026-11-02 | B7.32 93 43.04.44.12 |  | 12.76d |
|  | Miscellaneous | **Miscellaneous** |  | 2026-10-05 | 2026-11-01 |  |  |  |
| B7.32 91 00.02.2 |  | Grey gravel bed - 30-50 mm diameter (G1) | 6d | 2026-10-05 | 2026-10-12 | B7.32 93 43.04.44.10 |  | 12.76d |
| B7.32 91 00.1 |  | Plastic edge | 5d | 2026-10-05 | 2026-10-11 | B7.32 93 43.04.44.10 |  | 33.76d |
| B7.32 91 00.02.12 |  | Grey gravel bed - 12-25 mm diameter (G2) | 6d | 2026-10-12 | 2026-10-19 | B7.32 91 00.02.2, B7.32 93 43.04.44.10 |  | 12.76d |

| ID | WBS | Task | Duration | Start | Finish | Predecessors | Complete | Total float |
| --- | --- | --- | --- | --- | --- | --- | --- | --- |
| B7.32 91 00.01.2 |  | 75mm thickness for shrubs and grasses | 6d | 2026-10-19 | 2026-10-26 | B7.32 91 00.02.12 |  | 20.76d |
| B7.32 91 00.01.12 |  | 75mm thickness for trees | 5d | 2026-10-26 | 2026-11-01 | B7.32 91 00.01.2 |  | 20.76d |
|  | Commercial Rd 01 | **Commercial Road 01** |  | 2025-12-07 | 2026-12-02 |  |  |  |
|  | Wet Networks | **Wet Networks** |  | 2026-02-23 | 2026-10-26 |  |  |  |
|  | Stormwater Network | **Stormwater Network** |  | 2026-02-23 | 2026-09-30 |  |  |  |
|  | GRP | **GRP** |  | 2026-02-23 | 2026-09-20 |  |  |  |
|  | ?400 | **?400** |  | 2026-04-04 | 2026-09-20 |  |  |  |
|  | 3 | **Depth From 0.0m to 1.5m** |  | 2026-04-08 | 2026-09-19 |  |  |  |
| B6.33 42 11.011 |  | Excavation | 27.12d | 2026-04-08 A | 2026-05-10 A | B6.33 05 13.115, B1.1.31 23 23.42 | 100% |  |
| B6.33 42 11.012 |  | Sand Bedding | 24.12d | 2026-04-15 A | 2026-05-13 A | B6.33 42 11.011 | 100% |  |
| B6.33 42 11.013 |  | Pipe Laying | 127.28d | 2026-04-18 A | 2026-09-19 | B6.33 42 11.012 | 71% | 113.72d |
| B6.33 42 11.014 |  | Embedment & Test | 125.56d | 2026-04-20 A | 2026-09-19 | B6.33 42 11.013 FF | 71% | 113.44d |
| B6.33 42 11.015 |  | Backfilling & Warrning Tape | 123.56d | 2026-04-22 A | 2026-09-19 | B6.33 42 11.014 FF, B6.33 42 11.01-134 SS, B6.33 42 11.31-1 9 SS | 71% | 113.44d |
|  | 1 | **Depth From 1.5m to 2.5m** |  | 2026-04-04 | 2026-09-20 |  |  |  |
| B6.33 42 11.02.1 |  | Excavation | 30.26d | 2026-04-04 A | 2026-05-09 A | B6.33 42 11.011 | 100% |  |
| B6.33 42 11.02.2 |  | Sand Bedding | 26.26d | 2026-04-11 A | 2026-05-11 A | B6.33 42 11.02.1 | 100% |  |
| B6.33 42 11.02.3 |  | Pipe Laying | 22.26d | 2026-04-18 A | 2026-05-13 A | B6.33 42 11.02.2 | 100% |  |
| B6.33 42 11.02.4 |  | Embedment & Test | 124.84d | 2026-04-21 A | 2026-09-19 | B6.33 42 11.02.3 | 69% | 113.16d |
| B6.33 42 11.02.5 |  | Backfilling & Warrning Tape | 124.12d | 2026-04-22 A | 2026-09-20 | B6.33 42 11.01-1.42, B6.33 42 11.02.4 FF | 69% | 112.88d |
|  | ?500 | **?500** |  | 2026-04-06 | 2026-09-20 |  |  |  |
|  | 3 | **Depth From 0.0m to 1.5m** |  | 2026-04-06 | 2026-09-20 |  |  |  |
| B6.33 42 11.361020 |  | Excavation | 24.26d | 2026-04-06 A | 2026-05-04 A | B6.33 42 11.02.1 | 100% |  |
| B6.33 42 11.361030 |  | Sand Bedding | 20.26d | 2026-04-13 A | 2026-05-06 A | B6.33 42 11.361020 | 100% |  |
| B6.33 42 11.361040 |  | Pipe Laying | 17.26d | 2026-04-20 A | 2026-05-10 A | B6.33 42 11.361030 | 100% |  |
| B6.33 42 11.361050 |  | Embedment & Test | 16.26d | 2026-04-22 A | 2026-05-11 A | B6.33 42 11.361040 | 100% |  |
| B6.33 42 11.361060 |  | Backfilling & Warrning Tape | 120.12d | 2026-04-27 A | 2026-09-20 | B6.33 42 11.361050 | 69% | 112.88d |
|  | ?600 | **?600** |  | 2026-04-07 | 2026-09-19 |  |  |  |
|  | 3 | **Depth From 0.0m to 1.5m** |  | 2026-04-07 | 2026-09-19 |  |  |  |
| B6.33 42 11.361070 |  | Excavation | 136.28d | 2026-04-07 A | 2026-09-19 | B6.33 42 11.361020 | 71% | 113.72d |
| B6.33 42 11.361080 |  | Sand Bedding | 130.28d | 2026-04-14 A | 2026-09-19 | B6.33 42 11.361070 FF | 71% | 113.72d |
| B6.33 42 11.361090 |  | Pipe Laying | 124.28d | 2026-04-21 A | 2026-09-19 | B6.33 42 11.361080 FF | 71% | 113.72d |
| B6.33 42 11.361100 |  | Embedment & Test | 123.56d | 2026-04-22 A | 2026-09-19 | B6.33 42 11.361090 FF | 71% | 113.44d |
| B6.33 42 11.361110 |  | Backfilling & Warrning Tape | 118.56d | 2026-04-28 A | 2026-09-19 | B6.33 42 11.361100 FF | 71% | 113.44d |
|  | ?700 | **?700** |  | 2026-04-02 | 2026-09-19 |  |  |  |
|  | 3 | **Depth From 0.0m to 1.5m** |  | 2026-04-02 | 2026-09-19 |  |  |  |
| B6.33 42 11.361120 |  | Excavation | 140.28d | 2026-04-02 A | 2026-09-19 | B6.33 42 11.361070 SS | 65% | 113.72d |
| B6.33 42 11.361130 |  | Sand Bedding | 134.28d | 2026-04-09 A | 2026-09-19 | B6.33 42 11.361120 FF | 65% | 113.72d |
| B6.33 42 11.361140 |  | Pipe Laying | 128.28d | 2026-04-16 A | 2026-09-19 | B6.33 42 11.361130 FF | 65% | 113.72d |
| B6.33 42 11.361150 |  | Embedment & Test | 122.56d | 2026-04-23 A | 2026-09-19 | B6.33 42 11.361140 FF | 65% | 113.44d |
| B6.33 42 11.361160 |  | Backfilling & Warrning Tape | 116.56d | 2026-04-30 A | 2026-09-19 | B6.33 42 11.361150 FF, B6.33 05 39.01.3467 SS | 65% | 113.44d |
|  | ?800 | **?800** |  | 2026-04-01 | 2026-09-20 |  |  |  |
|  | 3 | **Depth From 0.0m to 1.5m** |  | 2026-04-01 | 2026-09-19 |  |  |  |
| B6.33 42 11.361170 |  | Excavation | 141.28d | 2026-04-01 A | 2026-09-19 | B6.33 42 11.361120 SS | 65% | 113.72d |
| B6.33 42 11.361180 |  | Sand Bedding | 135.28d | 2026-04-08 A | 2026-09-19 | B6.33 42 11.361170 FF | 65% | 113.72d |
| B6.33 42 11.361190 |  | Pipe Laying | 129.28d | 2026-04-15 A | 2026-09-19 | B6.33 42 11.361180 FF | 65% | 113.72d |
| B6.33 42 11.361200 |  | Embedment & Test | 127.56d | 2026-04-18 A | 2026-09-19 | B6.33 42 11.361190 FF | 65% | 113.44d |
| B6.33 42 11.361210 |  | Backfilling & Warrning Tape | 117.56d | 2026-04-29 A | 2026-09-19 | B6.33 42 11.01-1.44, B6.33 42 11.361200 FF | 65% | 113.44d |
|  | 4 | **Depth From 1.5m to 2.5m** |  | 2026-04-12 | 2026-09-20 |  |  |  |
| B6.33 42 11.13.1 |  | Excavation | 132.28d | 2026-04-12 A | 2026-09-19 | B6.33 42 11.02.1 | 70% | 113.72d |
| B6.33 42 11.13.2 |  | Sand Bedding | 126.28d | 2026-04-19 A | 2026-09-19 | B6.33 42 11.13.1 FF | 70% | 113.72d |
| B6.33 42 11.13.3 |  | Pipe Laying | 123.28d | 2026-04-22 A | 2026-09-19 | B6.33 42 11.13.2 FF | 70% | 113.72d |
| B6.33 42 11.13.4 |  | Embedment & Test | 121.84d | 2026-04-25 A | 2026-09-19 | B6.33 42 11.13.3 FF | 70% | 113.16d |
| B6.33 42 11.13.5 |  | Backfilling & Warrning Tape | 119.12d | 2026-04-28 A | 2026-09-20 | B6.33 42 11.13.4 FF | 70% | 112.88d |
|  | ?900 | **?900** |  | 2026-04-01 | 2026-09-20 |  |  |  |
|  | 3 | **Depth From 0.0m to 1.5m** |  | 2026-04-06 | 2026-09-19 |  |  |  |
| B6.33 42 11.361320 |  | Excavation | 137.28d | 2026-04-06 A | 2026-09-19 | B6.33 42 11.361270 SS | 70% | 113.72d |
| B6.33 42 11.361330 |  | Sand Bedding | 126.28d | 2026-04-19 A | 2026-09-19 | B6.33 42 11.361320 FF | 70% | 113.72d |
| B6.33 42 11.361340 |  | Pipe Laying | 123.28d | 2026-04-22 A | 2026-09-19 | B6.33 42 11.361330 FF | 70% | 113.72d |
| B6.33 42 11.361350 |  | Embedment & Test | 121.56d | 2026-04-25 A | 2026-09-19 | B6.33 42 11.361340 FF | 70% | 113.44d |
| B6.33 42 11.361360 |  | Backfilling & Warrning Tape | 118.56d | 2026-04-28 A | 2026-09-19 | B6.33 42 11.361350 FF, B6.33 42 11.361260 SS | 70% | 113.44d |
|  | 4 | **Depth From 1.5m to 2.5m** |  | 2026-04-01 | 2026-09-20 |  |  |  |
| B6.33 42 11.13.15 |  | Excavation | 31.23d | 2026-04-01 A | 2026-05-07 A | B6.33 42 11.361170 SS | 100% |  |
| B6.33 42 11.13.25 |  | Sand Bedding | 27.23d | 2026-04-08 A | 2026-05-10 A | B6.33 42 11.13.15 | 100% |  |
| B6.33 42 11.13.35 |  | Pipe Laying | 22.23d | 2026-04-15 A | 2026-05-11 A | B6.33 42 11.13.25 | 100% |  |
| B6.33 42 11.13.45 |  | Embedment & Test | 25.23d | 2026-04-18 A | 2026-05-17 A | B6.33 42 11.13.35 | 100% |  |
| B6.33 42 11.13.55 |  | Backfilling & Warrning Tape | 120.12d | 2026-04-27 A | 2026-09-20 | B6.33 42 11.13.45, B6.33 42 11.361160 SS, B6.33 42 11.361060 SS | 70% | 112.88d |
|  | ?1000 | **?1000** |  | 2026-04-07 | 2026-09-19 |  |  |  |
|  | 3 | **Depth From 0.0m to 1.5m** |  | 2026-04-07 | 2026-09-19 |  |  |  |
| B6.33 42 11.361370 |  | Excavation | 136.28d | 2026-04-07 A | 2026-09-19 | B6.33 42 11.361320 SS | 70% | 113.72d |
| B6.33 42 11.361380 |  | Sand Bedding | 129.28d | 2026-04-15 A | 2026-09-19 | B6.33 42 11.361370 FF | 70% | 113.72d |

| ID | WBS | Task | Duration | Start | Finish | Predecessors | Complete | Total float |
| --- | --- | --- | --- | --- | --- | --- | --- | --- |
| B6.33 42 11.361400 |  | Embedment & Test | 123.56d | 2026-04-22 A | 2026-09-19 | B6.33 42 11.361390 FF | 70% | 113.44d |
| B6.33 42 11.361390 |  | Pipe Laying | 122.28d | 2026-04-23 A | 2026-09-19 | B6.33 42 11.361380 FF | 70% | 113.72d |
| B6.33 42 11.361410 |  | Backfilling & Warrning Tape | 117.56d | 2026-04-29 A | 2026-09-19 | B6.33 42 11.361400 FF, B6.33 42 11.13.55 SS | 70% | 113.44d |
|  | ?1100 | **?1100** |  | 2026-04-04 | 2026-09-20 |  |  |  |
|  | 3 | **Depth From 0.0m to 1.5m** |  | 2026-04-04 | 2026-09-19 |  |  |  |
| B6.33 42 11.361220 |  | Excavation | 139.28d | 2026-04-04 A | 2026-09-19 | B6.33 42 11.13.15 | 69% | 113.72d |
| B6.33 42 11.361230 |  | Sand Bedding | 134.28d | 2026-04-09 A | 2026-09-19 | B6.33 42 11.361220 FF | 69% | 113.72d |
| B6.33 42 11.361240 |  | Pipe Laying | 128.28d | 2026-04-16 A | 2026-09-19 | B6.33 42 11.361230 FF | 69% | 113.72d |
| B6.33 42 11.361250 |  | Embedment & Test | 123.56d | 2026-04-22 A | 2026-09-19 | B6.33 42 11.361240 FF | 69% | 113.44d |
| B6.33 42 11.361260 |  | Backfilling & Warrning Tape | 118.56d | 2026-04-28 A | 2026-09-19 | B6.33 42 11.361250 FF, B6.33 42 11.13.5 SS | 69% | 113.44d |
|  | 4 | **Depth From 1.5m to 2.5m** |  | 2026-04-07 | 2026-09-20 |  |  |  |
| B6.33 42 11.13.65 |  | Excavation | 26.18d | 2026-04-07 A | 2026-05-07 A | B6.33 42 11.361370 SS | 100% |  |
| B6.33 42 11.13.75 |  | Sand Bedding | 25.18d | 2026-04-11 A | 2026-05-10 A | B6.33 42 11.13.65 | 100% |  |
| B6.33 42 11.13.85 |  | Pipe Laying | 25.18d | 2026-04-13 A | 2026-05-12 A | B6.33 42 11.13.75 | 100% |  |
| B6.33 42 11.13.95 |  | Embedment & Test | 24.35d | 2026-04-16 A | 2026-05-14 A | B6.33 42 11.13.85 | 100% |  |
| B6.33 42 11.13.105 |  | Backfilling & Warrning Tape | 127.12d | 2026-04-19 A | 2026-09-20 | B6.33 42 11.13.95, B6.33 42 11.361410 SS, B6.33 42 11.361310 SS | 69% | 112.88d |
|  | ?1200 | **?1200** |  | 2026-04-01 | 2026-09-20 |  |  |  |
|  | 3 | **Depth From 0.0m to 1.5m** |  | 2026-04-01 | 2026-09-19 |  |  |  |
| B6.33 42 11.361270 |  | Excavation | 141.28d | 2026-04-01 A | 2026-09-19 | B6.33 42 11.361220 SS | 54% | 113.72d |
| B6.33 42 11.361280 |  | Sand Bedding | 135.28d | 2026-04-08 A | 2026-09-19 | B6.33 42 11.361270 FF | 60% | 113.72d |
| B6.33 42 11.361290 |  | Pipe Laying | 129.28d | 2026-04-15 A | 2026-09-19 | B6.33 42 11.361280 FF | 54% | 113.72d |
| B6.33 42 11.361300 |  | Embedment & Test | 127.56d | 2026-04-18 A | 2026-09-19 | B6.33 42 11.361290 FF | 54% | 113.44d |
| B6.33 42 11.361310 |  | Backfilling & Warrning Tape | 120.84d | 2026-04-26 A | 2026-09-19 | B6.33 42 11.361300 FF | 54% | 113.16d |
|  | 4 | **Depth From 1.5m to 2.5m** |  | 2026-04-07 | 2026-09-20 |  |  |  |
| B6.33 42 11.13.115 |  | Excavation | 136.28d | 2026-04-07 A | 2026-09-19 | B6.33 42 11.13.65 | 70% | 113.72d |
| B6.33 42 11.13.125 |  | Sand Bedding | 129.28d | 2026-04-15 A | 2026-09-19 | B6.33 42 11.13.115 FF | 70% | 113.72d |
| B6.33 42 11.13.135 |  | Pipe Laying | 127.28d | 2026-04-18 A | 2026-09-19 | B6.33 42 11.13.125 FF | 70% | 113.72d |
| B6.33 42 11.13.145 |  | Embedment & Test | 123.84d | 2026-04-22 A | 2026-09-19 | B6.33 42 11.13.135 FF | 70% | 113.16d |
| B6.33 42 11.13.155 |  | Backfilling & Warrning Tape | 120.12d | 2026-04-27 A | 2026-09-20 | B6.33 42 11.13.145 FF, B6.33 42 11.03-113 SS | 70% | 112.88d |
|  | ?1300 | **?1300** |  | 2026-04-07 | 2026-09-20 |  |  |  |
|  | 3 | **Depth From 0.0m to 1.5m** |  | 2026-04-07 | 2026-09-19 |  |  |  |
| B6.33 42 11.361420 |  | Excavation | 136.28d | 2026-04-07 A | 2026-09-19 | B6.33 42 11.13.115 SS | 70% | 113.72d |
| B6.33 42 11.361430 |  | Sand Bedding | 133.28d | 2026-04-11 A | 2026-09-19 | B6.33 42 11.361420 FF | 70% | 113.72d |
| B6.33 42 11.361440 |  | Pipe Laying | 131.28d | 2026-04-13 A | 2026-09-19 | B6.33 42 11.361430 FF | 70% | 113.72d |
| B6.33 42 11.361450 |  | Embedment & Test | 128.56d | 2026-04-16 A | 2026-09-19 | B6.33 42 11.361440 FF | 70% | 113.44d |
| B6.33 42 11.361460 |  | Backfilling & Warrning Tape | 126.84d | 2026-04-19 A | 2026-09-19 | B6.33 42 11.05-1.67, B6.33 42 11.361450 FF | 70% | 113.16d |
|  | 4 | **Depth From 1.5m to 2.5m** |  | 2026-04-08 | 2026-09-20 |  |  |  |
| B6.33 42 11.13.165 |  | Excavation | 117.23d | 2026-04-08 A | 2026-08-27 A | B6.33 42 11.361520 SS | 100% |  |
| B6.33 42 11.13.175 |  | Sand Bedding | 114.23d | 2026-04-14 A | 2026-08-30 A | B6.33 42 11.13.165 | 100% |  |
| B6.33 42 11.13.185 |  | Pipe Laying | 125.28d | 2026-04-20 A | 2026-09-19 | B6.33 42 11.13.175 | 70% | 113.72d |
| B6.33 42 11.13.195 |  | Embedment & Test | 120.84d | 2026-04-26 A | 2026-09-19 | B6.33 42 11.13.185 FF | 70% | 113.16d |
| B6.33 42 11.13.205 |  | Backfilling & Warrning Tape | 120.12d | 2026-04-27 A | 2026-09-20 | B6.33 42 11.13.195 FF, B6.33 42 11.01-1.9 SS, B6.33 42 11.05-1.69 SS, B6.33 42 11.03-115 SS | 70% | 112.88d |
|  | ?1400 | **?1400** |  | 2026-04-07 | 2026-09-20 |  |  |  |
|  | 3 | **Depth From 0.0m to 1.5m** |  | 2026-04-07 | 2026-09-19 |  |  |  |
| B6.33 42 11.361470 |  | Excavation | 136.28d | 2026-04-07 A | 2026-09-19 | B6.33 42 11.361420 SS | 71% | 113.72d |
| B6.33 42 11.361480 |  | Sand Bedding | 133.28d | 2026-04-11 A | 2026-09-19 | B6.33 42 11.361470 FF | 71% | 113.72d |
| B6.33 42 11.361490 |  | Pipe Laying | 131.28d | 2026-04-13 A | 2026-09-19 | B6.33 42 11.361480 FF | 71% | 113.72d |
| B6.33 42 11.361500 |  | Embedment & Test | 128.56d | 2026-04-16 A | 2026-09-19 | B6.33 42 11.361490 FF | 71% | 113.44d |
| B6.33 42 11.361510 |  | Backfilling & Warrning Tape | 126.84d | 2026-04-19 A | 2026-09-19 | B6.33 42 11.361500 FF | 71% | 113.16d |
|  | 4 | **Depth From 1.5m to 2.5m** |  | 2026-04-18 | 2026-09-20 |  |  |  |
| B6.33 42 11.13.215 |  | Excavation | 127.28d | 2026-04-18 A | 2026-09-19 | B6.33 42 11.13.165 | 70% | 63.72d |
| B6.33 42 11.13.225 |  | Sand Bedding | 122.28d | 2026-04-23 A | 2026-09-19 | B6.33 42 11.13.215 FF | 70% | 63.72d |
| B6.33 42 11.13.235 |  | Pipe Laying | 121.28d | 2026-04-25 A | 2026-09-19 | B6.33 42 11.13.225 FF | 70% | 63.72d |
| B6.33 42 11.13.245 |  | Embedment & Test | 120.84d | 2026-04-26 A | 2026-09-19 | B6.33 42 11.13.235 FF | 70% | 63.16d |
| B6.33 42 11.13.255 |  | Backfilling & Warrning Tape | 117.12d | 2026-04-30 A | 2026-09-20 | B6.33 42 11.13.245 FF, B6.33 42 11.361560 SS | 70% | 62.88d |
|  | ?1500 | **?1500** |  | 2026-02-23 | 2026-09-19 |  |  |  |
|  | 3 | **Depth From 0.0m to 1.5m** |  | 2026-04-07 | 2026-09-19 |  |  |  |
| B6.33 42 11.361520 |  | Excavation | 136.28d | 2026-04-07 A | 2026-09-19 | B6.33 42 11.361470 SS | 59% | 113.72d |
| B6.33 42 11.361530 |  | Sand Bedding | 133.28d | 2026-04-11 A | 2026-09-19 | B6.33 42 11.361520 FF | 59% | 113.72d |
| B6.33 42 11.361540 |  | Pipe Laying | 131.28d | 2026-04-13 A | 2026-09-19 | B6.33 42 11.361530 FF | 59% | 113.72d |
| B6.33 42 11.361550 |  | Embedment & Test | 128.56d | 2026-04-16 A | 2026-09-19 | B6.33 42 11.361540 FF | 59% | 113.44d |
| B6.33 42 11.361560 |  | Backfilling & Warrning Tape | 126.84d | 2026-04-19 A | 2026-09-19 | B6.33 42 11.361550 FF, B6.33 42 11.13.155 SS | 59% | 113.16d |
|  | 4 | **Depth From 1.5m to 2.5m** |  | 2026-02-23 | 2026-03-10 |  |  |  |
| B6.33 42 11.13.265 |  | Excavation | 2d | 2026-02-23 A | 2026-02-26 A | B6.33 42 11.13.215 SS | 100% |  |
| B6.33 42 11.13.275 |  | Sand Bedding | 0.75d | 2026-02-28 A | 2026-03-01 A | B6.33 42 11.13.265 | 100% |  |
| B6.33 42 11.13.285 |  | Pipe Laying | 1.5d | 2026-03-02 A | 2026-03-04 A | B6.33 42 11.13.275, DMM2-Proc-Delv-5728 | 100% |  |
| B6.33 42 11.13.295 |  | Embedment & Test | 0.75d | 2026-03-04 A | 2026-03-05 A | B6.33 42 11.13.285 | 100% |  |
| B6.33 42 11.13.305 |  | Backfilling & Warrning Tape | 1.5d | 2026-03-08 A | 2026-03-10 A | B6.33 42 11.13.295, B6.33 05 39.01.3917 SS, B6.33 42 11.13.205 SS | 100% |  |
|  | Catch Basins | **Catch Basins** |  | 2026-06-06 | 2026-09-30 |  |  |  |
|  | Sing | **Single** |  | 2026-06-06 | 2026-09-17 |  |  |  |

| ID | WBS | Task | Duration | Start | Finish | Predecessors | Complete | Total float |
| --- | --- | --- | --- | --- | --- | --- | --- | --- |
| B6.33 05 40.01.130 |  | Excavation, Compaction & Vapour Barrier | 88.84d | 2026-06-06 A | 2026-09-17 | B6.33 42 11.361370 SS | 75% | 104d |
| B6.33 05 40.01.140 |  | Blinding Conc. | 87.84d | 2026-06-07 A | 2026-09-17 | B6.33 05 40.01.130 SS | 75% | 114d |
| B6.33 05 40.01.150 |  | Catch Basin Installation | 84.84d | 2026-06-10 A | 2026-09-17 | B6.33 05 40.01.140 SS | 75% | 114d |
| B6.33 05 40.01.160 |  | Backfilling, DI Frame & Grate Cover Fixing | 76.84d | 2026-06-20 A | 2026-09-17 | B6.33 42 11.35-12 SS, B6.33 05 39.01.2967 SS | 75% | 114d |
|  | Dou | **Double** |  | 2026-09-19 | 2026-09-30 |  |  |  |
| B6.33 05 40.01.690 |  | Excavation, Compaction & Vapour Barrier | 3d | 2026-09-19 | 2026-09-21 | B6.33 05 40.01.130 |  | 104d |
| B6.33 05 40.01.720 |  | Backfilling, DI Frame & Grate Cover Fixing | 6d | 2026-09-19 | 2026-09-27 | B6.33 42 11.36-12 |  | 57.91d |
| B6.33 05 40.01.700 |  | Blinding Conc. | 3d | 2026-09-22 | 2026-09-26 | B6.33 05 40.01.690 |  | 104d |
| B6.33 05 40.01.710 |  | Catch Basin Installation | 4d | 2026-09-27 | 2026-09-30 | B6.33 05 40.01.700 |  | 104d |
|  | UPVC | **UPVC** |  | 2026-06-07 | 2026-09-30 |  |  |  |
|  | UPVC300 | **?300 From 0.0 to 1.5m** |  | 2026-06-07 | 2026-09-19 |  |  |  |
| B6.33 42 11.35-11 |  | Catch Basin Opening Prep. | 87.93d | 2026-06-07 A | 2026-09-19 | B6.33 05 40.01.150 SS | 68% | 113.91d |
| B6.33 42 11.35-12 |  | Fittings & Pipe Installation | 87.93d | 2026-06-07 A | 2026-09-19 | B6.33 42 11.35-11 SS | 68% | 113.91d |
|  | UPVC3001 | **?400 From 0.0 to 1.5m** |  | 2026-06-07 | 2026-09-30 |  |  |  |
| B6.33 42 11.36-11 |  | Catch Basin Opening Prep. | 87.93d | 2026-06-07 A | 2026-09-30 | B6.33 05 40.01.710 FF | 68% | 104d |
| B6.33 42 11.36-12 |  | Fittings & Pipe Installation | 87.93d | 2026-06-07 A | 2026-09-19 | B6.33 42 11.36-11 SS | 68% | 57.91d |
|  | Potable Water | **Potable Water Network** |  | 2026-04-03 | 2026-10-18 |  |  |  |
|  | HDPE | **HDPE Pipes** |  | 2026-04-03 | 2026-09-22 |  |  |  |
|  | ?110mm | **?110mm** |  | 2026-04-03 | 2026-09-22 |  |  |  |
|  | Depth: 0.0m - 1.5m | **Depth: 0.0m - 1.5m** |  | 2026-04-20 | 2026-09-19 |  |  |  |
| B3.33 14 13.01.01.2 |  | Sand Bedding | 126d | 2026-04-20 A | 2026-09-19 | B3.33 14 13.01.01.1 FF | 75% | 113d |
| B3.33 14 13.01.01.3 |  | Pipe Laying | 123d | 2026-04-23 A | 2026-09-19 | B3.33 14 13.01.01.2 FF | 72% | 113d |
| B3.33 14 13.01.01.4 |  | Embedment & Test | 121.1d | 2026-04-25 A | 2026-09-19 | B3.33 14 13.01.01.3 FF | 72% | 113d |
| B3.33 14 13.01.01.5 |  | Backfilling & Warrning Tape | 114.38d | 2026-05-03 A | 2026-09-19 | B3.33 14 13.01.01.4 FF | 72% | 113d |
| B3.33 14 13.01.01.1 |  | Excavation | 102d | 2026-05-18 A | 2026-09-19 | B6.33 42 11.361220 SS | 72% | 113d |
|  | Depth: 1.51m - 2.5m | **Depth: 1.51m - 2.5m** |  | 2026-04-03 | 2026-09-22 |  |  |  |
| B3.33 14 13.01.02.4 |  | Embedment & Test | 140d | 2026-04-03 A | 2026-09-19 | B3.33 14 13.01.02.3 FF, B3.33 14 19.01.106 SS | 82% | 105d |
| B3.33 14 13.01.02.5 |  | Backfilling & Warrning Tape | 136d | 2026-04-08 A | 2026-09-22 | B3.33 14 13.01.02.4 FF, B3.33 14 19.01.107 FF | 82% | 102d |
| B3.33 14 13.01.02.1 |  | Excavation | 126d | 2026-04-20 A | 2026-09-19 | B3.33 14 13.01.01.1 SS | 82% | 67d |
| B3.33 14 13.01.02.2 |  | Sand Bedding | 123d | 2026-04-23 A | 2026-09-19 | B3.33 14 13.01.02.1 FF | 82% | 105d |
| B3.33 14 13.01.02.3 |  | Pipe Laying | 122d | 2026-04-25 A | 2026-09-19 | B3.33 14 13.01.02.2 FF | 82% | 105d |
|  | Valves & Chambers | **Valves & Chambers** |  | 2026-05-01 | 2026-10-18 |  |  |  |
|  | GV | **Gate Valves** |  | 2026-05-01 | 2026-09-22 |  |  |  |
|  | 1 | **Gate valves dia (110) mm** |  | 2026-05-01 | 2026-09-22 |  |  |  |
| B3.33 14 19.01.106 |  | Burried Isolation Valve Installation | 116d | 2026-05-01 A | 2026-09-19 | B3.33 14 13.01.02.3 SS | 75% | 102d |
| B3.33 14 19.01.107 |  | Spindle & Surface Box | 3d | 2026-09-20 | 2026-09-22 | B3.33 14 19.01.106 |  | 102d |
|  | 2 | **Air Valves** |  | 2026-09-20 | 2026-10-14 |  |  |  |
|  | 4 | **Air valves on less than 315 mm. (In Chamber)** |  | 2026-09-20 | 2026-10-14 |  |  |  |
| B3.33 05 63.02.22 |  | Land Adjustment & Compaction | 3d | 2026-09-20 | 2026-09-22 | B3.33 14 13.01.02.1 |  | 67d |
| B3.33 05 63.02.20 |  | Foundations | 4d | 2026-09-24 | 2026-09-28 | B3.33 05 63.02.22 |  | 82d |
| B3.33 05 63.02.23 |  | Chambers Walls Conc Cast In Situ | 4d | 2026-09-29 | 2026-10-03 | B3.33 05 63.02.20 |  | 82d |
| B3.33 05 63.02.21 |  | Chamber Curing, Finishing & Steel Cover | 5d | 2026-10-04 | 2026-10-08 | B3.33 05 63.02.23 |  | 82d |
| B3.33 05 63.02.24 |  | Valve & Fitting Installation | 5d | 2026-10-10 | 2026-10-14 | B3.33 05 63.02.21 |  | 82d |
|  | Washout Valves | **Washout Valves** |  | 2026-09-24 | 2026-10-18 |  |  |  |
|  | 4 | **Washout valves on 110-400 mm. (In Chamber)** |  | 2026-09-24 | 2026-10-18 |  |  |  |
| B3.33 05 63.01.17 |  | Land Adjustment & Compaction | 3d | 2026-09-24 | 2026-09-27 | B3.33 05 63.02.22 |  | 67d |
| B3.33 05 63.01.15 |  | Foundations | 4d | 2026-09-28 | 2026-10-01 | B3.33 05 63.01.17 |  | 86d |
| B3.33 05 63.01.18 |  | Chambers Walls Conc Cast In Situ | 4d | 2026-10-03 | 2026-10-06 | B3.33 05 63.01.15 |  | 86d |
| B3.33 05 63.01.16 |  | Chamber Curing, Finishing & Steel Cover | 5d | 2026-10-07 | 2026-10-12 | B3.33 05 63.01.18 |  | 86d |
| B3.33 05 63.01.19 |  | Valve & Fitting Installation | 5d | 2026-10-13 | 2026-10-18 | B3.33 05 63.01.16, B3.33 14 13.01.02.5 |  | 86d |
|  | Crossing | **Plots and Buildings Crossing** |  | 2026-09-28 | 2026-10-17 |  |  |  |
| B3.33 14 13.02.16 |  | Earthwork | 7d | 2026-09-28 | 2026-10-05 | B3.33 05 63.02.22, B3.33 05 63.01.17 |  | 67d |
| B3.33 14 13.02.17 |  | Sand Bedding | 3d | 2026-10-06 | 2026-10-08 | B3.33 14 13.02.16, B3.33 14 13.01.02 1 |  | 90d |
| B3.33 14 13.02.18 |  | Tee, Pipe (Crossing) Installation & Backfilling | 7d | 2026-10-10 | 2026-10-17 | B3.33 14 13.02.17, B3.33 14 13.02.33 |  | 90d |
|  | Fire Fighting | **Fire Fighting Network** |  | 2026-04-23 | 2026-10-26 |  |  |  |
|  | HDPE | **HDPE Pipes** |  | 2026-04-23 | 2026-10-12 |  |  |  |
|  | ?250mm | **?250mm** |  | 2026-04-23 | 2026-10-03 |  |  |  |
|  | Depth: 0.0m - 1.5m | **Depth: 0.0m - 1.5m** |  | 2026-04-23 | 2026-10-03 |  |  |  |
| B3.1. 33 14 13.01 |  | Excavation | 123d | 2026-04-23 A | 2026-09-20 | B3.33 14 13.01.02.1 SS, B3.33 14 13.01.01.1 SS | 90% | 69d |
| B3.1. 33 14 13.02 |  | Sand Bedding | 122d | 2026-04-25 A | 2026-09-20 | B3.1. 33 14 13.01 FF | 90% | 69d |
| B3.1. 33 14 13.03 |  | Pipe Laying | 116d | 2026-05-01 A | 2026-09-20 | B3.1. 33 14 13.02 FF | 90% | 69d |
| B3.1. 33 14 13.04 |  | Embedment & Test | 109d | 2026-05-10 A | 2026-10-03 | B3.1. 33 14 13.03 FF, B3.33 14 19.01.122 FF | 84% | 102d |
| B3.1. 33 14 13.05 |  | Backfilling & Warrning Tape | 104d | 2026-05-16 A | 2026-10-03 | B3.1. 33 14 13.04 FF | 84% | 102d |
|  | Depth: 1.51m - 2.5m | **Depth: 1.51m - 2.5m** |  | 2026-04-25 | 2026-10-03 |  |  |  |
| B3.1. 33 14 13.2 |  | Excavation | 122d | 2026-04-25 A | 2026-09-20 | B3.1. 33 14 13.01 SS | 90% | 69d |
| B3.1. 33 14 13.3 |  | Sand Bedding | 120d | 2026-04-27 A | 2026-09-20 | B3.1. 33 14 13.2 FF | 90% | 69d |
| B3.1. 33 14 13.4 |  | Pipe Laying | 115d | 2026-05-03 A | 2026-09-20 | B3.1. 33 14 13.3 FF | 84% | 69d |
| B3.1. 33 14 13.5 |  | Embedment & Test | 109d | 2026-05-10 A | 2026-10-03 | B3.1. 33 14 13.4 FF, B3.33 14 19.01.122 FF | 84% | 102d |
| B3.1. 33 14 13.6 |  | Backfilling & Warrning Tape | 103.12d | 2026-05-15 A | 2026-10-03 | B3.1. 33 14 13.5 FF | 84% | 102d |
|  | ?355mm | **?355mm** |  | 2026-05-01 | 2026-10-12 |  |  |  |

| ID | WBS | Task | Duration | Start | Finish | Predecessors | Complete | Total float |
| --- | --- | --- | --- | --- | --- | --- | --- | --- |
|  | Depth: 1.51m - 2.5m | **Depth: 0.0m - 1.5m** |  | 2026-05-01 | 2026-10-12 |  |  |  |
| B3.1. 33 14 13.22 |  | Excavation | 116d | 2026-05-01 A | 2026-09-20 | B3.1. 33 14 13.2 SS |  | 69d |
| B3.1. 33 14 13.23 |  | Sand Bedding | 115d | 2026-05-03 A | 2026-09-20 | B3.1. 33 14 13.22 FF |  | 69d |
| B3.1. 33 14 13.24 |  | Pipe Laying | 112d | 2026-05-06 A | 2026-09-20 | B3.1. 33 14 13.23 FF |  | 69d |
| B3.1. 33 14 13.25 |  | Embedment & Test | 111d | 2026-05-10 A | 2026-10-03 | B3.1. 33 14 13.24 FF, B3.33 14 19.01.122 FF |  | 71d |
| B3.1. 33 14 13.26 |  | Backfilling & Warrning Tape | 107d | 2026-05-15 A | 2026-10-12 | B3.1. 33 14 13.25 FF, B3.33 14 19.01.125 FF |  | 63d |
|  | Valves & Chambers | **Valves & Chambers** |  | 2026-09-20 | 2026-10-26 |  |  |  |
|  | GV | **Gate Valves** |  | 2026-09-29 | 2026-10-07 |  |  |  |
|  | 1 | **Gate valves dia (250) mm** |  | 2026-09-29 | 2026-10-07 |  |  |  |
| B3.33 14 19.01.122 |  | Burried Isolation Valve Installation | 4d | 2026-09-29 | 2026-10-03 | B3.1. 33 14 13.24, B3.1. 33 14 13.4, B3.1. 33 14 13.03, B3.33 05 63.01.34, B3.33 05 63.02.44 |  | 63d |
| B3.33 14 19.01.123 |  | Spindle & Surface Box | 4d | 2026-10-04 | 2026-10-07 | B3.33 14 19.01.122 |  | 63d |
|  | 2 | **Air Valves** |  | 2026-09-20 | 2026-10-21 |  |  |  |
|  | 4 | **Air valves on less than 315 mm. (In Chamber)** |  | 2026-09-20 | 2026-10-21 |  |  |  |
| B3.33 05 63.02.47 |  | Land Adjustment & Compaction | 4d | 2026-09-20 | 2026-09-26 | B1.2.32 11 26.01.3 |  | 82.56d |
| B3.33 05 63.02.45 |  | Foundations | 5d | 2026-09-26 | 2026-10-01 | B3.33 05 63.02.47 |  | 82.56d |
| B3.33 05 63.02.48 |  | Chambers Walls Conc Cast In Situ | 5d | 2026-10-01 | 2026-10-07 | B3.33 05 63.02.45 |  | 82.56d |
| B3.33 05 63.02.46 |  | Chamber Curing, Finishing & Steel Cover | 6d | 2026-10-07 | 2026-10-14 | B3.33 05 63.02.48, B3.1. 33 14 13-16 |  | 82.56d |
| B3.33 05 63.02.49 |  | Valve & Fitting Installation | 6d | 2026-10-14 | 2026-10-21 | B3.33 05 63.02.46, B3.33 14 19.01.fm50, B3.1. 33 14 13-20 |  | 86.56d |
|  | Washout Valves | **Washout Valves** |  | 2026-09-26 | 2026-10-26 |  |  |  |
|  | 4 | **Washout valves on 110-400 mm. (In Chamber)** |  | 2026-09-26 | 2026-10-26 |  |  |  |
| B3.33 05 63.01.37 |  | Land Adjustment & Compaction | 4d | 2026-09-26 | 2026-09-30 | B3.33 05 63.02.47 |  | 82.56d |
| B3.33 05 63.01.35 |  | Foundations | 5d | 2026-09-30 | 2026-10-06 | B3.33 05 63.01.37 |  | 82.56d |
| B3.33 05 63.01.38 |  | Chambers Walls Conc Cast In Situ | 5d | 2026-10-06 | 2026-10-12 | B3.33 05 63.01.35 |  | 82.56d |
| B3.33 05 63.01.36 |  | Chamber Curing, Finishing & Steel Cover | 6d | 2026-10-12 | 2026-10-19 | B3.33 05 63.01.38 |  | 82.56d |
| B3.33 05 63.01.39 |  | Valve & Fitting Installation | 6d | 2026-10-19 | 2026-10-26 | B3.33 05 63.01.36 |  | 82.56d |
|  | 3 | **Fire Hydrant** |  | 2026-06-08 | 2026-10-26 |  |  |  |
| B3.33 14 19.01.fh21 |  | Backfilling & Compaction | 90.58d | 2026-06-08 A | 2026-10-17 | B3.33 14 19.01.fh19 SS, B3.33 05 63.02.59 FF, B3.33 05 63.01.54 FF | 1% | 59d |
| B3.33 14 19.01.fh20 |  | Riser Pipe & Flanged Fittings Installation | 87.14d | 2026-06-08 A | 2026-10-26 | B3.33 05 63.01.39 FF | 1% | 82.56d |
| B3.33 14 19.01.fh19 |  | Firehydrant Fixing/Installation | 82.13d | 2026-06-15 A | 2026-09-21 | B3.33 14 19.01.fh20 SS | 1% | 111.03d |
|  | Dry Networks | **Dry Networks** |  | 2026-09-30 | 2026-11-16 |  |  |  |
|  | MV | **Medium Voltage Network** |  | 2026-10-13 | 2026-10-31 |  |  |  |
|  | Duct Banks | **Duct Banks** |  | 2026-10-13 | 2026-10-31 |  |  |  |
|  | 4 Way | **4 Way** |  | 2026-10-13 | 2026-10-31 |  |  |  |
| B2.33 71 00 02 43 |  | Excavation | 8d | 2026-10-13 | 2026-10-21 | B3.1. 33 14 13.26 |  | 74d |
| B2.33 71 00 02 44 |  | Shuttering, Steel Fixing Incl. UPVC Pipe & Conc. Cast | 4d | 2026-10-22 | 2026-10-26 | B2.33 71 00 02 43 |  | 74d |
| B2.33 71 00 02 45 |  | Backfilling & Warrning Tape | 4d | 2026-10-27 | 2026-10-31 | B2.33 71 00 02 44, B2 33 73 00.01.9, B2.33 71 49.23.94 |  | 74d |
|  | Cables | **Cables** |  | 2026-10-18 | 2026-10-29 |  |  |  |
|  | 3C,500mm2 | **3C,500mm2** |  | 2026-10-18 | 2026-10-29 |  |  |  |
| B2.33 71 49.23.65 |  | Cable 13.8 kV Unarmored | 5d | 2026-10-18 | 2026-10-22 | B3.33 14 19.01.fh21 |  | 59d |
| B2.33 71 49.23.66 |  | Straight joints cables | 3d | 2026-10-24 | 2026-10-26 | B2.33 71 49.23.65 |  | 76d |
| B2.33 71 49.23.67 |  | Cable Termination | 3d | 2026-10-27 | 2026-10-29 | B2.33 71 49.23.66 |  | 76d |
|  | Street Lighting | **Street Lighting** |  | 2026-10-24 | 2026-11-16 |  |  |  |
|  | SL Poles | **SL Poles** |  | 2026-10-24 | 2026-11-09 |  |  |  |
|  | Pole (10 M Sngl Arm) | **Pole (10 M Single Arm)** |  | 2026-10-24 | 2026-11-09 |  |  |  |
| B2.33 71 16.35 |  | Excavation | 3d | 2026-10-24 | 2026-10-26 | B2.33 71 49.23.65 |  | 59d |
| B2.33 71 16.36 |  | PC & RC Foundation | 3d | 2026-10-27 | 2026-10-29 | B2.33 71 16.35 |  | 61d |
| B2.33 71 16.37 |  | Lighting Poles Installation Incl power box, Cables | 3d | 2026-10-31 | 2026-11-02 | B2.33 71 16.36 |  | 61d |
| B2.26.56.19.2 |  | Lighting Luminares Inst | 2d | 2026-11-03 | 2026-11-04 | B2.33 71 16.37 |  | 61d |
| B2.33 71 16.38 |  | Backfilling, Grouting & Chamfering | 3d | 2026-11-07 | 2026-11-09 | B2.33 71 19 92, B2.33 71 00 02 54 |  | 62d |
|  | Earthing | **Earthing** |  | 2026-11-07 | 2026-11-16 |  |  |  |
| B2.33 71 19 23 |  | Land Adjustment | 3d | 2026-11-07 | 2026-11-09 | B2.33 71 16.38 SS |  | 62d |
| B2.33 71 19 24 |  | Earth Rods & Conduits | 3d | 2026-11-10 | 2026-11-12 | B2.33 71 19 23 |  | 62d |
| B2.33 71 19 25 |  | Backfilling | 3d | 2026-11-14 | 2026-11-16 | B2.33 71 19 24 |  | 62d |
|  | Telecommunication | **Telecommunication Network** |  | 2026-09-30 | 2026-11-12 |  |  |  |
|  | Ducts | **Ducts** |  | 2026-09-30 | 2026-11-12 |  |  |  |
|  | (6*50mm) | **Size (6*50mm) HDPE ducts** |  | 2026-09-30 | 2026-10-11 |  |  |  |
| B2.1.33 81 26.54 |  | Excavation | 3d | 2026-09-30 | 2026-10-04 | B2.1.33 81 26.162 |  | 31.88d |
| B2.1.33 81 26.55 |  | HDPE Pipe, Shuttering, Steel Fixing & Conc. Cast | 3d | 2026-10-04 | 2026-10-07 | B2.1.33 81 26.54 |  | 45.88d |
| B2.1.33 81 26.56 |  | Backfilling & Warrning Tape | 3d | 2026-10-07 | 2026-10-11 | B2.1.33 81 26.55 |  | 45.88d |
|  | (6*50mm+2*32mm) | **Size (6*50mm+2*32mm) HDPE ducts** |  | 2026-09-30 | 2026-11-09 |  |  |  |
| B2.1.33 81 26.57 |  | Excavation | 3d | 2026-09-30 | 2026-10-04 | B2.1.33 81 26.54 SS |  | 31.88d |
| B2.1.33 81 26.58 |  | HDPE Pipe, Shuttering, Steel Fixing & Conc. Cast | 3d | 2026-10-04 | 2026-10-07 | B2.1.33 81 26.57 |  | 91.88d |
| B2.1.33 81 26.59 |  | Backfilling & Warrning Tape | 3d | 2026-11-05 | 2026-11-09 | B2.1.33 81 26.58, B2.1.33 81 26.104, B2.1.33 81 26.182, B2.33 71 00.277, B2.33 71 00.231 |  | 66.88d |
|  | (6*50mm+4*32mm) | **Size (6*50mm+4*32mm) HDPE ducts** |  | 2026-09-30 | 2026-10-11 |  |  |  |
| B2.1.33 81 26.60 |  | Excavation | 3d | 2026-09-30 | 2026-10-04 | B2.1.33 81 26.57 SS |  | 31.88d |
| B2.1.33 81 26.61 |  | HDPE Pipe, Shuttering, Steel Fixing & Conc. Cast | 3d | 2026-10-04 | 2026-10-07 | B2.1.33 81 26.60 |  | 91.88d |
| B2.1.33 81 26.62 |  | Backfilling & Warrning Tape | 3d | 2026-10-07 | 2026-10-11 | B2.1.33 81 26.61 |  | 91.88d |
|  | (2*32mm) | **Size (2*32mm) HDPE ducts** |  | 2026-09-30 | 2026-10-11 |  |  |  |
| B2.1.33 81 26.63 |  | Excavation | 3d | 2026-09-30 | 2026-10-04 | B2.1.33 81 26.60 SS |  | 31.88d |
| B2.1.33 81 26.64 |  | HDPE Pipe, Shuttering, Steel Fixing & Conc. Cast | 3d | 2026-10-04 | 2026-10-07 | B2.1.33 81 26.63 |  | 32.88d |

| ID | WBS | Task | Duration | Start | Finish | Predecessors | Complete | Total float |
| --- | --- | --- | --- | --- | --- | --- | --- | --- |
| B2.1.33 81 26.65 |  | Backfilling & Warrning Tape | 3d | 2026-10-07 | 2026-10-11 | B2.1.33 81 26.64, B2.1.02 41 00.016 |  | 32.88d |
|  | (4*32mm) | **Size (4*32mm) HDPE ducts** |  | 2026-10-04 | 2026-11-12 |  |  |  |
| B2.1.33 81 26.66 |  | Excavation | 2d | 2026-10-04 | 2026-10-06 | B2.1.33 81 26.63 |  | 31.88d |
| B2.1.33 81 26.67 |  | HDPE Pipe, Shuttering, Steel Fixing & Conc. Cast | 3d | 2026-10-06 | 2026-10-10 | B2.1.33 81 26.66 |  | 92.88d |
| B2.1.33 81 26.68 |  | Backfilling & Warrning Tape | 3d | 2026-11-09 | 2026-11-12 | B2.1.33 81 26.67, B2.1.33 81 26.59 |  | 66.88d |
|  | Manholes | **Manholes** |  | 2026-10-04 | 2026-10-12 |  |  |  |
|  | Manhole Type 1 | **Manhole Type 1** |  | 2026-10-04 | 2026-10-12 |  |  |  |
| B2.31 23 00.603 |  | Excavation | 2d | 2026-10-04 | 2026-10-06 | B2.1.33 81 26.66 SS |  | 31.88d |
| B2.33 71 00.214 |  | Manhole Installation | 2d | 2026-10-06 | 2026-10-08 | B2.31 23 00.603 |  | 31.88d |
| B2.33 71 00.215 |  | Backfilling & Warrning Tape | 3d | 2026-10-08 | 2026-10-12 | B2.33 71 00.214 |  | 31.88d |
|  | Manhole Type 2 | **Manhole Type 2** |  | 2026-10-04 | 2026-10-12 |  |  |  |
| B2.31 23 00.604 |  | Excavation | 2d | 2026-10-04 | 2026-10-06 | B2.31 23 00.603 SS |  | 31.88d |
| B2.33 71 00.216 |  | Manhole Installation | 2d | 2026-10-06 | 2026-10-08 | B2.31 23 00.604 |  | 90.88d |
| B2.33 71 00.217 |  | Backfilling & Warrning Tape | 3d | 2026-10-08 | 2026-10-12 | B2.33 71 00.216 |  | 90.88d |
|  | Crossing Ducts | **Road Crossing Ducts** |  | 2026-10-06 | 2026-10-15 |  |  |  |
|  | 1 | **Size (6*50mm) HDPE** |  | 2026-10-06 | 2026-10-15 |  |  |  |
| B2.31 23 00.605 |  | Excavation | 2d | 2026-10-06 | 2026-10-08 | B2.31 23 00.604, B2.1.33 81 26.66 |  | 31.88d |
| B2.33 71 00.218 |  | Shuttering, Steel Fixing Incl. UPVC Pipe & Conc. Cast | 3d | 2026-10-08 | 2026-10-12 | B2.31 23 00.605 |  | 31.88d |
| B2.33 71 00.219 |  | Backfilling & Warrning Tape | 3d | 2026-10-12 | 2026-10-15 | B2.33 71 00.218, B2.1.33 81 26.65, B2.33 71 00.215 |  | 31.88d |
|  | Earth & Road Works | **Earth & Road Works** |  | 2025-12-07 | 2026-11-24 |  |  |  |
|  | Earth Works | **Earth Works** |  | 2025-12-07 | 2026-04-07 |  |  |  |
| B1.2.31 23 16.01.3 |  | Roadway Excavation | 3d | 2025-12-07 A | 2025-12-10 A | DMM2-Eng-MS-78 | 100% |  |
| B1.2.31 23 23.01.3 |  | Embankment Backfiling | 84.84d | 2025-12-16 A | 2026-04-07 A | B1.2.31 23 16.01.3 | 100% |  |
|  | Earth Layers | **Earth Layers** |  | 2026-04-29 | 2026-09-17 |  |  |  |
| B1.2.32 11 13.01.3 |  | Subgrade | 117.97d | 2026-04-29 A | 2026-09-17 | B1.2.31 23 23.01.3 | 71% | 114d |
| B1.2.32 11 23.01.3 |  | Aggregate Base Course | 72.6d | 2026-06-24 A | 2026-09-17 | B1.2.32 11 13.01.3 SS | 28% | 48.56d |
|  | Interlock | **Interlock** |  | 2026-11-17 | 2026-11-18 |  |  |  |
| B1.2.32 14 13.13.3 |  | 60mm thick - Interlocking Block Pavers | 2d | 2026-11-17 | 2026-11-18 | B1.2.32 14 13.13.7 |  | 58d |
|  | Curbstone | **Curbstone** |  | 2026-11-05 | 2026-11-17 |  |  |  |
|  | Pre Install | **Pre-Installation** |  | 2026-11-05 | 2026-11-12 |  |  |  |
| B2.31 23 00.61 |  | Excavation | 2d | 2026-11-05 | 2026-11-08 | B2.31 23 00.131 SS |  | 18.76d |
| B1.2.32 14 13.13.23 |  | PCC | 2d | 2026-11-08 | 2026-11-10 | B2.31 23 00.61 |  | 61.76d |
| 32 16 13.003 |  | Haunching | 2d | 2026-11-10 | 2026-11-12 | B1.2.32 14 13.13.23 |  | 61.76d |
|  | Installation | **Installation** |  | 2026-11-12 | 2026-11-15 |  |  |  |
| B1.2.32 16.13.01.3 |  | Curb Stone, Type K1 | 2d | 2026-11-12 | 2026-11-15 | 32 16 13.003 |  | 61.76d |
| B1.2.32 16.13.03.3 |  | Edge Curb, Type K4 | 2d | 2026-11-12 | 2026-11-15 | 32 16 13.003 |  | 61.76d |
|  | Finishing | **Finishing** |  | 2026-11-15 | 2026-11-17 |  |  |  |
| 32 16 13.03 |  | Finishing, Fareface | 2d | 2026-11-15 | 2026-11-17 | B1.2.32 16.13.01.3, B1.2.32 16.13.03.3, 10 14 53.07 |  | 61.76d |
|  | Asphalt Layers | **Asphalt Layers** |  | 2026-09-17 | 2026-11-19 |  |  |  |
| B1.2.32 11 26.01.3 |  | Bituminous Base Course including Prime Coat (MC1) and tack coat (RC2) | 2d | 2026-09-17 | 2026-09-20 | B1.2.32 11 23.01.3 |  | 48.56d |
| B1.2.32 12 16.01.3 |  | Bituminous concrete Wearing Course, including tack coat (RC2) | 5d | 2026-11-14 | 2026-11-19 | B1.2.32 11 26.01.3, B1.2.32 12 16.01.5 |  | 2.76d |
|  | Pavement Marking | **Pavement Marking** |  | 2026-11-19 | 2026-11-24 |  |  |  |
| B1.2.32 17 23.02.3 |  | Retroreflective Thermoplastic Yellow, Traffic lines | 2d | 2026-11-19 | 2026-11-22 | B1.2.32 12 16.01.3 |  | 55.76d |
| B1.2.32 17 23.01.3 |  | Retroreflective Thermoplastic White Traffic lines | 2d | 2026-11-22 | 2026-11-24 | B1.2.32 12 16.01.3, B1.2.32 17 23.02.3 |  | 55.76d |
|  | Traffic Signs | **Traffic Signs** |  | 2026-11-05 | 2026-11-22 |  |  |  |
|  | Pre Install | **Pre-Installation** |  | 2026-11-05 | 2026-11-10 |  |  |  |
| B2.31 23 00.71 |  | Excavation | 2d | 2026-11-05 | 2026-11-08 | B2.31 23 00.61 SS |  | 18.76d |
| 10 14 53.03 |  | Foundation | 2d | 2026-11-08 | 2026-11-10 | B2.31 23 00.71 |  | 44.76d |
|  | Installation | **Installation** |  | 2026-11-19 | 2026-11-22 |  |  |  |
| B1.2.10 14 14.01.3 |  | Ground mounted, 1 Sheet Alumenium, Single post | 2d | 2026-11-19 | 2026-11-22 | 10 14 53.03, B1.2.10 14 53.023 FF |  | 36.76d |
| B1.2.10 14 53.013 |  | 1 Sheet Alumenium, Single post | 2d | 2026-11-19 | 2026-11-22 | 10 14 53.03, B1.2.32 12 16.01.3 |  | 36.76d |
| B1.2.10 14 53.023 |  | 2 Sheet Alumenium, Single post | 2d | 2026-11-19 | 2026-11-22 | 10 14 53.03, B1.2.10 14 53.013 FF |  | 36.76d |
|  | Landscape | **Landscape** |  | 2026-11-08 | 2026-12-02 |  |  |  |
|  | Gates | **Gates** |  | 2026-11-08 | 2026-12-02 |  |  |  |
|  | Size (6.1x 2.7)m | **Size (6.1x 2.7)m** |  | 2026-11-08 | 2026-12-02 |  |  |  |
| B7.32 93 43.04.63 |  | Earthwork | 5d | 2026-11-08 | 2026-11-14 | B2.31 23 00.71 |  | 18.76d |
| B7.32 93 43.04.64 |  | Foundation | 3d | 2026-11-14 | 2026-11-17 | B7.32 93 43.04.63 |  | 18.76d |
| B7.32 93 43.04.65 |  | Gate Installation | 3d | 2026-11-30 | 2026-12-02 | B7.32 93 43.04.64, B7.32 93 43.04.52 |  | 8d |
|  | Size (5.5x 2.7)m | **Size (5.5x 2.7)m** |  | 2026-11-08 | 2026-11-21 |  |  |  |
| B7.32 93 43.04.66 |  | Earthwork | 5d | 2026-11-08 | 2026-11-14 | B7.32 93 43.04.63 FF |  | 18.76d |
| B7.32 93 43.04.67 |  | Foundation | 3d | 2026-11-14 | 2026-11-17 | B7.32 93 43.04.66 |  | 18.76d |
| B7.32 93 43.04.68 |  | Gate Installation | 3d | 2026-11-17 | 2026-11-21 | B7.32 93 43.04.67 |  | 18.76d |
|  | Size (4.85x 2.7)m | **Size (4.85x 2.7)m** |  | 2026-11-14 | 2026-11-24 |  |  |  |
| B7.32 93 43.04.69 |  | Earthwork | 3d | 2026-11-14 | 2026-11-17 | B7.32 93 43.04.66 |  | 20.76d |
| B7.32 93 43.04.70 |  | Foundation | 3d | 2026-11-17 | 2026-11-21 | B7.32 93 43.04.69 |  | 20.76d |
| B7.32 93 43.04.71 |  | Gate Installation | 3d | 2026-11-21 | 2026-11-24 | B7.32 93 43.04.70 |  | 20.76d |
|  | Parking Roads | **Parking Roads** |  | 2025-11-29 | 2026-11-24 |  |  |  |
|  | Wet Networks | **Wet Networks** |  | 2026-07-22 | 2026-10-10 |  |  |  |
|  | Stormwater Network | **Stormwater Network** |  | 2026-07-22 | 2026-09-26 |  |  |  |
|  | GRP | **GRP** |  | 2026-08-10 | 2026-09-26 |  |  |  |

| ID | WBS | Task | Duration | Start | Finish | Predecessors | Complete | Total float |
| --- | --- | --- | --- | --- | --- | --- | --- | --- |
|  | ?4002 | **?500** |  | 2026-08-19 | 2026-09-26 |  |  |  |
|  | 3 | **Depth From 1.5m to 2.5m** |  | 2026-08-19 | 2026-09-26 |  |  |  |
| B6.33 42 11.03-11 |  | Excavation | 25.28d | 2026-08-19 A | 2026-09-19 | B6.33 05 39.01.3127 | 60% | 108.72d |
| B6.33 42 11.03-14 |  | Sand Bedding | 23.28d | 2026-08-22 A | 2026-09-19 | B6.33 42 11.03-11 FF | 60% | 108.72d |
| B6.33 42 11.03-17 |  | Pipe Laying | 21.28d | 2026-08-24 A | 2026-09-19 | B6.33 42 11.03-14 FF | 60% | 108.72d |
| B6.33 42 11.03-113 |  | Backfilling & Warrning Tape | 21.3d | 2026-08-25 A | 2026-09-26 | B6.33 42 11.05-1.57, B6.33 42 11.03-110 FF | 60% | 108.72d |
| B6.33 42 11.03-110 |  | Embedment & Test | 5d | 2026-09-19 | 2026-09-26 | B6.33 42 11.03-17 |  | 108.72d |
|  | ?4001 | **?600** |  | 2026-08-10 | 2026-09-26 |  |  |  |
|  | 3 | **Depth From 1.5m to 2.5m** |  | 2026-08-10 | 2026-09-26 |  |  |  |
| B6.33 42 11.03-12 |  | Excavation | 33.28d | 2026-08-10 A | 2026-09-19 | B6.33 42 11.03-11 SS | 60% | 52.72d |
| B6.33 42 11.03-15 |  | Sand Bedding | 30.28d | 2026-08-13 A | 2026-09-19 | B6.33 42 11.03-12 FF | 60% | 52.72d |
| B6.33 42 11.03-18 |  | Pipe Laying | 29.28d | 2026-08-15 A | 2026-09-19 | B6.33 42 11.03-15 FF | 60% | 52.72d |
| B6.33 42 11.03-114 |  | Backfilling & Warrning Tape | 26.12d | 2026-08-19 A | 2026-09-26 | B6.33 42 11.03-111 FF, B6.33 42 11.05-1.61 SS | 60% | 52.72d |
| B6.33 42 11.03-111 |  | Embedment & Test | 5d | 2026-09-19 | 2026-09-26 | B6.33 42 11.03-18 |  | 52.72d |
|  | ?400 | **?800** |  | 2026-08-12 | 2026-09-26 |  |  |  |
|  | 3 | **Depth From 1.5m to 2.5m** |  | 2026-08-12 | 2026-09-26 |  |  |  |
| B6.33 42 11.03-13 |  | Excavation | 31.28d | 2026-08-12 A | 2026-09-19 | B6.33 42 11.03-12 SS | 60% | 108.72d |
| B6.33 42 11.03-16 |  | Sand Bedding | 28.28d | 2026-08-16 A | 2026-09-19 | B6.33 42 11.03-13 FF | 60% | 108.72d |
| B6.33 42 11.03-19 |  | Pipe Laying | 25.28d | 2026-08-19 A | 2026-09-19 | B6.33 42 11.03-16 FF | 60% | 108.72d |
| B6.33 42 11.03-115 |  | Backfilling & Warrning Tape | 23.12d | 2026-08-23 A | 2026-09-26 | B6.33 42 11.03-112 FF, B6.33 42 11.361360 SS | 60% | 108.72d |
| B6.33 42 11.03-112 |  | Embedment & Test | 5d | 2026-09-19 | 2026-09-26 | B6.33 42 11.03-19 |  | 108.72d |
|  | Strom Manholes | **Manholes** |  | 2026-08-15 | 2026-09-24 |  |  |  |
|  | 1 | **?1200** |  | 2026-08-15 | 2026-09-24 |  |  |  |
|  | 3 | **Depth From 1.5m to 2.5m** |  | 2026-08-15 | 2026-09-24 |  |  |  |
| B6.33 05 13.04-11 |  | Excavation & Compaction | 29d | 2026-08-15 A | 2026-09-17 | B6.33 42 11.03-13 SS | 50% | 114d |
| B6.33 05 13.04-14 |  | Blinding Conc, & RC Base | 27d | 2026-08-17 A | 2026-09-17 | B6.33 05 13.04-11 SS | 50% | 114d |
| B6.33 05 13.04-17 |  | Manhole Installation | 25d | 2026-08-19 A | 2026-09-17 | B6.33 05 13.04-14 SS | 50% | 109d |
| B6.33 05 13.04-113 |  | Backfilling | 22d | 2026-08-24 A | 2026-09-24 | B6.33 42 11.05-1.65, B6.33 05 13.04-110 FF | 50% | 109d |
| B6.33 05 13.04-110 |  | Test, Internal Finishing, Benching & Cover | 5d | 2026-09-19 | 2026-09-24 | B6.33 05 13.04-17 |  | 109d |
|  | Catch Basins | **Catch Basins** |  | 2026-07-22 | 2026-09-19 |  |  |  |
|  | Sing | **Single** |  | 2026-07-22 | 2026-09-19 |  |  |  |
| B6.33 05 40.01.290 |  | Excavation, Compaction & Vapour Barrier | 49d | 2026-07-22 A | 2026-09-17 | B6.33 05 13.04-11 SS | 67% | 114d |
| B6.33 05 40.01.300 |  | Blinding Conc. | 47d | 2026-07-24 A | 2026-09-17 | B6.33 05 40.01.290 SS | 67% | 114d |
| B6.33 05 40.01.310 |  | Catch Basin Installation | 46d | 2026-07-26 A | 2026-09-17 | B6.33 05 40.01.300 SS | 67% | 114d |
| B6.33 05 40.01.320 |  | Backfilling, DI Frame & Grate Cover Fixing | 37d | 2026-08-06 A | 2026-09-19 | B6.33 42 11.36-1 2 SS, B6.33 42 11.35-1 2 SS | 67% | 82d |
|  | UPVC | **UPVC** |  | 2026-07-30 | 2026-09-19 |  |  |  |
|  | UPVC300 | **?300 From 0.0 to 1.5m** |  | 2026-07-30 | 2026-09-19 |  |  |  |
| B6.33 42 11.35-1 1 |  | Catch Basin Opening Prep. | 42.09d | 2026-07-30 A | 2026-09-19 | B6.33 05 40.01.310 SS | 61% | 113.91d |
| B6.33 42 11.35-1 2 |  | Fittings & Pipe Installation | 41.09d | 2026-08-01 A | 2026-09-19 | B6.33 42 11.35-1 1 SS | 61% | 113.91d |
|  | UPVC3001 | **?400 From 0.0 to 1.5m** |  | 2026-08-01 | 2026-09-19 |  |  |  |
| B6.33 42 11.36-1 1 |  | Catch Basin Opening Prep. | 41.09d | 2026-08-01 A | 2026-09-19 | B6.33 42 11.35-1 1 SS | 61% | 113.91d |
| B6.33 42 11.36-1 2 |  | Fittings & Pipe Installation | 39.09d | 2026-08-03 A | 2026-09-19 | B6.33 42 11.36-1 1 SS | 61% | 113.91d |
|  | Fire Fighting | **Fire Fighting Network** |  | 2026-08-22 | 2026-10-10 |  |  |  |
|  | HDPE | **HDPE Pipes** |  | 2026-08-22 | 2026-09-29 |  |  |  |
|  | ?250mm | **?250mm** |  | 2026-08-22 | 2026-09-29 |  |  |  |
|  | Depth: 0.0m - 1.5m | **Depth: 0.0m - 1.5m** |  | 2026-08-22 | 2026-09-29 |  |  |  |
| B3.1. 33 14 13.01.10 |  | Excavation | 24d | 2026-08-22 A | 2026-09-20 | B3.1. 33 14 13.22 SS | 94% | 44d |
| B3.1. 33 14 13.01.14 |  | Sand Bedding | 21d | 2026-08-25 A | 2026-09-20 | B3.1. 33 14 13.01.10 FF | 89% | 44d |
| B3.1. 33 14 13.01.18 |  | Pipe Laying | 18d | 2026-08-29 A | 2026-09-20 | B3.1. 33 14 13.01.14 FF | 89% | 44d |
| B3.1. 33 14 13.01.22 |  | Embedment & Test | 15d | 2026-09-01 A | 2026-09-20 | B3.1. 33 14 13.01.18 FF | 89% | 82d |
| B3.1. 33 14 13.01.26 |  | Backfilling & Warrning Tape | 7d | 2026-09-21 | 2026-09-29 | B3.1. 33 14 13.01.22, B3.33 14 19.01.126 |  | 82d |
|  | Depth: 1.51m - 2.5m | **Depth: 1.51m - 2.5m** |  | 2026-09-01 | 2026-09-29 |  |  |  |
| B3.1. 33 14 13.01.12 |  | Excavation | 15d | 2026-09-01 A | 2026-09-20 | B3.1. 33 14 13.01.10 SS | 91% | 44d |
| B3.1. 33 14 13.01.16 |  | Sand Bedding | 13d | 2026-09-03 A | 2026-09-20 | B3.1. 33 14 13.01.12 FF | 89% | 44d |
| B3.1. 33 14 13.01.20 |  | Pipe Laying | 10d | 2026-09-07 A | 2026-09-20 | B3.1. 33 14 13.01.16 FF | 89% | 44d |
| B3.1. 33 14 13.01.24 |  | Embedment & Test | 7d | 2026-09-10 A | 2026-09-20 | B3.1. 33 14 13.01.20 FF | 89% | 82d |
| B3.1. 33 14 13.01.28 |  | Backfilling & Warrning Tape | 7d | 2026-09-21 | 2026-09-29 | B3.1. 33 14 13.01.24 |  | 82d |
|  | 3 | **Fire Hydrant** |  | 2026-09-21 | 2026-10-10 |  |  |  |
| B3.33 14 19.01.fh29 |  | Riser Pipe & Flanged Fittings Installation | 4d | 2026-09-21 | 2026-09-26 | B3.1. 33 14 13.01.20, B3.1. 33 14 13.01.18 |  | 44d |
| B3.33 14 19.01.fh28 |  | Firehydrant Fixing/Installation | 5d | 2026-09-27 | 2026-10-01 | B3.33 14 19.01.fh29 |  | 44d |
| B3.33 14 19.01.fh30 |  | Backfilling & Compaction | 7d | 2026-10-03 | 2026-10-10 | B3.33 14 19.01.fh28 |  | 44d |
|  | Dry Networks | **Dry Networks** |  | 2026-09-20 | 2026-11-23 |  |  |  |
|  | LV Network | **Low Voltage Network** |  | 2026-10-11 | 2026-10-12 |  |  |  |
|  | Cables | **Cables** |  | 2026-10-11 | 2026-10-12 |  |  |  |
|  | 4C,10+1C,10mm2 | **4C,10+1C,10mm2** |  | 2026-10-11 | 2026-10-12 |  |  |  |
| B2.33 71 00 01 10 |  | Cable Pulling | 2d | 2026-10-11 | 2026-10-12 | B3.33 14 19.01.fh30 |  | 44d |
|  | Street Lighting | **Street Lighting** |  | 2026-09-20 | 2026-11-23 |  |  |  |
|  | Duct Banks | **Duct Banks** |  | 2026-09-20 | 2026-11-14 |  |  |  |
|  | 2 Way | **2 Way** |  | 2026-09-20 | 2026-11-14 |  |  |  |
| B2.33 71 00 02 64 |  | Excavation | 2d | 2026-09-20 | 2026-09-21 | B6.33 05 40.01.320 |  | 82d |

| ID | WBS | Task | Duration | Start | Finish | Predecessors | Complete | Total float |
| --- | --- | --- | --- | --- | --- | --- | --- | --- |
| B2.33 71 00 02 65 |  | Shuttering, Steel Fixing Incl. UPVC Pipe & Conc. Cast | 3d | 2026-09-22 | 2026-09-26 | B2.33 71 00 02 64 |  | 103d |
| B2.33 71 00 02 66 |  | Backfilling & Warrning Tape | 3d | 2026-11-11 | 2026-11-14 | B2.33 71 00 02 65, B2.33 71 00 02 69 SS, B2.33 71 19 112 |  | 64d |
|  | 6 Way | **6 Way** |  | 2026-09-22 | 2026-11-12 |  |  |  |
| B2.33 71 00 02 67 |  | Excavation | 2d | 2026-09-22 | 2026-09-24 | B2.33 71 00 02 64 |  | 82d |
| B2.33 71 00 02 68 |  | Shuttering, Steel Fixing Incl. UPVC Pipe & Conc. Cast | 3d | 2026-09-26 | 2026-09-28 | B2.33 71 00 02 67 |  | 101d |
| B2.33 71 00 02 69 |  | Backfilling & Warrning Tape | 3d | 2026-11-10 | 2026-11-12 | B2.33 71 00 02 68, B2.33 71 19 34, B2.33 71 19 013, B2.33 71 49.23.112 |  | 65d |
|  | Drawpits | **Drawpits** |  | 2026-09-26 | 2026-10-03 |  |  |  |
| B2.33 71 00 02 70 |  | Excavation | 2d | 2026-09-26 | 2026-09-27 | B2.33 71 00 02 67, B2.33 71 00 02 64 |  | 82d |
| B2.33 71 00 02 71 |  | Drawpits Installation | 2d | 2026-09-28 | 2026-09-29 | B2.33 71 00 02 70 |  | 82d |
| B2.33 71 00 02 72 |  | Backfilling & Warrning Tape | 3d | 2026-09-30 | 2026-10-03 | B2.33 71 00 02 71 |  | 82d |
|  | Earthing | **Earthing** |  | 2026-11-10 | 2026-11-23 |  |  |  |
| B2.33 71 19 29 |  | Land Adjustment | 3d | 2026-11-10 | 2026-11-12 | B2.33 71 16.61, B2.33 71 16.57 |  | 61d |
| B2.33 71 19 30 |  | Earth Rods & Conduits | 3d | 2026-11-14 | 2026-11-16 | B2.33 71 19 29 |  | 61d |
| B2.33 71 19 31 |  | Backfilling | 3d | 2026-11-21 | 2026-11-23 | B2.33 71 19 30, B2.33 71 00 01 10, B2.33 71 16.86 |  | 58d |
|  | SL Poles | **SL Poles** |  | 2026-10-27 | 2026-11-17 |  |  |  |
|  | Pole (10 M Sngl Arm) | **Pole (10 M Single Arm)** |  | 2026-10-27 | 2026-11-11 |  |  |  |
| B2.33 71 16.55 |  | Excavation | 3d | 2026-10-27 | 2026-10-29 | B3.1. 33 14 13.01.26, B3.1. 33 14 13.01.28, B2.33 71 16.35, B1.2.32 11 26.01.7 |  | 59d |
| B2.33 71 16.56 |  | PC & RC Foundation | 3d | 2026-10-31 | 2026-11-02 | B2.33 71 16.55 |  | 64d |
| B2.33 71 16.57 |  | Lighting Poles Installation Incl power box, Cables | 3d | 2026-11-03 | 2026-11-05 | B2.33 71 16.56 |  | 64d |
| B2.26.56.19.7 |  | Lighting Luminares Inst | 2d | 2026-11-07 | 2026-11-08 | B2.33 71 16.57 |  | 64d |
| B2.33 71 16.58 |  | Backfilling, Grouting & Chamfering | 3d | 2026-11-09 | 2026-11-11 | B2.26.56.19.7 |  | 64d |
|  | Pole (10 M Dbl Arm) | **Pole (10 M Double Arm)** |  | 2026-10-31 | 2026-11-17 |  |  |  |
| B2.33 71 16.59 |  | Excavation | 3d | 2026-10-31 | 2026-11-02 | B2.33 71 16.55, B2.33 71 00 02 58 |  | 59d |
| B2.33 71 16.60 |  | PC & RC Foundation | 3d | 2026-11-03 | 2026-11-05 | B2.33 71 16.59 |  | 59d |
| B2.33 71 16.61 |  | Lighting Poles Installation Incl power box, Cables | 3d | 2026-11-07 | 2026-11-09 | B2.33 71 16.60 |  | 59d |
| B2.26.56.19.8 |  | Lighting Luminares Inst | 4d | 2026-11-10 | 2026-11-14 | B2.33 71 16.61 |  | 59d |
| B2.33 71 16.62 |  | Backfilling, Grouting & Chamfering | 3d | 2026-11-15 | 2026-11-17 | B2.26.56.19.8 |  | 59d |
|  | Earth & Road Works | **Earth & Road Works** |  | 2025-11-29 | 2026-11-24 |  |  |  |
|  | Earth Works | **Earth Works** |  | 2025-11-29 | 2026-04-08 |  |  |  |
| B1.2.31 23 16.01.7 |  | Roadway Excavation | 101.2d | 2025-11-29 A | 2026-04-08 A | DMM2-Eng-MS-78 | 100% |  |
| B1.2.31 23 23.01.7 |  | Embankment Backfiling | 97.04d | 2025-12-03 A | 2026-04-08 A | B1.2.31 23 16.01.7 | 100% |  |
|  | Earth Layers | **Earth Layers** |  | 2026-03-10 | 2026-09-21 |  |  |  |
| B1.2.32 11 13.01.7 |  | Subgrade | 157.96d | 2026-03-10 A | 2026-09-21 | B1.2.31 23 23.01.7 | 65% | 111d |
| B1.2.32 11 23.01.7 |  | Aggregate Base Course | 110.67d | 2026-05-07 A | 2026-09-17 | B1.2.32 11 13.01.7 SS | 60% | 114d |
|  | Interlock | **Interlock** |  | 2026-11-15 | 2026-11-16 |  |  |  |
| B1.2.32 14 13.13.7 |  | 60mm thick - Interlocking Block Pavers | 2d | 2026-11-15 | 2026-11-16 | B1.2.32 14 13.13.14 |  | 58d |
|  | Curbstone | **Curbstone** |  | 2026-10-25 | 2026-11-08 |  |  |  |
|  | Pre Install | **Pre-Installation** |  | 2026-10-25 | 2026-11-01 |  |  |  |
| B2.31 23 00.181 |  | Excavation | 2d | 2026-10-25 | 2026-10-27 | B2.31 23 00.121 |  | 13.76d |
| B1.2.32 14 13.13.27 |  | PCC | 2d | 2026-10-27 | 2026-10-29 | B2.31 23 00.181 |  | 65.76d |
| 32 16 13.007 |  | Haunching | 2d | 2026-10-29 | 2026-11-01 | B1.2.32 14 13.13.27 |  | 65.76d |
|  | Installation | **Installation** |  | 2026-11-01 | 2026-11-07 |  |  |  |
| B1.2.32 16.13.01.7 |  | Curb Stone, Type K1 | 2d | 2026-11-01 | 2026-11-03 | 32 16 13.007 |  | 65.76d |
| B1.2.32 16.13.02.6 |  | Dropped Curb, Type K3 | 1d | 2026-11-03 | 2026-11-04 | B1.2.32 16.13.01.7, 32 16 13.007 |  | 65.76d |
| B1.2.32 16.13.03.7 |  | Edge Curb, Type K4 | 1d | 2026-11-04 | 2026-11-05 | B1.2.32 16.13.02.6, 32 16 13.007 |  | 65.76d |
| B1.2.32 16.13.047 |  | Heel Curb, Type K5 | 1d | 2026-11-04 | 2026-11-05 | B1.2.32 16.13.03.7 SS, 32 16 13.007 |  | 65.76d |
| B1.2.32 16.13.05.6 |  | Transition Curb | 1d | 2026-11-05 | 2026-11-07 | B1.2.32 16.13.047, 32 16 13.007 |  | 65.76d |
|  | Finishing | **Finishing** |  | 2026-11-07 | 2026-11-08 |  |  |  |
| 32 16 13.07 |  | Finishing, Fareface | 1d | 2026-11-07 | 2026-11-08 | B1.2.32 16.13.01.7, B1.2.32 16.13.02.6, B1.2.32 16.13.03.7, B1.2.32 16.13.047, B1.2.32 16.13.05.6 |  | 65.76d |
|  | Asphalt Layers | **Asphalt Layers** |  | 2026-06-15 | 2026-11-16 |  |  |  |
| B1.2.32 11 26.01.7 |  | Bituminous Base Course including Prime Coat (MC1) and tack coat (RC2) | 81.38d | 2026-06-15 A | 2026-09-17 | B1.2.32 11 23.01.7 SS | 60% | 53d |
| B1.2.32 12 16.01.7 |  | Bituminous concrete Wearing Course, including tack coat (RC2) | 2d | 2026-11-14 | 2026-11-16 | B1.2.32 11 26.01.7, B1.2.32 12 16.01.5 |  | 5.76d |
|  | Pavement Marking | **Pavement Marking** |  | 2026-11-16 | 2026-11-18 |  |  |  |
| B1.2.32 17 23.01.7 |  | Retroreflective Thermoplastic White Traffic lines | 2d | 2026-11-16 | 2026-11-18 | B1.2.32 12 16.01.7 |  | 39.76d |
| B1.2.32 17 23.02.7 |  | Retroreflective Thermoplastic Yellow, Traffic lines | 2d | 2026-11-16 | 2026-11-18 | B1.2.32 12 16.01.7 |  | 39.76d |
|  | Traffic Signs | **Traffic Signs** |  | 2026-10-27 | 2026-11-24 |  |  |  |
|  | Pre Install | **Pre-Installation** |  | 2026-10-27 | 2026-11-01 |  |  |  |
| B2.31 23 00.191 |  | Excavation | 2d | 2026-10-27 | 2026-10-29 | B2.31 23 00.181 |  | 13.76d |
| 10 14 53.07 |  | Foundation | 2d | 2026-10-29 | 2026-11-01 | B2.31 23 00.191 |  | 54.76d |
|  | Installation | **Installation** |  | 2026-11-22 | 2026-11-24 |  |  |  |
| B1.2.10 14 53.017 |  | 1 Sheet Alumenium, Single post | 2d | 2026-11-22 | 2026-11-24 | B1.2.32 17 23.01.7, B1.2.32 17 23.02.7, 10 14 53.07, B1.2.10 14 14.01.3 |  | 36.76d |
|  | Road Misc. | **Miscellaneous** |  | 2026-11-16 | 2026-11-18 |  |  |  |
| B1.2.32 12 19.13.6 |  | Wheels stoppers (precast concrete) | 2d | 2026-11-16 | 2026-11-18 | B1.2.32 12 16.01.7 |  | 15.76d |
|  | Landscape | **Landscape** |  | 2026-10-29 | 2026-11-22 |  |  |  |
|  | Fences | **Fences** |  | 2026-10-29 | 2026-11-19 |  |  |  |
|  | (ZATCA HCIS) | **Steel fence (ZATCA HCIS)** |  | 2026-10-29 | 2026-11-16 |  |  |  |
| B7.32 93 43.02.14 |  | Earthwork | 5d | 2026-10-29 | 2026-11-04 | B2.31 23 00.191 |  | 13.76d |
| B7.32 93 43.02.16 |  | Foundation | 5d | 2026-11-04 | 2026-11-10 | B7.32 93 43.02.14 |  | 16.76d |
| B7.32 93 43.02.18 |  | Fence Installation | 5d | 2026-11-10 | 2026-11-16 | B7.32 93 43.02.16 |  | 16.76d |
|  | (MODON) fence | **Steel fence (MODON)** |  | 2026-11-04 | 2026-11-19 |  |  |  |

| ID | WBS | Task | Duration | Start | Finish | Predecessors | Complete | Total float |
| --- | --- | --- | --- | --- | --- | --- | --- | --- |
| B7.32 93 43.02.20 |  | Earthwork | 5d | 2026-11-04 | 2026-11-10 | B7.32 93 43.02.14 |  | 13.76d |
| B7.32 93 43.02.22 |  | Foundation | 5d | 2026-11-10 | 2026-11-16 | B7.32 93 43.02.20 |  | 13.76d |
| B7.32 93 43.02.24 |  | Fence Installation | 3d | 2026-11-16 | 2026-11-19 | B7.32 93 43.02.22 |  | 13.76d |
|  | Trees | **Trees** |  | 2026-11-16 | 2026-11-22 |  |  |  |
| B7.32 93 43.02.10 |  | Ceratonia Siliqua | 3d | 2026-11-16 | 2026-11-19 | B1.2.32 12 16.01.7, B7.32 93 43.02 |  | 17.76d |
| B7.32 93 43.02.12 |  | Milettia pinnata/ Pongamia glabra | 3d | 2026-11-16 | 2026-11-19 | B7.32 93 43.02.10 FF, B1.2.32 12 16.01.7 |  | 17.76d |
| B7.32 93 43.7 |  | Azadirachta indica | 3d | 2026-11-18 | 2026-11-22 | B7.32 93 43.02.12 FF, B1.2.32 12 16.01.7, B1.2.32 12 19.13.6 |  | 15.76d |
|  | Arterial Road | **Arterial Road** |  | 2026-03-15 | 2026-10-19 |  |  |  |
|  | Wet Networks | **Wet Networks** |  | 2026-03-15 | 2026-10-14 |  |  |  |
|  | Sewerage Network | **Sewerage Network** |  | 2026-04-08 | 2026-10-14 |  |  |  |
|  | HDPE | **HDPE Pipes** |  | 2026-04-08 | 2026-09-21 |  |  |  |
|  | 1 | **?160** |  | 2026-04-08 | 2026-09-21 |  |  |  |
|  | 3 | **Depth From 1.5m to 2.5m** |  | 2026-04-08 | 2026-09-21 |  |  |  |
| B5.33 31 23.021 |  | Excavation | 137d | 2026-04-08 A | 2026-09-19 | B6. 33 42 13.011 SS |  | 93d |
| B5.33 31 23.022 |  | Sand Bedding | 109.05d | 2026-05-09 A | 2026-09-19 | B5.33 31 23.021 FF |  | 93d |
| B5.33 31 23.023 |  | Pipe Laying | 82.05d | 2026-06-14 A | 2026-09-19 | B5.33 31 23.022 FF |  | 93d |
| B5.33 31 23.024 |  | Embedment & Test | 81.23d | 2026-06-17 A | 2026-09-20 | B5.33 31 23.023 FF |  | 92d |
| B5.33 31 23.025 |  | Backfilling & Warrning Tape | 78.23d | 2026-06-22 A | 2026-09-21 | B5.33 31 00.01.02.59, B5.33 31 00.01.02119, B5.33 31 23.024 FF |  | 111d |
|  | 2 | **Valves & Chambers** |  | 2026-06-14 | 2026-10-14 |  |  |  |
|  | Gate | **Gate Valves** |  | 2026-06-14 | 2026-09-20 |  |  |  |
| B3.33 14 19.01.1 |  | Burried Isolation Valve Installation | 82.05d | 2026-06-14 A | 2026-09-17 | B5.33 31 23.023 SS |  | 108d |
| B3.33 14 19.01.7 |  | Spindle & Surface Box | 2d | 2026-09-19 | 2026-09-20 | B3.33 14 19.01.1 |  | 108d |
|  | Air V in Ch1 | **Air Valves in Chambers** |  | 2026-09-21 | 2026-10-14 |  |  |  |
| B3.33 14 19.01.26 |  | Land Adjustment & Compaction | 4d | 2026-09-21 | 2026-09-26 | B5.33 31 23.024 |  | 92d |
| B3.33 14 19.01.28 |  | Foundations | 4d | 2026-09-27 | 2026-09-30 | B3.33 14 19.01.26 |  | 93d |
| B3.33 14 19.01.30 |  | Chambers Walls Conc Cast In Situ | 3d | 2026-10-01 | 2026-10-04 | B3.33 14 19.01.28 |  | 93d |
| B3.33 14 19.01.32 |  | Chamber Curing, Finishing & Steel Cover | 4d | 2026-10-05 | 2026-10-08 | B3.33 14 19.01.30 |  | 93d |
| B3.33 14 19.01.33 |  | Valve & Fitting Installation | 4d | 2026-10-11 | 2026-10-14 | B3.33 14 19.01.32, B3.33 14 19.01.7, B5.33 31 00.01.0244, DMM2-Proc-Delv-2308, B5..33 31 16.015 |  | 92d |
|  | Stormwater Network | **Stormwater Network** |  | 2026-03-15 | 2026-10-14 |  |  |  |
|  | Box Cul. | **Box Cul.** |  | 2026-03-15 | 2026-10-14 |  |  |  |
| B6. 33 42 13.011 |  | Excavation | 125.75d | 2026-03-15 A | 2026-08-19 A | B6.33 42 11.31-1 2 | 100% |  |
| B6. 33 42 13.012 |  | Lean PC & RC Foundation | 105.5d | 2026-05-09 A | 2026-09-13 A | B6. 33 42 13.011, DMM2-Proc-PO-148 | 100% |  |
| B6. 33 42 13.013 |  | Box Reinforced Conc. Walls incl. Water Stop | 87.56d | 2026-06-08 A | 2026-09-19 | B6.33 05 63.061, B6. 33 42 13.012 SS | 92% | 113d |
| B6. 33 42 13.014 |  | Box Reinforced Conc. Slab | 84.21d | 2026-06-11 A | 2026-09-19 | B6. 33 42 13.013 SS | 92% | 113d |
| B6. 33 42 13.015 |  | Curing & Water Proofing | 8.86d | 2026-09-09 A | 2026-09-21 | B6. 33 42 13.014 SS | 11% | 47.44d |
| B6. 33 42 13.016 |  | Backfilling & Warrning Tape | 6d | 2026-10-01 | 2026-10-08 | B6. 33 42 13.015, B6.33 05 63.054, B6.33 05 63.064, B6.33 42 11.03-114 |  | 47.44d |
|  | Conc. Ch | **Concrete Chambers** |  | 2026-09-07 | 2026-10-14 |  |  |  |
|  | Conc. Ch 2.53.5 | **Size 1.5 x 1.5 m, depth 2.5 to 3.5** |  | 2026-09-07 | 2026-10-14 |  |  |  |
| B6.33 05 63.051 |  | Shuttering, Steel Fixing, CJ & Water Stop | 4d | 2026-09-07 A | 2026-09-12 A | B6.33 05 63.062, B6.33 05 63.052 | 100% |  |
| B6.33 05 63.052 |  | Cocrete Cast for Chamber & Curing | 0.8d | 2026-09-12 A | 2026-09-13 A | B6. 33 42 13.012 SS | 100% |  |
| B6.33 05 63.054 |  | Waterproofing Tanking Membrane & Protection | 4d | 2026-09-21 | 2026-09-27 | B6. 33 42 13.015 |  | 47.44d |
| B6.33 05 63.053 |  | Cast Iron Steps Installation, Epoxy Paint & Internal Finishing | 5d | 2026-10-08 | 2026-10-14 | B6.33 05 63.052, B6.33 05 63.064, B6.33 05 63.054, B6. 33 42 13.015, B6. 33 42 13.016, B6.33 42 11.13.305, B6.33 05 39.01.3967, B6.33 05 40.01.560 |  | 47.44d |
|  | Conc. Ch 3.54.5 | **Size 1.5 x 1.5 m, depth 3.5 to 4.5** |  | 2026-09-09 | 2026-10-14 |  |  |  |
| B6.33 05 63.062 |  | Cocrete Cast for Chamber & Curing | 2.8d | 2026-09-09 A | 2026-09-13 A | B6.33 05 63.052, B6. 33 42 13.012 SS | 100% |  |
| B6.33 05 63.061 |  | Shuttering, Steel Fixing, CJ & Water Stop | 1d | 2026-09-14 A | 2026-09-15 A | B6.33 05 63.062, B6.33 05 63.052, B6.33 05 63.051 | 100% |  |
| B6.33 05 63.064 |  | Waterproofing Tanking Membrane & Protection | 4d | 2026-09-27 | 2026-10-01 | B6. 33 42 13.015, B6.33 05 63.054 |  | 47.44d |
| B6.33 05 63.063 |  | Cast Iron Steps Installation, Epoxy Paint & Internal Finishing | 5d | 2026-10-08 | 2026-10-14 | B6.33 05 63.062, B6.33 05 63.054, B6. 33 42 13.015, B6. 33 42 13.016, B6.33 05 40.01.440, B6.33 42 11.13.255, B1.2.31 23 16.01.8 |  | 47.44d |
|  | Potable Water | **Potable Water Network** |  | 2026-06-03 | 2026-09-28 |  |  |  |
|  | HDPE | **HDPE Pipes** |  | 2026-06-03 | 2026-09-24 |  |  |  |
|  | ?250mm | **?250mm** |  | 2026-06-03 | 2026-09-24 |  |  |  |
|  | Depth: 0.0m - 1.5m | **Depth: 0.0m - 1.5m** |  | 2026-06-03 | 2026-09-24 |  |  |  |
| B3.33 14 11.01.011 |  | Excavation | 91.92d | 2026-06-03 A | 2026-09-19 | B1.2.32 11 26.01.8 SS |  | 113d |
| B3.33 14 11.01.012 |  | Sand Bedding | 85.92d | 2026-06-10 A | 2026-09-19 | B3.33 14 11.01.011 FF |  | 113d |
| B3.33 14 11.01.013 |  | Pipe Laying | 83.92d | 2026-06-13 A | 2026-09-19 | B3.33 14 11.01.012 FF |  | 113d |
| B3.33 14 11.01.014 |  | Embedment & Test | 83.92d | 2026-06-15 A | 2026-09-21 | B3.33 14 11.01.013 FF |  | 111d |
| B3.33 14 11.01.015 |  | Backfilling & Warrning Tape | 82d | 2026-06-18 A | 2026-09-24 | B3.33 14 11.01.014 SS, B3.33 14 11.01.024 FF+2d |  | 109d |
|  | Depth: 1.51m - 2.5m | **Depth: 1.51m - 2.5m** |  | 2026-06-03 | 2026-09-22 |  |  |  |
| B3.33 14 11.01.021 |  | Excavation | 92.92d | 2026-06-03 A | 2026-09-20 | B3.33 14 11.01.011 SS |  | 110d |
| B3.33 14 11.01.022 |  | Sand Bedding | 85.92d | 2026-06-10 A | 2026-09-20 | B3.33 14 11.01.021 FF |  | 110d |
| B3.33 14 11.01.023 |  | Pipe Laying | 84.92d | 2026-06-13 A | 2026-09-20 | B3.33 14 11.01.022 FF |  | 110d |
| B3.33 14 11.01.024 |  | Embedment & Test | 83.92d | 2026-06-15 A | 2026-09-21 | B3.33 14 11.01.023 FF |  | 109d |
| B3.33 14 11.01.025 |  | Backfilling & Warrning Tape | 82d | 2026-06-18 A | 2026-09-22 | B3.33 14 11.01.015 SS |  | 110d |
|  | Valves & Chambers | **Valves & Chambers** |  | 2026-06-08 | 2026-09-21 |  |  |  |
|  | Air Valves | **Air Valves** |  | 2026-06-08 | 2026-09-21 |  |  |  |
|  | 4 | **Air valves on less than 315 mm. (In Chamber)** |  | 2026-06-08 | 2026-09-21 |  |  |  |
| B3.33 05 63.02.17 |  | Land Adjustment & Compaction | 16.62d | 2026-06-08 A | 2026-06-27 A | B3.33 14 11.01.025 SS | 100% |  |
| B3.33 05 63.02.15 |  | Foundations | 3d | 2026-09-09 A | 2026-09-12 A | B3.33 05 63.02.17 | 100% |  |
| B3.33 05 63.02.18 |  | Chambers Walls Conc Cast In Situ | 1d | 2026-09-13 A | 2026-09-13 A | B3.33 05 63.02.15, DMM2-Proc-Delv-5838 SS | 100% |  |
| B3.33 05 63.02.16 |  | Chamber Curing, Finishing & Steel Cover | 2d | 2026-09-14 A | 2026-09-15 A | B3.33 05 63.02.18 | 100% |  |
| B3.33 05 63.02.19 |  | Valve & Fitting Installation | 5d | 2026-09-16 | 2026-09-21 | B3.33 05 63.02.16 |  | 70d |

| ID | WBS | Task | Duration | Start | Finish | Predecessors | Complete | Total float |
| --- | --- | --- | --- | --- | --- | --- | --- | --- |
|  | 3 | **Flow Meter (On Chamber)** |  | 2026-09-16 | 2026-09-28 |  |  |  |
| B3.33 14 19.01.fm16 |  | RC Conc. Works | 4d | 2026-09-16 | 2026-09-20 | B3.33 05 63.02.18 |  | 61d |
| B3.33 14 19.01.fm17 |  | Fixing Flange/Connections | 3d | 2026-09-21 | 2026-09-24 | B3.33 14 19.01.fm16 |  | 68d |
| B3.33 14 19.01.fm18 |  | Flow Meter Installation | 3d | 2026-09-26 | 2026-09-28 | B3.33 14 19.01.fm16, B3.33 14 19.01.fm17, B3.33 05 63.02.19, DMM2-Proc-Delv-3648 |  | 68d |
|  | Fire Fighting | **Fire Fighting Network** |  | 2026-09-21 | 2026-10-06 |  |  |  |
|  | 3 | **Flow Meter (On Chamber)** |  | 2026-09-21 | 2026-10-06 |  |  |  |
| B3.33 14 19.01.fm50 |  | RC Conc. Works | 5d | 2026-09-21 | 2026-09-27 | B3.33 14 19.01.fm16 |  | 61d |
| B3.33 14 19.01.fm49 |  | Fixing Flange/Connections | 4d | 2026-09-28 | 2026-10-01 | B3.33 14 19.01.fm50 |  | 61d |
| B3.33 14 19.01.fm51 |  | Flow Meter Installation | 4d | 2026-10-03 | 2026-10-06 | B3.33 14 19.01.fm50, B3.33 14 19.01.fm49 |  | 61d |
|  | TSE Network | **TSE Network** |  | 2026-09-09 | 2026-09-29 |  |  |  |
|  | HDPE | **HDPE Pipes** |  | 2026-09-09 | 2026-09-29 |  |  |  |
|  | ?125mm | **?125mm** |  | 2026-09-09 | 2026-09-29 |  |  |  |
|  | Depth: 0.0m - 1.5m | **Depth: 0.0m - 1.5m** |  | 2026-09-09 | 2026-09-29 |  |  |  |
| B4.33 14 13.081 |  | Excavation | 7.57d | 2026-09-09 A | 2026-09-19 | B3.33 05 63.02.17 | 22% | 34.43d |
| B4.33 14 13.082 |  | Sand Bedding | 5.57d | 2026-09-12 A | 2026-09-19 | B4.33 14 13.081 FF | 22% | 34.43d |
| B4.33 14 13.083 |  | Pipe Laying | 3.57d | 2026-09-14 A | 2026-09-19 | B4.33 14 13.082 FF | 22% | 34.43d |
| B4.33 14 13.084 |  | Embedment & Test | 4.14d | 2026-09-15 A | 2026-09-21 | B4.33 14 13.083 FF | 22% | 32.86d |
| B4.33 14 13.085 |  | Backfilling & Warrning Tape | 6d | 2026-09-21 | 2026-09-29 | B4.33 14 13.084, B3.33 14 19.01.141 |  | 32.86d |
|  | Dry Networks | **Dry Networks** |  | 2026-08-26 | 2026-10-19 |  |  |  |
|  | MV | **Medium Voltage Network** |  | 2026-09-06 | 2026-10-19 |  |  |  |
|  | Cables | **Cables** |  | 2026-09-06 | 2026-10-19 |  |  |  |
|  | 3C,500mm2 | **3C,500mm2** |  | 2026-09-06 | 2026-09-29 |  |  |  |
| B2.33 71 19 16 |  | Land Adjustment | 11d | 2026-09-06 A | 2026-09-29 | B4.33 14 13.085 FF | 68% | 32.86d |
| B2.33 71 49.23.010 |  | Cable Pulling | 7.6d | 2026-09-09 A | 2026-09-19 | B2.33 71 19 16 SS | 60% | 113.4d |
| B2.33 71 19 17 |  | Backfilling | 6d | 2026-09-14 A | 2026-09-21 | B2.33 71 49.23.010 SS | 20% | 111d |
|  | MV Replacing | **Cable Replacement** |  | 2026-09-29 | 2026-10-19 |  |  |  |
| B2.33 71 49.23.061 |  | Excavation | 3d | 2026-09-29 | 2026-10-03 | B2.33 71 19 16 |  | 32.86d |
| B2.33 71 49.23.062 |  | Old Cable Grubbing | 4d | 2026-10-03 | 2026-10-07 | B2.33 71 49.23.061 |  | 32.86d |
| B2.33 71 49.23.063 |  | New Cable Installation | 4d | 2026-10-07 | 2026-10-12 | B2.33 71 49.23.062 |  | 32.86d |
| B2.33 71 49.23.064 |  | Backfilling & Warrning Tape | 6d | 2026-10-12 | 2026-10-19 | B2.33 71 49.23.063, B3.33 05 63.02.17 |  | 32.86d |
|  | Street Lighting | **Street Lighting** |  | 2026-08-26 | 2026-10-14 |  |  |  |
|  | Cables | **Cables** |  | 2026-09-10 | 2026-09-22 |  |  |  |
|  | 4C,10+1C,10mm2 | **4C,10+1C,10mm2** |  | 2026-09-10 | 2026-09-22 |  |  |  |
| B2.33 71 19 18 |  | Land Adjustment | 6.5d | 2026-09-10 A | 2026-09-17 | B2.33 71 19 16 SS | 50% | 114.5d |
| B2.33 71 49.23.64 |  | Cable Pulling | 5.5d | 2026-09-13 A | 2026-09-19 | B2.33 71 19 18 SS | 50% | 62.5d |
| B2.33 71 19 19 |  | Backfilling | 3d | 2026-09-19 | 2026-09-22 | B2.33 71 49.23.64 |  | 62.5d |
|  | SL Poles | **SL Poles** |  | 2026-08-26 | 2026-09-26 |  |  |  |
|  | Pole (12 M Sngl Arm) | **Pole (12 M Single Arm)** |  | 2026-08-26 | 2026-09-26 |  |  |  |
| B2.33 71 16.031 |  | Excavation | 12d | 2026-08-26 A | 2026-09-08 A | B2.33 71 19 17 SS | 100% |  |
| B2.33 71 16.032 |  | PC & RC Foundation | 11d | 2026-08-29 A | 2026-09-09 A | B2.33 71 16.031 SS | 100% |  |
| B2.33 71 16.033 |  | Lighting Poles Installation Incl power box, Cables | 9.3d | 2026-09-07 A | 2026-09-17 | B2.33 71 16.032 SS, DMM2-Proc-Delv-6538 SS | 84% | 22d |
| B2.33 71 16.034 |  | Lighting Luminares Inst | 4.3d | 2026-09-13 A | 2026-09-17 | B2.33 71 16.033 SS | 84% | 64d |
| B2.33 71 16.035 |  | Backfilling, Grouting & Chamfering | 6d | 2026-09-19 | 2026-09-26 | B2.33 71 16.034 |  | 64d |
|  | Earthing | **Earthing** |  | 2026-09-19 | 2026-09-29 |  |  |  |
| B2.33 71 19 20 |  | Land Adjustment | 3d | 2026-09-19 | 2026-09-21 | B2.33 71 16.033 |  | 22d |
| B2.33 71 19 21 |  | Earth Rods & Conduits | 3d | 2026-09-22 | 2026-09-26 | B2.33 71 19 20 |  | 22d |
| B2.33 71 19 22 |  | Backfilling | 3d | 2026-09-27 | 2026-09-29 | B2.33 71 19 21, B2.33 71 16.146 |  | 22d |
|  | SL Pillars | **SL Pillars** |  | 2026-10-11 | 2026-10-14 |  |  |  |
| B2.33 71 26 03 |  | Pillars Installation (Internal Wiring) | 2d | 2026-10-11 | 2026-10-12 | B2.33 71 16.033, B2.33 71 49.23.64, DMM2-Proc-Delv-6518 |  | 87d |
| B2.33 71 26 041 |  | KWH meter mounting a frame installation | 2d | 2026-10-13 | 2026-10-14 | B2.33 71 26 03 |  | 87d |
|  | Earth & Road Works | **Earth & Road Works** |  | 2026-03-24 | 2026-10-10 |  |  |  |
|  | Earth Works | **Earth Works** |  | 2026-03-24 | 2026-04-06 |  |  |  |
| B1.2.31 23 16.01.8 |  | Roadway Excavation | 2d | 2026-03-24 A | 2026-03-26 A | DMM2-Eng-MS-78, B1.2.31 23 16.01.12 | 100% |  |
| B1.2.31 23 23.01.8 |  | Embankment Backfiling | 5.5d | 2026-03-30 A | 2026-04-06 A | B1.2.31 23 16.01.8 | 100% |  |
|  | Earth Layers | **Earth Layers** |  | 2026-04-08 | 2026-09-22 |  |  |  |
| B1.2.32 11 13.01.8 |  | Subgrade | 140d | 2026-04-08 A | 2026-09-22 | B1.2.31 23 23.01.8 | 80% | 110d |
| B1.2.32 11 23.01.8 |  | Aggregate Base Course | 111.47d | 2026-05-06 A | 2026-09-17 | B1.2.32 11 13.01.8 SS | 61% | 114.05d |
|  | Interlock | **Interlock** |  | 2026-09-30 | 2026-10-03 |  |  |  |
| B1.2.32 14 13.13.8 |  | 60mm thick - Interlocking Block Pavers | 3d | 2026-09-30 | 2026-10-03 | B2.33 71 19 22 |  | 22d |
|  | Curbstone | **Curbstone** |  | 2026-09-10 | 2026-09-17 |  |  |  |
|  | Pre Install | **Pre-Installation** |  | 2026-09-10 | 2026-09-17 |  |  |  |
| 32 16 13.031 |  | Excavation | 2d | 2026-09-10 A | 2026-09-17 | B1.2.32 11 23.01.3 SS | 10% | 114d |
| 32 16 13.032 |  | PCC | 2d | 2026-09-12 A | 2026-09-17 | 32 16 13.031 SS | 10% | 114d |
| 32 16 13.033 |  | Haunching | 2d | 2026-09-13 A | 2026-09-17 | 32 16 13.032 SS | 10% | 114.2d |
|  | Installation | **Installation** |  | 2026-09-13 | 2026-09-17 |  |  |  |
| B1.2.32 16.13.01.8 |  | Curb Stone, Type K1 | 3d | 2026-09-13 A | 2026-09-17 | 32 16 13.033 SS | 10% | 114.2d |
|  | Finishing | **Finishing** |  | 2026-09-15 | 2026-09-17 |  |  |  |
| 32 16 13.08 |  | Finishing, Fareface | 2.1d | 2026-09-15 A | 2026-09-17 | B1.2.32 16.13.01.8 SS | 10% | 50.2d |
|  | Asphalt Layers | **Asphalt Layers** |  | 2026-06-07 | 2026-10-01 |  |  |  |
| B1.2.32 11 26.01.8 |  | Bituminous Base Course including Prime Coat (MC1) and tack coat (RC2) | 88.32d | 2026-06-07 A | 2026-09-19 | B1.2.32 11 23.01.8 SS | 72% | 0.76d |

| ID | WBS | Task | Duration | Start | Finish | Predecessors | Complete | Total float |
| --- | --- | --- | --- | --- | --- | --- | --- | --- |
| B1.2.32 12 16.01.8 |  | Bituminous concrete Wearing Course, including tack coat (RC2) | 5d | 2026-09-26 | 2026-10-01 | B1.2.32 11 26.01.8, 10 14 53.08, 32 16 13.08 |  | 44.76d |
|  | Pavement Marking | **Pavement Marking** |  | 2026-10-01 | 2026-10-07 |  |  |  |
| B1.2.32 17 23.02.8 |  | Retroreflective Thermoplastic Yellow, Traffic lines | 2d | 2026-10-01 | 2026-10-04 | B1.2.32 12 16.01.8 |  | 94.76d |
| B1.2.32 17 23.01.8 |  | Retroreflective Thermoplastic White Traffic lines | 3d | 2026-10-04 | 2026-10-07 | B1.2.32 12 16.01.8, B1.2.32 17 23.02.8 |  | 94.76d |
|  | Traffic Signs | **Traffic Signs** |  | 2026-09-19 | 2026-10-10 |  |  |  |
|  | Pre Install | **Pre-Installation** |  | 2026-09-19 | 2026-09-26 |  |  |  |
| B2.31 23 00.221 |  | Excavation | 2d | 2026-09-19 | 2026-09-21 | B1.2.32 11 26.01.8 |  | 0.76d |
| 10 14 53.08 |  | Foundation | 3d | 2026-09-21 | 2026-09-26 | B2.31 23 00.221 |  | 22.76d |
|  | Installation | **Installation** |  | 2026-10-04 | 2026-10-10 |  |  |  |
| B1.2.10 14 53.018 |  | 1 Sheet Alumenium, Single post | 2d | 2026-10-04 | 2026-10-06 | B1.2.32 14 13.13.8, 10 14 53.08, B1.2.32 17 23.02.8, B1.2.32 17 23.01.8 SS |  | 97.76d |
| B1.2.10 14 53.028 |  | 2 Sheet Alumenium, Single post | 2d | 2026-10-07 | 2026-10-10 | B1.2.32 14 13.13.8, 10 14 53.08, B1.2.32 17 23.02.8, B1.2.32 17 23.01.8 |  | 94.76d |
|  | Guard Rooms | **Guard Rooms** |  | 2026-02-09 | 2026-11-25 |  |  |  |
|  | Foundation | **Substructure & Foundation** |  | 2026-02-09 | 2026-09-05 |  |  |  |
| B8.31 23 16.011 |  | Excavation | 95.2d | 2026-02-09 A | 2026-06-18 A | B1.1.31 23 23.112 | 100% |  |
| B8.31 23 16.0111 |  | Vapor retarders | 2.88d | 2026-06-29 A | 2026-07-01 A | B8.31 23 16.019, DMM2-Proc-PO-0112 | 100% |  |
| B8.31 23 16.017 |  | 100 mm thickness lean concrete under the foundation | 1d | 2026-07-02 A | 2026-07-04 A | B8.31 23 16.015, DMM2-Proc-PO-0107 | 100% |  |
| B8.31 23 16.015 |  | Water proofing Paint below slab on grade | 2d | 2026-07-04 A | 2026-07-06 A | B8.31 23 16.013 | 100% |  |
| B8.31 23 16.019 |  | Footings | 1d | 2026-07-06 A | 2026-07-06 A | B8.31 23 16.017 | 100% |  |
| B8.31 23 16.013 |  | Aggregate base course | 3d | 2026-09-02 A | 2026-09-05 A | B8.31 23 16.011 | 100% |  |
|  | Slab on Grade | **Slab on Grade** |  | 2026-07-05 | 2026-08-27 |  |  |  |
| B8.31 23 16.0113 |  | 50 mm thickness lean concrete under slab on grade | 1d | 2026-07-05 A | 2026-07-05 A | B8.31 23 16.0111, DMM2-Proc-PO-0107 | 100% |  |
| B8.31 23 16.0139 |  | Slab on grade | 6d | 2026-08-22 A | 2026-08-27 A | B8.31 23 16.0113 | 100% |  |
|  | Utilities | **Underground Utilities** |  | 2026-09-16 | 2026-10-12 |  |  |  |
| B8.31 23 16.0115 |  | Gravel | 2d | 2026-09-16 | 2026-09-17 | B8.31 23 16.0113 |  | 8d |
| B8.31 23 16.0117 |  | uPVC pipes ?160mm | 2d | 2026-09-19 | 2026-09-20 | B8.31 23 16.0113, B8.31 23 16.0115, DMM2-Proc-Delv-7353 |  | 8d |
| B8.31 23 16.0119 |  | uPVC pipes ?110mm | 2d | 2026-09-21 | 2026-09-22 | B8.31 23 16.0113, B8.31 23 16.0115, B8.31 23 16.0117, DMM2-Proc-Delv-7353 |  | 8d |
| B8.31 23 16.0121 |  | uPVC pipes ?75mm | 2d | 2026-09-24 | 2026-09-26 | B8.31 23 16.0113, B8.31 23 16.0115, B8.31 23 16.0119, DMM2-Proc-Delv-7353 |  | 8d |
| B8.31 23 16.0123 |  | uPVC pipes ?50mm | 2d | 2026-09-27 | 2026-09-28 | B8.31 23 16.0113, B8.31 23 16.0115, B8.31 23 16.0121, DMM2-Proc-Delv-7353 |  | 8d |
| B8.31 23 16.0125 |  | PPR pipes ?32mm | 2d | 2026-09-29 | 2026-09-30 | B8.31 23 16.0113, B8.31 23 16.0115, B8.31 23 16.0123, DMM2-Proc-Delv-7354 |  | 8d |
| B8.31 23 16.0127 |  | PPR pipes ?25mm | 2d | 2026-10-01 | 2026-10-03 | B8.31 23 16.0113, B8.31 23 16.0115, B8.31 23 16.0125, DMM2-Proc-Delv-7354 |  | 8d |
| B8.31 23 16.0129 |  | PPR pipes ?20mm | 2d | 2026-10-01 | 2026-10-03 | B8.31 23 16.0113, B8.31 23 16.0115, B8.31 23 16.0127 SS, DMM2-Proc-Delv-7354 |  | 8d |
| B8.31 23 16.0131 |  | Scupper ?110mm | 2d | 2026-10-04 | 2026-10-05 | B8.31 23 16.0113, B8.31 23 16.0115, B8.31 23 16.0129, DMM2-Proc-Delv-7356 |  | 8d |
| B8.31 23 16.0133 |  | Clean out ?110mm | 2d | 2026-10-06 | 2026-10-07 | B8.31 23 16.0113, B8.31 23 16.0115, B8.31 23 16.0131, DMM2-Proc-Delv-7357 |  | 8d |
| B8.31 23 16.0135 |  | Floor drain | 2d | 2026-10-08 | 2026-10-10 | B8.31 23 16.0113, B8.31 23 16.0115, B8.31 23 16.0133, DMM2-Proc-Delv-7358, DMM2-Proc-Delv-4018 |  | 8d |
| B8.31 23 16.0137 |  | Manhole, dimensions 600mmX600mm | 2d | 2026-10-11 | 2026-10-12 | B8.31 23 16.0113, B8.31 23 16.0115, B8.31 23 16.0135, DMM2-Proc-Delv-7360 |  | 8d |
|  | Walls & Columns | **Superstructure - Walls & Columns** |  | 2026-09-09 | 2026-10-17 |  |  |  |
| B8.31 23 16.0141 |  | Reinforced Concrete columns | 3d | 2026-09-09 A | 2026-09-12 A | B8.31 23 16.0139, B8.31 23 16.019, DMM2-Eng-PQ-1248 | 100% |  |
| B8.31 23 16.0143 |  | Concrete masonry unit, 200mm thick wall | 2d | 2026-10-13 | 2026-10-14 | B8.31 23 16.0139, B8.31 23 16.0141, DMM2-Proc-PO-0116, DMM2-Proc-Delv-7344, B8.31 23 16.0117, B8.31 23 16.0119, B8.31 23 16.0121, B8.31 23 16.0123, B8.31 23 16.0125, B8.31 23 16.0127, B8.31 23 16.0129, B8.31 23 16.0131, B8.31 23 16.0133, B8.31 23 16.0135, B8.31 23 16.0137, B8.31 23 16.0115 |  | 8d |
| B8.31 23 16.0145 |  | Concrete masonry unit, 150mm thick wall | 2d | 2026-10-15 | 2026-10-17 | B8.31 23 16.0139, B8.31 23 16.0143, DMM2-Proc-PO-0116, DMM2-Proc-Delv-7344 |  | 8d |
|  | Roof | **Superstructure - Roof** |  | 2026-09-21 | 2026-11-16 |  |  |  |
| B8.31 23 16.0147 |  | Roof Slab and beams | 2d | 2026-09-21 | 2026-09-22 | B8.31 23 16.0141, DMM2-Proc-PO-0111 |  | 43d |
| B8.31 23 16.0153 |  | Sloped screed for roof | 2d | 2026-09-24 | 2026-09-26 | B8.31 23 16.0147, DMM2-Proc-PO-0109, DMM2-Proc-PO-0114 |  | 43d |
| B8.31 23 16.0187 |  | Water proofing Membrane for roof | 2d | 2026-09-27 | 2026-09-28 | B8.31 23 16.0153, DMM2-Proc-PO-0115, DMM2-Proc-Delv-7343 |  | 43d |
| B8.31 23 16.01111 |  | 50mm Extruded polystyrene insulation for roof | 2d | 2026-09-29 | 2026-09-30 | B8.31 23 16.0187 |  | 43d |
| B8.31 23 16.01135 |  | Water proofing Membrane with protection board | 1d | 2026-11-11 | 2026-11-11 | B8.31 23 16.01111, B8.31 23 16.01123, DMM2-Proc-PO-0115, DMM2-Proc-Delv-7341 |  | 8d |
| B8.31 23 16.01145 |  | 50mm foam concrete for roof layers | 2d | 2026-11-12 | 2026-11-14 | B8.31 23 16.01135, DMM2-Proc-PO-0110, DMM2-Proc-PO-0108 |  | 8d |
| B8.31 23 16.01149 |  | Stone coping 30mm thickness | 2d | 2026-11-15 | 2026-11-16 | B8.31 23 16.01145, B8.31 23 16.01147, DMM2-Proc-Delv-7339 |  | 8d |
|  | Enclosure | **Enclosure & Weatherproofing** |  | 2026-10-18 | 2026-10-31 |  |  |  |
| B8.31 23 16.0149 |  | Aluminum window W01 size (1.3m x 1.4m) | 1d | 2026-10-18 | 2026-10-18 | B8.31 23 16.0143, B8.31 23 16.0145, DMM2-Proc-Delv-7351 |  | 18d |
| B8.31 23 16.0155 |  | Aluminum window W02 size (0.6m x 0.9m) | 2d | 2026-10-19 | 2026-10-20 | B8.31 23 16.0149, B8.31 23 16.0143, B8.31 23 16.0145, DMM2-Proc-Delv-7351 |  | 18d |
| B8.31 23 16.0189 |  | External plastering | 4d | 2026-10-21 | 2026-10-25 | B8.31 23 16.0155, B8.31 23 16.0143, B8.31 23 16.0145, B8.31 23 16.0149 |  | 18d |
| B8.31 23 16.01113 |  | Water proofing Membrane with 50mm screed protection | 2d | 2026-10-26 | 2026-10-27 | B8.31 23 16.0189, DMM2-Proc-PO-0115 |  | 18d |
| B8.31 23 16.01137 |  | External painting | 3d | 2026-10-28 | 2026-10-31 | B8.31 23 16.01113, DMM2-Proc-PO-0119, DMM2-Proc-Delv-7347 |  | 18d |
|  | Interior & MEP | **Interior & MEP** |  | 2026-10-18 | 2026-11-25 |  |  |  |
| B8.31 23 16.0151 |  | Internal plastering | 2d | 2026-10-18 | 2026-10-19 | B8.31 23 16.0143, B8.31 23 16.0145 |  | 8d |
| B8.31 23 16.0157 |  | Cementitious Water proofing for wet areas | 2d | 2026-10-20 | 2026-10-21 | B8.31 23 16.0151 |  | 8d |
|  | Mechanical | **Mechanical** |  | 2026-10-24 | 2026-10-27 |  |  |  |
| B8.31 23 16.0159 |  | DX wall mounted Split/AC | 2d | 2026-10-24 | 2026-10-25 | B8.31 23 16.0151, DMM2-Proc-Delv-7355 |  | 17d |
| B8.31 23 16.0191 |  | EF-01 Exhaust axial fan | 2d | 2026-10-26 | 2026-10-27 | B8.31 23 16.0159, DMM2-Proc-Delv-7352 |  | 17d |
|  | Plumb & Elec | **Plumbing & Electrical** |  | 2026-10-20 | 2026-11-25 |  |  |  |
| B8.31 23 16.0177 |  | 20A DOUBLE POLE SWITCH | 2d | 2026-10-20 | 2026-10-21 | B8.31 23 16.0151, DMM2-Proc-Delv-7368 |  | 13d |
| B8.31 23 16.0179 |  | 13A SPUR OUTLET, For guard room 1&2 | 2d | 2026-10-22 | 2026-10-24 | B8.31 23 16.0151, B8.31 23 16.0177, DMM2-Proc-Delv-7368 |  | 13d |
| B8.31 23 16.0161 |  | Electrical Water Heater 50L | 2d | 2026-10-28 | 2026-10-29 | B8.31 23 16.0151, B8.31 23 16.0159, B8.31 23 16.0191, DMM2-Proc-Delv-7359 |  | 17d |
| B8.31 23 16.0181 |  | 13A SINGLE SWITCH SOCKET OUTLET | 2d | 2026-10-28 | 2026-10-29 | B8.31 23 16.0151, B8.31 23 16.0179, DMM2-Proc-Delv-7368, DMM2-Proc-Delv-7365 |  | 10d |
| B8.31 23 16.0163 |  | DB-MGR Panel | 2d | 2026-10-31 | 2026-11-01 | B8.31 23 16.0151, B8.31 23 16.0161, DMM2-Proc-Delv-7365 |  | 17d |
| B8.31 23 16.0183 |  | 13A DOUBLE SWITCH SOCKET OUTLET | 2d | 2026-10-31 | 2026-11-01 | B8.31 23 16.0151, B8.31 23 16.0181, DMM2-Proc-Delv-7368 |  | 10d |
| B8.31 23 16.0165 |  | Grounding and lightning system | 2d | 2026-11-02 | 2026-11-03 | B8.31 23 16.0151, B8.31 23 16.0163, DMM2-Proc-Delv-7369 |  | 17d |
| B8.31 23 16.0167 |  | Fire alarm system | 2d | 2026-11-04 | 2026-11-05 | B8.31 23 16.0151, B8.31 23 16.0165, DMM2-Proc-Delv-7371 |  | 17d |
| B8.31 23 16.0169 |  | Data/ voice RJ45 outlet include CAT6A cable | 2d | 2026-11-17 | 2026-11-18 | B8.31 23 16.0151, B8.31 23 16.0167, B8.31 23 16.01149, DMM2-Proc-Delv-7374 |  | 8d |
| B8.31 23 16.0171 |  | RJ45 connector include CAT6A cable for security cameras | 2d | 2026-11-19 | 2026-11-21 | B8.31 23 16.0151, B8.31 23 16.0169, B8.31 23 16.01105 |  | 8d |

| ID | WBS | Task | Duration | Start | Finish | Predecessors | Complete | Total float |
| --- | --- | --- | --- | --- | --- | --- | --- | --- |
| B8.31 23 16.0173 |  | Switch 20A, 1P, 60Hz Isolator/disconnect switches | 2d | 2026-11-22 | 2026-11-23 | B8.31 23 16.0151, B8.31 23 16.0171, B8.31 23 16.01129, DMM2-Proc-Delv-7396, DMM2-Proc-Delv-7370 |  | 8d |
| B8.31 23 16.0175 |  | DB-GR Panel | 2d | 2026-11-24 | 2026-11-25 | B8.31 23 16.0151, B8.31 23 16.0173, DMM2-Proc-Delv-7365 |  | 8d |
| B8.31 23 16.0193 |  | 4Cx 6mm2 + 1Cx6mm2 Cu/XLPE/PVC FROM KWHM to DB-MGR | 2d | 2026-11-24 | 2026-11-25 | B8.31 23 16.0163, B8.31 23 16.0175 SS, DMM2-Proc-Delv-7366, DMM2-Proc-Delv-4588 |  | 8d |
|  | Interior Finishes | **Interior Finishes** |  | 2026-10-22 | 2026-11-08 |  |  |  |
| B8.31 23 16.0195 |  | Porcelain flooring tiles size (600x600) | 3d | 2026-10-22 | 2026-10-25 | B8.31 23 16.0157, DMM2-Proc-Delv-7345 |  | 8d |
| B8.31 23 16.01117 |  | Raised floor finish | 3d | 2026-10-26 | 2026-10-28 | B8.31 23 16.0195, DMM2-Proc-Delv-7348 |  | 18d |
| B8.31 23 16.0197 |  | Ceramic wall tiles size (300x300) mm | 3d | 2026-10-26 | 2026-10-28 | B8.31 23 16.0157, B8.31 23 16.0195 |  | 8d |
| B8.31 23 16.01107 |  | Porcelain flooring tiles size (300x300) | 3d | 2026-10-29 | 2026-11-01 | B8.31 23 16.0157, B8.31 23 16.0197, DMM2-Proc-Delv-7345 |  | 8d |
| B8.31 23 16.01109 |  | Porcelain flooring tiles size (500x500) | 3d | 2026-11-02 | 2026-11-04 | B8.31 23 16.0157, B8.31 23 16.01107, DMM2-Proc-Delv-7345 |  | 8d |
| B8.31 23 16.0185 |  | Internal painting | 3d | 2026-11-02 | 2026-11-04 | B8.31 23 16.0151, B8.31 23 16.0183, DMM2-Proc-PO-0119, DMM2-Proc-Delv-7342 |  | 10d |
| B8.31 23 16.01115 |  | Porcelain skirting 100mm height | 3d | 2026-11-05 | 2026-11-08 | B8.31 23 16.0195, B8.31 23 16.01107, B8.31 23 16.01109 |  | 9d |
| B8.31 23 16.0199 |  | Gypsum board ceiling, including paint | 2d | 2026-11-05 | 2026-11-07 | B8.31 23 16.0185, DMM2-Proc-Delv-7346 |  | 10d |
|  | Fixtures, Equipment | **Fixtures, Equipment & Final Connections** |  | 2026-11-01 | 2026-11-19 |  |  |  |
|  | Doors | **Install Doors** |  | 2026-11-09 | 2026-11-15 |  |  |  |
| B8.31 23 16.01139 |  | Steel Door SD1 | 2d | 2026-11-09 | 2026-11-10 | B8.31 23 16.0185, B8.31 23 16.0195, B8.31 23 16.0197, B8.31 23 16.01115, B8.31 23 16.01117, B8.31 23 16.0199, B8.31 23 16.01107, B8.31 23 16.01109, DMM2-Proc-Delv-7349 |  | 9d |
| B8.31 23 16.01141 |  | Wood Door TD1 | 2d | 2026-11-11 | 2026-11-12 | B8.31 23 16.0185, B8.31 23 16.0195, B8.31 23 16.0197, B8.31 23 16.01115, B8.31 23 16.01117, B8.31 23 16.0199, B8.31 23 16.01107, B8.31 23 16.01109, B8.31 23 16.01139, DMM2-Proc-Delv-7350 |  | 9d |
| B8.31 23 16.01143 |  | Wood Door TD2 | 2d | 2026-11-14 | 2026-11-15 | B8.31 23 16.0185, B8.31 23 16.0195, B8.31 23 16.0197, B8.31 23 16.01115, B8.31 23 16.01117, B8.31 23 16.0199, B8.31 23 16.01107, B8.31 23 16.01109, B8.31 23 16.01141, DMM2-Proc-Delv-7350 |  | 9d |
|  | Sanitarywares | **Install Sanitarywares** |  | 2026-11-05 | 2026-11-10 |  |  |  |
| B8.31 23 16.01119 |  | Toilet | 2d | 2026-11-05 | 2026-11-07 | B8.31 23 16.0195, B8.31 23 16.01107, B8.31 23 16.01109, DMM2-Proc-Delv-7362 |  | 8d |
| B8.31 23 16.01121 |  | Shower | 2d | 2026-11-08 | 2026-11-09 | B8.31 23 16.0195, B8.31 23 16.0197, B8.31 23 16.01107, B8.31 23 16.01109, B8.31 23 16.01119, DMM2-Proc-Delv-7361 |  | 8d |
| B8.31 23 16.01123 |  | Semi pedestal sink | 1d | 2026-11-10 | 2026-11-10 | B8.31 23 16.0195, B8.31 23 16.01107, B8.31 23 16.01109, B8.31 23 16.01121, DMM2-Proc-Delv-7363 |  | 8d |
|  | Tech | **Install Final Electrical & Tech Components** |  | 2026-11-01 | 2026-11-19 |  |  |  |
| B8.31 23 16.01147 |  | WALL MOUNTED BULK HEAD OUTDOOR LED 15 WATTS, IP65 | 2d | 2026-11-01 | 2026-11-02 | B8.31 23 16.01137, DMM2-Proc-Delv-7367 |  | 18d |
| B8.31 23 16.01131 |  | Data Cabinet including all devices 12U | 2d | 2026-11-05 | 2026-11-07 | B8.31 23 16.0195, B8.31 23 16.01107, B8.31 23 16.01109, B8.31 23 16.0185, DMM2-Proc-Delv-7373 |  | 10d |
| B8.31 23 16.01101 |  | 50-inch screen | 2d | 2026-11-08 | 2026-11-09 | B8.31 23 16.0185, B8.31 23 16.01131, DMM2-Proc-Delv-7376 |  | 10d |
| B8.31 23 16.01133 |  | PC workstation | 2d | 2026-11-10 | 2026-11-11 | B8.31 23 16.0195, B8.31 23 16.01107, B8.31 23 16.01109, B8.31 23 16.0185, B8.31 23 16.01101, DMM2-Proc-Delv-7375 |  | 10d |
| B8.31 23 16.01125 |  | ROUND RECESSED LED 11.5 WATTS, IP20 | 2d | 2026-11-16 | 2026-11-17 | B8.31 23 16.0199, B8.31 23 16.01143, DMM2-Proc-Delv-7367 |  | 9d |
| B8.31 23 16.01127 |  | ROUND RECESSED LED 11.5 WATTS, IP20, with Emergency | 2d | 2026-11-18 | 2026-11-19 | B8.31 23 16.0199, B8.31 23 16.01125, DMM2-Proc-Delv-7367 |  | 9d |
| B8.31 23 16.01129 |  | ROUND RECESSED LED 11.5 WATTS, IP44 | 2d | 2026-11-18 | 2026-11-19 | B8.31 23 16.0199, B8.31 23 16.01127 SS, DMM2-Proc-Delv-7367 |  | 9d |
|  | Fire | **Install Fire Equipments** |  | 2026-11-12 | 2026-11-16 |  |  |  |
| B8.31 23 16.01103 |  | CO2 fire extinguishers | 2d | 2026-11-12 | 2026-11-14 | B8.31 23 16.0185, B8.31 23 16.01133, DMM2-Proc-Delv-7364 |  | 10d |
| B8.31 23 16.01105 |  | Powder fire extinguishers | 2d | 2026-11-15 | 2026-11-16 | B8.31 23 16.0185, B8.31 23 16.01103, DMM2-Proc-Delv-7364 |  | 10d |
|  | Potable Water PumpST | **Potable Water Pump Station** |  | 2025-12-07 | 2026-11-26 |  |  |  |
|  | Earthworks | **Earthworks & Substructure** |  | 2025-12-07 | 2026-08-04 |  |  |  |
| B3.2.31 23 16.01 |  | Excavation | 60.71d | 2025-12-07 A | 2026-02-15 A | B3.33 14 11.01.0114, B1.1.31 23 23.102, B3.33 14 11.01.013 SS, B3.33 14 11.01.023 SS | 100% |  |
| B3.2.03 30 00.01 |  | Footings & Ground Beams Construction | 48.8d | 2026-02-24 A | 2026-05-02 A | B3.2.31 23 16.01 | 100% |  |
| B3.2.32 11 23.01.5 |  | Aggregate Base Course below Slab on Grade | 4d | 2026-05-02 A | 2026-05-05 A | B3.2.31 23 16.01 | 100% |  |
| B3.2.32 11 23.01.7 |  | 100mm Lean Concrete under Foundations | 8d | 2026-05-07 A | 2026-05-17 A | B3.2.03 30 00.01 | 100% |  |
| B3.2.32 11 23.01.9 |  | 50mm Lean Concrete under Slab on Grade | 3d | 2026-05-20 A | 2026-05-23 A | B3.2.32 11 23.01.5 | 100% |  |
| B3.2.32 11 23.01.11 |  | Vapor Retarders below Slab on Grade | 2d | 2026-07-29 A | 2026-07-30 A | B3.2.32 11 23.01.9 | 100% |  |
| B3.2.32 11 23.01.15 |  | Waterproofing Paint below Slab on Grade | 3d | 2026-08-01 A | 2026-08-03 A | B3.2.32 11 23.01.11 | 100% |  |
| B3.2.32 11 23.01.19 |  | Slab on Grade & Ground Beams Pouring | 3d | 2026-08-02 A | 2026-08-04 A | B3.2.32 11 23.01.15 | 100% |  |
|  | Superstructure | **Superstructure** |  | 2026-06-24 | 2026-09-21 |  |  |  |
| B3.2.32 11 23.01.25 |  | Reinforced Concrete Walls & Columns | 26.4d | 2026-06-24 A | 2026-07-25 A | B3.2.32 11 23.01.19 | 100% |  |
| B3.2.32 11 23.01.39 |  | Roof Slab & Beams Construction | 37d | 2026-08-05 A | 2026-09-17 | B3.2.32 11 23.01.19 | 75% | 28d |
| B3.2.32 11 23.01.27 |  | CMU (Concrete Masonry Unit) Walls Construction | 18.5d | 2026-08-27 A | 2026-09-21 | B3.2.32 11 23.01.19, DMM2-Proc-Delv-7293 FF | 75% | 35d |
|  | 1 | **Building Envelope & Waterproofing** |  | 2026-09-16 | 2026-11-24 |  |  |  |
| B3.2.32 11 23.01.21 |  | Sloped Screed for Roof | 4d | 2026-09-16 | 2026-09-20 | B3.2.32 11 23.01.15 |  | 48d |
| B3.2.32 11 23.01.43 |  | External Plastering | 4d | 2026-09-16 | 2026-09-20 | B3.2.32 11 23.01.25 |  | 30d |
| B3.2.32 11 23.01.49 |  | Waterproofing Membrane for Roof | 2d | 2026-09-19 | 2026-09-20 | B3.2.32 11 23.01.39 |  | 46d |
| B3.2.32 11 23.01.29 |  | Geotextile Membrane for Roof | 2d | 2026-09-21 | 2026-09-22 | B3.2.32 11 23.01.21 |  | 48d |
| B3.2.32 11 23.01.65 |  | Water proofing with 50mm screed protection | 2d | 2026-09-21 | 2026-09-22 | B3.2.32 11 23.01.43 |  | 44d |
| B3.2.32 11 23.01.41 |  | 50mm Foam Concrete for Roof | 2d | 2026-09-24 | 2026-09-26 | B3.2.32 11 23.01.29 |  | 48d |
| B3.2.32 11 23.01.79 |  | Stainless steel at top of tank size of 950x950mm | 2d | 2026-09-24 | 2026-09-26 | B3.2.32 11 23.01.49, B3.2.32 11 23.01.65, B3.2.32 11 23.01.39 |  | 44d |
| B3.2.32 11 23.01.51 |  | Gravel for Roof | 2d | 2026-09-27 | 2026-09-28 | B3.2.32 11 23.01.41, DMM2-Proc-Delv-7297, B6.33 42 11.052 |  | 48d |
| B3.2.32 11 23.01.69 |  | Stone Copping Installation | 2d | 2026-09-29 | 2026-09-30 | B3.2.32 11 23.01.51 |  | 48d |
| B3.2.32 11 23.01.250 |  | External Painting | 2d | 2026-11-23 | 2026-11-24 | B3.2.32 11 23.01.143, B3.2.32 11 23.01.59, B3.2.32 11 23.01.75, B3.2.32 11 23.01.95, B3.2.32 11 23.01.109, B3.2.32 11 23.01.121, B3.2.32 11 23.01.61, B3.2.32 11 23.01.77, B3.2.32 11 23.01.97, B3.2.32 11 23.01.135, B3.2.32 11 23.01.233 |  | 5d |
|  | 2 | **Interior Finishes & Fixed Installations** |  | 2026-09-16 | 2026-11-04 |  |  |  |
| B3.2.32 11 23.01.31 |  | Lean Concrete for Equipment Pads | 3d | 2026-09-16 | 2026-09-19 | B3.2.32 11 23.01.19 |  | 29d |
| B3.2.32 11 23.01.33 |  | Stairs Construction | 3d | 2026-10-13 | 2026-10-15 | B3.2.32 11 23.01.19, DMM2-Proc-Delv-7292 |  | 18d |
| B3.2.32 11 23.01.45 |  | Internal Plastering | 3d | 2026-10-17 | 2026-10-19 | B3.2.32 11 23.01.25, B3.2.32 11 23.01.33 |  | 18d |
| B3.2.32 11 23.01.63 |  | Water proofing Membrane with protection board | 3d | 2026-10-20 | 2026-10-22 | B3.2.32 11 23.01.45 |  | 21d |
| B3.2.32 11 23.01.71 |  | Internal Painting (Acrylic/Emulsion) | 2d | 2026-11-03 | 2026-11-04 | B3.2.32 11 23.01.45, B3.2.32 11 23.01.63, B3.2. 26 28 16 .01, B3.2. 26 28 16 .02, B3.2. 26 28 16 .03, B3.2.32 11 23.01.290, B3.2. 26 24 16 .01, B3.2. 26 24 16 .02, B3.2. 26 24 16 .03 |  | 12d |
| B3.2.32 11 23.01.91 |  | Epoxy Paint for Floors & Non-Toxic Epoxy for Tank | 2d | 2026-11-03 | 2026-11-04 | B3.2.32 11 23.01.71 SS, B3.2.32 11 23.01.89, B3.2.32 11 23.01.79 |  | 12d |
|  | 3 | **Mechanical & Piping Rough-In** |  | 2026-09-24 | 2026-11-15 |  |  |  |
| B3.2.32 11 23.01.53 |  | Overhead Crane Installation | 2d | 2026-10-01 | 2026-10-03 | B3.2.32 11 23.01.39, DMM2-Proc-Delv-2538 |  | 18d |
| B3.2.32 11 23.01.73 |  | Surge Tank | 2d | 2026-10-17 | 2026-10-18 | B3.2.32 11 23.01.53, B3.2.32 11 23.01.31, DMM2-Proc-Delv-3778 |  | 13d |
| B3.2.32 11 23.01.93 |  | Control Panel | 2d | 2026-10-17 | 2026-10-18 | B3.2.32 11 23.01.53, B3.2.32 11 23.01.73 SS, DMM2-Proc-Delv-3828 |  | 13d |
|  | 1 | **Major Equipment** |  | 2026-10-04 | 2026-10-29 |  |  |  |
|  | 5 | **Pumps** |  | 2026-10-04 | 2026-10-12 |  |  |  |

| ID | WBS | Task | Duration | Start | Finish | Predecessors | Total float |
| --- | --- | --- | --- | --- | --- | --- | --- |
| B3.2.32 11 23.01.81 |  | Water Pump - Vertical multistage cintrifugal pump | 2d | 2026-10-04 | 2026-10-05 | B3.2.32 11 23.01.31, B3.2.32 11 23.01.53, DMM2-Proc-Delv-2508 | 22d |
| B3.2.32 11 23.01.123 |  | Submersible pump | 3d | 2026-10-05 | 2026-10-07 | B3.2.32 11 23.01.31, B3.2.32 11 23.01.53, B3.2.32 11 23.01.111 FF, DMM2-Proc-Delv-3728 | 22d |
| B3.2.32 11 23.01.111 |  | Fire Pump - Vertical multistage cintrifugal (jockey) pump | 2d | 2026-10-06 | 2026-10-07 | B3.2.32 11 23.01.31, B3.2.32 11 23.01.53, B3.2.32 11 23.01.99 FF, DMM2-Proc-Delv-2518 | 22d |
| B3.2.32 11 23.01.99 |  | Fire Pump - split case cintrifugal pump | 2d | 2026-10-06 | 2026-10-07 | B3.2.32 11 23.01.31, B3.2.32 11 23.01.53, B3.2.32 11 23.01.81, DMM2-Proc-Delv-2518 | 22d |
| B3.2.32 11 23.01.139 |  | Manually Operated Fuel Pump | 2d | 2026-10-08 | 2026-10-10 | B3.2.32 11 23.01.31, B3.2.32 11 23.01.53, B3.2.32 11 23.01.123 | 34d |
| B3.2.32 11 23.01.149 |  | Positive Displacement Rotary Type Pump | 2d | 2026-10-11 | 2026-10-12 | B3.2.32 11 23.01.31, B3.2.32 11 23.01.53, B3.2.32 11 23.01.139 | 34d |
|  | 1 | **Chlorination System** |  | 2026-10-20 | 2026-10-29 |  |  |
| B3.2.32 11 23.01.83 |  | Chlorine Cylinder racks | 2d | 2026-10-20 | 2026-10-21 | B3.2.32 11 23.01.31, B3.2.32 11 23.01.53, DMM2-Proc-Delv-7308 | 4d |
| B3.2.32 11 23.01.101 |  | Chlorinators | 2d | 2026-10-22 | 2026-10-24 | B3.2.32 11 23.01.31, B3.2.32 11 23.01.53, B3.2.32 11 23.01.83, DMM2-Proc-Delv-7309 | 4d |
| B3.2.32 11 23.01.113 |  | Discharge Line Analyzer | 2d | 2026-10-22 | 2026-10-24 | B3.2.32 11 23.01.31, B3.2.32 11 23.01.53, B3.2.32 11 23.01.101 FF, DMM2-Proc-Delv-7310 | 4d |
| B3.2.32 11 23.01.125 |  | Motive Water Pumps (Injection) | 2d | 2026-10-25 | 2026-10-26 | B3.2.32 11 23.01.31, B3.2.32 11 23.01.53, B3.2.32 11 23.01.83, B3.2.32 11 23.01.101, B3.2.32 11 23.01.113 SS, DMM2-Proc-Delv-2508 | 4d |
| B3.2.32 11 23.01.127 |  | Motive Water Pumps (Water) | 2d | 2026-10-25 | 2026-10-26 | B3.2.32 11 23.01.31, B3.2.32 11 23.01.53, B3.2.32 11 23.01.83, B3.2.32 11 23.01.101, B3.2.32 11 23.01.113, DMM2-Proc-Delv-2508 | 4d |
| B3.2.32 11 23.01.137 |  | Control Panel | 2d | 2026-10-28 | 2026-10-29 | B3.2.32 11 23.01.31, B3.2.32 11 23.01.53, B3.2.32 11 23.01.83, B3.2.32 11 23.01.101, B3.2.32 11 23.01.113, B3.2.32 11 23.01.125, B3.2.32 11 23.01.127, DMM2-Proc-Delv-3828, B3.2.32 11 23.01.3 | 3d |
|  | 2 | **Internal Piping & Valves Installation** |  | 2026-10-28 | 2026-11-15 |  |  |
|  | 1 | **Pipes** |  | 2026-10-28 | 2026-11-15 |  |  |
|  | 1 | **Double Flanged DI Pipes** |  | 2026-10-28 | 2026-11-03 |  |  |
| B3.2.32 11 23.01.147 |  | Double Flanged DI Pipe ?60 mm | 2d | 2026-10-28 | 2026-10-29 | B3.2.32 11 23.01.101, B3.2.32 11 23.01.137 SS, B3.2.32 11 23.01.73, B3.2.32 11 23.01.93, B3.2.32 11 23.01.123, DMM2-Proc-Delv-3738 | 9d |
| B3.2.32 11 23.01.155 |  | Double Flanged DI Pipe ?80 mm | 2d | 2026-10-31 | 2026-11-01 | B3.2.32 11 23.01.101, B3.2.32 11 23.01.137, B3.2.32 11 23.01.73, B3.2.32 11 23.01.93, B3.2.32 11 23.01.123, B3.2.32 11 23.01.147 SS, DMM2-Proc-Delv-3738 | 7d |
| B3.2.32 11 23.01.161 |  | Double Flanged DI Pipe ?100 mm | 2d | 2026-10-31 | 2026-11-01 | B3.2.32 11 23.01.101, B3.2.32 11 23.01.137, B3.2.32 11 23.01.73, B3.2.32 11 23.01.93, B3.2.32 11 23.01.123, B3.2.32 11 23.01.155 SS, DMM2-Proc-Delv-3738 | 7d |
| B3.2.32 11 23.01.169 |  | Double Flanged DI Pipe ?200 mm | 2d | 2026-10-31 | 2026-11-01 | B3.2.32 11 23.01.101, B3.2.32 11 23.01.137, B3.2.32 11 23.01.73, B3.2.32 11 23.01.93, B3.2.32 11 23.01.123, B3.2.32 11 23.01.161 SS, DMM2-Proc-Delv-3738 | 7d |
| B3.2.32 11 23.01.179 |  | Double Flanged DI Pipe ?300 mm | 2d | 2026-11-02 | 2026-11-03 | B3.2.32 11 23.01.101, B3.2.32 11 23.01.137, B3.2.32 11 23.01.73, B3.2.32 11 23.01.93, B3.2.32 11 23.01.123, B3.2.32 11 23.01.169, DMM2-Proc-Delv-3738 | 7d |
| B3.2.32 11 23.01.185 |  | Double Flanged DI Pipe ?350 mm | 2d | 2026-11-02 | 2026-11-03 | B3.2.32 11 23.01.101, B3.2.32 11 23.01.137, B3.2.32 11 23.01.73, B3.2.32 11 23.01.93, B3.2.32 11 23.01.123, B3.2.32 11 23.01.179 FF, DMM2-Proc-Delv-3738 | 7d |
|  | 2 | **PPR Pipes** |  | 2026-11-04 | 2026-11-15 |  |  |
| B3.2.32 11 23.01.199 |  | PPR Pipes with ?25mm | 2d | 2026-11-04 | 2026-11-05 | B3.2.32 11 23.01.185 | 7d |
| B3.2.32 11 23.01.203 |  | PPR Pipes with ?32mm | 2d | 2026-11-07 | 2026-11-08 | B3.2.32 11 23.01.185, B3.2.32 11 23.01.199 | 7d |
| B3.2.32 11 23.01.209 |  | PPR Pipes with ?40mm | 2d | 2026-11-09 | 2026-11-10 | B3.2.32 11 23.01.185, B3.2.32 11 23.01.203 | 7d |
| B3.2.32 11 23.01.213 |  | Hose Bibb Installation | 2d | 2026-11-11 | 2026-11-12 | B3.2.32 11 23.01.199, B3.2.32 11 23.01.203, B3.2.32 11 23.01.209, DMM2-Proc-Delv-7306 | 7d |
| B3.2.32 11 23.01.217 |  | Emergency Shower Installation | 2d | 2026-11-14 | 2026-11-15 | B3.2.32 11 23.01.213, DMM2-Proc-Delv-7311, DMM2-Proc-Delv-2278 | 7d |
|  | 2 | **Valves** |  | 2026-10-28 | 2026-11-08 |  |  |
|  | 1 | **Gate Valves** |  | 2026-10-28 | 2026-11-05 |  |  |
| B3.2.32 11 23.01.157 |  | Manually operated Gate Valve DN60 | 2d | 2026-10-28 | 2026-10-29 | B3.2.32 11 23.01.147 SS, DMM2-Proc-Delv-3748 | 19d |
| B3.2.32 11 23.01.163 |  | Manually operated Gate Valve DN80 | 2d | 2026-11-02 | 2026-11-03 | B3.2.32 11 23.01.155, DMM2-Proc-Delv-3748 | 13d |
| B3.2.32 11 23.01.171 |  | Manually operated Gate Valve DN100 | 2d | 2026-11-02 | 2026-11-03 | B3.2.32 11 23.01.161, DMM2-Proc-Delv-3748 | 17d |
| B3.2.32 11 23.01.181 |  | Manually operated Gate Valve DN200 | 2d | 2026-11-02 | 2026-11-03 | B3.2.32 11 23.01.169, DMM2-Proc-Delv-3748 | 13d |
| B3.2.32 11 23.01.193 |  | Manually operated Gate Valve DN350 | 2d | 2026-11-04 | 2026-11-05 | B3.2.32 11 23.01.179, B3.2.32 11 23.01.185, DMM2-Proc-Delv-3748 | 15d |
|  | 2 | **Non Return Valves** |  | 2026-10-31 | 2026-11-05 |  |  |
| B3.2.32 11 23.01.165 |  | Non return Valve DN60 | 2d | 2026-10-31 | 2026-11-01 | B3.2.32 11 23.01.157, B3.2.32 11 23.01.147, DMM2-Proc-Delv-3758 | 19d |
| B3.2.32 11 23.01.187 |  | Non return Valve DN300 | 2d | 2026-11-04 | 2026-11-05 | B3.2.32 11 23.01.179, DMM2-Proc-Delv-3758 | 15d |
|  | 3 | **Butterfly Valves** |  | 2026-11-04 | 2026-11-08 |  |  |
| B3.2.32 11 23.01.189 |  | Butterfly Valve DN200 | 2d | 2026-11-04 | 2026-11-05 | B3.2.32 11 23.01.169, B3.2.32 11 23.01.181, DMM2-Proc-Delv-2528 | 13d |
| B3.2.32 11 23.01.195 |  | Butterfly Valve DN300 | 2d | 2026-11-07 | 2026-11-08 | B3.2.32 11 23.01.179, B3.2.32 11 23.01.189, DMM2-Proc-Delv-2528 | 13d |
|  | 3 | **Flowmeters** |  | 2026-11-04 | 2026-11-08 |  |  |
| B3.2.32 11 23.01.173 |  | Electromagnetic Flowmeter DN80, PN16 | 2d | 2026-11-04 | 2026-11-05 | B3.2.32 11 23.01.163, B3.2.32 11 23.01.155, DMM2-Proc-Delv-3768 | 13d |
| B3.2.32 11 23.01.197 |  | Electromagnetic Flowmeter DN200, PN16 | 2d | 2026-11-07 | 2026-11-08 | B3.2.32 11 23.01.169, B3.2.32 11 23.01.181, B3.2.32 11 23.01.189, DMM2-Proc-Delv-3768, B3.2.32 11 23.01.173 | 13d |
|  | Strainers | **Strainers** |  | 2026-11-11 | 2026-11-12 |  |  |
| B3.2. 22 05 23 .11 |  | Strainer DN80 | 2d | 2026-11-11 | 2026-11-12 | B3.2.32 11 23.01.111, B3.2.32 11 23.01.123, B3.2.32 11 23.01.139, B3.2.32 11 23.01.149, B3.2.32 11 23.01.81, B3.2.32 11 23.01.99, B3.2.32 11 23.01.147, B3.2.32 11 23.01.155, B3.2.32 11 23.01.161, B3.2.32 11 23.01.169, B3.2.32 11 23.01.179, B3.2.32 11 23.01.185, B3.2.32 11 23.01.199, B3.2.32 11 23.01.203, B3.2.32 11 23.01.209, DMM2-Proc-Delv-7303 | 9d |
| B3.2. 22 05 23 .12 |  | Strainer DN350 | 2d | 2026-11-11 | 2026-11-12 | B3.2.32 11 23.01.111, B3.2.32 11 23.01.123, B3.2.32 11 23.01.139, B3.2.32 11 23.01.149, B3.2.32 11 23.01.81, B3.2.32 11 23.01.99, B3.2.32 11 23.01.147, B3.2.32 11 23.01.155, B3.2.32 11 23.01.161, B3.2.32 11 23.01.169, B3.2.32 11 23.01.179, B3.2.32 11 23.01.185, B3.2.32 11 23.01.199, B3.2.32 11 23.01.203, B3.2.32 11 23.01.209, DMM2-Proc-Delv-7303 | 9d |
|  | 3 | **HVAC & Fire Suppression Fixture Installation** |  | 2026-10-01 | 2026-11-07 |  |  |
|  | Fans | **Fans** |  | 2026-10-01 | 2026-10-25 |  |  |
| B3.2.32 11 23.01.55 |  | Roof Mounted Fans | 2d | 2026-10-01 | 2026-10-03 | B3.2.32 11 23.01.39, B3.2.32 11 23.01.43, DMM2-Proc-Delv-7393 | 22d |
| B3.2.32 11 23.01.85 |  | Exhaust Axial Fan | 2d | 2026-10-24 | 2026-10-25 | B3.2.32 11 23.01.39, B3.2.32 11 23.01.43, B3.2.32 11 23.01.55 FF, DMM2-Proc-Delv-7307 | 3d |
|  | AC Units | **AC Units** |  | 2026-10-24 | 2026-10-25 |  |  |
| B3.2.32 11 23.01.103 |  | DX wall mounted Split/AC | 2d | 2026-10-24 | 2026-10-25 | B3.2.32 11 23.01.39, B3.2.32 11 23.01.43, B3.2.32 11 23.01.85 SS | 3d |
|  | FM200 System | **FM200 System** |  | 2026-10-26 | 2026-10-27 |  |  |
| B3.2.32 11 23.01.1 |  | FM200 system for Electrcal Room - Second Fix | 2d | 2026-10-26 | 2026-10-27 | B3.2.32 11 23.01.115 SS | 3d |
| B3.2.32 11 23.01.115 |  | FM200 system for Electrcal Room - First Fix | 2d | 2026-10-26 | 2026-10-27 | B3.2.32 11 23.01.39, B3.2.32 11 23.01.43, B3.2.32 11 23.01.103, DMM2-Proc-Delv-7305 | 3d |
| B3.2.32 11 23.01.3 |  | FM200 system for Electrcal Room - Final Fix | 2d | 2026-10-26 | 2026-10-27 | B3.2.32 11 23.01.1 SS | 3d |
|  | Fire Extinguishers | **Fire Extinguishers** |  | 2026-11-05 | 2026-11-07 |  |  |
| B3.2.32 11 23.01.270 |  | CO2 fire extinguishers | 2d | 2026-11-05 | 2026-11-07 | B3.2.32 11 23.01.71 | 16d |
| B3.2.32 11 23.01.280 |  | Powder fire extinguishers | 2d | 2026-11-05 | 2026-11-07 | B3.2.32 11 23.01.71 | 16d |
|  | 4 | **External & Underground Piping** |  | 2026-09-24 | 2026-10-15 |  |  |
|  | 1 | **Buried Pipes** |  | 2026-09-24 | 2026-10-05 |  |  |
| B3.2.32 11 23.01.13 |  | Buried DI Pipe ?80 mm | 2d | 2026-09-24 | 2026-09-26 | B3.2.31 23 16.01, B3.2.32 11 23.01.7, DMM2-Proc-Delv-3738 | 35d |
| B3.2.32 11 23.01.17 |  | Buried DI Pipe ?100 mm | 2d | 2026-09-27 | 2026-09-28 | B3.2.31 23 16.01, B3.2.32 11 23.01.7, B3.2.32 11 23.01.13, DMM2-Proc-Delv-3738 | 35d |
| B3.2.32 11 23.01.23 |  | Buried DI Pipe ?200 mm | 2d | 2026-09-29 | 2026-09-30 | B3.2.31 23 16.01, B3.2.32 11 23.01.7, B3.2.32 11 23.01.17, DMM2-Proc-Delv-3738 | 35d |
| B3.2.32 11 23.01.37 |  | Buried DI Pipe ?300 mm | 2d | 2026-10-01 | 2026-10-03 | B3.2.31 23 16.01, B3.2.32 11 23.01.7, B3.2.32 11 23.01.23, DMM2-Proc-Delv-3738 | 35d |
| B3.2.32 11 23.01.57 |  | Buried DI Pipe ?350 mm | 2d | 2026-10-04 | 2026-10-05 | B3.2.31 23 16.01, B3.2.32 11 23.01.7, B3.2.32 11 23.01.37, DMM2-Proc-Delv-3738 | 35d |
|  | 2 | **uPVC** |  | 2026-10-06 | 2026-10-07 |  |  |
| B3.2.32 11 23.01.87 |  | uPVC Pipes ?110mm | 2d | 2026-10-06 | 2026-10-07 | B3.2.31 23 16.01, B3.2.32 11 23.01.7, B3.2.32 11 23.01.57 | 35d |
|  | 3 | **Drains** |  | 2026-10-08 | 2026-10-15 |  |  |

| ID | WBS | Task | Duration | Start | Finish | Predecessors | Total float |
| --- | --- | --- | --- | --- | --- | --- | --- |
| B3.2.32 11 23.01.105 |  | Trench drain | 2d | 2026-10-08 | 2026-10-10 | B3.2.31 23 16.01, B3.2.32 11 23.01.7, B3.2.32 11 23.01.87, DMM2-Proc-Delv-7312 | 35d |
| B3.2.32 11 23.01.117 |  | Scupper ?110mm | 2d | 2026-10-11 | 2026-10-12 | B3.2.31 23 16.01, B3.2.32 11 23.01.7, B3.2.32 11 23.01.105 | 35d |
| B3.2.32 11 23.01.129 |  | Manholes | 3d | 2026-10-13 | 2026-10-15 | B3.2.31 23 16.01, B3.2.32 11 23.01.7, B3.2.32 11 23.01.117 | 35d |
|  | 4 | **Electrical & Control Systems** |  | 2026-09-16 | 2026-11-26 |  |  |
|  | 5 | **Primary Power Installation** |  | 2026-09-16 | 2026-10-11 |  |  |
|  | 1 | **Generator** |  | 2026-09-16 | 2026-09-21 |  |  |
| B3.2.32 11 23.01.35 |  | Standby Diesel Generator | 5d | 2026-09-16 | 2026-09-21 | B3.2.32 11 23.01.19, DMM2-Proc-Delv-3848 | 43d |
|  | 2 | **Fuel Tank** |  | 2026-09-22 | 2026-09-24 |  |  |
| B3.2.32 11 23.01.47 |  | Underground Fuel Tank | 2d | 2026-09-22 | 2026-09-24 | B3.2.32 11 23.01.19, B3.2.32 11 23.01.35 | 43d |
|  | 3 | **ATS** |  | 2026-10-10 | 2026-10-11 |  |  |
| B3.2.32 11 23.01.67 |  | Automatic Transfer Switch ATS | 2d | 2026-10-10 | 2026-10-11 | B3.2.32 11 23.01.19, B3.2.32 11 23.01.47, DMM2-Proc-Delv-3878 | 31d |
|  | 4 | **Motor Control Center (MCC)** |  | 2026-10-10 | 2026-10-11 |  |  |
| B3.2.32 11 23.01.89 |  | MCC Installation | 2d | 2026-10-10 | 2026-10-11 | B3.2.32 11 23.01.19, B3.2.32 11 23.01.67 FF, DMM2-Proc-Delv-3808 | 31d |
|  | Hand Holes | **Hand Holes** |  | 2026-09-19 | 2026-09-26 |  |  |
| B3.2. 26 05 43 .02 |  | Hand Hole (EHH-2) 400mm x 400mm x 600mm | 3d | 2026-09-19 | 2026-09-21 | B3.2.32 11 23.01.39, B3.2.31 23 16.01 | 32d |
| B3.2. 26 05 43 .01 |  | Hand Hole (EHH-1) 600mm x 600mm x 800mm | 3d | 2026-09-22 | 2026-09-26 | B3.2.32 11 23.01.39, B3.2.31 23 16.01, B3.2. 26 05 43 .02 | 32d |
|  | 2 | **Cable Tray, Conduit Installation & Power Cable Pulling** |  | 2026-10-31 | 2026-11-15 |  |  |
| B3.2.32 11 23.01.145 |  | 4x1Cx 630mm2 Cu/XLPE//PVC | 2d | 2026-10-31 | 2026-11-01 | B3.2.32 11 23.01.25, B3.2.32 11 23.01.27, B3.2.32 11 23.01.93, B3.2.32 11 23.01.73, B3.2.32 11 23.01.123, B3.2.32 11 23.01.137, B3.2. 26 05 43 .02, B3.2. 26 05 43 .01 | 3d |
| B3.2.32 11 23.01.153 |  | 4Cx 10mm2 Cu/XLPE/SWA/PVC | 2d | 2026-11-02 | 2026-11-03 | B3.2.32 11 23.01.25, B3.2.32 11 23.01.27, B3.2.32 11 23.01.93, B3.2.32 11 23.01.73, B3.2.32 11 23.01.123, B3.2.32 11 23.01.137, B3.2.32 11 23.01.145, B3.2. 26 05 43 .02, B3.2. 26 05 43 .01 | 3d |
| B3.2.32 11 23.01.159 |  | 4/Cx35mm²+1Cx16mm² | 2d | 2026-11-04 | 2026-11-05 | B3.2.32 11 23.01.25, B3.2.32 11 23.01.27, B3.2.32 11 23.01.93, B3.2.32 11 23.01.73, B3.2.32 11 23.01.123, B3.2.32 11 23.01.137, B3.2.32 11 23.01.153, B3.2. 26 05 43 .02, B3.2. 26 05 43 .01 | 3d |
| B3.2.32 11 23.01.167 |  | 4/Cx6mm² Cu/XLPE/PVC + 1Cx6mm² Cu/PVC | 2d | 2026-11-07 | 2026-11-08 | B3.2.32 11 23.01.25, B3.2.32 11 23.01.27, B3.2.32 11 23.01.93, B3.2.32 11 23.01.73, B3.2.32 11 23.01.123, B3.2.32 11 23.01.137, B3.2.32 11 23.01.159, B3.2. 26 05 43 .02, B3.2. 26 05 43 .01 | 3d |
| B3.2.32 11 23.01.175 |  | 4Cx 25mm2 + 1Cx16mm2 Cu/XLPE/PVC | 2d | 2026-11-09 | 2026-11-10 | B3.2.32 11 23.01.25, B3.2.32 11 23.01.27, B3.2.32 11 23.01.93, B3.2.32 11 23.01.73, B3.2.32 11 23.01.123, B3.2.32 11 23.01.137, B3.2.32 11 23.01.167, B3.2. 26 05 43 .02, B3.2. 26 05 43 .01 | 3d |
| B3.2.32 11 23.01.177 |  | 3Cx 6mm2 Cu/XLPE/PVC | 2d | 2026-11-11 | 2026-11-12 | B3.2.32 11 23.01.25, B3.2.32 11 23.01.27, B3.2.32 11 23.01.93, B3.2.32 11 23.01.73, B3.2.32 11 23.01.123, B3.2.32 11 23.01.137, B3.2.32 11 23.01.175, B3.2. 26 05 43 .02, B3.2. 26 05 43 .01 | 3d |
| B3.2.32 11 23.01.183 |  | 4Cx 25mm2 + 1Cx11mm2 Cu/XLPE/PVC | 2d | 2026-11-14 | 2026-11-15 | B3.2.32 11 23.01.25, B3.2.32 11 23.01.27, B3.2.32 11 23.01.93, B3.2.32 11 23.01.73, B3.2.32 11 23.01.123, B3.2.32 11 23.01.137, B3.2.32 11 23.01.177, B3.2. 26 05 43 .02, B3.2. 26 05 43 .01 | 3d |
| B3.2.32 11 23.01.191 |  | 3Cx 6mm2 Cu/XLPE/PVC | 2d | 2026-11-14 | 2026-11-15 | B3.2.32 11 23.01.25, B3.2.32 11 23.01.27, B3.2.32 11 23.01.93, B3.2.32 11 23.01.73, B3.2.32 11 23.01.123, B3.2.32 11 23.01.137, B3.2.32 11 23.01.183 SS, B3.2. 26 05 43 .02, B3.2. 26 05 43 .01 | 3d |
| B3.2.32 11 23.01.201 |  | 4Cx 10mm2 + 1Cx10mm2 Cu/XLPE/PVC | 2d | 2026-11-14 | 2026-11-15 | B3.2.32 11 23.01.25, B3.2.32 11 23.01.27, B3.2.32 11 23.01.93, B3.2.32 11 23.01.73, B3.2.32 11 23.01.123, B3.2.32 11 23.01.137, B3.2.32 11 23.01.191 SS, B3.2. 26 05 43 .02, B3.2. 26 05 43 .01 | 3d |
| B3.2.32 11 23.01.205 |  | 4Cx 6mm2 Cu/XLPE/SWA/PVC | 2d | 2026-11-14 | 2026-11-15 | B3.2.32 11 23.01.25, B3.2.32 11 23.01.27, B3.2.32 11 23.01.93, B3.2.32 11 23.01.73, B3.2.32 11 23.01.123, B3.2.32 11 23.01.137, B3.2.32 11 23.01.201 SS, B3.2. 26 05 43 .02, B3.2. 26 05 43 .01 | 3d |
|  | 1 | **Enclosed Switches and Circuit Breakers** |  | 2026-10-17 | 2026-10-21 |  |  |
| B3.2. 26 28 16 .02 |  | 40A, 3P, 60Hz Isolator/disconnect switches IP65 | 2d | 2026-10-17 | 2026-10-18 | B3.2.32 11 23.01.45 SS | 25d |
| B3.2. 26 28 16 .03 |  | 20A, 1P, 60Hz Isolator/disconnect switches IP65 | 2d | 2026-10-17 | 2026-10-18 | B3.2.32 11 23.01.45 SS | 25d |
| B3.2. 26 28 16 .01 |  | 630A, 3P, 60Hz Isolator/disconnect switches IP65 | 2d | 2026-10-20 | 2026-10-21 | B3.2.32 11 23.01.45 | 22d |
|  | Panelboards | **Panelboards** |  | 2026-10-27 | 2026-11-02 |  |  |
| B3.2. 26 24 16 .01 |  | DB-PW Panel: 100 Ampere, 3P, IP66,60Hz | 2d | 2026-10-27 | 2026-10-28 | B3.2.32 11 23.01.45, DMM2-Proc-Delv-3838 | 12d |
| B3.2. 26 24 16 .02 |  | DB-CL Panel: 100 Ampere, 3P, IP66,60Hz | 2d | 2026-10-29 | 2026-10-31 | B3.2.32 11 23.01.45, B3.2. 26 24 16 .01, DMM2-Proc-Delv-3838 | 12d |
| B3.2. 26 24 16 .03 |  | ELP Panel: phtocell , timer,40 Ampere, 3P, IP66,60Hz | 2d | 2026-11-01 | 2026-11-02 | B3.2.32 11 23.01.45, B3.2. 26 24 16 .02, DMM2-Proc-Delv-3838 | 12d |
|  | 3 | **Lighting** |  | 2026-10-20 | 2026-11-24 |  |  |
|  | 1 | **Poles** |  | 2026-11-16 | 2026-11-17 |  |  |
| B3.2.32 11 23.01.207 |  | 7m Single Arm Galvanized Steel Pole | 2d | 2026-11-16 | 2026-11-17 | B3.2.32 11 23.01.71, B3.2.32 11 23.01.145 SS, B3.2.32 11 23.01.153, B3.2.32 11 23.01.159, B3.2.32 11 23.01.167, B3.2.32 11 23.01.175, B3.2.32 11 23.01.177, B3.2.32 11 23.01.183, B3.2.32 11 23.01.191, B3.2.32 11 23.01.201, B3.2.32 11 23.01.205 | 3d |
|  | 2 | **Fixtures (LEDs)** |  | 2026-10-20 | 2026-11-22 |  |  |
| B3.2.32 11 23.01.290 |  | Install addressable fire alarm system including smoke detector | 2d | 2026-10-20 | 2026-10-21 | B3.2.32 11 23.01.45, DMM2-Proc-Delv-3858 | 22d |
| B3.2.32 11 23.01.211 |  | HIGHBAY LED 76 WATTS, IP65, 230V, 60HZ, 12000 LUMENS | 2d | 2026-11-18 | 2026-11-19 | B3.2.32 11 23.01.71, B3.2.32 11 23.01.145, B3.2.32 11 23.01.153, B3.2.32 11 23.01.159, B3.2.32 11 23.01.167, B3.2.32 11 23.01.175, B3.2.32 11 23.01.177, B3.2.32 11 23.01.183, B3.2.32 11 23.01.191, B3.2.32 11 23.01.201, B3.2.32 11 23.01.205, B3.2.32 11 23.01.207, B3.2.32 11 23.01.151 | 3d |
| B3.2.32 11 23.01.215 |  | HIGHBAY LED 76 WATTS, IP65, 230V, 60HZ, 12000 LUMENS | 2d | 2026-11-18 | 2026-11-19 | B3.2.32 11 23.01.71, B3.2.32 11 23.01.145, B3.2.32 11 23.01.153, B3.2.32 11 23.01.159, B3.2.32 11 23.01.167, B3.2.32 11 23.01.175, B3.2.32 11 23.01.177, B3.2.32 11 23.01.183, B3.2.32 11 23.01.191, B3.2.32 11 23.01.201, B3.2.32 11 23.01.205, B3.2.32 11 23.01.211 SS | 3d |
| B3.2.32 11 23.01.221 |  | Surfaced Mounted Light, IP65, 230V, 60Hz, 4200 Lumens | 2d | 2026-11-21 | 2026-11-22 | B3.2.32 11 23.01.71, B3.2.32 11 23.01.145, B3.2.32 11 23.01.153, B3.2.32 11 23.01.159, B3.2.32 11 23.01.167, B3.2.32 11 23.01.175, B3.2.32 11 23.01.177, B3.2.32 11 23.01.183, B3.2.32 11 23.01.191, B3.2.32 11 23.01.201, B3.2.32 11 23.01.205, B3.2.32 11 23.01.215 | 3d |
| B3.2.32 11 23.01.225 |  | Surfaced Mounted Light, IP65, 230V, 60Hz, 4200 lumens | 2d | 2026-11-21 | 2026-11-22 | B3.2.32 11 23.01.71, B3.2.32 11 23.01.145, B3.2.32 11 23.01.153, B3.2.32 11 23.01.159, B3.2.32 11 23.01.167, B3.2.32 11 23.01.175, B3.2.32 11 23.01.177, B3.2.32 11 23.01.183, B3.2.32 11 23.01.191, B3.2.32 11 23.01.201, B3.2.32 11 23.01.205, B3.2.32 11 23.01.221 SS | 3d |
| B3.2.32 11 23.01.229 |  | WALL MOUNTED LED FLOODLIGHT, IP65, 230V, 60HZ, 4300 LUMENS | 2d | 2026-11-21 | 2026-11-22 | B3.2.32 11 23.01.71, B3.2.32 11 23.01.145, B3.2.32 11 23.01.153, B3.2.32 11 23.01.159, B3.2.32 11 23.01.167, B3.2.32 11 23.01.175, B3.2.32 11 23.01.177, B3.2.32 11 23.01.183, B3.2.32 11 23.01.191, B3.2.32 11 23.01.201, B3.2.32 11 23.01.205, B3.2.32 11 23.01.225 SS | 3d |
| B3.2.32 11 23.01.233 |  | WALL MOUNTED BULK HEAD OUTDOOR LED, IP65,230V 60 HZ | 2d | 2026-11-21 | 2026-11-22 | B3.2.32 11 23.01.145, B3.2.32 11 23.01.153, B3.2.32 11 23.01.159, B3.2.32 11 23.01.167, B3.2.32 11 23.01.175, B3.2.32 11 23.01.177, B3.2.32 11 23.01.183, B3.2.32 11 23.01.191, B3.2.32 11 23.01.201, B3.2.32 11 23.01.205, B3.2.32 11 23.01.229 SS | 3d |
| B3.2.32 11 23.01.237 |  | EMERGENCY EXIT SIGN (CEILING OR WALL MOUNTED) IP65,230V 60 HZ | 2d | 2026-11-21 | 2026-11-22 | B3.2.32 11 23.01.71, B3.2.32 11 23.01.145, B3.2.32 11 23.01.153, B3.2.32 11 23.01.159, B3.2.32 11 23.01.167, B3.2.32 11 23.01.175, B3.2.32 11 23.01.177, B3.2.32 11 23.01.183, B3.2.32 11 23.01.191, B3.2.32 11 23.01.201, B3.2.32 11 23.01.205, B3.2.32 11 23.01.233 SS | 3d |
|  | 3 | **Wiring Devices** |  | 2026-11-23 | 2026-11-24 |  |  |
| B3.2.32 11 23.01.239 |  | 13A SINGLE SWITCH SOCKET OUTLET (WEATHER PROOF) | 2d | 2026-11-23 | 2026-11-24 | B3.2.32 11 23.01.71, B3.2.32 11 23.01.145, B3.2.32 11 23.01.153, B3.2.32 11 23.01.159, B3.2.32 11 23.01.167, B3.2.32 11 23.01.175, B3.2.32 11 23.01.177, B3.2.32 11 23.01.183, B3.2.32 11 23.01.191, B3.2.32 11 23.01.201, B3.2.32 11 23.01.205, B3.2.32 11 23.01.237 | 3d |
| B3.2.32 11 23.01.241 |  | 13A DOUBLE SWITCH SOCKET OUTLET | 2d | 2026-11-23 | 2026-11-24 | B3.2.32 11 23.01.71, B3.2.32 11 23.01.145, B3.2.32 11 23.01.153, B3.2.32 11 23.01.159, B3.2.32 11 23.01.167, B3.2.32 11 23.01.175, B3.2.32 11 23.01.177, B3.2.32 11 23.01.183, B3.2.32 11 23.01.191, B3.2.32 11 23.01.201, B3.2.32 11 23.01.205, B3.2.32 11 23.01.239 FF | 3d |
| B3.2.32 11 23.01.243 |  | 13A SINGLE SWITCH SOCKET OUTLET | 2d | 2026-11-23 | 2026-11-24 | B3.2.32 11 23.01.71, B3.2.32 11 23.01.145, B3.2.32 11 23.01.153, B3.2.32 11 23.01.159, B3.2.32 11 23.01.167, B3.2.32 11 23.01.175, B3.2.32 11 23.01.177, B3.2.32 11 23.01.183, B3.2.32 11 23.01.191, B3.2.32 11 23.01.201, B3.2.32 11 23.01.205, B3.2.32 11 23.01.241 FF | 3d |
| B3.2.32 11 23.01.245 |  | 13A SPUR OUTLET | 2d | 2026-11-23 | 2026-11-24 | B3.2.32 11 23.01.71, B3.2.32 11 23.01.145, B3.2.32 11 23.01.153, B3.2.32 11 23.01.159, B3.2.32 11 23.01.167, B3.2.32 11 23.01.175, B3.2.32 11 23.01.177, B3.2.32 11 23.01.183, B3.2.32 11 23.01.191, B3.2.32 11 23.01.201, B3.2.32 11 23.01.205, B3.2.32 11 23.01.243 FF | 3d |
| B3.2.32 11 23.01.247 |  | INDUSTRIAL SOCKET OUTLET, 400V, 3P, 60HZ, WITH GROUNDING | 2d | 2026-11-23 | 2026-11-24 | B3.2.32 11 23.01.245 FF | 3d |
|  | 4 | **Grounding & Lightning System** |  | 2026-11-25 | 2026-11-26 |  |  |
| B3.2.32 11 23.01.249 |  | Install Grounding and Lightning System | 2d | 2026-11-25 | 2026-11-26 | B3.2.31 23 16.01, B3.2.32 11 23.01.19, B3.2.32 11 23.01.247 | 3d |
|  | 6 | **Control & Instrumentation** |  | 2026-11-16 | 2026-11-19 |  |  |
| B3.2.32 11 23.01.219 |  | PLC Installation | 3d | 2026-11-16 | 2026-11-18 | B3.2.32 11 23.01.147, B3.2.32 11 23.01.155, B3.2.32 11 23.01.161, B3.2.32 11 23.01.169, B3.2.32 11 23.01.179, B3.2.32 11 23.01.185, B3.2.32 11 23.01.199, B3.2.32 11 23.01.203, B3.2.32 11 23.01.209, B3.2.32 11 23.01.213, B3.2.32 11 23.01.217, B3.2.32 11 23.01.157, B3.2.32 11 23.01.163, B3.2.32 11 23.01.171, B3.2.32 11 23.01.181, B3.2.32 11 23.01.193, B3.2.32 11 23.01.165, B3.2.32 11 23.01.187, B3.2.32 11 23.01.189, B3.2.32 11 23.01.195, B3.2.32 11 23.01.145, B3.2.32 11 23.01.153, B3.2.32 11 23.01.159, B3.2.32 11 23.01.167, B3.2.32 11 23.01.175, B3.2.32 11 23.01.177, B3.2.32 11 23.01.183, B3.2.32 11 23.01.191, B3.2.32 11 23.01.201, B3.2.32 11 23.01.205, B3.2. 22 05 23 .11, DMM2-Proc-Delv-3868, B3.2. 22 05 23 .12, B3.2.32 11 23.01.197 | 7d |
| B3.2.32 11 23.01.223 |  | Data Cabinet including all devices 12U | 2d | 2026-11-16 | 2026-11-17 | B3.2.32 11 23.01.147, B3.2.32 11 23.01.155, B3.2.32 11 23.01.161, B3.2.32 11 23.01.169, B3.2.32 11 23.01.179, B3.2.32 11 23.01.185, B3.2.32 11 23.01.199, B3.2.32 11 23.01.203, B3.2.32 11 23.01.209, B3.2.32 11 23.01.213, B3.2.32 11 23.01.217, B3.2.32 11 23.01.157, B3.2.32 11 23.01.163, B3.2.32 11 23.01.171, B3.2.32 11 23.01.181, B3.2.32 11 23.01.193, B3.2.32 11 23.01.165, B3.2.32 11 23.01.187, B3.2.32 11 23.01.189, B3.2.32 11 23.01.195, B3.2.32 11 23.01.145, B3.2.32 11 23.01.153, B3.2.32 11 23.01.159, B3.2.32 11 23.01.167, B3.2.32 11 23.01.175, B3.2.32 11 23.01.177, B3.2.32 11 23.01.183, B3.2.32 11 23.01.191, B3.2.32 11 23.01.201, B3.2.32 11 23.01.205, B3.2.32 11 23.01.219 SS | 7d |
| B3.2.32 11 23.01.227 |  | Data/ voice RJ45 outlet include CAT6A cable | 2d | 2026-11-16 | 2026-11-17 | B3.2.32 11 23.01.147, B3.2.32 11 23.01.155, B3.2.32 11 23.01.161, B3.2.32 11 23.01.169, B3.2.32 11 23.01.179, B3.2.32 11 23.01.185, B3.2.32 11 23.01.199, B3.2.32 11 23.01.203, B3.2.32 11 23.01.209, B3.2.32 11 23.01.213, B3.2.32 11 23.01.217, B3.2.32 11 23.01.157, B3.2.32 11 23.01.163, B3.2.32 11 23.01.171, B3.2.32 11 23.01.181, B3.2.32 11 23.01.193, B3.2.32 11 23.01.165, B3.2.32 11 23.01.187, B3.2.32 11 23.01.189, B3.2.32 11 23.01.195, B3.2.32 11 23.01.145, B3.2.32 11 23.01.153, B3.2.32 11 23.01.159, B3.2.32 11 23.01.167, B3.2.32 11 23.01.175, B3.2.32 11 23.01.177, B3.2.32 11 23.01.183, B3.2.32 11 23.01.191, B3.2.32 11 23.01.201, B3.2.32 11 23.01.205, B3.2.32 11 23.01.223 FF | 7d |
| B3.2.32 11 23.01.231 |  | Instrumentation for Process Systems (Field Instruments) | 2d | 2026-11-18 | 2026-11-19 | B3.2.32 11 23.01.147, B3.2.32 11 23.01.155, B3.2.32 11 23.01.161, B3.2.32 11 23.01.169, B3.2.32 11 23.01.179, B3.2.32 11 23.01.185, B3.2.32 11 23.01.199, B3.2.32 11 23.01.203, B3.2.32 11 23.01.209, B3.2.32 11 23.01.213, B3.2.32 11 23.01.217, B3.2.32 11 23.01.157, B3.2.32 11 23.01.163, B3.2.32 11 23.01.171, B3.2.32 11 23.01.181, B3.2.32 11 23.01.193, B3.2.32 11 23.01.165, B3.2.32 11 23.01.187, B3.2.32 11 23.01.189, B3.2.32 11 23.01.195, B3.2.32 11 23.01.145, B3.2.32 11 23.01.153, B3.2.32 11 23.01.159, B3.2.32 11 23.01.167, B3.2.32 11 23.01.175, B3.2.32 11 23.01.177, B3.2.32 11 23.01.183, B3.2.32 11 23.01.191, B3.2.32 11 23.01.201, B3.2.32 11 23.01.205, B3.2.32 11 23.01.227, B3.2. 22 05 23 .11, B3.2.32 11 23.01.270, B3.2.32 11 23.01.280, B3.2. 22 05 23 .12 | 7d |
|  | 7 | **Control Cable Pulling & Termination** |  | 2026-11-21 | 2026-11-22 |  |  |
| B3.2.32 11 23.01.235 |  | Process Control Wiring | 2d | 2026-11-21 | 2026-11-22 | B3.2.32 11 23.01.219, B3.2.32 11 23.01.223, B3.2.32 11 23.01.227, B3.2.32 11 23.01.231, B3.2.32 11 23.01.173 | 7d |
|  | 6 | **Final Fixtures** |  | 2026-10-11 | 2026-11-07 |  |  |
|  | 1 | **Door & Louver Installation** |  | 2026-10-17 | 2026-10-26 |  |  |
| B3.2.32 11 23.01.59 |  | Steel Door SD1 For chlorination size (2000x2300)mm | 2d | 2026-10-17 | 2026-10-18 | B3.2.32 11 23.01.43, B3.2.32 11 23.01.45 SS | 29d |
| B3.2.32 11 23.01.75 |  | Steel Door SD1 size (2000x2550)mm | 2d | 2026-10-19 | 2026-10-20 | B3.2.32 11 23.01.43, B3.2.32 11 23.01.45 SS, B3.2.32 11 23.01.59 | 29d |
| B3.2.32 11 23.01.95 |  | Steel Door SD2 size (900x2200)mm | 2d | 2026-10-20 | 2026-10-21 | B3.2.32 11 23.01.43, B3.2.32 11 23.01.45, B3.2.32 11 23.01.75 SS | 28d |
| B3.2.32 11 23.01.107 |  | 90 mins fire rated Steel Door SD3 size (1000x2200)mm | 2d | 2026-10-22 | 2026-10-24 | B3.2.32 11 23.01.43, B3.2.32 11 23.01.45, B3.2.32 11 23.01.95 | 28d |
| B3.2.32 11 23.01.119 |  | Sand trap louver 1500mm x 1500mm | 2d | 2026-10-22 | 2026-10-24 | B3.2.32 11 23.01.43, B3.2.32 11 23.01.45, B3.2.32 11 23.01.107 FF, DMM2-Proc-Delv-7304 | 28d |
| B3.2.32 11 23.01.131 |  | Louver 3400mm x 2800mm | 2d | 2026-10-25 | 2026-10-26 | B3.2.32 11 23.01.43, B3.2.32 11 23.01.45, B3.2.32 11 23.01.119, DMM2-Proc-Delv-7394 | 28d |

| ID | WBS | Task | Duration | Start | Finish | Predecessors | Complete | Total float |
| --- | --- | --- | --- | --- | --- | --- | --- | --- |
| B3.2.32 11 23.01.143 |  | Steel shutter Door SD4 size (3200x3000)mm | 2d | 2026-10-25 | 2026-10-26 | B3.2.32 11 23.01.43, B3.2.32 11 23.01.45, B3.2.32 11 23.01.131 FF, DMM2-Proc-Delv-7295 |  | 28d |
|  | 7 | **Ladders** |  | 2026-10-11 | 2026-10-21 |  |  |  |
| B3.2.32 11 23.01.61 |  | 5m External Galvanized Steel Ladder | 2d | 2026-10-11 | 2026-10-12 | B3.2.32 11 23.01.43, DMM2-Proc-Delv-7294 |  | 20d |
| B3.2.32 11 23.01.77 |  | 3m External Galvanized Steel Ladder | 2d | 2026-10-13 | 2026-10-14 | B3.2.32 11 23.01.43, B3.2.32 11 23.01.61, DMM2-Proc-Delv-7294 |  | 20d |
| B3.2.32 11 23.01.97 |  | 4.3m External Galvanized Steel Ladder - Potable Water Tank | 2d | 2026-10-15 | 2026-10-17 | B3.2.32 11 23.01.43, B3.2.32 11 23.01.77, DMM2-Proc-Delv-7294 |  | 20d |
| B3.2.32 11 23.01.109 |  | 4.5m External Stainless Steel A36 Ladder | 2d | 2026-10-18 | 2026-10-19 | B3.2.32 11 23.01.43, B3.2.32 11 23.01.97 |  | 20d |
| B3.2.32 11 23.01.121 |  | 4.3m External Galvanized Steel Ladder - Chlorination | 2d | 2026-10-20 | 2026-10-21 | B3.2.32 11 23.01.43, B3.2.32 11 23.01.109, DMM2-Proc-Delv-7294 |  | 20d |
|  | 2 | **Handrails** |  | 2026-10-22 | 2026-10-24 |  |  |  |
| B3.2.32 11 23.01.133 |  | Handrail with approximate height 1.1m | 2d | 2026-10-22 | 2026-10-24 | B3.2.32 11 23.01.43, B3.2.32 11 23.01.121, DMM2-Proc-Delv-7296, DMM2-Proc-Delv-7298 |  | 20d |
|  | 6 | **Signage** |  | 2026-10-25 | 2026-11-07 |  |  |  |
| B3.2.32 11 23.01.141 |  | Aluminum exterior signage size (300x150)mm | 2d | 2026-10-25 | 2026-10-26 | B3.2.32 11 23.01.43, B3.2.32 11 23.01.133 |  | 20d |
| B3.2.32 11 23.01.151 |  | Aluminum interior signage size (300x150)mm | 2d | 2026-11-05 | 2026-11-07 | B3.2.32 11 23.01.43, B3.2.32 11 23.01.141, B3.2.32 11 23.01.91 |  | 12d |
|  | 5 | **Engineering Backfilling** |  | 2026-10-17 | 2026-10-18 |  |  |  |
| B3.2.32 11 23.01.135 |  | Backfilling around structures | 2d | 2026-10-17 | 2026-10-18 | B3.2.32 11 23.01.13, B3.2.32 11 23.01.17, B3.2.32 11 23.01.23, B3.2.32 11 23.01.37, B3.2.32 11 23.01.57, B3.2.32 11 23.01.87, B3.2.32 11 23.01.105, B3.2.32 11 23.01.117, B3.2.32 11 23.01.129, B3.2.32 11 23.01.69 |  | 35d |
|  | Demolishion | **Demolishing and Site Clearing** |  | 2026-03-06 | 2026-06-22 |  |  |  |
| B1.1.02 41 00.60 |  | Removal of culvert's wing walls | 4.5d | 2026-03-06 A | 2026-03-12 A | B1.1.02 41 00.50 | 100% |  |
| B1.1.02 41 00.90 |  | Dismantling and relocation of existing inlets | 26.25d | 2026-03-07 A | 2026-04-13 A | B1.1.02 41 00.80 | 100% |  |
| B1.1.02 41 00.50 |  | Removal of riprap | 6d | 2026-04-22 A | 2026-04-28 A | B1.1.02 41 00.40 | 100% |  |
| B1.1.02 41 00.20 |  | Removal of curbstone | 4d | 2026-05-16 A | 2026-05-19 A | B1.1.02 41 00.01 | 100% |  |
| B1.1.02 41 00.30 |  | Removal of bituminous concrete wearing course | 4d | 2026-05-20 A | 2026-05-24 A | B1.1.02 41 00.20 | 100% |  |
| B1.1.02 41 00.40 |  | Removal of concrete protection | 6d | 2026-05-21 A | 2026-06-01 A | B1.1.02 41 00.30 | 100% |  |
| B1.1.02 41 00.100 |  | Dismantling and level adjustment for storm manholes | 5d | 2026-06-17 A | 2026-06-22 A | B1.1.02 41 00.90 | 100% |  |
| B1.1.02 41 00.70 |  | Selective Tree Removal | 3d | 2026-06-17 A | 2026-06-20 A | B1.1.02 41 00.60 | 100% |  |
| B1.1.02 41 00.80 |  | Removal of traffic signs | 2d | 2026-06-21 A | 2026-06-22 A | B1.1.02 41 00.70 | 100% |  |
|  | Zone 03 | **Zone 03** |  | 2025-09-22 | 2026-11-29 |  |  |  |
|  | Dewatering | **Earthworks & Site Grading** |  | 2025-09-22 | 2026-04-04 |  |  |  |
| B1.1.31 23 19.2 |  | Dewatering | 27d | 2025-09-22 A | 2025-10-23 A | B1.1.31 23 19.02 | 100% |  |
| B1.1.31 23 16.2 |  | Excavation (all types of soil) | 93.08d | 2025-10-19 A | 2026-02-04 A | B1.1.31 23 19.2, B1.1.31 23 16.02 SS | 100% |  |
| B1.1.31 23 23.2 |  | Engineering Backfiling - Road 02 | 95.6d | 2025-10-20 A | 2026-02-09 A | B1.1.31 23 16.2 | 100% |  |
| B1.1.31 23 23.142 |  | Engineering Backfiling - Customs Road 04 & Road 05 | 90.6d | 2025-10-29 A | 2026-02-12 A | B1.1.31 23 23.2 | 100% |  |
| B1.1.31 23 23.152 |  | Engineering Backfiling - Customs Road 06 | 89.6d | 2025-11-03 A | 2026-02-16 A | B1.1.31 23 23.142 | 100% |  |
| B1.1.31 23 23.122 |  | Engineering Backfiling - Customs Road 01 | 89.1d | 2025-11-08 A | 2026-02-21 A | B1.1.31 23 23.132 | 100% |  |
| B1.1.31 23 23.132 |  | Engineering Backfiling - Customs Road 02 | 85.6d | 2025-11-13 A | 2026-02-24 A | B1.1.31 23 23.152 | 100% |  |
| B1.1.31 23 23.162 |  | Engineering Backfiling - Sewerage Lift Station | 18.1d | 2026-03-05 A | 2026-04-04 A | B1.1.31 23 23.122 | 100% |  |
|  | Road 02 | **Road 02** |  | 2025-11-28 | 2026-11-19 |  |  |  |
|  | Wet Networks | **Wet Networks** |  | 2026-02-01 | 2026-11-14 |  |  |  |
|  | Sewerage Network | **Sewerage Network** |  | 2026-02-04 | 2026-09-22 |  |  |  |
|  | GRP | **GRP Pipes** |  | 2026-02-04 | 2026-09-22 |  |  |  |
|  | 200 | **?200** |  | 2026-02-04 | 2026-09-22 |  |  |  |
|  | 3 | **Depth From 4.5m to 5.5m** |  | 2026-02-04 | 2026-09-22 |  |  |  |
| B5.33 31 00.02.05.1 |  | Excavation | 29.84d | 2026-02-04 A | 2026-03-22 A | B1.1.31 23 23.2 | 100% |  |
| B5.33 31 00.02.05.2 |  | Sand Bedding | 28.99d | 2026-02-07 A | 2026-03-25 A | B5.33 31 00.02.05.1 | 100% |  |
| B5.33 31 00.02.05.3 |  | Pipe Laying | 29.99d | 2026-02-08 A | 2026-03-28 A | B5.33 31 00.02.05.2 | 100% |  |
| B5.33 31 00.02.05.4 |  | Embedment & Test | 35.65d | 2026-04-02 A | 2026-05-13 A | B5.33 31 00.02.05.3 | 100% |  |
| B5.33 31 00.02.05.5 |  | Backfilling & Warrning Tape | 141.41d | 2026-04-05 A | 2026-09-22 | B5.33 31 00.02.05.4 | 9% | 110d |
|  | Manholes | **Manholes ?1200** |  | 2026-02-07 | 2026-09-21 |  |  |  |
|  | 4 | **Depth From 4.5m to 5.5m** |  | 2026-02-07 | 2026-09-20 |  |  |  |
| B6.33 05 39.01.577 |  | Excavation & Compaction | 1d | 2026-02-07 A | 2026-02-08 A | B5.33 31 00.02.05.1 | 100% |  |
| B6.33 05 39.01.587 |  | Blinding Conc, & RC Base | 32.57d | 2026-04-13 A | 2026-05-20 A | B6.33 05 39.01.577 | 100% |  |
| B6.33 05 39.01.597 |  | Manhole Installation | 28.38d | 2026-04-20 A | 2026-05-23 A | B6.33 05 39.01.587 | 100% |  |
| B6.33 05 39.01.607 |  | Test, Internal Finishing, Benching & Cover | 90.56d | 2026-06-06 A | 2026-09-19 | B6.33 05 39.01.597 | 40% | 113.44d |
| B6.33 05 39.01.617 |  | Backfilling | 78.41d | 2026-06-20 A | 2026-09-20 | B6.33 05 39.01.607 SS, B5.33 31 00.02.05.5 SS | 40% | 112.92d |
|  | 1 | **Depth From 5.5m to 6.5m** |  | 2026-03-02 | 2026-09-21 |  |  |  |
| B6.33 05 39.01.627 |  | Excavation & Compaction | 2.5d | 2026-03-02 A | 2026-03-05 A | B6.33 05 39.01.577 | 100% |  |
| B6.33 05 39.01.637 |  | Blinding Conc, & RC Base | 3d | 2026-04-29 A | 2026-05-02 A | B6.33 05 39.01.627 | 100% |  |
| B6.33 05 39.01.647 |  | Manhole Installation | 7.5d | 2026-05-03 A | 2026-05-11 A | B6.33 05 39.01.637 | 100% |  |
| B6.33 05 39.01.657 |  | Test, Internal Finishing, Benching & Cover | 91.04d | 2026-06-06 A | 2026-09-20 | B6.33 05 39.01.647 | 24% | 112.96d |
| B6.33 05 39.01.667 |  | Backfilling | 77.88d | 2026-06-21 A | 2026-09-20 | B6.33 05 39.01.1467, B6.33 05 39.01.657 SS, B6.33 05 39.01.617 SS | 38% | 112.92d |
|  | 1 | **Depth From 5.5m to 6.5m Backdrop** |  | 2026-05-20 | 2026-09-21 |  |  |  |
| B6.33 05 39.01.677 |  | Excavation & Compaction | 2d | 2026-05-20 A | 2026-05-21 A | B6.33 05 39.01.627 | 100% |  |
| B6.33 05 39.01.687 |  | Blinding Conc, & RC Base | 98.04d | 2026-05-23 A | 2026-09-19 | B6.33 05 39.01.677 | 36% | 113.96d |
| B6.33 05 39.01.697 |  | Manhole Installation | 94.52d | 2026-05-31 A | 2026-09-17 | B6.33 05 39.01.687 SS | 36% | 114d |
| B6.33 05 39.01.707 |  | Test, Internal Finishing, Benching & Cover | 80.36d | 2026-06-18 A | 2026-09-20 | B6.33 05 39.01.697 SS | 36% | 112.48d |
| B6.33 05 39.01.717 |  | Backfilling | 79.84d | 2026-06-20 A | 2026-09-21 | B6.33 05 39.01.1667, B6.33 05 39.01.707 SS, B6.33 05 39.01.667 SS | 36% | 111.96d |
|  | Stormwater Network | **Stormwater Network** |  | 2026-02-06 | 2026-10-01 |  |  |  |
|  | GRP | **GRP** |  | 2026-02-06 | 2026-05-21 |  |  |  |
|  | ?40011 | **?1400** |  | 2026-02-06 | 2026-05-21 |  |  |  |
|  | 3 | **Depth From 2.5m to 3.5m** |  | 2026-02-06 | 2026-05-21 |  |  |  |
| B6.33 42 11.27-1.1 |  | Excavation | 19.55d | 2026-02-06 A | 2026-03-05 A | B6.33 05 39.01.677 | 100% |  |
| B6.33 42 11.27-1.3 |  | Sand Bedding | 18.4d | 2026-02-08 A | 2026-03-05 A | B6.33 42 11.27-1.1 | 100% |  |

| ID | WBS | Task | Duration | Start | Finish | Predecessors | Complete | Total float |
| --- | --- | --- | --- | --- | --- | --- | --- | --- |
| B6.33 42 11.27-1.5 |  | Pipe Laying | 15.4d | 2026-02-11 A | 2026-03-05 A | B6.33 42 11.27-1.3 | 100% |  |
| B6.33 42 11.27-1.7 |  | Embedment & Test | 58.33d | 2026-03-05 A | 2026-05-20 A | B6.33 42 11.27-1.5 | 100% |  |
| B6.33 42 11.27-1.9 |  | Backfilling & Warrning Tape | 47.1d | 2026-03-28 A | 2026-05-21 A | B6.33 42 11.27-1.7, B6.33 42 11.34-1.9 | 100% |  |
|  | ?400111 | **?1500** |  | 2026-02-08 | 2026-05-20 |  |  |  |
|  | 3 | **Depth From 2.5m to 3.5m** |  | 2026-02-08 | 2026-05-20 |  |  |  |
| B6.33 42 11.27-1.2 |  | Excavation | 17.72d | 2026-02-08 A | 2026-03-04 A | B6.33 42 11.27-1.1 | 100% |  |
| B6.33 42 11.27-1.4 |  | Sand Bedding | 14.72d | 2026-02-11 A | 2026-03-04 A | B6.33 42 11.27-1.2 | 100% |  |
| B6.33 42 11.27-1.6 |  | Pipe Laying | 12.87d | 2026-02-13 A | 2026-03-04 A | B6.33 42 11.27-1.4 | 100% |  |
| B6.33 42 11.27-1.8 |  | Embedment & Test | 58.39d | 2026-03-04 A | 2026-05-20 A | B6.33 42 11.27-1.6 | 100% |  |
| B6.33 42 11.27-1.10 |  | Backfilling & Warrning Tape | 51.58d | 2026-03-16 A | 2026-05-20 A | B6.33 42 11.27-1.8, B6.33 42 11.27-1.9 | 100% |  |
|  | Strom Manholes | **Manholes** |  | 2026-02-11 | 2026-09-19 |  |  |  |
|  | 3 | **?2000** |  | 2026-02-11 | 2026-09-19 |  |  |  |
|  | 3 | **Depth From 2.5m to 3.5m** |  | 2026-02-11 | 2026-09-19 |  |  |  |
| B6.33 05 39.01.3527 |  | Excavation & Compaction | 1d | 2026-02-11 A | 2026-02-12 A | B6.33 42 11.27-1.2 | 100% |  |
| B6.33 05 39.01.3537 |  | Blinding Conc, & RC Base | 3d | 2026-05-20 A | 2026-05-23 A | B6.33 05 39.01.3527 | 100% |  |
| B6.33 05 39.01.3547 |  | Manhole Installation | 97d | 2026-05-24 A | 2026-09-19 | B6.33 05 39.01.3537 | 80% | 113d |
| B6.33 05 39.01.3557 |  | Test, Internal Finishing, Benching & Cover | 79.6d | 2026-06-17 A | 2026-09-19 | B6.33 05 39.01.3547 SS | 80% | 113d |
| B6.33 05 39.01.3567 |  | Backfilling | 75.6d | 2026-06-22 A | 2026-09-19 | B6.33 42 11.27-1.10, B6.33 05 39.01.3557 SS | 80% | 113d |
|  | Catch Basins | **Catch Basins** |  | 2026-03-05 | 2026-10-01 |  |  |  |
|  | Sing | **Single** |  | 2026-06-10 | 2026-09-19 |  |  |  |
| B6.33 05 40.01.370 |  | Excavation, Compaction & Vapour Barrier | 86d | 2026-06-10 A | 2026-09-19 | B6.33 05 39.01.3527 | 80% | 103d |
| B6.33 05 40.01.380 |  | Blinding Conc. | 82d | 2026-06-15 A | 2026-09-19 | B6.33 05 40.01.370 SS | 80% | 113d |
| B6.33 05 40.01.390 |  | Catch Basin Installation | 81d | 2026-06-16 A | 2026-09-19 | B6.33 05 40.01.380 SS | 80% | 113d |
| B6.33 05 40.01.400 |  | Backfilling, DI Frame & Grate Cover Fixing | 78d | 2026-06-18 A | 2026-09-17 | B6.33 42 11.36-1.22, B6.33 42 11.35-1.22, B6.33 05 40.01.390 SS | 80% | 7d |
|  | Dou | **Double** |  | 2026-09-16 | 2026-10-01 |  |  |  |
| B6.33 05 40.01.880 |  | Backfilling, DI Frame & Grate Cover Fixing | 6d | 2026-09-16 | 2026-09-22 | B6.33 42 11.35-1.22, B6.33 42 11.36-1.22 |  | 3d |
| B6.33 05 40.01.850 |  | Excavation, Compaction & Vapour Barrier | 3d | 2026-09-20 | 2026-09-22 | B6.33 05 40.01.370 |  | 103d |
| B6.33 05 40.01.860 |  | Blinding Conc. | 3d | 2026-09-24 | 2026-09-27 | B6.33 05 40.01.850 |  | 103d |
| B6.33 05 40.01.870 |  | Catch Basin Installation | 4d | 2026-09-28 | 2026-10-01 | B6.33 05 40.01.860 |  | 103d |
|  | UPVC | **UPVC** |  | 2026-03-05 | 2026-10-01 |  |  |  |
|  | UPVC300 | **?300 From 0.0 to 1.5m** |  | 2026-03-05 | 2026-10-01 |  |  |  |
| B6.33 42 11.35-1.22 |  | Fittings & Pipe Installation | 4.5d | 2026-03-05 A | 2026-03-12 A | B6.33 42 11.35-1.20 SS | 100% |  |
| B6.33 42 11.35-1.20 |  | Catch Basin Opening Prep. | 89d | 2026-06-07 A | 2026-10-01 | B6.33 05 40.01.870 FF | 68% | 103d |
|  | UPVC3001 | **?400 From 0.0 to 1.5m** |  | 2026-03-07 | 2026-09-19 |  |  |  |
| B6.33 42 11.36-1.22 |  | Fittings & Pipe Installation | 5.25d | 2026-03-07 A | 2026-03-15 A | B6.33 42 11.35-1.22, B6.33 42 11.36-1.20 SS | 100% |  |
| B6.33 42 11.36-1.20 |  | Catch Basin Opening Prep. | 89d | 2026-06-07 A | 2026-09-19 | B6.33 42 11.35-1.20 SS | 68% | 113d |
|  | Potable Water | **Potable Water Network** |  | 2026-02-01 | 2026-10-27 |  |  |  |
|  | HDPE | **HDPE Pipes** |  | 2026-02-01 | 2026-09-19 |  |  |  |
|  | ?110mm | **?110mm** |  | 2026-02-01 | 2026-09-19 |  |  |  |
|  | Depth: 0.0m - 1.5m | **Depth: 0.0m - 1.5m** |  | 2026-02-05 | 2026-09-19 |  |  |  |
| B3.33 14 13.01.0101 |  | Excavation | 0.5d | 2026-02-05 A | 2026-02-07 A | B1.2.32 11 26.01.10 SS | 100% |  |
| B3.33 14 13.01.0105 |  | Sand Bedding | 0.5d | 2026-02-07 A | 2026-02-08 A | B3.33 14 13.01.0101 | 100% |  |
| B3.33 14 13.01.0109 |  | Pipe Laying | 30.66d | 2026-04-15 A | 2026-05-20 A | B3.33 14 13.01.0105 | 100% |  |
| B3.33 14 13.01.01013 |  | Embedment & Test | 24.66d | 2026-04-22 A | 2026-05-21 A | B3.33 14 13.01.0109 | 100% |  |
| B3.33 14 13.01.01017 |  | Backfilling & Warrning Tape | 121.11d | 2026-04-25 A | 2026-09-19 | B3.33 14 13.01.01013 | 67% | 95.34d |
|  | Depth: 1.51m - 2.5m | **Depth: 1.51m - 2.5m** |  | 2026-02-01 | 2026-09-17 |  |  |  |
| B3.33 14 13.01.0103 |  | Excavation | 82.04d | 2026-02-01 A | 2026-05-20 A | B3.33 14 13.01.0101 | 100% |  |
| B3.33 14 13.01.0107 |  | Sand Bedding | 79.29d | 2026-02-03 A | 2026-05-20 A | B3.33 14 13.01.0103 | 100% |  |
| B3.33 14 13.01.01011 |  | Pipe Laying | 127.65d | 2026-04-16 A | 2026-09-17 | B3.33 14 13.01.0107 | 91% | 96d |
| B3.33 14 13.01.01015 |  | Embedment & Test | 126.82d | 2026-04-18 A | 2026-09-17 | B3.33 14 13.01.01011 FF, B3.33 14 19.01.112 SS | 91% | 96d |
| B3.33 14 13.01.01019 |  | Backfilling & Warrning Tape | 118d | 2026-04-28 A | 2026-09-17 | B3.33 14 13.01.01015 FF | 91% | 96d |
|  | Crossing | **Plots and Buildings Crossing** |  | 2026-04-12 | 2026-10-01 |  |  |  |
| B3.33 14 13.02.22 |  | Earthwork | 6d | 2026-04-12 A | 2026-04-19 A | B3.33 14 13.01.0103 | 100% |  |
| B3.33 14 13.02.23 |  | Sand Bedding | 3d | 2026-09-20 | 2026-09-22 | B3.33 14 13.02.22, B3.33 05 63.02.27 |  | 85d |
| B3.33 14 13.02.24 |  | Tee, Pipe (Crossing) Installation & Backfilling | 7d | 2026-09-24 | 2026-10-01 | B3.33 14 13.02.23 |  | 85d |
|  | Valves & Chambers | **Valves & Chambers** |  | 2026-06-29 | 2026-10-27 |  |  |  |
|  | GV | **Gate Valves** |  | 2026-06-29 | 2026-10-08 |  |  |  |
|  | 1 | **Gate valves dia (110) mm** |  | 2026-06-29 | 2026-10-08 |  |  |  |
| B3.33 14 19.01.112 |  | Burried Isolation Valve Installation | 69.82d | 2026-06-29 A | 2026-09-19 | B3.33 14 13.01.01011 SS | 75% | 107d |
| B3.33 14 19.01.113 |  | Spindle & Surface Box | 3d | 2026-10-06 | 2026-10-08 | B3.33 14 19.01.112, B3.33 05 63.02.39 |  | 94d |
|  | 2 | **Air Valves** |  | 2026-09-16 | 2026-10-10 |  |  |  |
|  | 4 | **Air valves on less than 315 mm. (In Chamber)** |  | 2026-09-16 | 2026-10-10 |  |  |  |
| B3.33 05 63.02.27 |  | Land Adjustment & Compaction | 3d | 2026-09-16 | 2026-09-19 | B3.33 14 13.01.0103 |  | 82d |
| B3.33 05 63.02.25 |  | Foundations | 4d | 2026-09-20 | 2026-09-24 | B3.33 05 63.02.27, B3.33 14 13.02.22 |  | 82d |
| B3.33 05 63.02.28 |  | Chambers Walls Conc Cast In Situ | 4d | 2026-09-26 | 2026-09-29 | B3.33 05 63.02.25 |  | 82d |
| B3.33 05 63.02.26 |  | Chamber Curing, Finishing & Steel Cover | 5d | 2026-09-30 | 2026-10-05 | B3.33 05 63.02.28 |  | 82d |
| B3.33 05 63.02.29 |  | Valve & Fitting Installation | 4d | 2026-10-06 | 2026-10-10 | B3.33 05 63.02.26, B3.33 14 13.02.24 |  | 82d |
|  | Washout Valves | **Washout Valves** |  | 2026-09-16 | 2026-10-27 |  |  |  |
|  | 4 | **Washout valves on 110-400 mm. (In Chamber)** |  | 2026-09-16 | 2026-10-27 |  |  |  |
| B3.33 05 63.01.22 |  | Land Adjustment & Compaction | 3d | 2026-09-16 | 2026-09-19 | B3.33 14 13.02.22 |  | 87d |

| ID | WBS | Task | Duration | Start | Finish | Predecessors | Complete | Total float |
| --- | --- | --- | --- | --- | --- | --- | --- | --- |
| B3.33 05 63.01.20 |  | Foundations | 4d | 2026-09-20 | 2026-09-24 | B3.33 05 63.01.22 |  | 87d |
| B3.33 05 63.01.23 |  | Chambers Walls Conc Cast In Situ | 4d | 2026-09-26 | 2026-09-29 | B3.33 05 63.01.20 |  | 87d |
| B3.33 05 63.01.21 |  | Chamber Curing, Finishing & Steel Cover | 4d | 2026-09-30 | 2026-10-04 | B3.33 05 63.01.23, B3.33 14 13.01.01019 |  | 87d |
| B3.33 05 63.01.24 |  | Valve & Fitting Installation | 4d | 2026-10-24 | 2026-10-27 | B3.33 05 63.01.21, B3.33 14 13-199, B3.33 05 63.02.29 |  | 71d |
|  | Fire Fighting | **Fire Fighting Network** |  | 2026-02-03 | 2026-10-17 |  |  |  |
|  | HDPE | **HDPE Pipes** |  | 2026-02-03 | 2026-06-15 |  |  |  |
|  | ?250mm | **?250mm** |  | 2026-02-03 | 2026-06-15 |  |  |  |
|  | Depth: 0.0m - 1.5m | **Depth: 0.0m - 1.5m** |  | 2026-02-04 | 2026-06-15 |  |  |  |
| B3.1. 33 14 13-4 |  | Excavation | 31.95d | 2026-02-04 A | 2026-03-26 A | B3.33 14 13.01.0101, B3.33 14 13.01.0103 | 100% |  |
| B3.1. 33 14 13-8 |  | Sand Bedding | 30.2d | 2026-02-08 A | 2026-03-28 A | B3.1. 33 14 13-4 | 100% |  |
| B3.1. 33 14 13-12 |  | Pipe Laying | 29.7d | 2026-02-11 A | 2026-03-30 A | B3.1. 33 14 13-8 | 100% |  |
| B3.1. 33 14 13-16 |  | Embedment & Test | 3d | 2026-04-05 A | 2026-04-07 A | B3.1. 33 14 13-12, B3.33 14 19.01.128 | 100% |  |
| B3.1. 33 14 13-20 |  | Backfilling & Warrning Tape | 5d | 2026-06-09 A | 2026-06-15 A | B3.1. 33 14 13-16, B3.1. 33 14 13..19 | 100% |  |
|  | Depth: 1.51m - 2.5m | **Depth: 1.51m - 2.5m** |  | 2026-02-03 | 2026-06-01 |  |  |  |
| B3.1. 33 14 13-6 |  | Excavation | 79.61d | 2026-02-03 A | 2026-05-20 A | B3.33 14 13.01.0101, B3.33 14 13.01.0103 | 100% |  |
| B3.1. 33 14 13-10 |  | Sand Bedding | 78.86d | 2026-02-07 A | 2026-05-23 A | B3.1. 33 14 13-6 | 100% |  |
| B3.1. 33 14 13-14 |  | Pipe Laying | 78.36d | 2026-02-10 A | 2026-05-25 A | B3.1. 33 14 13-10 | 100% |  |
| B3.1. 33 14 13-18 |  | Embedment & Test | 21.5d | 2026-05-02 A | 2026-05-31 A | B3.1. 33 14 13-14, B3.33 14 19.01.128 | 100% |  |
| B3.1. 33 14 13-22 |  | Backfilling & Warrning Tape | 15.25d | 2026-05-10 A | 2026-06-01 A | B3.1. 33 14 13-18, B3.33 05 63.01.34 | 100% |  |
|  | Valves & Chambers | **Valves & Chambers** |  | 2026-04-29 | 2026-10-17 |  |  |  |
|  | GV | **Gate Valves** |  | 2026-04-29 | 2026-09-20 |  |  |  |
|  | 1 | **Gate valves dia (250) mm** |  | 2026-04-29 | 2026-09-20 |  |  |  |
| B3.33 14 19.01.128 |  | Burried Isolation Valve Installation | 21d | 2026-04-29 A | 2026-05-24 A | B3.1. 33 14 13-12, B3.1. 33 14 13-14 | 100% |  |
| B3.33 14 19.01.129 |  | Spindle & Surface Box | 4d | 2026-09-16 | 2026-09-20 | B3.33 14 19.01.128 |  | 97d |
|  | 2 | **Air Valves** |  | 2026-09-16 | 2026-10-17 |  |  |  |
|  | 4 | **Air valves on less than 315 mm. (In Chamber)** |  | 2026-09-16 | 2026-10-17 |  |  |  |
| B3.33 05 63.02.57 |  | Land Adjustment & Compaction | 4d | 2026-09-16 | 2026-09-20 | B3.1. 33 14 13-18, B3.1. 33 14 13-16 |  | 59d |
| B3.33 05 63.02.55 |  | Foundations | 5d | 2026-09-21 | 2026-09-27 | B3.33 05 63.02.57 |  | 59d |
| B3.33 05 63.02.58 |  | Chambers Walls Conc Cast In Situ | 5d | 2026-09-28 | 2026-10-03 | B3.33 05 63.02.55 |  | 59d |
| B3.33 05 63.02.56 |  | Chamber Curing, Finishing & Steel Cover | 6d | 2026-10-04 | 2026-10-10 | B3.33 05 63.02.58 |  | 59d |
| B3.33 05 63.02.59 |  | Valve & Fitting Installation | 6d | 2026-10-11 | 2026-10-17 | B3.33 05 63.02.56 |  | 59d |
|  | Washout Valves | **Washout Valves** |  | 2026-09-16 | 2026-10-17 |  |  |  |
|  | 4 | **Washout valves on 110-400 mm. (In Chamber)** |  | 2026-09-16 | 2026-10-17 |  |  |  |
| B3.33 05 63.01.52 |  | Land Adjustment & Compaction | 4d | 2026-09-16 | 2026-09-20 | B3.1. 33 14 13-18, B3.1. 33 14 13-16 |  | 59d |
| B3.33 05 63.01.50 |  | Foundations | 5d | 2026-09-21 | 2026-09-27 | B3.33 05 63.01.52 |  | 59d |
| B3.33 05 63.01.53 |  | Chambers Walls Conc Cast In Situ | 5d | 2026-09-28 | 2026-10-03 | B3.33 05 63.01.50 |  | 59d |
| B3.33 05 63.01.51 |  | Chamber Curing, Finishing & Steel Cover | 6d | 2026-10-04 | 2026-10-10 | B3.33 05 63.01.53 |  | 59d |
| B3.33 05 63.01.54 |  | Valve & Fitting Installation | 6d | 2026-10-11 | 2026-10-17 | B3.33 05 63.01.51 |  | 59d |
|  | 3 | **Fire Hydrant** |  | 2026-09-16 | 2026-10-03 |  |  |  |
| B3.33 14 19.01.fh32 |  | Riser Pipe & Flanged Fittings Installation | 4d | 2026-09-16 | 2026-09-20 | B3.1. 33 14 13-14, B3.1. 33 14 13-12 |  | 87d |
| B3.33 14 19.01.fh31 |  | Firehydrant Fixing/Installation | 5d | 2026-09-21 | 2026-09-27 | B3.33 14 19.01.fh32 |  | 87d |
| B3.33 14 19.01.fh33 |  | Backfilling & Compaction | 5d | 2026-09-28 | 2026-10-03 | B3.33 14 19.01.fh31, B3.1. 33 14 13..17 |  | 87d |
|  | TSE Network | **TSE Network** |  | 2026-02-09 | 2026-11-14 |  |  |  |
|  | HDPE | **HDPE Pipes** |  | 2026-02-09 | 2026-09-26 |  |  |  |
|  | ?110mm | **?110mm** |  | 2026-02-09 | 2026-09-26 |  |  |  |
|  | Depth: 0.0m - 1.5m | **Depth: 0.0m - 1.5m** |  | 2026-02-09 | 2026-09-26 |  |  |  |
| B4.33 14 13.01-0190 |  | Excavation | 14.36d | 2026-02-09 A | 2026-03-01 A | B3.1. 33 14 13-4, B3.1. 33 14 13-6 | 100% |  |
| B4.33 14 13.01-0192 |  | Sand Bedding | 5.84d | 2026-02-19 A | 2026-03-02 A | B4.33 14 13.01-0190 | 100% |  |
| B4.33 14 13.01-0194 |  | Pipe Laying | 6.84d | 2026-02-24 A | 2026-03-07 A | B4.33 14 13.01-0192 | 100% |  |
| B4.33 14 13.01-0196 |  | Embedment & Test | 161.83d | 2026-03-01 A | 2026-09-21 | B4.33 14 13.01-0194 | 19% | 8.75d |
| B4.33 14 13.01-0198 |  | Backfilling & Warrning Tape | 160.4d | 2026-03-04 A | 2026-09-26 | B4.33 14 13.075, B4.33 14 13.01-0196 FF, B3.33 05 63.02.89 FF | 19% | 5d |
|  | ?25mm | **?25mm** |  | 2026-02-09 | 2026-09-22 |  |  |  |
|  | Depth: 0.0m - 1.5m | **Depth: 0.0m - 1.5m** |  | 2026-02-09 | 2026-09-22 |  |  |  |
| B4.33 14 13.01-199 |  | Excavation | 174.87d | 2026-02-09 A | 2026-09-19 | B4.33 14 13.01-0190 |  | 10d |
| B4.33 14 13.01-209 |  | Sand Bedding | 165.49d | 2026-02-21 A | 2026-09-19 | B4.33 14 13.01-199 FF |  | 10d |
| B4.33 14 13.01-219 |  | Pipe Laying | 163.49d | 2026-02-24 A | 2026-09-19 | B4.33 14 13.01-209 FF, DMM2-Proc-Delv-5858 FF |  | 10d |
| B4.33 14 13.01-229 |  | Embedment & Test | 154.75d | 2026-03-13 A | 2026-09-21 | B4.33 14 13.01-219 FF |  | 8d |
| B4.33 14 13.01-239 |  | Backfilling & Warrning Tape | 152.33d | 2026-03-18 A | 2026-09-22 | B4.33 14 13.01-229 FF |  | 7d |
|  | ?32mm | **?32mm** |  | 2026-02-09 | 2026-09-22 |  |  |  |
|  | Depth: 0.0m - 1.5m | **Depth: 0.0m - 1.5m** |  | 2026-02-09 | 2026-09-22 |  |  |  |
| B4.33 14 13.01-249 |  | Excavation | 174.87d | 2026-02-09 A | 2026-09-19 | B4.33 14 13.01-199 FF |  | 10d |
| B4.33 14 13.01-259 |  | Sand Bedding | 165.31d | 2026-02-21 A | 2026-09-19 | B4.33 14 13.01-249 FF |  | 10d |
| B4.33 14 13.01-269 |  | Pipe Laying | 163.31d | 2026-02-24 A | 2026-09-19 | B4.33 14 13.01-259 FF |  | 10d |
| B4.33 14 13.01-279 |  | Embedment & Test | 113.81d | 2026-05-06 A | 2026-09-21 | B4.33 14 13.01-269 FF |  | 8d |
| B4.33 14 13.01-289 |  | Backfilling & Warrning Tape | 110.81d | 2026-05-11 A | 2026-09-22 | B4.33 14 13.01-279 FF |  | 7d |
|  | ?50mm | **?50mm** |  | 2026-03-24 | 2026-09-22 |  |  |  |
|  | Depth: 0.0m - 1.5m | **Depth: 0.0m - 1.5m** |  | 2026-03-24 | 2026-09-22 |  |  |  |
| B4.33 14 13.01-299 |  | Excavation | 149d | 2026-03-24 A | 2026-09-19 | B4.33 14 13.01-249 FF, DMM2-Proc-Delv-5878 SS |  | 10d |
| B4.33 14 13.01-309 |  | Sand Bedding | 148d | 2026-03-25 A | 2026-09-19 | B4.33 14 13.01-299 FF |  | 10d |
| B4.33 14 13.01-319 |  | Pipe Laying | 144d | 2026-03-30 A | 2026-09-19 | B4.33 14 13.01-309 FF |  | 10d |

| ID | WBS | Task | Duration | Start | Finish | Predecessors | Complete | Total float |
| --- | --- | --- | --- | --- | --- | --- | --- | --- |
| B4.33 14 13.01-329 |  | Embedment & Test | 140d | 2026-04-06 A | 2026-09-21 | B4.33 14 13.01-319 FF |  | 8d |
| B4.33 14 13.01-339 |  | Backfilling & Warrning Tape | 136d | 2026-04-12 A | 2026-09-22 | B4.33 14 13.01-329 FF |  | 7d |
|  | ?63mm | **?63mm** |  | 2026-06-29 | 2026-09-22 |  |  |  |
|  | Depth: 0.0m - 1.5m | **Depth: 0.0m - 1.5m** |  | 2026-06-29 | 2026-09-22 |  |  |  |
| B4.33 14 13.01-349 |  | Excavation | 70d | 2026-06-29 A | 2026-09-19 | B4.33 14 13.01-299 FF, B1.1.31 23 23.162 |  | 10d |
| B4.33 14 13.01-359 |  | Sand Bedding | 68d | 2026-07-01 A | 2026-09-19 | B4.33 14 13.01-349 FF |  | 10d |
| B4.33 14 13.01-369 |  | Pipe Laying | 66d | 2026-07-03 A | 2026-09-19 | B4.33 14 13.01-359 FF |  | 10d |
| B4.33 14 13.01-379 |  | Embedment & Test | 61d | 2026-07-12 A | 2026-09-21 | B4.33 14 13.01-369 FF, B3.33 14 19.01.138 SS |  | 8d |
| B4.33 14 13.01-389 |  | Backfilling & Warrning Tape | 57d | 2026-07-17 A | 2026-09-22 | B4.33 14 13.01-289 FF, B4.33 14 13.01-379 FF, B3.33 14 19.01.139 FF |  | 7d |
|  | ?75mm | **?75mm** |  | 2026-07-01 | 2026-09-22 |  |  |  |
|  | Depth: 0.0m - 1.5m | **Depth: 0.0m - 1.5m** |  | 2026-07-01 | 2026-09-22 |  |  |  |
| B4.33 14 13.01-399 |  | Excavation | 68d | 2026-07-01 A | 2026-09-19 | B4.33 14 13.01-349 SS |  | 6d |
| B4.33 14 13.01-409 |  | Sand Bedding | 65d | 2026-07-05 A | 2026-09-19 | B4.33 14 13.01-399 FF |  | 6d |
| B4.33 14 13.01-419 |  | Pipe Laying | 62d | 2026-07-08 A | 2026-09-19 | B4.33 14 13.01-409 FF |  | 6d |
| B4.33 14 13.01-429 |  | Embedment & Test | 61d | 2026-07-12 A | 2026-09-21 | B4.33 14 13.01-419 FF, B3.33 14 19.01.138 SS |  | 4d |
| B4.33 14 13.01-439 |  | Backfilling & Warrning Tape | 57d | 2026-07-17 A | 2026-09-22 | B4.33 14 13.01-429 FF |  | 3d |
|  | Valves & Chambers | **Valves & Chambers** |  | 2026-07-10 | 2026-11-14 |  |  |  |
|  | GV | **Gate Valves** |  | 2026-07-10 | 2026-09-21 |  |  |  |
|  | 1 | **Gate valves dia (250) mm** |  | 2026-07-10 | 2026-09-21 |  |  |  |
| B3.33 14 19.01.138 |  | Burried Isolation Valve Installation | 59d | 2026-07-10 A | 2026-09-17 | B4.33 14 13.01-419 SS | 50% | 8d |
| B3.33 14 19.01.139 |  | Spindle & Surface Box | 3d | 2026-09-19 | 2026-09-21 | B3.33 14 19.01.138 |  | 8d |
|  | 2 | **Air Valves** |  | 2026-10-22 | 2026-11-14 |  |  |  |
|  | 4 | **Air valves on less than 315 mm. (In Chamber)** |  | 2026-10-22 | 2026-11-14 |  |  |  |
| B3.33 05 63.02.92 |  | Land Adjustment & Compaction | 3d | 2026-10-22 | 2026-10-25 | B4.33 14 13.01-0190, DMM2-Proc-Delv-7490 |  | 28d |
| B3.33 05 63.02.90 |  | Foundations | 4d | 2026-10-26 | 2026-10-29 | B3.33 05 63.02.92 |  | 28d |
| B3.33 05 63.02.93 |  | Chambers Walls Conc Cast In Situ | 4d | 2026-10-31 | 2026-11-03 | B3.33 05 63.02.90 |  | 28d |
| B3.33 05 63.02.91 |  | Chamber Curing, Finishing & Steel Cover | 3d | 2026-11-04 | 2026-11-07 | B3.33 05 63.02.93 |  | 28d |
| B3.33 05 63.02.94 |  | Valve & Fitting Installation | 3d | 2026-11-11 | 2026-11-14 | B3.33 05 63.02.91, B3.33 05 63.01.69 |  | 25d |
|  | Solenoid valves | **Solenoid valves** |  | 2026-09-20 | 2026-10-07 |  |  |  |
|  | Solenoid valve ?1.0 | **1 Solenoid valve ?1.0 inch with box** |  | 2026-09-20 | 2026-09-30 |  |  |  |
| B4.32 84 13.065 |  | Pull Box Installation | 7d | 2026-09-20 | 2026-09-28 | B4.33 14 13.01-419 |  | 38d |
| B4.32 84 13.23 |  | Solenoid Valve Box Installation | 3d | 2026-09-20 | 2026-09-22 | B4.33 14 13.01-419 |  | 54d |
| B4.32 84 13.22 |  | Cable Laying Two-Wire Decoder (12 AWG) | 3d | 2026-09-24 | 2026-09-27 | B4.32 84 13.23 |  | 54d |
| B4.32 84 13.24 |  | Bubblers Installation | 3d | 2026-09-28 | 2026-09-30 | B4.32 84 13.22 |  | 54d |
|  | Solenoid valve ?1.5 | **1 Solenoid valve ?1.5 inch with box** |  | 2026-09-24 | 2026-10-04 |  |  |  |
| B4.32 84 13.26 |  | Solenoid Valve Box Installation | 3d | 2026-09-24 | 2026-09-27 | B4.32 84 13.23 |  | 54d |
| B4.32 84 13.25 |  | Cable Laying Two-Wire Decoder (12 AWG) | 3d | 2026-09-28 | 2026-09-30 | B4.32 84 13.26 |  | 54d |
| B4.32 84 13.064 |  | Pull Box Installation | 3d | 2026-09-29 | 2026-10-01 | B4.32 84 13.065 |  | 38d |
| B4.32 84 13.27 |  | Bubblers Installation | 3d | 2026-10-01 | 2026-10-04 | B4.32 84 13.25, B4.32 84 13.24 |  | 54d |
|  | Solenoid valve ?2.0 | **1 Solenoid valve ?2.0 inch with box** |  | 2026-09-28 | 2026-10-07 |  |  |  |
| B4.32 84 13.20 |  | Solenoid Valve Box Installation | 3d | 2026-09-28 | 2026-09-30 | B4.32 84 13.26 |  | 54d |
| B4.32 84 13.19 |  | Cable Laying Two-Wire Decoder (12 AWG) | 3d | 2026-10-01 | 2026-10-04 | B4.32 84 13.20 |  | 54d |
| B4.32 84 13.063 |  | Pull Box Installation | 3d | 2026-10-03 | 2026-10-05 | B4.32 84 13.064 |  | 38d |
| B4.32 84 13.21 |  | Bubblers Installation | 3d | 2026-10-05 | 2026-10-07 | B4.32 84 13.19, B4.32 84 13.27 |  | 54d |
|  | Dry Networks | **Dry Networks** |  | 2026-09-24 | 2026-11-19 |  |  |  |
|  | MV | **Medium Voltage Network** |  | 2026-09-24 | 2026-11-08 |  |  |  |
|  | Cables | **Cables** |  | 2026-09-24 | 2026-10-17 |  |  |  |
|  | 3C,500mm2 | **3C,500mm2** |  | 2026-09-24 | 2026-10-17 |  |  |  |
| B2.33 71 49.23.77 |  | Cable 13.8 kV Unarmored | 4d | 2026-09-24 | 2026-09-28 | B6.33 05 40.01.400, B6.33 05 40.01.880, B4.33 14 13.01-439 |  | 3d |
| B2.33 71 49.23.78 |  | Straight joints cables | 3d | 2026-09-29 | 2026-10-01 | B2.33 71 49.23.77 |  | 86d |
| B2.33 71 49.23.79 |  | Cable Termination | 3d | 2026-10-13 | 2026-10-17 | B2.33 71 49.23.78, B2.33 71 49.23.76 |  | 76.88d |
|  | RMU | **RMU** |  | 2026-09-27 | 2026-10-26 |  |  |  |
| B2 33 73 00.02.81 |  | Land Adjustment | 3d | 2026-09-27 | 2026-09-29 | B4.33 14 13.01-439, B4.33 14 13.01-389, B4.33 14 13.01-339, B4.33 14 13.01-289, B4.33 14 13.01-239, B4.33 14 13.01-0198 |  | 5d |
| B2 33 73 00.02.83 |  | Foundation Works & Curing | 7d | 2026-09-30 | 2026-10-07 | B2 33 73 00.02.81 |  | 28d |
| B2 33 73 00.02.85 |  | Installation of Ring Main Unit RMU, 13.8KV | 7d | 2026-10-11 | 2026-10-18 | B2 33 73 00.02.83, DMM2-Proc-Delv-6468 |  | 26d |
| B2.33 71 49.23.05 |  | Normally Open Point 13.8 KV | 7d | 2026-10-19 | 2026-10-26 | B2 33 73 00.02.85 |  | 26d |
|  | Units Substation | **Units Substation** |  | 2026-09-30 | 2026-11-08 |  |  |  |
| B2 33 73 00.01.81 |  | Land Adjustment | 3d | 2026-09-30 | 2026-10-03 | B2 33 73 00.02.81 |  | 5d |
| B2 33 73 00.01.83 |  | Foundation Works & Curing | 7d | 2026-10-08 | 2026-10-15 | B2 33 73 00.01.81, B2 33 73 00.02.83 |  | 88d |
| B2 33 73 00.01.85 |  | Installation of Unit Substation 13.8/0.4 K V | 3d | 2026-11-05 | 2026-11-08 | B2 33 73 00.01.83, B2 33 73 00.02.85, DMM2-Proc-Delv-6458, B2.33 71 49.23.67, B2.33 71 49.23.102 |  | 71d |
|  | LV Network | **Low Voltage Network** |  | 2026-09-24 | 2026-11-10 |  |  |  |
|  | Duct Banks | **Duct Banks** |  | 2026-09-24 | 2026-11-10 |  |  |  |
|  | 2 Way | **2 Way** |  | 2026-09-24 | 2026-11-07 |  |  |  |
| B2.33 71 00 02 103 |  | Excavation | 2d | 2026-09-24 | 2026-09-26 | B6.33 05 40.01.880 |  | 92d |
| B2.33 71 00 02 104 |  | Shuttering, Steel Fixing Incl. UPVC Pipe & Conc. Cast | 3d | 2026-09-27 | 2026-09-29 | B2.33 71 00 02 103 |  | 96d |
| B2.33 71 00 02 105 |  | Backfilling & Warrning Tape | 3d | 2026-11-04 | 2026-11-07 | B2.33 71 00 02 104, B2.33 71 00 02 129 |  | 66d |
|  | 4 Way | **4 Way** |  | 2026-09-27 | 2026-11-10 |  |  |  |
| B2.33 71 00 02 106 |  | Excavation | 2d | 2026-09-27 | 2026-09-28 | B2.33 71 00 02 103 |  | 92d |
| B2.33 71 00 02 107 |  | Shuttering, Steel Fixing Incl. UPVC Pipe & Conc. Cast | 3d | 2026-09-29 | 2026-10-01 | B2.33 71 00 02 106 |  | 97d |
| B2.33 71 00 02 108 |  | Backfilling & Warrning Tape | 3d | 2026-11-08 | 2026-11-10 | B2.33 71 00 02 107, B2.33 71 00 02 105 |  | 66d |

| ID | WBS | Task | Duration | Start | Finish | Predecessors | Complete | Total float |
| --- | --- | --- | --- | --- | --- | --- | --- | --- |
|  | 6 Way | **6 Way** |  | 2026-09-29 | 2026-10-07 |  |  |  |
| B2.33 71 00 02 109 |  | Excavation | 2d | 2026-09-29 | 2026-09-30 | B2.33 71 00 02 106 |  | 92d |
| B2.33 71 00 02 110 |  | Shuttering, Steel Fixing Incl. UPVC Pipe & Conc. Cast | 3d | 2026-10-01 | 2026-10-04 | B2.33 71 00 02 109 |  | 92d |
| B2.33 71 00 02 111 |  | Backfilling & Warrning Tape | 3d | 2026-10-05 | 2026-10-07 | B2.33 71 00 02 110 |  | 92d |
|  | Cables | **Cables** |  | 2026-09-29 | 2026-09-30 |  |  |  |
|  | 4C,10+1C,10mm2 | **4C,10+1C,10mm2** |  | 2026-09-29 | 2026-09-30 |  |  |  |
| B2.33 71 00 01 11 |  | Cable Pulling | 2d | 2026-09-29 | 2026-09-30 | B2.33 71 49.23.77 |  | 5d |
|  | LV Panels | **0.6/1 KV Low Voltage Distribution Panels** |  | 2026-10-04 | 2026-10-18 |  |  |  |
| B2.33 71 26 24 |  | Land Adjustment | 2d | 2026-10-04 | 2026-10-05 | B2 33 73 00.01.81 |  | 5d |
| B2.33 71 26 25 |  | Foundation Works & Curing | 3d | 2026-10-12 | 2026-10-14 | B2.33 71 26 24, B2.33 71 26 28 |  | 35d |
| B2.33 71 26 23 |  | Installation of 0.6/1 KV Low Voltage Distribution Panels | 3d | 2026-10-15 | 2026-10-18 | B2.33 71 26 25, B2.33 71 26 26 |  | 35d |
|  | LV Pillars | **0.6/1 KV Low Voltage Distribution Pillars** |  | 2026-10-06 | 2026-10-14 |  |  |  |
| B2.33 71 26 27 |  | Land Adjustment | 2d | 2026-10-06 | 2026-10-07 | B2.33 71 26 24 |  | 5d |
| B2.33 71 26 28 |  | Foundation Works & Curing | 3d | 2026-10-08 | 2026-10-11 | B2.33 71 26 27 |  | 35d |
| B2.33 71 26 26 |  | Installation of 0.6/1 KV Low Voltage Distribution Pillars | 3d | 2026-10-12 | 2026-10-14 | B2.33 71 26 28 |  | 35d |
|  | Street Lighting | **Street Lighting** |  | 2026-10-08 | 2026-11-19 |  |  |  |
|  | Cables | **Cables** |  | 2026-10-08 | 2026-11-19 |  |  |  |
|  | 4C,10+1C,10mm2 | **4C,10+1C,10mm2** |  | 2026-10-08 | 2026-11-19 |  |  |  |
| B2.33 71 19 122 |  | Land Adjustment | 3d | 2026-10-08 | 2026-10-11 | B2.33 71 26 27 |  | 5d |
| B2.33 71 49.23.142 |  | Cable Pulling | 2d | 2026-10-12 | 2026-10-13 | B2.33 71 19 122 |  | 85d |
| B2.33 71 19 132 |  | Backfilling | 3d | 2026-11-17 | 2026-11-19 | B2.33 71 49.23.142, B2.33 71 16.78, B2.33 71 16.82 |  | 56d |
|  | SL Poles | **SL Poles** |  | 2026-10-12 | 2026-10-28 |  |  |  |
|  | Pole (10 M Sngl Arm) | **Pole (10 M Single Arm)** |  | 2026-10-12 | 2026-10-28 |  |  |  |
| B2.33 71 16.67 |  | Excavation | 3d | 2026-10-12 | 2026-10-14 | B1.2.32 11 26.01.10, B2.33 71 19 122 |  | 5d |
| B2.33 71 16.68 |  | PC & RC Foundation | 3d | 2026-10-15 | 2026-10-18 | B2.33 71 16.67 |  | 70d |
| B2.33 71 16.69 |  | Lighting Poles Installation Incl power box, Cables | 3d | 2026-10-19 | 2026-10-21 | B2.33 71 16.68 |  | 70d |
| B2.26.56.19.10 |  | Lighting Luminares Inst | 3d | 2026-10-22 | 2026-10-25 | B2.33 71 16.69, DMM2-Proc-Delv-6548 |  | 70d |
| B2.33 71 16.70 |  | Backfilling, Grouting & Chamfering | 3d | 2026-10-26 | 2026-10-28 | B2.26.56.19.10 |  | 70d |
|  | Earthing | **Earthing** |  | 2026-10-31 | 2026-11-08 |  |  |  |
| B2.33 71 19 35 |  | Land Adjustment | 3d | 2026-10-31 | 2026-11-02 | B2.33 71 16.69, B2.33 71 16.103 SS |  | 69d |
| B2.33 71 19 36 |  | Earth Rods & Conduits | 3d | 2026-11-03 | 2026-11-05 | B2.33 71 19 35 |  | 69d |
| B2.33 71 19 37 |  | Backfilling | 2d | 2026-11-07 | 2026-11-08 | B2.33 71 19 36 |  | 69d |
|  | Telecommunication | **Telecommunication Network** |  | 2026-09-24 | 2026-10-27 |  |  |  |
|  | Ducts | **Ducts** |  | 2026-09-24 | 2026-10-14 |  |  |  |
|  | (6*50mm+2*32mm) | **Size (6*50mm+2*32mm) HDPE ducts** |  | 2026-09-24 | 2026-10-03 |  |  |  |
| B2.1.33 81 26.123 |  | Excavation | 3d | 2026-09-24 | 2026-09-27 | B6.33 05 40.01.880 |  | 49d |
| B2.1.33 81 26.124 |  | HDPE Pipe, Shuttering, Steel Fixing & Conc. Cast | 3d | 2026-09-28 | 2026-09-30 | B2.1.33 81 26.123 |  | 52d |
| B2.1.33 81 26.125 |  | Backfilling & Warrning Tape | 2d | 2026-10-01 | 2026-10-03 | B2.1.33 81 26.124 |  | 52d |
|  | (6*50mm) | **Size (6*50mm) HDPE ducts** |  | 2026-09-24 | 2026-10-04 |  |  |  |
| B2.1.33 81 26.120 |  | Excavation | 3d | 2026-09-24 | 2026-09-27 | B2.1.33 81 26.123 SS |  | 49d |
| B2.1.33 81 26.121 |  | HDPE Pipe, Shuttering, Steel Fixing & Conc. Cast | 3d | 2026-09-28 | 2026-09-30 | B2.1.33 81 26.120 |  | 54d |
| B2.1.33 81 26.122 |  | Backfilling & Warrning Tape | 3d | 2026-10-01 | 2026-10-04 | B2.1.33 81 26.121 |  | 54d |
|  | (6*50mm+4*32mm) | **Size (6*50mm+4*32mm) HDPE ducts** |  | 2026-09-24 | 2026-10-04 |  |  |  |
| B2.1.33 81 26.126 |  | Excavation | 3d | 2026-09-24 | 2026-09-27 | B2.1.33 81 26.120 SS |  | 49d |
| B2.1.33 81 26.127 |  | HDPE Pipe, Shuttering, Steel Fixing & Conc. Cast | 3d | 2026-09-28 | 2026-09-30 | B2.1.33 81 26.126 |  | 54d |
| B2.1.33 81 26.128 |  | Backfilling & Warrning Tape | 3d | 2026-10-01 | 2026-10-04 | B2.1.33 81 26.127 |  | 54d |
|  | (2*32mm) | **Size (2*32mm) HDPE ducts** |  | 2026-09-28 | 2026-10-14 |  |  |  |
| B2.1.33 81 26.129 |  | Excavation | 2d | 2026-09-28 | 2026-09-29 | B2.1.33 81 26.126 |  | 49d |
| B2.1.33 81 26.130 |  | HDPE Pipe, Shuttering, Steel Fixing & Conc. Cast | 3d | 2026-09-30 | 2026-10-03 | B2.1.33 81 26.129 |  | 52d |
| B2.1.33 81 26.131 |  | Backfilling & Warrning Tape | 3d | 2026-10-11 | 2026-10-14 | B2.1.33 81 26.130, B2.1.33 81 26.56 |  | 45.88d |
|  | Manholes | **Manholes** |  | 2026-10-03 | 2026-10-10 |  |  |  |
|  | Manhole Type 1 | **Manhole Type 1** |  | 2026-10-03 | 2026-10-10 |  |  |  |
| B2.31 23 00.620 |  | Excavation | 2d | 2026-10-03 | 2026-10-04 | B2.1.33 81 26.129, B2.1.33 81 26.126, B2.1.33 81 26.120, B2.31 23 00.619 |  | 49d |
| B2.33 71 00.248 |  | Manhole Installation | 2d | 2026-10-05 | 2026-10-06 | B2.31 23 00.620 |  | 80d |
| B2.33 71 00.249 |  | Backfilling & Warrning Tape | 3d | 2026-10-07 | 2026-10-10 | B2.33 71 00.248 |  | 80d |
|  | Crossing Ducts | **Road Crossing Ducts** |  | 2026-09-30 | 2026-10-27 |  |  |  |
|  | 1 | **Size (6X50mm+4X32mm) HDPE** |  | 2026-09-30 | 2026-10-08 |  |  |  |
| B2.31 23 00.619 |  | Excavation | 2d | 2026-09-30 | 2026-10-01 | B2.1.33 81 26.129 |  | 49d |
| B2.33 71 00.246 |  | Shuttering, Steel Fixing Incl. UPVC Pipe & Conc. Cast | 3d | 2026-10-03 | 2026-10-05 | B2.31 23 00.619 |  | 50d |
| B2.33 71 00.247 |  | Backfilling & Warrning Tape | 3d | 2026-10-06 | 2026-10-08 | B2.33 71 00.246, B2.1.33 81 26.125 |  | 50d |
|  | 2 | **Size (2*32mm) HDPE** |  | 2026-10-05 | 2026-10-27 |  |  |  |
| B2.31 23 00.621 |  | Excavation | 2d | 2026-10-05 | 2026-10-06 | B2.31 23 00.619, B2.31 23 00.620 |  | 49d |
| B2.33 71 00.250 |  | Shuttering, Steel Fixing Incl. UPVC Pipe & Conc. Cast | 3d | 2026-10-07 | 2026-10-10 | B2.31 23 00.621 |  | 49d |
| B2.33 71 00.251 |  | Backfilling & Warrning Tape | 3d | 2026-10-25 | 2026-10-27 | B2.33 71 00.250, B2.33 71 00.265, B2.1.33 81 26.122, B2.1.33 81 26.128, B2.1.33 81 26.131, B2.33 71 00.247 |  | 37d |
|  | Earth & Road Works | **Earth & Road Works** |  | 2025-11-28 | 2026-11-10 |  |  |  |
|  | Earth Works | **Earth Works** |  | 2025-11-28 | 2026-02-01 |  |  |  |
| B1.2.31 23 16.01.10 |  | Roadway Excavation | 3d | 2025-11-28 A | 2025-12-01 A | DMM2-Eng-MS-78 | 100% |  |
| B1.2.31 23 23.01.10 |  | Embankment Backfiling | 52.02d | 2025-12-02 A | 2026-02-01 A | B1.2.31 23 16.01.10 | 100% |  |
|  | Earth Layers | **Earth Layers** |  | 2026-01-19 | 2026-09-19 |  |  |  |
| B1.2.32 11 13.01.10 |  | Subgrade | 192.87d | 2026-01-19 A | 2026-09-19 | B1.2.31 23 23.01.10 | 65% | 113.9d |

| ID | WBS | Task | Duration | Start | Finish | Predecessors | Complete | Total float |
| --- | --- | --- | --- | --- | --- | --- | --- | --- |
| B1.2.32 11 23.01.10 |  | Aggregate Base Course | 100.8d | 2026-05-20 A | 2026-09-19 | B1.2.32 11 13.01.10 FF | 60% | 113.2d |
|  | Interlock | **Interlock** |  | 2026-10-07 | 2026-10-10 |  |  |  |
| B1.2.32 14 13.13.10 |  | 60mm thick - Interlocking Block Pavers | 3d | 2026-10-07 | 2026-10-10 | DMM2-Proc-Delv-7408 FS+2d |  | 4d |
|  | Curbstone | **Curbstone** |  | 2026-10-11 | 2026-10-31 |  |  |  |
|  | Pre Install | **Pre-Installation** |  | 2026-10-11 | 2026-10-17 |  |  |  |
| B2.31 23 00.271 |  | Excavation | 2d | 2026-10-11 | 2026-10-12 | B1.2.32 14 13.13.10 |  | 4d |
| B1.2.32 14 13.13.210 |  | PCC | 2d | 2026-10-13 | 2026-10-14 | B2.31 23 00.271 |  | 14d |
| 32 16 13.0010 |  | Haunching | 2d | 2026-10-15 | 2026-10-17 | B1.2.32 14 13.13.210 |  | 14d |
|  | Installation | **Installation** |  | 2026-10-18 | 2026-10-28 |  |  |  |
| B1.2.32 16.13.01.10 |  | Curb Stone, Type K1 | 2d | 2026-10-18 | 2026-10-19 | 32 16 13.0010 |  | 14d |
| B1.2.32 16.13.02.9 |  | Dropped Curb, Type K3 | 2d | 2026-10-20 | 2026-10-21 | B1.2.32 16.13.01.10, 32 16 13.0010 |  | 14d |
| B1.2.32 16.13.03.10 |  | Edge Curb, Type K4 | 2d | 2026-10-22 | 2026-10-24 | B1.2.32 16.13.02.9, 32 16 13.0010 |  | 14d |
| B1.2.32 16.13.0410 |  | Heel Curb, Type K5 | 2d | 2026-10-25 | 2026-10-26 | B1.2.32 16.13.03.10, 32 16 13.0010 |  | 14d |
| B1.2.32 16.13.05.9 |  | Transition Curb | 2d | 2026-10-27 | 2026-10-28 | B1.2.32 16.13.0410, 32 16 13.0010 |  | 14d |
|  | Finishing | **Finishing** |  | 2026-10-29 | 2026-10-31 |  |  |  |
| 32 16 13.010 |  | Finishing, Fareface | 2d | 2026-10-29 | 2026-10-31 | B1.2.32 16.13.01.10, B1.2.32 16.13.02.9, B1.2.32 16.13.03.10, B1.2.32 16.13.0410, B1.2.32 16.13.05.9 |  | 14d |
|  | Asphalt Layers | **Asphalt Layers** |  | 2026-06-02 | 2026-11-05 |  |  |  |
| B1.2.32 11 26.01.10 |  | Bituminous Base Course including Prime Coat (MC1) and tack coat (RC2) | 93d | 2026-06-02 A | 2026-09-17 | B1.2.32 11 23.01.10 SS | 71% | 24d |
| B1.2.32 12 16.01.10 |  | Bituminous concrete Wearing Course, including tack coat (RC2) | 5d | 2026-11-01 | 2026-11-05 | B1.2.32 11 26.01.10 SS, 32 16 13.010 |  | 14d |
|  | Pavement Marking | **Pavement Marking** |  | 2026-11-07 | 2026-11-08 |  |  |  |
| B1.2.32 17 23.02.10 |  | Retroreflective Thermoplastic Yellow, Traffic lines | 1d | 2026-11-07 | 2026-11-07 | B1.2.32 12 16.01.10 |  | 67d |
| B1.2.32 17 23.01.10 |  | Retroreflective Thermoplastic White Traffic lines | 1d | 2026-11-08 | 2026-11-08 | B1.2.32 12 16.01.10, B1.2.32 17 23.02.10 |  | 67d |
|  | Traffic Signs | **Traffic Signs** |  | 2026-10-13 | 2026-11-10 |  |  |  |
|  | Pre Install | **Pre-Installation** |  | 2026-10-13 | 2026-10-17 |  |  |  |
| B2.31 23 00.281 |  | Excavation | 2d | 2026-10-13 | 2026-10-14 | B2.31 23 00.271 |  | 4d |
| 10 14 53.010 |  | Foundation | 2d | 2026-10-15 | 2026-10-17 | B2.31 23 00.281 |  | 86d |
|  | Installation | **Installation** |  | 2026-11-09 | 2026-11-10 |  |  |  |
| B1.2.10 14 53.0110 |  | 1 Sheet Alumenium, Single post | 2d | 2026-11-09 | 2026-11-10 | 10 14 53.010, B1.2.32 17 23.02.10, B1.2.32 17 23.01.10, B1.2.10 14 53.0111 SS |  | 67d |
|  | Guard Rail | **Guard Rail** |  | 2026-09-22 | 2026-10-01 |  |  |  |
| B2.31 23 00.654 |  | Excavation | 3d | 2026-09-22 | 2026-09-26 | B2.31 23 00.664 FS+2d |  | 44d |
| 10 14 53.15 |  | Foundation | 2d | 2026-09-26 | 2026-09-27 | B2.31 23 00.654 SS+2d |  | 44d |
| B1.2.10 14 53.328 |  | W-Beam Guard Rail Installation | 4d | 2026-09-28 | 2026-10-01 | 10 14 53.15 SS+2d, B1.2.10 14 53.338 SS |  | 44d |
|  | Landscape | **Landscape** |  | 2026-10-15 | 2026-11-05 |  |  |  |
|  | Fences | **Fences** |  | 2026-10-15 | 2026-11-05 |  |  |  |
|  | (ZATCA HCIS) | **Steel fence (ZATCA HCIS)** |  | 2026-10-15 | 2026-11-05 |  |  |  |
| B7.32 31 26.01-4 |  | Earthwork | 6d | 2026-10-15 | 2026-10-21 | B2.31 23 00.281 |  | 4d |
| B7.32 31 26.01-6 |  | Foundation | 6d | 2026-10-22 | 2026-10-28 | B7.32 31 26.01-4 |  | 4d |
| B7.32 31 26.01-8 |  | Fence Installation | 7d | 2026-10-29 | 2026-11-05 | B7.32 31 26.01-6 |  | 4d |
|  | Customs Road 04&RD05 | **Customs Road 04 & Road 05** |  | 2025-12-05 | 2026-11-19 |  |  |  |
|  | Wet Networks | **Wet Networks** |  | 2026-02-11 | 2026-10-31 |  |  |  |
|  | Stormwater Network | **Stormwater Network** |  | 2026-02-11 | 2026-09-27 |  |  |  |
|  | GRP | **GRP** |  | 2026-02-11 | 2026-05-17 |  |  |  |
|  | ?40011 | **?1500** |  | 2026-02-11 | 2026-05-17 |  |  |  |
|  | 3 | **Depth From 2.5m to 3.5m** |  | 2026-02-11 | 2026-05-17 |  |  |  |
| B6.33 42 11.34-1.1 |  | Excavation | 2d | 2026-02-11 A | 2026-02-14 A | B1.1.31 23 23.142 | 100% |  |
| B6.33 42 11.34-1.3 |  | Sand Bedding | 2d | 2026-02-15 A | 2026-02-17 A | B6.33 42 11.34-1.1 | 100% |  |
| B6.33 42 11.34-1.5 |  | Pipe Laying | 1.5d | 2026-02-16 A | 2026-02-17 A | B6.33 42 11.34-1.3 | 100% |  |
| B6.33 42 11.34-1.7 |  | Embedment & Test | 1d | 2026-02-21 A | 2026-02-23 A | B6.33 42 11.34-1.5 | 100% |  |
| B6.33 42 11.34-1.9 |  | Backfilling & Warrning Tape | 29.6d | 2026-04-13 A | 2026-05-17 A | B6.33 42 11.34-1.7 | 100% |  |
|  | Strom Manholes | **Manholes** |  | 2026-02-15 | 2026-09-26 |  |  |  |
|  | 3 | **?2000** |  | 2026-02-15 | 2026-09-26 |  |  |  |
|  | 3 | **Depth From 2.5m to 3.5m** |  | 2026-02-15 | 2026-09-26 |  |  |  |
| B6.33 05 39.01.3677 |  | Excavation & Compaction | 2d | 2026-02-15 A | 2026-02-17 A | B6.33 42 11.34-1.1 | 100% |  |
| B6.33 05 39.01.3687 |  | Blinding Conc, & RC Base | 38d | 2026-08-05 A | 2026-09-19 | B6.33 05 39.01.3677 | 83% | 113d |
| B6.33 05 39.01.3697 |  | Manhole Installation | 35d | 2026-08-09 A | 2026-09-19 | B6.33 05 39.01.3687 SS | 83% | 108d |
| B6.33 05 39.01.3717 |  | Backfilling | 28d | 2026-08-17 A | 2026-09-26 | B6.33 05 39.01.3707 FF | 83% | 108d |
| B6.33 05 39.01.3707 |  | Test, Internal Finishing, Benching & Cover | 5d | 2026-09-20 | 2026-09-26 | B6.33 05 39.01.3697 |  | 108d |
|  | Catch Basins | **Catch Basins** |  | 2026-03-11 | 2026-09-27 |  |  |  |
|  | Sing | **Single** |  | 2026-06-10 | 2026-09-27 |  |  |  |
| B6.33 05 40.01.450 |  | Excavation, Compaction & Vapour Barrier | 86d | 2026-06-10 A | 2026-09-19 | B6.33 05 39.01.3677 | 67% | 113d |
| B6.33 05 40.01.460 |  | Blinding Conc. | 84d | 2026-06-13 A | 2026-09-19 | B6.33 05 40.01.450 SS | 67% | 113d |
| B6.33 05 40.01.470 |  | Catch Basin Installation | 81.67d | 2026-06-15 A | 2026-09-19 | B6.33 05 40.01.460 SS, B6.33 05 40.01.750 SS | 67% | 113d |
| B6.33 05 40.01.480 |  | Backfilling, DI Frame & Grate Cover Fixing | 6d | 2026-09-20 | 2026-09-27 | B6.33 42 11.36-195, B6.33 05 63.082, B6.33 05 40.01.200 |  | 0d |
|  | UPVC | **UPVC** |  | 2026-03-11 | 2026-09-19 |  |  |  |
|  | UPVC300 | **?300 From 0.0 to 1.5m** |  | 2026-03-11 | 2026-09-19 |  |  |  |
| B6.33 42 11.35-122 |  | Fittings & Pipe Installation | 1.25d | 2026-03-11 A | 2026-03-13 A | B6.33 42 11.35-110 SS | 100% |  |
| B6.33 42 11.35-110 |  | Catch Basin Opening Prep. | 81.67d | 2026-06-15 A | 2026-09-19 | B6.33 05 40.01.470 SS | 67% | 113d |
|  | UPVC3001 | **?400 From 0.0 to 1.5m** |  | 2026-03-11 | 2026-09-19 |  |  |  |
| B6.33 42 11.36-195 |  | Fittings & Pipe Installation | 1.25d | 2026-03-11 A | 2026-03-13 A | B6.33 42 11.35-122, B6.33 42 11.36-183 SS | 100% |  |
| B6.33 42 11.36-183 |  | Catch Basin Opening Prep. | 81.67d | 2026-06-15 A | 2026-09-19 | B6.33 42 11.35-110 SS | 67% | 113d |

| ID | WBS | Task | Duration | Start | Finish | Predecessors | Complete | Total float |
| --- | --- | --- | --- | --- | --- | --- | --- | --- |
|  | TSE Network | **TSE Network** |  | 2026-04-05 | 2026-10-31 |  |  |  |
|  | HDPE | **HDPE Pipes** |  | 2026-04-05 | 2026-09-21 |  |  |  |
|  | ?125mm | **?125mm** |  | 2026-04-05 | 2026-09-21 |  |  |  |
|  | Depth: 0.0m - 1.5m | **Depth: 0.0m - 1.5m** |  | 2026-04-05 | 2026-09-21 |  |  |  |
| B4.33 14 13.01-0191 |  | Excavation | 4d | 2026-04-05 A | 2026-04-09 A | B1.2.32 11 26.01.11 SS | 100% |  |
| B4.33 14 13.01-0193 |  | Sand Bedding | 39.02d | 2026-04-06 A | 2026-05-21 A | B4.33 14 13.01-0191 | 100% |  |
| B4.33 14 13.01-0195 |  | Pipe Laying | 132.59d | 2026-04-12 A | 2026-09-19 | B4.33 14 13.01-0193 | 21% | 42.41d |
| B4.33 14 13.01-0197 |  | Embedment & Test | 114.17d | 2026-05-05 A | 2026-09-21 | B4.33 14 13.01-0195 FF | 21% | 94.83d |
| B4.33 14 13.01-0199 |  | Backfilling & Warrning Tape | 111.96d | 2026-05-09 A | 2026-09-21 | B4.33 14 13.01-0197 FF | 21% | 94.04d |
|  | Valves | **Valves** |  | 2026-09-19 | 2026-10-31 |  |  |  |
|  | Solenoid valves | **Solenoid valves** |  | 2026-09-19 | 2026-10-31 |  |  |  |
|  | Solenoid valve ?1.0 | **1 Solenoid valve ?1.0 inch with box** |  | 2026-09-19 | 2026-10-24 |  |  |  |
| B4.32 84 13.062 |  | Pull Box Installation | 3d | 2026-09-19 | 2026-09-22 | B4.33 14 13.01-0195 |  | 42.41d |
| B4.32 84 13.40 |  | Cable Laying Two-Wire Decoder (12 AWG) | 3d | 2026-09-22 | 2026-09-27 | B4.33 14 13.01-0195, B4.32 84 13.062 |  | 42.41d |
| B4.32 84 13.41 |  | Solenoid Valve Box Installation | 3d | 2026-09-27 | 2026-09-30 | B4.32 84 13.40 |  | 42.41d |
| B4.32 84 13.42 |  | Bubblers Installation | 3d | 2026-10-21 | 2026-10-24 | B4.32 84 13.41, B4.32 84 13.06 |  | 25d |
|  | Solenoid valve ?1.5 | **1 Solenoid valve ?1.5 inch with box** |  | 2026-09-22 | 2026-10-27 |  |  |  |
| B4.32 84 13.061 |  | Pull Box Installation | 3d | 2026-09-22 | 2026-09-27 | B4.32 84 13.062 |  | 42.41d |
| B4.32 84 13.43 |  | Cable Laying Two-Wire Decoder (12 AWG) | 3d | 2026-09-27 | 2026-09-30 | B4.32 84 13.40 |  | 42.41d |
| B4.32 84 13.44 |  | Solenoid Valve Box Installation | 3d | 2026-09-30 | 2026-10-04 | B4.32 84 13.43 |  | 42.41d |
| B4.32 84 13.45 |  | Bubblers Installation | 3d | 2026-10-25 | 2026-10-27 | B4.32 84 13.44, B4.32 84 13.42 |  | 25d |
|  | Solenoid valve ?2.0 | **1 Solenoid valve ?2.0 inch with box** |  | 2026-09-30 | 2026-10-31 |  |  |  |
| B4.32 84 13.37 |  | Cable Laying Two-Wire Decoder (12 AWG) | 3d | 2026-09-30 | 2026-10-04 | B4.32 84 13.43 |  | 42.41d |
| B4.32 84 13.38 |  | Solenoid Valve Box Installation | 3d | 2026-10-04 | 2026-10-07 | B4.32 84 13.37 |  | 42.41d |
| B4.32 84 13.06 |  | Pull Box Installation | 3d | 2026-10-18 | 2026-10-20 | B4.32 84 13.061, B4.32 84 13.76, B4.32 84 13.77 |  | 25d |
| B4.32 84 13.39 |  | Bubblers Installation | 3d | 2026-10-28 | 2026-10-31 | B4.32 84 13.38, B4.32 84 13.45 |  | 25d |
|  | Dry Networks | **Dry Networks** |  | 2026-07-02 | 2026-11-19 |  |  |  |
|  | MV | **Medium Voltage Network** |  | 2026-09-28 | 2026-11-08 |  |  |  |
|  | Duct Banks | **Duct Banks** |  | 2026-09-28 | 2026-10-19 |  |  |  |
|  | 4 Way | **2 Way** |  | 2026-09-28 | 2026-10-19 |  |  |  |
| B2.31 23 00.641 |  | Excavation | 4d | 2026-09-28 | 2026-10-01 | B6.33 05 40.01.480 |  | 0d |
| B2.33 71 00.290 |  | Shuttering, Steel Fixing Incl. UPVC Pipe & Conc. Cast | 8d | 2026-10-03 | 2026-10-11 | B2.31 23 00.641 |  | 0d |
| B2.33 71 00.291 |  | Backfilling & Warrning Tape | 7d | 2026-10-12 | 2026-10-19 | B2.33 71 00.290 |  | 0d |
|  | Cables | **Cables** |  | 2026-09-29 | 2026-10-20 |  |  |  |
|  | 3C,500mm2 | **3C,500mm2** |  | 2026-09-29 | 2026-10-20 |  |  |  |
| B2.33 71 49.23.86 |  | Cable 13.8 kV Unarmored | 4d | 2026-09-29 | 2026-10-03 | B2.33 71 49.23.77 |  | 3d |
| B2.33 71 49.23.87 |  | Straight joints cables | 3d | 2026-10-04 | 2026-10-06 | B2.33 71 49.23.86 |  | 85d |
| B2.33 71 49.23.88 |  | Cable Termination | 3d | 2026-10-17 | 2026-10-20 | B2.33 71 49.23.87, B2.33 71 49.23.79 |  | 76.88d |
|  | RMU | **RMU** |  | 2026-10-04 | 2026-10-14 |  |  |  |
| B2 33 73 00.02.15 |  | Land Adjustment | 3d | 2026-10-04 | 2026-10-06 | B4.33 14 13.01-0199, B2.31 23 00.641, B2.33 71 49.23.86 |  | 85d |
| B2 33 73 00.02.17 |  | Foundation Works & Curing | 4d | 2026-10-07 | 2026-10-11 | B2 33 73 00.02.15 |  | 88d |
| B2 33 73 00.02.19 |  | Installation of Ring Main Unit RMU, 13.8KV | 3d | 2026-10-12 | 2026-10-14 | B2 33 73 00.02.17 |  | 89d |
|  | Units Substation | **Units Substation** |  | 2026-10-07 | 2026-11-08 |  |  |  |
| B2 33 73 00.01.15 |  | Land Adjustment | 3d | 2026-10-07 | 2026-10-10 | B2 33 73 00.02.15 |  | 85d |
| B2 33 73 00.01.17 |  | Foundation Works & Curing | 4d | 2026-10-12 | 2026-10-15 | B2 33 73 00.01.15, B2 33 73 00.02.17 |  | 88d |
| B2 33 73 00.01.19 |  | Installation of Unit Substation 13.8/0.4 K V | 3d | 2026-11-05 | 2026-11-08 | B2 33 73 00.01.17, B2 33 73 00.02.19, B2 33 73 00.01.85 SS |  | 71d |
|  | LV Network | **Low Voltage Network** |  | 2026-10-03 | 2026-11-03 |  |  |  |
|  | Duct Banks | **Duct Banks** |  | 2026-10-03 | 2026-11-03 |  |  |  |
|  | 4 Way | **4 Way** |  | 2026-10-03 | 2026-11-03 |  |  |  |
| B2.33 71 00 02 127 |  | Excavation | 3d | 2026-10-03 | 2026-10-05 | B2.31 23 00.641 |  | 37d |
| B2.33 71 00 02 128 |  | Shuttering, Steel Fixing Incl. UPVC Pipe & Conc. Cast | 3d | 2026-10-06 | 2026-10-08 | B2.33 71 00 02 127 |  | 85d |
| B2.33 71 00 02 129 |  | Backfilling & Warrning Tape | 3d | 2026-11-01 | 2026-11-03 | B2.33 71 00 02 128, B2.33 71 00 02 51 |  | 66d |
|  | Cables | **Cables** |  | 2026-10-04 | 2026-10-05 |  |  |  |
|  | 4C,10+1C,10mm2 | **4C,10+1C,10mm2** |  | 2026-10-04 | 2026-10-05 |  |  |  |
| B2.33 71 00 01 14 |  | Cable Pulling | 2d | 2026-10-04 | 2026-10-05 | B2.33 71 49.23.86, B2.33 71 00 01 11 |  | 3d |
|  | LV Panels | **0.6/1 KV Low Voltage Distribution Panels** |  | 2026-10-06 | 2026-10-22 |  |  |  |
| B2.33 71 26 30 |  | Land Adjustment | 2d | 2026-10-06 | 2026-10-07 | B2.33 71 00 01 14 |  | 3d |
| B2.33 71 26 31 |  | Foundation Works & Curing | 3d | 2026-10-14 | 2026-10-17 | B2.33 71 26 30, B2.33 71 26 34 |  | 3d |
| B2.33 71 26 29 |  | Installation of 0.6/1 KV Low Voltage Distribution Panels | 2d | 2026-10-21 | 2026-10-22 | B2.33 71 26 31, B2.33 71 26 32, B2.33 71 00 01 20 |  | 35d |
|  | LV Pillars | **0.6/1 KV Low Voltage Distribution Pillars** |  | 2026-10-08 | 2026-10-20 |  |  |  |
| B2.33 71 26 33 |  | Land Adjustment | 2d | 2026-10-08 | 2026-10-10 | B2.33 71 26 30 |  | 3d |
| B2.33 71 26 34 |  | Foundation Works & Curing | 3d | 2026-10-11 | 2026-10-13 | B2.33 71 26 33 |  | 3d |
| B2.33 71 26 32 |  | Installation of 0.6/1 KV Low Voltage Distribution Pillars | 2d | 2026-10-19 | 2026-10-20 | B2.33 71 26 34, B2.33 71 26 23 |  | 35d |
|  | Street Lighting | **Street Lighting** |  | 2026-10-06 | 2026-11-19 |  |  |  |
|  | Duct Banks | **Duct Banks** |  | 2026-10-06 | 2026-10-17 |  |  |  |
|  | 2 Way | **2 Way** |  | 2026-10-06 | 2026-10-17 |  |  |  |
| B2.33 71 00 02 73 |  | Excavation | 3d | 2026-10-06 | 2026-10-08 | B2.33 71 00 02 127 |  | 37d |
| B2.33 71 00 02 74 |  | Shuttering, Steel Fixing Incl. UPVC Pipe & Conc. Cast | 3d | 2026-10-10 | 2026-10-12 | B2.33 71 00 02 73 |  | 91d |
| B2.33 71 00 02 75 |  | Backfilling & Warrning Tape | 3d | 2026-10-14 | 2026-10-17 | B2.33 71 00 02 74, B2.33 71 00 02 78 |  | 90d |
|  | Drawpits | **Drawpits** |  | 2026-10-06 | 2026-10-13 |  |  |  |

| ID | WBS | Task | Duration | Start | Finish | Predecessors | Complete | Total float |
| --- | --- | --- | --- | --- | --- | --- | --- | --- |
| B2.33 71 00 02 76 |  | Excavation | 2d | 2026-10-06 | 2026-10-07 | B2.33 71 00 02 73 SS |  | 38d |
| B2.33 71 00 02 77 |  | Drawpits Installation | 2d | 2026-10-08 | 2026-10-10 | B2.33 71 00 02 76 |  | 90d |
| B2.33 71 00 02 78 |  | Backfilling & Warrning Tape | 3d | 2026-10-11 | 2026-10-13 | B2.33 71 00 02 77 |  | 90d |
|  | Cables | **Cables** |  | 2026-10-27 | 2026-11-19 |  |  |  |
|  | 4C,10+1C,10mm2 | **4C,10+1C,10mm2** |  | 2026-10-27 | 2026-11-19 |  |  |  |
| B2.33 71 19 162 |  | Land Adjustment | 2d | 2026-10-27 | 2026-10-28 | B2 33 73 00.01.15, B2.33 71 16.88 |  | 71d |
| B2.33 71 49.23.162 |  | Cable Pulling | 5d | 2026-10-29 | 2026-11-03 | B2.33 71 19 162 |  | 71d |
| B2.33 71 19 172 |  | Backfilling | 2d | 2026-11-18 | 2026-11-19 | B2.33 71 49.23.162, B2.33 71 16.62 |  | 59d |
|  | SL Poles | **SL Poles** |  | 2026-10-20 | 2026-11-01 |  |  |  |
|  | Pole (10 M Sngl Arm) | **Pole (10 M Single Arm)** |  | 2026-10-20 | 2026-11-01 |  |  |  |
| B2.33 71 16.87 |  | Excavation | 3d | 2026-10-20 | 2026-10-22 | B2.33 71 00.291, B2.33 71 16.116 |  | 0d |
| B2.33 71 16.88 |  | PC & RC Foundation | 3d | 2026-10-24 | 2026-10-26 | B2.33 71 16.87 |  | 0d |
| B2.33 71 16.89 |  | Lighting Poles Installation Incl power box, Cables | 3d | 2026-10-27 | 2026-10-29 | B2.33 71 16.88 |  | 0d |
| B2.26.56.19.15 |  | Lighting Luminares Inst | 2d | 2026-10-31 | 2026-11-01 | B2.33 71 16.89 |  | 0d |
| B2.33 71 16.90 |  | Backfilling, Grouting & Chamfering | 2d | 2026-10-31 | 2026-11-01 | B2.26.56.19.15 SS |  | 0d |
|  | Telecommunication | **Telecommunication Network** |  | 2026-07-02 | 2026-10-25 |  |  |  |
|  | Ducts | **Ducts** |  | 2026-07-02 | 2026-10-21 |  |  |  |
|  | (6*50mm) | **Size (6*50mm) HDPE ducts** |  | 2026-10-10 | 2026-10-18 |  |  |  |
| B2.1.33 81 26.150 |  | Excavation | 2d | 2026-10-10 | 2026-10-11 | B2.33 71 00 02 76, B2.33 71 00 02 73 |  | 37d |
| B2.1.33 81 26.151 |  | HDPE Pipe, Shuttering, Steel Fixing & Conc. Cast | 3d | 2026-10-12 | 2026-10-14 | B2.1.33 81 26.150 |  | 40d |
| B2.1.33 81 26.152 |  | Backfilling & Warrning Tape | 3d | 2026-10-15 | 2026-10-18 | B2.1.33 81 26.151 |  | 40d |
|  | (6*50mm+2*32mm) | **Size (6*50mm+2*32mm) HDPE ducts** |  | 2026-10-12 | 2026-10-20 |  |  |  |
| B2.1.33 81 26.153 |  | Excavation | 2d | 2026-10-12 | 2026-10-13 | B2.1.33 81 26.150 |  | 37d |
| B2.1.33 81 26.154 |  | HDPE Pipe, Shuttering, Steel Fixing & Conc. Cast | 3d | 2026-10-14 | 2026-10-17 | B2.1.33 81 26.153 |  | 81d |
| B2.1.33 81 26.155 |  | Backfilling & Warrning Tape | 3d | 2026-10-18 | 2026-10-20 | B2.1.33 81 26.154 |  | 81d |
|  | (6*50mm+4*32mm) | **Size (6*50mm+4*32mm) HDPE ducts** |  | 2026-10-14 | 2026-10-21 |  |  |  |
| B2.1.33 81 26.156 |  | Excavation | 2d | 2026-10-14 | 2026-10-15 | B2.1.33 81 26.153 |  | 37d |
| B2.1.33 81 26.157 |  | HDPE Pipe, Shuttering, Steel Fixing & Conc. Cast | 2d | 2026-10-17 | 2026-10-18 | B2.1.33 81 26.156, B2.1.33 81 26.159 |  | 37d |
| B2.1.33 81 26.158 |  | Backfilling & Warrning Tape | 3d | 2026-10-19 | 2026-10-21 | B2.1.33 81 26.157 |  | 37d |
|  | (2*32mm) | **Size (2*32mm) HDPE ducts** |  | 2026-07-02 | 2026-07-11 |  |  |  |
| B2.1.33 81 26.159 |  | Excavation | 3d | 2026-07-02 A | 2026-07-05 A | B2.31 23 00.591 | 100% |  |
| B2.1.33 81 26.160 |  | HDPE Pipe, Shuttering, Steel Fixing & Conc. Cast | 4d | 2026-07-04 A | 2026-07-07 A | B2.1.33 81 26.159 | 100% |  |
| B2.1.33 81 26.161 |  | Backfilling & Warrning Tape | 6d | 2026-07-05 A | 2026-07-11 A | B2.1.33 81 26.160 | 100% |  |
|  | Manholes | **Manholes** |  | 2026-10-14 | 2026-10-24 |  |  |  |
|  | Manhole Type 1 | **Manhole Type 1** |  | 2026-10-14 | 2026-10-21 |  |  |  |
| B2.31 23 00.627 |  | Excavation | 2d | 2026-10-14 | 2026-10-15 | B2.1.33 81 26.159, B2.1.33 81 26.156 SS |  | 38d |
| B2.33 71 00.262 |  | Manhole Installation | 2d | 2026-10-17 | 2026-10-18 | B2.31 23 00.627 |  | 78d |
| B2.33 71 00.263 |  | Backfilling & Warrning Tape | 3d | 2026-10-19 | 2026-10-21 | B2.33 71 00.262 |  | 78d |
|  | Manhole Type 2 | **Manhole Type 2** |  | 2026-10-17 | 2026-10-24 |  |  |  |
| B2.31 23 00.628 |  | Excavation | 2d | 2026-10-17 | 2026-10-18 | B2.31 23 00.627 |  | 38d |
| B2.33 71 00.264 |  | Manhole Installation | 2d | 2026-10-19 | 2026-10-20 | B2.31 23 00.628 |  | 38d |
| B2.33 71 00.265 |  | Backfilling & Warrning Tape | 2d | 2026-10-22 | 2026-10-24 | B2.33 71 00.264, B2.1.33 81 26.152, B2.1.33 81 26.158, B2.1.33 81 26.161 |  | 37d |
|  | Crossing Ducts | **Road Crossing Ducts** |  | 2026-10-19 | 2026-10-25 |  |  |  |
|  | 1 | **Size (6X50mm) HDPE** |  | 2026-10-19 | 2026-10-25 |  |  |  |
| B2.31 23 00.626 |  | Excavation | 2d | 2026-10-19 | 2026-10-20 | B2.31 23 00.628 |  | 77d |
| B2.33 71 00.260 |  | Shuttering, Steel Fixing Incl. UPVC Pipe & Conc. Cast | 2d | 2026-10-21 | 2026-10-22 | B2.31 23 00.626 |  | 77d |
| B2.33 71 00.261 |  | Backfilling & Warrning Tape | 2d | 2026-10-24 | 2026-10-25 | B2.33 71 00.260, B2.33 71 00.263, B2.33 71 00.255 |  | 77d |
|  | Earth & Road Works | **Earth & Road Works** |  | 2025-12-05 | 2026-11-15 |  |  |  |
|  | Earth Works | **Earth Works** |  | 2025-12-05 | 2026-05-07 |  |  |  |
| B1.2.31 23 16.01.11 |  | Roadway Excavation | 121d | 2025-12-05 A | 2026-05-07 A | DMM2-Eng-MS-78 | 100% |  |
| B1.2.31 23 23.01.11 |  | Embankment Backfiling | 118.03d | 2025-12-07 A | 2026-05-06 A | B1.2.31 23 16.01.11 | 100% |  |
|  | Earth Layers | **Earth Layers** |  | 2026-02-18 | 2026-09-17 |  |  |  |
| B1.2.32 11 13.01.11 |  | Subgrade | 166.9d | 2026-02-18 A | 2026-09-17 | B1.2.31 23 23.01.11 | 65% | 114d |
| B1.2.32 11 23.01.11 |  | Aggregate Base Course | 100d | 2026-05-20 A | 2026-09-17 | B1.2.32 11 13.01.11 FF | 52% | 114d |
|  | Interlock | **Interlock** |  | 2026-10-31 | 2026-11-01 |  |  |  |
| B1.2.32 14 13.13.11 |  | 60mm thick - Interlocking Block Pavers | 2d | 2026-10-31 | 2026-11-01 | B2.33 71 16.90 SS, DMM2-Proc-Delv-7268 |  | 0d |
|  | Curbstone | **Curbstone** |  | 2026-10-31 | 2026-11-15 |  |  |  |
|  | Pre Install | **Pre-Installation** |  | 2026-10-31 | 2026-11-04 |  |  |  |
| B2.31 23 00.301 |  | Excavation | 2d | 2026-10-31 | 2026-11-01 | B1.2.32 14 13.13.11 SS |  | 0d |
| B1.2.32 14 13.13.211 |  | PCC | 2d | 2026-11-01 | 2026-11-02 | B2.31 23 00.301 SS+1d |  | 6d |
| 32 16 13.0011 |  | Haunching | 2d | 2026-11-03 | 2026-11-04 | B1.2.32 14 13.13.211 |  | 6d |
|  | Installation | **Installation** |  | 2026-11-05 | 2026-11-12 |  |  |  |
| B1.2.32 16.13.01.11 |  | Curb Stone, Type K1 | 3d | 2026-11-05 | 2026-11-08 | 32 16 13.0011 |  | 6d |
| B1.2.32 16.13.02.10 |  | Dropped Curb, Type K3 | 1d | 2026-11-09 | 2026-11-09 | B1.2.32 16.13.01.11, 32 16 13.0011 |  | 6d |
| B1.2.32 16.13.03.11 |  | Edge Curb, Type K4 | 1d | 2026-11-10 | 2026-11-10 | B1.2.32 16.13.02.10, 32 16 13.0011 |  | 6d |
| B1.2.32 16.13.0411 |  | Heel Curb, Type K5 | 1d | 2026-11-11 | 2026-11-11 | B1.2.32 16.13.03.11, 32 16 13.0011 |  | 6d |
| B1.2.32 16.13.05.10 |  | Transition Curb | 1d | 2026-11-12 | 2026-11-12 | B1.2.32 16.13.0411, 32 16 13.0011 |  | 6d |
|  | Finishing | **Finishing** |  | 2026-11-14 | 2026-11-15 |  |  |  |
| 32 16 13.011 |  | Finishing, Fareface | 2d | 2026-11-14 | 2026-11-15 | B1.2.32 16.13.01.11, B1.2.32 16.13.02.10, B1.2.32 16.13.03.11, B1.2.32 16.13.0411, B1.2.32 16.13.05.10, 32 16 134 |  | 6d |
|  | Asphalt Layers | **Asphalt Layers** |  | 2026-05-23 | 2026-09-20 |  |  |  |

| ID | WBS | Task | Duration | Start | Finish | Predecessors | Complete | Total float |
| --- | --- | --- | --- | --- | --- | --- | --- | --- |
| B1.2.32 11 26.01.11 |  | Bituminous Base Course including Prime Coat (MC1) and tack coat (RC2) | 98d | 2026-05-23 A | 2026-09-17 | B1.2.32 11 23.01.11 SS | 69% | 53d |
| B1.2.32 12 16.01.11 |  | Bituminous concrete Wearing Course, including tack coat (RC2) | 2d | 2026-09-19 | 2026-09-20 | B1.2.32 11 26.01.11 |  | 53d |
|  | Pavement Marking | **Pavement Marking** |  | 2026-09-21 | 2026-10-07 |  |  |  |
| B1.2.32 17 23.02.11 |  | Retroreflective Thermoplastic Yellow, Traffic lines | 2d | 2026-09-21 | 2026-09-22 | B1.2.32 12 16.01.11 |  | 106d |
| B1.2.32 17 23.01.11 |  | Retroreflective Thermoplastic White Traffic lines | 2d | 2026-10-06 | 2026-10-07 | B1.2.32 12 16.01.11, B1.2.32 17 23.01.1 |  | 94d |
|  | Traffic Signs | **Traffic Signs** |  | 2026-10-31 | 2026-11-05 |  |  |  |
|  | Pre Install | **Pre-Installation** |  | 2026-10-31 | 2026-11-03 |  |  |  |
| B2.31 23 00.311 |  | Excavation | 2d | 2026-10-31 | 2026-11-01 | B2.31 23 00.301 SS |  | 0d |
| 10 14 53.011 |  | Foundation | 2d | 2026-11-02 | 2026-11-03 | B2.31 23 00.311 |  | 71d |
|  | Installation | **Installation** |  | 2026-11-04 | 2026-11-05 |  |  |  |
| B1.2.10 14 14.0211 |  | Ground mounted, 1 Sheet Alumenium, Double post | 2d | 2026-11-04 | 2026-11-05 | 10 14 53.011, B1.2.32 17 23.02.11, B1.2.32 17 23.01.11, DMM2-Proc-Delv-7272 |  | 71d |
| B1.2.10 14 53.0111 |  | 1 Sheet Alumenium, Single post | 2d | 2026-11-04 | 2026-11-05 | 10 14 53.011, B1.2.32 17 23.02.11, B1.2.32 17 23.01.11 |  | 71d |
|  | Customs Road 06 | **Customs Road 06** |  | 2025-12-07 | 2026-11-29 |  |  |  |
|  | Wet Networks | **Wet Networks** |  | 2026-03-04 | 2026-09-22 |  |  |  |
|  | Stormwater Network | **Stormwater Network** |  | 2026-03-04 | 2026-09-22 |  |  |  |
|  | GRP | **GRP** |  | 2026-03-04 | 2026-05-24 |  |  |  |
|  | ?40011 | **?1400** |  | 2026-03-04 | 2026-05-24 |  |  |  |
|  | 1 | **Depth From 2.5m to 3.5m** |  | 2026-03-04 | 2026-05-24 |  |  |  |
| B6.33 42 11.34-1.11 |  | Excavation | 1.25d | 2026-03-04 A | 2026-03-05 A | B1.1.31 23 23.152 | 100% |  |
| B6.33 42 11.34-1.13 |  | Sand Bedding | 0.5d | 2026-03-07 A | 2026-03-08 A | B6.33 42 11.34-1.11 | 100% |  |
| B6.33 42 11.34-1.15 |  | Pipe Laying | 5.48d | 2026-03-08 A | 2026-03-16 A | B6.33 42 11.34-1.13 | 100% |  |
| B6.33 42 11.34-1.17 |  | Embedment & Test | 12.52d | 2026-05-06 A | 2026-05-20 A | B6.33 42 11.34-1.15 | 100% |  |
| B6.33 42 11.34-1.19 |  | Backfilling & Warrning Tape | 11.65d | 2026-05-11 A | 2026-05-24 A | B6.33 42 11.34-1.17 | 100% |  |
|  | Strom Manholes | **Manholes** |  | 2026-05-20 | 2026-09-20 |  |  |  |
|  | 3 | **?2000** |  | 2026-05-20 | 2026-09-20 |  |  |  |
|  | 3 | **Depth From 2.5m to 3.5m** |  | 2026-05-20 | 2026-09-20 |  |  |  |
| B6.33 05 39.01.3727 |  | Excavation & Compaction | 2d | 2026-05-20 A | 2026-05-21 A | B6.33 42 11.34-1.11 | 100% |  |
| B6.33 05 39.01.3737 |  | Blinding Conc, & RC Base | 3d | 2026-05-23 A | 2026-05-25 A | B6.33 05 39.01.3727 | 100% |  |
| B6.33 05 39.01.3747 |  | Manhole Installation | 89d | 2026-06-07 A | 2026-09-19 | B6.33 05 39.01.3737 | 54% | 113d |
| B6.33 05 39.01.3757 |  | Test, Internal Finishing, Benching & Cover | 88.67d | 2026-06-08 A | 2026-09-20 | B6.33 05 39.01.3747 SS | 33% | 112.33d |
| B6.33 05 39.01.3767 |  | Backfilling | 36.33d | 2026-08-06 A | 2026-09-19 | B6.33 05 39.01.3757 SS | 83% | 113d |
|  | Catch Basins | **Catch Basins** |  | 2026-03-09 | 2026-09-22 |  |  |  |
|  | Sing | **Single** |  | 2026-06-10 | 2026-09-19 |  |  |  |
| B6.33 05 40.01.490 |  | Excavation, Compaction & Vapour Barrier | 86d | 2026-06-10 A | 2026-09-19 | B6.33 05 39.01.3727 | 80% | 113d |
| B6.33 05 40.01.520 |  | Backfilling, DI Frame & Grate Cover Fixing | 85d | 2026-06-10 A | 2026-09-17 | B6.33 42 11.36-197 | 80% | 11d |
| B6.33 05 40.01.500 |  | Blinding Conc. | 84d | 2026-06-13 A | 2026-09-19 | B6.33 05 40.01.490 SS | 80% | 113d |
| B6.33 05 40.01.510 |  | Catch Basin Installation | 82d | 2026-06-15 A | 2026-09-19 | B6.33 05 40.01.500 SS | 80% | 113d |
|  | Dou | **Double** |  | 2026-09-09 | 2026-09-22 |  |  |  |
| B6.33 05 40.01.930 |  | Excavation, Compaction & Vapour Barrier | 6.72d | 2026-09-09 A | 2026-09-19 | B6.33 05 40.01.490 SS | 44% | 113.88d |
| B6.33 05 40.01.940 |  | Blinding Conc. | 4.72d | 2026-09-12 A | 2026-09-19 | B6.33 05 40.01.930 SS | 44% | 113.88d |
| B6.33 05 40.01.950 |  | Catch Basin Installation | 3.28d | 2026-09-14 A | 2026-09-19 | B6.33 05 40.01.940 SS | 44% | 113.32d |
| B6.33 05 40.01.960 |  | Backfilling, DI Frame & Grate Cover Fixing | 6d | 2026-09-16 | 2026-09-22 | B6.33 42 11.35-124, B6.33 42 11.36-197 |  | 7d |
|  | UPVC | **UPVC** |  | 2026-03-09 | 2026-09-19 |  |  |  |
|  | UPVC300 | **?300 From 0.0 to 1.5m** |  | 2026-03-09 | 2026-06-08 |  |  |  |
| B6.33 42 11.35-124 |  | Fittings & Pipe Installation | 4.5d | 2026-03-09 A | 2026-03-16 A | B6.33 42 11.35-112 | 100% |  |
| B6.33 42 11.35-112 |  | Catch Basin Opening Prep. | 2d | 2026-06-07 A | 2026-06-08 A | B6.33 05 40.01.950 SS, B6.33 05 40.01.510 SS | 100% |  |
|  | UPVC3001 | **?400 From 0.0 to 1.5m** |  | 2026-03-09 | 2026-09-19 |  |  |  |
| B6.33 42 11.36-197 |  | Fittings & Pipe Installation | 4.5d | 2026-03-09 A | 2026-03-16 A | B6.33 42 11.36-185 SS | 100% |  |
| B6.33 42 11.36-185 |  | Catch Basin Opening Prep. | 14d | 2026-09-02 A | 2026-09-19 | B6.33 42 11.35-112 | 61% | 113d |
|  | Dry Networks | **Dry Networks** |  | 2026-09-24 | 2026-11-22 |  |  |  |
|  | MV Network | **Medium Voltage Network** |  | 2026-09-29 | 2026-11-04 |  |  |  |
|  | Cables | **Cables** |  | 2026-09-29 | 2026-11-01 |  |  |  |
|  | 3C,500mm2 | **3C,500mm2** |  | 2026-09-29 | 2026-10-24 |  |  |  |
| B2.33 71 49.23.92 |  | Cable 13.8 kV Unarmored | 4d | 2026-09-29 | 2026-10-03 | B2.33 71 49.23.77, B6.33 05 40.01.960, B6.33 05 40.01.520 |  | 3d |
| B2.33 71 49.23.93 |  | Straight joints cables | 3d | 2026-10-04 | 2026-10-06 | B2.33 71 49.23.92 |  | 88d |
| B2.33 71 49.23.94 |  | Cable Termination | 3d | 2026-10-20 | 2026-10-24 | B2.33 71 49.23.93, B2.33 71 49.23.88 |  | 76.88d |
|  | 3C,50mm2 | **3C,50mm2** |  | 2026-10-04 | 2026-11-01 |  |  |  |
| B2.33 71 49.23.95 |  | Cable 13.8 kV Unarmored | 4d | 2026-10-04 | 2026-10-07 | B2.33 71 49.23.92 |  | 3d |
| B2.33 71 49.23.96 |  | Straight joints cables | 3d | 2026-10-08 | 2026-10-11 | B2.33 71 49.23.95 |  | 86d |
| B2.33 71 49.23.97 |  | Cable Termination | 3d | 2026-10-29 | 2026-11-01 | B2.33 71 49.23.96, B2.33 71 49.23.73 |  | 71d |
|  | RMU | **RMU** |  | 2026-10-08 | 2026-11-04 |  |  |  |
| B2 33 73 00.02.5 |  | Land Adjustment | 3d | 2026-10-08 | 2026-10-11 | B2.33 71 49.23.95 |  | 30d |
| B2 33 73 00.02.7 |  | Foundation Works & Curing | 4d | 2026-10-12 | 2026-10-15 | B2 33 73 00.02.5 |  | 76d |
| B2 33 73 00.02.9 |  | Installation of Ring Main Unit RMU, 13.8KV | 3d | 2026-10-17 | 2026-10-19 | B2 33 73 00.02.7 |  | 77d |
| B2.33 71 49.23.102 |  | Normally Open Point 13.8 KV | 3d | 2026-11-02 | 2026-11-04 | B2 33 73 00.02.9, B2.33 71 49.23.97, B2.33 71 49.23.05 |  | 71d |
|  | Units Substation | **Units Substation** |  | 2026-10-12 | 2026-10-24 |  |  |  |
| B2 33 73 00.01.5 |  | Land Adjustment | 3d | 2026-10-12 | 2026-10-14 | B2 33 73 00.02.5 |  | 30d |
| B2 33 73 00.01.7 |  | Foundation Works & Curing | 4d | 2026-10-17 | 2026-10-20 | B2 33 73 00.01.5, B2 33 73 00.02.7 |  | 76d |
| B2 33 73 00.01.9 |  | Installation of Unit Substation 13.8/0.4 K V | 3d | 2026-10-21 | 2026-10-24 | B2 33 73 00.01.7, B2 33 73 00.02.9 |  | 76d |
|  | LV Network | **Low Voltage Network** |  | 2026-09-24 | 2026-11-11 |  |  |  |

| ID | WBS | Task | Duration | Start | Finish | Predecessors | Complete | Total float |
| --- | --- | --- | --- | --- | --- | --- | --- | --- |
|  | Duct Banks | **Duct Banks** |  | 2026-09-24 | 2026-11-11 |  |  |  |
|  | 2 Way | **2 Way** |  | 2026-09-24 | 2026-11-11 |  |  |  |
| B2.33 71 00 02 142 |  | Excavation | 2d | 2026-09-24 | 2026-09-26 | B6.33 05 40.01.520, B6.33 05 40.01.960 |  | 82d |
| B2.33 71 00 02 143 |  | Shuttering, Steel Fixing Incl. UPVC Pipe & Conc. Cast | 3d | 2026-09-27 | 2026-09-29 | B2.33 71 00 02 142 |  | 99d |
| B2.33 71 00 02 144 |  | Backfilling & Warrning Tape | 3d | 2026-11-09 | 2026-11-11 | B2.33 71 00 02 143, B2.33 71 00 02 111, B2.33 71 00 02 108 SS, B2.33 71 00 02 102 |  | 65d |
|  | 6 Way | **6 Way** |  | 2026-09-27 | 2026-10-05 |  |  |  |
| B2.33 71 00 02 130 |  | Excavation | 2d | 2026-09-27 | 2026-09-28 | B2.33 71 00 02 142 |  | 82d |
| B2.33 71 00 02 131 |  | Shuttering, Steel Fixing Incl. UPVC Pipe & Conc. Cast | 3d | 2026-09-29 | 2026-10-01 | B2.33 71 00 02 130 |  | 97d |
| B2.33 71 00 02 132 |  | Backfilling & Warrning Tape | 3d | 2026-10-03 | 2026-10-05 | B2.33 71 00 02 131 |  | 97d |
|  | 8 Way | **8 Way** |  | 2026-09-29 | 2026-10-07 |  |  |  |
| B2.33 71 00 02 133 |  | Excavation | 2d | 2026-09-29 | 2026-09-30 | B2.33 71 00 02 130 |  | 82d |
| B2.33 71 00 02 134 |  | Shuttering, Steel Fixing Incl. UPVC Pipe & Conc. Cast | 3d | 2026-10-01 | 2026-10-04 | B2.33 71 00 02 133 |  | 95d |
| B2.33 71 00 02 135 |  | Backfilling & Warrning Tape | 3d | 2026-10-05 | 2026-10-07 | B2.33 71 00 02 134 |  | 95d |
|  | Cables | **Cables** |  | 2026-10-08 | 2026-10-12 |  |  |  |
|  | 4C,10+1C,10mm2 | **4C,10+1C,10mm2** |  | 2026-10-08 | 2026-10-10 |  |  |  |
| B2.33 71 00 01 17 |  | Cable Pulling | 2d | 2026-10-08 | 2026-10-10 | B2.33 71 49.23.95 |  | 3d |
|  | 4C,50+1C,25mm2 | **4C,50+1C,25mm2** |  | 2026-10-11 | 2026-10-12 |  |  |  |
| B2.33 71 00 01 18 |  | Cable Pulling | 2d | 2026-10-11 | 2026-10-12 | B2.33 71 00 01 17 |  | 3d |
|  | LV Panels | **0.6/1 KV Low Voltage Distribution Panels** |  | 2026-10-15 | 2026-10-28 |  |  |  |
| B2.33 71 26 021 |  | Land Adjustment | 2d | 2026-10-15 | 2026-10-17 | B2 33 73 00.01.5 |  | 30d |
| B2.33 71 26 022 |  | Foundation Works & Curing | 3d | 2026-10-24 | 2026-10-26 | B2.33 71 26 021, B2.33 71 26 012, B2.33 71 26 25 |  | 30d |
| B2.33 71 26 023 |  | Installation of 0.6/1 KV Low Voltage Distribution Panels | 2d | 2026-10-27 | 2026-10-28 | B2.33 71 26 022, B2.33 71 26 013, B2.33 71 00 01 20 |  | 30d |
|  | LV Pillars | **0.6/1 KV Low Voltage Distribution Pillars** |  | 2026-10-18 | 2026-10-25 |  |  |  |
| B2.33 71 26 011 |  | Land Adjustment | 2d | 2026-10-18 | 2026-10-19 | B2.33 71 26 021 |  | 30d |
| B2.33 71 26 012 |  | Foundation Works & Curing | 3d | 2026-10-20 | 2026-10-22 | B2.33 71 26 011 |  | 30d |
| B2.33 71 26 013 |  | Installation of 0.6/1 KV Low Voltage Distribution Pillars | 2d | 2026-10-24 | 2026-10-25 | B2.33 71 26 012, B2.33 71 00 01 20 |  | 31d |
|  | Street Lighting | **Street Lighting** |  | 2026-10-01 | 2026-11-22 |  |  |  |
|  | Duct Banks | **Duct Banks** |  | 2026-10-01 | 2026-10-10 |  |  |  |
|  | 4 Way | **4 Way** |  | 2026-10-01 | 2026-10-10 |  |  |  |
| B2.33 71 00 02 154 |  | Excavation | 2d | 2026-10-01 | 2026-10-03 | B2.33 71 00 02 133, B6.33 05 40.01.960, B6.33 05 40.01.520 |  | 82d |
| B2.33 71 00 02 155 |  | Shuttering, Steel Fixing Incl. UPVC Pipe & Conc. Cast | 3d | 2026-10-04 | 2026-10-06 | B2.33 71 00 02 154 |  | 83d |
| B2.33 71 00 02 156 |  | Backfilling & Warrning Tape | 3d | 2026-10-07 | 2026-10-10 | B2.33 71 00 02 155 |  | 83d |
|  | Drawpits | **Drawpits** |  | 2026-10-04 | 2026-10-31 |  |  |  |
| B2.33 71 00 02 157 |  | Excavation | 2d | 2026-10-04 | 2026-10-05 | B2.33 71 00 02 154 |  | 84d |
| B2.33 71 00 02 158 |  | Drawpits Installation | 2d | 2026-10-06 | 2026-10-07 | B2.33 71 00 02 157 |  | 85d |
| B2.33 71 00 02 159 |  | Backfilling & Warrning Tape | 3d | 2026-10-27 | 2026-10-31 | B2.33 71 00 02 158, B2.33 71 00 02 60, B2.33 71 00 02 63, B2.33 71 00 02 156 |  | 68.91d |
|  | Cables | **Cables** |  | 2026-10-13 | 2026-11-19 |  |  |  |
|  | 4C,16+1C,16mm2 | **4C,16+1C,16mm2** |  | 2026-10-13 | 2026-11-19 |  |  |  |
| B2.33 71 19 182 |  | Land Adjustment | 3d | 2026-10-13 | 2026-10-15 | B2.33 71 00 01 18 |  | 3d |
| B2.33 71 49.23.172 |  | Cable Pulling | 3d | 2026-10-17 | 2026-10-19 | B2.33 71 19 182 |  | 80d |
| B2.33 71 19 192 |  | Backfilling | 3d | 2026-11-17 | 2026-11-19 | B2.33 71 49.23.172, B2.33 71 19 132 SS |  | 56d |
|  | SL Poles | **SL Poles** |  | 2026-10-31 | 2026-11-11 |  |  |  |
|  | Pole (16 M Dbl Arm) | **Pole (16 M Double Arm)** |  | 2026-10-31 | 2026-11-11 |  |  |  |
| B2.33 71 16.103 |  | Excavation | 3d | 2026-10-31 | 2026-11-02 | B2.33 71 16.90 SS |  | 58d |
| B2.33 71 16.104 |  | PC & RC Foundation | 3d | 2026-11-03 | 2026-11-05 | B2.33 71 16.103 |  | 58d |
| B2.33 71 16.105 |  | Lighting Poles Installation Incl power box, Cables | 2d | 2026-11-07 | 2026-11-08 | B2.33 71 16.104 |  | 58d |
| B2.26.56.19.19 |  | Lighting Luminares Inst | 2d | 2026-11-09 | 2026-11-10 | B2.33 71 16.105, B2.26.56.19.2 |  | 58d |
| B2.33 71 16.106 |  | Backfilling, Grouting & Chamfering | 3d | 2026-11-09 | 2026-11-11 | B2.26.56.19.19 SS |  | 58d |
|  | SL Pillars | **SL Pillars** |  | 2026-11-09 | 2026-11-22 |  |  |  |
| B2.33 71 26 033 |  | Pillars Installation (Internal Wiring) | 2d | 2026-11-09 | 2026-11-10 | B2.33 71 16.105, B2.33 71 26 013 |  | 67d |
| B2.33 71 26 044 |  | KWH meter mounting a frame installation | 2d | 2026-11-21 | 2026-11-22 | B2.33 71 26 033, B2.33 71 26 043 |  | 59d |
|  | Earth & Road Works | **Earth & Road Works** |  | 2025-12-07 | 2026-11-29 |  |  |  |
|  | Earth Works | **Earth Works** |  | 2025-12-07 | 2025-12-14 |  |  |  |
| B1.2.31 23 16.01.14 |  | Roadway Excavation | 4.61d | 2025-12-07 A | 2025-12-12 A | DMM2-Eng-MS-78 | 100% |  |
| B1.2.31 23 23.01.14 |  | Embankment Backfiling | 6d | 2025-12-07 A | 2025-12-14 A | B1.2.31 23 16.01.14 | 100% |  |
|  | Earth Layers | **Earth Layers** |  | 2026-04-01 | 2026-09-17 |  |  |  |
| B1.2.32 11 13.01.14 |  | Subgrade | 141.05d | 2026-04-01 A | 2026-09-17 | B1.2.31 23 23.01.14 | 65% | 114.95d |
| B1.2.32 11 23.01.14 |  | Aggregate Base Course | 98.47d | 2026-05-21 A | 2026-09-17 | B1.2.32 11 13.01.14 FF | 49% | 114.47d |
|  | Interlock | **Interlock** |  | 2026-11-12 | 2026-11-14 |  |  |  |
| B1.2.32 14 13.13.14 |  | 60mm thick - Interlocking Block Pavers | 2d | 2026-11-12 | 2026-11-14 | B2.33 71 16.106 |  | 58d |
|  | Curbstone | **Curbstone** |  | 2026-10-31 | 2026-11-16 |  |  |  |
|  | Pre Install | **Pre-Installation** |  | 2026-10-31 | 2026-11-07 |  |  |  |
| B2.31 23 00.391 |  | Excavation | 2d | 2026-10-31 | 2026-11-01 | B2.31 23 00.311 SS |  | 0d |
| B1.2.32 14 13.13.214 |  | PCC | 2d | 2026-11-02 | 2026-11-03 | B2.31 23 00.391 |  | 0d |
| 32 16 13.0014 |  | Haunching | 3d | 2026-11-04 | 2026-11-07 | B1.2.32 14 13.13.214 |  | 0d |
|  | Installation | **Installation** |  | 2026-11-08 | 2026-11-16 |  |  |  |
| B1.2.32 16.13.01.14 |  | Curb Stone, Type K1 | 2d | 2026-11-08 | 2026-11-09 | 32 16 13.0014 |  | 0d |
| B1.2.32 16.13.02.13 |  | Dropped Curb, Type K3 | 2d | 2026-11-10 | 2026-11-11 | B1.2.32 16.13.01.14, 32 16 13.0014 |  | 0d |
| B1.2.32 16.13.03.14 |  | Edge Curb, Type K4 | 2d | 2026-11-12 | 2026-11-14 | B1.2.32 16.13.02.13, 32 16 13.0014 |  | 0d |
| B1.2.32 16.13.0414 |  | Heel Curb, Type K5 | 2d | 2026-11-15 | 2026-11-16 | B1.2.32 16.13.03.14, 32 16 13.0014 |  | 0d |

| ID | WBS | Task | Duration | Start | Finish | Predecessors | Complete | Total float |
| --- | --- | --- | --- | --- | --- | --- | --- | --- |
| B1.2.32 16.13.05.13 |  | Transition Curb | 2d | 2026-11-15 | 2026-11-16 | B1.2.32 16.13.0414 SS, 32 16 13.0014 |  | 0d |
|  | Finishing | **Finishing** |  | 2026-11-15 | 2026-11-16 |  |  |  |
| 32 16 13.014 |  | Finishing, Fareface | 2d | 2026-11-15 | 2026-11-16 | B1.2.32 16.13.01.14, B1.2.32 16.13.02.13, B1.2.32 16.13.03.14 SS, B1.2.32 16.13.0414 SS, B1.2.32 16.13.05.13 SS |  | 0d |
|  | Asphalt Layers | **Asphalt Layers** |  | 2026-05-25 | 2026-11-22 |  |  |  |
| B1.2.32 11 26.01.14 |  | Bituminous Base Course including Prime Coat (MC1) and tack coat (RC2) | 95.94d | 2026-05-25 A | 2026-09-17 | B1.2.32 11 23.01.14 SS | 74% | 50d |
| B1.2.32 12 16.01.14 |  | Bituminous concrete Wearing Course, including tack coat (RC2) | 5d | 2026-11-17 | 2026-11-22 | B1.2.32 11 26.01.14, B7.32 31 26.01-194, 32 16 13.014, DMM2-Proc-Delv-7265 FF |  | 0d |
|  | Pavement Marking | **Pavement Marking** |  | 2026-11-23 | 2026-11-26 |  |  |  |
| B1.2.32 17 23.02.14 |  | Retroreflective Thermoplastic Yellow, Traffic lines | 2d | 2026-11-23 | 2026-11-24 | B1.2.32 12 16.01.14 |  | 53d |
| B1.2.32 17 23.01.14 |  | Retroreflective Thermoplastic White Traffic lines | 2d | 2026-11-25 | 2026-11-26 | B1.2.32 12 16.01.14, B1.2.32 17 23.02.14 |  | 53d |
|  | Traffic Signs | **Traffic Signs** |  | 2026-10-31 | 2026-11-29 |  |  |  |
|  | Pre Install | **Pre-Installation** |  | 2026-10-31 | 2026-11-03 |  |  |  |
| B2.31 23 00.401 |  | Excavation | 2d | 2026-10-31 | 2026-11-01 | B2.31 23 00.391 SS |  | 73d |
| 10 14 53.014 |  | Foundation | 2d | 2026-11-02 | 2026-11-03 | B2.31 23 00.401 |  | 73d |
|  | Installation | **Installation** |  | 2026-11-28 | 2026-11-29 |  |  |  |
| B1.2.10 14 53.0114 |  | 1 Sheet Alumenium, Single post | 2d | 2026-11-28 | 2026-11-29 | 10 14 53.014, B1.2.32 17 23.02.14, B1.2.32 17 23.01.14, B1.2.10 14 53.018, B1.2.10 14 53.028 |  | 53d |
|  | Landscape | **Landscape** |  | 2026-10-20 | 2026-11-10 |  |  |  |
|  | Fences | **Fences** |  | 2026-10-20 | 2026-11-10 |  |  |  |
|  | (ZATCA HCIS) | **Steel fence (ZATCA HCIS)** |  | 2026-10-20 | 2026-11-10 |  |  |  |
| B7.32 31 26.01-190 |  | Earthwork | 6d | 2026-10-20 | 2026-10-26 | B7.32 31 26.01-19 |  | 5d |
| B7.32 31 26.01-192 |  | Foundation | 6d | 2026-10-27 | 2026-11-02 | B7.32 31 26.01-190 |  | 5d |
| B7.32 31 26.01-194 |  | Fence Installation | 7d | 2026-11-03 | 2026-11-10 | B7.32 31 26.01-192 |  | 5d |
|  | Customs Rd 02 | **Customs Road 02** |  | 2025-12-12 | 2026-11-25 |  |  |  |
|  | Wet Networks | **Wet Networks** |  | 2026-02-08 | 2026-11-25 |  |  |  |
|  | Sewerage Network | **Sewerage Network** |  | 2026-02-08 | 2026-10-14 |  |  |  |
|  | GRP | **GRP Pipes** |  | 2026-02-08 | 2026-09-22 |  |  |  |
|  | 200 | **?150** |  | 2026-02-11 | 2026-09-22 |  |  |  |
|  | 1 | **Depth From 1.5m to 2.5m** |  | 2026-02-11 | 2026-09-22 |  |  |  |
| B5.33 31 00.01.1 |  | Excavation | 2d | 2026-02-11 A | 2026-02-12 A | B1.1.31 23 23.132 SS | 100% |  |
| B5.33 31 00.01.9 |  | Sand Bedding | 2d | 2026-02-14 A | 2026-02-15 A | B5.33 31 00.01.1 | 100% |  |
| B5.33 31 00.01.17 |  | Pipe Laying | 1d | 2026-02-16 A | 2026-02-16 A | B5.33 31 00.01.9 | 100% |  |
| B5.33 31 00.01.25 |  | Embedment & Test | 116.67d | 2026-05-03 A | 2026-09-21 | B5.33 31 00.01.17 | 10% | 111d |
| B5.33 31 00.01.33 |  | Backfilling & Warrning Tape | 114.61d | 2026-05-05 A | 2026-09-22 | B5.33 31 00.01.25 FF, B5.33 31 23.025 SS | 10% | 110d |
|  | 1 | **?200** |  | 2026-02-08 | 2026-09-21 |  |  |  |
|  | 4 | **Depth From 2.5m to 3.5m** |  | 2026-02-08 | 2026-09-21 |  |  |  |
| B5.33 31 00.01.3 |  | Excavation | 3d | 2026-02-08 A | 2026-02-10 A | B5.33 31 00.01.1 | 100% |  |
| B5.33 31 00.01.11 |  | Sand Bedding | 1d | 2026-02-11 A | 2026-02-11 A | B5.33 31 00.01.3 | 100% |  |
| B5.33 31 00.01.19 |  | Pipe Laying | 1.75d | 2026-02-12 A | 2026-02-14 A | B5.33 31 00.01.11 | 100% |  |
| B5.33 31 00.01.27 |  | Embedment & Test | 116.67d | 2026-05-03 A | 2026-09-21 | B5.33 31 00.01.19 | 10% | 111d |
| B5.33 31 00.01.35 |  | Backfilling & Warrning Tape | 110.56d | 2026-05-11 A | 2026-09-21 | B5.33 31 00.01.27 FF | 10% | 111d |
|  | 3 | **Depth From 3.5m to 4.5m** |  | 2026-02-10 | 2026-09-21 |  |  |  |
| B5.33 31 00.01.5 |  | Excavation | 3d | 2026-02-10 A | 2026-02-12 A | B5.33 31 00.01.3 | 100% |  |
| B5.33 31 00.01.13 |  | Sand Bedding | 1.75d | 2026-02-12 A | 2026-02-14 A | B5.33 31 00.01.5 | 100% |  |
| B5.33 31 00.01.21 |  | Pipe Laying | 0.5d | 2026-02-15 A | 2026-02-16 A | B5.33 31 00.01.13 | 100% |  |
| B5.33 31 00.01.29 |  | Embedment & Test | 115.67d | 2026-05-04 A | 2026-09-21 | B5.33 31 00.01.21 | 10% | 111d |
| B5.33 31 00.01.37 |  | Backfilling & Warrning Tape | 3d | 2026-08-15 A | 2026-08-18 A | B6.33 05 39.01.1617, B5.33 31 00.01.29 SS, B6.33 05 39.01.717 SS | 100% |  |
|  | 1 | **Depth From 4.5m to 5.5m** |  | 2026-02-09 | 2026-09-21 |  |  |  |
| B5.33 31 00.01.7 |  | Excavation | 1.75d | 2026-02-09 A | 2026-02-10 A | B5.33 31 00.01.5 | 100% |  |
| B5.33 31 00.01.15 |  | Sand Bedding | 0.5d | 2026-02-11 A | 2026-02-12 A | B5.33 31 00.01.7 | 100% |  |
| B5.33 31 00.01.23 |  | Pipe Laying | 0.75d | 2026-02-14 A | 2026-02-14 A | B5.33 31 00.01.15 | 100% |  |
| B5.33 31 00.01.31 |  | Embedment & Test | 111.67d | 2026-05-09 A | 2026-09-20 | B5.33 31 00.01.23 | 10% | 112.33d |
| B5.33 31 00.01.39 |  | Backfilling & Warrning Tape | 110.56d | 2026-05-11 A | 2026-09-21 | B5.33 31 00.01.37, B5.33 31 00.01.31 FF, B5.33 31 00.01.33 SS, B5.33 31 00.01.35 SS | 10% | 111d |
|  | Manholes | **Manholes ?1200** |  | 2026-02-10 | 2026-10-14 |  |  |  |
|  | 2 | **Depth From 0.0m to 1.5m** |  | 2026-02-14 | 2026-09-26 |  |  |  |
| B6.33 05 39.01.827 |  | Excavation & Compaction | 0.5d | 2026-02-14 A | 2026-02-15 A | B5.33 31 00.01.7 | 100% |  |
| B6.33 05 39.01.837 |  | Blinding Conc, & RC Base | 42.04d | 2026-08-01 A | 2026-09-19 | B6.33 05 39.01.827 | 36% | 113.96d |
| B6.33 05 39.01.847 |  | Manhole Installation | 39.52d | 2026-08-03 A | 2026-09-17 | B6.33 05 39.01.837 SS | 36% | 114.48d |
| B6.33 05 39.01.857 |  | Test, Internal Finishing, Benching & Cover | 39.56d | 2026-08-04 A | 2026-09-19 | B6.33 05 39.01.847 SS | 36% | 98.44d |
| B6.33 05 39.01.867 |  | Backfilling | 5d | 2026-09-19 | 2026-09-26 | B6.33 05 39.01.857, B6.33 05 39.01.1417 |  | 98.44d |
|  | 3 | **Depth From 1.5m to 2.5m** |  | 2026-02-10 | 2026-09-26 |  |  |  |
| B6.33 05 39.01.877 |  | Excavation & Compaction | 0.75d | 2026-02-10 A | 2026-02-10 A | B6.33 05 39.01.827 | 100% |  |
| B6.33 05 39.01.887 |  | Blinding Conc, & RC Base | 26.04d | 2026-08-19 A | 2026-09-19 | B6.33 05 39.01.877 | 36% | 113.96d |
| B6.33 05 39.01.897 |  | Manhole Installation | 22.52d | 2026-08-23 A | 2026-09-17 | B6.33 05 39.01.887 SS | 36% | 100.48d |
| B6.33 05 39.01.917 |  | Backfilling | 23.2d | 2026-08-24 A | 2026-09-26 | B6.33 05 39.01.907 FF, B6.33 05 39.01.867 FF | 36% | 98.44d |
| B6.33 05 39.01.907 |  | Test, Internal Finishing, Benching & Cover | 4d | 2026-09-17 | 2026-09-22 | B6.33 05 39.01.897 |  | 100.48d |
|  | 4 | **Depth From 2.5m to 3.5m** |  | 2026-02-11 | 2026-09-22 |  |  |  |
| B6.33 05 39.01.927 |  | Excavation & Compaction | 0.75d | 2026-02-11 A | 2026-02-11 A | B6.33 05 39.01.877 | 100% |  |
| B6.33 05 39.01.937 |  | Blinding Conc, & RC Base | 26.04d | 2026-08-19 A | 2026-09-19 | B6.33 05 39.01.927 | 36% | 113.96d |
| B6.33 05 39.01.947 |  | Manhole Installation | 24.52d | 2026-08-20 A | 2026-09-17 | B6.33 05 39.01.937 SS | 36% | 105.48d |
| B6.33 05 39.01.967 |  | Backfilling | 24.2d | 2026-08-23 A | 2026-09-22 | B6.33 05 39.01.957 FF | 36% | 105.48d |
| B6.33 05 39.01.957 |  | Test, Internal Finishing, Benching & Cover | 4d | 2026-09-17 | 2026-09-22 | B6.33 05 39.01.947 |  | 105.48d |

| ID | WBS | Task | Duration | Start | Finish | Predecessors | Complete | Total float |
| --- | --- | --- | --- | --- | --- | --- | --- | --- |
|  | 1 | **Depth From 4.5m to 5.5m** |  | 2026-02-12 | 2026-10-14 |  |  |  |
| B6.33 05 39.01.977 |  | Excavation & Compaction | 0.5d | 2026-02-15 A | 2026-02-16 A | B6.33 05 39.01.927 | 100% |  |
| B6.33 05 39.01.987 |  | Blinding Conc, & RC Base | 41.04d | 2026-08-02 A | 2026-09-19 | B6.33 05 39.01.977 | 36% | 113.96d |
| B6.33 05 39.01.997 |  | Manhole Installation | 38.52d | 2026-08-04 A | 2026-09-17 | B6.33 05 39.01.987 SS | 36% | 114.48d |
| B6.33 05 39.01.1007 |  | Test, Internal Finishing, Benching & Cover | 36.56d | 2026-08-08 A | 2026-09-19 | B6.33 05 39.01.997 SS | 36% | 108.44d |
| B6.33 05 39.01.1017 |  | Backfilling | 5d | 2026-10-10 | 2026-10-14 | B6.33 05 39.01.1007, B6.33 05 39.01.967, B6.33 05 39.01.1767, DMM2-Proc-Delv-4048, B6.33 05 39.01.4317 |  | 92d |
|  | 5 | **Depth From 4.5m to 5.5m with back drop** |  | 2026-02-12 | 2026-10-08 |  |  |  |
| B6.33 05 39.01.4307 |  | Excavation & Compaction | 0.75d | 2026-02-12 A | 2026-02-12 A | B6.33 05 39.01.977 | 100% |  |
| B6.33 05 39.01.4277 |  | Blinding Conc, & RC Base | 4d | 2026-09-20 | 2026-09-24 | B6.33 05 39.01.4307, B3.33 14 19.01.43 |  | 92d |
| B6.33 05 39.01.4287 |  | Manhole Installation | 2d | 2026-09-26 | 2026-09-27 | B6.33 05 39.01.4277 |  | 92d |
| B6.33 05 39.01.4297 |  | Test, Internal Finishing, Benching & Cover | 5d | 2026-09-28 | 2026-10-03 | B6.33 05 39.01.4287, B6.33 05 39.01.807 |  | 92d |
| B6.33 05 39.01.4317 |  | Backfilling | 5d | 2026-10-04 | 2026-10-08 | B6.33 05 39.01.4297, B6.33 05 39.01.917 |  | 92d |
|  | 2 | **Valves & Chambers** |  | 2026-09-16 | 2026-10-10 |  |  |  |
|  | Gate | **Gate Valves** |  | 2026-09-16 | 2026-09-20 |  |  |  |
| B3.33 14 19.01.93 |  | Burried Isolation Valve Installation | 2d | 2026-09-16 | 2026-09-17 | B5.33 31 00.01.23 |  | 112d |
| B3.33 14 19.01.103 |  | Spindle & Surface Box | 2d | 2026-09-19 | 2026-09-20 | B3.33 14 19.01.93 |  | 112d |
|  | Washout V in Ch | **Washout Valves in Chambers** |  | 2026-09-16 | 2026-10-10 |  |  |  |
| B3.33 14 19.01.43 |  | Land Adjustment & Compaction | 3d | 2026-09-16 | 2026-09-19 | B6.33 05 39.01.977 |  | 86d |
| B3.33 14 19.01.53 |  | Foundations | 3d | 2026-09-20 | 2026-09-22 | B3.33 14 19.01.43, B6.33 05 39.01.4307 |  | 86d |
| B3.33 14 19.01.63 |  | Chambers Walls Conc Cast In Situ | 4d | 2026-09-24 | 2026-09-28 | B3.33 14 19.01.53 |  | 86d |
| B3.33 14 19.01.73 |  | Chamber Curing, Finishing & Steel Cover | 4d | 2026-09-29 | 2026-10-03 | B3.33 14 19.01.63 |  | 86d |
| B3.33 14 19.01.83 |  | Valve & Fitting Installation | 4d | 2026-10-06 | 2026-10-10 | B3.33 14 19.01.73, B5.33 05 63.013 |  | 84d |
|  | Stormwater Network | **Stormwater Network** |  | 2026-02-11 | 2026-10-03 |  |  |  |
|  | GRP | **GRP** |  | 2026-02-11 | 2026-09-20 |  |  |  |
|  | ?40011 | **?400** |  | 2026-02-11 | 2026-09-20 |  |  |  |
|  | 3 | **Depth From 1.5m to 2.5m** |  | 2026-02-11 | 2026-09-20 |  |  |  |
| B6.33 42 11.01-1.1 |  | Excavation | 1d | 2026-02-11 A | 2026-02-12 A | B5.33 31 00.01.39 SS | 100% |  |
| B6.33 42 11.01-1.3 |  | Sand Bedding | 1d | 2026-02-12 A | 2026-02-14 A | B6.33 42 11.01-1.1 | 100% |  |
| B6.33 42 11.01-1.5 |  | Pipe Laying | 1d | 2026-02-15 A | 2026-02-16 A | B6.33 42 11.01-1.3 | 100% |  |
| B6.33 42 11.01-1.7 |  | Embedment & Test | 116.56d | 2026-05-02 A | 2026-09-20 | B6.33 42 11.01-1.5 | 47% | 112.44d |
| B6.33 42 11.01-1.9 |  | Backfilling & Warrning Tape | 113.84d | 2026-05-05 A | 2026-09-20 | B6.33 42 11.01-1.7 FF | 47% | 112.16d |
|  | Strom Manholes | **Manholes** |  | 2026-02-12 | 2026-10-03 |  |  |  |
|  | 1 | **?1200** |  | 2026-02-12 | 2026-10-03 |  |  |  |
|  | 3 | **Depth From 1.5m to 2.5m** |  | 2026-02-12 | 2026-10-03 |  |  |  |
| B6.33 05 39.01.3577 |  | Excavation & Compaction | 1d | 2026-02-12 A | 2026-02-14 A | B6.33 42 11.01-1.1 | 100% |  |
| B6.33 05 39.01.3587 |  | Blinding Conc, & RC Base | 74d | 2026-06-24 A | 2026-09-19 | B6.33 05 39.01.3577 | 83% | 113d |
| B6.33 05 39.01.3597 |  | Manhole Installation | 71d | 2026-06-28 A | 2026-09-19 | B6.33 05 39.01.3587 SS | 83% | 56d |
| B6.33 05 39.01.3607 |  | Test, Internal Finishing, Benching & Cover | 5d | 2026-09-20 | 2026-09-26 | B6.33 05 39.01.3597 |  | 56d |
| B6.33 05 39.01.3617 |  | Backfilling | 6d | 2026-09-27 | 2026-10-03 | B6.33 05 39.01.3607 |  | 56d |
|  | Catch Basins | **Catch Basins** |  | 2026-03-09 | 2026-09-27 |  |  |  |
|  | Sing | **Single** |  | 2026-06-24 | 2026-09-19 |  |  |  |
| B6.33 05 40.01.410 |  | Excavation, Compaction & Vapour Barrier | 74d | 2026-06-24 A | 2026-09-19 | B6.33 05 39.01.3577 | 62% | 113d |
| B6.33 05 40.01.420 |  | Blinding Conc. | 72d | 2026-06-27 A | 2026-09-19 | B6.33 05 40.01.410 SS | 62% | 113d |
| B6.33 05 40.01.430 |  | Catch Basin Installation | 69.12d | 2026-06-29 A | 2026-09-19 | B6.33 05 40.01.420 SS | 62% | 113.88d |
| B6.33 05 40.01.440 |  | Backfilling, DI Frame & Grate Cover Fixing | 66.88d | 2026-07-02 A | 2026-09-19 | B6.33 42 11.35-120, B6.33 05 40.01.430 SS | 62% | 63.12d |
|  | Dou | **Double** |  | 2026-09-03 | 2026-09-27 |  |  |  |
| B6.33 05 40.01.890 |  | Excavation, Compaction & Vapour Barrier | 12.8d | 2026-09-03 A | 2026-09-19 | B6.33 05 40.01.410 SS | 62% | 113d |
| B6.33 05 40.01.900 |  | Blinding Conc. | 11.8d | 2026-09-05 A | 2026-09-19 | B6.33 05 40.01.890 SS | 62% | 113d |
| B6.33 05 40.01.910 |  | Catch Basin Installation | 8.93d | 2026-09-07 A | 2026-09-19 | B6.33 05 40.01.900 SS | 62% | 39.88d |
| B6.33 05 40.01.920 |  | Backfilling, DI Frame & Grate Cover Fixing | 6d | 2026-09-19 | 2026-09-27 | B6.33 42 11.36-193, B6.33 05 40.01.910 |  | 39.88d |
|  | UPVC | **UPVC** |  | 2026-03-09 | 2026-09-19 |  |  |  |
|  | UPVC300 | **?300 From 0.0 to 1.5m** |  | 2026-03-09 | 2026-09-19 |  |  |  |
| B6.33 42 11.35-120 |  | Fittings & Pipe Installation | 3d | 2026-03-09 A | 2026-03-14 A | B6.33 42 11.35-18 SS | 100% |  |
| B6.33 42 11.35-18 |  | Catch Basin Opening Prep. | 65d | 2026-07-05 A | 2026-09-19 | B6.33 05 40.01.910 SS | 57% | 113d |
|  | UPVC3001 | **?400 From 0.0 to 1.5m** |  | 2026-03-09 | 2026-09-19 |  |  |  |
| B6.33 42 11.36-193 |  | Fittings & Pipe Installation | 3d | 2026-03-09 A | 2026-03-14 A | B6.33 42 11.36-181 SS | 100% |  |
| B6.33 42 11.36-181 |  | Catch Basin Opening Prep. | 63d | 2026-07-07 A | 2026-09-19 | B6.33 42 11.35-18 SS | 57% | 113d |
|  | Potable Water | **Potable Water Network** |  | 2026-10-04 | 2026-10-22 |  |  |  |
|  | HDPE | **HDPE Pipes** |  | 2026-10-04 | 2026-10-22 |  |  |  |
|  | ?110mm | **?110mm** |  | 2026-10-04 | 2026-10-22 |  |  |  |
|  | Depth: 1.51m - 2.5m | **Depth: 0.51m - 1.5m** |  | 2026-10-04 | 2026-10-22 |  |  |  |
| B3.33 14 13-191 |  | Excavation | 3d | 2026-10-04 | 2026-10-06 | B3.33 14 13-91, B6.33 05 39.01.3617 |  | 56d |
| B3.33 14 13-193 |  | Sand Bedding | 3d | 2026-10-07 | 2026-10-10 | B3.33 14 13-191 |  | 71d |
| B3.33 14 13-195 |  | Pipe Laying | 3d | 2026-10-11 | 2026-10-13 | B3.33 14 13-193 |  | 71d |
| B3.33 14 13-197 |  | Embedment & Test | 4d | 2026-10-14 | 2026-10-18 | B3.33 14 13-195 |  | 71d |
| B3.33 14 13-199 |  | Backfilling & Warrning Tape | 4d | 2026-10-19 | 2026-10-22 | B3.33 14 13-197, B3.33 14 13.01.01017 |  | 71d |
|  | Fire Fighting | **Fire Fighting Network** |  | 2026-10-07 | 2026-11-25 |  |  |  |
|  | HDPE | **HDPE Pipes** |  | 2026-10-07 | 2026-11-02 |  |  |  |
|  | ?250mm | **?250mm** |  | 2026-10-07 | 2026-11-02 |  |  |  |
|  | Depth: 1.51m - 2.5m | **Depth: 0.51m - 1.5m** |  | 2026-10-07 | 2026-11-02 |  |  |  |

| ID | WBS | Task | Duration | Start | Finish | Predecessors | Total float |
| --- | --- | --- | --- | --- | --- | --- | --- |
| B3.1. 33 14 13-119 |  | Excavation | 4d | 2026-10-07 | 2026-10-11 | B3.33 14 13-191 | 56d |
| B3.1. 33 14 13-1111 |  | Sand Bedding | 4d | 2026-10-12 | 2026-10-15 | B3.1. 33 14 13-119 | 56d |
| B3.1. 33 14 13-1113 |  | Pipe Laying | 4d | 2026-10-17 | 2026-10-20 | B3.1. 33 14 13-1111 | 56d |
| B3.1. 33 14 13-1115 |  | Embedment & Test | 6d | 2026-10-21 | 2026-10-27 | B3.1. 33 14 13-1113 | 56d |
| B3.1. 33 14 13-1117 |  | Backfilling & Warrning Tape | 5d | 2026-10-28 | 2026-11-02 | B3.1. 33 14 13-1115, B3.1. 33 14 13-01108, B3.33 14 19.01.fh45 | 56d |
|  | Valves & Chambers | **Valves & Chambers** |  | 2026-10-28 | 2026-11-21 |  |  |
|  | 2 | **Air Valves** |  | 2026-10-28 | 2026-11-21 |  |  |
|  | 4 | **Air valves on less than 315 mm. (In Chamber)** |  | 2026-10-28 | 2026-11-21 |  |  |
| B3.33 05 63.02.67 |  | Land Adjustment & Compaction | 4d | 2026-10-28 | 2026-11-01 | B3.1. 33 14 13-1115 | 60d |
| B3.33 05 63.02.65 |  | Foundations | 4d | 2026-11-02 | 2026-11-05 | B3.33 05 63.02.67 | 60d |
| B3.33 05 63.02.68 |  | Chambers Walls Conc Cast In Situ | 4d | 2026-11-07 | 2026-11-10 | B3.33 05 63.02.65 | 60d |
| B3.33 05 63.02.66 |  | Chamber Curing, Finishing & Steel Cover | 5d | 2026-11-11 | 2026-11-16 | B3.33 05 63.02.68 | 60d |
| B3.33 05 63.02.69 |  | Valve & Fitting Installation | 4d | 2026-11-17 | 2026-11-21 | B3.33 05 63.02.66 | 60d |
|  | 3 | **Fire Hydrant** |  | 2026-10-21 | 2026-11-25 |  |  |
| B3.33 14 19.01.fh38 |  | Riser Pipe & Flanged Fittings Installation | 4d | 2026-10-21 | 2026-10-25 | B3.1. 33 14 13-1113 | 73d |
| B3.33 14 19.01.fh37 |  | Firehydrant Fixing/Installation | 5d | 2026-10-26 | 2026-10-31 | B3.33 14 19.01.fh38 | 73d |
| B3.33 14 19.01.fh39 |  | Backfilling & Compaction | 5d | 2026-11-21 | 2026-11-25 | B3.33 14 19.01.fh37, B3.1. 33 14 13-11109, B3.33 14 19.01.fh36, DMM2-Proc-Delv-5898 | 56d |
|  | Dry Networks | **Dry Networks** |  | 2026-09-27 | 2026-11-25 |  |  |
|  | MV | **Medium Voltage Network** |  | 2026-09-27 | 2026-10-10 |  |  |
|  | Cables | **Cables** |  | 2026-09-27 | 2026-10-10 |  |  |
|  | 3C,500mm2 | **3C,500mm2** |  | 2026-09-27 | 2026-10-10 |  |  |
| B2.33 71 49.23.83 |  | Cable 13.8 kV Unarmored | 4d | 2026-09-27 | 2026-10-01 | B6.33 05 40.01.920 | 76.88d |
| B2.33 71 49.23.84 |  | Straight joints cables | 3d | 2026-10-01 | 2026-10-05 | B2.33 71 49.23.83 | 76.88d |
| B2.33 71 49.23.85 |  | Cable Termination | 4d | 2026-10-05 | 2026-10-10 | B2.33 71 49.23.84, B2.33 71 49.23.03 | 76.88d |
|  | LV Network | **Low Voltage Network** |  | 2026-09-27 | 2026-11-04 |  |  |
|  | Duct Banks | **Duct Banks** |  | 2026-09-27 | 2026-11-04 |  |  |
|  | 6 Way | **6 Way** |  | 2026-09-27 | 2026-11-01 |  |  |
| B2.33 71 00 02 136 |  | Excavation | 2d | 2026-09-27 | 2026-09-29 | B6.33 05 40.01.920 | 39.88d |
| B2.33 71 00 02 137 |  | Shuttering, Steel Fixing Incl. UPVC Pipe & Conc. Cast | 3d | 2026-09-29 | 2026-10-03 | B2.33 71 00 02 136 | 87.88d |
| B2.33 71 00 02 138 |  | Backfilling & Warrning Tape | 3d | 2026-10-29 | 2026-11-01 | B2.33 71 00 02 137, B2.33 71 00 02 147 | 65d |
|  | 8 Way | **8 Way** |  | 2026-09-29 | 2026-11-04 |  |  |
| B2.33 71 00 02 139 |  | Excavation | 2d | 2026-09-29 | 2026-10-01 | B2.33 71 00 02 136 | 39.88d |
| B2.33 71 00 02 140 |  | Shuttering, Steel Fixing Incl. UPVC Pipe & Conc. Cast | 3d | 2026-10-01 | 2026-10-05 | B2.33 71 00 02 139 | 88.88d |
| B2.33 71 00 02 141 |  | Backfilling & Warrning Tape | 3d | 2026-11-02 | 2026-11-04 | B2.33 71 00 02 140, B2.33 71 00 02 138, B2.33 71 00 02 98 | 65d |
|  | Cables | **Cables** |  | 2026-10-13 | 2026-10-17 |  |  |
|  | 4C,10+1C,10mm2 | **4C,10+1C,10mm2** |  | 2026-10-13 | 2026-10-14 |  |  |
| B2.33 71 00 01 15 |  | Cable Pulling | 2d | 2026-10-13 | 2026-10-14 | B2.33 71 00 01 18 | 3d |
|  | 4C,50+1C,25mm2 | **4C,50+1C,25mm2** |  | 2026-10-15 | 2026-10-17 |  |  |
| B2.33 71 00 01 16 |  | Cable Pulling | 2d | 2026-10-15 | 2026-10-17 | B2.33 71 00 01 15 | 3d |
|  | Street Lighting | **Street Lighting** |  | 2026-11-03 | 2026-11-25 |  |  |
|  | Cables | **Cables** |  | 2026-11-17 | 2026-11-23 |  |  |
|  | 4C,10+1C,10mm2 | **4C,10+1C,10mm2** |  | 2026-11-17 | 2026-11-23 |  |  |
| B2.33 71 19 142 |  | Land Adjustment | 2d | 2026-11-17 | 2026-11-18 | B2.33 71 19 192 SS | 56d |
| B2.33 71 49.23.152 |  | Cable Pulling | 2d | 2026-11-19 | 2026-11-21 | B2.33 71 19 142 | 56d |
| B2.33 71 19 152 |  | Backfilling | 2d | 2026-11-22 | 2026-11-23 | B2.33 71 49.23.152, B2.33 71 16.58, B2.33 71 19 37 SS, B2.33 71 19 172 SS | 56d |
|  | SL Poles | **SL Poles** |  | 2026-11-03 | 2026-11-19 |  |  |
|  | Pole (10 M Dbl Arm) | **Pole (10 M Double Arm)** |  | 2026-11-03 | 2026-11-16 |  |  |
| B2.33 71 16.79 |  | Excavation | 2d | 2026-11-03 | 2026-11-04 | B3.1. 33 14 13-1117, B2.33 71 16.75 | 56d |
| B2.33 71 16.80 |  | PC & RC Foundation | 2d | 2026-11-05 | 2026-11-07 | B2.33 71 16.79 | 56d |
| B2.33 71 16.81 |  | Lighting Poles Installation Incl power box, Cables | 3d | 2026-11-08 | 2026-11-10 | B2.33 71 16.80 | 56d |
| B2.26.56.19.13 |  | Lighting Luminares Inst | 2d | 2026-11-11 | 2026-11-12 | B2.33 71 16.81 | 56d |
| B2.33 71 16.82 |  | Backfilling, Grouting & Chamfering | 3d | 2026-11-14 | 2026-11-16 | B2.26.56.19.13 | 56d |
|  | Pole (16 M Dbl Arm) | **Pole (16 M Double Arm)** |  | 2026-11-05 | 2026-11-19 |  |  |
| B2.33 71 16.83 |  | Excavation | 2d | 2026-11-05 | 2026-11-07 | B2.33 71 16.79, B2.33 71 00 02 157 | 58d |
| B2.33 71 16.84 |  | PC & RC Foundation | 3d | 2026-11-08 | 2026-11-10 | B2.33 71 16.83 | 58d |
| B2.33 71 16.85 |  | Lighting Poles Installation Incl power box, Cables | 3d | 2026-11-11 | 2026-11-14 | B2.33 71 16.84 | 58d |
| B2.26.56.19.14 |  | Lighting Luminares Inst | 2d | 2026-11-15 | 2026-11-16 | B2.33 71 16.85 | 58d |
| B2.33 71 16.86 |  | Backfilling, Grouting & Chamfering | 3d | 2026-11-17 | 2026-11-19 | B2.26.56.19.14, B2.33 71 00 02 043 | 58d |
|  | SL Pillars | **SL Pillars** |  | 2026-11-15 | 2026-11-19 |  |  |
| B2.33 71 26 032 |  | Pillars Installation (Internal Wiring) | 2d | 2026-11-15 | 2026-11-16 | B2.33 71 16.85, B2.33 71 16.81 | 59d |
| B2.33 71 26 043 |  | KWH meter mounting a frame installation | 3d | 2026-11-17 | 2026-11-19 | B2.33 71 26 032, B2.33 71 26 042, B2.33 71 26 041 | 59d |
|  | Earthing | **Earthing** |  | 2026-11-15 | 2026-11-25 |  |  |
| B2.33 71 19 41 |  | Land Adjustment | 3d | 2026-11-15 | 2026-11-17 | B2.33 71 16.85, B2.33 71 16.81, B2.33 71 19 38 | 58d |
| B2.33 71 19 42 |  | Earth Rods & Conduits | 3d | 2026-11-18 | 2026-11-21 | B2.33 71 19 41 | 58d |
| B2.33 71 19 43 |  | Backfilling | 2d | 2026-11-24 | 2026-11-25 | B2.33 71 19 42, B2.33 71 19 152, B2.33 71 00 02 66, B2.33 71 19 25 | 56d |
|  | Telecommunication | **Telecommunication Network** |  | 2026-10-01 | 2026-10-25 |  |  |
|  | Ducts | **Ducts** |  | 2026-10-01 | 2026-10-19 |  |  |
|  | (6*50mm) | **Size (6*50mm) HDPE ducts** |  | 2026-10-01 | 2026-10-11 |  |  |
| B2.1.33 81 26.132 |  | Excavation | 2d | 2026-10-01 | 2026-10-04 | B2.33 71 00 02 139, B2.33 71 00 02 136 | 39.88d |
| B2.1.33 81 26.133 |  | HDPE Pipe, Shuttering, Steel Fixing & Conc. Cast | 4d | 2026-10-04 | 2026-10-08 | B2.1.33 81 26.132 | 76.88d |

| ID | WBS | Task | Duration | Start | Finish | Predecessors | Complete | Total float |
| --- | --- | --- | --- | --- | --- | --- | --- | --- |
| B2.1.33 81 26.134 |  | Backfilling & Warrning Tape | 2d | 2026-10-08 | 2026-10-11 | B2.1.33 81 26.133, B2.1.33 81 26.13 |  | 76.88d |
|  | (6*50mm+2*32mm) | **Size (6*50mm+2*32mm) HDPE ducts** |  | 2026-10-04 | 2026-10-13 |  |  |  |
| B2.1.33 81 26.135 |  | Excavation | 2d | 2026-10-04 | 2026-10-06 | B2.1.33 81 26.132 |  | 39.88d |
| B2.1.33 81 26.136 |  | HDPE Pipe, Shuttering, Steel Fixing & Conc. Cast | 3d | 2026-10-06 | 2026-10-10 | B2.1.33 81 26.135 |  | 89.88d |
| B2.1.33 81 26.137 |  | Backfilling & Warrning Tape | 3d | 2026-10-10 | 2026-10-13 | B2.1.33 81 26.136, B2.1.33 81 26.62 SS, B2.33 71 00.217 SS |  | 89.88d |
|  | (6*50mm+4*32mm) | **Size (6*50mm+4*32mm) HDPE ducts** |  | 2026-10-06 | 2026-10-15 |  |  |  |
| B2.1.33 81 26.138 |  | Excavation | 2d | 2026-10-06 | 2026-10-08 | B2.1.33 81 26.135 |  | 39.88d |
| B2.1.33 81 26.139 |  | HDPE Pipe, Shuttering, Steel Fixing & Conc. Cast | 3d | 2026-10-08 | 2026-10-12 | B2.1.33 81 26.138 |  | 87.88d |
| B2.1.33 81 26.140 |  | Backfilling & Warrning Tape | 3d | 2026-10-12 | 2026-10-15 | B2.1.33 81 26.139 |  | 87.88d |
|  | (2*32mm) | **Size (2*32mm) HDPE ducts** |  | 2026-10-08 | 2026-10-17 |  |  |  |
| B2.1.33 81 26.141 |  | Excavation | 2d | 2026-10-08 | 2026-10-11 | B2.1.33 81 26.138 |  | 39.88d |
| B2.1.33 81 26.142 |  | HDPE Pipe, Shuttering, Steel Fixing & Conc. Cast | 2d | 2026-10-11 | 2026-10-13 | B2.1.33 81 26.141 |  | 79.88d |
| B2.1.33 81 26.143 |  | Backfilling & Warrning Tape | 3d | 2026-10-13 | 2026-10-17 | B2.1.33 81 26.142 |  | 79.88d |
|  | (4*32mm) | **Size (4*32mm) HDPE ducts** |  | 2026-10-08 | 2026-10-17 |  |  |  |
| B2.1.33 81 26.144 |  | Excavation | 2d | 2026-10-08 | 2026-10-11 | B2.1.33 81 26.141 SS |  | 39.88d |
| B2.1.33 81 26.145 |  | HDPE Pipe, Shuttering, Steel Fixing & Conc. Cast | 2d | 2026-10-11 | 2026-10-13 | B2.1.33 81 26.144 |  | 88.88d |
| B2.1.33 81 26.146 |  | Backfilling & Warrning Tape | 3d | 2026-10-13 | 2026-10-17 | B2.1.33 81 26.145, B2.1.33 81 26.23 |  | 88.88d |
|  | (6*50mm+6*32mm) | **Size (6*50mm+6*32mm) HDPE ducts** |  | 2026-10-11 | 2026-10-19 |  |  |  |
| B2.1.33 81 26.147 |  | Excavation | 2d | 2026-10-11 | 2026-10-13 | B2.1.33 81 26.144 |  | 39.88d |
| B2.1.33 81 26.148 |  | HDPE Pipe, Shuttering, Steel Fixing & Conc. Cast | 2d | 2026-10-13 | 2026-10-15 | B2.1.33 81 26.147 |  | 72.88d |
| B2.1.33 81 26.149 |  | Backfilling & Warrning Tape | 3d | 2026-10-15 | 2026-10-19 | B2.1.33 81 26.148, B2.1.33 81 26.134 |  | 72.88d |
|  | Manholes | **Manholes** |  | 2026-10-13 | 2026-10-25 |  |  |  |
|  | Manhole Type 1 | **Manhole Type 1** |  | 2026-10-13 | 2026-10-21 |  |  |  |
| B2.31 23 00.623 |  | Excavation | 2d | 2026-10-13 | 2026-10-15 | B2.1.33 81 26.147 |  | 39.88d |
| B2.33 71 00.254 |  | Manhole Installation | 2d | 2026-10-15 | 2026-10-18 | B2.31 23 00.623 |  | 78.88d |
| B2.33 71 00.255 |  | Backfilling & Warrning Tape | 3d | 2026-10-18 | 2026-10-21 | B2.33 71 00.254, B2.1.02 41 00.015, B2.1.33 81 26.143 |  | 78.88d |
|  | Manhole Type 2 | **Manhole Type 2** |  | 2026-10-15 | 2026-10-25 |  |  |  |
| B2.31 23 00.625 |  | Excavation | 2d | 2026-10-15 | 2026-10-18 | B2.31 23 00.623 |  | 39.88d |
| B2.33 71 00.258 |  | Manhole Installation | 3d | 2026-10-18 | 2026-10-21 | B2.31 23 00.625 |  | 39.88d |
| B2.33 71 00.259 |  | Backfilling & Warrning Tape | 3d | 2026-10-21 | 2026-10-25 | B2.33 71 00.258 |  | 39.88d |
|  | Crossing Ducts | **Road Crossing Ducts** |  | 2026-10-13 | 2026-10-21 |  |  |  |
|  | 1 | **Size (6X50mm) HDPE** |  | 2026-10-13 | 2026-10-21 |  |  |  |
| B2.31 23 00.622 |  | Excavation | 2d | 2026-10-13 | 2026-10-15 | B2.1.33 81 26.147 |  | 73.88d |
| B2.33 71 00.252 |  | Shuttering, Steel Fixing Incl. UPVC Pipe & Conc. Cast | 2d | 2026-10-15 | 2026-10-18 | B2.31 23 00.622, B1.2.31 23 16.01.13 |  | 73.88d |
| B2.33 71 00.253 |  | Backfilling & Warrning Tape | 3d | 2026-10-18 | 2026-10-21 | B2.33 71 00.252 |  | 73.88d |
|  | Earth & Road Works | **Earth & Road Works** |  | 2025-12-12 | 2026-11-14 |  |  |  |
|  | Earth Works | **Earth Works** |  | 2025-12-12 | 2026-05-06 |  |  |  |
| B1.2.31 23 16.01.13 |  | Roadway Excavation | 113.04d | 2025-12-12 A | 2026-05-06 A | DMM2-Eng-MS-78 | 100% |  |
| B1.2.31 23 23.01.13 |  | Embankment Backfiling | 113.03d | 2025-12-12 A | 2026-05-06 A | B1.2.31 23 16.01.13 | 100% |  |
|  | Earth Layers | **Earth Layers** |  | 2026-04-20 | 2026-09-17 |  |  |  |
| B1.2.32 11 13.01.13 |  | Subgrade | 125.97d | 2026-04-20 A | 2026-09-17 | B1.2.31 23 23.01.13 | 82% | 114d |
| B1.2.32 11 23.01.13 |  | Aggregate Base Course | 89.88d | 2026-06-04 A | 2026-09-17 | B1.2.32 11 13.01.13 SS | 48% | 114.96d |
|  | Interlock | **Interlock** |  | 2026-10-05 | 2026-10-07 |  |  |  |
| B1.2.32 14 13.13.13 |  | 60mm thick - Interlocking Block Pavers | 3d | 2026-10-05 | 2026-10-07 | DMM2-Proc-Delv-7408 |  | 5d |
|  | Curbstone | **Curbstone** |  | 2026-10-08 | 2026-10-24 |  |  |  |
|  | Pre Install | **Pre-Installation** |  | 2026-10-08 | 2026-10-18 |  |  |  |
| B2.31 23 00.361 |  | Excavation | 2d | 2026-10-08 | 2026-10-10 | B1.2.32 14 13.13.13 |  | 5d |
| B1.2.32 14 13.13.213 |  | PCC | 3d | 2026-10-11 | 2026-10-13 | B2.31 23 00.361 |  | 20d |
| 32 16 13.0013 |  | Haunching | 4d | 2026-10-14 | 2026-10-18 | B1.2.32 14 13.13.213 |  | 20d |
|  | Installation | **Installation** |  | 2026-10-19 | 2026-10-21 |  |  |  |
| B1.2.32 16.13.01.13 |  | Curb Stone, Type K1 | 3d | 2026-10-19 | 2026-10-21 | 32 16 13.0013 |  | 20d |
| B1.2.32 16.13.02.12 |  | Dropped Curb, Type K3 | 2d | 2026-10-20 | 2026-10-21 | B1.2.32 16.13.01.13 FF, 32 16 13.0013 |  | 20d |
| B1.2.32 16.13.03.13 |  | Edge Curb, Type K4 | 2d | 2026-10-20 | 2026-10-21 | B1.2.32 16.13.02.12 FF, 32 16 13.0013 |  | 20d |
| B1.2.32 16.13.0413 |  | Heel Curb, Type K5 | 2d | 2026-10-20 | 2026-10-21 | B1.2.32 16.13.03.13 FF, 32 16 13.0013 |  | 20d |
| B1.2.32 16.13.05.12 |  | Transition Curb | 2d | 2026-10-20 | 2026-10-21 | B1.2.32 16.13.0413 FF, 32 16 13.0013 |  | 20d |
|  | Finishing | **Finishing** |  | 2026-10-22 | 2026-10-24 |  |  |  |
| 32 16 13.013 |  | Finishing, Fareface | 2d | 2026-10-22 | 2026-10-24 | B1.2.32 16.13.01.13, B1.2.32 16.13.02.12, B1.2.32 16.13.03.13, B1.2.32 16.13.0413, B1.2.32 16.13.05.12, 32 16 13.06 |  | 20d |
|  | Asphalt Layers | **Asphalt Layers** |  | 2026-07-05 | 2026-11-09 |  |  |  |
| B1.2.32 11 26.01.13 |  | Bituminous Base Course including Prime Coat (MC1) and tack coat (RC2) | 63.22d | 2026-07-05 A | 2026-09-17 | B1.2.32 11 23.01.13 SS | 43% | 50.86d |
| B1.2.32 12 16.01.13 |  | Bituminous concrete Wearing Course, including tack coat (RC2) | 5d | 2026-11-04 | 2026-11-09 | B1.2.32 11 26.01.13, B7.32 31 26.01-113, 32 16 13.013 |  | 11d |
|  | Pavement Marking | **Pavement Marking** |  | 2026-11-10 | 2026-11-11 |  |  |  |
| B1.2.32 17 23.01.13 |  | Retroreflective Thermoplastic White Traffic lines | 2d | 2026-11-10 | 2026-11-11 | B1.2.32 12 16.01.13 |  | 57d |
| B1.2.32 17 23.02.13 |  | Retroreflective Thermoplastic Yellow, Traffic lines | 2d | 2026-11-10 | 2026-11-11 | B1.2.32 12 16.01.13 |  | 57d |
|  | Traffic Signs | **Traffic Signs** |  | 2026-10-11 | 2026-11-14 |  |  |  |
|  | Pre Install | **Pre-Installation** |  | 2026-10-11 | 2026-10-14 |  |  |  |
| B2.31 23 00.371 |  | Excavation | 2d | 2026-10-11 | 2026-10-12 | B2.31 23 00.361 |  | 5d |
| 10 14 53.013 |  | Foundation | 2d | 2026-10-13 | 2026-10-14 | B2.31 23 00.371 |  | 81d |
|  | Installation | **Installation** |  | 2026-11-12 | 2026-11-14 |  |  |  |
| B1.2.10 14 14.01.13 |  | Ground mounted, 1 Sheet Alumenium, Single post | 2d | 2026-11-12 | 2026-11-14 | B1.2.10 14 53.0113 SS, B1.2.32 17 23.01.13, B1.2.32 17 23.02.13, 10 14 53.013 |  | 57d |
| B1.2.10 14 53.0113 |  | 1 Sheet Alumenium, Single post | 2d | 2026-11-12 | 2026-11-14 | B1.2.32 17 23.01.13, B1.2.32 17 23.02.13, 10 14 53.013 |  | 57d |

| ID | WBS | Task | Duration | Start | Finish | Predecessors | Complete | Total float |
| --- | --- | --- | --- | --- | --- | --- | --- | --- |
|  | Landscape | **Landscape** |  | 2026-10-13 | 2026-11-03 |  |  |  |
|  | Fences | **Fences** |  | 2026-10-13 | 2026-11-03 |  |  |  |
|  | (ZATCA HCIS) | **Steel fence (ZATCA HCIS)** |  | 2026-10-13 | 2026-11-03 |  |  |  |
| B7.32 31 26.01-19 |  | Earthwork | 6d | 2026-10-13 | 2026-10-19 | B2.31 23 00.371 |  | 5d |
| B7.32 31 26.01-111 |  | Foundation | 7d | 2026-10-20 | 2026-10-27 | B7.32 31 26.01-19 |  | 6d |
| B7.32 31 26.01-113 |  | Fence Installation | 6d | 2026-10-28 | 2026-11-03 | B7.32 31 26.01-111 |  | 6d |
|  | Customs Rd 01 | **Customs Road 01** |  | 2025-12-11 | 2026-11-24 |  |  |  |
|  | Wet Networks | **Wet Networks** |  | 2026-04-02 | 2026-11-19 |  |  |  |
|  | Sewerage Network | **Sewerage Network** |  | 2026-04-02 | 2026-10-18 |  |  |  |
|  | GRP | **GRP Pipes** |  | 2026-04-02 | 2026-10-04 |  |  |  |
|  | 200 | **?150** |  | 2026-04-02 | 2026-10-04 |  |  |  |
|  | 1 | **Depth From 1.5m to 2.5m** |  | 2026-04-02 | 2026-09-22 |  |  |  |
| B5.33 31 00.01.02.28 |  | Pipe Laying | 141.69d | 2026-04-02 A | 2026-09-19 | B5.33 31 00.01.02.24, DMM2-Proc-Delv-4038 SS | 11% | 113.31d |
| B5.33 31 00.01.02.32 |  | Embedment & Test | 139.67d | 2026-04-06 A | 2026-09-21 | B5.33 31 00.01.02.28 FF | 10% | 111d |
| B5.33 31 00.01.02.36 |  | Backfilling & Warrning Tape | 136.56d | 2026-04-10 A | 2026-09-22 | B5.33 31 00.01.02.32 FF | 10% | 110d |
| B5.33 31 00.01.02.20 |  | Excavation | 2d | 2026-04-15 A | 2026-04-16 A | B1.1.31 23 23.122 SS | 100% |  |
| B5.33 31 00.01.02.24 |  | Sand Bedding | 2d | 2026-04-18 A | 2026-04-19 A | B5.33 31 00.01.02.20 | 100% |  |
|  | 4 | **Depth From 2.5m to 3.5m** |  | 2026-04-18 | 2026-10-04 |  |  |  |
| B5.33 31 00.01.02.22 |  | Excavation | 2d | 2026-04-18 A | 2026-04-19 A | B5.33 31 00.01.02.20 | 100% |  |
| B5.33 31 00.01.02.26 |  | Sand Bedding | 1d | 2026-04-20 A | 2026-04-20 A | B5.33 31 00.01.02.22 | 100% |  |
| B5.33 31 00.01.02.30 |  | Pipe Laying | 7.12d | 2026-05-06 A | 2026-05-14 A | B5.33 31 00.01.02.26 | 100% |  |
| B5.33 31 00.01.02.34 |  | Embedment & Test | 111.67d | 2026-05-09 A | 2026-09-21 | B5.33 31 00.01.02.30 | 10% | 85d |
| B5.33 31 00.01.02.38 |  | Backfilling & Warrning Tape | 110.56d | 2026-05-11 A | 2026-10-04 | B5.33 31 00.01.02.34 FF, B5.33 31 00.01.02.36 SS, DMM2-Proc-Delv-4058 FF | 10% | 75d |
|  | Manholes | **Manholes ?1200** |  | 2026-04-06 | 2026-09-28 |  |  |  |
|  | 3 | **Depth From 1.5m to 2.5m** |  | 2026-04-06 | 2026-09-28 |  |  |  |
| B6.33 05 39.01.727 |  | Excavation & Compaction | 4d | 2026-04-06 A | 2026-04-09 A | B5.33 31 00.01.02.22 | 100% |  |
| B6.33 05 39.01.737 |  | Blinding Conc, & RC Base | 3.18d | 2026-05-06 A | 2026-05-10 A | B6.33 05 39.01.727 | 100% |  |
| B6.33 05 39.01.747 |  | Manhole Installation | 108.52d | 2026-05-10 A | 2026-09-17 | B6.33 05 39.01.737 | 45% | 114d |
| B6.33 05 39.01.757 |  | Test, Internal Finishing, Benching & Cover | 88.44d | 2026-06-08 A | 2026-09-19 | B6.33 05 39.01.747 SS | 45% | 113.44d |
| B6.33 05 39.01.767 |  | Backfilling | 87.64d | 2026-06-11 A | 2026-09-28 | B6.33 05 39.01.757 SS | 45% | 101d |
|  | 4 | **Depth From 2.5m to 3.5m** |  | 2026-04-26 | 2026-09-28 |  |  |  |
| B6.33 05 39.01.777 |  | Excavation & Compaction | 2d | 2026-04-26 A | 2026-04-27 A | B6.33 05 39.01.727 | 100% |  |
| B6.33 05 39.01.787 |  | Blinding Conc, & RC Base | 68.17d | 2026-05-06 A | 2026-07-29 A | B6.33 05 39.01.777 | 100% |  |
| B6.33 05 39.01.797 |  | Manhole Installation | 108.52d | 2026-05-10 A | 2026-09-17 | B6.33 05 39.01.787 | 45% | 114d |
| B6.33 05 39.01.807 |  | Test, Internal Finishing, Benching & Cover | 83.44d | 2026-06-14 A | 2026-09-19 | B6.33 05 39.01.797 SS | 45% | 98.44d |
| B6.33 05 39.01.817 |  | Backfilling | 80.6d | 2026-06-18 A | 2026-09-28 | B6.33 05 39.01.767 SS | 45% | 65d |
|  | GRP1 | **HDPE Pipes** |  | 2026-09-16 | 2026-10-18 |  |  |  |
|  | 200 | **?160** |  | 2026-09-16 | 2026-10-18 |  |  |  |
|  | 1 | **Depth From 0.0m to 1.5m** |  | 2026-09-16 | 2026-10-18 |  |  |  |
| B5.33 31 23.01-1.20 |  | Excavation | 3d | 2026-09-16 | 2026-09-19 | B5.33 31 00.01.02.22 |  | 90d |
| B5.33 31 23.01-1.22 |  | Sand Bedding | 3d | 2026-09-20 | 2026-09-22 | B5.33 31 23.01-1.20, B6.33 05 39.01.727 |  | 90d |
| B5.33 31 23.01-1.24 |  | Pipe Laying | 3d | 2026-09-24 | 2026-09-27 | B5.33 31 23.01-1.22 |  | 90d |
| B5.33 31 23.01-1.26 |  | Embedment & Test | 5d | 2026-09-28 | 2026-10-03 | B5.33 31 23.01-1.24 |  | 90d |
| B5.33 31 23.01-1.28 |  | Backfilling & Warrning Tape | 7d | 2026-10-11 | 2026-10-18 | B5.33 31 23.01-1.26, B3.33 14 19.01.83 |  | 84d |
|  | Stormwater Network | **Stormwater Network** |  | 2026-06-01 | 2026-10-17 |  |  |  |
|  | Box Cul. | **Box Cul.** |  | 2026-06-01 | 2026-10-17 |  |  |  |
| B6. 33 42 13.16 |  | Excavation | 85.29d | 2026-06-01 A | 2026-09-09 A | B6. 33 42 13.011, B1.1.31 23 23.122 | 100% |  |
| B6. 33 42 13.26 |  | Lean PC & RC Foundation | 81.21d | 2026-06-07 A | 2026-09-10 A | B6. 33 42 13.16 | 100% |  |
| B6. 33 42 13.36 |  | Box Reinforced Conc. Walls incl. Water Stop | 82.5d | 2026-06-10 A | 2026-09-14 A | B6. 33 42 13.26, B6.33 05 63.041 | 100% |  |
| B6. 33 42 13.46 |  | Box Reinforced Conc. Slab | 42.5d | 2026-07-30 A | 2026-09-19 | B6. 33 42 13.36 | 92% | 58d |
| B6. 33 42 13.56 |  | Curing & Water Proofing | 37.5d | 2026-08-05 A | 2026-09-19 | B6. 33 42 13.46 SS | 75% | 51.5d |
| B6. 33 42 13.66 |  | Backfilling & Warrning Tape | 6d | 2026-09-19 | 2026-09-27 | B6. 33 42 13.56 |  | 56.5d |
|  | Conc. Ch | **Concrete Chambers** |  | 2026-09-02 | 2026-10-17 |  |  |  |
|  | Conc. Ch 2.53.51 | **Size 3.0 x 3.0 m, depth 1.5 to 2.5** |  | 2026-09-02 | 2026-10-03 |  |  |  |
| B6.33 05 63.012 |  | Cocrete Cast for Chamber & Curing | 14d | 2026-09-02 A | 2026-09-19 | B6. 33 42 13.26 | 75% | 51d |
| B6.33 05 63.011 |  | Shuttering, Steel Fixing, CJ & Water Stop | 3d | 2026-09-07 A | 2026-09-10 A | B1.2.32 11 23.01.18, B6. 33 42 13.36 | 100% |  |
| B6.33 05 63.013 |  | Cast Iron Steps Installation, Epoxy Paint & Internal Finishing | 7d | 2026-09-20 | 2026-09-28 | B6.33 05 63.012, B6. 33 42 13.56 |  | 51d |
| B6.33 05 63.014 |  | Waterproofing Tanking Membrane & Protection | 4d | 2026-09-29 | 2026-10-03 | B6.33 05 63.013, B6. 33 42 13.46, B6.33 05 63.043 |  | 51d |
|  | Conc. Ch 3.54.5 | **Size 3.0 x 1.5 m, depth 1.5 to 2.5** |  | 2026-09-05 | 2026-10-07 |  |  |  |
| B6.33 05 63.021 |  | Shuttering, Steel Fixing, CJ & Water Stop | 11.5d | 2026-09-05 A | 2026-09-19 | B6.33 05 63.011, B6. 33 42 13.26 | 75% | 113.5d |
| B6.33 05 63.022 |  | Cocrete Cast for Chamber & Curing | 8.5d | 2026-09-08 A | 2026-09-19 | B6.33 05 63.012 SS | 75% | 57.5d |
| B6.33 05 63.023 |  | Cast Iron Steps Installation, Epoxy Paint & Internal Finishing | 5d | 2026-09-19 | 2026-09-26 | B6.33 05 63.022, B6. 33 42 13.56 |  | 57.5d |
| B6.33 05 63.024 |  | Waterproofing Tanking Membrane & Protection | 4d | 2026-10-04 | 2026-10-07 | B6.33 05 63.023, B6.33 05 63.014, B6. 33 42 13.66 |  | 51d |
|  | Conc. Ch 3.54.51 | **Size 2.5 x 1.5 m, depth 1.5 to 2.5** |  | 2026-09-07 | 2026-10-12 |  |  |  |
| B6.33 05 63.031 |  | Shuttering, Steel Fixing, CJ & Water Stop | 9.5d | 2026-09-07 A | 2026-09-19 | B6. 33 42 13.26, B6.33 05 63.021 SS | 75% | 113.5d |
| B6.33 05 63.032 |  | Cocrete Cast for Chamber & Curing | 5d | 2026-09-12 A | 2026-09-17 | B6.33 05 63.022 SS | 75% | 63d |
| B6.33 05 63.033 |  | Cast Iron Steps Installation, Epoxy Paint & Internal Finishing | 4d | 2026-09-19 | 2026-09-24 | B6.33 05 63.032, B6. 33 42 13.56 |  | 62.5d |
| B6.33 05 63.034 |  | Waterproofing Tanking Membrane & Protection | 4d | 2026-10-08 | 2026-10-12 | B6.33 05 63.033, B6.33 05 63.024 |  | 51d |
|  | Conc. Ch 2.53.5 | **Size 2.0 x 1.5 m, depth 2.5 to 3.5** |  | 2026-09-03 | 2026-10-17 |  |  |  |
| B6.33 05 63.041 |  | Shuttering, Steel Fixing, CJ & Water Stop | 6d | 2026-09-03 A | 2026-09-10 A | B6.33 05 63.081 | 100% |  |

| ID | WBS | Task | Duration | Start | Finish | Predecessors | Complete | Total float |
| --- | --- | --- | --- | --- | --- | --- | --- | --- |
| B6.33 05 63.042 |  | Cocrete Cast for Chamber & Curing | 6d | 2026-09-10 A | 2026-09-17 | B6. 33 42 13.26, B1.2.32 11 23.01.18, B6.33 05 63.032 SS, B6.33 05 63.031 SS | 75% | 55d |
| B6.33 05 63.043 |  | Cast Iron Steps Installation, Epoxy Paint & Internal Finishing | 4d | 2026-09-19 | 2026-09-24 | B6.33 05 63.042, B6. 33 42 13.56, B6. 33 42 13.36, B6.33 05 63.011 |  | 54.5d |
| B6.33 05 63.044 |  | Waterproofing Tanking Membrane & Protection | 4d | 2026-10-13 | 2026-10-17 | B6.33 05 63.043, B6.33 05 63.034 |  | 51d |
|  | Potable Water | **Potable Water Network** |  | 2026-06-10 | 2026-09-19 |  |  |  |
|  | HDPE | **HDPE Pipes** |  | 2026-06-10 | 2026-09-19 |  |  |  |
|  | ?110mm | **?110mm** |  | 2026-06-10 | 2026-09-19 |  |  |  |
|  | Depth: 0.0m - 1.5m | **Depth: 0.0m - 1.5m** |  | 2026-06-17 | 2026-09-19 |  |  |  |
| B3.33 14 13-91 |  | Excavation | 80d | 2026-06-17 A | 2026-09-19 | B3.33 14 13.01.0103 | 72% | 56d |
| B3.33 14 13-95 |  | Sand Bedding | 78d | 2026-06-20 A | 2026-09-19 | B3.33 14 13-91 FF | 72% | 113d |
| B3.33 14 13-99 |  | Pipe Laying | 76d | 2026-06-22 A | 2026-09-19 | B3.33 14 13-95 FF | 72% | 113d |
| B3.33 14 13-103 |  | Embedment & Test | 72.12d | 2026-06-25 A | 2026-09-19 | B3.33 14 13-99 FF | 72% | 113d |
| B3.33 14 13-107 |  | Backfilling & Warrning Tape | 69.4d | 2026-06-29 A | 2026-09-19 | B3.33 14 13-103 FF | 72% | 113d |
|  | Depth: 1.51m - 2.5m | **Depth: 1.51m - 2.5m** |  | 2026-06-10 | 2026-09-19 |  |  |  |
| B3.33 14 13-93 |  | Excavation | 86d | 2026-06-10 A | 2026-09-19 | B3.33 14 13-91 SS | 72% | 56d |
| B3.33 14 13-97 |  | Sand Bedding | 84d | 2026-06-13 A | 2026-09-19 | B3.33 14 13-93 FF | 72% | 113d |
| B3.33 14 13-101 |  | Pipe Laying | 81d | 2026-06-16 A | 2026-09-19 | B3.33 14 13-97 FF | 72% | 113d |
| B3.33 14 13-105 |  | Embedment & Test | 78.12d | 2026-06-18 A | 2026-09-19 | B3.33 14 13-101 FF | 72% | 113d |
| B3.33 14 13-109 |  | Backfilling & Warrning Tape | 75.4d | 2026-06-22 A | 2026-09-19 | B3.33 14 13-105 SS | 72% | 113.6d |
|  | Fire Fighting | **Fire Fighting Network** |  | 2026-09-20 | 2026-11-19 |  |  |  |
|  | HDPE | **HDPE Pipes** |  | 2026-09-20 | 2026-11-14 |  |  |  |
|  | ?250mm | **?250mm** |  | 2026-09-20 | 2026-11-14 |  |  |  |
|  | Depth: 0.0m - 1.5m | **Depth: 0.0m - 1.5m** |  | 2026-09-20 | 2026-11-14 |  |  |  |
| B3.1. 33 14 13-1191 |  | Excavation | 4d | 2026-09-20 | 2026-09-24 | B3.33 14 13-91, B3.33 14 13-93 |  | 56d |
| B3.1. 33 14 13-1195 |  | Sand Bedding | 4d | 2026-09-26 | 2026-09-29 | B3.1. 33 14 13-1191 |  | 56d |
| B3.1. 33 14 13-1199 |  | Pipe Laying | 4d | 2026-09-30 | 2026-10-04 | B3.1. 33 14 13-1195 |  | 56d |
| B3.1. 33 14 13-11103 |  | Embedment & Test | 6d | 2026-10-05 | 2026-10-11 | B3.1. 33 14 13-1199 |  | 56d |
| B3.1. 33 14 13-11107 |  | Backfilling & Warrning Tape | 5d | 2026-11-09 | 2026-11-14 | B3.1. 33 14 13-11103, B3.33 14 19.01.fh33, B3.33 05 63.02.79, B3.33 14 19.01.fh48, B3.33 05 63.02.64 |  | 56d |
|  | Depth: 1.51m - 2.5m | **Depth: 1.51m - 2.5m** |  | 2026-09-20 | 2026-11-08 |  |  |  |
| B3.1. 33 14 13-1193 |  | Excavation | 4d | 2026-09-20 | 2026-09-24 | B3.33 14 13-91, B3.33 14 13-93 |  | 56d |
| B3.1. 33 14 13-1197 |  | Sand Bedding | 4d | 2026-09-26 | 2026-09-29 | B3.1. 33 14 13-1193 |  | 56d |
| B3.1. 33 14 13-11101 |  | Pipe Laying | 4d | 2026-09-30 | 2026-10-04 | B3.1. 33 14 13-1197 |  | 56d |
| B3.1. 33 14 13-11105 |  | Embedment & Test | 6d | 2026-10-05 | 2026-10-11 | B3.1. 33 14 13-11101 |  | 56d |
| B3.1. 33 14 13-11109 |  | Backfilling & Warrning Tape | 5d | 2026-11-03 | 2026-11-08 | B3.1. 33 14 13-11105, B3.1. 33 14 13-20, B3.1. 33 14 13-22, B3.1. 33 14 13-1117, B3.33 05 63.02.46 |  | 66d |
|  | Valves & Chambers | **Valves & Chambers** |  | 2026-10-12 | 2026-11-08 |  |  |  |
|  | 2 | **Air Valves** |  | 2026-10-12 | 2026-11-08 |  |  |  |
|  | 4 | **Air valves on less than 315 mm. (In Chamber)** |  | 2026-10-12 | 2026-11-08 |  |  |  |
| B3.33 05 63.02.62 |  | Land Adjustment & Compaction | 4d | 2026-10-12 | 2026-10-15 | B3.1. 33 14 13-11105, B3.1. 33 14 13-11103 |  | 56d |
| B3.33 05 63.02.60 |  | Foundations | 5d | 2026-10-17 | 2026-10-21 | B3.33 05 63.02.62 |  | 56d |
| B3.33 05 63.02.63 |  | Chambers Walls Conc Cast In Situ | 5d | 2026-10-22 | 2026-10-27 | B3.33 05 63.02.60 |  | 56d |
| B3.33 05 63.02.61 |  | Chamber Curing, Finishing & Steel Cover | 6d | 2026-10-28 | 2026-11-03 | B3.33 05 63.02.63 |  | 56d |
| B3.33 05 63.02.64 |  | Valve & Fitting Installation | 4d | 2026-11-04 | 2026-11-08 | B3.33 05 63.02.61 |  | 56d |
|  | 3 | **Fire Hydrant** |  | 2026-10-05 | 2026-11-19 |  |  |  |
| B3.33 14 19.01.fh35 |  | Riser Pipe & Flanged Fittings Installation | 4d | 2026-10-05 | 2026-10-08 | B3.1. 33 14 13-11101, B3.1. 33 14 13-1199 |  | 82d |
| B3.33 14 19.01.fh34 |  | Firehydrant Fixing/Installation | 5d | 2026-10-10 | 2026-10-14 | B3.33 14 19.01.fh35 |  | 82d |
| B3.33 14 19.01.fh36 |  | Backfilling & Compaction | 5d | 2026-11-15 | 2026-11-19 | B3.33 14 19.01.fh34, B3.1. 33 14 13-11107, B3.33 05 63.01.64, B3.33 05 63.02.84, DMM2-Proc-Delv-5908 |  | 56d |
|  | Dry Networks | **Dry Networks** |  | 2026-09-02 | 2026-11-15 |  |  |  |
|  | MV | **Medium Voltage Network** |  | 2026-10-05 | 2026-10-20 |  |  |  |
|  | Duct Banks | **Duct Banks** |  | 2026-10-05 | 2026-10-20 |  |  |  |
|  | 2 Way | **2 Way** |  | 2026-10-05 | 2026-10-20 |  |  |  |
| B2.31 23 00.640 |  | Excavation | 4d | 2026-10-05 | 2026-10-08 | B5.33 31 00.01.02.38 |  | 75d |
| B2.33 71 00.288 |  | Shuttering, Steel Fixing Incl. UPVC Pipe & Conc. Cast | 7d | 2026-10-10 | 2026-10-17 | B2.31 23 00.640 |  | 83d |
| B2.33 71 00.289 |  | Backfilling & Warrning Tape | 3d | 2026-10-18 | 2026-10-20 | B2.33 71 00.288 |  | 83d |
|  | LV Network | **Low Voltage Network** |  | 2026-09-19 | 2026-11-15 |  |  |  |
|  | Duct Banks | **Duct Banks** |  | 2026-10-10 | 2026-11-15 |  |  |  |
|  | 2 Way | **2 Way** |  | 2026-10-10 | 2026-11-15 |  |  |  |
| B2.33 71 00 02 112 |  | Excavation | 2d | 2026-10-10 | 2026-10-11 | B2.31 23 00.640 |  | 75d |
| B2.33 71 00 02 113 |  | Shuttering, Steel Fixing Incl. UPVC Pipe & Conc. Cast | 3d | 2026-10-12 | 2026-10-14 | B2.33 71 00 02 112 |  | 89d |
| B2.33 71 00 02 114 |  | Backfilling & Warrning Tape | 3d | 2026-11-12 | 2026-11-15 | B2.33 71 00 02 113, B2.33 71 00 02 144, B2.33 71 00 02 132, B2.33 71 00 02 135, B2.33 71 00 02 117, B2.33 71 00 02 120, B2.33 71 00 02 123 |  | 65d |
|  | 4 Way | **4 Way** |  | 2026-10-12 | 2026-10-20 |  |  |  |
| B2.33 71 00 02 115 |  | Excavation | 2d | 2026-10-12 | 2026-10-13 | B2.33 71 00 02 112 |  | 75d |
| B2.33 71 00 02 116 |  | Shuttering, Steel Fixing Incl. UPVC Pipe & Conc. Cast | 3d | 2026-10-14 | 2026-10-17 | B2.33 71 00 02 115 |  | 84d |
| B2.33 71 00 02 117 |  | Backfilling & Warrning Tape | 3d | 2026-10-18 | 2026-10-20 | B2.33 71 00 02 116 |  | 84d |
|  | 6 Way | **6 Way** |  | 2026-10-14 | 2026-10-22 |  |  |  |
| B2.33 71 00 02 118 |  | Excavation | 2d | 2026-10-14 | 2026-10-15 | B2.33 71 00 02 115 |  | 75d |
| B2.33 71 00 02 119 |  | Shuttering, Steel Fixing Incl. UPVC Pipe & Conc. Cast | 3d | 2026-10-17 | 2026-10-19 | B2.33 71 00 02 118 |  | 77d |
| B2.33 71 00 02 120 |  | Backfilling & Warrning Tape | 3d | 2026-10-20 | 2026-10-22 | B2.33 71 00 02 119 |  | 82d |
|  | 8 Way | **8 Way** |  | 2026-10-17 | 2026-10-25 |  |  |  |
| B2.33 71 00 02 121 |  | Excavation | 2d | 2026-10-17 | 2026-10-18 | B2.33 71 00 02 118 |  | 75d |
| B2.33 71 00 02 122 |  | Shuttering, Steel Fixing Incl. UPVC Pipe & Conc. Cast | 3d | 2026-10-19 | 2026-10-21 | B2.33 71 00 02 121 |  | 75d |
| B2.33 71 00 02 123 |  | Backfilling & Warrning Tape | 3d | 2026-10-22 | 2026-10-25 | B2.33 71 00 02 122 |  | 80d |

| ID | WBS | Task | Duration | Start | Finish | Predecessors | Complete | Total float |
| --- | --- | --- | --- | --- | --- | --- | --- | --- |
|  | Cables | **Cables** |  | 2026-09-19 | 2026-10-24 |  |  |  |
|  | 4C,10+1C,10mm2 | **4C,10+1C,10mm2** |  | 2026-09-19 | 2026-09-20 |  |  |  |
| B2.33 71 00 01 12 |  | Cable Pulling | 2d | 2026-09-19 | 2026-09-20 | B1.2.32 11 26.01.12 |  | 101d |
|  | 4C,50+1C,25mm2 | **4C,50+1C,25mm2** |  | 2026-10-22 | 2026-10-24 |  |  |  |
| B2.33 71 00 01 13 |  | Cable Pulling | 2d | 2026-10-22 | 2026-10-24 | B2.33 71 00 01 12, B2.33 71 00 02 119, B2.33 71 00 02 122 |  | 75d |
|  | Street Lighting | **Street Lighting** |  | 2026-09-02 | 2026-10-22 |  |  |  |
|  | SL Poles | **SL Poles** |  | 2026-09-02 | 2026-10-15 |  |  |  |
|  | Pole (10 M Sngl Arm) | **Pole (10 M Single Arm)** |  | 2026-09-02 | 2026-09-24 |  |  |  |
| B2.33 71 16.71 |  | Excavation | 13.2d | 2026-09-02 A | 2026-09-17 | B3.33 14 13-109 SS, B3.33 14 13-107 SS | 74% | 114d |
| B2.33 71 16.72 |  | PC & RC Foundation | 12.2d | 2026-09-03 A | 2026-09-17 | B2.33 71 16.71 SS | 74% | 114d |
| B2.33 71 16.73 |  | Lighting Poles Installation Incl power box, Cables | 11.2d | 2026-09-05 A | 2026-09-17 | B2.33 71 16.72 SS | 74% | 18d |
| B2.26.56.19.11 |  | Lighting Luminares Inst | 2d | 2026-09-19 | 2026-09-20 | B2.33 71 16.73 |  | 18d |
| B2.33 71 16.74 |  | Backfilling, Grouting & Chamfering | 3d | 2026-09-21 | 2026-09-24 | B2.26.56.19.11 |  | 18d |
|  | Pole (10 M Dbl Arm) | **Pole (10 M Double Arm)** |  | 2026-09-05 | 2026-10-03 |  |  |  |
| B2.33 71 16.75 |  | Excavation | 11.2d | 2026-09-05 A | 2026-10-03 | B2.33 71 16.71 SS, B2.33 71 00 02 154 FF | 74% | 82d |
| B2.33 71 16.76 |  | PC & RC Foundation | 10.2d | 2026-09-06 A | 2026-09-17 | B2.33 71 16.75 SS | 74% | 114d |
| B2.33 71 16.77 |  | Lighting Poles Installation Incl power box, Cables | 8.2d | 2026-09-08 A | 2026-09-17 | B2.33 71 16.76 SS | 74% | 21d |
| B2.26.56.19.12 |  | Lighting Luminares Inst | 2d | 2026-09-19 | 2026-09-20 | B2.33 71 16.77 |  | 21d |
| B2.33 71 16.78 |  | Backfilling, Grouting & Chamfering | 3d | 2026-09-26 | 2026-09-28 | B2.26.56.19.12, B2.33 71 16.74 |  | 18d |
|  | Pole (12 M Sngl Arm) | **Pole (12 M Single Arm)** |  | 2026-09-03 | 2026-10-15 |  |  |  |
| B2.33 71 16.116 |  | Excavation | 12.2d | 2026-09-03 A | 2026-10-15 | B2.33 71 16.75 SS, B2.33 71 19 182 FF, B2.33 71 16.78 FF | 74% | 3d |
| B2.33 71 16.126 |  | PC & RC Foundation | 11.2d | 2026-09-05 A | 2026-09-17 | B2.33 71 16.116 SS | 74% | 114d |
| B2.33 71 16.136 |  | Lighting Poles Installation Incl power box, Cables | 8.2d | 2026-09-08 A | 2026-09-17 | B2.33 71 16.126 SS | 74% | 23d |
| B2.26.56.19.29 |  | Lighting Luminares Inst | 2d | 2026-09-19 | 2026-09-20 | B2.33 71 16.136 |  | 23d |
| B2.33 71 16.146 |  | Backfilling, Grouting & Chamfering | 3d | 2026-09-21 | 2026-09-24 | B2.26.56.19.29 |  | 23d |
|  | Earthing | **Earthing** |  | 2026-10-15 | 2026-10-22 |  |  |  |
| B2.33 71 19 38 |  | Land Adjustment | 2d | 2026-10-15 | 2026-10-17 | B2.33 71 16.136, B2.33 71 16.67 |  | 5d |
| B2.33 71 19 39 |  | Earth Rods & Conduits | 3d | 2026-10-18 | 2026-10-20 | B2.33 71 19 38 |  | 5d |
| B2.33 71 19 40 |  | Backfilling | 2d | 2026-10-21 | 2026-10-22 | B2.33 71 19 39 |  | 5d |
|  | Earth & Road Works | **Earth & Road Works** |  | 2025-12-11 | 2026-11-24 |  |  |  |
|  | Earth Works | **Earth Works** |  | 2025-12-11 | 2026-03-16 |  |  |  |
| B1.2.31 23 16.01.12 |  | Roadway Excavation | 74.87d | 2025-12-11 A | 2026-03-16 A | DMM2-Eng-MS-78 | 100% |  |
| B1.2.31 23 23.01.12 |  | Engineering Backfiling | 74.03d | 2025-12-11 A | 2026-03-15 A | B1.2.31 23 16.01.12 | 100% |  |
|  | Earth Layers | **Earth Layers** |  | 2026-03-15 | 2026-09-17 |  |  |  |
| B1.2.32 11 13.01.12 |  | Subgrade | 151.97d | 2026-03-15 A | 2026-09-17 | B1.2.31 23 23.01.12 | 65% | 114d |
| B1.2.32 11 23.01.12 |  | Aggregate Base Course | 2d | 2026-05-21 A | 2026-05-24 A | B1.2.32 11 13.01.12 SS | 100% |  |
| B1.2.32 11 23.01.18 |  | DRAINAGE LAYERS CRUSHED STONE (AGGREGATE) | 44d | 2026-06-14 A | 2026-08-03 A | B1.2.32 11 23.01.12 | 100% |  |
|  | Interlock | **Interlock** |  | 2026-10-24 | 2026-10-26 |  |  |  |
| B1.2.32 14 13.13.12 |  | 60mm thick - Interlocking Block Pavers | 3d | 2026-10-24 | 2026-10-26 | B2.33 71 19 40, B1.2.32 14 13.13.6 |  | 5d |
|  | Curbstone | **Curbstone** |  | 2026-10-27 | 2026-11-14 |  |  |  |
|  | Pre Install | **Pre-Installation** |  | 2026-10-27 | 2026-11-02 |  |  |  |
| B2.31 23 00.331 |  | Excavation | 2d | 2026-10-27 | 2026-10-28 | B1.2.32 14 13.13.12 |  | 5d |
| B1.2.32 14 13.13.212 |  | PCC | 2d | 2026-10-29 | 2026-10-31 | B2.31 23 00.331 |  | 5d |
| 32 16 13.0012 |  | Haunching | 2d | 2026-11-01 | 2026-11-02 | B1.2.32 14 13.13.212 |  | 5d |
|  | Installation | **Installation** |  | 2026-11-03 | 2026-11-11 |  |  |  |
| B1.2.32 16.13.01.12 |  | Curb Stone, Type K1 | 2d | 2026-11-03 | 2026-11-04 | 32 16 13.0012 |  | 5d |
| B1.2.32 16.13.02.11 |  | Dropped Curb, Type K3 | 1d | 2026-11-05 | 2026-11-05 | B1.2.32 16.13.01.12, 32 16 13.0012 |  | 5d |
| B1.2.32 16.13.03.12 |  | Edge Curb, Type K4 | 2d | 2026-11-07 | 2026-11-08 | B1.2.32 16.13.02.11, 32 16 13.0012 |  | 5d |
| B1.2.32 16.13.0412 |  | Heel Curb, Type K5 | 2d | 2026-11-09 | 2026-11-10 | B1.2.32 16.13.03.12, 32 16 13.0012 |  | 5d |
| B1.2.32 16.13.05.11 |  | Transition Curb | 1d | 2026-11-11 | 2026-11-11 | B1.2.32 16.13.0412, 32 16 13.0012 |  | 5d |
|  | Finishing | **Finishing** |  | 2026-11-12 | 2026-11-14 |  |  |  |
| 32 16 13.012 |  | Finishing, Fareface | 2d | 2026-11-12 | 2026-11-14 | B1.2.32 16.13.01.12, B1.2.32 16.13.02.11, B1.2.32 16.13.03.12, B1.2.32 16.13.0412, B1.2.32 16.13.05.11 |  | 5d |
|  | Asphalt Layers | **Asphalt Layers** |  | 2026-05-24 | 2026-11-17 |  |  |  |
| B1.2.32 11 26.01.12 |  | Bituminous Base Course including Prime Coat (MC1) and tack coat (RC2) | 96.47d | 2026-05-24 A | 2026-09-17 | B1.2.32 11 23.01.12 | 74% | 53d |
| B1.2.32 12 16.01.12 |  | Bituminous concrete Wearing Course, including tack coat (RC2) | 2d | 2026-11-16 | 2026-11-17 | B1.2.32 11 26.01.12, B7.32 31 26.01-5, 32 16 13.012, 10 14 53.012 |  | 4d |
|  | Pavement Marking | **Pavement Marking** |  | 2026-11-18 | 2026-11-22 |  |  |  |
| B1.2.32 17 23.02.12 |  | Retroreflective Thermoplastic Yellow, Traffic lines | 2d | 2026-11-18 | 2026-11-19 | B1.2.32 12 16.01.12 |  | 55d |
| B1.2.32 17 23.01.12 |  | Retroreflective Thermoplastic White Traffic lines | 2d | 2026-11-21 | 2026-11-22 | B1.2.32 12 16.01.12, B1.2.32 17 23.02.12 |  | 55d |
|  | Traffic Signs | **Traffic Signs** |  | 2026-10-29 | 2026-11-24 |  |  |  |
|  | Pre Install | **Pre-Installation** |  | 2026-10-29 | 2026-10-31 |  |  |  |
| 10 14 53.012 |  | Foundation | 2d | 2026-10-29 | 2026-10-31 | B2.31 23 00.341 SS |  | 17d |
| B2.31 23 00.341 |  | Excavation | 1d | 2026-10-29 | 2026-10-29 | B2.31 23 00.331 |  | 17d |
|  | Installation | **Installation** |  | 2026-11-23 | 2026-11-24 |  |  |  |
| B1.2.10 14 53.0112 |  | 1 Sheet Alumenium, Single post | 2d | 2026-11-23 | 2026-11-24 | B1.2.32 17 23.02.12, B1.2.32 17 23.01.12, B1.2.10 14 53.014, B1.2.10 14 14.01.4 |  | 55d |
|  | Landscape | **Landscape** |  | 2026-08-15 | 2026-11-15 |  |  |  |
|  | Fences | **Fences** |  | 2026-08-15 | 2026-11-15 |  |  |  |
|  | (ZATCA HCIS) | **Steel fence (ZATCA HCIS)** |  | 2026-08-15 | 2026-11-15 |  |  |  |
| B7.32 31 26.01-1 |  | Earthwork | 34d | 2026-08-15 A | 2026-10-29 | B2.31 23 00.341 FF |  | 79d |
| B7.32 31 26.01-3 |  | Foundation | 33.1d | 2026-08-17 A | 2026-09-22 | B7.32 31 26.01-1 SS |  | 41d |
| B7.32 31 26.01-5 |  | Fence Installation | 8d | 2026-11-07 | 2026-11-15 | B7.32 31 26.01-113, B7.32 31 26.01-3, B7.32 31 26.01-8 |  | 4d |

| ID | WBS | Task | Duration | Start | Finish | Predecessors | Complete | Total float |
| --- | --- | --- | --- | --- | --- | --- | --- | --- |
|  | Sewerage Lift ST | **Sewerage Lift Station** |  | 2025-12-07 | 2026-11-22 |  |  |  |
|  | 1 | **Site Preparation & Initial Earthworks** |  | 2025-12-07 | 2026-05-13 |  |  |  |
| B5.1.31 23 16.01.1 |  | Excavation for wet well & Chambers | 121d | 2025-12-07 A | 2026-05-09 A | B3.2.31 23 16.01, B1.1.31 23 23.162 | 100% |  |
| B5.1.31 23 16.01.3 |  | Embankment Backfiling | 9d | 2026-05-04 A | 2026-05-13 A | B5.1.31 23 16.01.1 | 100% |  |
|  | 11 | **Underground Concrete Structures & Waterproofing** |  | 2026-09-20 | 2026-10-03 |  |  |  |
| B5.1.31 23 16.01.13 |  | Reinforced Concrete Walls | 4d | 2026-09-20 | 2026-09-24 | B5.1.31 23 16.01.9 |  | 17d |
| B5.1.31 23 16.01.15 |  | Water proofing Membrane with protection board | 2d | 2026-09-29 | 2026-09-30 | B5.1.31 23 16.01.13, B5.1.31 23 16.01.19 |  | 14d |
| B5.1.31 23 16.01.21 |  | Backfilling around underground chambers | 2d | 2026-10-01 | 2026-10-03 | B5.1.31 23 16.01.15 |  | 14d |
|  | 2 | **Sub-Structure & Foundations** |  | 2026-05-10 | 2026-09-21 |  |  |  |
| B5.1.31 23 16.01.7 |  | 100 mm thickness lean concrete | 4d | 2026-05-10 A | 2026-05-13 A | B5.1.31 23 16.01.3 | 100% |  |
| B5.1.31 23 16.01.9 |  | Footings for wet well & Chambers | 70d | 2026-07-01 A | 2026-09-19 | B5.1.31 23 16.01.7 | 30% | 14d |
| B5.1.31 23 16.01.11 |  | Slab on grade and ground beams | 2d | 2026-09-20 | 2026-09-21 | B5.1.31 23 16.01.9 |  | 14d |
|  | 10 | **Superstructure - Control Room & Roof Slabs** |  | 2026-09-22 | 2026-10-04 |  |  |  |
| B5.1.31 23 16.01.17 |  | Reinforced Concrete Columns | 3d | 2026-09-22 | 2026-09-26 | B5.1.31 23 16.01.11 |  | 14d |
| B5.1.31 23 16.01.23 |  | Concrete masonry unit (200mm) walls | 3d | 2026-09-27 | 2026-09-29 | B5.1.31 23 16.01.11, B5.1.31 23 16.01.17 |  | 17d |
| B5.1.31 23 16.01.27 |  | Roof Slab for wet well & Chambers | 4d | 2026-09-30 | 2026-10-04 | B5.1.31 23 16.01.13, B5.1.31 23 16.01.23 |  | 17d |
|  | 12 | **Waterproofing, Roofing & External Enclosure** |  | 2026-09-30 | 2026-10-25 |  |  |  |
| B5.1.31 23 16.01.29 |  | External plastering | 4d | 2026-09-30 | 2026-10-04 | B5.1.31 23 16.01.23 |  | 32d |
| B5.1.31 23 16.01.39 |  | Water proofing Membrane for roof | 3d | 2026-10-05 | 2026-10-07 | B5.1.31 23 16.01.27 |  | 17d |
| B5.1.31 23 16.01.55 |  | Vapor retarders for roof | 3d | 2026-10-08 | 2026-10-11 | B5.1.31 23 16.01.39 |  | 17d |
| B5.1.31 23 16.01.71 |  | Geotextile membrane | 3d | 2026-10-12 | 2026-10-14 | B5.1.31 23 16.01.55, DMM2-Proc-Delv-7439 |  | 17d |
| B5.1.31 23 16.01.89 |  | Gravel for Control Room Roof | 3d | 2026-10-15 | 2026-10-18 | B5.1.31 23 16.01.71 |  | 17d |
| B5.1.31 23 16.01.99 |  | 50mm slab on grade | 3d | 2026-10-19 | 2026-10-21 | B5.1.31 23 16.01.89, B5.1.31 23 16.01.25 |  | 17d |
| B5.1.31 23 16.01.107 |  | Stone copping 30mm thickness | 3d | 2026-10-22 | 2026-10-25 | B5.1.31 23 16.01.99 |  | 17d |
|  | 13 | **Internal Chamber Works (Wet Well, Valve, Screening)** |  | 2026-10-04 | 2026-10-29 |  |  |  |
| B5.1.31 23 16.01.31 |  | Sloped screed for internal floors for wet well and valve chamber | 2d | 2026-10-04 | 2026-10-05 | B5.1.31 23 16.01.13, B5.1.31 23 16.01.21 |  | 14d |
| B5.1.31 23 16.01.41 |  | Sloped screed for internal floors for Screening chamber | 3d | 2026-10-06 | 2026-10-08 | B5.1.31 23 16.01.13, B5.1.31 23 16.01.21, B5.1.31 23 16.01.31 |  | 19d |
| B5.1.31 23 16.01.43 |  | Epoxy paint for internal side and floors for wet well and valve chamber | 2d | 2026-10-06 | 2026-10-07 | B5.1.31 23 16.01.31 |  | 14d |
| B5.1.31 23 16.01.57 |  | Epoxy paint for internal side and floors for Screening chamber | 3d | 2026-10-10 | 2026-10-12 | B5.1.31 23 16.01.41, B5.1.31 23 16.01.43 |  | 19d |
| B5.1.31 23 16.01.73 |  | Stainless steel A36 ladders for screening chamber for screening chamber, wet well & valve chamber | 3d | 2026-10-13 | 2026-10-15 | B5.1.31 23 16.01.43, B5.1.31 23 16.01.57, DMM2-Proc-Delv-7432 |  | 21d |
| B5.1.31 23 16.01.91 |  | Stainless steel A36 covers | 2d | 2026-10-17 | 2026-10-18 | B5.1.31 23 16.01.73, DMM2-Proc-Delv-7433 |  | 21d |
| B5.1.31 23 16.01.101 |  | Medium duty lockable D.I. cover | 2d | 2026-10-28 | 2026-10-29 | B5.1.31 23 16.01.73, B5.1.31 23 16.01.91, DMM2-Proc-Delv-7433, B5.1.31 23 16.01.95 |  | 13d |
|  | 3 | **Control Room Internal Finishes** |  | 2026-09-27 | 2026-11-01 |  |  |  |
| B5.1.31 23 16.01.19 |  | Vapor retarders below slab on grade | 2d | 2026-09-27 | 2026-09-28 | B5.1.31 23 16.01.11, B5.1.31 23 16.01.17 |  | 14d |
| B5.1.31 23 16.01.25 |  | Water proofing Paint below slab on grade | 3d | 2026-09-29 | 2026-10-01 | B5.1.31 23 16.01.19 |  | 31d |
| B5.1.31 23 16.01.45 |  | Internal plastering | 3d | 2026-10-08 | 2026-10-11 | B5.1.31 23 16.01.23, B5.1.31 23 16.01.27, B5.1.31 23 16.01.43 |  | 14d |
| B5.1.31 23 16.01.59 |  | Internal painting (Acrylic) | 3d | 2026-10-12 | 2026-10-14 | B5.1.31 23 16.01.45, DMM2-Proc-Delv-7434 |  | 14d |
| B5.1.31 23 16.01.61 |  | External painting | 3d | 2026-10-22 | 2026-10-25 | B5.1.31 23 16.01.29, B5.1.31 23 16.01.45, DMM2-Proc-Delv-7434, B5.1.31 23 16.01.107 SS |  | 17d |
| B5.1.31 23 16.01.75 |  | Steel Door SD1 | 2d | 2026-10-22 | 2026-10-24 | B5.1.31 23 16.01.59, B5.1.31 23 16.01.61 SS |  | 18d |
| B5.1.31 23 16.01.97 |  | Aluminum signage | 2d | 2026-10-31 | 2026-11-01 | B5.1.31 23 16.01.59, B5.1.31 23 16.01.61, B5.1.31 23 16.01.75, DMM2-Proc-Delv-7435, B5.1.31 23 16.01.101 |  | 13d |
|  | 4 | **Mechanical & Process Equipment Installation** |  | 2026-10-05 | 2026-11-05 |  |  |  |
| B5.1.31 23 16.01.47 |  | JIB Crane installation | 3d | 2026-10-05 | 2026-10-07 | B5.1.31 23 16.01.27, DMM2-Proc-Delv-4518 |  | 20d |
| B5.1.31 23 16.01.33 |  | Buried ductile iron pipes installation | 3d | 2026-10-13 | 2026-10-15 | B5.1.31 23 16.01.21, DMM2-Proc-Delv-4458, DMM2-Proc-Delv-4588 |  | 13d |
| B5.1.31 23 16.01.49 |  | Double flanged ductile iron pipe installation | 2d | 2026-10-17 | 2026-10-18 | B5.1.31 23 16.01.21, B5.1.31 23 16.01.33, DMM2-Proc-Delv-4448 |  | 13d |
| B5.1.31 23 16.01.63 |  | Submersible - wet installed pump installation | 3d | 2026-10-19 | 2026-10-21 | B5.1.31 23 16.01.43, B5.1.31 23 16.01.47, DMM2-Proc-Delv-4438, B5.1. 26 32 12 .05 |  | 11d |
| B5.1.31 23 16.01.65 |  | Manually operated Gate Valve DN150 installation | 2d | 2026-10-19 | 2026-10-20 | B5.1.31 23 16.01.33, B5.1.31 23 16.01.49, B5.1.31 23 16.01.47 |  | 13d |
| B5.1.31 23 16.01.77 |  | Non-return Valve DN150 installation | 2d | 2026-10-21 | 2026-10-22 | B5.1.31 23 16.01.33, B5.1.31 23 16.01.49, B5.1.31 23 16.01.65, DMM2-Proc-Delv-4478, B5.1.31 23 16.01.65 FF |  | 13d |
| B5.1.31 23 16.01.111 |  | Scupper installation | 3d | 2026-10-22 | 2026-10-25 | B5.1.31 23 16.01.99, DMM2-Proc-Delv-7447, DMM2-Proc-Delv-3638 |  | 19d |
| B5.1.31 23 16.01.79 |  | Basket screens | 3d | 2026-10-22 | 2026-10-25 | B5.1.31 23 16.01.43, B5.1.31 23 16.01.57, B5.1.31 23 16.01.63, DMM2-Proc-Delv-4488 |  | 11d |
| B5.1.31 23 16.01.93 |  | Odor Control Unit | 2d | 2026-10-26 | 2026-10-27 | B5.1.31 23 16.01.43, B5.1.31 23 16.01.57, B5.1.31 23 16.01.63, B5.1.31 23 16.01.79, DMM2-Proc-Delv-4498, B5.1.31 23 16.01.77 |  | 11d |
| B5.1.31 23 16.01.95 |  | Screening container | 2d | 2026-10-26 | 2026-10-27 | B5.1.31 23 16.01.79, DMM2-Proc-Delv-7446 |  | 13d |
| B5.1.31 23 16.01.103 |  | Surge Tank | 2d | 2026-10-28 | 2026-10-29 | B5.1.31 23 16.01.43, B5.1.31 23 16.01.57, B5.1.31 23 16.01.63, B5.1.31 23 16.01.93, DMM2-Proc-Delv-3778, DMM2-Proc-Delv-4508, DMM2-Proc-Delv-4588 |  | 11d |
| B5.1.31 23 16.01.109 |  | Electrically operated penstock installation | 2d | 2026-10-31 | 2026-11-01 | B5.1.31 23 16.01.43, B5.1.31 23 16.01.57, B5.1.31 23 16.01.63, B5.1.31 23 16.01.103, DMM2-Proc-Delv-7445 |  | 11d |
| B5.1.31 23 16.01.115 |  | DX wall mounted Split/AC installation | 2d | 2026-11-02 | 2026-11-03 | B5.1.31 23 16.01.59, B5.1.31 23 16.01.109 |  | 11d |
| B5.1.31 23 16.01.119 |  | Fire extinguishers (CO2, Powder) placement | 2d | 2026-11-04 | 2026-11-05 | B5.1.31 23 16.01.59, B5.1.31 23 16.01.115, B5.1.31 23 16.01.85, B5.1.31 23 16.01.97, B5.1.31 23 16.01.111 |  | 11d |
|  | 5 | **Electrical & Control Systems** |  | 2026-09-16 | 2026-11-22 |  |  |  |
| B5.1.31 23 16.01.5 |  | Grounding and lightning system | 3d | 2026-09-16 | 2026-09-19 | B5.1.31 23 16.01.1 |  | 38d |
| B5.1.31 23 16.01.35 |  | 4Cx 95mm2 Cable from SEC/Generator to ATS and MCC-SPS | 3d | 2026-10-04 | 2026-10-06 | B5.1.31 23 16.01.21, B5.1.31 23 16.01.5, B5.1.31 23 16.01.21 FF |  | 27d |
| B5.1. 26 32 12 .05 |  | Positive displacement rotary type pump installation | 3d | 2026-10-15 | 2026-10-18 | B5.1.31 23 16.01.13, B5.1.31 23 16.01.27, DMM2-Proc-Delv-4628 |  | 11d |
| B5.1.31 23 16.01.81 |  | MCC - 160AT/250AF, 400V, 3PH, 60HZ | 2d | 2026-10-15 | 2026-10-17 | B5.1.31 23 16.01.59, DMM2-Proc-Delv-4558 |  | 14d |
| B5.1. 26 32 12 .03 |  | ATS | 2d | 2026-10-18 | 2026-10-19 | B5.1.31 23 16.01.59, B5.1.31 23 16.01.81, DMM2-Proc-Delv-4608 |  | 14d |
| B5.1.31 23 16.01.105 |  | DB-SPS Panel | 2d | 2026-10-20 | 2026-10-21 | B5.1.31 23 16.01.59, B5.1. 26 32 12 .03 |  | 14d |
| B5.1. 26 29 00 .02 |  | Local Control Panel, IP 65 | 2d | 2026-10-22 | 2026-10-24 | B5.1.31 23 16.01.105, DMM2-Proc-Delv-4568 |  | 14d |
| B5.1.31 23 16.01.51 |  | Standby Diesel Generator Set installation | 3d | 2026-10-22 | 2026-10-25 | B5.1.31 23 16.01.21, B5.1.31 23 16.01.5, B5.1.31 23 16.01.35, DMM2-Proc-Delv-4588, DMM2-Proc-Delv-4458, DMM2-Proc-Delv-7366, DMM2-Proc-Delv-4508 |  | 14d |
| B5.1.31 23 16.01.113 |  | ELP Panels | 2d | 2026-10-25 | 2026-10-26 | B5.1.31 23 16.01.59, B5.1.31 23 16.01.105, B5.1. 26 29 00 .02 |  | 14d |
| B5.1.31 23 16.01.67 |  | 2.084m3 capacity underground fuel tank installation | 2d | 2026-10-26 | 2026-10-27 | B5.1.31 23 16.01.1, B5.1.31 23 16.01.21, B5.1.31 23 16.01.51, DMM2-Proc-Delv-7454 |  | 14d |
| B5.1.31 23 16.01.117 |  | Isolator/disconnect switches installation | 2d | 2026-10-27 | 2026-10-28 | B5.1.31 23 16.01.59, B5.1.31 23 16.01.113 |  | 14d |
| B5.1.31 23 16.01.83 |  | Manually operated fuel pump installation | 2d | 2026-10-28 | 2026-10-29 | B5.1.31 23 16.01.67, B5.1.31 23 16.01.21, B5.1.31 23 16.01.11, DMM2-Proc-Delv-4598 |  | 14d |
| B5.1.31 23 16.01.137 |  | Surfaced Mounted Light | 1d | 2026-11-04 | 2026-11-04 | B5.1.31 23 16.01.59, B5.1.31 23 16.01.121, B5.1.31 23 16.01.123, B5.1.31 23 16.01.125, B5.1.31 23 16.01.127, B5.1.31 23 16.01.129, B5.1.31 23 16.01.131, B5.1.31 23 16.01.133, B5.1.31 23 16.01.135, DMM2-Proc-Delv-7458, B5.1.31 23 16.01.119 SS |  | 11d |
| B5.1.31 23 16.01.139 |  | 7-meter single arm light pole | 2d | 2026-11-05 | 2026-11-07 | B5.1.31 23 16.01.59, B5.1.31 23 16.01.121, B5.1.31 23 16.01.123, B5.1.31 23 16.01.125, B5.1.31 23 16.01.127, B5.1.31 23 16.01.129, B5.1.31 23 16.01.131, B5.1.31 23 16.01.133, B5.1.31 23 16.01.135, B5.1.31 23 16.01.137, DMM2-Proc-Delv-7457 |  | 11d |

| ID | WBS | Task | Duration | Start | Finish | Predecessors | Complete | Total float |
| --- | --- | --- | --- | --- | --- | --- | --- | --- |
| B5.1.31 23 16.01.141 |  | Socket Outlets installation | 2d | 2026-11-08 | 2026-11-09 | B5.1.31 23 16.01.59, B5.1.31 23 16.01.121, B5.1.31 23 16.01.123, B5.1.31 23 16.01.125, B5.1.31 23 16.01.127, B5.1.31 23 16.01.129, B5.1.31 23 16.01.131, B5.1.31 23 16.01.133, B5.1.31 23 16.01.135, B5.1.31 23 16.01.139 |  | 11d |
| B5.1.31 23 16.01.143 |  | Fire Alarm System | 2d | 2026-11-10 | 2026-11-11 | B5.1.31 23 16.01.59, B5.1.31 23 16.01.121, B5.1.31 23 16.01.123, B5.1.31 23 16.01.125, B5.1.31 23 16.01.127, B5.1.31 23 16.01.129, B5.1.31 23 16.01.131, B5.1.31 23 16.01.133, B5.1.31 23 16.01.135, B5.1.31 23 16.01.141 |  | 11d |
| B5.1.31 23 16.01.145 |  | PLC system | 3d | 2026-11-12 | 2026-11-15 | B5.1.31 23 16.01.59, B5.1.31 23 16.01.121, B5.1.31 23 16.01.123, B5.1.31 23 16.01.125, B5.1.31 23 16.01.127, B5.1.31 23 16.01.129, B5.1.31 23 16.01.131, B5.1.31 23 16.01.133, B5.1.31 23 16.01.135, B5.1.31 23 16.01.63, B5.1.31 23 16.01.79, B5.1.31 23 16.01.93, B5.1.31 23 16.01.103, B5.1.31 23 16.01.109, B5.1.31 23 16.01.143, DMM2-Proc-Delv-4668 |  | 11d |
| B5.1.31 23 16.01.147 |  | Process Control Wiring | 3d | 2026-11-16 | 2026-11-18 | B5.1.31 23 16.01.59, B5.1.31 23 16.01.121, B5.1.31 23 16.01.123, B5.1.31 23 16.01.125, B5.1.31 23 16.01.127, B5.1.31 23 16.01.129, B5.1.31 23 16.01.131, B5.1.31 23 16.01.133, B5.1.31 23 16.01.135, B5.1.31 23 16.01.63, B5.1.31 23 16.01.79, B5.1.31 23 16.01.93, B5.1.31 23 16.01.103, B5.1.31 23 16.01.109, B5.1.31 23 16.01.143, B5.1.31 23 16.01.145, B5.1.31 23 16.01.145 FF, DMM2-Proc-Delv-7460 |  | 11d |
| B5.1.31 23 16.01.149 |  | Instrumentation for Process Systems | 3d | 2026-11-19 | 2026-11-22 | B5.1.31 23 16.01.59, B5.1.31 23 16.01.121, B5.1.31 23 16.01.123, B5.1.31 23 16.01.125, B5.1.31 23 16.01.127, B5.1.31 23 16.01.129, B5.1.31 23 16.01.131, B5.1.31 23 16.01.133, B5.1.31 23 16.01.135, B5.1.31 23 16.01.63, B5.1.31 23 16.01.79, B5.1.31 23 16.01.93, B5.1.31 23 16.01.103, B5.1.31 23 16.01.109, B5.1.31 23 16.01.143, B5.1.31 23 16.01.147, B5.1.31 23 16.01.147 FF, DMM2-Proc-Delv-7461 |  | 11d |
|  | LV Cables | **LV Cables** |  | 2026-11-02 | 2026-11-03 |  |  |  |
| B5.1.31 23 16.01.121 |  | 4Cx 10mm2 Cu/XLPE/SWA/PVC from MCC-SPS to ELP | 1d | 2026-11-02 | 2026-11-02 | B5.1.31 23 16.01.63, B5.1.31 23 16.01.79, B5.1.31 23 16.01.93, B5.1.31 23 16.01.103, B5.1.31 23 16.01.109, B5.1.31 23 16.01.81, B5.1. 26 32 12 .03, B5.1.31 23 16.01.105, B5.1.31 23 16.01.113, B5.1.31 23 16.01.117, DMM2-Proc-Delv-4578 |  | 11d |
| B5.1.31 23 16.01.123 |  | 4Cx 35mm2 + 1Cx16mm2 SUBMERGED RUBBER | 1d | 2026-11-02 | 2026-11-02 | B5.1.31 23 16.01.63, B5.1.31 23 16.01.79, B5.1.31 23 16.01.93, B5.1.31 23 16.01.103, B5.1.31 23 16.01.109, B5.1.31 23 16.01.81, B5.1. 26 32 12 .03, B5.1.31 23 16.01.105, B5.1.31 23 16.01.113, B5.1.31 23 16.01.117, B5.1.31 23 16.01.121 FF, DMM2-Proc-Delv-4578 |  | 11d |
| B5.1.31 23 16.01.125 |  | 4Cx 10mm2 + 1Cx10mm2 Cu/XLPE/PVC FROM MCC-SPS to DB-SPS | 1d | 2026-11-02 | 2026-11-02 | B5.1.31 23 16.01.63, B5.1.31 23 16.01.79, B5.1.31 23 16.01.93, B5.1.31 23 16.01.103, B5.1.31 23 16.01.109, B5.1.31 23 16.01.81, B5.1. 26 32 12 .03, B5.1.31 23 16.01.105, B5.1.31 23 16.01.113, B5.1.31 23 16.01.117, B5.1.31 23 16.01.123 FF, DMM2-Proc-Delv-4578 |  | 11d |
| B5.1.31 23 16.01.127 |  | 4Cx 10mm2 + 1Cx10mm2 Cu/XLPE/PVC FROM MCC-SPS to Penstok | 1d | 2026-11-02 | 2026-11-02 | B5.1.31 23 16.01.63, B5.1.31 23 16.01.79, B5.1.31 23 16.01.93, B5.1.31 23 16.01.103, B5.1.31 23 16.01.109, B5.1.31 23 16.01.81, B5.1. 26 32 12 .03, B5.1.31 23 16.01.105, B5.1.31 23 16.01.113, B5.1.31 23 16.01.117, B5.1.31 23 16.01.125 FF, DMM2-Proc-Delv-4578 |  | 11d |
| B5.1.31 23 16.01.129 |  | 4Cx 10mm2 + 1Cx10mm2 Cu/XLPE/PVC FROM MCC-SPS to Odor Control Unit | 1d | 2026-11-03 | 2026-11-03 | B5.1.31 23 16.01.63, B5.1.31 23 16.01.79, B5.1.31 23 16.01.93, B5.1.31 23 16.01.103, B5.1.31 23 16.01.109, B5.1.31 23 16.01.81, B5.1. 26 32 12 .03, B5.1.31 23 16.01.105, B5.1.31 23 16.01.113, B5.1.31 23 16.01.117, B5.1.31 23 16.01.127, DMM2-Proc-Delv-4578 |  | 11d |
| B5.1.31 23 16.01.131 |  | 4Cx 6mm2 + 1Cx6mm2 Cu/XLPE/PVC FROM MCC-SPS to the mechanical bar screen | 1d | 2026-11-03 | 2026-11-03 | B5.1.31 23 16.01.63, B5.1.31 23 16.01.79, B5.1.31 23 16.01.93, B5.1.31 23 16.01.103, B5.1.31 23 16.01.109, B5.1.31 23 16.01.81, B5.1. 26 32 12 .03, B5.1.31 23 16.01.105, B5.1.31 23 16.01.113, B5.1.31 23 16.01.117, B5.1.31 23 16.01.129 FF, DMM2-Proc-Delv-4578 |  | 11d |
| B5.1.31 23 16.01.133 |  | 3Cx 6mm2 Cu/XLPE/PVC FROM MCC-SPS to the two fuel pumps. | 1d | 2026-11-03 | 2026-11-03 | B5.1.31 23 16.01.63, B5.1.31 23 16.01.79, B5.1.31 23 16.01.93, B5.1.31 23 16.01.103, B5.1.31 23 16.01.109, B5.1.31 23 16.01.81, B5.1. 26 32 12 .03, B5.1.31 23 16.01.105, B5.1.31 23 16.01.113, B5.1.31 23 16.01.117, B5.1.31 23 16.01.83, B5.1.31 23 16.01.131 FF, DMM2-Proc-Delv-4578 |  | 11d |
| B5.1.31 23 16.01.135 |  | 4Cx 6mm2 + 1Cx6mm2 Cu/XLPE/PVC FROM MCC-SPS to the mechanical crane | 1d | 2026-11-03 | 2026-11-03 | B5.1.31 23 16.01.63, B5.1.31 23 16.01.79, B5.1.31 23 16.01.93, B5.1.31 23 16.01.103, B5.1.31 23 16.01.109, B5.1.31 23 16.01.81, B5.1. 26 32 12 .03, B5.1.31 23 16.01.105, B5.1.31 23 16.01.113, B5.1.31 23 16.01.117, B5.1.31 23 16.01.133 FF, DMM2-Proc-Delv-4578 |  | 11d |
|  | 6 | **External Works & Site Finishing** |  | 2026-10-04 | 2026-10-17 |  |  |  |
| B5.1.31 23 16.01.37 |  | Precast Concrete curbstone - Type K1 | 3d | 2026-10-04 | 2026-10-06 | B5.1.31 23 16.01.3, B5.1.31 23 16.01.21 |  | 26d |
| B5.1.31 23 16.01.53 |  | Electrical Hand Hole (EHH-1) 600mm x 600mm x 800mm | 3d | 2026-10-07 | 2026-10-10 | B5.1.31 23 16.01.21, B5.1.31 23 16.01.3, B5.1.31 23 16.01.37, DMM2-Proc-Delv-7456 |  | 26d |
| B5.1.31 23 16.01.69 |  | Precast Concrete curbstone - Type K4 | 2d | 2026-10-11 | 2026-10-12 | B5.1.31 23 16.01.3, B5.1.31 23 16.01.21, B5.1.31 23 16.01.53, B5.1.31 23 16.01.53 FF |  | 26d |
| B5.1.31 23 16.01.87 |  | Electrical Hand Hole (EHH-2) 400mm x 400mm x 600mm | 2d | 2026-10-13 | 2026-10-14 | B5.1.31 23 16.01.21, B5.1.31 23 16.01.3, B5.1.31 23 16.01.69, DMM2-Proc-Delv-7456 |  | 26d |
| B5.1.31 23 16.01.85 |  | Steel fence (ZATCA HCIS) including Steel gate size (7*2.7)m | 2d | 2026-10-15 | 2026-10-17 | B5.1.31 23 16.01.37, B5.1.31 23 16.01.69, B5.1.31 23 16.01.87 |  | 26d |
|  | Zone 04 | **Zone 04** |  | 2025-11-17 | 2026-12-17 |  |  |  |
|  | Dewatering | **Earthworks & Site Grading** |  | 2025-11-17 | 2026-05-06 |  |  |  |
| B1.1.31 23 19.12 |  | Dewatering | 135.38d | 2025-11-17 A | 2026-05-06 A | B1.1.31 23 19.2, DMM2-Cons-Surv-Z04 | 100% |  |
| B1.1.31 23 16.12 |  | Excavation (all types of soil) | 41.64d | 2025-11-22 A | 2026-01-08 A | B1.1.31 23 19.12 | 100% |  |
| B1.1.31 23 23.12 |  | Engineering Backfiling - Road 02 | 63.49d | 2025-11-22 A | 2026-02-04 A | B1.1.31 23 16.12, DMM2-Proc-Delv-7497 | 100% |  |
| B1.1.31 23 23.172 |  | Engineering Backfiling - Road 03 | 58.71d | 2025-11-27 A | 2026-02-04 A | B1.1.31 23 23.12, DMM2-Proc-Delv-7497 | 100% |  |
| B1.1.31 23 23.182 |  | Engineering Backfiling - Road 04 | 56.71d | 2025-11-30 A | 2026-02-04 A | B1.1.31 23 23.172, DMM2-Proc-Delv-7497 | 100% |  |
|  | Road 02 | **Road 02** |  | 2025-11-20 | 2026-12-12 |  |  |  |
|  | Wet Networks | **Wet Networks** |  | 2026-01-07 | 2026-11-17 |  |  |  |
|  | Sewerage Network | **Sewerage Network** |  | 2026-01-21 | 2026-09-19 |  |  |  |
|  | GRP | **GRP Pipes** |  | 2026-01-21 | 2026-06-08 |  |  |  |
|  | 150 | **?150** |  | 2026-01-24 | 2026-06-06 |  |  |  |
|  | 1 | **Depth From 1.5m to 2.5m** |  | 2026-01-24 | 2026-05-23 |  |  |  |
| B5.33 31 00.01.02.1 |  | Excavation | 32.08d | 2026-01-24 A | 2026-03-08 A | B1.1.31 23 23.12 | 100% |  |
| B5.33 31 00.01.02.13 |  | Sand Bedding | 33.58d | 2026-01-27 A | 2026-03-15 A | B5.33 31 00.01.02.1 | 100% |  |
| B5.33 31 00.01.02.25 |  | Pipe Laying | 35.34d | 2026-01-28 A | 2026-03-22 A | B5.33 31 00.01.02.13 | 100% |  |
| B5.33 31 00.01.02.37 |  | Embedment & Test | 37.82d | 2026-01-31 A | 2026-03-29 A | B5.33 31 00.01.02.25 | 100% |  |
| B5.33 31 00.01.02.49 |  | Backfilling & Warrning Tape | 41.78d | 2026-04-04 A | 2026-05-23 A | B5.33 31 00.01.02.37, B5.33 31 00.01.2209 SS | 100% |  |
|  | 2 | **Depth From 2.5m to 3.5m** |  | 2026-01-26 | 2026-06-06 |  |  |  |
| B5.33 31 00.01.02.3 |  | Excavation | 46.58d | 2026-01-26 A | 2026-04-04 A | B5.33 31 00.01.02.1 | 100% |  |
| B5.33 31 00.01.02.15 |  | Sand Bedding | 46.58d | 2026-01-28 A | 2026-04-06 A | B5.33 31 00.01.02.3 | 100% |  |
| B5.33 31 00.01.02.27 |  | Pipe Laying | 47.58d | 2026-01-31 A | 2026-04-09 A | B5.33 31 00.01.02.15 | 100% |  |
| B5.33 31 00.01.02.39 |  | Embedment & Test | 53.82d | 2026-02-01 A | 2026-04-18 A | B5.33 31 00.01.02.27 | 100% |  |
| B5.33 31 00.01.02.51 |  | Backfilling & Warrning Tape | 20d | 2026-05-09 A | 2026-06-06 A | B5.33 31 00.01.02.39, B5.33 31 00.01.02.49 | 100% |  |
|  | 200 | **?200** |  | 2026-01-21 | 2026-06-08 |  |  |  |
|  | 3 | **Depth From 1.5m to 2.5m** |  | 2026-02-26 | 2026-06-03 |  |  |  |
| B5.33 31 00.01.02.5 |  | Excavation | 5.17d | 2026-02-26 A | 2026-03-07 A | B5.33 31 00.01.02.3 | 100% |  |
| B5.33 31 00.01.02.17 |  | Sand Bedding | 7.42d | 2026-03-02 A | 2026-03-14 A | B5.33 31 00.01.02.5 | 100% |  |
| B5.33 31 00.01.02.29 |  | Pipe Laying | 10.37d | 2026-03-03 A | 2026-03-21 A | B5.33 31 00.01.02.17 | 100% |  |
| B5.33 31 00.01.02.41 |  | Embedment & Test | 42.1d | 2026-04-01 A | 2026-05-20 A | B5.33 31 00.01.02.29 | 100% |  |
| B5.33 31 00.01.02.53 |  | Backfilling & Warrning Tape | 46.29d | 2026-04-06 A | 2026-06-03 A | B5.33 31 00.01.02.41 | 100% |  |
|  | 2 | **Depth From 2.5m to 3.5m** |  | 2026-01-21 | 2026-06-08 |  |  |  |
| B5.33 31 00.01.02.7 |  | Excavation | 90.58d | 2026-01-21 A | 2026-05-20 A | B5.33 31 00.01.02.5 | 100% |  |
| B5.33 31 00.01.02.19 |  | Sand Bedding | 88.58d | 2026-01-24 A | 2026-05-20 A | B5.33 31 00.01.02.7 | 100% |  |
| B5.33 31 00.01.02.31 |  | Pipe Laying | 86.5d | 2026-01-26 A | 2026-05-20 A | B5.33 31 00.01.02.19 | 100% |  |
| B5.33 31 00.01.02.43 |  | Embedment & Test | 92.65d | 2026-01-28 A | 2026-06-03 A | B5.33 31 00.01.02.31 | 100% |  |
| B5.33 31 00.01.02.55 |  | Backfilling & Warrning Tape | 22.89d | 2026-05-07 A | 2026-06-08 A | B5.33 31 00.01.02.43, B5.33 31 00.01.02.53, B5.33 31 00.01.02.51 | 100% |  |
|  | 1 | **Depth From 3.5m to 4.5m** |  | 2026-03-05 | 2026-05-20 |  |  |  |
| B5.33 31 00.01.02.9 |  | Excavation | 58.01d | 2026-03-05 A | 2026-05-20 A | B5.33 31 00.01.02.7 | 100% |  |
| B5.33 31 00.01.02.21 |  | Sand Bedding | 56.51d | 2026-03-08 A | 2026-05-20 A | B5.33 31 00.01.02.9 | 100% |  |
| B5.33 31 00.01.02.33 |  | Pipe Laying | 55.76d | 2026-03-09 A | 2026-05-20 A | B5.33 31 00.01.02.21 | 100% |  |
| B5.33 31 00.01.02.45 |  | Embedment & Test | 16.56d | 2026-04-30 A | 2026-05-20 A | B5.33 31 00.01.02.33 | 100% |  |
| B5.33 31 00.01.02.57 |  | Backfilling & Warrning Tape | 14.64d | 2026-05-03 A | 2026-05-20 A | B5.33 31 00.01.02.45 | 100% |  |
|  | 4 | **Depth From 4.5m to 5.5m** |  | 2026-03-05 | 2026-06-06 |  |  |  |
| B5.33 31 00.01.02.11 |  | Excavation | 58.01d | 2026-03-05 A | 2026-05-20 A | B5.33 31 00.01.02.9 | 100% |  |
| B5.33 31 00.01.02.23 |  | Sand Bedding | 53.43d | 2026-03-08 A | 2026-05-17 A | B5.33 31 00.01.02.11 | 100% |  |
| B5.33 31 00.01.02.35 |  | Pipe Laying | 57.68d | 2026-03-09 A | 2026-05-23 A | B5.33 31 00.01.02.23 | 100% |  |
| B5.33 31 00.01.02.47 |  | Embedment & Test | 25.59d | 2026-04-29 A | 2026-06-03 A | B5.33 31 00.01.02.35 | 100% |  |
| B5.33 31 00.01.02.59 |  | Backfilling & Warrning Tape | 26.39d | 2026-05-02 A | 2026-06-06 A | B5.33 31 00.01.02.47, B5.33 31 00.01.02.57, B5.33 31 00.01.02.55 | 100% |  |
|  | Manholes | **Manholes ?1200** |  | 2026-02-04 | 2026-09-19 |  |  |  |

| ID | WBS | Task | Duration | Start | Finish | Predecessors | Complete | Total float |
| --- | --- | --- | --- | --- | --- | --- | --- | --- |
|  | 2 | **Depth From 0.0m to 1.5m** |  | 2026-02-04 | 2026-09-19 |  |  |  |
| B6.33 05 39.01.1377 |  | Excavation & Compaction | 0.34d | 2026-02-04 A | 2026-02-05 A | B5.33 31 00.01.02.11 | 100% |  |
| B6.33 05 39.01.1387 |  | Blinding Conc, & RC Base | 3d | 2026-04-01 A | 2026-04-04 A | B6.33 05 39.01.1377 | 100% |  |
| B6.33 05 39.01.1397 |  | Manhole Installation | 2d | 2026-04-05 A | 2026-04-06 A | B6.33 05 39.01.1387 | 100% |  |
| B6.33 05 39.01.1407 |  | Test, Internal Finishing, Benching & Cover | 80.18d | 2026-06-17 A | 2026-09-19 | B6.33 05 39.01.1397 | 46% | 113.82d |
| B6.33 05 39.01.1417 |  | Backfilling | 9.95d | 2026-06-22 A | 2026-07-02 A | B6.33 05 39.01.1407 SS | 100% |  |
|  | 3 | **Depth From 1.5m to 2.5m** |  | 2026-02-09 | 2026-09-19 |  |  |  |
| B6.33 05 39.01.1427 |  | Excavation & Compaction | 1.26d | 2026-02-09 A | 2026-02-10 A | B6.33 05 39.01.1377 | 100% |  |
| B6.33 05 39.01.1437 |  | Blinding Conc, & RC Base | 3d | 2026-05-20 A | 2026-05-23 A | B6.33 05 39.01.1427 | 100% |  |
| B6.33 05 39.01.1447 |  | Manhole Installation | 96.14d | 2026-05-24 A | 2026-09-17 | B6.33 05 39.01.1437 | 43% | 114d |
| B6.33 05 39.01.1457 |  | Test, Internal Finishing, Benching & Cover | 78.98d | 2026-06-18 A | 2026-09-19 | B6.33 05 39.01.1447 SS | 46% | 113.82d |
| B6.33 05 39.01.1467 |  | Backfilling | 57.3d | 2026-06-23 A | 2026-08-29 A | B6.33 05 39.01.1457 SS | 100% |  |
|  | 4 | **Depth From 2.5m to 3.5m** |  | 2026-02-18 | 2026-09-19 |  |  |  |
| B6.33 05 39.01.1477 |  | Excavation & Compaction | 0.5d | 2026-02-18 A | 2026-02-19 A | B6.33 05 39.01.1427 | 100% |  |
| B6.33 05 39.01.1487 |  | Blinding Conc, & RC Base | 4d | 2026-04-05 A | 2026-04-08 A | B6.33 05 39.01.1477 | 100% |  |
| B6.33 05 39.01.1497 |  | Manhole Installation | 99.14d | 2026-05-20 A | 2026-09-17 | B6.33 05 39.01.1487 | 43% | 114d |
| B6.33 05 39.01.1507 |  | Test, Internal Finishing, Benching & Cover | 79.18d | 2026-06-18 A | 2026-09-19 | B6.33 05 39.01.1497 SS | 46% | 113.82d |
| B6.33 05 39.01.1517 |  | Backfilling | 57.5d | 2026-06-23 A | 2026-08-29 A | B6.33 05 39.01.1507 SS | 100% |  |
|  | 1 | **Depth From 3.5m to 4.5m** |  | 2026-02-22 | 2026-09-19 |  |  |  |
| B6.33 05 39.01.1527 |  | Excavation & Compaction | 0.17d | 2026-02-22 A | 2026-02-23 A | B6.33 05 39.01.1477 | 100% |  |
| B6.33 05 39.01.1537 |  | Blinding Conc, & RC Base | 32.52d | 2026-05-20 A | 2026-07-01 A | B6.33 05 39.01.1527 | 100% |  |
| B6.33 05 39.01.1547 |  | Manhole Installation | 96.14d | 2026-05-24 A | 2026-09-17 | B6.33 05 39.01.1537 | 43% | 114d |
| B6.33 05 39.01.1557 |  | Test, Internal Finishing, Benching & Cover | 79.5d | 2026-06-17 A | 2026-09-19 | B6.33 05 39.01.1547 SS | 46% | 113.82d |
| B6.33 05 39.01.1567 |  | Backfilling | 59.3d | 2026-06-22 A | 2026-08-30 A | B6.33 05 39.01.1517, B6.33 05 39.01.1467, B6.33 05 39.01.1417, B6.33 05 39.01.1557 SS | 100% |  |
|  | 1 | **Depth From 3.5m to 4.5m Backdrop** |  | 2026-06-03 | 2026-09-19 |  |  |  |
| B6.33 05 39.01.1577 |  | Excavation & Compaction | 2d | 2026-06-03 A | 2026-06-04 A | B6.33 05 39.01.1527 | 100% |  |
| B6.33 05 39.01.1587 |  | Blinding Conc, & RC Base | 3d | 2026-06-06 A | 2026-06-08 A | B6.33 05 39.01.1577 | 100% |  |
| B6.33 05 39.01.1597 |  | Manhole Installation | 79.14d | 2026-06-17 A | 2026-09-17 | B6.33 05 39.01.1587 | 43% | 114.86d |
| B6.33 05 39.01.1607 |  | Test, Internal Finishing, Benching & Cover | 78.18d | 2026-06-20 A | 2026-09-19 | B6.33 05 39.01.1597 SS | 46% | 113.82d |
| B6.33 05 39.01.1617 |  | Backfilling | 59.3d | 2026-06-22 A | 2026-08-30 A | B6.33 05 39.01.1567, B6.33 05 39.01.1607 SS | 100% |  |
|  | Stormwater Network | **Stormwater Network** |  | 2026-01-07 | 2026-09-27 |  |  |  |
|  | GRP | **GRP** |  | 2026-01-07 | 2026-09-19 |  |  |  |
|  | ?4001 | **?500** |  | 2026-01-17 | 2026-06-04 |  |  |  |
|  | 3 | **Depth From 1.5m to 2.5m** |  | 2026-01-18 | 2026-06-04 |  |  |  |
| B6.33 42 11.05-1.1 |  | Excavation | 78.21d | 2026-01-18 A | 2026-05-03 A | B6.33 05 39.01.4227, B5.33 31 00.01.02.11 | 100% |  |
| B6.33 42 11.05-1.15 |  | Sand Bedding | 81.16d | 2026-01-21 A | 2026-05-10 A | B6.33 42 11.05-1.1 | 100% |  |
| B6.33 42 11.05-1.29 |  | Pipe Laying | 85.46d | 2026-01-24 A | 2026-05-17 A | B6.33 42 11.05-1.15 | 100% |  |
| B6.33 42 11.05-1.43 |  | Embedment & Test | 88.51d | 2026-01-27 A | 2026-05-24 A | B6.33 42 11.05-1.29 | 100% |  |
| B6.33 42 11.05-1.57 |  | Backfilling & Warrning Tape | 64.15d | 2026-03-10 A | 2026-06-04 A | B6.33 42 11.05-1.43, B6.33 42 11.361210 SS | 100% |  |
|  | 1 | **Depth From 2.5m to 3.5m** |  | 2026-01-17 | 2026-06-03 |  |  |  |
| B6.33 42 11.05-1.3 |  | Excavation | 102.29d | 2026-01-17 A | 2026-06-03 A | B6.33 42 11.05-1.1 | 100% |  |
| B6.33 42 11.05-1.17 |  | Sand Bedding | 81.16d | 2026-01-21 A | 2026-05-10 A | B6.33 42 11.05-1.3 | 100% |  |
| B6.33 42 11.05-1.31 |  | Pipe Laying | 86.46d | 2026-01-22 A | 2026-05-17 A | B6.33 42 11.05-1.17 | 100% |  |
| B6.33 42 11.05-1.45 |  | Embedment & Test | 91.51d | 2026-01-24 A | 2026-05-24 A | B6.33 42 11.05-1.31 | 100% |  |
| B6.33 42 11.05-1.59 |  | Backfilling & Warrning Tape | 22.17d | 2026-05-04 A | 2026-06-03 A | B6.33 42 11.05-1.45, B6.33 42 11.01-1026, B6.33 42 11.361110 SS, B6.33 42 11.01-1.48 SS, B6.33 05 39.01.3767 SS | 100% |  |
|  | ?4002 | **?600** |  | 2026-01-07 | 2026-09-19 |  |  |  |
|  | 4 | **Depth From 1.5m to 2.5m** |  | 2026-01-07 | 2026-09-19 |  |  |  |
| B6.33 42 11.05-1.5 |  | Excavation | 202.31d | 2026-01-07 A | 2026-09-19 | B6.33 42 11.05-1.3 | 70% | 113d |
| B6.33 42 11.05-1.19 |  | Sand Bedding | 200.81d | 2026-01-10 A | 2026-09-19 | B6.33 42 11.05-1.5 FF | 70% | 113d |
| B6.33 42 11.05-1.33 |  | Pipe Laying | 198.06d | 2026-01-12 A | 2026-09-19 | B6.33 42 11.05-1.19 FF | 70% | 113d |
| B6.33 42 11.05-1.47 |  | Embedment & Test | 194.35d | 2026-01-16 A | 2026-09-19 | B6.33 42 11.05-1.33 FF | 70% | 113d |
| B6.33 42 11.05-1.61 |  | Backfilling & Warrning Tape | 81.23d | 2026-06-15 A | 2026-09-19 | B6.33 42 11.01-1028, B6.33 42 11.05-1.47 SS | 70% | 113.31d |
|  | ?40021 | **?700** |  | 2026-02-02 | 2026-09-19 |  |  |  |
|  | 4 | **Depth From 1.5m to 2.5m** |  | 2026-02-02 | 2026-09-19 |  |  |  |
| B6.33 42 11.05-1.7 |  | Excavation | 180.81d | 2026-02-02 A | 2026-09-19 | B6.33 42 11.05-1.5 SS | 70% | 113d |
| B6.33 42 11.05-1.21 |  | Sand Bedding | 178.06d | 2026-02-04 A | 2026-09-19 | B6.33 42 11.05-1.7 FF | 70% | 113d |
| B6.33 42 11.05-1.35 |  | Pipe Laying | 176.31d | 2026-02-07 A | 2026-09-19 | B6.33 42 11.05-1.21 FF | 70% | 113d |
| B6.33 42 11.05-1.49 |  | Embedment & Test | 175.16d | 2026-02-08 A | 2026-09-19 | B6.33 42 11.05-1.35 FF | 70% | 113d |
| B6.33 42 11.05-1.63 |  | Backfilling & Warrning Tape | 79.12d | 2026-06-17 A | 2026-09-19 | B6.33 42 11.05-1.59, B6.33 42 11.05-1.49 SS | 70% | 113.31d |
|  | ?400 | **?800** |  | 2026-01-17 | 2026-04-29 |  |  |  |
|  | 3 | **Depth From 1.5m to 2.5m** |  | 2026-01-17 | 2026-04-29 |  |  |  |
| B6.33 42 11.05-1.9 |  | Excavation | 64.58d | 2026-01-17 A | 2026-04-15 A | B6.33 42 11.05-1.7 SS | 100% |  |
| B6.33 42 11.05-1.23 |  | Sand Bedding | 63.83d | 2026-01-20 A | 2026-04-18 A | B6.33 42 11.05-1.9 | 100% |  |
| B6.33 42 11.05-1.37 |  | Pipe Laying | 62.33d | 2026-01-24 A | 2026-04-19 A | B6.33 42 11.05-1.23 | 100% |  |
| B6.33 42 11.05-1.51 |  | Embedment & Test | 1.03d | 2026-04-20 A | 2026-04-21 A | B6.33 42 11.05-1.37 | 100% |  |
| B6.33 42 11.05-1.65 |  | Backfilling & Warrning Tape | 2.29d | 2026-04-27 A | 2026-04-29 A | B6.33 42 11.05-1.51, B6.33 42 11.01-1030 | 100% |  |
|  | ?40011 | **?1100** |  | 2026-05-03 | 2026-06-08 |  |  |  |
|  | 3 | **Depth From 2.5m to 3.5m** |  | 2026-05-03 | 2026-06-08 |  |  |  |
| B6.33 42 11.05-1.11 |  | Excavation | 5d | 2026-05-03 A | 2026-05-07 A | B6.33 42 11.05-1.9 | 100% |  |
| B6.33 42 11.05-1.25 |  | Sand Bedding | 14d | 2026-05-06 A | 2026-05-21 A | B6.33 42 11.05-1.11 | 100% |  |

| ID | WBS | Task | Duration | Start | Finish | Predecessors | Complete | Total float |
| --- | --- | --- | --- | --- | --- | --- | --- | --- |
| B6.33 42 11.05-1.39 |  | Pipe Laying | 13d | 2026-05-13 A | 2026-06-01 A | B6.33 42 11.05-1.25 | 100% |  |
| B6.33 42 11.05-1.53 |  | Embedment & Test | 3d | 2026-06-02 A | 2026-06-04 A | B6.33 42 11.05-1.39 | 100% |  |
| B6.33 42 11.05-1.67 |  | Backfilling & Warrning Tape | 3d | 2026-06-06 A | 2026-06-08 A | B6.33 42 11.05-1.53, B6.33 42 11.05-1.63 SS | 100% |  |
|  | ?400111 | **?1300** |  | 2026-06-06 | 2026-09-19 |  |  |  |
|  | 3 | **Depth From 2.5m to 3.5m** |  | 2026-06-06 | 2026-09-19 |  |  |  |
| B6.33 42 11.05-1.13 |  | Excavation | 2d | 2026-06-06 A | 2026-06-07 A | B6.33 42 11.05-1.11 | 100% |  |
| B6.33 42 11.05-1.27 |  | Sand Bedding | 88d | 2026-06-08 A | 2026-09-19 | B6.33 42 11.05-1.13 | 70% | 113d |
| B6.33 42 11.05-1.41 |  | Pipe Laying | 78d | 2026-06-20 A | 2026-09-19 | B6.33 42 11.05-1.27 FF | 70% | 113d |
| B6.33 42 11.05-1.55 |  | Embedment & Test | 76.35d | 2026-06-21 A | 2026-09-19 | B6.33 42 11.05-1.41 FF | 70% | 113d |
| B6.33 42 11.05-1.69 |  | Backfilling & Warrning Tape | 74.69d | 2026-06-23 A | 2026-09-19 | B6.33 42 11.34-1.19, B6.33 42 11.05-1.65, B6.33 42 11.05-1.55 FF, B6.33 05 40.01.280 SS | 70% | 113d |
|  | Strom Manholes | **Manholes** |  | 2026-02-16 | 2026-09-19 |  |  |  |
|  | 1 | **?1200** |  | 2026-02-16 | 2026-09-19 |  |  |  |
|  | 4 | **Depth From 1.5m to 2.5m** |  | 2026-02-16 | 2026-09-19 |  |  |  |
| B6.33 05 39.01.3777 |  | Excavation & Compaction | 2d | 2026-02-16 A | 2026-02-17 A | B6.33 42 11.05-1.13, B6.33 42 11.05-1.67, B6.33 42 11.05-1.57, B6.33 42 11.05-1.61 SS, B6.33 42 11.05-1.69 SS | 100% |  |
| B6.33 05 39.01.3787 |  | Blinding Conc, & RC Base | 54.75d | 2026-06-17 A | 2026-08-19 A | B6.33 05 39.01.3777 | 100% |  |
| B6.33 05 39.01.3797 |  | Manhole Installation | 51.5d | 2026-06-21 A | 2026-08-19 A | B6.33 05 39.01.3787 | 100% |  |
| B6.33 05 39.01.3807 |  | Test, Internal Finishing, Benching & Cover | 75d | 2026-06-23 A | 2026-09-19 | B6.33 05 39.01.3797 | 97% | 113d |
| B6.33 05 39.01.3817 |  | Backfilling | 35.03d | 2026-07-11 A | 2026-08-20 A | B6.33 05 39.01.3807 SS, B6.33 05 39.01.3167 SS, B6.33 42 11.05-1.69 SS | 100% |  |
|  | 3 | **?2000** |  | 2026-02-18 | 2026-09-19 |  |  |  |
|  | 4 | **Depth From 1.5m to 2.5m** |  | 2026-02-18 | 2026-09-19 |  |  |  |
| B6.33 05 39.01.3877 |  | Excavation & Compaction | 1.5d | 2026-02-18 A | 2026-02-19 A | B6.33 05 39.01.3777 | 100% |  |
| B6.33 05 39.01.3887 |  | Blinding Conc, & RC Base | 3d | 2026-04-29 A | 2026-05-02 A | B6.33 05 39.01.3877 | 100% |  |
| B6.33 05 39.01.3917 |  | Backfilling | 87.62d | 2026-06-08 A | 2026-09-19 | B6.33 05 39.01.3907 SS, B6.33 42 11.361460 SS, B6.33 05 13.04-113 SS | 97% | 92d |
| B6.33 05 39.01.3897 |  | Manhole Installation | 80d | 2026-06-17 A | 2026-09-19 | B6.33 05 39.01.3887 | 97% | 113d |
| B6.33 05 39.01.3907 |  | Test, Internal Finishing, Benching & Cover | 78d | 2026-06-20 A | 2026-09-19 | B6.33 05 39.01.3897 SS | 97% | 113d |
|  | 3 | **Depth From 2.5m to 3.5m** |  | 2026-02-20 | 2026-09-19 |  |  |  |
| B6.33 05 39.01.3927 |  | Excavation & Compaction | 0.75d | 2026-02-20 A | 2026-02-21 A | B6.33 05 39.01.3877, B6.33 05 39.01.3877 FF | 100% |  |
| B6.33 05 39.01.3937 |  | Blinding Conc, & RC Base | 63.12d | 2026-06-08 A | 2026-08-20 A | B6.33 05 39.01.3927 | 100% |  |
| B6.33 05 39.01.3947 |  | Manhole Installation | 60.74d | 2026-06-10 A | 2026-08-19 A | B6.33 05 39.01.3937 | 100% |  |
| B6.33 05 39.01.3957 |  | Test, Internal Finishing, Benching & Cover | 84d | 2026-06-13 A | 2026-09-19 | B6.33 05 39.01.3947 | 97% | 113d |
| B6.33 05 39.01.3967 |  | Backfilling | 57.86d | 2026-06-15 A | 2026-08-20 A | B6.33 05 39.01.3957 SS, B6.33 42 11.361510 SS, B6.33 42 11.13.105 SS | 100% |  |
|  | Catch Basins | **Catch Basins** |  | 2026-03-02 | 2026-09-27 |  |  |  |
|  | Sing | **Single** |  | 2026-06-08 | 2026-09-27 |  |  |  |
| B6.33 05 40.01.560 |  | Backfilling, DI Frame & Grate Cover Fixing | 86.67d | 2026-06-08 A | 2026-09-27 | B6.33 42 11.35-126, B6.33 05 39.01.3817, B6.33 05 40.01.550 SS, B6.33 05 40.01.160 SS, B6.33 05 40.01.720 FF | 79% | 57.91d |
| B6.33 05 40.01.530 |  | Excavation, Compaction & Vapour Barrier | 80d | 2026-06-17 A | 2026-09-19 | B6.33 05 39.01.3927 | 79% | 113d |
| B6.33 05 40.01.540 |  | Blinding Conc. | 78d | 2026-06-20 A | 2026-09-19 | B6.33 05 40.01.530 SS | 79% | 113d |
| B6.33 05 40.01.550 |  | Catch Basin Installation | 76d | 2026-06-22 A | 2026-09-19 | B6.33 05 40.01.540 SS | 79% | 113d |
|  | Dou | **Double** |  | 2026-08-23 | 2026-09-27 |  |  |  |
| B6.33 05 40.01.970 |  | Excavation, Compaction & Vapour Barrier | 22.5d | 2026-08-23 A | 2026-09-19 | B6.33 05 40.01.530 SS | 62% | 113d |
| B6.33 05 40.01.980 |  | Blinding Conc. | 20.5d | 2026-08-25 A | 2026-09-19 | B6.33 05 40.01.970 SS | 62% | 113d |
| B6.33 05 40.01.990 |  | Catch Basin Installation | 18.62d | 2026-08-26 A | 2026-09-19 | B6.33 05 40.01.980 SS | 62% | 68.88d |
| B6.33 05 40.01.1000 |  | Backfilling, DI Frame & Grate Cover Fixing | 6d | 2026-09-19 | 2026-09-27 | B6.33 05 40.01.990, B6.33 42 11.36-199 |  | 68.88d |
|  | UPVC | **UPVC** |  | 2026-03-02 | 2026-09-19 |  |  |  |
|  | UPVC300 | **?300 From 0.0 to 1.5m** |  | 2026-03-02 | 2026-09-19 |  |  |  |
| B6.33 42 11.35-126 |  | Fittings & Pipe Installation | 3.75d | 2026-03-02 A | 2026-03-08 A | B6.33 42 11.35-114 SS | 100% |  |
| B6.33 42 11.35-114 |  | Catch Basin Opening Prep. | 87.62d | 2026-06-08 A | 2026-09-19 | B6.33 05 40.01.550 SS, DMM2-Proc-Delv-7510 SS, DMM2-Proc-Delv-5748 SS | 82% | 113d |
|  | UPVC3001 | **?400 From 0.0 to 1.5m** |  | 2026-03-02 | 2026-09-19 |  |  |  |
| B6.33 42 11.36-199 |  | Fittings & Pipe Installation | 3.75d | 2026-03-02 A | 2026-03-08 A | B6.33 42 11.36-187 SS | 100% |  |
| B6.33 42 11.36-187 |  | Catch Basin Opening Prep. | 87.62d | 2026-06-08 A | 2026-09-19 | B6.33 42 11.35-114 SS | 82% | 113d |
|  | Potable Water | **Potable Water Network** |  | 2026-02-03 | 2026-11-12 |  |  |  |
|  | HDPE | **HDPE Pipes** |  | 2026-02-03 | 2026-10-17 |  |  |  |
|  | ?110mm | **?110mm** |  | 2026-02-03 | 2026-10-17 |  |  |  |
|  | Depth: 0.0m - 1.5m | **Depth: 0.0m - 1.5m** |  | 2026-02-03 | 2026-10-17 |  |  |  |
| B3.33 14 13-1091 |  | Excavation | 68.66d | 2026-02-03 A | 2026-05-06 A | B6.33 42 11.05-1.13 | 100% |  |
| B3.33 14 13-1095 |  | Sand Bedding | 72.66d | 2026-02-05 A | 2026-05-13 A | B3.33 14 13-1091 | 100% |  |
| B3.33 14 13-1099 |  | Pipe Laying | 62.26d | 2026-02-28 A | 2026-05-20 A | B3.33 14 13-1095 | 100% |  |
| B3.33 14 13-10103 |  | Embedment & Test | 98.49d | 2026-05-20 A | 2026-09-19 | B3.33 14 13-1099 | 71% | 113.85d |
| B3.33 14 13-10107 |  | Backfilling & Warrning Tape | 87.07d | 2026-06-08 A | 2026-10-17 | B3.33 14 13-10103 SS, B3.33 14 13.02.18 FF | 71% | 90d |
|  | Depth: 1.51m - 2.5m | **Depth: 1.51m - 2.5m** |  | 2026-02-05 | 2026-09-19 |  |  |  |
| B3.33 14 13-1093 |  | Excavation | 178d | 2026-02-05 A | 2026-09-19 | B3.33 14 13-1091 | 84% | 20d |
| B3.33 14 13-1097 |  | Sand Bedding | 177d | 2026-02-07 A | 2026-09-19 | B3.33 14 13-1093 FF | 84% | 96d |
| B3.33 14 13-10101 |  | Pipe Laying | 140.53d | 2026-04-02 A | 2026-09-19 | B3.33 14 13-1097 FF | 84% | 96d |
| B3.33 14 13-10105 |  | Embedment & Test | 79.68d | 2026-06-17 A | 2026-09-19 | B3.33 14 13-10101 FF | 84% | 96d |
| B3.33 14 13-10109 |  | Backfilling & Warrning Tape | 75.68d | 2026-06-22 A | 2026-09-19 | B3.33 14 13-10105 FF | 84% | 96d |
|  | Crossing | **Plots and Buildings Crossing** |  | 2026-09-20 | 2026-10-12 |  |  |  |
| B3.33 14 13.02.25 |  | Earthwork | 7d | 2026-09-20 | 2026-09-28 | B3.33 14 13-1093 |  | 20d |
| B3.33 14 13.02.26 |  | Sand Bedding | 5d | 2026-09-29 | 2026-10-04 | B3.33 14 13.02.25 |  | 87d |
| B3.33 14 13.02.27 |  | Tee, Pipe (Crossing) Installation & Backfilling | 7d | 2026-10-05 | 2026-10-12 | B3.33 14 13.02.26, B3.33 14 13.02.21 |  | 87d |
|  | Valves & Chambers | **Valves & Chambers** |  | 2026-09-20 | 2026-11-12 |  |  |  |
|  | GV | **Gate Valves** |  | 2026-09-20 | 2026-09-27 |  |  |  |

| ID | WBS | Task | Duration | Start | Finish | Predecessors | Complete | Total float |
| --- | --- | --- | --- | --- | --- | --- | --- | --- |
|  | 1 | **Gate valves dia (110) mm** |  | 2026-09-20 | 2026-09-27 |  |  |  |
| B3.33 14 19.01.114 |  | Burried Isolation Valve Installation | 3d | 2026-09-20 | 2026-09-22 | B3.33 14 13-10101, DMM2-Proc-Delv-5828 |  | 104d |
| B3.33 14 19.01.115 |  | Spindle & Surface Box | 3d | 2026-09-24 | 2026-09-27 | B3.33 14 19.01.114, B3.33 14 19.01.111 |  | 104d |
|  | 2 | **Air Valves** |  | 2026-10-13 | 2026-11-12 |  |  |  |
|  | 4 | **Air valves on less than 315 mm. (In Chamber)** |  | 2026-10-13 | 2026-11-12 |  |  |  |
| B3.33 05 63.02.32 |  | Land Adjustment & Compaction | 3d | 2026-10-13 | 2026-10-17 | B1.2.32 11 26.01.15, B6.33 42 11.36-199, B6.33 05 40.01.1000, B6.33 05 40.01.560, B6.33 05 39.01.3967, B6.33 05 39.01.3917 |  | 72.5d |
| B3.33 05 63.02.30 |  | Foundations | 4d | 2026-10-17 | 2026-10-21 | B3.33 05 63.02.32, B3.1. 33 14 13-09 |  | 72.5d |
| B3.33 05 63.02.33 |  | Chambers Walls Conc Cast In Situ | 4d | 2026-10-21 | 2026-10-26 | B3.33 05 63.02.30 |  | 72.5d |
| B3.33 05 63.02.31 |  | Chamber Curing, Finishing & Steel Cover | 5d | 2026-10-26 | 2026-11-01 | B3.33 05 63.02.33 |  | 72.5d |
| B3.33 05 63.02.34 |  | Valve & Fitting Installation | 5d | 2026-11-08 | 2026-11-12 | B3.33 05 63.02.31, B3.33 05 63.01.015 |  | 67d |
|  | Fire Fighting | **Fire Fighting Network** |  | 2026-02-05 | 2026-10-20 |  |  |  |
|  | HDPE | **HDPE Pipes** |  | 2026-02-05 | 2026-08-31 |  |  |  |
|  | ?250mm | **?250mm** |  | 2026-02-05 | 2026-08-31 |  |  |  |
|  | Depth: 0.0m - 1.5m | **Depth: 0.0m - 1.5m** |  | 2026-02-05 | 2026-04-06 |  |  |  |
| B3.1. 33 14 13-09 |  | Excavation | 29d | 2026-02-05 A | 2026-03-23 A | B6.33 42 11.36-199 | 100% |  |
| B3.1. 33 14 13-013 |  | Sand Bedding | 30.16d | 2026-02-07 A | 2026-03-26 A | B3.1. 33 14 13-09 | 100% |  |
| B3.1. 33 14 13-017 |  | Pipe Laying | 31.16d | 2026-02-07 A | 2026-03-28 A | B3.1. 33 14 13-013 | 100% |  |
| B3.1. 33 14 13-021 |  | Embedment & Test | 7d | 2026-03-24 A | 2026-04-01 A | B3.1. 33 14 13-017 | 100% |  |
| B3.1. 33 14 13-025 |  | Backfilling & Warrning Tape | 4d | 2026-04-01 A | 2026-04-06 A | B3.1. 33 14 13-021 | 100% |  |
|  | Depth: 1.51m - 2.5m | **Depth: 1.51m - 2.5m** |  | 2026-02-05 | 2026-08-31 |  |  |  |
| B3.1. 33 14 13-011 |  | Excavation | 155.16d | 2026-02-05 A | 2026-08-23 A | B3.1. 33 14 13-09 | 100% |  |
| B3.1. 33 14 13-015 |  | Sand Bedding | 156.16d | 2026-02-07 A | 2026-08-25 A | B3.1. 33 14 13-011 | 100% |  |
| B3.1. 33 14 13-019 |  | Pipe Laying | 158.16d | 2026-02-07 A | 2026-08-27 A | B3.1. 33 14 13-015 | 100% |  |
| B3.1. 33 14 13-023 |  | Embedment & Test | 116.16d | 2026-04-13 A | 2026-08-31 A | B3.1. 33 14 13-019 | 100% |  |
| B3.1. 33 14 13-027 |  | Backfilling & Warrning Tape | 97.24d | 2026-05-04 A | 2026-08-30 A | B3.1. 33 14 13-023, B3.33 14 19.01.130 | 100% |  |
|  | Valves & Chambers | **Valves & Chambers** |  | 2026-04-01 | 2026-10-20 |  |  |  |
|  | GV | **Gate Valves** |  | 2026-04-01 | 2026-09-20 |  |  |  |
|  | 1 | **Gate valves dia (250) mm** |  | 2026-04-01 | 2026-09-20 |  |  |  |
| B3.33 14 19.01.130 |  | Burried Isolation Valve Installation | 2d | 2026-04-01 A | 2026-04-04 A | B3.1. 33 14 13-019, B3.1. 33 14 13-017, DMM2-Proc-Delv-5898 | 100% |  |
| B3.33 14 19.01.131 |  | Spindle & Surface Box | 4d | 2026-09-16 | 2026-09-20 | B3.33 14 19.01.130, B3.1. 33 14 13-023 |  | 72d |
|  | 2 | **Air Valves** |  | 2026-09-20 | 2026-10-20 |  |  |  |
|  | 4 | **Air valves on less than 315 mm. (In Chamber)** |  | 2026-09-20 | 2026-10-20 |  |  |  |
| B3.33 05 63.02.72 |  | Land Adjustment & Compaction | 4d | 2026-09-20 | 2026-09-24 | B3.1. 33 14 13-017, DMM2-Proc-Delv-5908 |  | 87d |
| B3.33 05 63.02.70 |  | Foundations | 5d | 2026-09-26 | 2026-09-30 | B3.33 05 63.02.72 |  | 87d |
| B3.33 05 63.02.73 |  | Chambers Walls Conc Cast In Situ | 5d | 2026-10-01 | 2026-10-06 | B3.33 05 63.02.70 |  | 87d |
| B3.33 05 63.02.71 |  | Chamber Curing, Finishing & Steel Cover | 6d | 2026-10-07 | 2026-10-13 | B3.33 05 63.02.73 |  | 87d |
| B3.33 05 63.02.74 |  | Valve & Fitting Installation | 6d | 2026-10-14 | 2026-10-20 | B3.33 05 63.02.71 |  | 87d |
|  | Washout Valves | **Washout Valves** |  | 2026-06-26 | 2026-10-20 |  |  |  |
|  | 4 | **Washout valves on 110-400 mm. (In Chamber)** |  | 2026-06-26 | 2026-10-20 |  |  |  |
| B3.33 05 63.01.57 |  | Land Adjustment & Compaction | 3d | 2026-06-26 A | 2026-06-29 A | B3.1. 33 14 13-023, B3.1. 33 14 13-021, DMM2-Proc-Delv-5908 SS | 100% |  |
| B3.33 05 63.01.55 |  | Foundations | 69.5d | 2026-06-29 A | 2026-09-20 | B3.33 05 63.01.57 | 50% | 112.5d |
| B3.33 05 63.01.58 |  | Chambers Walls Conc Cast In Situ | 66.5d | 2026-07-02 A | 2026-09-20 | B3.33 05 63.01.55 SS | 50% | 112.5d |
| B3.33 05 63.01.56 |  | Chamber Curing, Finishing & Steel Cover | 64d | 2026-07-06 A | 2026-09-20 | B3.1. 33 14 13-027, B3.1. 33 14 13-025, B3.33 05 63.01.58 SS | 50% | 112d |
| B3.33 05 63.01.59 |  | Valve & Fitting Installation | 61d | 2026-07-09 A | 2026-10-20 | B3.33 05 63.01.56 SS, B3.33 05 63.02.74 FF | 50% | 87d |
|  | 3 | **Fire Hydrant** |  | 2026-06-17 | 2026-09-24 |  |  |  |
| B3.33 14 19.01.fh41 |  | Riser Pipe & Flanged Fittings Installation | 79.82d | 2026-06-17 A | 2026-09-20 | B3.1. 33 14 13-019, B3.1. 33 14 13-017 | 1% | 112.02d |
| B3.33 14 19.01.fh40 |  | Firehydrant Fixing/Installation | 78.81d | 2026-06-20 A | 2026-09-21 | DMM2-Proc-Delv-7178, B3.33 14 19.01.fh41 SS | 1% | 111.03d |
| B3.33 14 19.01.fh42 |  | Backfilling & Compaction | 77.79d | 2026-06-23 A | 2026-09-24 | B3.33 14 19.01.fh40 SS | 1% | 109.05d |
|  | TSE Network | **TSE Network** |  | 2026-02-04 | 2026-11-17 |  |  |  |
|  | HDPE | **HDPE Pipes** |  | 2026-02-04 | 2026-10-05 |  |  |  |
|  | ?110mm | **?110mm** |  | 2026-02-04 | 2026-10-05 |  |  |  |
|  | Depth: 0.0m - 1.5m | **Depth: 0.0m - 1.5m** |  | 2026-02-04 | 2026-10-05 |  |  |  |
| B4.33 14 13.01-018 |  | Excavation | 63.4d | 2026-02-04 A | 2026-05-02 A | B3.33 14 19.01.fh42 SS, B4.33 14 13.01-389 SS | 100% |  |
| B4.33 14 13.01-0112 |  | Sand Bedding | 68.4d | 2026-02-05 A | 2026-05-09 A | B4.33 14 13.01-018 | 100% |  |
| B4.33 14 13.01-0116 |  | Pipe Laying | 65.26d | 2026-03-24 A | 2026-06-13 A | B4.33 14 13.01-0112 | 100% |  |
| B4.33 14 13.01-0120 |  | Embedment & Test | 118.8d | 2026-04-29 A | 2026-09-21 | B4.33 14 13.01-0116 | 20% | 49.8d |
| B4.33 14 13.01-0124 |  | Backfilling & Warrning Tape | 117d | 2026-05-03 A | 2026-10-05 | B4.33 14 13.01-0120 FF, B4.32 84 13.063 FF | 20% | 38d |
|  | ?90mm | **?90mm** |  | 2026-02-04 | 2026-04-06 |  |  |  |
|  | Depth: 0.0m - 1.5m | **Depth: 0.0m - 1.5m** |  | 2026-02-04 | 2026-04-06 |  |  |  |
| B4.33 14 13.01-0110 |  | Excavation | 31.4d | 2026-02-04 A | 2026-03-25 A | B4.33 14 13.01-018 | 100% |  |
| B4.33 14 13.01-0114 |  | Sand Bedding | 32.4d | 2026-02-05 A | 2026-03-28 A | B4.33 14 13.01-0110 | 100% |  |
| B4.33 14 13.01-0118 |  | Pipe Laying | 22.15d | 2026-02-22 A | 2026-03-31 A | B4.33 14 13.01-0114 | 100% |  |
| B4.33 14 13.01-0122 |  | Embedment & Test | 12.75d | 2026-03-13 A | 2026-04-02 A | B4.33 14 13.01-0118, B3.33 14 19.01.140 | 100% |  |
| B4.33 14 13.01-0126 |  | Backfilling & Warrning Tape | 5d | 2026-04-01 A | 2026-04-06 A | B4.33 14 13.01-0122 | 100% |  |
|  | Valves & Chambers | **Valves & Chambers** |  | 2026-03-10 | 2026-11-17 |  |  |  |
|  | GV | **Gate Valves** |  | 2026-03-10 | 2026-09-19 |  |  |  |
|  | 1 | **Gate valves dia (250) mm** |  | 2026-03-10 | 2026-09-19 |  |  |  |
| B3.33 14 19.01.140 |  | Burried Isolation Valve Installation | 15d | 2026-03-10 A | 2026-04-02 A | B4.33 14 13.01-0118, DMM2-Proc-Delv-5878 SS | 100% |  |
| B3.33 14 19.01.141 |  | Spindle & Surface Box | 3d | 2026-09-16 | 2026-09-19 | B3.33 14 19.01.140 |  | 34d |
|  | 2 | **Air Valves** |  | 2026-10-06 | 2026-11-17 |  |  |  |

| ID | WBS | Task | Duration | Start | Finish | Predecessors | Total float |
| --- | --- | --- | --- | --- | --- | --- | --- |
|  | 4 | **Air valves on less than 315 mm. (In Chamber)** |  | 2026-10-06 | 2026-11-17 |  |  |
| B3.33 05 63.02.97 |  | Land Adjustment & Compaction | 3d | 2026-10-06 | 2026-10-08 | B4.33 14 13.01-0124 | 38d |
| B3.33 05 63.02.95 |  | Foundations | 4d | 2026-10-10 | 2026-10-13 | B3.33 05 63.02.97 | 43d |
| B3.33 05 63.02.98 |  | Chambers Walls Conc Cast In Situ | 4d | 2026-10-14 | 2026-10-18 | B3.33 05 63.02.95 | 43d |
| B3.33 05 63.02.96 |  | Chamber Curing, Finishing & Steel Cover | 5d | 2026-10-19 | 2026-10-24 | B3.33 05 63.02.98 | 43d |
| B3.33 05 63.02.99 |  | Valve & Fitting Installation | 3d | 2026-11-15 | 2026-11-17 | B3.33 05 63.02.96, B4.32 84 13.12, B3.33 05 63.02.94 | 25d |
|  | Washout Valves | **Washout Valves** |  | 2026-10-10 | 2026-11-02 |  |  |
|  | 4 | **Washout valves on 110-400 mm. (In Chamber)** |  | 2026-10-10 | 2026-11-02 |  |  |
| B3.33 05 63.01.72 |  | Land Adjustment & Compaction | 3d | 2026-10-10 | 2026-10-12 | B3.33 05 63.02.97 | 38d |
| B3.33 05 63.01.70 |  | Foundations | 4d | 2026-10-13 | 2026-10-17 | B3.33 05 63.01.72 | 38d |
| B3.33 05 63.01.73 |  | Chambers Walls Conc Cast In Situ | 4d | 2026-10-18 | 2026-10-21 | B3.33 05 63.01.70 | 38d |
| B3.33 05 63.01.71 |  | Chamber Curing, Finishing & Steel Cover | 5d | 2026-10-22 | 2026-10-27 | B3.33 05 63.01.73 | 38d |
| B3.33 05 63.01.74 |  | Valve & Fitting Installation | 5d | 2026-10-28 | 2026-11-02 | B3.33 05 63.01.71 | 38d |
|  | Solenoid valves | **Solenoid valves** |  | 2026-11-01 | 2026-11-14 |  |  |
|  | Solenoid valve ?1.0 | **1 Solenoid valve ?1.0 inch with box** |  | 2026-11-01 | 2026-11-09 |  |  |
| B4.32 84 13.13 |  | Cable Laying Two-Wire Decoder (12 AWG) | 3d | 2026-11-01 | 2026-11-03 | B4.33 14 13.01-0116, B4.33 14 13.01-0118, DMM2-Proc-Delv-7556 | 25d |
| B4.32 84 13.14 |  | Solenoid Valve Box Installation | 3d | 2026-11-03 | 2026-11-05 | DMM2-Proc-Delv-5868, DMM2-Proc-Delv-4128 | 29d |
| B4.32 84 13.49 |  | Pull Box Installation | 3d | 2026-11-05 | 2026-11-08 | B4.33 14 13.01-0118, DMM2-Proc-Delv-7555 | 27d |
| B4.32 84 13.15 |  | Bubblers Installation | 3d | 2026-11-07 | 2026-11-09 | B4.32 84 13.14, DMM2-Proc-Delv-7554 | 29d |
|  | Solenoid valve ?1.5 | **1 Solenoid valve ?1.5 inch with box** |  | 2026-11-04 | 2026-11-14 |  |  |
| B4.32 84 13.16 |  | Cable Laying Two-Wire Decoder (12 AWG) | 3d | 2026-11-04 | 2026-11-07 | B4.32 84 13.13, DMM2-Proc-Delv-7556 | 25d |
| B4.32 84 13.50 |  | Pull Box Installation | 3d | 2026-11-05 | 2026-11-08 | B4.32 84 13.49 SS, DMM2-Proc-Delv-7555 | 27d |
| B4.32 84 13.17 |  | Solenoid Valve Box Installation | 3d | 2026-11-08 | 2026-11-10 | B4.32 84 13.16, DMM2-Proc-Delv-5868, DMM2-Proc-Delv-4128 | 25d |
| B4.32 84 13.18 |  | Bubblers Installation | 3d | 2026-11-11 | 2026-11-14 | B4.32 84 13.17, B4.32 84 13.21, DMM2-Proc-Delv-7554 SS | 25d |
|  | Solenoid valve ?2.0 | **1 Solenoid valve ?2.0 inch with box** |  | 2026-11-08 | 2026-11-14 |  |  |
| B4.32 84 13.03 |  | Solenoid Valve Box Installation | 3d | 2026-11-08 | 2026-11-10 | B4.32 84 13.10 FF, DMM2-Proc-Delv-5868, DMM2-Proc-Delv-4128 | 25d |
| B4.32 84 13.10 |  | Cable Laying Two-Wire Decoder (12 AWG) | 3d | 2026-11-08 | 2026-11-10 | B4.32 84 13.16, DMM2-Proc-Delv-7556 | 25d |
| B4.32 84 13.51 |  | Pull Box Installation | 3d | 2026-11-09 | 2026-11-11 | B4.32 84 13.50, DMM2-Proc-Delv-7555 | 27d |
| B4.32 84 13.12 |  | Bubblers Installation | 3d | 2026-11-11 | 2026-11-14 | B4.32 84 13.03, B4.32 84 13.18 SS, B4.32 84 13.15 SS, B4.32 84 13.51 SS, DMM2-Proc-Delv-7554 FF | 25d |
|  | Dry Networks | **Dry Networks** |  | 2026-09-07 | 2026-11-09 |  |  |
|  | MV Network | **Medium Voltage Network** |  | 2026-09-16 | 2026-10-19 |  |  |
|  | Duct Banks | **Duct Banks** |  | 2026-09-29 | 2026-10-19 |  |  |
|  | 4 Way | **2 Way** |  | 2026-09-29 | 2026-10-19 |  |  |
| B2.31 23 00.642 |  | Excavation | 4d | 2026-09-29 | 2026-10-03 | B3.33 14 13.02.25 | 20d |
| B2.33 71 00.292 |  | Shuttering, Steel Fixing Incl. UPVC Pipe & Conc. Cast | 7d | 2026-10-04 | 2026-10-11 | B2.31 23 00.642 | 20d |
| B2.33 71 00.293 |  | Backfilling & Warrning Tape | 7d | 2026-10-12 | 2026-10-19 | B2.33 71 00.292 | 20d |
|  | Cables | **Cables** |  | 2026-09-16 | 2026-09-28 |  |  |
|  | 3C,500mm2 | **3C,500mm2** |  | 2026-09-16 | 2026-09-28 |  |  |
| B2.33 71 49.23.89 |  | Cable 13.8 kV Unarmored | 4d | 2026-09-16 | 2026-09-20 | B4.33 14 13.01-0126 | 78d |
| B2.33 71 49.23.90 |  | Straight joints cables | 3d | 2026-09-21 | 2026-09-24 | B2.33 71 49.23.89 | 78d |
| B2.33 71 49.23.91 |  | Cable Termination | 3d | 2026-09-26 | 2026-09-28 | B2.33 71 49.23.90 | 78d |
|  | LV Network | **Low Voltage Network** |  | 2026-10-18 | 2026-11-01 |  |  |
|  | Duct Banks | **Duct Banks** |  | 2026-10-20 | 2026-11-01 |  |  |
|  | 2 Way | **2 Way** |  | 2026-10-20 | 2026-10-28 |  |  |
| B2.33 71 00 02 145 |  | Excavation | 2d | 2026-10-20 | 2026-10-21 | B2.33 71 00.293 | 65d |
| B2.33 71 00 02 146 |  | Shuttering, Steel Fixing Incl. UPVC Pipe & Conc. Cast | 3d | 2026-10-22 | 2026-10-25 | B2.33 71 00 02 145, B1.2.31 23 16.01.15 | 65d |
| B2.33 71 00 02 147 |  | Backfilling & Warrning Tape | 3d | 2026-10-26 | 2026-10-28 | B2.33 71 00 02 146 | 65d |
|  | 4 Way | **4 Way** |  | 2026-10-22 | 2026-10-31 |  |  |
| B2.33 71 00 02 151 |  | Excavation | 3d | 2026-10-22 | 2026-10-25 | B2.33 71 00 02 145 | 68d |
| B2.33 71 00 02 152 |  | Shuttering, Steel Fixing Incl. UPVC Pipe & Conc. Cast | 2d | 2026-10-26 | 2026-10-27 | B2.33 71 00 02 151 | 69d |
| B2.33 71 00 02 153 |  | Backfilling & Warrning Tape | 3d | 2026-10-28 | 2026-10-31 | B2.33 71 00 02 152, B2.33 71 00 02 98 | 69d |
|  | 6 Way | **6 Way** |  | 2026-10-22 | 2026-11-01 |  |  |
| B2.33 71 00 02 148 |  | Excavation | 3d | 2026-10-22 | 2026-10-25 | B2.33 71 00 02 151 SS | 68d |
| B2.33 71 00 02 149 |  | Shuttering, Steel Fixing Incl. UPVC Pipe & Conc. Cast | 3d | 2026-10-26 | 2026-10-28 | B2.33 71 00 02 148 | 68d |
| B2.33 71 00 02 150 |  | Backfilling & Warrning Tape | 3d | 2026-10-29 | 2026-11-01 | B2.33 71 00 02 149, B2.33 71 00 02 98 | 68d |
|  | Cables | **Cables** |  | 2026-10-18 | 2026-10-19 |  |  |
|  | 4C,10+1C,10mm2 | **4C,10+1C,10mm2** |  | 2026-10-18 | 2026-10-19 |  |  |
| B2.33 71 00 01 19 |  | Cable Pulling | 2d | 2026-10-18 | 2026-10-19 | B2.33 71 00 01 16 | 3d |
|  | 4C,50+1C,25mm2 | **4C,50+1C,25mm2** |  | 2026-10-18 | 2026-10-19 |  |  |
| B2.33 71 00 01 20 |  | Cable Pulling | 2d | 2026-10-18 | 2026-10-19 | B2.33 71 00 01 19 SS, DMM2-Proc-Delv-6478, B2.33 71 26 31 | 3d |
|  | Street Lighting | **Street Lighting** |  | 2026-09-10 | 2026-11-09 |  |  |
|  | Duct Banks | **Duct Banks** |  | 2026-09-20 | 2026-09-30 |  |  |
|  | 4 Way | **4 Way** |  | 2026-09-20 | 2026-09-30 |  |  |
| B2.33 71 00 02 79 |  | Excavation | 2d | 2026-09-20 | 2026-09-22 | B2.33 71 00 02 88 | 31.88d |
| B2.33 71 00 02 80 |  | Shuttering, Steel Fixing Incl. UPVC Pipe & Conc. Cast | 3d | 2026-09-22 | 2026-09-27 | B2.33 71 00 02 79 | 31.88d |
| B2.33 71 00 02 81 |  | Backfilling & Warrning Tape | 3d | 2026-09-27 | 2026-09-30 | B2.33 71 00 02 80 | 31.88d |
|  | Drawpits | **Drawpits** |  | 2026-09-22 | 2026-09-30 |  |  |
| B2.33 71 00 02 82 |  | Excavation | 2d | 2026-09-22 | 2026-09-26 | B2.33 71 00 02 79 | 31.88d |
| B2.33 71 00 02 83 |  | Drawpits Installation | 2d | 2026-09-26 | 2026-09-28 | B2.33 71 00 02 82 | 31.88d |
| B2.33 71 00 02 84 |  | Backfilling & Warrning Tape | 2d | 2026-09-28 | 2026-09-30 | B2.33 71 00 02 83 | 31.88d |

| ID | WBS | Task | Duration | Start | Finish | Predecessors | Complete | Total float |
| --- | --- | --- | --- | --- | --- | --- | --- | --- |
|  | Cables | **Cables** |  | 2026-11-01 | 2026-11-07 |  |  |  |
|  | 4C,10+1C,10mm2 | **4C,10+1C,10mm2** |  | 2026-11-01 | 2026-11-07 |  |  |  |
| B2.33 71 19 202 |  | Land Adjustment | 2d | 2026-11-01 | 2026-11-02 | B2.33 71 00 02 82, B2.33 71 19 50 |  | 28d |
| B2.33 71 49.23.182 |  | Cable Pulling | 2d | 2026-11-03 | 2026-11-04 | B2.33 71 19 202, DMM2-Proc-Delv-6528 |  | 28d |
| B2.33 71 19 212 |  | Backfilling | 2d | 2026-11-05 | 2026-11-07 | B2.33 71 49.23.182, B2.33 71 16.035, B2.33 71 19 49, B2.33 71 19 52 |  | 30d |
|  | SL Poles | **SL Poles** |  | 2026-09-10 | 2026-10-21 |  |  |  |
|  | Pole (10 M Sngl Arm) | **Pole (10 M Single Arm)** |  | 2026-09-10 | 2026-10-21 |  |  |  |
| B2.33 71 16.91 |  | Excavation | 2d | 2026-09-10 A | 2026-10-19 | B2.33 71 00.293 FF | 50% | 20d |
| B2.33 71 16.92 |  | PC & RC Foundation | 1d | 2026-09-12 A | 2026-10-19 | B2.33 71 16.91 FF | 50% | 20d |
| B2.33 71 16.93 |  | Lighting Poles Installation Incl power box, Cables | 1d | 2026-09-13 A | 2026-10-19 | B2.33 71 16.92 FF | 50% | 20d |
| B2.26.56.19.16 |  | Lighting Luminares Inst | 1d | 2026-09-14 A | 2026-10-19 | B2.33 71 16.93 FF | 50% | 40d |
| B2.33 71 16.94 |  | Backfilling, Grouting & Chamfering | 2d | 2026-10-20 | 2026-10-21 | B2.26.56.19.16 |  | 40d |
|  | SL Pillars | **SL Pillars** |  | 2026-11-05 | 2026-11-09 |  |  |  |
| B2.33 71 26 034 |  | Pillars Installation (Internal Wiring) | 2d | 2026-11-05 | 2026-11-07 | B2.33 71 16.93, B2.33 71 49.23.182 |  | 28d |
| B2.33 71 26 045 |  | KWH meter mounting a frame installation | 2d | 2026-11-08 | 2026-11-09 | B2.33 71 26 034 |  | 28d |
|  | Earthing | **Earthing** |  | 2026-10-20 | 2026-10-26 |  |  |  |
| B2.33 71 19 44 |  | Land Adjustment | 2d | 2026-10-20 | 2026-10-21 | B2.33 71 16.93, B2.33 71 00 02 88 |  | 20d |
| B2.33 71 19 45 |  | Earth Rods & Conduits | 2d | 2026-10-22 | 2026-10-24 | B2.33 71 19 44 |  | 36d |
| B2.33 71 19 46 |  | Backfilling | 2d | 2026-10-25 | 2026-10-26 | B2.33 71 19 45, B2.33 71 19 19 |  | 36d |
|  | Telecommunication | **Telecommunication Network** |  | 2026-09-07 | 2026-09-30 |  |  |  |
|  | Ducts | **Ducts** |  | 2026-09-10 | 2026-09-30 |  |  |  |
|  | (6*50mm) | **Size (6*50mm) HDPE ducts** |  | 2026-09-13 | 2026-09-30 |  |  |  |
| B2.1.33 81 26.162 |  | Excavation | 4.1d | 2026-09-13 A | 2026-09-30 | B2.33 71 00 02 84 FF, B2.33 71 00 02 81 FF | 45% | 31.88d |
| B2.1.33 81 26.164 |  | Backfilling & Warrning Tape | 1.1d | 2026-09-14 A | 2026-09-30 | B2.1.33 81 26.163 FF | 45% | 58.88d |
| B2.1.33 81 26.163 |  | HDPE Pipe, Shuttering, Steel Fixing & Conc. Cast | 2.1d | 2026-09-15 A | 2026-09-30 | B2.1.33 81 26.162 FF | 45% | 58.88d |
|  | (6*50mm+2*32mm) | **Size (6*50mm+2*32mm) HDPE ducts** |  | 2026-09-13 | 2026-09-30 |  |  |  |
| B2.1.33 81 26.166 |  | HDPE Pipe, Shuttering, Steel Fixing & Conc. Cast | 1.1d | 2026-09-13 A | 2026-09-30 | B2.1.33 81 26.165 FF | 45% | 58.88d |
| B2.1.33 81 26.167 |  | Backfilling & Warrning Tape | 1.1d | 2026-09-14 A | 2026-09-30 | B2.1.33 81 26.166 FF | 45% | 58.88d |
| B2.1.33 81 26.165 |  | Excavation | 2.1d | 2026-09-15 A | 2026-09-30 | B2.1.33 81 26.162 FF | 45% | 58.88d |
|  | (6*50mm+4*32mm) | **Size (6*50mm+4*32mm) HDPE ducts** |  | 2026-09-10 | 2026-09-17 |  |  |  |
| B2.1.33 81 26.168 |  | Excavation | 1.1d | 2026-09-10 A | 2026-09-17 | B2.1.33 81 26.165 SS | 45% | 60.9d |
| B2.1.33 81 26.169 |  | HDPE Pipe, Shuttering, Steel Fixing & Conc. Cast | 1.1d | 2026-09-12 A | 2026-09-17 | B2.1.33 81 26.168 FF | 45% | 68.9d |
| B2.1.33 81 26.170 |  | Backfilling & Warrning Tape | 1.1d | 2026-09-13 A | 2026-09-17 | B2.1.33 81 26.169 FF | 45% | 68.9d |
|  | (2*32mm) | **Size (2*32mm) HDPE ducts** |  | 2026-09-12 | 2026-09-30 |  |  |  |
| B2.1.33 81 26.171 |  | Excavation | 1.1d | 2026-09-12 A | 2026-09-17 | B2.1.33 81 26.168 FF | 45% | 62.9d |
| B2.1.33 81 26.172 |  | HDPE Pipe, Shuttering, Steel Fixing & Conc. Cast | 1.1d | 2026-09-13 A | 2026-09-17 | B2.1.33 81 26.171 FF | 45% | 68.9d |
| B2.1.33 81 26.173 |  | Backfilling & Warrning Tape | 1.1d | 2026-09-14 A | 2026-09-30 | B2.1.33 81 26.172 FF, B2.1.33 81 26.167 FF, B2.1.33 81 26.164 FF | 45% | 58.88d |
|  | Manholes | **Manholes** |  | 2026-09-07 | 2026-09-30 |  |  |  |
|  | Manhole Type 1 | **Manhole Type 1** |  | 2026-09-09 | 2026-09-30 |  |  |  |
| B2.31 23 00.630 |  | Excavation | 2d | 2026-09-09 A | 2026-09-17 | B2.1.33 81 26.171 SS | 67% | 64d |
| B2.33 71 00.268 |  | Manhole Installation | 5d | 2026-09-13 A | 2026-09-17 | B2.31 23 00.630 FF | 67% | 68d |
| B2.33 71 00.269 |  | Backfilling & Warrning Tape | 4d | 2026-09-14 A | 2026-09-30 | B2.33 71 00.268 FF, B2.1.33 81 26.173 FF | 67% | 58.88d |
|  | Manhole Type 2 | **Manhole Type 2** |  | 2026-09-07 | 2026-09-17 |  |  |  |
| B2.31 23 00.631 |  | Excavation | 10d | 2026-09-07 A | 2026-09-17 | B2.31 23 00.630 SS | 67% | 66d |
| B2.33 71 00.270 |  | Manhole Installation | 8d | 2026-09-09 A | 2026-09-17 | B2.31 23 00.631 FF | 67% | 68d |
| B2.33 71 00.271 |  | Backfilling & Warrning Tape | 5d | 2026-09-13 A | 2026-09-17 | B2.33 71 00.270 FF, B2.1.33 81 26.170 FF | 67% | 68d |
|  | Crossing Ducts | **Road Crossing Ducts** |  | 2026-09-12 | 2026-09-17 |  |  |  |
|  | 1 | **Size (6X50mm) HDPE** |  | 2026-09-12 | 2026-09-17 |  |  |  |
| B2.31 23 00.629 |  | Excavation | 1.1d | 2026-09-12 A | 2026-09-17 | B2.31 23 00.631 FF | 45% | 72d |
| B2.33 71 00.266 |  | Shuttering, Steel Fixing Incl. UPVC Pipe & Conc. Cast | 1.1d | 2026-09-13 A | 2026-09-17 | B2.31 23 00.629 FF | 45% | 72d |
| B2.33 71 00.267 |  | Backfilling & Warrning Tape | 1.1d | 2026-09-14 A | 2026-09-17 | B2.33 71 00.266 FF | 45% | 72d |
|  | Earth & Road Works | **Earth & Road Works** |  | 2025-11-20 | 2026-11-22 |  |  |  |
|  | Earth Works | **Earth Works** |  | 2025-11-20 | 2026-03-08 |  |  |  |
| B1.2.31 23 16.01.15 |  | Roadway Excavation | 11.3d | 2025-11-20 A | 2025-12-03 A | DMM2-Eng-MS-78 | 100% |  |
| B1.2.31 23 23.01.15 |  | Embankment Backfiling | 85.89d | 2025-11-22 A | 2026-03-08 A | B1.2.31 23 16.01.15 | 100% |  |
|  | Earth Layers | **Earth Layers** |  | 2026-01-06 | 2026-09-20 |  |  |  |
| B1.2.32 11 13.01.15 |  | Subgrade | 204.63d | 2026-01-06 A | 2026-09-19 | B1.2.31 23 23.01.15, DMM2-Proc-Delv-7500 | 65% | 42.2d |
| B1.2.32 11 23.01.15 |  | Aggregate Base Course | 95.26d | 2026-06-01 A | 2026-09-20 | B1.2.32 11 13.01.15 FF, DMM2-Proc-Delv-7498 SS | 50% | 41.5d |
|  | Interlock | **Interlock** |  | 2026-10-18 | 2026-10-20 |  |  |  |
| B1.2.32 14 13.13.15 |  | 60mm thick - Interlocking Block Pavers | 3d | 2026-10-18 | 2026-10-20 | B2.33 71 00 01 20 SS, DMM2-Proc-Delv-7502 SS |  | 3d |
|  | Curbstone | **Curbstone** |  | 2026-10-21 | 2026-11-10 |  |  |  |
|  | Pre Install | **Pre-Installation** |  | 2026-10-21 | 2026-10-27 |  |  |  |
| B2.31 23 00.421 |  | Excavation | 2d | 2026-10-21 | 2026-10-22 | B1.2.32 14 13.13.15, DMM2-Proc-Delv-7501 |  | 3d |
| B1.2.32 14 13.13.215 |  | PCC | 2d | 2026-10-24 | 2026-10-25 | B2.31 23 00.421 |  | 3d |
| 32 16 13.0015 |  | Haunching | 2d | 2026-10-26 | 2026-10-27 | B1.2.32 14 13.13.215 |  | 3d |
|  | Installation | **Installation** |  | 2026-10-28 | 2026-11-08 |  |  |  |
| B1.2.32 16.13.01.15 |  | Curb Stone, Type K1 | 2d | 2026-10-28 | 2026-10-29 | 32 16 13.0015 |  | 3d |
| B1.2.32 16.13.02.14 |  | Dropped Curb, Type K3 | 2d | 2026-10-31 | 2026-11-01 | B1.2.32 16.13.01.15, 32 16 13.0015 |  | 3d |
| B1.2.32 16.13.03.15 |  | Edge Curb, Type K4 | 2d | 2026-11-02 | 2026-11-03 | B1.2.32 16.13.02.14, 32 16 13.0015 |  | 3d |
| B1.2.32 16.13.0415 |  | Heel Curb, Type K5 | 2d | 2026-11-04 | 2026-11-05 | B1.2.32 16.13.03.15, 32 16 13.0015 |  | 3d |

| ID | WBS | Task | Duration | Start | Finish | Predecessors | Complete | Total float |
| --- | --- | --- | --- | --- | --- | --- | --- | --- |
| B1.2.32 16.13.05.14 |  | Transition Curb | 2d | 2026-11-07 | 2026-11-08 | B1.2.32 16.13.0415, 32 16 13.0015 |  | 3d |
|  | Finishing | **Finishing** |  | 2026-11-09 | 2026-11-10 |  |  |  |
| 32 16 13.015 |  | Finishing, Fareface | 2d | 2026-11-09 | 2026-11-10 | B1.2.32 16.13.01.15, B1.2.32 16.13.02.14, B1.2.32 16.13.03.15, B1.2.32 16.13.0415, B1.2.32 16.13.05.14 |  | 3d |
|  | Asphalt Layers | **Asphalt Layers** |  | 2026-10-07 | 2026-11-12 |  |  |  |
| B1.2.32 11 26.01.15 |  | Bituminous Base Course including Prime Coat (MC1) and tack coat (RC2) | 5d | 2026-10-07 | 2026-10-13 | B1.2.32 11 23.01.15, DMM2-Proc-Delv-7499 |  | 27.5d |
| B1.2.32 12 16.01.15 |  | Bituminous concrete Wearing Course, including tack coat (RC2) | 2d | 2026-11-11 | 2026-11-12 | B1.2.32 11 26.01.15, 10 14 53.015, 32 16 13.015, B7.32 31 26.01-195 SS |  | 3d |
|  | Pavement Marking | **Pavement Marking** |  | 2026-11-16 | 2026-11-19 |  |  |  |
| B1.2.32 17 23.02.15 |  | Retroreflective Thermoplastic Yellow, Traffic lines | 2d | 2026-11-16 | 2026-11-17 | B1.2.32 12 16.01.15, B1.2.32 12 19.13.015, DMM2-Proc-Delv-7503, B1.2.32 17 23.01.9, B1.2.32 17 23.02.9, B1.2.32 17 23.01.2, B1.2.32 17 23.02.2 |  | 25d |
| B1.2.32 17 23.01.15 |  | Retroreflective Thermoplastic White Traffic lines | 2d | 2026-11-18 | 2026-11-19 | B1.2.32 12 16.01.15, B1.2.32 12 19.13.015, B1.2.32 17 23.02.15 |  | 25d |
|  | Traffic Signs | **Traffic Signs** |  | 2026-10-24 | 2026-11-22 |  |  |  |
|  | Pre Install | **Pre-Installation** |  | 2026-10-24 | 2026-10-27 |  |  |  |
| B2.31 23 00.431 |  | Excavation | 2d | 2026-10-24 | 2026-10-25 | B2.31 23 00.421, DMM2-Proc-Delv-7505, DMM2-Proc-Delv-7506 |  | 5d |
| 10 14 53.015 |  | Foundation | 2d | 2026-10-26 | 2026-10-27 | B2.31 23 00.431 |  | 15d |
|  | Installation | **Installation** |  | 2026-11-18 | 2026-11-22 |  |  |  |
| B1.2.10 14 53.0115 |  | 1 Sheet Alumenium, Single post | 2d | 2026-11-18 | 2026-11-19 | B1.2.32 17 23.01.15 SS, B1.2.32 17 23.02.15, DMM2-Proc-Delv-7411 SS |  | 27d |
| B1.2.10 14 53.0215 |  | 2 Sheet Alumenium, Single post | 2d | 2026-11-21 | 2026-11-22 | B1.2.32 17 23.01.15, B1.2.32 17 23.02.15, B1.2.32 17 23.01.15 FF |  | 25d |
| B1.2.10 14 53.0315 |  | 1 Sheet Alumenium, Double post | 2d | 2026-11-21 | 2026-11-22 | B1.2.32 17 23.01.15, B1.2.32 17 23.02.15 |  | 25d |
|  | Guard Rail | **Guard Rail** |  | 2026-09-16 | 2026-09-29 |  |  |  |
| B2.31 23 00.664 |  | Excavation | 3d | 2026-09-16 | 2026-09-19 | B1.2.32 11 23.01.18 |  | 44d |
| 10 14 53.25 |  | Foundation | 2d | 2026-09-22 | 2026-09-24 | B2.31 23 00.664 FS+2d |  | 46d |
| B1.2.10 14 53.338 |  | W-Beam Guard Rail Installation | 4d | 2026-09-26 | 2026-09-29 | 10 14 53.25 SS+2d |  | 46d |
|  | Road Misc. | **Miscellaneous** |  | 2026-11-14 | 2026-11-15 |  |  |  |
| B1.2.32 12 19.13.015 |  | Speed Tables | 2d | 2026-11-14 | 2026-11-15 | B1.2.32 12 16.01.15 |  | 25d |
|  | Landscape | **Landscape** |  | 2026-10-26 | 2026-12-12 |  |  |  |
|  | Fences | **Fences** |  | 2026-10-26 | 2026-11-14 |  |  |  |
|  | (ZATCA HCIS) | **Steel fence (ZATCA HCIS)** |  | 2026-10-26 | 2026-11-14 |  |  |  |
| B7.32 31 26.01-191 |  | Earthwork | 6d | 2026-10-26 | 2026-11-01 | B2.31 23 00.431 |  | 5d |
| B7.32 31 26.01-193 |  | Foundation | 6d | 2026-11-02 | 2026-11-08 | B7.32 31 26.01-191 |  | 5d |
| B7.32 31 26.01-195 |  | Fence Installation | 5d | 2026-11-09 | 2026-11-14 | B7.32 31 26.01-193 |  | 5d |
|  | Geotextile | **Geotextile** |  | 2026-11-10 | 2026-11-15 |  |  |  |
| B7.31 32 19.23.6 |  | Geotextile to protect trees planting soil | 5d | 2026-11-10 | 2026-11-15 | DMM2-Proc-Delv-7541 |  | 21d |
| B7.31 32 19.23.7 |  | Geotextile below gravel bed | 5d | 2026-11-10 | 2026-11-15 | B7.32 31 26.01-191, DMM2-Proc-Delv-7541 |  | 21d |
|  | Trees | **Trees** |  | 2026-12-06 | 2026-12-12 |  |  |  |
| B7.32 93 43.07 |  | Tamarindus indica | 5d | 2026-12-06 | 2026-12-12 | B7.31 32 19.23.6, DMM2-Proc-Delv-7539, B7.31 32 19.23.7, B7.31 32 19.23.5, B7.32 91 00.01.01, B7.32 93 43.7 |  | 3.76d |
|  | Road 03 | **Road 03** |  | 2025-11-28 | 2026-12-12 |  |  |  |
|  | Wet Networks | **Wet Networks** |  | 2026-03-12 | 2026-10-18 |  |  |  |
|  | Sewerage Network | **Sewerage Network** |  | 2026-04-12 | 2026-09-19 |  |  |  |
|  | GRP | **GRP Pipes** |  | 2026-04-12 | 2026-08-27 |  |  |  |
|  | 150 | **?150** |  | 2026-04-12 | 2026-08-27 |  |  |  |
|  | 1 | **Depth From 1.5m to 2.5m** |  | 2026-04-15 | 2026-05-21 |  |  |  |
| B5.33 31 00.01.0211 |  | Excavation | 2d | 2026-04-15 A | 2026-04-16 A | B1.1.31 23 23.172 | 100% |  |
| B5.33 31 00.01.0215 |  | Sand Bedding | 2d | 2026-04-18 A | 2026-04-19 A | B5.33 31 00.01.0211 | 100% |  |
| B5.33 31 00.01.0219 |  | Pipe Laying | 2d | 2026-04-19 A | 2026-04-20 A | B5.33 31 00.01.0215 | 100% |  |
| B5.33 31 00.01.02113 |  | Embedment & Test | 1d | 2026-04-21 A | 2026-04-21 A | B5.33 31 00.01.0219 | 100% |  |
| B5.33 31 00.01.02117 |  | Backfilling & Warrning Tape | 16.62d | 2026-05-03 A | 2026-05-21 A | B5.33 31 00.01.02113 | 100% |  |
|  | 2 | **Depth From 2.5m to 3.5m** |  | 2026-04-12 | 2026-08-27 |  |  |  |
| B5.33 31 00.01.0213 |  | Excavation | 3d | 2026-04-12 A | 2026-04-14 A | B5.33 31 00.01.0211 | 100% |  |
| B5.33 31 00.01.0217 |  | Sand Bedding | 3d | 2026-04-15 A | 2026-04-18 A | B5.33 31 00.01.0213 | 100% |  |
| B5.33 31 00.01.02111 |  | Pipe Laying | 2d | 2026-04-19 A | 2026-04-20 A | B5.33 31 00.01.0217 | 100% |  |
| B5.33 31 00.01.02115 |  | Embedment & Test | 1d | 2026-04-21 A | 2026-04-21 A | B5.33 31 00.01.02111 | 100% |  |
| B5.33 31 00.01.02119 |  | Backfilling & Warrning Tape | 95.62d | 2026-05-04 A | 2026-08-27 A | B5.33 31 00.01.02115, B5.33 31 00.01.02117 | 100% |  |
|  | Manholes | **Manholes ?1200** |  | 2026-04-16 | 2026-09-19 |  |  |  |
|  | 3 | **Depth From 1.5m to 2.5m** |  | 2026-05-20 | 2026-09-19 |  |  |  |
| B6.33 05 39.01.1627 |  | Excavation & Compaction | 2d | 2026-05-20 A | 2026-05-21 A | B5.33 31 00.01.0213 | 100% |  |
| B6.33 05 39.01.1637 |  | Blinding Conc, & RC Base | 3d | 2026-05-23 A | 2026-05-25 A | B6.33 05 39.01.1627 | 100% |  |
| B6.33 05 39.01.1647 |  | Manhole Installation | 69.55d | 2026-05-31 A | 2026-08-19 A | B6.33 05 39.01.1637 | 100% |  |
| B6.33 05 39.01.1657 |  | Test, Internal Finishing, Benching & Cover | 61.63d | 2026-07-08 A | 2026-09-19 | B6.33 05 39.01.1647 | 46% | 113.82d |
| B6.33 05 39.01.1667 |  | Backfilling | 33.95d | 2026-07-13 A | 2026-08-22 A | B6.33 05 39.01.1657 SS | 100% |  |
|  | 4 | **Depth From 2.5m to 3.5m** |  | 2026-04-16 | 2026-09-19 |  |  |  |
| B6.33 05 39.01.1677 |  | Excavation & Compaction | 2d | 2026-04-16 A | 2026-04-18 A | B6.33 05 39.01.1627 | 100% |  |
| B6.33 05 39.01.1687 |  | Blinding Conc, & RC Base | 3d | 2026-05-20 A | 2026-05-23 A | B6.33 05 39.01.1677 | 100% |  |
| B6.33 05 39.01.1697 |  | Manhole Installation | 96.14d | 2026-05-24 A | 2026-09-17 | B6.33 05 39.01.1687 | 43% | 114d |
| B6.33 05 39.01.1707 |  | Test, Internal Finishing, Benching & Cover | 61.18d | 2026-07-09 A | 2026-09-19 | B6.33 05 39.01.1697 SS | 46% | 113.82d |
| B6.33 05 39.01.1717 |  | Backfilling | 41.5d | 2026-07-14 A | 2026-08-31 A | B6.33 05 39.01.1707 SS | 100% |  |
|  | Stormwater Network | **Stormwater Network** |  | 2026-03-12 | 2026-09-20 |  |  |  |
|  | GRP | **GRP** |  | 2026-04-14 | 2026-09-20 |  |  |  |
|  | ?4001 | **?400** |  | 2026-04-14 | 2026-09-20 |  |  |  |
|  | 3 | **Depth From 1.5m to 2.5m** |  | 2026-04-14 | 2026-09-20 |  |  |  |
| B6.33 42 11.01-110 |  | Excavation | 8d | 2026-04-14 A | 2026-04-22 A | B5.33 31 00.01.0213 | 100% |  |
| B6.33 42 11.01-116 |  | Sand Bedding | 17.31d | 2026-04-16 A | 2026-05-06 A | B6.33 42 11.01-110 | 100% |  |

| ID | WBS | Task | Duration | Start | Finish | Predecessors | Complete | Total float |
| --- | --- | --- | --- | --- | --- | --- | --- | --- |
| B6.33 42 11.01-122 |  | Pipe Laying | 21.47d | 2026-04-19 A | 2026-05-13 A | B6.33 42 11.01-116 | 100% |  |
| B6.33 42 11.01-128 |  | Embedment & Test | 12.31d | 2026-05-06 A | 2026-05-20 A | B6.33 42 11.01-122 | 100% |  |
| B6.33 42 11.01-134 |  | Backfilling & Warrning Tape | 109.28d | 2026-05-10 A | 2026-09-20 | B6.33 42 11.01-128 | 67% | 112.25d |
|  | ?4002 | **?600** |  | 2026-04-16 | 2026-09-19 |  |  |  |
|  | 4 | **Depth From 1.5m to 2.5m** |  | 2026-04-16 | 2026-09-19 |  |  |  |
| B6.33 42 11.01-112 |  | Excavation | 8d | 2026-04-16 A | 2026-04-25 A | B6.33 42 11.01-110 | 100% |  |
| B6.33 42 11.01-118 |  | Sand Bedding | 128d | 2026-04-18 A | 2026-09-19 | B6.33 42 11.01-112 | 67% | 113d |
| B6.33 42 11.01-124 |  | Pipe Laying | 126d | 2026-04-20 A | 2026-09-19 | B6.33 42 11.01-118 FF | 67% | 113d |
| B6.33 42 11.01-130 |  | Embedment & Test | 111.26d | 2026-05-06 A | 2026-09-19 | B6.33 42 11.01-124 FF | 67% | 113d |
| B6.33 42 11.01-136 |  | Backfilling & Warrning Tape | 107.65d | 2026-05-11 A | 2026-09-19 | B6.33 42 11.01-130 FF | 67% | 113d |
|  | ?40021 | **?700** |  | 2026-04-22 | 2026-09-20 |  |  |  |
|  | 4 | **Depth From 1.5m to 2.5m** |  | 2026-04-22 | 2026-09-20 |  |  |  |
| B6.33 42 11.01-114 |  | Excavation | 5d | 2026-04-22 A | 2026-04-27 A | B6.33 42 11.01-112 | 100% |  |
| B6.33 42 11.01-120 |  | Sand Bedding | 97.19d | 2026-04-25 A | 2026-08-20 A | B6.33 42 11.01-114 | 100% |  |
| B6.33 42 11.01-126 |  | Pipe Laying | 95.14d | 2026-04-28 A | 2026-08-22 A | B6.33 42 11.01-120 | 100% |  |
| B6.33 42 11.01-132 |  | Embedment & Test | 37.62d | 2026-08-06 A | 2026-09-20 | B6.33 42 11.01-126 | 34% | 112.24d |
| B6.33 42 11.01-138 |  | Backfilling & Warrning Tape | 13.71d | 2026-08-09 A | 2026-08-24 A | B6.33 42 11.01-132 SS | 100% |  |
|  | Strom Manholes | **Manholes** |  | 2026-04-19 | 2026-09-19 |  |  |  |
|  | 1 | **?1200** |  | 2026-04-19 | 2026-09-19 |  |  |  |
|  | 4 | **Depth From 1.5m to 2.5m** |  | 2026-04-19 | 2026-09-19 |  |  |  |
| B6.33 05 39.01.3977 |  | Excavation & Compaction | 127d | 2026-04-19 A | 2026-09-19 | B6.33 42 11.01-114 | 97% | 113d |
| B6.33 05 39.01.3987 |  | Blinding Conc, & RC Base | 63.6d | 2026-07-06 A | 2026-09-19 | B6.33 05 39.01.3977 SS | 97% | 113d |
| B6.33 05 39.01.3997 |  | Manhole Installation | 61.6d | 2026-07-08 A | 2026-09-19 | B6.33 05 39.01.3987 SS | 97% | 113d |
| B6.33 05 39.01.4007 |  | Test, Internal Finishing, Benching & Cover | 60.6d | 2026-07-09 A | 2026-09-19 | B6.33 05 39.01.3997 SS | 97% | 113d |
| B6.33 05 39.01.4017 |  | Backfilling | 59.6d | 2026-07-11 A | 2026-09-19 | B6.33 05 39.01.4007 SS | 97% | 113d |
|  | Catch Basins | **Catch Basins** |  | 2026-03-12 | 2026-09-19 |  |  |  |
|  | Sing | **Single** |  | 2026-06-10 | 2026-09-19 |  |  |  |
| B6.33 05 40.01.570 |  | Excavation, Compaction & Vapour Barrier | 85.6d | 2026-06-10 A | 2026-09-19 | B6.33 05 39.01.3977 SS | 93% | 113d |
| B6.33 05 40.01.580 |  | Blinding Conc. | 83.6d | 2026-06-13 A | 2026-09-19 | B6.33 05 40.01.570 SS | 93% | 113d |
| B6.33 05 40.01.590 |  | Catch Basin Installation | 82.6d | 2026-06-14 A | 2026-09-19 | B6.33 05 40.01.580 SS | 93% | 113d |
| B6.33 05 40.01.600 |  | Backfilling, DI Frame & Grate Cover Fixing | 81d | 2026-06-16 A | 2026-09-19 | B6.33 42 11.36-1101, B6.33 42 11.35-128 | 93% | 113d |
|  | UPVC | **UPVC** |  | 2026-03-12 | 2026-09-19 |  |  |  |
|  | UPVC300 | **?300 From 0.0 to 1.5m** |  | 2026-03-12 | 2026-09-19 |  |  |  |
| B6.33 42 11.35-128 |  | Fittings & Pipe Installation | 0.75d | 2026-03-12 A | 2026-03-14 A | B6.33 42 11.35-116 SS | 100% |  |
| B6.33 42 11.35-116 |  | Catch Basin Opening Prep. | 82.6d | 2026-06-14 A | 2026-09-19 | B6.33 05 40.01.590 SS | 87% | 113d |
|  | UPVC3001 | **?400 From 0.0 to 1.5m** |  | 2026-03-12 | 2026-09-19 |  |  |  |
| B6.33 42 11.36-1101 |  | Fittings & Pipe Installation | 0.75d | 2026-03-12 A | 2026-03-14 A | B6.33 42 11.36-189 SS | 100% |  |
| B6.33 42 11.36-189 |  | Catch Basin Opening Prep. | 82.6d | 2026-06-14 A | 2026-09-19 | B6.33 42 11.35-116 SS, B6.33 05 40.01.590 SS | 87% | 113d |
|  | Potable Water | **Potable Water Network** |  | 2026-04-11 | 2026-10-05 |  |  |  |
|  | HDPE | **HDPE Pipes** |  | 2026-04-11 | 2026-09-20 |  |  |  |
|  | ?110mm | **?110mm** |  | 2026-04-11 | 2026-09-20 |  |  |  |
|  | Depth: 0.0m - 1.5m | **Depth: 0.0m - 1.5m** |  | 2026-04-11 | 2026-09-20 |  |  |  |
| B3.33 14 13-1191 |  | Excavation | 133.98d | 2026-04-11 A | 2026-09-20 | B1.2.32 11 26.01.16 FF | 79% | 112.5d |
| B3.33 14 13-1195 |  | Sand Bedding | 131.98d | 2026-04-13 A | 2026-09-20 | B3.33 14 13-1191 FF | 79% | 112.5d |
| B3.33 14 13-1199 |  | Pipe Laying | 128.98d | 2026-04-16 A | 2026-09-20 | B3.33 14 13-1195 FF | 79% | 112.5d |
| B3.33 14 13-11103 |  | Embedment & Test | 122.98d | 2026-04-23 A | 2026-09-20 | B3.33 14 19.01.116, B3.33 14 13-1199 FF | 79% | 112.5d |
| B3.33 14 13-11107 |  | Backfilling & Warrning Tape | 106.5d | 2026-05-11 A | 2026-09-19 | B3.33 14 13.01.02 5 | 79% | 113.95d |
|  | Depth: 1.51m - 2.5m | **Depth: 1.51m - 2.5m** |  | 2026-04-13 | 2026-09-20 |  |  |  |
| B3.33 14 13-1193 |  | Excavation | 131.98d | 2026-04-13 A | 2026-09-19 | B3.33 14 13-1191 SS | 79% | 113d |
| B3.33 14 13-1197 |  | Sand Bedding | 128.98d | 2026-04-16 A | 2026-09-19 | B3.33 14 13-1193 FF | 79% | 113d |
| B3.33 14 13-11101 |  | Pipe Laying | 127.98d | 2026-04-18 A | 2026-09-19 | B3.33 14 13-1197 FF | 79% | 113d |
| B3.33 14 13-11105 |  | Embedment & Test | 122.98d | 2026-04-23 A | 2026-09-20 | B3.33 14 19.01.116, B3.33 14 13-11101 FF, B3.33 14 13-11103 FF | 79% | 112.5d |
| B3.33 14 13-11109 |  | Backfilling & Warrning Tape | 107.5d | 2026-05-10 A | 2026-09-20 | B3.33 14 13-11105 FF, B3.33 14 19.01.117 FF | 79% | 112.5d |
|  | Crossing | **Plots and Buildings Crossing** |  | 2026-09-19 | 2026-09-29 |  |  |  |
| B3.33 14 13.02.28 |  | Earthwork | 3d | 2026-09-19 | 2026-09-21 | B3.33 05 63.02.37 |  | 91d |
| B3.33 14 13.02.29 |  | Sand Bedding | 3d | 2026-09-22 | 2026-09-26 | B3.33 14 13.02.28 |  | 91d |
| B3.33 14 13.02.30 |  | Tee, Pipe (Crossing) Installation & Backfilling | 3d | 2026-09-27 | 2026-09-29 | B3.33 14 13.02.29, B3.33 14 13-10109 |  | 91d |
|  | Valves & Chambers | **Valves & Chambers** |  | 2026-09-02 | 2026-10-05 |  |  |  |
|  | GV | **Gate Valves** |  | 2026-09-02 | 2026-09-19 |  |  |  |
|  | 1 | **Gate valves dia (110) mm** |  | 2026-09-02 | 2026-09-19 |  |  |  |
| B3.33 14 19.01.116 |  | Burried Isolation Valve Installation | 4d | 2026-09-02 A | 2026-09-07 A | B3.33 14 13-11101 SS | 100% |  |
| B3.33 14 19.01.117 |  | Spindle & Surface Box | 3d | 2026-09-16 | 2026-09-19 | B3.33 14 19.01.116 |  | 113d |
|  | 2 | **Air Valves** |  | 2026-09-02 | 2026-10-05 |  |  |  |
|  | 4 | **Air valves on less than 315 mm. (In Chamber)** |  | 2026-09-02 | 2026-10-05 |  |  |  |
| B3.33 05 63.02.37 |  | Land Adjustment & Compaction | 12.46d | 2026-09-02 A | 2026-09-17 | B3.33 14 13-1193 SS | 50% | 91d |
| B3.33 05 63.02.35 |  | Foundations | 11.96d | 2026-09-03 A | 2026-09-19 | B3.33 05 63.02.37 SS | 50% | 113.5d |
| B3.33 05 63.02.36 |  | Chamber Curing, Finishing & Steel Cover | 11.46d | 2026-09-05 A | 2026-09-19 | B3.33 05 63.02.38 SS | 50% | 102d |
| B3.33 05 63.02.38 |  | Chambers Walls Conc Cast In Situ | 10.96d | 2026-09-05 A | 2026-09-19 | B3.33 05 63.02.35 SS | 50% | 113.5d |
| B3.33 05 63.02.39 |  | Valve & Fitting Installation | 5d | 2026-09-30 | 2026-10-05 | B3.33 05 63.02.36, B3.33 14 19.01.119 |  | 94d |
|  | Fire Fighting | **Fire Fighting Network** |  | 2026-05-15 | 2026-10-18 |  |  |  |

| ID | WBS | Task | Duration | Start | Finish | Predecessors | Complete | Total float |
| --- | --- | --- | --- | --- | --- | --- | --- | --- |
|  | HDPE | **HDPE Pipes** |  | 2026-05-20 | 2026-08-31 |  |  |  |
|  | ?250mm | **?250mm** |  | 2026-05-20 | 2026-08-31 |  |  |  |
|  | Depth: 0.0m - 1.5m | **Depth: 0.0m - 1.5m** |  | 2026-05-20 | 2026-08-31 |  |  |  |
| B3.1. 33 14 13-0190 |  | Excavation | 2d | 2026-05-20 A | 2026-05-23 A | B3.33 14 13-1191 SS, B3.33 14 13-1193 SS | 100% |  |
| B3.1. 33 14 13-0194 |  | Sand Bedding | 2d | 2026-05-23 A | 2026-05-25 A | B3.1. 33 14 13-0190 | 100% |  |
| B3.1. 33 14 13-0198 |  | Pipe Laying | 76.62d | 2026-05-25 A | 2026-08-27 A | B3.1. 33 14 13-0194, DMM2-Proc-Delv-5888 | 100% |  |
| B3.1. 33 14 13-01102 |  | Embedment & Test | 69.5d | 2026-06-10 A | 2026-08-31 A | B3.1. 33 14 13-0198 | 100% |  |
| B3.1. 33 14 13-01106 |  | Backfilling & Warrning Tape | 66.75d | 2026-06-13 A | 2026-08-30 A | B3.1. 33 14 13-01102, B3.33 05 63.01.46 | 100% |  |
|  | Depth: 1.51m - 2.5m | **Depth: 1.51m - 2.5m** |  | 2026-05-23 | 2026-08-31 |  |  |  |
| B3.1. 33 14 13-0192 |  | Excavation | 2d | 2026-05-23 A | 2026-05-25 A | B3.1. 33 14 13-0190 | 100% |  |
| B3.1. 33 14 13-0196 |  | Sand Bedding | 2d | 2026-05-25 A | 2026-06-01 A | B3.1. 33 14 13-0192 | 100% |  |
| B3.1. 33 14 13-01104 |  | Embedment & Test | 69.5d | 2026-06-10 A | 2026-08-31 A | B3.1. 33 14 13-01100, B3.33 14 19.01.132 | 100% |  |
| B3.1. 33 14 13-01100 |  | Pipe Laying | 64.34d | 2026-06-13 A | 2026-08-27 A | B3.1. 33 14 13-0196, B3.33 05 63.01.46 | 100% |  |
| B3.1. 33 14 13-01108 |  | Backfilling & Warrning Tape | 64.58d | 2026-06-15 A | 2026-08-30 A | B3.1. 33 14 13-01104 | 100% |  |
|  | Valves & Chambers | **Valves & Chambers** |  | 2026-05-15 | 2026-10-01 |  |  |  |
|  | GV | **Gate Valves** |  | 2026-05-15 | 2026-10-01 |  |  |  |
|  | 1 | **Gate valves dia (250) mm** |  | 2026-05-15 | 2026-10-01 |  |  |  |
| B3.33 14 19.01.132 |  | Burried Isolation Valve Installation | 1.82d | 2026-05-15 A | 2026-05-17 A | B3.1. 33 14 13-01100, B3.1. 33 14 13-0198, B3.1. 33 14 13-01106 | 100% |  |
| B3.33 14 19.01.133 |  | Spindle & Surface Box | 4d | 2026-09-28 | 2026-10-01 | B3.33 14 19.01.132, B3.33 05 63.02.54, B3.33 14 19.01.131 |  | 67d |
|  | 2 | **Air Valves** |  | 2026-09-09 | 2026-09-22 |  |  |  |
|  | 4 | **Air valves on less than 315 mm. (In Chamber)** |  | 2026-09-09 | 2026-09-22 |  |  |  |
| B3.33 05 63.02.77 |  | Land Adjustment & Compaction | 2d | 2026-09-09 A | 2026-09-10 A | B3.1. 33 14 13-01104, B3.1. 33 14 13-01102 | 100% |  |
| B3.33 05 63.02.75 |  | Foundations | 3d | 2026-09-12 A | 2026-09-14 A | B3.33 05 63.02.77 | 100% |  |
| B3.33 05 63.02.78 |  | Chambers Walls Conc Cast In Situ | 3d | 2026-09-12 A | 2026-09-14 A | B3.33 05 63.02.75 | 100% |  |
| B3.33 05 63.02.76 |  | Chamber Curing, Finishing & Steel Cover | 1d | 2026-09-15 A | 2026-09-15 A | B3.33 05 63.02.78 | 100% |  |
| B3.33 05 63.02.79 |  | Valve & Fitting Installation | 6d | 2026-09-16 | 2026-09-22 | B3.33 05 63.02.76 |  | 95d |
|  | 3 | **Fire Hydrant** |  | 2026-09-09 | 2026-10-18 |  |  |  |
| B3.33 14 19.01.fh44 |  | Riser Pipe & Flanged Fittings Installation | 7d | 2026-09-09 A | 2026-09-19 | B3.1. 33 14 13-01100, B3.1. 33 14 13-0198 | 50% | 81d |
| B3.33 14 19.01.fh43 |  | Firehydrant Fixing/Installation | 5.5d | 2026-09-12 A | 2026-09-20 | B3.33 14 19.01.fh44 FF | 50% | 80.5d |
| B3.33 14 19.01.fh45 |  | Backfilling & Compaction | 7d | 2026-10-11 | 2026-10-18 | B3.33 14 19.01.fh43, B3.33 14 19.01.fh24, B3.33 14 19.01.121, B3.33 14 19.01.fh3 |  | 64d |
|  | Dry Networks | **Dry Networks** |  | 2026-09-05 | 2026-11-17 |  |  |  |
|  | MV Network | **Medium Voltage Network** |  | 2026-09-10 | 2026-09-24 |  |  |  |
|  | Duct Banks | **Duct Banks** |  | 2026-09-10 | 2026-09-24 |  |  |  |
|  | 4 Way | **2 Way** |  | 2026-09-10 | 2026-09-24 |  |  |  |
| B2.31 23 00.643 |  | Excavation | 6.95d | 2026-09-10 A | 2026-09-19 | B6.33 05 40.01.600 SS | 75% | 55d |
| B2.33 71 00.294 |  | Shuttering, Steel Fixing Incl. UPVC Pipe & Conc. Cast | 4.95d | 2026-09-13 A | 2026-09-19 | B2.31 23 00.643 SS | 75% | 109d |
| B2.33 71 00.295 |  | Backfilling & Warrning Tape | 4d | 2026-09-20 | 2026-09-24 | B2.33 71 00.294 |  | 109d |
|  | Street Lighting | **Street Lighting** |  | 2026-09-08 | 2026-10-28 |  |  |  |
|  | Duct Banks | **Duct Banks** |  | 2026-09-08 | 2026-09-20 |  |  |  |
|  | 4 Way | **4 Way** |  | 2026-09-08 | 2026-09-20 |  |  |  |
| B2.33 71 00 02 85 |  | Excavation | 7.32d | 2026-09-08 A | 2026-09-17 | B2.31 23 00.643 SS | 44% | 31.88d |
| B2.33 71 00 02 86 |  | Shuttering, Steel Fixing Incl. UPVC Pipe & Conc. Cast | 6.56d | 2026-09-12 A | 2026-09-20 | B2.33 71 00 02 85 SS | 44% | 96.64d |
| B2.33 71 00 02 87 |  | Backfilling & Warrning Tape | 3d | 2026-09-15 A | 2026-09-20 | B2.33 71 00 02 86 FF | 44% | 96.64d |
|  | Drawpits | **Drawpits** |  | 2026-09-17 | 2026-10-17 |  |  |  |
| B2.33 71 00 02 88 |  | Excavation | 2d | 2026-09-17 | 2026-09-20 | B2.33 71 00 02 85 |  | 31.88d |
| B2.33 71 00 02 89 |  | Drawpits Installation | 2d | 2026-09-20 | 2026-09-22 | B2.33 71 00 02 88 |  | 107.88d |
| B2.33 71 00 02 90 |  | Backfilling & Warrning Tape | 3d | 2026-10-14 | 2026-10-17 | B2.33 71 00 02 89, B2.33 71 00 02 75 FF |  | 90d |
|  | Cables | **Cables** |  | 2026-09-09 | 2026-10-26 |  |  |  |
|  | 4C,10+1C,10mm2 | **4C,10+1C,10mm2** |  | 2026-09-09 | 2026-10-26 |  |  |  |
| B2.33 71 19 222 |  | Land Adjustment | 6.32d | 2026-09-09 A | 2026-10-24 | B2.33 71 00 02 88 FF, B2.33 71 16.99 FF | 44% | 84d |
| B2.33 71 49.23.192 |  | Cable Pulling | 5.32d | 2026-09-10 A | 2026-09-17 | B2.33 71 19 222 SS | 44% | 60.88d |
| B2.33 71 19 232 |  | Backfilling | 3d | 2026-09-13 A | 2026-10-26 | B2.33 71 49.23.192 FF, B2.33 71 16.94 FF, B2.33 71 19 46 FF, B2.33 71 16.98 FF | 44% | 36d |
|  | SL Poles | **SL Poles** |  | 2026-09-10 | 2026-09-24 |  |  |  |
|  | Pole (10 M Sngl Arm) | **Pole (10 M Single Arm)** |  | 2026-09-10 | 2026-09-24 |  |  |  |
| B2.33 71 16.95 |  | Excavation | 7d | 2026-09-10 A | 2026-09-17 | DMM2-Proc-Delv-6538 SS | 93% | 114d |
| B2.33 71 16.96 |  | PC & RC Foundation | 6d | 2026-09-12 A | 2026-09-17 | B2.33 71 16.95 SS | 93% | 114d |
| B2.33 71 16.97 |  | Lighting Poles Installation Incl power box, Cables | 3d | 2026-09-14 A | 2026-09-17 | B2.33 71 16.96 SS | 93% | 60d |
| B2.26.56.19.17 |  | Lighting Luminares Inst | 2d | 2026-09-19 | 2026-09-20 | B2.33 71 16.97 |  | 63d |
| B2.33 71 16.98 |  | Backfilling, Grouting & Chamfering | 3d | 2026-09-21 | 2026-09-24 | B2.26.56.19.17 |  | 63d |
|  | Earthing | **Earthing** |  | 2026-09-26 | 2026-10-28 |  |  |  |
| B2.33 71 19 47 |  | Land Adjustment | 2d | 2026-09-26 | 2026-09-28 | B2.33 71 16.97, B2.33 71 49.23.192, B2.33 71 00 02 82 |  | 54.88d |
| B2.33 71 19 48 |  | Earth Rods & Conduits | 2d | 2026-09-28 | 2026-09-30 | B2.33 71 19 47 |  | 58.88d |
| B2.33 71 19 49 |  | Backfilling | 2d | 2026-10-27 | 2026-10-28 | B2.33 71 19 48, B2.33 71 19 232 |  | 36d |
|  | Telecommunication | **Telecommunication Network** |  | 2026-09-05 | 2026-11-17 |  |  |  |
|  | Ducts | **Ducts** |  | 2026-09-05 | 2026-11-07 |  |  |  |
|  | (6*50mm) | **Size (6*50mm) HDPE ducts** |  | 2026-09-05 | 2026-11-07 |  |  |  |
| B2.1.33 81 26.174 |  | Excavation | 12d | 2026-09-05 A | 2026-10-17 | B2.33 71 00 02 90 FF | 70% | 90d |
| B2.1.33 81 26.175 |  | HDPE Pipe, Shuttering, Steel Fixing & Conc. Cast | 10d | 2026-09-07 A | 2026-09-17 | B2.1.33 81 26.174 SS | 70% | 107d |
| B2.1.33 81 26.176 |  | Backfilling & Warrning Tape | 2d | 2026-11-04 | 2026-11-07 | B2.1.33 81 26.175, B2.1.33 81 26.98 |  | 67.88d |
|  | (6*50mm+2*32mm) | **Size (6*50mm+2*32mm) HDPE ducts** |  | 2026-09-05 | 2026-09-20 |  |  |  |

| ID | WBS | Task | Duration | Start | Finish | Predecessors | Complete | Total float |
| --- | --- | --- | --- | --- | --- | --- | --- | --- |
| B2.1.33 81 26.177 |  | Excavation | 12d | 2026-09-05 A | 2026-09-17 | B2.1.33 81 26.174 SS | 70% | 51d |
| B2.1.33 81 26.178 |  | HDPE Pipe, Shuttering, Steel Fixing & Conc. Cast | 9d | 2026-09-08 A | 2026-09-17 | B2.1.33 81 26.177 SS | 70% | 103d |
| B2.1.33 81 26.179 |  | Backfilling & Warrning Tape | 2d | 2026-09-19 | 2026-09-20 | B2.1.33 81 26.178 |  | 103d |
|  | (6*50mm+4*32mm) | **Size (6*50mm+4*32mm) HDPE ducts** |  | 2026-09-05 | 2026-09-20 |  |  |  |
| B2.1.33 81 26.180 |  | Excavation | 12d | 2026-09-05 A | 2026-09-17 | B2.1.33 81 26.177 FF, B2.1.33 81 26.177 SS | 70% | 51d |
| B2.1.33 81 26.181 |  | HDPE Pipe, Shuttering, Steel Fixing & Conc. Cast | 8d | 2026-09-09 A | 2026-09-17 | B2.1.33 81 26.180 SS | 70% | 105d |
| B2.1.33 81 26.182 |  | Backfilling & Warrning Tape | 2d | 2026-09-19 | 2026-09-20 | B2.1.33 81 26.181 |  | 105d |
|  | Manholes | **Manholes** |  | 2026-09-19 | 2026-09-30 |  |  |  |
|  | Manhole Type 1 | **Manhole Type 1** |  | 2026-09-19 | 2026-09-26 |  |  |  |
| B2.31 23 00.633 |  | Excavation | 2d | 2026-09-19 | 2026-09-20 | B2.1.33 81 26.180 |  | 51d |
| B2.33 71 00.274 |  | Manhole Installation | 2d | 2026-09-21 | 2026-09-22 | B2.31 23 00.633 |  | 99d |
| B2.33 71 00.275 |  | Backfilling & Warrning Tape | 2d | 2026-09-24 | 2026-09-26 | B2.33 71 00.274 |  | 99d |
|  | Manhole Type 2 | **Manhole Type 2** |  | 2026-09-21 | 2026-09-30 |  |  |  |
| B2.31 23 00.634 |  | Excavation | 3d | 2026-09-21 | 2026-09-24 | B2.31 23 00.633 |  | 51d |
| B2.33 71 00.276 |  | Manhole Installation | 2d | 2026-09-26 | 2026-09-27 | B2.31 23 00.634 |  | 97d |
| B2.33 71 00.277 |  | Backfilling & Warrning Tape | 3d | 2026-09-28 | 2026-09-30 | B2.33 71 00.276 |  | 97d |
|  | Crossing Ducts | **Road Crossing Ducts** |  | 2026-09-20 | 2026-11-17 |  |  |  |
|  | 1 | **Size (6X50mm) HDPE** |  | 2026-09-20 | 2026-11-17 |  |  |  |
| B2.31 23 00.632 |  | Excavation | 2d | 2026-09-20 | 2026-09-21 | B2.31 23 00.643 |  | 55d |
| B2.33 71 00.272 |  | Shuttering, Steel Fixing Incl. UPVC Pipe & Conc. Cast | 2d | 2026-09-22 | 2026-09-24 | B2.31 23 00.632 |  | 103d |
| B2.33 71 00.273 |  | Backfilling & Warrning Tape | 2d | 2026-11-15 | 2026-11-17 | B2.33 71 00.272, B2.1.33 81 26.71, B2.1.33 81 26.80, B2.1.33 81 26.155, B2.1.33 81 26.83, B2.33 71 00.223, B2.33 71 00.261 |  | 59.88d |
|  | Earth & Road Works | **Earth & Road Works** |  | 2025-11-28 | 2026-11-29 |  |  |  |
|  | Earth Works | **Earth Works** |  | 2025-11-28 | 2026-03-04 |  |  |  |
| B1.2.31 23 16.01.16 |  | Roadway Excavation | 4d | 2025-11-28 A | 2025-12-02 A | DMM2-Eng-MS-78 | 100% |  |
| B1.2.31 23 23.01.16 |  | Embankment Backfiling | 77.28d | 2025-11-30 A | 2026-03-04 A | B1.2.31 23 16.01.16 | 100% |  |
|  | Earth Layers | **Earth Layers** |  | 2026-01-22 | 2026-09-21 |  |  |  |
| B1.2.32 11 13.01.16 |  | Subgrade | 192.4d | 2026-01-22 A | 2026-09-21 | B1.2.31 23 23.01.16 | 65% | 111d |
| B1.2.32 11 23.01.16 |  | Aggregate Base Course | 99.48d | 2026-05-20 A | 2026-09-17 | B1.2.32 11 13.01.16 SS | 25% | 30.5d |
|  | Interlock | **Interlock** |  | 2026-09-17 | 2026-09-21 |  |  |  |
| B1.2.32 14 13.13.16 |  | 60mm thick - Interlocking Block Pavers | 3d | 2026-09-17 | 2026-09-21 | B1.2.32 11 23.01.16 |  | 30.5d |
|  | Curbstone | **Curbstone** |  | 2026-09-21 | 2026-10-12 |  |  |  |
|  | Pre Install | **Pre-Installation** |  | 2026-09-21 | 2026-09-29 |  |  |  |
| B2.31 23 00.451 |  | Excavation | 2d | 2026-09-21 | 2026-09-24 | B1.2.32 14 13.13.16 |  | 30.5d |
| B1.2.32 14 13.13.216 |  | PCC | 2d | 2026-09-24 | 2026-09-27 | B2.31 23 00.451 |  | 30.5d |
| 32 16 13.0016 |  | Haunching | 2d | 2026-09-27 | 2026-09-29 | B1.2.32 14 13.13.216 |  | 30.5d |
|  | Installation | **Installation** |  | 2026-09-29 | 2026-10-10 |  |  |  |
| B1.2.32 16.13.01.16 |  | Curb Stone, Type K1 | 3d | 2026-09-29 | 2026-10-03 | 32 16 13.0016 |  | 30.5d |
| B1.2.32 16.13.02.15 |  | Dropped Curb, Type K3 | 1d | 2026-10-03 | 2026-10-04 | B1.2.32 16.13.01.16, 32 16 13.0016 |  | 30.5d |
| B1.2.32 16.13.03.16 |  | Edge Curb, Type K4 | 1d | 2026-10-04 | 2026-10-05 | B1.2.32 16.13.02.15 FF+1d, 32 16 13.0016 |  | 30.5d |
| B1.2.32 16.13.0416 |  | Heel Curb, Type K5 | 2d | 2026-10-05 | 2026-10-07 | B1.2.32 16.13.03.16, 32 16 13.0016 |  | 30.5d |
| B1.2.32 16.13.05.15 |  | Transition Curb | 2d | 2026-10-07 | 2026-10-10 | B1.2.32 16.13.0416, 32 16 13.0016 |  | 30.5d |
|  | Finishing | **Finishing** |  | 2026-10-10 | 2026-10-12 |  |  |  |
| 32 16 13.016 |  | Finishing, Fareface | 2d | 2026-10-10 | 2026-10-12 | B1.2.32 16.13.01.16, B1.2.32 16.13.02.15 SS+1d, B1.2.32 16.13.03.16, B1.2.32 16.13.0416, B1.2.32 16.13.05.15 |  | 30.5d |
|  | Asphalt Layers | **Asphalt Layers** |  | 2026-09-17 | 2026-11-18 |  |  |  |
| B1.2.32 11 26.01.16 |  | Bituminous Base Course including Prime Coat (MC1) and tack coat (RC2) | 2d | 2026-09-17 | 2026-09-20 | B1.2.32 11 23.01.16 |  | 48.5d |
| B1.2.32 12 16.01.16 |  | Bituminous concrete Wearing Course, including tack coat (RC2) | 5d | 2026-11-14 | 2026-11-18 | B1.2.32 11 26.01.16, 32 16 13.016, B1.2.32 12 16.01.15 |  | 3d |
|  | Pavement Marking | **Pavement Marking** |  | 2026-11-22 | 2026-11-29 |  |  |  |
| B1.2.32 17 23.02.16 |  | Retroreflective Thermoplastic Yellow, Traffic lines | 2d | 2026-11-22 | 2026-11-23 | B1.2.32 12 16.01.16, B1.2.32 12 19.13.016, B1.2.32 12 19.13.15 SS |  | 56d |
| B1.2.32 17 23.01.16 |  | Retroreflective Thermoplastic White Traffic lines | 2d | 2026-11-28 | 2026-11-29 | B1.2.32 12 16.01.16, B1.2.32 12 19.13.016, B1.2.10 14 14.0211, B1.2.10 14 53.0114 SS, B1.2.10 14 53.0110, 32 16 13.03, B1.2.32 17 23.01.3, B1.2.10 14 53.0112, B1.2.32 17 23.02.16 |  | 53d |
|  | Road Misc. | **Miscellaneous** |  | 2026-11-19 | 2026-11-21 |  |  |  |
| B1.2.32 12 19.13.016 |  | Speed Tables | 2d | 2026-11-19 | 2026-11-21 | B1.2.32 12 16.01.16, B1.2.32 14 13.13.3 SS, 32 16 13.07 |  | 56d |
| B1.2.32 12 19.13.15 |  | Wheels stoppers (precast concrete) | 2d | 2026-11-19 | 2026-11-21 | B1.2.32 12 16.01.16, DMM2-Proc-Delv-7504 |  | 58d |
|  | Landscape | **Landscape** |  | 2026-12-06 | 2026-12-12 |  |  |  |
|  | Trees | **Trees** |  | 2026-12-06 | 2026-12-12 |  |  |  |
| B7.32 93 43.02-191 |  | Tamarindus indica | 5d | 2026-12-06 | 2026-12-12 | B2.31 23 00.451, B7.32 93 43.07 FF |  | 3.76d |
|  | Road 04 | **Road 04** |  | 2025-12-01 | 2026-12-17 |  |  |  |
|  | Wet Networks | **Wet Networks** |  | 2026-05-03 | 2026-10-31 |  |  |  |
|  | Stormwater Network | **Stormwater Network** |  | 2026-05-03 | 2026-09-20 |  |  |  |
|  | GRP | **GRP** |  | 2026-05-20 | 2026-09-20 |  |  |  |
|  | ?4001 | **?400** |  | 2026-05-20 | 2026-07-09 |  |  |  |
|  | 3 | **Depth From 1.5m to 2.5m** |  | 2026-05-20 | 2026-07-09 |  |  |  |
| B6.33 42 11.01-1.10 |  | Excavation | 2d | 2026-05-20 A | 2026-05-23 A | B6.33 05 39.01.3977 SS | 100% |  |
| B6.33 42 11.01-1.18 |  | Sand Bedding | 2d | 2026-05-23 A | 2026-05-25 A | B6.33 42 11.01-1.10 | 100% |  |
| B6.33 42 11.01-1.26 |  | Pipe Laying | 27.84d | 2026-05-25 A | 2026-07-01 A | B6.33 42 11.01-1.18 | 100% |  |
| B6.33 42 11.01-1.34 |  | Embedment & Test | 34.08d | 2026-05-25 A | 2026-07-08 A | B6.33 42 11.01-1.26 | 100% |  |
| B6.33 42 11.01-1.42 |  | Backfilling & Warrning Tape | 35.2d | 2026-05-25 A | 2026-07-09 A | B6.33 42 11.01-1.34, B6.33 42 11.01-136 SS, B6.33 42 11.31-1 10 SS | 100% |  |
|  | ?4002 | **?600** |  | 2026-05-23 | 2026-07-14 |  |  |  |
|  | 4 | **Depth From 1.5m to 2.5m** |  | 2026-05-23 | 2026-07-14 |  |  |  |
| B6.33 42 11.01-1.12 |  | Excavation | 2d | 2026-05-23 A | 2026-05-25 A | B6.33 42 11.01-1.10 | 100% |  |
| B6.33 42 11.01-1.20 |  | Sand Bedding | 1d | 2026-05-31 A | 2026-06-01 A | B6.33 42 11.01-1.12 | 100% |  |

| ID | WBS | Task | Duration | Start | Finish | Predecessors | Complete | Total float |
| --- | --- | --- | --- | --- | --- | --- | --- | --- |
| B6.33 42 11.01-1.28 |  | Pipe Laying | 34.72d | 2026-05-31 A | 2026-07-11 A | B6.33 42 11.01-1.20 | 100% |  |
| B6.33 42 11.01-1.36 |  | Embedment & Test | 35.08d | 2026-06-01 A | 2026-07-12 A | B6.33 42 11.01-1.28 | 100% |  |
| B6.33 42 11.01-1.44 |  | Backfilling & Warrning Tape | 36.2d | 2026-06-02 A | 2026-07-14 A | B6.33 42 11.01-1.36, B6.33 42 11.01-138 | 100% |  |
|  | ?40021 | **?700** |  | 2026-05-25 | 2026-09-19 |  |  |  |
|  | 4 | **Depth From 1.5m to 2.5m** |  | 2026-05-25 | 2026-09-19 |  |  |  |
| B6.33 42 11.01-1.14 |  | Excavation | 2d | 2026-05-25 A | 2026-06-01 A | B6.33 42 11.01-1.12 | 100% |  |
| B6.33 42 11.01-1.22 |  | Sand Bedding | 4d | 2026-05-25 A | 2026-06-03 A | B6.33 42 11.01-1.14 | 100% |  |
| B6.33 42 11.01-1.30 |  | Pipe Laying | 95d | 2026-05-26 A | 2026-09-19 | B6.33 42 11.01-1.22 | 71% | 113d |
| B6.33 42 11.01-1.38 |  | Embedment & Test | 93.15d | 2026-06-01 A | 2026-09-19 | B6.33 42 11.01-1.30 FF | 67% | 113d |
| B6.33 42 11.01-1.46 |  | Backfilling & Warrning Tape | 92.54d | 2026-06-02 A | 2026-09-19 | B6.33 42 11.01-1.38 SS | 6% | 113.06d |
|  | ?400211 | **?800** |  | 2026-06-01 | 2026-09-20 |  |  |  |
|  | 4 | **Depth From 1.5m to 2.5m** |  | 2026-06-01 | 2026-09-20 |  |  |  |
| B6.33 42 11.01-1.16 |  | Excavation | 2d | 2026-06-01 A | 2026-06-03 A | B6.33 42 11.01-1.14 | 100% |  |
| B6.33 42 11.01-1.24 |  | Sand Bedding | 2d | 2026-06-03 A | 2026-06-06 A | B6.33 42 11.01-1.16 | 100% |  |
| B6.33 42 11.01-1.32 |  | Pipe Laying | 89.6d | 2026-06-06 A | 2026-09-19 | B6.33 42 11.01-1.24 | 69% | 113d |
| B6.33 42 11.01-1.40 |  | Embedment & Test | 87.44d | 2026-06-08 A | 2026-09-19 | B6.33 42 11.01-1.32 FF | 60% | 113d |
| B6.33 42 11.01-1.48 |  | Backfilling & Warrning Tape | 83.9d | 2026-06-13 A | 2026-09-20 | B6.33 42 11.01-1.40 SS | 60% | 112.7d |
|  | Strom Manholes | **Manholes** |  | 2026-05-03 | 2026-09-19 |  |  |  |
|  | 3 | **?2000** |  | 2026-05-03 | 2026-09-19 |  |  |  |
|  | 1 | **Depth From 2.5m to 3.5m** |  | 2026-05-03 | 2026-09-19 |  |  |  |
| B6.33 05 39.01.4227 |  | Excavation & Compaction | 25d | 2026-05-03 A | 2026-06-06 A | B6.33 42 11.01-1.16 | 100% |  |
| B6.33 05 39.01.4237 |  | Blinding Conc, & RC Base | 25d | 2026-05-06 A | 2026-06-09 A | B6.33 05 39.01.4227 | 100% |  |
| B6.33 05 39.01.4247 |  | Manhole Installation | 72.1d | 2026-05-09 A | 2026-08-05 A | B6.33 05 39.01.4237 | 100% |  |
| B6.33 05 39.01.4257 |  | Test, Internal Finishing, Benching & Cover | 72.89d | 2026-06-25 A | 2026-09-19 | B6.33 05 39.01.4247 | 97% | 113d |
| B6.33 05 39.01.4267 |  | Backfilling | 71d | 2026-06-28 A | 2026-09-19 | B6.33 05 39.01.4257 SS, B6.33 05 39.01.3517 SS | 97% | 113d |
|  | Catch Basins | **Catch Basins** |  | 2026-06-10 | 2026-09-19 |  |  |  |
|  | Sing | **Single** |  | 2026-06-10 | 2026-09-19 |  |  |  |
| B6.33 05 40.01.610 |  | Excavation, Compaction & Vapour Barrier | 0.5d | 2026-06-10 A | 2026-06-10 A | B6.33 05 39.01.4227 | 100% |  |
| B6.33 05 40.01.620 |  | Blinding Conc. | 1.67d | 2026-06-13 A | 2026-06-14 A | B6.33 05 40.01.610 | 100% |  |
| B6.33 05 40.01.630 |  | Catch Basin Installation | 82d | 2026-06-15 A | 2026-09-19 | B6.33 05 40.01.620 | 91% | 113d |
| B6.33 05 40.01.640 |  | Backfilling, DI Frame & Grate Cover Fixing | 80.33d | 2026-06-16 A | 2026-09-19 | B6.33 42 11.36-1103 SS, B6.33 42 11.35-130 SS | 91% | 30d |
|  | UPVC | **UPVC** |  | 2026-06-15 | 2026-09-19 |  |  |  |
|  | UPVC300 | **?300 From 0.0 to 1.5m** |  | 2026-06-15 | 2026-09-19 |  |  |  |
| B6.33 42 11.35-118 |  | Catch Basin Opening Prep. | 82d | 2026-06-15 A | 2026-09-19 | B6.33 05 40.01.630 SS | 67% | 113d |
| B6.33 42 11.35-130 |  | Fittings & Pipe Installation | 82d | 2026-06-15 A | 2026-09-19 | B6.33 42 11.35-118 SS, B6.33 42 11.35-1.2 SS | 67% | 113d |
|  | UPVC3001 | **?400 From 0.0 to 1.5m** |  | 2026-06-15 | 2026-09-19 |  |  |  |
| B6.33 42 11.36-1103 |  | Fittings & Pipe Installation | 82d | 2026-06-15 A | 2026-09-19 | B6.33 42 11.36-191 SS | 67% | 113d |
| B6.33 42 11.36-191 |  | Catch Basin Opening Prep. | 82d | 2026-06-15 A | 2026-09-19 | B6.33 05 40.01.630 SS | 67% | 113d |
|  | Sewerage Network | **Sewerage Network** |  | 2026-05-11 | 2026-09-20 |  |  |  |
|  | GRP | **GRP Pipes** |  | 2026-05-20 | 2026-09-20 |  |  |  |
|  | 150 | **?150** |  | 2026-05-20 | 2026-07-12 |  |  |  |
|  | 1 | **Depth From 1.5m to 2.5m** |  | 2026-05-20 | 2026-07-11 |  |  |  |
| B5.33 31 00.01.0210 |  | Excavation | 2d | 2026-05-20 A | 2026-05-21 A | B1.1.31 23 23.182 | 100% |  |
| B5.33 31 00.01.0218 |  | Sand Bedding | 2d | 2026-05-23 A | 2026-05-24 A | B5.33 31 00.01.0210 | 100% |  |
| B5.33 31 00.01.0226 |  | Pipe Laying | 34.55d | 2026-05-25 A | 2026-07-08 A | B5.33 31 00.01.0218 | 100% |  |
| B5.33 31 00.01.0234 |  | Embedment & Test | 33.72d | 2026-06-01 A | 2026-07-09 A | B5.33 31 00.01.0226 | 100% |  |
| B5.33 31 00.01.0242 |  | Backfilling & Warrning Tape | 26.15d | 2026-06-10 A | 2026-07-11 A | B5.33 31 00.01.0234, B6.33 05 39.01.1717 | 100% |  |
|  | 2 | **Depth From 2.5m to 3.5m** |  | 2026-05-23 | 2026-07-12 |  |  |  |
| B5.33 31 00.01.0212 |  | Excavation | 2d | 2026-05-23 A | 2026-05-24 A | B5.33 31 00.01.0210 | 100% |  |
| B5.33 31 00.01.0220 |  | Sand Bedding | 2d | 2026-05-25 A | 2026-05-31 A | B5.33 31 00.01.0212 | 100% |  |
| B5.33 31 00.01.0228 |  | Pipe Laying | 32.92d | 2026-06-01 A | 2026-07-08 A | B5.33 31 00.01.0220 | 100% |  |
| B5.33 31 00.01.0236 |  | Embedment & Test | 13.68d | 2026-06-24 A | 2026-07-11 A | B5.33 31 00.01.0228 | 100% |  |
| B5.33 31 00.01.0244 |  | Backfilling & Warrning Tape | 10.33d | 2026-06-29 A | 2026-07-12 A | B5.33 31 00.01.0236, B5.33 31 00.01.0242 | 100% |  |
|  | 200 | **?200** |  | 2026-06-24 | 2026-09-20 |  |  |  |
|  | 2 | **Depth From 2.5m to 3.5m** |  | 2026-06-24 | 2026-09-20 |  |  |  |
| B5.33 31 00.01.0214 |  | Excavation | 6.66d | 2026-06-24 A | 2026-07-01 A | B5.33 31 00.01.0212 | 100% |  |
| B5.33 31 00.01.0222 |  | Sand Bedding | 53.2d | 2026-06-27 A | 2026-08-27 A | B5.33 31 00.01.0214 | 100% |  |
| B5.33 31 00.01.0230 |  | Pipe Laying | 47.2d | 2026-06-29 A | 2026-08-23 A | B5.33 31 00.01.0222 | 100% |  |
| B5.33 31 00.01.0238 |  | Embedment & Test | 69.15d | 2026-07-01 A | 2026-09-20 | B5.33 31 00.01.0230 | 5% | 112.19d |
| B5.33 31 00.01.0246 |  | Backfilling & Warrning Tape | 49.88d | 2026-07-04 A | 2026-08-30 A | B5.33 31 00.01.0244, B5.33 31 00.01.0238 SS | 100% |  |
|  | 1 | **Depth From 3.5m to 4.5m** |  | 2026-06-27 | 2026-09-20 |  |  |  |
| B5.33 31 00.01.0216 |  | Excavation | 51.64d | 2026-06-27 A | 2026-08-25 A | B5.33 31 00.01.0214 | 100% |  |
| B5.33 31 00.01.0224 |  | Sand Bedding | 52.64d | 2026-06-29 A | 2026-08-29 A | B5.33 31 00.01.0216 | 100% |  |
| B5.33 31 00.01.0232 |  | Pipe Laying | 47.98d | 2026-07-01 A | 2026-08-26 A | B5.33 31 00.01.0224, DMM2-Proc-Delv-7108 | 100% |  |
| B5.33 31 00.01.0240 |  | Embedment & Test | 68.82d | 2026-07-02 A | 2026-09-20 | B5.33 31 00.01.0232, B3.33 14 19.01.103 FF | 4% | 112d |
| B5.33 31 00.01.0248 |  | Backfilling & Warrning Tape | 48.91d | 2026-07-06 A | 2026-08-31 A | B5.33 31 00.01.0246, B5.33 31 00.01.0240 SS | 100% |  |
|  | Manholes | **Manholes ?1200** |  | 2026-05-11 | 2026-09-19 |  |  |  |
|  | 3 | **Depth From 1.5m to 2.5m** |  | 2026-05-11 | 2026-09-19 |  |  |  |
| B6.33 05 39.01.1727 |  | Excavation & Compaction | 84.66d | 2026-05-11 A | 2026-08-22 A | B5.33 31 00.01.0216 | 100% |  |
| B6.33 05 39.01.1737 |  | Blinding Conc, & RC Base | 71.33d | 2026-06-03 A | 2026-08-25 A | B6.33 05 39.01.1727 | 100% |  |

| ID | WBS | Task | Duration | Start | Finish | Predecessors | Complete | Total float |
| --- | --- | --- | --- | --- | --- | --- | --- | --- |
| B6.33 05 39.01.1747 |  | Manhole Installation | 68d | 2026-06-08 A | 2026-08-26 A | B6.33 05 39.01.1737, DMM2-Proc-Delv-7118 | 100% |  |
| B6.33 05 39.01.1757 |  | Test, Internal Finishing, Benching & Cover | 85.52d | 2026-06-10 A | 2026-09-19 | B6.33 05 39.01.1747 | 46% | 113.82d |
| B6.33 05 39.01.1767 |  | Backfilling | 65.84d | 2026-06-15 A | 2026-08-31 A | B6.33 05 39.01.1757 SS, DMM2-Proc-PO-017 | 100% |  |
|  | 4 | **Depth From 2.5m to 3.5m** |  | 2026-06-03 | 2026-07-11 |  |  |  |
| B6.33 05 39.01.1777 |  | Excavation & Compaction | 25d | 2026-06-03 A | 2026-07-02 A | B6.33 05 39.01.1727 | 100% |  |
| B6.33 05 39.01.1787 |  | Blinding Conc, & RC Base | 25.33d | 2026-06-06 A | 2026-07-05 A | B6.33 05 39.01.1777 | 100% |  |
| B6.33 05 39.01.1797 |  | Manhole Installation | 22d | 2026-06-11 A | 2026-07-07 A | B6.33 05 39.01.1787 | 100% |  |
| B6.33 05 39.01.1807 |  | Test, Internal Finishing, Benching & Cover | 22.66d | 2026-06-13 A | 2026-07-09 A | B6.33 05 39.01.1797 | 100% |  |
| B6.33 05 39.01.1817 |  | Backfilling | 21.99d | 2026-06-15 A | 2026-07-11 A | B6.33 05 39.01.1807 | 100% |  |
|  | 1 | **Depth From 3.5m to 4.5m** |  | 2026-06-21 | 2026-09-19 |  |  |  |
| B6.33 05 39.01.1827 |  | Excavation & Compaction | 54d | 2026-06-21 A | 2026-08-23 A | B6.33 05 39.01.1777 | 100% |  |
| B6.33 05 39.01.1837 |  | Blinding Conc, & RC Base | 53.33d | 2026-06-24 A | 2026-08-25 A | B6.33 05 39.01.1827 | 100% |  |
| B6.33 05 39.01.1847 |  | Manhole Installation | 53d | 2026-06-27 A | 2026-08-27 A | B6.33 05 39.01.1837 | 100% |  |
| B6.33 05 39.01.1857 |  | Test, Internal Finishing, Benching & Cover | 70.52d | 2026-06-28 A | 2026-09-19 | B6.33 05 39.01.1847 | 46% | 113.82d |
| B6.33 05 39.01.1867 |  | Backfilling | 52.84d | 2026-06-30 A | 2026-08-31 A | B6.33 05 39.01.1817, B6.33 05 39.01.1857 SS | 100% |  |
|  | Potable Water | **Potable Water Network** |  | 2026-05-03 | 2026-10-07 |  |  |  |
|  | HDPE | **HDPE Pipes** |  | 2026-05-20 | 2026-09-19 |  |  |  |
|  | ?110mm | **?110mm** |  | 2026-05-20 | 2026-09-19 |  |  |  |
|  | Depth: 0.0m - 1.5m | **Depth: 0.0m - 1.5m** |  | 2026-05-20 | 2026-09-19 |  |  |  |
| B3.33 14 13.01.0191 |  | Excavation | 2d | 2026-05-20 A | 2026-05-23 A | B3.33 14 13-1193 SS | 100% |  |
| B3.33 14 13.01.0195 |  | Sand Bedding | 2d | 2026-05-23 A | 2026-05-25 A | B3.33 14 13.01.0191 | 100% |  |
| B3.33 14 13.01.0199 |  | Pipe Laying | 95.46d | 2026-05-25 A | 2026-09-19 | B3.33 14 13.01.0195 | 80% | 113d |
| B3.33 14 13.01.01103 |  | Embedment & Test | 89.46d | 2026-06-06 A | 2026-09-19 | B3.33 14 19.01.118, B3.33 14 13.01.0199 FF | 80% | 113d |
| B3.33 14 13.01.01107 |  | Backfilling & Warrning Tape | 84.46d | 2026-06-10 A | 2026-09-17 | B3.33 14 13.01.01103 SS, B3.33 14 13-11107 SS, B3.33 14 13-11109 SS | 80% | 71d |
|  | Depth: 1.51m - 2.5m | **Depth: 1.51m - 2.5m** |  | 2026-05-23 | 2026-09-19 |  |  |  |
| B3.33 14 13.01.0193 |  | Excavation | 2d | 2026-05-23 A | 2026-05-25 A | B3.33 14 13.01.0191 | 100% |  |
| B3.33 14 13.01.0197 |  | Sand Bedding | 2d | 2026-05-25 A | 2026-06-01 A | B3.33 14 13.01.0193 | 100% |  |
| B3.33 14 13.01.01101 |  | Pipe Laying | 93.46d | 2026-06-01 A | 2026-09-19 | B3.33 14 13.01.0197 | 80% | 113d |
| B3.33 14 13.01.01105 |  | Embedment & Test | 89.46d | 2026-06-06 A | 2026-09-19 | B3.33 14 19.01.118, B3.33 14 13.01.01101 FF | 80% | 113d |
| B3.33 14 13.01.01109 |  | Backfilling & Warrning Tape | 84.46d | 2026-06-10 A | 2026-09-17 | B3.33 14 13.01.01105 SS, B3.33 14 13.01.01107 FF | 80% | 71d |
|  | Crossing | **Plots and Buildings Crossing** |  | 2026-09-16 | 2026-10-07 |  |  |  |
| B3.33 14 13.02.31 |  | Earthwork | 7d | 2026-09-16 | 2026-09-24 | B3.33 14 13.01.0193 |  | 92d |
| B3.33 14 13.02.32 |  | Sand Bedding | 3d | 2026-09-26 | 2026-09-28 | B3.33 14 13.02.31 |  | 92d |
| B3.33 14 13.02.33 |  | Tee, Pipe (Crossing) Installation & Backfilling | 7d | 2026-09-30 | 2026-10-07 | B3.33 14 13.02.32, B3.33 14 13.02.30 |  | 91d |
|  | Valves & Chambers | **Valves & Chambers** |  | 2026-05-03 | 2026-09-29 |  |  |  |
|  | GV | **Gate Valves** |  | 2026-05-03 | 2026-09-29 |  |  |  |
|  | 1 | **Gate valves dia (110) mm** |  | 2026-05-03 | 2026-09-29 |  |  |  |
| B3.33 14 19.01.118 |  | Burried Isolation Valve Installation | 3d | 2026-05-03 A | 2026-05-06 A | B3.33 14 13.01.01101 SS | 100% |  |
| B3.33 14 19.01.119 |  | Spindle & Surface Box | 3d | 2026-09-27 | 2026-09-29 | B3.33 14 19.01.118, B3.33 05 63.02.015 |  | 94d |
|  | Washout Valves | **Washout Valves** |  | 2026-07-06 | 2026-09-26 |  |  |  |
|  | 4 | **Washout valves on 110-400 mm. (In Chamber)** |  | 2026-07-06 | 2026-09-26 |  |  |  |
| B3.33 05 63.01.27 |  | Land Adjustment & Compaction | 64d | 2026-07-06 A | 2026-09-24 | B3.33 14 13.02.31 FF | 62% | 109d |
| B3.33 05 63.01.25 |  | Foundations | 12.12d | 2026-09-03 A | 2026-09-19 | B3.33 05 63.01.27 SS | 62% | 113.88d |
| B3.33 05 63.01.28 |  | Chambers Walls Conc Cast In Situ | 9.12d | 2026-09-07 A | 2026-09-19 | B3.33 05 63.01.25 SS | 62% | 113.88d |
| B3.33 05 63.01.26 |  | Chamber Curing, Finishing & Steel Cover | 8.5d | 2026-09-08 A | 2026-09-19 | B3.33 05 63.01.28 SS | 62% | 70.5d |
| B3.33 05 63.01.29 |  | Valve & Fitting Installation | 5d | 2026-09-19 | 2026-09-26 | B3.33 05 63.01.26 |  | 70.5d |
|  | Fire Fighting | **Fire Fighting Network** |  | 2026-06-13 | 2026-10-31 |  |  |  |
|  | HDPE | **HDPE Pipes** |  | 2026-06-13 | 2026-08-31 |  |  |  |
|  | ?250mm | **?250mm** |  | 2026-06-13 | 2026-08-31 |  |  |  |
|  | Depth: 0.0m - 1.5m | **Depth: 0.0m - 1.5m** |  | 2026-06-13 | 2026-08-31 |  |  |  |
| B3.1. 33 14 13..1 |  | Excavation | 61.16d | 2026-06-13 A | 2026-08-23 A | B3.33 14 13.01.0191, B3.33 14 13.01.0193 | 100% |  |
| B3.1. 33 14 13..5 |  | Sand Bedding | 62.16d | 2026-06-14 A | 2026-08-25 A | B3.1. 33 14 13..1 | 100% |  |
| B3.1. 33 14 13..9 |  | Pipe Laying | 61.16d | 2026-06-17 A | 2026-08-27 A | B3.1. 33 14 13..5 | 100% |  |
| B3.1. 33 14 13..13 |  | Embedment & Test | 62.32d | 2026-06-20 A | 2026-08-31 A | B3.1. 33 14 13..9, B3.33 14 19.01.134 SS | 100% |  |
| B3.1. 33 14 13..17 |  | Backfilling & Warrning Tape | 58.4d | 2026-06-23 A | 2026-08-30 A | B3.1. 33 14 13..13, B3.1. 33 14 13.015 SS | 100% |  |
|  | Depth: 1.51m - 2.5m | **Depth: 1.51m - 2.5m** |  | 2026-06-14 | 2026-08-31 |  |  |  |
| B3.1. 33 14 13..3 |  | Excavation | 60.16d | 2026-06-14 A | 2026-08-23 A | B3.1. 33 14 13..1 | 100% |  |
| B3.1. 33 14 13..7 |  | Sand Bedding | 60.16d | 2026-06-16 A | 2026-08-25 A | B3.1. 33 14 13..3 | 100% |  |
| B3.1. 33 14 13..11 |  | Pipe Laying | 56.16d | 2026-06-23 A | 2026-08-27 A | B3.1. 33 14 13..7 | 100% |  |
| B3.1. 33 14 13..15 |  | Embedment & Test | 56.32d | 2026-06-26 A | 2026-08-31 A | B3.1. 33 14 13..11, B3.33 14 19.01.134 SS | 100% |  |
| B3.1. 33 14 13..19 |  | Backfilling & Warrning Tape | 52.4d | 2026-06-30 A | 2026-08-30 A | B3.1. 33 14 13..15, B3.1. 33 14 13.025 SS | 100% |  |
|  | Valves & Chambers | **Valves & Chambers** |  | 2026-07-02 | 2026-10-31 |  |  |  |
|  | GV | **Gate Valves** |  | 2026-07-17 | 2026-10-31 |  |  |  |
|  | 1 | **Gate valves dia (250) mm** |  | 2026-07-17 | 2026-10-31 |  |  |  |
| B3.33 14 19.01.134 |  | Burried Isolation Valve Installation | 54d | 2026-07-17 A | 2026-10-26 | B3.1. 33 14 13..9, B3.1. 33 14 13..11, B3.33 05 63.01.44 FF | 62% | 63d |
| B3.33 14 19.01.135 |  | Spindle & Surface Box | 4d | 2026-10-27 | 2026-10-31 | B3.33 14 19.01.134 |  | 63d |
|  | 2 | **Air Valves** |  | 2026-07-02 | 2026-09-28 |  |  |  |
|  | 4 | **Air valves on less than 315 mm. (In Chamber)** |  | 2026-07-02 | 2026-09-28 |  |  |  |
| B3.33 05 63.02.82 |  | Land Adjustment & Compaction | 65.36d | 2026-07-02 A | 2026-09-19 | B3.1. 33 14 13..15, B3.1. 33 14 13..13 | 50% | 113d |
| B3.33 05 63.02.80 |  | Foundations | 13.5d | 2026-09-02 A | 2026-09-20 | B3.33 05 63.02.82 SS | 50% | 112.5d |

| ID | WBS | Task | Duration | Start | Finish | Predecessors | Complete | Total float |
| --- | --- | --- | --- | --- | --- | --- | --- | --- |
| B3.33 05 63.02.81 |  | Chamber Curing, Finishing & Steel Cover | 13d | 2026-09-03 A | 2026-09-20 | B3.33 05 63.02.83 SS | 50% | 68d |
| B3.33 05 63.02.83 |  | Chambers Walls Conc Cast In Situ | 12.5d | 2026-09-03 A | 2026-09-20 | B3.33 05 63.02.80 SS | 50% | 112.5d |
| B3.33 05 63.02.84 |  | Valve & Fitting Installation | 6d | 2026-09-21 | 2026-09-28 | B3.33 05 63.02.81 |  | 68d |
|  | Washout Valves | **Washout Valves** |  | 2026-07-04 | 2026-09-28 |  |  |  |
|  | 4 | **Washout valves on 110-400 mm. (In Chamber)** |  | 2026-07-04 | 2026-09-28 |  |  |  |
| B3.33 05 63.01.62 |  | Land Adjustment & Compaction | 64.36d | 2026-07-04 A | 2026-09-19 | B3.1. 33 14 13..15, B3.1. 33 14 13..13 | 50% | 113d |
| B3.33 05 63.01.60 |  | Foundations | 12.5d | 2026-09-03 A | 2026-09-20 | B3.33 05 63.01.62 SS | 50% | 112.5d |
| B3.33 05 63.01.63 |  | Chambers Walls Conc Cast In Situ | 11.5d | 2026-09-05 A | 2026-09-20 | B3.33 05 63.01.60 SS | 50% | 112.5d |
| B3.33 05 63.01.61 |  | Chamber Curing, Finishing & Steel Cover | 11d | 2026-09-06 A | 2026-09-20 | B3.33 05 63.01.63 SS | 50% | 68d |
| B3.33 05 63.01.64 |  | Valve & Fitting Installation | 6d | 2026-09-21 | 2026-09-28 | B3.33 05 63.01.61 |  | 68d |
|  | 3 | **Fire Hydrant** |  | 2026-06-29 | 2026-10-31 |  |  |  |
| B3.33 14 19.01.fh47 |  | Riser Pipe & Flanged Fittings Installation | 69.98d | 2026-06-29 A | 2026-09-20 | B3.1. 33 14 13..11, B3.1. 33 14 13..9 | 1% | 112.02d |
| B3.33 14 19.01.fh46 |  | Firehydrant Fixing/Installation | 68.97d | 2026-07-01 A | 2026-09-21 | B3.33 14 19.01.fh47 SS | 1% | 111.03d |
| B3.33 14 19.01.fh48 |  | Backfilling & Compaction | 54.95d | 2026-07-20 A | 2026-10-31 | B3.33 14 19.01.fh5, B3.33 14 19.01.fh46 SS, B3.33 14 19.01.135 FF, B3.33 14 19.01.129 FF | 1% | 63d |
|  | Dry Networks | **Dry Networks** |  | 2026-09-20 | 2026-11-18 |  |  |  |
|  | MV Network | **Medium Voltage Network** |  | 2026-09-20 | 2026-10-10 |  |  |  |
|  | Duct Banks | **Duct Banks** |  | 2026-09-20 | 2026-10-10 |  |  |  |
|  | 4 Way | **2 Way** |  | 2026-09-20 | 2026-10-10 |  |  |  |
| B2.31 23 00.644 |  | Excavation | 4d | 2026-09-20 | 2026-09-24 | B6.33 05 40.01.640, B6.33 05 39.01.1867 |  | 30d |
| B2.33 71 00.296 |  | Shuttering, Steel Fixing Incl. UPVC Pipe & Conc. Cast | 7d | 2026-09-26 | 2026-10-03 | B2.31 23 00.644 |  | 30d |
| B2.33 71 00.297 |  | Backfilling & Warrning Tape | 6d | 2026-10-04 | 2026-10-10 | B2.33 71 00.296 |  | 30d |
|  | Street Lighting | **Street Lighting** |  | 2026-10-22 | 2026-11-04 |  |  |  |
|  | SL Poles | **SL Poles** |  | 2026-10-22 | 2026-11-02 |  |  |  |
|  | Pole (10 M Sngl Arm) | **Pole (10 M Single Arm)** |  | 2026-10-22 | 2026-11-02 |  |  |  |
| B2.33 71 16.99 |  | Excavation | 2d | 2026-10-22 | 2026-10-24 | B2.33 71 00.297, B2.33 71 19 44 |  | 20d |
| B2.33 71 16.100 |  | PC & RC Foundation | 2d | 2026-10-25 | 2026-10-26 | B2.33 71 16.99 |  | 20d |
| B2.33 71 16.101 |  | Lighting Poles Installation Incl power box, Cables | 2d | 2026-10-27 | 2026-10-28 | B2.33 71 16.100 |  | 20d |
| B2.26.56.19.18 |  | Lighting Luminares Inst | 2d | 2026-10-29 | 2026-10-31 | B2.33 71 16.101 |  | 20d |
| B2.33 71 16.102 |  | Backfilling, Grouting & Chamfering | 2d | 2026-11-01 | 2026-11-02 | B2.26.56.19.18 |  | 20d |
|  | Earthing | **Earthing** |  | 2026-10-29 | 2026-11-04 |  |  |  |
| B2.33 71 19 50 |  | Land Adjustment | 2d | 2026-10-29 | 2026-10-31 | B2.33 71 16.101, B2.33 71 19 47 |  | 28d |
| B2.33 71 19 51 |  | Earth Rods & Conduits | 2d | 2026-11-01 | 2026-11-02 | B2.33 71 19 50 |  | 30d |
| B2.33 71 19 52 |  | Backfilling | 2d | 2026-11-03 | 2026-11-04 | B2.33 71 19 51 |  | 30d |
|  | Telecommunication | **Telecommunication Network** |  | 2026-11-01 | 2026-11-18 |  |  |  |
|  | Ducts | **Ducts** |  | 2026-11-01 | 2026-11-14 |  |  |  |
|  | (6*50mm) | **Size (6*50mm) HDPE ducts** |  | 2026-11-01 | 2026-11-04 |  |  |  |
| B2.1.33 81 26.183 |  | Excavation | 2d | 2026-11-01 | 2026-11-02 | B2.33 71 16.102 SS, B2.33 71 00.297, B2.31 23 00.634 |  | 20d |
| B2.1.33 81 26.184 |  | HDPE Pipe, Shuttering, Steel Fixing & Conc. Cast | 2d | 2026-11-03 | 2026-11-04 | B2.1.33 81 26.183 |  | 30d |
| B2.1.33 81 26.185 |  | Backfilling & Warrning Tape | 2d | 2026-11-03 | 2026-11-04 | B2.1.33 81 26.184 SS, B2.33 71 00.269, B2.33 71 00.271 |  | 30d |
|  | (6*50mm+2*32mm) | **Size (6*50mm+2*32mm) HDPE ducts** |  | 2026-11-03 | 2026-11-09 |  |  |  |
| B2.1.33 81 26.186 |  | Excavation | 2d | 2026-11-03 | 2026-11-04 | B2.1.33 81 26.183, B2.31 23 00.632 |  | 20d |
| B2.1.33 81 26.187 |  | HDPE Pipe, Shuttering, Steel Fixing & Conc. Cast | 2d | 2026-11-05 | 2026-11-07 | B2.1.33 81 26.186 |  | 26d |
| B2.1.33 81 26.188 |  | Backfilling & Warrning Tape | 2d | 2026-11-08 | 2026-11-09 | B2.1.33 81 26.187 |  | 26d |
|  | (6*50mm+4*32mm) | **Size (6*50mm+4*32mm) HDPE ducts** |  | 2026-11-05 | 2026-11-11 |  |  |  |
| B2.1.33 81 26.189 |  | Excavation | 2d | 2026-11-05 | 2026-11-07 | B2.1.33 81 26.186, B2.1.33 81 26.168 |  | 20d |
| B2.1.33 81 26.190 |  | HDPE Pipe, Shuttering, Steel Fixing & Conc. Cast | 2d | 2026-11-08 | 2026-11-09 | B2.1.33 81 26.189 |  | 26d |
| B2.1.33 81 26.191 |  | Backfilling & Warrning Tape | 2d | 2026-11-10 | 2026-11-11 | B2.1.33 81 26.190, B2.1.33 81 26.188, B2.33 71 00.259 |  | 26d |
|  | (2*32mm) | **Size (2*32mm) HDPE ducts** |  | 2026-11-08 | 2026-11-14 |  |  |  |
| B2.1.33 81 26.192 |  | Excavation | 2d | 2026-11-08 | 2026-11-09 | B2.1.33 81 26.189, B2.1.33 81 26.171 |  | 20d |
| B2.1.33 81 26.193 |  | HDPE Pipe, Shuttering, Steel Fixing & Conc. Cast | 2d | 2026-11-10 | 2026-11-11 | B2.1.33 81 26.192 |  | 24d |
| B2.1.33 81 26.194 |  | Backfilling & Warrning Tape | 2d | 2026-11-12 | 2026-11-14 | B2.1.33 81 26.193, B2.1.33 81 26.185 |  | 24d |
|  | Manholes | **Manholes** |  | 2026-11-10 | 2026-11-18 |  |  |  |
|  | Manhole Type 1 | **Manhole Type 1** |  | 2026-11-10 | 2026-11-16 |  |  |  |
| B2.31 23 00.636 |  | Excavation | 2d | 2026-11-10 | 2026-11-11 | B2.1.33 81 26.192, B2.31 23 00.630 |  | 20d |
| B2.33 71 00.280 |  | Manhole Installation | 2d | 2026-11-12 | 2026-11-14 | B2.31 23 00.636 |  | 22d |
| B2.33 71 00.281 |  | Backfilling & Warrning Tape | 2d | 2026-11-15 | 2026-11-16 | B2.33 71 00.280, B2.33 71 00.251 |  | 22d |
|  | Manhole Type 2 | **Manhole Type 2** |  | 2026-11-12 | 2026-11-18 |  |  |  |
| B2.31 23 00.637 |  | Excavation | 2d | 2026-11-12 | 2026-11-14 | B2.31 23 00.636, B2.31 23 00.631 |  | 20d |
| B2.33 71 00.282 |  | Manhole Installation | 2d | 2026-11-15 | 2026-11-16 | B2.31 23 00.637 |  | 20d |
| B2.33 71 00.283 |  | Backfilling & Warrning Tape | 2d | 2026-11-17 | 2026-11-18 | B2.33 71 00.282 |  | 20d |
|  | Earth & Road Works | **Earth & Road Works** |  | 2025-12-01 | 2026-10-19 |  |  |  |
|  | Earth Works | **Earth Works** |  | 2025-12-01 | 2026-03-14 |  |  |  |
| B1.2.31 23 16.01.17 |  | Roadway Excavation | 2d | 2025-12-01 A | 2025-12-03 A | DMM2-Eng-MS-78 | 100% |  |
| B1.2.31 23 23.01.17 |  | Embankment Backfiling | 79.8d | 2025-12-03 A | 2026-03-14 A | B1.2.31 23 16.01.17 | 100% |  |
|  | Earth Layers | **Earth Layers** |  | 2026-01-24 | 2026-09-17 |  |  |  |
| B1.2.32 11 13.01.17 |  | Subgrade | 187.46d | 2026-01-24 A | 2026-09-17 | B1.2.31 23 23.01.17 | 65% | 114.95d |
| B1.2.32 11 23.01.17 |  | Aggregate Base Course | 99.27d | 2026-05-20 A | 2026-09-17 | B1.2.32 11 13.01.17 SS | 35% | 17.7d |
|  | Interlock | **Interlock** |  | 2026-09-17 | 2026-09-21 |  |  |  |
| B1.2.32 14 13.13.17 |  | 60mm thick - Interlocking Block Pavers | 3d | 2026-09-17 | 2026-09-21 | B1.2.32 11 23.01.17 |  | 17.7d |
|  | Curbstone | **Curbstone** |  | 2026-09-21 | 2026-10-12 |  |  |  |

| ID | WBS | Task | Duration | Start | Finish | Predecessors | Total float |
| --- | --- | --- | --- | --- | --- | --- | --- |
|  | Pre Install | **Pre-Installation** |  | 2026-09-21 | 2026-09-30 |  |  |
| B2.31 23 00.481 |  | Excavation | 2d | 2026-09-21 | 2026-09-24 | B1.2.32 14 13.13.17 | 17.7d |
| B1.2.32 14 13.13.217 |  | PCC | 2d | 2026-09-24 | 2026-09-27 | B2.31 23 00.481 | 17.7d |
| 32 16 13.0017 |  | Haunching | 3d | 2026-09-27 | 2026-09-30 | B1.2.32 14 13.13.217 | 17.7d |
|  | Installation | **Installation** |  | 2026-09-30 | 2026-10-10 |  |  |
| B1.2.32 16.13.01.17 |  | Curb Stone, Type K1 | 3d | 2026-09-30 | 2026-10-04 | 32 16 13.0017 | 17.7d |
| B1.2.32 16.13.02.16 |  | Dropped Curb, Type K3 | 1d | 2026-10-04 | 2026-10-05 | B1.2.32 16.13.01.17, 32 16 13.0017 | 17.7d |
| B1.2.32 16.13.03.17 |  | Edge Curb, Type K4 | 2d | 2026-10-05 | 2026-10-07 | B1.2.32 16.13.02.16, 32 16 13.0017 | 17.7d |
| B1.2.32 16.13.0417 |  | Heel Curb, Type K5 | 2d | 2026-10-05 | 2026-10-07 | B1.2.32 16.13.03.17 SS, 32 16 13.0017 | 17.7d |
| B1.2.32 16.13.05.16 |  | Transition Curb | 2d | 2026-10-07 | 2026-10-10 | B1.2.32 16.13.0417, 32 16 13.0017 | 17.7d |
|  | Finishing | **Finishing** |  | 2026-10-10 | 2026-10-12 |  |  |
| 32 16 13.017 |  | Finishing, Fareface | 2d | 2026-10-10 | 2026-10-12 | B1.2.32 16.13.01.17, B1.2.32 16.13.02.16, B1.2.32 16.13.03.17, B1.2.32 16.13.0417, B1.2.32 16.13.05.16 | 17.7d |
|  | Asphalt Layers | **Asphalt Layers** |  | 2026-09-17 | 2026-10-14 |  |  |
| B1.2.32 11 26.01.17 |  | Bituminous Base Course including Prime Coat (MC1) and tack coat (RC2) | 2d | 2026-09-17 | 2026-09-20 | B1.2.32 11 23.01.17 | 35.7d |
| B1.2.32 12 16.01.17 |  | Bituminous concrete Wearing Course, including tack coat (RC2) | 2d | 2026-10-12 | 2026-10-14 | B1.2.32 11 26.01.17, 32 16 13.017 | 17.7d |
|  | Pavement Marking | **Pavement Marking** |  | 2026-10-17 | 2026-10-19 |  |  |
| B1.2.32 17 23.01.17 |  | Retroreflective Thermoplastic White Traffic lines | 2d | 2026-10-17 | 2026-10-19 | B1.2.32 12 16.01.17, B1.2.32 12 19.13.017 | 88.7d |
| B1.2.32 17 23.02.17 |  | Retroreflective Thermoplastic Yellow, Traffic lines | 2d | 2026-10-17 | 2026-10-19 | B1.2.32 12 16.01.17, B1.2.32 12 19.13.017 | 88.7d |
|  | Road Misc. | **Miscellaneous** |  | 2026-10-14 | 2026-10-17 |  |  |
| B1.2.32 12 19.13.017 |  | Speed Tables | 2d | 2026-10-14 | 2026-10-17 | B1.2.32 12 16.01.17 | 88.7d |
| B1.2.32 12 19.13.16 |  | Wheels stoppers (precast concrete) | 2d | 2026-10-14 | 2026-10-17 | B1.2.32 12 16.01.17 | 17.7d |
|  | Landscape | **Landscape** |  | 2026-12-12 | 2026-12-17 |  |  |
|  | Trees | **Trees** |  | 2026-12-12 | 2026-12-17 |  |  |
| B7.32 93 43.03 |  | Tamarindus indica | 5d | 2026-12-12 | 2026-12-17 | B7.32 93 43.02-191 | 3.76d |
|  | Prov. Sum | **Provisional Sum** |  | 2026-11-23 | 2026-12-21 |  |  |
| Prov.Sum 01 |  | Additional Works | 21d | 2026-11-23 | 2026-12-21 | DMM-Mil-48 | 0d |
|  | T&C | **Testing & Commissioning** |  | 2026-11-16 | 2026-12-23 |  |  |
|  | Zone 01 | **Zone 01** |  | 2026-11-16 | 2026-12-07 |  |  |
|  | Wet | **Wet Networks & Stations** |  | 2026-11-16 | 2026-12-01 |  |  |
|  | Sewer | **Sewerage Network** |  | 2026-11-16 | 2026-11-22 |  |  |
| T&C-Sew-01 |  | Testing & Commissioning for Sewerage Network | 6d | 2026-11-16 | 2026-11-22 | B6.33 05 39.01.1867, B6.33 05 39.01.817 SS, DMM-Mil-48 FF, DMM-Mil-13 FF | 14d |
|  | Storm | **Storm Network** |  | 2026-11-24 | 2026-11-30 |  |  |
| T&C-Strm-01 |  | Testing & Commissioning for Storm Network | 6d | 2026-11-24 | 2026-11-30 | B6.33 05 40.01.1000 FF, B6.33 05 40.01.840 FF, B6.33 05 63.044 FF, DMM-Mil-48 FF, T&C-Sew-01 SS, DMM-Mil-6 FF | 13d |
|  | Potable | **Potable Network** |  | 2026-11-24 | 2026-12-01 |  |  |
| T&C-Pot-01 |  | Testing & Commissioning for Potable Network | 7d | 2026-11-24 | 2026-12-01 | T&C-Strm-01 FF, B3.33 05 63.01.29 FF, B3.33 14 13.01.01109 SS, B3.33 14 19.01.fm18 FF, DMM-Mil-48 FF, T&C-Strm-01 SS | 13d |
|  | Fire Fighting | **Fire Fighting Network** |  | 2026-11-25 | 2026-12-01 |  |  |
| T&C-FF-01 |  | Testing & Commissioning for Fire Fighting Network | 6d | 2026-11-25 | 2026-12-01 | T&C-Pot-01 FF, B3.33 05 63.01.64 FF, B3.33 05 63.02.84 FF, B3.33 14 19.01.fm51 FF, DMM-Mil-48 FF, T&C-Pot-01 SS | 13d |
|  | TSE | **TSE Network** |  | 2026-11-25 | 2026-12-01 |  |  |
| T&C-TSE-01 |  | Testing & Commissioning for TSE Network | 6d | 2026-11-25 | 2026-12-01 | T&C-FF-01 FF, B3.33 05 63.01.74 FF, B3.33 05 63.02.99 FF, DMM-Mil-48 FF, T&C-FF-01 SS | 13d |
|  | Dry | **Dry Networks** |  | 2026-11-23 | 2026-12-07 |  |  |
|  | MV | **Medium Voltage Network** |  | 2026-11-23 | 2026-11-26 |  |  |
| T&C-MV-01 |  | Testing & Commissioning for Medium Voltage Network | 4d | 2026-11-23 | 2026-11-26 | B2.33 71 00.021, B2.33 71 00.213, B2.33 71 49.23.05, B2.33 71 00.297, B2.33 71 49.23.064, DMM-Mil-48, B1.2.31 23 16.01.17, B2.33 71 16.031 | 3d |
|  | LV | **Low Voltage Network** |  | 2026-11-28 | 2026-11-30 |  |  |
| T&C-LV-01 |  | Testing & Commissioning for Low Voltage Network | 3d | 2026-11-28 | 2026-11-30 | B2.33 71 26 26, B2.33 71 26 23, B2.33 71 26 32, B2.33 71 26 29, B2.33 71 26 013, B2.33 71 26 023, B2.33 71 00 01 19, B2.33 71 00 01 20, B2.33 71 00 01 10, B2.33 71 00 01 16, DMM-Mil-48, T&C-MV-01 | 5d |
|  | Telecom | **Telecommunication Network** |  | 2026-12-01 | 2026-12-07 |  |  |
| T&C-Telecom-01 |  | Testing & Commissioning for Telecommunication Network | 6d | 2026-12-01 | 2026-12-07 | B2.33 71 00.267, B2.33 71 00.235, B2.1.33 81 26.191, B2.33 71 00.281, B2.1.33 81 26.194, B2.33 71 00.283, DMM-Mil-48, T&C-LV-01, B1.2.31 23 16.01.5 | 10d |
|  | SL | **Street Lighting** |  | 2026-11-23 | 2026-11-29 |  |  |
| T&C-SL-01 |  | Testing & Commissioning for Street Lighting Network | 6d | 2026-11-23 | 2026-11-29 | B2.33 71 19 212, B2.33 71 26 045, DMM-Mil-48 | 17d |
|  | Zone 02 | **Zone 02** |  | 2026-11-23 | 2026-12-10 |  |  |
|  | Wet | **Wet Networks & Stations** |  | 2026-11-23 | 2026-12-08 |  |  |
|  | Sewer | **Sewerage Network** |  | 2026-11-23 | 2026-11-29 |  |  |
| T&C-Sew-1 |  | Testing & Commissioning for Sewerage Network | 6d | 2026-11-23 | 2026-11-29 | T&C-Sew-01, DMM-Mil-48 | 14d |
|  | Storm | **Storm Network** |  | 2026-12-01 | 2026-12-08 |  |  |
| T&C-Strm-1 |  | Testing & Commissioning for Storm Network | 7d | 2026-12-01 | 2026-12-08 | T&C-Strm-01 | 20d |
|  | Potable | **Potable Network** |  | 2026-12-02 | 2026-12-08 |  |  |
| T&C-Pot-1 |  | Testing & Commissioning for Potable Network | 6d | 2026-12-02 | 2026-12-08 | T&C-Pot-01 | 22d |
|  | Fire Fighting | **Fire Fighting Network** |  | 2026-11-25 | 2026-12-01 |  |  |
| T&C-FF-1 |  | Testing & Commissioning for Fire Fighting Network | 6d | 2026-11-25 | 2026-12-01 | T&C-FF-01 SS | 25d |
|  | TSE | **TSE Network** |  | 2026-12-02 | 2026-12-08 |  |  |
| T&C-TSE-1 |  | Testing & Commissioning for TSE Network | 6d | 2026-12-02 | 2026-12-08 | T&C-TSE-01 | 13d |
|  | Pot Pump St. | **Potable Water Pump Station** |  | 2026-11-28 | 2026-12-01 |  |  |
| T&C-PumpS-13 |  | Testing & Commissioning for Process Control Wiring | 4d | 2026-11-28 | 2026-12-01 | B3.2.32 11 23.01.235, B3.2.32 11 23.01.249, B8.31 23 16.0193 FF | 3d |
| T&C-PumpS-23 |  | Testing & Commissioning for Instrumentation for Process Systems | 4d | 2026-11-28 | 2026-12-01 | B3.2.32 11 23.01.231, B3.2.32 11 23.01.249 | 3d |
| T&C-PumpS-3 |  | Testing & Commissioning for PLC System | 4d | 2026-11-28 | 2026-12-01 | B3.2.32 11 23.01.219, B3.2.32 11 23.01.137, B3.2.32 11 23.01.249, DMM-Mil-17 | 3d |
|  | Dry | **Dry Networks** |  | 2026-11-23 | 2026-12-10 |  |  |
|  | MV | **Medium Voltage Network** |  | 2026-11-28 | 2026-12-01 |  |  |
| T&C-MV-1 |  | Testing & Commissioning for Medium Voltage Network | 4d | 2026-11-28 | 2026-12-01 | T&C-MV-01 | 3d |
|  | LV | **Low Voltage Network** |  | 2026-12-01 | 2026-12-03 |  |  |
| T&C-LV-1 |  | Testing & Commissioning for Low Voltage Network | 3d | 2026-12-01 | 2026-12-03 | T&C-LV-01 | 5d |
|  | Telecom | **Telecommunication Network** |  | 2026-12-05 | 2026-12-10 |  |  |

| ID | WBS | Task | Duration | Start | Finish | Predecessors | Total float |
| --- | --- | --- | --- | --- | --- | --- | --- |
| T&C-Telecom-1 |  | Testing & Commissioning for Telecommunication Network | 6d | 2026-12-05 | 2026-12-10 | T&C-Telecom-01 FF, DMM-Mil-48, T&C-LV-1 | 7d |
|  | SL | **Street Lighting** |  | 2026-11-23 | 2026-11-29 |  |  |
| T&C-SL-1 |  | Testing & Commissioning for Street Lighting Network | 6d | 2026-11-23 | 2026-11-29 | T&C-SL-01 FF | 17d |
|  | Zone 03 | **Zone 03** |  | 2026-11-26 | 2026-12-16 |  |  |
|  | Wet | **Wet Networks & Stations** |  | 2026-11-30 | 2026-12-16 |  |  |
|  | Sewer | **Sewerage Network** |  | 2026-11-30 | 2026-12-06 |  |  |
| T&C-Sew-11 |  | Testing & Commissioning for Sewerage Network | 6d | 2026-11-30 | 2026-12-06 | T&C-Sew-1 | 14d |
|  | Storm | **Storm Network** |  | 2026-12-02 | 2026-12-08 |  |  |
| T&C-Strm-11 |  | Testing & Commissioning for Storm Network | 6d | 2026-12-02 | 2026-12-08 | T&C-Strm-1 FF | 20d |
|  | Potable | **Potable Network** |  | 2026-12-02 | 2026-12-08 |  |  |
| T&C-Pot-11 |  | Testing & Commissioning for Potable Network | 6d | 2026-12-02 | 2026-12-08 | T&C-Pot-1 FF | 22d |
|  | Fire Fighting | **Fire Fighting Network** |  | 2026-12-02 | 2026-12-05 |  |  |
| T&C-FF-11 |  | Testing & Commissioning for Fire Fighting Network | 3d | 2026-12-02 | 2026-12-05 | T&C-FF-1 | 25d |
|  | TSE | **TSE Network** |  | 2026-12-09 | 2026-12-16 |  |  |
| T&C-TSE-11 |  | Testing & Commissioning for TSE Network | 7d | 2026-12-09 | 2026-12-16 | T&C-TSE-1 | 13d |
|  | Sewer Lift St. | **Sewer Lift Station** |  | 2026-12-02 | 2026-12-08 |  |  |
| T&C-LiftS-33 |  | Testing & Commissioning for PLC System | 6d | 2026-12-02 | 2026-12-08 | B5.1.31 23 16.01.149, T&C-PumpS-3, DMM-Mil-48 | 3d |
| T&C-LiftS-43 |  | Testing & Commissioning for Process Control Wiring | 6d | 2026-12-02 | 2026-12-08 | B5.1.31 23 16.01.147, T&C-PumpS-13, DMM-Mil-48 | 3d |
| T&C-LiftS-53 |  | Testing & Commissioning for Instrumentation for Process Systems | 6d | 2026-12-02 | 2026-12-08 | B5.1.31 23 16.01.149, T&C-PumpS-23, DMM-Mil-48 | 3d |
|  | Dry | **Dry Networks** |  | 2026-11-26 | 2026-12-10 |  |  |
|  | MV | **Medium Voltage Network** |  | 2026-12-02 | 2026-12-06 |  |  |
| T&C-MV-11 |  | Testing & Commissioning for Medium Voltage Network | 4d | 2026-12-02 | 2026-12-06 | T&C-MV-1 | 3d |
|  | LV | **Low Voltage Network** |  | 2026-12-05 | 2026-12-07 |  |  |
| T&C-LV-11 |  | Testing & Commissioning for Low Voltage Network | 3d | 2026-12-05 | 2026-12-07 | T&C-LV-1, T&C-LV-01 | 5d |
|  | Telecom | **Telecommunication Network** |  | 2026-12-05 | 2026-12-10 |  |  |
| T&C-Telecom-11 |  | Testing & Commissioning for Telecommunication Network | 6d | 2026-12-05 | 2026-12-10 | T&C-Telecom-1 FF, DMM-Mil-48 | 7d |
|  | SL | **Street Lighting** |  | 2026-11-26 | 2026-11-29 |  |  |
| T&C-SL-11 |  | Testing & Commissioning for Street Lighting Network | 3d | 2026-11-26 | 2026-11-29 | T&C-SL-1 FF, DMM-Mil-48 | 17d |
|  | Zone 04 | **Zone 04** |  | 2026-11-23 | 2026-12-23 |  |  |
|  | Wet | **Wet Networks & Stations** |  | 2026-11-28 | 2026-12-23 |  |  |
|  | Sewer | **Sewerage Network** |  | 2026-12-07 | 2026-12-13 |  |  |
| T&C-Sew-21 |  | Testing & Commissioning for Sewerage Network | 6d | 2026-12-07 | 2026-12-13 | T&C-Sew-11, DMM-Mil-48 FF | 14d |
|  | Storm | **Storm Network** |  | 2026-12-02 | 2026-12-08 |  |  |
| T&C-Strm-21 |  | Testing & Commissioning for Storm Network | 6d | 2026-12-02 | 2026-12-08 | T&C-Strm-11 SS | 20d |
|  | Potable | **Potable Network** |  | 2026-12-02 | 2026-12-08 |  |  |
| T&C-Pot-21 |  | Testing & Commissioning for Potable Network | 6d | 2026-12-02 | 2026-12-08 | T&C-Pot-11 SS, DMM-Mil-48 FF | 22d |
|  | Fire Fighting | **Fire Fighting Network** |  | 2026-11-28 | 2026-12-05 |  |  |
| T&C-FF-21 |  | Testing & Commissioning for Fire Fighting Network | 7d | 2026-11-28 | 2026-12-05 | T&C-FF-11 FF, DMM-Mil-48 FF | 25d |
|  | TSE | **TSE Network** |  | 2026-12-17 | 2026-12-23 |  |  |
| T&C-TSE-21 |  | Testing & Commissioning for TSE Network | 6d | 2026-12-17 | 2026-12-23 | T&C-TSE-11, DMM-Mil-48 FF | 13d |
|  | Dry | **Dry Networks** |  | 2026-11-23 | 2026-12-10 |  |  |
|  | MV | **Medium Voltage Network** |  | 2026-12-07 | 2026-12-10 |  |  |
| T&C-MV-21 |  | Testing & Commissioning for Medium Voltage Network | 4d | 2026-12-07 | 2026-12-10 | T&C-MV-11 | 3d |
|  | LV | **Low Voltage Network** |  | 2026-12-08 | 2026-12-10 |  |  |
| T&C-LV-21 |  | Testing & Commissioning for Low Voltage Network | 3d | 2026-12-08 | 2026-12-10 | DMM-Mil-48, T&C-LV-11 | 5d |
|  | Telecom | **Telecommunication Network** |  | 2026-12-05 | 2026-12-10 |  |  |
| T&C-Telecom-21 |  | Testing & Commissioning for Telecommunication Network | 6d | 2026-12-05 | 2026-12-10 | T&C-Telecom-11 FF | 7d |
|  | SL | **Street Lighting** |  | 2026-11-23 | 2026-11-30 |  |  |
| T&C-SL-21 |  | Testing & Commissioning for Street Lighting Network | 7d | 2026-11-23 | 2026-11-30 | T&C-SL-11 FF, DMM-Mil-48 | 16d |
|  | Closeout | **Project Closeout** |  | 2026-12-01 | 2027-01-29 |  |  |
|  | Engineering | **Engineering** |  | 2026-12-01 | 2026-12-30 |  |  |
|  | AS-Built | **AS-Built** |  | 2026-12-01 | 2026-12-30 |  |  |
|  | SDS | **Wet Networks & Stations** |  | 2026-12-02 | 2026-12-30 |  |  |
|  | Sewer | **Sewerage Network** |  | 2026-12-14 | 2026-12-17 |  |  |
| Close.Asblt.01-1 |  | AS-Built Drawings Submittal - Sewerage Network | 4d | 2026-12-14 | 2026-12-17 | T&C-Sew-21, T&C-Sew-11, T&C-Sew-1, T&C-Sew-01 | 16d |
|  | Storm | **Storm Network** |  | 2026-12-19 | 2026-12-22 |  |  |
| Close.Asblt.01-2 |  | AS-Built Drawings Submittal - Storm Network | 4d | 2026-12-19 | 2026-12-22 | T&C-Strm-21, T&C-Strm-11, T&C-Strm-1, T&C-Strm-01, Close.Asblt.01-1 | 16d |
|  | Potable | **Potable Network** |  | 2026-12-23 | 2026-12-27 |  |  |
| Close.Asblt.01-3 |  | AS-Built Drawings Submittal - Potable Network | 4d | 2026-12-23 | 2026-12-27 | T&C-Pot-21, T&C-Pot-11, T&C-Pot-1, T&C-Pot-01, Clsout.13.2.1.341, Close.Asblt.01-2, DMM-Mil-14 | 16d |
|  | Fire Fighting | **Fire Fighting Network** |  | 2026-12-06 | 2026-12-09 |  |  |
| Close.Asblt.01-5 |  | AS-Built Drawings Submittal - Fire Fighting Network | 4d | 2026-12-06 | 2026-12-09 | T&C-FF-21, T&C-FF-11, T&C-FF-1, T&C-FF-01 | 25d |
|  | TSE | **TSE Network** |  | 2026-12-27 | 2026-12-30 |  |  |
| Close.Asblt.01-4 |  | AS-Built Drawings Submittal - TSE Network | 4d | 2026-12-27 | 2026-12-30 | Clsout.13.2.1.311, Clsout.13.2.1.161, Clsout.13.2.1.271 | 13d |
|  | Pot Pump St. | **Potable Water Pump Station** |  | 2026-12-02 | 2026-12-06 |  |  |
| Close.Asblt.01-21 |  | AS-Built Drawings Submittal - Potable Water Pump Station - Mech | 4d | 2026-12-02 | 2026-12-06 | T&C-PumpS-3, T&C-PumpS-23, T&C-PumpS-13 | 34d |
| Close.Asblt.01-31 |  | AS-Built Drawings Submittal - Potable Water Pump Station - Elec. | 4d | 2026-12-02 | 2026-12-06 | T&C-PumpS-3, T&C-PumpS-23, T&C-PumpS-13 | 34d |
| Close.Asblt.01-6 |  | AS-Built Drawings Submittal - Potable Water Pump Station - Civil & Arch | 4d | 2026-12-02 | 2026-12-06 | T&C-PumpS-3, T&C-PumpS-23, T&C-PumpS-13 | 22d |
|  | Sewer Lift St. | **Sewer Lift Station** |  | 2026-12-09 | 2026-12-13 |  |  |
| Close.Asblt.01-41 |  | AS-Built Drawings Submittal - Sewer Lift Station - Civil & Arch | 4d | 2026-12-09 | 2026-12-13 | T&C-LiftS-53, T&C-LiftS-43, T&C-LiftS-33, Close.Asblt.01-6 | 20d |
| Close.Asblt.01-51 |  | AS-Built Drawings Submittal - Sewer Lift Station - Mech | 4d | 2026-12-09 | 2026-12-13 | T&C-LiftS-53, T&C-LiftS-43, T&C-LiftS-33, DMM-Mil-18 | 20d |

| ID | WBS | Task | Duration | Start | Finish | Predecessors | Total float |
| --- | --- | --- | --- | --- | --- | --- | --- |
| Close.Asblt.01-61 |  | AS-Built Drawings Submittal - Sewer Lift Station - Elec. | 4d | 2026-12-09 | 2026-12-13 | T&C-LiftS-53, T&C-LiftS-43, T&C-LiftS-33 | 20d |
|  | 1 | **Dry Networks** |  | 2026-12-01 | 2026-12-22 |  |  |
|  | MV | **Medium Voltage Network** |  | 2026-12-14 | 2026-12-17 |  |  |
| Close.MV.Asblt.01-8 |  | AS-Built Drawings Submittal - Medium Voltage Network | 4d | 2026-12-14 | 2026-12-17 | T&C-MV-21, T&C-MV-11, T&C-MV-1, T&C-MV-01, Close.Asblt.01-61, Close.Asblt.01-41, Close.Asblt.01-51 | 20d |
|  | LV | **Low Voltage Network** |  | 2026-12-19 | 2026-12-22 |  |  |
| Close.LV.Asblt.01-9 |  | AS-Built Drawings Submittal - Low Voltage Network | 4d | 2026-12-19 | 2026-12-22 | T&C-LV-21, T&C-LV-11, T&C-LV-1, T&C-LV-01, Close.MV.Asblt.01-8 | 20d |
|  | Telecom | **Telecommunication Network** |  | 2026-12-12 | 2026-12-15 |  |  |
| Close.Tele.Asblt.01 |  | AS-Built Drawings Submittal - Telecommunication Network | 4d | 2026-12-12 | 2026-12-15 | T&C-Telecom-21, T&C-Telecom-11, T&C-Telecom-1, T&C-Telecom-01 | 26d |
|  | SL | **Street Lighting** |  | 2026-12-01 | 2026-12-05 |  |  |
| Close.SL.Asblt.01-11 |  | AS-Built Drawings Submittal - Street Lighting | 4d | 2026-12-01 | 2026-12-05 | T&C-SL-21, T&C-SL-11, T&C-SL-1, T&C-SL-01 | 29d |
|  | O & M Manuals | **O & M Manuals** |  | 2026-12-02 | 2026-12-26 |  |  |
|  | SDS | **Wet Networks & Stations** |  | 2026-12-02 | 2026-12-26 |  |  |
|  | Sewer | **Sewerage Network** |  | 2026-12-14 | 2026-12-15 |  |  |
| Clsout.13.2.1.131 |  | O & M Manuals Submittals | 2d | 2026-12-14 | 2026-12-15 | T&C-Sew-21, T&C-Sew-11, T&C-Sew-1, T&C-Sew-01 | 14d |
|  | Storm | **Storm Network** |  | 2026-12-16 | 2026-12-17 |  |  |
| Clsout.13.2.1.141 |  | O & M Manuals Submittals | 2d | 2026-12-16 | 2026-12-17 | T&C-Strm-01, T&C-Strm-1, T&C-Strm-11, T&C-Strm-21, Clsout.13.2.1.131 | 14d |
|  | Potable | **Potable Network** |  | 2026-12-19 | 2026-12-20 |  |  |
| Clsout.13.2.1.151 |  | O & M Manuals Submittals | 2d | 2026-12-19 | 2026-12-20 | T&C-Pot-21, T&C-Pot-11, T&C-Pot-1, T&C-Pot-01, Clsout.13.2.1.141 | 14d |
|  | Fire Fighting | **Fire Fighting Network** |  | 2026-12-21 | 2026-12-22 |  |  |
| Clsout.13.2.1.171 |  | O & M Manuals Submittals | 2d | 2026-12-21 | 2026-12-22 | T&C-FF-21, T&C-FF-11, T&C-FF-1, T&C-FF-01, Clsout.13.2.1.151 | 14d |
|  | TSE | **TSE Network** |  | 2026-12-24 | 2026-12-26 |  |  |
| Clsout.13.2.1.161 |  | O & M Manuals Submittals | 2d | 2026-12-24 | 2026-12-26 | T&C-TSE-01, T&C-TSE-1, T&C-TSE-11, T&C-TSE-21, Clsout.13.2.1.171, Close.SL.Asblt.01-11 | 13d |
|  | Pot Pump St. | **Potable Water Pump Station** |  | 2026-12-02 | 2026-12-03 |  |  |
| Clsout.13.2.1.181 |  | O & M Manuals Submittals | 2d | 2026-12-02 | 2026-12-03 | T&C-PumpS-13, T&C-PumpS-23, T&C-PumpS-3 | 15d |
|  | Sewer Lift St. | **Sewer Lift Station** |  | 2026-12-09 | 2026-12-10 |  |  |
| Clsout.13.2.1.191 |  | O & M Manuals Submittals | 2d | 2026-12-09 | 2026-12-10 | T&C-LiftS-33, T&C-LiftS-43, T&C-LiftS-53 | 9d |
|  | 1 | **Dry Networks** |  | 2026-12-12 | 2026-12-17 |  |  |
|  | MV | **Medium Voltage Network** |  | 2026-12-12 | 2026-12-13 |  |  |
| Clsout.13.2.1.201 |  | O & M Manuals Submittals | 2d | 2026-12-12 | 2026-12-13 | T&C-MV-21, T&C-MV-11, T&C-MV-1, T&C-MV-01 | 3d |
|  | LV | **Low Voltage Network** |  | 2026-12-14 | 2026-12-15 |  |  |
| Clsout.13.2.1.211 |  | O & M Manuals Submittals | 2d | 2026-12-14 | 2026-12-15 | T&C-LV-01, T&C-LV-1, T&C-LV-11, T&C-LV-21, Clsout.13.2.1.201 | 3d |
|  | Telecom | **Telecommunication Network** |  | 2026-12-16 | 2026-12-17 |  |  |
| Clsout.13.2.1.221 |  | O & M Manuals Submittals | 2d | 2026-12-16 | 2026-12-17 | T&C-Telecom-21, T&C-Telecom-11, T&C-Telecom-1, T&C-Telecom-01, Clsout.13.2.1.211 | 3d |
|  | SL | **Street Lighting** |  | 2026-12-16 | 2026-12-17 |  |  |
| Clsout.13.2.1.231 |  | O & M Manuals Submittals | 2d | 2026-12-16 | 2026-12-17 | T&C-SL-01, T&C-SL-1, T&C-SL-11, T&C-SL-21, Clsout.13.2.1.221 FF | 3d |
|  | Spare Parts | **Operational Spare Parts & Guarantee Certificates/Docs.** |  | 2026-12-02 | 2026-12-26 |  |  |
|  | SDS | **Wet Networks & Stations** |  | 2026-12-02 | 2026-12-26 |  |  |
|  | Sewer | **Sewerage Network** |  | 2026-12-14 | 2026-12-15 |  |  |
| Clsout.13.2.1.241 |  | Operational Spare Parts & Guarantee Certificates/Docs. | 2d | 2026-12-14 | 2026-12-15 | T&C-Sew-21, T&C-Sew-11, T&C-Sew-1, T&C-Sew-01 | 14d |
|  | Storm | **Storm Network** |  | 2026-12-16 | 2026-12-17 |  |  |
| Clsout.13.2.1.251 |  | Operational Spare Parts & Guarantee Certificates/Docs. | 2d | 2026-12-16 | 2026-12-17 | T&C-Strm-21, T&C-Strm-11, T&C-Strm-1, T&C-Strm-01, Clsout.13.2.1.241 | 14d |
|  | Potable | **Potable Network** |  | 2026-12-19 | 2026-12-20 |  |  |
| Clsout.13.2.1.261 |  | Operational Spare Parts & Guarantee Certificates/Docs. | 2d | 2026-12-19 | 2026-12-20 | T&C-Pot-21, T&C-Pot-11, T&C-Pot-1, T&C-Pot-01, Clsout.13.2.1.251 | 14d |
|  | Fire Fighting | **Fire Fighting Network** |  | 2026-12-21 | 2026-12-22 |  |  |
| Clsout.13.2.1.281 |  | Operational Spare Parts & Guarantee Certificates/Docs. | 2d | 2026-12-21 | 2026-12-22 | T&C-FF-21, T&C-FF-11, T&C-FF-1, T&C-FF-01, Clsout.13.2.1.261 | 14d |
|  | TSE | **TSE Network** |  | 2026-12-24 | 2026-12-26 |  |  |
| Clsout.13.2.1.271 |  | Operational Spare Parts & Guarantee Certificates/Docs. | 2d | 2026-12-24 | 2026-12-26 | T&C-TSE-21, T&C-TSE-11, T&C-TSE-1, T&C-TSE-01, Clsout.13.2.1.281 | 13d |
|  | Pot Pump St. | **Potable Water Pump Station** |  | 2026-12-02 | 2026-12-03 |  |  |
| Clsout.13.2.1.291 |  | Operational Spare Parts & Guarantee Certificates/Docs. | 2d | 2026-12-02 | 2026-12-03 | T&C-PumpS-13, T&C-PumpS-3, T&C-PumpS-23 | 7d |
|  | Sewer Lift St. | **Sewer Lift Station** |  | 2026-12-09 | 2026-12-10 |  |  |
| Clsout.13.2.1.301 |  | Operational Spare Parts & Guarantee Certificates/Docs. | 2d | 2026-12-09 | 2026-12-10 | T&C-LiftS-53, T&C-LiftS-33, T&C-LiftS-43, Clsout.13.2.1.291 | 3d |
|  | 1 | **Dry Networks** |  | 2026-12-10 | 2026-12-17 |  |  |
|  | MV | **Medium Voltage Network** |  | 2026-12-12 | 2026-12-13 |  |  |
| Clsout.13.2.1.351 |  | Operational Spare Parts & Guarantee Certificates/Docs. | 2d | 2026-12-12 | 2026-12-13 | T&C-MV-21, T&C-MV-01, T&C-MV-11, T&C-MV-1, Clsout.13.2.1.301 | 3d |
|  | LV | **Low Voltage Network** |  | 2026-12-14 | 2026-12-15 |  |  |
| Clsout.13.2.1.341 |  | Operational Spare Parts & Guarantee Certificates/Docs. | 2d | 2026-12-14 | 2026-12-15 | T&C-LV-21, T&C-LV-11, T&C-LV-1, T&C-LV-01, Clsout.13.2.1.351 | 3d |
|  | Telecom | **Telecommunication Network** |  | 2026-12-16 | 2026-12-17 |  |  |
| Clsout.13.2.1.321 |  | Operational Spare Parts & Guarantee Certificates/Docs. | 2d | 2026-12-16 | 2026-12-17 | T&C-Telecom-21, T&C-Telecom-11, T&C-Telecom-1, T&C-Telecom-01, Clsout.13.2.1.341 | 3d |
|  | SL | **Street Lighting** |  | 2026-12-10 | 2026-12-12 |  |  |
| Clsout.13.2.1.311 |  | Operational Spare Parts & Guarantee Certificates/Docs. | 2d | 2026-12-10 | 2026-12-12 | T&C-SL-21, T&C-SL-11, T&C-SL-1, T&C-SL-01, Close.Asblt.01-5 | 25d |
|  | Snagging | **Snagging** |  | 2026-12-22 | 2027-01-14 |  |  |
| Clsout.13.2.1.1 |  | Punch List | 4d | 2026-12-22 | 2026-12-26 | B1.1.02 41 00.101, DMM-Mil-48, Clsout.13.2.1.321, Prov.Sum 01, B1.2.10 14 53.0115, B1.2.10 14 53.0215, B1.2.10 14 53.0315, B7.32 93 43.04.44, B7.32 93 13.01, DMM-Mil-3, Clsout.13.2.1.181, Clsout.13.2.1.191, Clsout.13.2.1.231, Mil.Cons.Fin | 0d |
| Clsout.13.2.1.2 |  | Rectifying / Closing | 15d | 2026-12-27 | 2027-01-12 | Clsout.13.2.1.1 | 0d |
| Clsout.13.2.1.4 |  | Desnagging | 4d | 2027-01-11 | 2027-01-14 | Clsout.13.2.1.2 FF+2d | 0d |
|  | Demobilization | **Demobilization** |  | 2027-01-16 | 2027-01-27 |  |  |
| Clsout.13.2.1.7 |  | Demobilization of Manpower | 4d | 2027-01-16 | 2027-01-19 | Clsout.13.2.1.4, Close.Tele.Asblt.01, Close.LV.Asblt.01-9, Close.Asblt.01-3, Close.Asblt.01-4, Close.Asblt.01-21, Close.Asblt.01-31 | 0d |
| Clsout.13.2.1.8 |  | Demobilization of Equipments | 5d | 2027-01-20 | 2027-01-25 | Clsout.13.2.1.7 | 0d |
| Clsout.13.2.1.10 |  | Restoration Of Ground Surfaces | 4d | 2027-01-21 | 2027-01-25 | Clsout.13.2.1.9 SS, B1.1.02 41 00.101 | 2d |
| Clsout.13.2.1.9 |  | Demoblization of Offices & Facilities & Site Clean-up | 6d | 2027-01-21 | 2027-01-27 | Clsout.13.2.1.8 SS+1d | 0d |
|  | Handing Over | **Handing Over** |  | 2027-01-28 | 2027-01-29 |  |  |

| ID | Task | Duration | Start | Finish | Predecessors | Total float |
| --- | --- | --- | --- | --- | --- | --- |
| Clsout.13.2.1.11 | Project Handing Over | 2d | 2027-01-28 | 2027-01-29 | Clsout.13.2.1.10, Clsout.13.2.1.4, Clsout.13.2.1.9 | 0d |

## Version 2 (data date 2026-10-06, saved 2026-10-07, file 02. WPR UPD As Oct. 06, 2026.xer)

Last finish 2027-01-29 → 2027-02-15 (+17d). Complete tasks 1313 → 2240.

Added:

| ID | Task | Duration | Start | Finish | Predecessors | Resources |
| --- | --- | --- | --- | --- | --- | --- |
| DMM2-Eng-MS-378_R | Review & Approval(Rem) | 1d | 2026-09-20 A | 2026-09-24 A | DMM2-Eng-MS-368, DMM2-Eng-MS-378 | Eng.Labour [492.43 h] |
| DMM2-Eng-MS-238_R | Review & Approval(Rem) | 1d | 2026-09-20 A | 2026-09-22 A | DMM2-Eng-MS-158, DMM2-Eng-MS-228_R SS, DMM2-Eng-MS-238 | Eng.Labour [152.32 h] |
| DMM2-Eng-MS-228_R | Prepare & Submit(Rem) | 1d | 2026-09-23 A | 2026-09-26 A | DMM2-Eng-MS-208, DMM2-Eng-MS-228 | Eng.Labour [153 h] |
| DMM2-Eng-MS-248_R | Prepare & Submit(Rem) | 1d | 2026-09-17 A | 2026-09-17 A | DMM2-Eng-MS-228_R SS, DMM2-Eng-MS-248, DMM2-Eng-MS-238_R | Eng.Labour [153 h] |
| DMM2-Eng-MS-258_R | Review & Approval(Rem) | 1d | 2026-09-17 A | 2026-09-17 A | DMM2-Eng-MS-198, DMM2-Eng-MS-178, DMM2-Eng-MS-248_R SS, DMM2-Eng-MS-258 | Eng.Labour [152.32 h] |
| DMM2-Proc-Delv-618_R | Manuf. & Delivery for Valves Chambers Materials(Rem) | 4d | 2026-09-22 A | 2026-10-08 | DMM2-Proc-PO-022, B3.33 05 63.02.011 SS, DMM2-Proc-Delv-618 | Labor [65.24 h]; Operator [65.24 h]; Mobile Crane [30 h]; Air valve chamber; on less than 315 mm Dia. pipeline |
| DMM2-Proc-Delv-1328_R | Manuf. & Delivery for SL Luminares Materials(Rem) | 4d | 2026-09-19 A | 2026-10-10 | DMM2-Proc-PO-093, B2.33 71 16.021_R SS, DMM2-Proc-Delv-1328 | Labor [69.59 h]; Operator [69.59 h]; Mobile Crane [32 h]; Street Lighting( LED), Lamp Lumen: 14560, Luminare Lumen:12700 , complete with control gear and lamp, (80) WATT. |
| DMM2-Proc-Delv-2328_R | Manuf. & Delivery for Discharge Chamber Materials(Rem) | 10d | 2026-10-07 | 2026-10-18 | DMM2-Proc-PO-019 FF, DMM2-Proc-Delv-3638 SS, DMM2-Proc-Delv-2328 | Labor [173.97 h]; Operator [173.97 h]; Mobile Crane [80 h]; Sew. Discharge chamber, size 1500*2000 mm approximately |
| DMM2-Proc-Delv-2428_R | Manuf. & Delivery for Valves Chambers Materials(Rem) | 10d | 2026-09-17 A | 2026-10-15 | DMM2-Proc-PO-029, DMM2-Proc-Delv-688, DMM2-Proc-Delv-2428 | Labor [347.95 h]; Operator [347.95 h]; Mobile Crane [160.01 h]; FF Wash out valve chamber; on 110-400 mm Dia. pipeline; FF Air valve chamber; on less than 315 mm Dia. pipeline |
| DMM2-Proc-Delv-2518_R | Manuf. & Delivery for Fire Pumps Materials(Rem) | 9d | 2026-09-22 A | 2026-09-27 A | DMM2-Proc-PO-038, B1.1.31 23 23.102, DMM2-Proc-Delv-2518 | Labor [243.56 h]; Operator [243.56 h]; Mobile Crane [112 h]; Split case cintrifugal pump; Vertical multistage cintrifugal (jockey) pump |
| DMM2-Proc-Delv-3758_R | Manuf. & Delivery for Non Return (Flap) Materials(Rem) | 14d | 2026-09-24 A | 2026-10-03 A | DMM2-Proc-PO-060, B1.1.31 23 23.102, DMM2-Proc-Delv-3738_R SS, DMM2-Proc-Delv-3758 | Labor [156.57 h]; Operator [156.57 h]; Mobile Crane [72 h]; Non return Valve DN60; Non return Valve DN300 |
| DMM2-Proc-Delv-2528_R | Manuf. & Delivery for Butterfly Valve Materials(Rem) | 14d | 2026-10-07 | 2026-10-22 | DMM2-Proc-PO-039, B1.1.31 23 23.102, DMM2-Proc-Delv-3738_R SS, DMM2-Proc-Delv-2528 | Labor [173.97 h]; Operator [173.97 h]; Mobile Crane [80 h]; Butterfly Valve DN200; Butterfly Valve DN300 |
| DMM2-Proc-Delv-2538_R | Manuf. & Delivery for OverHead Crane Materials(Rem) | 12d | 2026-10-07 | 2026-10-20 | DMM2-Proc-PO-040, B1.1.31 23 23.102, DMM2-Proc-Delv-3738_R SS, DMM2-Proc-Delv-2538 | Labor [208.76 h]; Operator [208.76 h]; Mobile Crane [96 h]; OverHead Crane |
| DMM2-Proc-Delv-3738_R | Manuf. & Delivery for DI Pipes Materials(Rem) | 6d | 2026-10-07 | 2026-10-13 | DMM2-Proc-PO-057, DMM2-Proc-PO-058, B1.1.31 23 23.102, DMM2-Proc-Delv-3738 | Labor [139.18 h]; Operator [139.18 h]; Mobile Crane [64 h]; BDI Dia. 80 mm; BDI Dia. 100 mm; BDI Dia. 200 mm; BDI Dia. 300 mm; BDI Dia. 350 mm; DDI Dia. 60 mm; DDI Dia. 80 mm; DDI Dia. 100 mm; DDI Dia. 200 mm; DDI Dia. 300 mm; DDI Dia. 350 mm |
| DMM2-Proc-Delv-3768_R | Manuf. & Delivery for Electromagnetic Flow Meters Materials(Rem) | 14d | 2026-10-07 | 2026-10-22 | DMM2-Proc-PO-178, B1.1.31 23 23.102, DMM2-Proc-Delv-3738_R SS, DMM2-Proc-Delv-3768 | Labor [173.97 h]; Operator [173.97 h]; Mobile Crane [80 h]; Electromagnetic Flowmeter DN80, PN16; Electromagnetic Flowmeter DN200, PN16 |
| DMM2-Proc-Delv-2648_R | Manuf. & Delivery for LV Cables Materials(Rem) | 5d | 2026-10-07 | 2026-10-12 | DMM2-Proc-PO-070, DMM2-Proc-Delv-1258, DMM2-Proc-Delv-2648 | Labor [86.98 h]; Operator [86.98 h]; Mobile Crane [40 h]; 4x1Cx 630mm2 Cu/XLPE//PVC from nearest power supply (SEC) and from generator to the ATS and from ATS to MCC-PW; 4Cx 10mm2 Cu/XLPE/SWA/PVC from MCC-PW to ELP; 4/Cx35mm²+1Cx16mm², CU/MICA/XLPE/LSOH, FIRE RESISTANT CABLE FROM MCC-PW TO Fire pump control panel; 4/Cx6mm² Cu/XLPE/PVC + 1Cx6mm² Cu/PVC from MCC-PW to potable water pumps; 4Cx 25mm2 + 1Cx16mm2 Cu/XLPE/PVC FROM MCC-PW to DB-PW; 3Cx 6mm2 Cu/XLPE/PVC FROM MCC-PW to the two fuel pumps.; 4Cx 25mm2 + 1Cx11mm2 Cu/XLPE/PVC FROM MCC-PW to DB-CH; 3Cx 6mm2 Cu/XLPE/PVC FROM MCC-SPS to the two fuel pumps.; 4Cx 10mm2 + 1Cx10mm2 Cu/XLPE/PVC FROM MCC-PW to EPS; 4Cx 6mm2 Cu/XLPE/SWA/PVC FROM EPS to LIGHTING POLES |
| DMM2-Proc-Delv-3808_R | Manuf. & Delivery for Motor Control Center (MCC) Materials(Rem) | 9d | 2026-10-07 | 2026-10-17 | DMM2-Proc-PO-068, DMM2-Proc-Delv-3768_R SS, DMM2-Proc-Delv-3808 | Labor [156.57 h]; Operator [156.57 h]; Mobile Crane [72 h]; MCC - 200AT/200AF, 400V, 3PH, 60HZ, |
| DMM2-Proc-Delv-3828_R | Manuf. & Delivery for Local Control Panel Materials(Rem) | 4.2d | 2026-10-07 | 2026-10-12 | DMM2-Proc-PO-069, DMM2-Proc-Delv-2538_R SS, DMM2-Proc-Delv-3828 | Labor [156.57 h]; Operator [156.57 h]; Mobile Crane [72 h]; Local Control Panel, IP 65 |
| DMM2-Proc-Delv-3868_R | Manuf. & Delivery for PLC System Materials(Rem) | 12d | 2026-10-07 | 2026-10-20 | DMM2-Proc-PO-079, DMM2-Proc-Delv-2508 SS, DMM2-Proc-Delv-3868 | Labor [208.76 h]; Operator [208.76 h]; Mobile Crane [96 h]; Testing and commissioning of PLC system, serving the pumping station and all related utilities |
| DMM2-Proc-Delv-2978_R | Manuf. & Delivery for Unit Substation Materials(Rem) | 10d | 2026-10-07 | 2026-10-18 | DMM2-Proc-PO-084, DMM2-Proc-Delv-2978 | Labor [78.29 h]; Operator [78.29 h]; Mobile Crane [36 h]; Unit Substation 13.8/0.4 K V, 500kVA |
| DMM2-Proc-Delv-2988_R | Manuf. & Delivery for RMU Materials(Rem) | 10d | 2026-10-07 | 2026-10-18 | DMM2-Proc-PO-085, DMM2-Proc-Delv-2988 | Labor [52.19 h]; Operator [52.19 h]; Mobile Crane [24 h]; RMU, 13.8KV |
| DMM2-Proc-Delv-3068_R | Manuf. & Delivery for SL Luminares Materials(Rem) | 4d | 2026-09-22 A | 2026-10-11 | DMM2-Proc-PO-093, DMM2-Proc-Delv-1328_R SS, DMM2-Proc-Delv-3068 | Labor [69.22 h]; Operator [69.22 h]; Mobile Crane [31.83 h]; Street Lighting( LED), Lamp Lumen: 14560, Luminare Lumen:12700 , complete with control gear and lamp, (80) WATT.; Street Lighting( LED), Lamp Lumen: 24286, Luminare Lumen:20914, complete with control gear and lamp, (140) WATT. |
| DMM2-Proc-Delv-3038_R | Manuf. & Delivery for SL Pillars Materials(Rem) | 20d | 2026-10-07 | 2026-10-29 | DMM2-Proc-PO-090, DMM2-Proc-Delv-3038 | Labor [138.43 h]; Operator [138.43 h]; Mobile Crane [63.66 h]; Street Lighting Feeder pillars, work shall include earthing for the lighting pillars. |
| DMM2-Proc-Delv-4038_R | Manuf. & Delivery for HDPE Pipes Materials(Rem) | 19d | 2026-10-07 | 2026-10-28 | DMM2-Proc-PO-016, DMM2-Proc-Delv-2298, DMM2-Proc-Delv-4038 | Labor [330.54 h]; Operator [330.54 h]; Mobile Crane [152 h]; Sew HDPE Dia. 160 mm depth: 0- 1.5m |
| DMM2-Proc-Delv-4098_R | Manuf. & Delivery for Valves Chambers Materials(Rem) | 3d | 2026-10-07 | 2026-10-10 | DMM2-Proc-PO-022, DMM2-Proc-Delv-2358, DMM2-Proc-Delv-4098 | Labor [52.19 h]; Operator [52.19 h]; Mobile Crane [24 h]; Wash out valve chamber; on 110-400 mm Dia. pipeline; Air valve chamber; on less than 315 mm Dia. pipeline |
| DMM2-Proc-Delv-4168_R | Manuf. & Delivery for Valves Chambers Materials(Rem) | 2d | 2026-10-07 | 2026-10-08 | DMM2-Proc-PO-029, DMM2-Proc-Delv-2428_R SS, DMM2-Proc-Delv-4168 | Labor [86.98 h]; Operator [86.98 h]; Mobile Crane [40 h]; FF Wash out valve chamber; on 110-400 mm Dia. pipeline; FF Air valve chamber; on less than 315 mm Dia. pipeline |
| DMM2-Proc-Delv-4448_R | Manuf. & Delivery for Double Flanged DI Pipes Materials(Rem) | 20d | 2026-10-07 | 2026-10-29 | DMM2-Proc-PO-057, DMM2-Proc-Delv-7439_R SS, DMM2-Proc-Delv-4448 | Labor [608.89 h]; Operator [608.89 h]; Mobile Crane [280 h]; Double flanged ductile iron pipe with Dia. 150 mm |
| DMM2-Proc-Delv-4478_R | Manuf. & Delivery for Non Return Valve (Flap) Materials(Rem) | 20d | 2026-10-07 | 2026-10-29 | DMM2-Proc-PO-060, DMM2-Proc-Delv-4478 | Labor [869.84 h]; Operator [869.84 h]; Mobile Crane [400 h]; Non return Valve DN150 |
| DMM2-Proc-Delv-4518_R | Manuf. & Delivery for JIB Crane Materials(Rem) | 15d | 2026-10-07 | 2026-10-24 | DMM2-Proc-PO-064, DMM2-Proc-Delv-4518 | Labor [740.66 h]; Operator [740.66 h]; Mobile Crane [340.59 h]; JIB Crane |
| DMM2-Proc-Delv-4578_R | Manuf. & Delivery for Low Voltage Cables Materials(Rem) | 15d | 2026-10-07 | 2026-10-24 | DMM2-Proc-PO-070, DMM2-Proc-Delv-4478_R SS, DMM2-Proc-Delv-4578 | Labor [260.95 h]; Operator [260.95 h]; Mobile Crane [120 h]; 4Cx 95mm2 Cu/XLPE//PVC from nearest power supply (SEC) and generator to the ATS and from ATS to MCC-SPS; 4Cx 10mm2 Cu/XLPE/SWA/PVC from MCC-SPS to ELP; 4Cx 35mm2 + 1Cx16mm2 SUBMERGED RUBBER INSULATED FLEXIBLE CABLE from MCC to PUMP1& PUMP2.; 4Cx 10mm2 + 1Cx10mm2 Cu/XLPE/PVC FROM MCC-SPS to DB-SPS; 4Cx 10mm2 + 1Cx10mm2 Cu/XLPE/PVC FROM MCC-SPS to Penstok; 4Cx 10mm2 + 1Cx10mm2 Cu/XLPE/PVC FROM MCC-SPS to Odor Control Unit; 4Cx 6mm2 + 1Cx6mm2 Cu/XLPE/PVC FROM MCC-SPS to the mechanical bar screen; 3Cx 6mm2 Cu/XLPE/PVC FROM MCC-SPS to the two fuel pumps.; 4Cx 6mm2 + 1Cx6mm2 Cu/XLPE/PVC FROM MCC-SPS to the mechanical crane |
| DMM2-Proc-Delv-4598_R | Manuf. & Delivery for Fuel Pump Materials(Rem) | 20d | 2026-10-07 | 2026-10-29 | DMM2-Proc-PO-072, DMM2-Proc-Delv-4608_R SS, DMM2-Proc-Delv-4598 | Labor [521.91 h]; Operator [521.91 h]; Mobile Crane [240 h]; Manually operated fuel pump |
| DMM2-Proc-Delv-4608_R | Manuf. & Delivery for Automatic Transfer (Switch ATS) Materials(Rem) | 20d | 2026-10-07 | 2026-10-29 | DMM2-Proc-PO-073, DMM2-Proc-PO-065 FF, DMM2-Proc-Delv-4608 | Labor [869.84 h]; Operator [869.84 h]; Mobile Crane [400 h]; Automatic Transfer Switch ATS panel |
| DMM2-Proc-Delv-4628_R | Manuf. & Delivery for Displacement Rotary Type Pump Materials(Rem) | 24d | 2026-10-07 | 2026-11-03 | DMM2-Proc-PO-075, DMM2-Proc-Delv-4628 | Labor [799.47 h]; Operator [799.47 h]; Mobile Crane [367.64 h]; Positive displacement rotary type pump |
| DMM2-Proc-Delv-4668_R | Manuf. & Delivery for PLC System Materials(Rem) | 15d | 2026-10-07 | 2026-10-24 | DMM2-Proc-PO-079, DMM2-Proc-Delv-4628_R SS, DMM2-Proc-Delv-4578_R SS, DMM2-Proc-Delv-4518_R SS, DMM2-Proc-Delv-4668 | Labor [208.76 h]; Operator [208.76 h]; Mobile Crane [96 h]; Supply, installation, testing and commissioning of PLC system |
| DMM2-Proc-Delv-4718_R | Manuf. & Delivery for Unit Substation Materials(Rem) | 20d | 2026-10-07 | 2026-10-29 | DMM2-Proc-PO-084, DMM2-Proc-Delv-6438, DMM2-Proc-Delv-2978_R SS, DMM2-Proc-Delv-4718 | Labor [173.04 h]; Operator [173.04 h]; Mobile Crane [79.57 h]; Unit Substation 13.8/0.4 K V, 500kVA |
| DMM2-Proc-Delv-4728_R | Manuf. & Delivery for RMU Materials(Rem) | 20d | 2026-10-07 | 2026-10-29 | DMM2-Proc-PO-085, DMM2-Proc-Delv-2988_R SS, DMM2-Proc-Delv-4728 | Labor [103.82 h]; Operator [103.82 h]; Mobile Crane [47.74 h]; RMU, 13.8KV |
| DMM2-Proc-Delv-4748_R | Manuf. & Delivery for LV Pillars Materials(Rem) | 20d | 2026-10-07 | 2026-10-29 | DMM2-Proc-PO-087, DMM2-Proc-Delv-4748 | Labor [155.74 h]; Operator [155.74 h]; Mobile Crane [71.62 h]; 0.6/1 KV Low Voltage Distribution Pillars with 5 Outgoing feeders rated 200 Ampers Fuse type |
| DMM2-Proc-Delv-7199_R | Manuf. & Delivery for LV Panels Materials(Rem) | 20d | 2026-10-07 | 2026-10-29 | DMM2-Proc-PO-209, DMM2-Proc-Delv-2998, DMM2-Proc-Delv-7199 | Labor [155.74 h]; Operator [155.74 h]; Mobile Crane [71.62 h]; 0.6/1 KV Low Voltage Distribution Panels for Industrial UPS - Cameras |
| DMM2-Proc-Delv-4778_R | Manuf. & Delivery for SL Pillars Materials(Rem) | 20d | 2026-10-07 | 2026-10-29 | DMM2-Proc-PO-090, DMM2-Proc-Delv-3038_R SS, DMM2-Proc-Delv-7199_R SS, DMM2-Proc-Delv-4778 | Labor [69.59 h]; Operator [69.59 h]; Mobile Crane [32 h]; Street Lighting Feeder pillars, work shall include earthing for the lighting pillars. |
| DMM2-Proc-Delv-4788_R | Manuf. & Delivery for SL Cables Materials(Rem) | 10d | 2026-10-07 | 2026-10-18 | DMM2-Proc-PO-091, DMM2-Proc-Delv-3048, DMM2-Proc-Delv-3048 FF, DMM2-Proc-Delv-4788 | Labor [43.49 h]; Operator [43.49 h]; Mobile Crane [20 h]; SL Cable, Copper 4x10mm2/ CU/XLPE/SWA/PVC + 1x10mm2 CU/PVC; Cable, Copper 4x16mm2/ CU/XLPE/SWA/PVC + 1x16mm2 CU/PVC |
| DMM2-Proc-Delv-4798_R | Manuf. & Delivery for SL Poles Materials(Rem) | 10d | 2026-10-07 | 2026-10-18 | DMM2-Proc-PO-092, DMM2-Proc-Delv-3058, DMM2-Proc-Delv-4798 | Labor [43.49 h]; Operator [43.49 h]; Mobile Crane [20 h]; Lighting poles with 2 arms, height of ( 10) meters; Lighting poles with 1 arm, height of ( 10) meters; Lighting poles with 1 arm, height of ( 12 ) meters; Lighting poles with 2 arms , height of (16 ) meters |
| DMM2-Proc-Delv-4808_R | Manuf. & Delivery for SL Luminares Materials(Rem) | 10d | 2026-10-07 | 2026-10-18 | DMM2-Proc-PO-093, DMM2-Proc-Delv-3068_R SS, DMM2-Proc-Delv-4808 | Labor [34.79 h]; Operator [34.79 h]; Mobile Crane [16 h]; Street Lighting( LED), Lamp Lumen: 14560, Luminare Lumen:12700 , complete with control gear and lamp, (80) WATT.; Street Lighting( LED), Lamp Lumen: 24286, Luminare Lumen:20914, complete with control gear and lamp, (140) WATT.; Street Lighting( LED), Lamp Lumen: 34805, Luminare Lumen:28310, complete with control gear and lamp, (190) WATT. |
| DMM2-Proc-Delv-5748_R | Manuf. & Delivery for Inlet Manholes Materials(Rem) | 10d | 2026-09-25 A | 2026-09-28 A | DMM2-Proc-PO-013, DMM2-Proc-Delv-4008, DMM2-Proc-Delv-5748 | Labor [43.49 h]; Operator [43.49 h]; Mobile Crane [20 h]; MH depth 1.50 - 2.5m; Storm MH depth 1.50 - 2.5m; Storm MH depth 2.51 - 3.5m |
| DMM2-Proc-Delv-5758_R | Manuf. & Delivery for Concrete Chambers & Catch Basin Materials(Rem) | 15d | 2026-10-07 | 2026-10-24 | DMM2-Proc-Delv-5748_R FF, DMM2-Proc-Delv-5758 | Labor [260.72 h]; Operator [260.72 h]; Mobile Crane [119.89 h]; Single Catch basin; Double Catch basin |
| DMM2-Proc-Delv-5838_R | Manuf. & Delivery for Valves Chambers Materials(Rem) | 3d | 2026-09-27 A | 2026-10-07 | DMM2-Proc-PO-022, DMM2-Proc-Delv-4098_R SS, DMM2-Proc-Delv-5838 | Labor [52.19 h]; Operator [52.19 h]; Mobile Crane [24 h]; Wash out valve chamber; on 110-400 mm Dia. pipeline; Air valve chamber; on less than 315 mm Dia. pipeline |
| DMM2-Proc-Delv-5908_R | Manuf. & Delivery for Valves Chambers Materials(Rem) | 3d | 2026-09-20 A | 2026-10-10 | DMM2-Proc-PO-029, DMM2-Proc-Delv-4168_R SS, DMM2-Proc-Delv-5908, DMM2-Proc-Delv-5838_R | Labor [86.98 h]; Operator [86.98 h]; Mobile Crane [40 h]; FF Wash out valve chamber; on 110-400 mm Dia. pipeline; FF Air valve chamber; on less than 315 mm Dia. pipeline |
| DMM2-Proc-Delv-5858_R | Manuf. & Delivery for HDPE Pipes Materials(Rem) | 2d | 2026-10-07 | 2026-10-08 | DMM2-Proc-PO-024, DMM2-Proc-Delv-4118, DMM2-Proc-Delv-5858 | Labor [10.44 h]; Operator [10.44 h]; Mobile Crane [4.8 h]; Dia. 90mm 0.0m - 1.5m; Dia. 110mm 0.0m - 1.5m |
| DMM2-Proc-Delv-5878_R | Manuf. & Delivery for Valves Materials(Rem) | 2d | 2026-10-07 | 2026-10-08 | DMM2-Proc-PO-026, DMM2-Proc-Delv-4138, DMM2-Proc-Delv-5878 | Labor [20.88 h]; Operator [20.88 h]; Mobile Crane [9.6 h]; TSE Gate V Dia. 100 mm; TSE Wash out valve Dia. 100 mm on pipes with Dia. 110-400 mm; TSE Air valve Dia. 50 mm on pipes with Dia. less than 315 mm |
| DMM2-Proc-Delv-6468_R | Manuf. & Delivery for RMU Materials(Rem) | 20d | 2026-10-07 | 2026-10-29 | DMM2-Proc-PO-085, DMM2-Proc-Delv-4728_R SS, DMM2-Proc-Delv-6468 | Labor [103.82 h]; Operator [103.82 h]; Mobile Crane [47.74 h]; RMU, 13.8KV |
| DMM2-Proc-Delv-6458_R | Manuf. & Delivery for Unit Substation Materials(Rem) | 20d | 2026-10-19 | 2026-11-10 | DMM2-Proc-PO-084, DMM2-Proc-Delv-4718_R SS, DMM2-Proc-Delv-6458, DMM2-Proc-Delv-4788_R | Labor [173.04 h]; Operator [173.04 h]; Mobile Crane [79.57 h]; Unit Substation 13.8/0.4 K V, 500kVA |
| DMM2-Proc-Delv-6518_R | Manuf. & Delivery for SL Pillars Materials(Rem) | 20d | 2026-10-07 | 2026-10-29 | DMM2-Proc-PO-090, DMM2-Proc-Delv-4748_R SS, DMM2-Proc-Delv-4778_R SS, DMM2-Proc-Delv-6518 | Labor [347.94 h]; Operator [347.94 h]; Mobile Crane [160 h]; Street Lighting Feeder pillars, work shall include earthing for the lighting pillars. |
| DMM2-Proc-Delv-6538_R | Manuf. & Delivery for SL Poles Materials(Rem) | 10d | 2026-10-07 | 2026-10-18 | DMM2-Proc-PO-092, DMM2-Proc-Delv-4798_R SS, DMM2-Proc-Delv-6538 | Labor [43.49 h]; Operator [43.49 h]; Mobile Crane [20 h]; Lighting poles with 1 arm, height of ( 10) meters |
| DMM2-Proc-Delv-6548_R | Manuf. & Delivery for SL Luminares Materials(Rem) | 10d | 2026-10-07 | 2026-10-18 | DMM2-Proc-PO-093, DMM2-Proc-Delv-4808_R SS, DMM2-Proc-Delv-6548 | Labor [34.79 h]; Operator [34.79 h]; Mobile Crane [16 h]; Street Lighting( LED), Lamp Lumen: 14560, Luminare Lumen:12700 , complete with control gear and lamp, (80) WATT. |
| DMM2-Proc-Delv-7204_R | Manuf. & Delivery for Curbstone Materials(Rem) | 13d | 2026-09-19 A | 2026-10-15 | DMM2-Proc-Delv-7205 FF, DMM2-Proc-PO-05, DMM2-Proc-Delv-7204 | Labor [139.18 h]; Operator [139.18 h]; Mobile Crane [64 h] |
| DMM2-Proc-Delv-7201_R | Manuf. & Delivery for Agg. Base Coarse(Rem) | 31d | 2026-09-27 A | 2026-10-25 | DMM2-Proc-PO-02, DMM2-Proc-Delv-7203, DMM2-Proc-Delv-7201 | Labor [20.88 h]; Operator [20.88 h]; Mobile Crane [9.6 h] |
| DMM2-Proc-Delv-7202_R | Manuf. & Delivery for Asphalt Materials(Rem) | 35d | 2026-09-29 A | 2026-10-27 | DMM2-Proc-PO-03, DMM2-Proc-Delv-7201_R SS, DMM2-Proc-Delv-7202 | Labor [156.57 h]; Operator [156.57 h]; Mobile Crane [72 h] |
| DMM2-Proc-Delv-7264_R | Manuf. & Delivery for Agg. Base Coarse(Rem) | 7d | 2026-09-23 A | 2026-10-11 | DMM2-Proc-PO-02, DMM2-Proc-Delv-7201_R SS, DMM2-Proc-Delv-7264 | Labor [121.78 h]; Operator [121.78 h]; Mobile Crane [56 h] |
| DMM2-Proc-Delv-7274_R | Manuf. & Delivery for Steel Reinforcement Materials(Rem) | 18d | 2026-09-19 A | 2026-09-20 A | DMM2-Proc-PO-012, DMM2-Proc-Delv-7274 | Labor [313.14 h]; Operator [313.14 h]; Mobile Crane [144 h] |
| DMM2-Proc-Delv-7277_R | Manuf. & Delivery for uPVC Pipes Materials(Rem) | 6d | 2026-09-21 A | 2026-09-22 A | DMM2-Proc-Delv-7213, DMM2-Proc-Delv-7277 | Labor [100.64 h]; Operator [100.64 h]; Mobile Crane [46.28 h] |
| DMM2-Proc-Delv-7404_R | Manuf. & Delivery for Agg. Base Coarse(Rem) | 6d | 2026-09-20 A | 2026-10-10 | DMM2-Proc-PO-02, DMM2-Proc-Delv-7264_R SS, DMM2-Proc-Delv-7404 | Labor [104.38 h]; Operator [104.38 h]; Mobile Crane [48 h] |
| DMM2-Proc-Delv-7405_R | Manuf. & Delivery for Asphalt Materials(Rem) | 10.5d | 2026-09-24 A | 2026-10-13 | DMM2-Proc-PO-03, DMM2-Proc-Delv-7500, DMM2-Proc-Delv-7498_R SS, DMM2-Proc-Delv-7405 | Labor [182.67 h]; Operator [182.67 h]; Mobile Crane [84 h] |
| DMM2-Proc-Delv-7417_R | Manuf. & Delivery for uPVC Pipes Materials(Rem) | 5.2d | 2026-09-21 A | 2026-09-27 A | DMM2-Proc-Delv-7277_R SS, DMM2-Proc-Delv-7417 | Labor [90.46 h]; Operator [90.46 h]; Mobile Crane [41.6 h] |
| DMM2-Proc-Delv-7439_R | Manuf. & Delivery for Geotextile Membrane Materials(Rem) | 14d | 2026-10-07 | 2026-10-22 | DMM2-Proc-PO-059, DMM2-Proc-Delv-7439 | Labor [243.56 h]; Operator [243.56 h]; Mobile Crane [112 h] |
| DMM2-Proc-Delv-7498_R | Manuf. & Delivery for Agg. Base Coarse(Rem) | 7.2d | 2026-10-07 | 2026-10-15 | DMM2-Proc-PO-02, DMM2-Proc-Delv-7404_R SS, DMM2-Proc-Delv-7498 | Labor [125.26 h]; Operator [125.26 h]; Mobile Crane [57.6 h] |
| DMM2-Proc-Delv-7510_R | Manuf. & Delivery for uPVC Pipes Materials(Rem) | 10.4d | 2026-09-22 A | 2026-09-29 A | DMM2-Proc-Delv-7417_R SS, DMM2-Proc-Delv-7510 | Labor [180.93 h]; Operator [180.93 h]; Mobile Crane [83.2 h] |
| B1.1.31 23 23.22_R | Engineering Backfiling - Service Road(Rem) | 12d | 2026-09-19 A | 2026-10-19 | B1.1.31 23 23.01, B1.1.31 23 23.32, B1.1.31 23 23.22 | Fill [40969.3]; Labor [274.43 h]; Foreman [137.21 h]; Operator [274.43 h]; Surveyor [137.21 h]; Surveyor Helper [137.21 h]; Loader [140.8 h]; Water Tanker [140.8 h]; Dump Truck [140.8 h]; Plate Compactor [140.8 h]; Roller Compactor [140.8 h] |
| B1.1.31 23 16.01_R | Excavation (all types of soil)(Rem) | 3.99d | 2026-10-07 | 2026-10-11 | B1.1.31 23 19.01, B1.1.31 23 16.01 | Excavation (all types of soil) [5074.27]; Labor [2.49 h]; Foreman [1.25 h]; Operator [2.49 h]; Surveyor [1.25 h]; Surveyor Helper [1.25 h]; Excavator (With Bucket) [1.28 h]; Water Tanker [1.28 h]; Dump Truck [1.28 h]; Plate Compactor [1.28 h] |
| B5.33 05 13.014_R | Test, Internal Finishing, Benching & Cover(Rem) | 3.04d | 2026-10-07 | 2026-10-11 | B5.33 05 13.013, B5.33 05 13.014 | Labor [35.43 h]; Foreman [17.71 h]; Plumber Helper [17.71 h]; Plumber [17.71 h]; Mason [17.71 h]; MH depth 0 - 1.5m [0.15] |
| B5.33 05 13.024_R | Test, Internal Finishing, Benching & Cover(Rem) | 3.04d | 2026-10-11 | 2026-10-14 | B5.33 05 13.023, B5.33 05 13.024, B5.33 05 13.014_R | Labor [35.43 h]; Foreman [17.71 h]; Plumber Helper [17.71 h]; Plumber [17.71 h]; Mason [17.71 h]; MH depth 1.51 - 2.5m [0.28] |
| B5.33 05 13.034_R | Test, Internal Finishing, Benching & Cover(Rem) | 3.04d | 2026-10-14 | 2026-10-18 | B5.33 05 13.033, B5.33 05 13.034, B5.33 05 13.024_R | Labor [35.43 h]; Foreman [17.71 h]; Plumber Helper [17.71 h]; Plumber [17.71 h]; Mason [17.71 h]; MH depth 2.51 - 3.5m [0.31] |
| B5.33 05 13.044_R | Test, Internal Finishing, Benching & Cover(Rem) | 3.04d | 2026-10-18 | 2026-10-21 | B5.33 05 13.043, B5.33 05 13.044, B5.33 05 13.034_R | Labor [35.43 h]; Foreman [17.71 h]; Plumber Helper [17.71 h]; Plumber [17.71 h]; Mason [17.71 h]; MH depth 2.51- 3.5 m with back drop [0.06] |
| B5.33 05 13.054_R | Test, Internal Finishing, Benching & Cover(Rem) | 3.04d | 2026-10-25 | 2026-10-28 | B5.33 05 13.053, B5.33 05 13.054, B5.33 05 13.064_R | Labor [35.43 h]; Foreman [17.71 h]; Plumber Helper [17.71 h]; Plumber [17.71 h]; Mason [17.71 h]; MH depth 3.51 -4.5m [0.58] |
| B5.33 05 13.064_R | Test, Internal Finishing, Benching & Cover(Rem) | 3.04d | 2026-10-21 | 2026-10-25 | B5.33 05 13.063, B5.33 05 13.064, B5.33 05 13.044_R | Labor [35.43 h]; Foreman [17.71 h]; Plumber Helper [17.71 h]; Plumber [17.71 h]; Mason [17.71 h]; MH depth 3.51- 4.5 m with back drop [0.11] |
| B6.33 05 13.014_R | Test, Internal Finishing, Benching & Cover(Rem) | 3d | 2026-09-17 A | 2026-09-19 A | B6.33 05 13.013, B6.33 05 13.014 | Labor [6.24 h]; Foreman [3.12 h]; Plumber Helper [3.12 h]; Plumber [3.12 h]; Mason [3.12 h]; MH depth 1.50 - 2.5m [0.11] |
| B6.33 05 13.024_R | Test, Internal Finishing, Benching & Cover(Rem) | 3d | 2026-09-20 A | 2026-09-22 A | B6.33 05 13.023, B6.33 05 13.024, B6.33 05 13.014_R | Labor [6.24 h]; Foreman [3.12 h]; Plumber Helper [3.12 h]; Plumber [3.12 h]; Mason [3.12 h]; MH depth 2.51 - 3.5m [0.03] |
| B6.33 05 13.105_R | Test, Internal Finishing, Benching & Cover(Rem) | 3d | 2026-09-24 A | 2026-09-26 A | B6.33 05 13.95, B6.33 05 13.105 | Labor [6.24 h]; Foreman [3.12 h]; Plumber Helper [3.12 h]; Plumber [3.12 h]; Mason [3.12 h]; MH depth 3.51 - 4.5m [0.02] |
| B6.33 05 13.044_R | Test, Internal Finishing, Benching & Cover(Rem) | 3d | 2026-09-24 A | 2026-09-27 A | B6.33 05 13.043, B6.33 05 13.044, B6.33 05 13.024_R, B6.33 05 13.105_R | Labor [6.24 h]; Foreman [3.12 h]; Plumber Helper [3.12 h]; Plumber [3.12 h]; Mason [3.12 h]; MH depth 1.50 - 2.5m [0.12] |
| B6.33 05 13.054_R | Test, Internal Finishing, Benching & Cover(Rem) | 3d | 2026-09-28 A | 2026-09-30 A | B6.33 05 13.053, B6.33 05 13.054, B6.33 05 13.044_R | Labor [6.24 h]; Foreman [3.12 h]; Plumber Helper [3.12 h]; Plumber [3.12 h]; Mason [3.12 h]; MH depth 2.51 - 3.5m [0.02] |
| B6.33 05 13.074_R | Test, Internal Finishing, Benching & Cover(Rem) | 3d | 2026-10-01 A | 2026-10-04 A | B6.33 05 13.073, B6.33 05 13.074, B6.33 05 13.054_R | Labor [6.24 h]; Foreman [3.12 h]; Plumber Helper [3.12 h]; Plumber [3.12 h]; Mason [3.12 h]; Storm MH depth 2.51 - 3.5m [0.04] |
| B6.33 05 13.084_R | Test, Internal Finishing, Benching & Cover(Rem) | 3d | 2026-10-05 A | 2026-10-05 A | B6.33 05 13.083, B6.33 05 13.084, B6.33 05 13.074_R | Labor [6.24 h]; Foreman [3.12 h]; Plumber Helper [3.12 h]; Plumber [3.12 h]; Mason [3.12 h]; Storm MH depth 3.51 -4.5m [0.04] |
| B6.33 05 63.072_R | Backfilling, DI Frame & Grate Cover Fixing(Rem) | 3d | 2026-09-24 A | 2026-09-29 A | B6.33 05 63.074, B6.33 42 11.351010, B6.33 05 63.072 | Labor [7.8 h]; Foreman [3.9 h]; Operator [7.8 h]; Surveyor [3.9 h]; Surveyor Helper [3.9 h]; Loader [4 h]; Water Tanker [4 h]; Dump Truck [4 h]; Plate Compactor [4 h]; Single Catch basin [0.6] |
| B6.33 05 63.082_R | Backfilling, DI Frame & Grate Cover Fixing(Rem) | 3d | 2026-09-17 A | 2026-09-22 A | B6.33 05 63.084, B6.33 42 11.361010, B6.33 05 63.082 | Labor [7.8 h]; Foreman [3.9 h]; Operator [7.8 h]; Surveyor [3.9 h]; Surveyor Helper [3.9 h]; Loader [4 h]; Water Tanker [4 h]; Dump Truck [4 h]; Plate Compactor [4 h]; Double Catch basin [0.12] |
| B3.33 05 63.02.014_R | Chamber Curing, Finishing & Steel Cover(Rem) | 3d | 2026-10-07 | 2026-10-10 | B3.33 05 63.02.013, B3.33 05 63.02.014 | Labor [31.18 h]; Mason [15.59 h]; POT Air valve Dia. 50 mm on pipes with Dia. less than 315 mm [0.12]; Air valve chamber; on less than 315 mm Dia. pipeline [0.09] |
| B3.1. 33 14 13.015_R | Backfilling & Warrning Tape(Rem) | 4d | 2026-09-22 A | 2026-09-26 A | B3.1. 33 14 13.014, B3.1. 33 14 13.015 | Labor [3.9 h]; Foreman [1.95 h]; Operator [7.8 h]; Surveyor [1.95 h]; Surveyor Helper [1.95 h]; Loader [2 h]; Water Tanker [2 h]; Dump Truck [2 h]; Plate Compactor [2 h]; Roller Compactor [2 h]; Depth: 0.0m - 1.5m [3.29] |
| B3.1. 33 14 13.025_R | Backfilling & Warrning Tape(Rem) | 4d | 2026-09-21 A | 2026-09-26 A | B3.1. 33 14 13.024, B3.1. 33 14 13.014, B3.1. 33 14 13.025, B3.1. 33 14 13.015_R | Labor [3.9 h]; Foreman [1.95 h]; Operator [7.8 h]; Surveyor [1.95 h]; Surveyor Helper [1.95 h]; Loader [2 h]; Water Tanker [2 h]; Dump Truck [2 h]; Plate Compactor [2 h]; Roller Compactor [2 h]; Depth: 1.51m - 2.5m [0.21] |
| B3.33 05 63.02.41_R | Chamber Curing, Finishing & Steel Cover(Rem) | 4d | 2026-10-07 | 2026-10-11 | B3.33 05 63.02.43, B3.33 05 63.02.41 | Labor [31.18 h]; Mason [15.59 h]; FF Air valve Dia. 50 mm on pipes with Dia. less than 315 mm [0.12]; FF Air valve chamber; on less than 315 mm Dia. pipeline [0.09] |
| B3.33 05 63.02.86_R | Chamber Curing, Finishing & Steel Cover(Rem) | 3d | 2026-10-07 | 2026-10-10 | B3.33 05 63.02.88, B3.33 05 63.02.86 | Labor [31.18 h]; Mason [15.59 h]; TSE Air valve Dia. 50 mm on pipes with Dia. less than 315 mm [0.1] |
| B3.33 05 63.01.65_R | Foundations(Rem) | 2.2d | 2026-10-07 | 2026-10-10 | B3.33 05 63.01.67, B3.33 05 63.01.65 | Labor [18.71 h]; Foreman [9.36 h]; Laboratory Officer [9.36 h]; Carpenter [9.36 h]; Steelfixer [9.36 h]; Mason [9.36 h]; TSE Wash out valve Dia. 100 mm on pipes with Dia. 110-400 mm [0.04] |
| B3.33 05 63.01.66_R | Chamber Curing, Finishing & Steel Cover(Rem) | 2.6d | 2026-10-07 | 2026-10-10 | B3.33 05 63.01.68_R SS, B3.33 05 63.01.66 | Labor [24.95 h]; Mason [12.47 h]; TSE Wash out valve Dia. 100 mm on pipes with Dia. 110-400 mm [0.08] |
| B3.33 05 63.01.68_R | Chambers Walls Conc Cast In Situ(Rem) | 2.2d | 2026-10-07 | 2026-10-10 | B3.33 05 63.01.65_R SS, B3.33 05 63.01.68 | Labor [18.71 h]; Foreman [9.36 h]; Laboratory Officer [9.36 h]; Carpenter [9.36 h]; Steelfixer [9.36 h]; Mason [9.36 h]; TSE Wash out valve Dia. 100 mm on pipes with Dia. 110-400 mm [0.04] |
| B2.33 71 00.021_R | Backfilling & Warrning Tape(Rem) | 3d | 2026-10-07 | 2026-10-10 | B2.33 71 00.02, B2.33 71 00.021 | Labor [18.09 h]; Foreman [9.04 h]; Operator [36.17 h]; Surveyor [9.04 h]; Surveyor Helper [9.04 h]; Loader [9.28 h]; Water Tanker [9.28 h]; Dump Truck [9.28 h]; Plate Compactor [9.28 h]; Roller Compactor [9.28 h]; Excavation for Trench size 60cm wide and 80cm deep ( for 2 cables) [48.21]; Duct bank for MV cables UPVC (4xDia. 150mm) [0.8] |
| B2.33 71 00 02 101_R | Shuttering, Steel Fixing Incl. UPVC Pipe & Conc. Cast(Rem) | 2d | 2026-10-07 | 2026-10-08 | B2.33 71 00 02 100, B2.33 71 00 02 101 | Labor [93.55 h]; Laboratory Officer [46.78 h]; Carpenter [46.78 h]; Steelfixer [46.78 h]; Mason [46.78 h]; Surveyor [46.78 h]; Surveyor Helper [46.78 h]; Excavation for Trench size 90cm wide and 65cm deep ( for 3 cables); Duct bank for LV cables UPVC (6xDia. 110mm) [15]; SL LV Excavation for Trench size 90cm wide and 65cm deep ( for 3 cables) |
| B2.33 71 19 62_R | Land Adjustment(Rem) | 1d | 2026-10-07 | 2026-10-07 | B2.33 71 00 02 100, DMM2-Proc-PO-091, B2.33 71 19 62 | Labor [15.59 h]; Foreman [7.8 h]; Operator [15.59 h]; Surveyor [3.9 h]; Surveyor Helper [3.9 h]; Excavator (With Bucket) [8 h]; Water Tanker [8 h]; Dump Truck [8 h]; Roller Compactor [8 h]; SL Cable, Copper 4x10mm2/ CU/XLPE/SWA/PVC + 1x10mm2 CU/PVC [208.25] |
| B2.33 71 49.23.112_R | Cable Pulling(Rem) | 2d | 2026-10-07 | 2026-10-08 | DMM2-Proc-Delv-1308, B2.33 71 19 62_R SS, B2.33 71 49.23.112 | Labor [31.18 h]; Foreman [15.59 h]; Surveyor [15.59 h]; Surveyor Helper [15.59 h]; Electrician [15.59 h]; SL Cable, Copper 4x10mm2/ CU/XLPE/SWA/PVC + 1x10mm2 CU/PVC [624.75] |
| B2.26.56.19.01_R | Lighting Luminares Inst(Rem) | 2d | 2026-10-07 | 2026-10-08 | B2.33 71 16.023_R SS, B2.26.56.19.01 | Labor [3.74 h]; Operator [3.74 h]; Manlift [1.92 h]; Street Lighting( LED), Lamp Lumen: 14560, Luminare Lumen:12700 , complete with control gear and lamp, (80) WATT. [4.32] |
| B2.33 71 16.021_R | Excavation(Rem) | 2d | 2026-10-07 | 2026-10-08 | B1.2.32 11 26.01.1_R SS, B2.33 71 16.021 | Labor [2.49 h]; Foreman [1.25 h]; Operator [2.49 h]; Surveyor [1.25 h]; Surveyor Helper [1.25 h]; Excavator (With Bucket) [1.28 h]; Dump Truck [1.28 h]; Lighting poles with 1 arm, height of ( 10) meters [0.53] |
| B2.33 71 16.022_R | PC & RC Foundation(Rem) | 2d | 2026-10-07 | 2026-10-08 | B2.33 71 16.021_R SS, B2.33 71 16.022 | Labor [4.99 h]; Foreman [2.49 h]; Laboratory Officer [2.49 h]; Carpenter [2.49 h]; Steelfixer [2.49 h]; Mason [2.49 h]; Lighting poles with 1 arm, height of ( 10) meters [0.53] |
| B2.33 71 16.023_R | Lighting Poles Installation Incl power box, Cables(Rem) | 2d | 2026-10-07 | 2026-10-08 | B2.33 71 16.022_R SS, B2.33 71 16.023 | Labor [3.74 h]; Operator [3.74 h]; Mobile Crane [1.92 h]; Electrician [1.87 h]; Lighting poles with 1 arm, height of ( 10) meters [1.06] |
| B2.31 23 00.571_R | Excavation(Rem) | 2d | 2026-10-07 | 2026-10-08 | DMM2-Proc-PO-089, B2.33 71 00.021_R SS, B2.31 23 00.571 | Labor [3.74 h]; Foreman [1.87 h]; Operator [3.74 h]; Surveyor [1.87 h]; Surveyor Helper [1.87 h]; Excavator (With Bucket) [1.92 h]; Water Tanker [1.92 h]; Dump Truck [1.92 h]; Plate Compactor [1.92 h]; Manhole Type 1 [0.15] |
| B2.33 71 00.141_R | Manhole Installation(Rem) | 2d | 2026-10-07 | 2026-10-08 | DMM2-Proc-Delv-1288, B2.31 23 00.571_R SS, B2.33 71 00.141 | Labor [3.74 h]; Laboratory Officer [1.87 h]; Carpenter [1.87 h]; Steelfixer [1.87 h]; Mason [1.87 h]; Surveyor [1.87 h]; Surveyor Helper [1.87 h]; Manhole Type 1 [0.45] |
| B2.33 71 00.151_R | Backfilling & Warrning Tape(Rem) | 2d | 2026-10-07 | 2026-10-08 | B2.33 71 00.181, B2.33 71 00.141_R SS, B2.33 71 00.151 | Labor [9.36 h]; Foreman [4.68 h]; Operator [18.71 h]; Surveyor [4.68 h]; Surveyor Helper [4.68 h]; Loader [4.8 h]; Water Tanker [4.8 h]; Dump Truck [4.8 h]; Plate Compactor [4.8 h]; Roller Compactor [4.8 h]; Manhole Type 1 [0.15] |
| B2.31 23 00.581_R | Excavation(Rem) | 2d | 2026-10-07 | 2026-10-08 | B2.31 23 00.571_R SS, B2.31 23 00.581 | Labor [3.74 h]; Foreman [1.87 h]; Operator [3.74 h]; Surveyor [1.87 h]; Surveyor Helper [1.87 h]; Excavator (With Bucket) [1.92 h]; Water Tanker [1.92 h]; Dump Truck [1.92 h]; Plate Compactor [1.92 h]; Manhole Type 2 [0.06] |
| B2.33 71 00.161_R | Manhole Installation(Rem) | 2d | 2026-10-07 | 2026-10-08 | B2.31 23 00.581_R SS, B2.33 71 00.161 | Labor [3.74 h]; Laboratory Officer [1.87 h]; Carpenter [1.87 h]; Steelfixer [1.87 h]; Mason [1.87 h]; Surveyor [1.87 h]; Surveyor Helper [1.87 h]; Manhole Type 2 [0.19] |
| B2.33 71 00.171_R | Backfilling & Warrning Tape(Rem) | 2d | 2026-10-07 | 2026-10-08 | B2.33 71 00.161_R SS, B2.33 71 00.171 | Labor [7.48 h]; Foreman [3.74 h]; Operator [14.97 h]; Surveyor [3.74 h]; Surveyor Helper [3.74 h]; Loader [3.84 h]; Water Tanker [3.84 h]; Dump Truck [3.84 h]; Plate Compactor [3.84 h]; Roller Compactor [3.84 h]; Manhole Type 2 [0.06] |
| B2.1.33 81 26.13_R | Backfilling & Warrning Tape(Rem) | 2d | 2026-10-07 | 2026-10-08 | B2.33 71 00.171_R SS, B2.1.33 81 26.13 | Labor [9.36 h]; Foreman [4.68 h]; Operator [18.71 h]; Surveyor [4.68 h]; Surveyor Helper [4.68 h]; Loader [4.8 h]; Water Tanker [4.8 h]; Dump Truck [4.8 h]; Plate Compactor [4.8 h]; Roller Compactor [4.8 h]; (6*50mm) HDPE ducts [15.1] |
| B2.1.33 81 26.23_R | Backfilling & Warrning Tape(Rem) | 2d | 2026-10-07 | 2026-10-08 | B2.1.33 81 26.13_R SS, B2.1.33 81 26.23 | Labor [9.36 h]; Foreman [4.68 h]; Operator [18.71 h]; Surveyor [4.68 h]; Surveyor Helper [4.68 h]; Loader [4.8 h]; Water Tanker [4.8 h]; Dump Truck [4.8 h]; Plate Compactor [4.8 h]; Roller Compactor [4.8 h]; (6*50mm+2*32mm) HDPE ducts [5.82] |
| B2.1.33 81 26.31_R | Excavation(Rem) | 2d | 2026-10-07 | 2026-10-08 | B2.1.33 81 26.21, B2.1.33 81 26.31 | Labor [3.74 h]; Foreman [1.87 h]; Operator [3.74 h]; Surveyor [1.87 h]; Surveyor Helper [1.87 h]; Excavator (With Bucket) [1.92 h]; Water Tanker [1.92 h]; Dump Truck [1.92 h]; Plate Compactor [1.92 h]; (6*50mm+4*32mm) HDPE ducts [1.8] |
| B2.1.33 81 26.32_R | HDPE Pipe, Shuttering, Steel Fixing & Conc. Cast(Rem) | 2d | 2026-10-07 | 2026-10-08 | B2.1.33 81 26.31_R SS, B2.1.33 81 26.12, B2.1.33 81 26.32 | Labor [11.23 h]; Laboratory Officer [5.61 h]; Carpenter [5.61 h]; Steelfixer [5.61 h]; Mason [5.61 h]; Surveyor [5.61 h]; Surveyor Helper [5.61 h]; (6*50mm+4*32mm) HDPE ducts [5.4] |
| B2.1.33 81 26.33_R | Backfilling & Warrning Tape(Rem) | 2d | 2026-10-07 | 2026-10-08 | B2.1.33 81 26.32_R SS, B2.1.33 81 26.33 | Labor [9.36 h]; Foreman [4.68 h]; Operator [18.71 h]; Surveyor [4.68 h]; Surveyor Helper [4.68 h]; Loader [4.8 h]; Water Tanker [4.8 h]; Dump Truck [4.8 h]; Plate Compactor [4.8 h]; Roller Compactor [4.8 h]; (6*50mm+4*32mm) HDPE ducts [1.8] |
| B2.1.33 81 26.41_R | Excavation(Rem) | 2d | 2026-10-07 | 2026-10-08 | B2.1.33 81 26.31_R SS, B2.1.33 81 26.41 | Labor [3.74 h]; Foreman [1.87 h]; Operator [3.74 h]; Surveyor [1.87 h]; Surveyor Helper [1.87 h]; Excavator (With Bucket) [1.92 h]; Water Tanker [1.92 h]; Dump Truck [1.92 h]; Plate Compactor [1.92 h]; (2*32mm) HDPE ducts [1.03] |
| B2.1.33 81 26.42_R | HDPE Pipe, Shuttering, Steel Fixing & Conc. Cast(Rem) | 2d | 2026-10-07 | 2026-10-08 | B2.1.33 81 26.41_R SS, B2.1.33 81 26.22, B2.1.33 81 26.42 | Labor [11.23 h]; Laboratory Officer [5.61 h]; Carpenter [5.61 h]; Steelfixer [5.61 h]; Mason [5.61 h]; Surveyor [5.61 h]; Surveyor Helper [5.61 h]; (2*32mm) HDPE ducts [3.1] |
| B2.1.33 81 26.43_R | Backfilling & Warrning Tape(Rem) | 2d | 2026-10-07 | 2026-10-08 | B2.1.33 81 26.42_R SS, B2.1.33 81 26.43 | Labor [9.36 h]; Foreman [4.68 h]; Operator [18.71 h]; Surveyor [4.68 h]; Surveyor Helper [4.68 h]; Loader [4.8 h]; Water Tanker [4.8 h]; Dump Truck [4.8 h]; Plate Compactor [4.8 h]; Roller Compactor [4.8 h]; (2*32mm) HDPE ducts [1.03] |
| B2.1.33 81 26.51_R | Excavation(Rem) | 2d | 2026-10-07 | 2026-10-08 | B2.1.33 81 26.41_R SS, B2.1.33 81 26.11, B2.1.33 81 26.51 | Labor [3.74 h]; Foreman [1.87 h]; Operator [3.74 h]; Surveyor [1.87 h]; Surveyor Helper [1.87 h]; Excavator (With Bucket) [1.92 h]; Water Tanker [1.92 h]; Dump Truck [1.92 h]; Plate Compactor [1.92 h]; (4*32mm) HDPE ducts [0.62] |
| B2.1.33 81 26.52_R | HDPE Pipe, Shuttering, Steel Fixing & Conc. Cast(Rem) | 2d | 2026-10-07 | 2026-10-08 | B2.1.33 81 26.51_R SS, B2.1.33 81 26.52 | Labor [11.23 h]; Laboratory Officer [5.61 h]; Carpenter [5.61 h]; Steelfixer [5.61 h]; Mason [5.61 h]; Surveyor [5.61 h]; Surveyor Helper [5.61 h]; (4*32mm) HDPE ducts [1.85] |
| B2.1.33 81 26.53_R | Backfilling & Warrning Tape(Rem) | 2d | 2026-10-07 | 2026-10-08 | B2.1.33 81 26.52_R SS, B2.1.33 81 26.33_R SS, B2.1.33 81 26.53 | Labor [9.36 h]; Foreman [4.68 h]; Operator [18.71 h]; Surveyor [4.68 h]; Surveyor Helper [4.68 h]; Loader [4.8 h]; Water Tanker [4.8 h]; Dump Truck [4.8 h]; Plate Compactor [4.8 h]; Roller Compactor [4.8 h]; (4*32mm) HDPE ducts [0.62] |
| B2.1.02 41 00.011_R | Excavation(Rem) | 2d | 2026-10-07 | 2026-10-08 | B2.1.33 81 26.51_R SS, B2.1.02 41 00.011 | Labor [3.74 h]; Foreman [1.87 h]; Operator [3.74 h]; Surveyor [1.87 h]; Surveyor Helper [1.87 h]; Excavator (With Bucket) [1.92 h]; Water Tanker [1.92 h]; Dump Truck [1.92 h]; Plate Compactor [1.92 h]; Telecommunication Manholes [0.06]; Telecommunication network components [17.18] |
| B2.1.02 41 00.012_R | Old Manholes Grubbing(Rem) | 2d | 2026-10-07 | 2026-10-08 | B2.1.02 41 00.011_R SS, B2.1.02 41 00.012 | Labor [5.61 h]; Operator [5.61 h]; JCB [2.88 h]; Telecommunication Manholes [0.12] |
| B2.1.02 41 00.013_R | Old Network Components Grubbing(Rem) | 2d | 2026-10-07 | 2026-10-08 | B2.1.02 41 00.011_R SS, B2.1.02 41 00.013 | Labor [5.61 h]; Operator [5.61 h]; JCB [2.88 h]; Telecommunication network components [34.35] |
| B2.1.02 41 00.014_R | New Manholes Installation(Rem) | 2d | 2026-10-07 | 2026-10-08 | B2.1.02 41 00.012_R SS, B2.1.02 41 00.014 | Foreman [3.74 h]; Operator [7.48 h]; Boom Truck [3.84 h]; Electrician [3.74 h]; Telecommunication Manholes [0.24] |
| B2.1.02 41 00.015_R | New Network Components Installation(Rem) | 2d | 2026-10-07 | 2026-10-08 | B2.1.02 41 00.013_R SS, B2.1.02 41 00.015 | Foreman [3.74 h]; Operator [7.48 h]; Boom Truck [3.84 h]; Electrician [3.74 h]; Telecommunication network components [68.7] |
| B1.2.32 11 13.01.1_R | Subgrade(Rem) | 4.9d | 2026-09-26 A | 2026-10-07 | B1.2.31 23 23.01.1, B1.2.32 11 13.01.1 | Subgrade [6919.81]; Labor [76.4 h]; Foreman [38.2 h]; Operator [76.4 h]; Surveyor [38.2 h]; Surveyor Helper [38.2 h]; Grader [39.2 h]; Loader [39.2 h]; Water Tanker [39.2 h]; Dump Truck [39.2 h]; Plate Compactor [39.2 h]; Roller Compactor [39.2 h] |
| B1.2.32 11 23.01.1_R | Aggregate Base Course(Rem) | 6d | 2026-10-07 | 2026-10-13 | B1.2.32 11 13.01.1_R FF, B1.2.32 11 23.01.1 | Aggregate base course [1318.06]; Labor [17.15 h]; Foreman [8.58 h]; Operator [17.15 h]; Surveyor [8.58 h]; Surveyor Helper [8.58 h]; Grader [8.8 h]; Loader [8.8 h]; Water Tanker [8.8 h]; Dump Truck [8.8 h]; Plate Compactor [8.8 h]; Roller Compactor [8.8 h] |
| 32 16 133_R | Haunching(Rem) | 3d | 2026-10-12 | 2026-10-14 | 32 16 132_R FF, 32 16 133 | Curb Stone, Type K1 [569.99]; Edge Curb, Type K4 [418.26]; Heel Curb, Type K5 [273.62]; Labor [93.55 h]; Carpenter [46.78 h]; Mason [46.78 h]; Surveyor [46.78 h]; Surveyor Helper [46.78 h] |
| 32 16 131_R | Excavation(Rem) | 2d | 2026-10-13 | 2026-10-14 | B2.31 23 00.41 FF, 32 16 131 | Curb Stone, Type K1 [569.99]; Edge Curb, Type K4 [418.26]; Heel Curb, Type K5 [273.62]; Labor [46.78 h]; Foreman [23.39 h]; Operator [46.78 h]; Surveyor [23.39 h]; Surveyor Helper [23.39 h]; JCB [24 h]; Water Tanker [24 h]; Dump Truck [24 h]; Plate Compactor [24 h] |
| 32 16 132_R | PCC(Rem) | 2d | 2026-10-13 | 2026-10-14 | 32 16 131_R FF, 32 16 132 | Curb Stone, Type K1 [569.99]; Edge Curb, Type K4 [418.26]; Heel Curb, Type K5 [273.62]; Labor [93.55 h]; Mason [46.78 h]; Surveyor [46.78 h]; Surveyor Helper [46.78 h] |
| B1.2.32 16.13.01.1_R | Curb Stone, Type K1(Rem) | 2d | 2026-10-14 | 2026-10-17 | B1.2.32 14 13.13.1 FF, 32 16 133_R SS, B1.2.32 16.13.01.1 | Curb Stone, Type K1 [2051.95]; Labor [126.3 h]; Foreman [63.15 h]; Mason [63.15 h]; Operator [126.3 h]; Surveyor [63.15 h]; Surveyor Helper [63.15 h]; JCB [64.8 h] |
| B1.2.32 11 26.01.1_R | Bituminous Base Course including Prime Coat (MC1) and tack coat (RC2)(Rem) | 6d | 2026-09-30 A | 2026-10-10 | B1.2.32 11 23.01.1_R SS, B1.2.32 11 26.01.1 | Bituminous base course(Grading I - Class A) [722.48]; Labor [7.48 h]; Foreman [3.74 h]; Operator [7.48 h]; Surveyor [3.74 h]; Surveyor Helper [3.74 h]; Dump Truck [3.84 h]; Roller Compactor [3.84 h]; MC1/RC2 Sprayer [3.84 h] |
| B7.32 31 26.021_R | Earthwork(Rem) | 5d | 2026-10-11 | 2026-10-17 | 10 14 53.1 FF, B7.32 31 26.021 | Labor [14.03 h]; Foreman [7.02 h]; Operator [14.03 h]; Surveyor [7.02 h]; Surveyor Helper [7.02 h]; Excavator (With Bucket) [7.2 h]; Water Tanker [7.2 h]; Dump Truck [7.2 h]; Plate Compactor [7.2 h]; Steel fence (MODON) [28.01] |
| B7.32 31 26.022_R | Foundation(Rem) | 4.2d | 2026-10-11 | 2026-10-15 | B7.32 31 26.021_R SS, B7.32 31 26.022 | Labor [18.71 h]; Laboratory Officer [9.36 h]; Carpenter [9.36 h]; Steelfixer [9.36 h]; Mason [9.36 h]; Surveyor [9.36 h]; Surveyor Helper [9.36 h]; Steel fence (MODON) [28.01] |
| B6.33 05 63.07.1_R | Excavation, Compaction & Vapour Barrier(Rem) | 3d | 2026-11-12 | 2026-11-16 | B6.33 05 13.09.1 FF, B6.33 05 63.07.1 | Labor [29.7 h]; Foreman [14.85 h]; Operator [29.7 h]; Surveyor [14.85 h]; Surveyor Helper [14.85 h]; Excavator (With Bucket) [15.24 h]; Water Tanker [15.24 h]; Dump Truck [15.24 h]; Roller Compactor [15.24 h]; Single Catch basin [2.84] |
| B6.33 05 63.07.2_R | Blinding Conc.(Rem) | 3d | 2026-11-12 | 2026-11-16 | B6.33 05 63.07.1_R SS, B6.33 05 63.07.2 | Labor [29.7 h]; Foreman [14.85 h]; Laboratory Officer [14.85 h]; Carpenter [14.85 h]; Steelfixer [14.85 h]; Mason [14.85 h]; Single Catch basin [1.89] |
| B6.33 05 63.07.3_R | Catch Basin Installation(Rem) | 4d | 2026-11-12 | 2026-11-17 | B6.33 05 63.07.2_R SS, B6.33 05 63.07.3 | Labor [44.55 h]; Foreman [22.27 h]; Carpenter [22.27 h]; Steelfixer [22.27 h]; Mason [22.27 h]; Operator [44.55 h]; Surveyor [22.27 h]; Surveyor Helper [22.27 h]; Boom Truck [22.86 h]; Single Catch basin [8.51] |
| B6.33 42 11.35.11_R | Catch Basin Opening Prep.(Rem) | 3d | 2026-09-26 A | 2026-09-29 A | B6.33 05 63.07.3_R SS, B6.33 42 11.35.11 | Labor [30 h]; Foreman [15 h]; Plumber Helper [15 h]; Plumber [15 h]; less than 1.5 [44.84] |
| B1.2.31 23 23.01.2_R | Embankment Backfiling(Rem) | 13d | 2026-10-07 | 2026-10-21 | B1.2.31 23 16.01.2, B1.2.31 23 23.01.2 | Embankment backfiling [105164]; Labor [205.82 h]; Foreman [102.91 h]; Operator [205.82 h]; Surveyor [102.91 h]; Surveyor Helper [102.91 h]; Loader [105.6 h]; Water Tanker [105.6 h]; Dump Truck [105.6 h]; Plate Compactor [105.6 h]; Roller Compactor [105.6 h] |
| B1.2.32 11 13.01.2_R | Subgrade(Rem) | 3d | 2026-10-07 | 2026-10-10 | B1.2.31 23 23.01.2_R SS, B1.2.32 11 13.01.2 | Subgrade [9236.79]; Labor [85.76 h]; Foreman [42.88 h]; Operator [85.76 h]; Surveyor [42.88 h]; Surveyor Helper [42.88 h]; Grader [44 h]; Loader [44 h]; Water Tanker [44 h]; Dump Truck [44 h]; Plate Compactor [44 h]; Roller Compactor [44 h] |
| B1.2.32 11 23.01.2_R | Aggregate Base Course(Rem) | 3d | 2026-10-07 | 2026-10-10 | B1.2.32 11 13.01.2_R SS, B1.2.32 11 23.01.2 | Aggregate base course [9606.26]; Labor [97.3 h]; Foreman [48.65 h]; Operator [97.3 h]; Surveyor [48.65 h]; Surveyor Helper [48.65 h]; Grader [49.92 h]; Loader [49.92 h]; Water Tanker [49.92 h]; Dump Truck [49.92 h]; Plate Compactor [49.92 h]; Roller Compactor [49.92 h] |
| B1.2.32 11 26.01.2_R | Bituminous Base Course including Prime Coat (MC1) and tack coat (RC2)(Rem) | 4d | 2026-10-07 | 2026-10-11 | B1.2.32 11 23.01.2_R FF, B1.2.32 11 26.01.2 | Bituminous base course(Grading I - Class A) [8438.37]; Labor [77.96 h]; Foreman [38.98 h]; Operator [77.96 h]; Surveyor [38.98 h]; Surveyor Helper [38.98 h]; Dump Truck [40 h]; Roller Compactor [40 h]; MC1/RC2 Sprayer [40 h] |
| B1.1.31 23 16.02_R | Excavation (all types of soil)(Rem) | 6.22d | 2026-10-07 | 2026-10-14 | B1.1.31 23 19.02, B1.1.31 23 16.01_R FF, B1.1.31 23 16.02 | Excavation (all types of soil) [4179.72]; Labor [10.91 h]; Foreman [5.46 h]; Operator [10.91 h]; Surveyor [5.46 h]; Surveyor Helper [5.46 h]; Excavator (With Bucket) [5.6 h]; Water Tanker [5.6 h]; Dump Truck [5.6 h]; Plate Compactor [5.6 h] |
| B6.33 42 11.31-1 3_R | Sand Bedding(Rem) | 2.28d | 2026-10-07 | 2026-10-10 | B6.33 42 11.31-1 1, B6.33 42 11.31-1 3 | Labor [10.14 h]; Foreman [5.07 h]; Operator [20.29 h]; Surveyor [5.07 h]; Surveyor Helper [5.07 h]; Loader [5.2 h]; Water Tanker [5.2 h]; Dump Truck [5.2 h]; Plate Compactor [5.2 h]; 2.51m - 3.5m [2.39] |
| B6.33 42 11.31-1 5_R | Pipe Laying(Rem) | 2.28d | 2026-10-07 | 2026-10-10 | B6.33 42 11.31-1 3_R FF, B6.33 42 11.31-1 5 | Labor [18.81 h]; Foreman [9.4 h]; Plumber Helper [9.4 h]; Plumber [9.4 h]; Operator [9.4 h]; Surveyor [9.4 h]; Surveyor Helper [9.4 h]; Mobile Crane [9.65 h]; 2.51m - 3.5m |
| B6.33 42 11.31-1 7_R | Embedment & Test(Rem) | 2.84d | 2026-10-07 | 2026-10-10 | B6.33 42 11.31-1 5_R FF, B6.33 42 11.31-1 7 | Labor [20.29 h]; Foreman [10.14 h]; Plumber Helper [10.14 h]; Plumber [10.14 h]; Operator [20.29 h]; Surveyor [10.14 h]; Surveyor Helper [10.14 h]; Loader [10.41 h]; Water Tanker [10.41 h]; Dump Truck [10.41 h]; Plate Compactor [10.41 h]; Roller Compactor [10.41 h]; 2.51m - 3.5m [9.86] |
| B6.33 42 11.31-1 9_R | Backfilling & Warrning Tape(Rem) | 3.12d | 2026-10-11 | 2026-10-14 | B6.33 42 11.31-1 7_R FF, B6.33 42 11.31-1 9, B6.33 42 11.01-1029_R | Labor [25.36 h]; Foreman [12.68 h]; Operator [50.72 h]; Surveyor [12.68 h]; Surveyor Helper [12.68 h]; Loader [13.01 h]; Water Tanker [13.01 h]; Dump Truck [13.01 h]; Plate Compactor [13.01 h]; Roller Compactor [13.01 h]; 2.51m - 3.5m [4.77] |
| B6.33 42 11.31-1 4_R | Sand Bedding(Rem) | 2.28d | 2026-10-07 | 2026-10-10 | B6.33 42 11.31-1 2, B6.33 42 11.31-1 4 | Labor [10.14 h]; Foreman [5.07 h]; Operator [20.29 h]; Surveyor [5.07 h]; Surveyor Helper [5.07 h]; Loader [5.2 h]; Water Tanker [5.2 h]; Dump Truck [5.2 h]; Plate Compactor [5.2 h]; 3.51m - 4.5m [1.68] |
| B6.33 42 11.31-1 6_R | Pipe Laying(Rem) | 2.28d | 2026-10-07 | 2026-10-10 | B6.33 42 11.31-1 4_R FF, B6.33 42 11.31-1 6 | Labor [10.14 h]; Foreman [5.07 h]; Plumber Helper [5.07 h]; Plumber [5.07 h]; Operator [5.07 h]; Surveyor [5.07 h]; Surveyor Helper [5.07 h]; Mobile Crane [5.2 h]; 3.51m - 4.5m [15.12] |
| B6.33 42 11.31-1 8_R | Embedment & Test(Rem) | 2.84d | 2026-10-07 | 2026-10-10 | B6.33 42 11.31-1 6_R FF, B6.33 42 11.31-1 8 | Labor [20.29 h]; Foreman [10.14 h]; Plumber Helper [10.14 h]; Plumber [10.14 h]; Operator [20.29 h]; Surveyor [10.14 h]; Surveyor Helper [10.14 h]; Loader [10.41 h]; Water Tanker [10.41 h]; Dump Truck [10.41 h]; Plate Compactor [10.41 h]; Roller Compactor [10.41 h]; 3.51m - 4.5m [6.72] |
| B6.33 42 11.31-1 10_R | Backfilling & Warrning Tape(Rem) | 2.94d | 2026-10-12 | 2026-10-14 | B6.33 42 11.31-1 8_R FF, B6.33 42 11.31-1 10, B6.33 42 11.02 5_R | Labor [25.36 h]; Foreman [12.68 h]; Operator [50.72 h]; Surveyor [12.68 h]; Surveyor Helper [12.68 h]; Loader [13.01 h]; Water Tanker [13.01 h]; Dump Truck [13.01 h]; Plate Compactor [13.01 h]; Roller Compactor [13.01 h]; 3.51m - 4.5m [3.36] |
| B6.33 05 39.01.3337_R | Blinding Conc, & RC Base(Rem) | 2d | 2026-09-19 A | 2026-09-20 A | B6.33 05 39.01.3327, B6.33 05 39.01.3337 | Labor [11.69 h]; Foreman [5.85 h]; Laboratory Officer [5.85 h]; Carpenter [5.85 h]; Steelfixer [5.85 h]; Mason [5.85 h]; MH depth 2.51 - 3.5m [0.06] |
| B6.33 05 39.01.3347_R | Manhole Installation(Rem) | 2d | 2026-09-21 A | 2026-09-24 A | B6.33 05 39.01.3337_R SS, B6.33 05 39.01.3347 | Labor [7.8 h]; Operator [7.8 h]; Surveyor [3.9 h]; Surveyor Helper [3.9 h]; Boom Truck [4 h]; Mobile Crane [4 h]; MH depth 2.51 - 3.5m [0.2] |
| B6.33 05 39.01.3367_R | Backfilling(Rem) | 4d | 2026-10-17 | 2026-10-21 | B6.33 05 39.01.3357 FF, B6.33 05 13.01 5_R SS, B6.33 05 13.07 5_R SS, B6.33 05 39.01.3367 | Labor [19.49 h]; Foreman [9.75 h]; Operator [19.49 h]; Surveyor [9.75 h]; Surveyor Helper [9.75 h]; Loader [10 h]; Water Tanker [10 h]; Dump Truck [10 h]; Plate Compactor [10 h]; MH depth 2.51 - 3.5m [0.08] |
| B6.33 05 39.01.3377_R | Excavation & Compaction(Rem) | 2d | 2026-10-07 | 2026-10-08 | B6.33 05 39.01.3327, B6.33 05 39.01.3377 | Labor [7.8 h]; Foreman [3.9 h]; Operator [7.8 h]; Surveyor [3.9 h]; Surveyor Helper [3.9 h]; Excavator (With Bucket) [4 h]; Water Tanker [4 h]; Dump Truck [4 h]; Plate Compactor [4 h]; Storm MH depth 2.51 - 3.5m [0.16] |
| B6.33 05 39.01.3387_R | Blinding Conc, & RC Base(Rem) | 2d | 2026-10-07 | 2026-10-08 | B6.33 05 39.01.3377_R SS, B6.33 05 39.01.3387 | Labor [11.69 h]; Foreman [5.85 h]; Laboratory Officer [5.85 h]; Carpenter [5.85 h]; Steelfixer [5.85 h]; Mason [5.85 h]; Storm MH depth 2.51 - 3.5m [0.1] |
| B6.33 05 39.01.3397_R | Manhole Installation(Rem) | 2d | 2026-10-07 | 2026-10-08 | B6.33 05 39.01.3387_R SS, B6.33 05 39.01.3397 | Labor [7.8 h]; Operator [7.8 h]; Surveyor [3.9 h]; Surveyor Helper [3.9 h]; Boom Truck [4 h]; Mobile Crane [4 h]; Storm MH depth 2.51 - 3.5m [0.49] |
| B6.33 05 39.01.3417_R | Backfilling(Rem) | 2.25d | 2026-10-12 | 2026-10-14 | B6.33 05 39.01.3407 FF, B6.33 05 39.01.3417 | Labor [19.49 h]; Foreman [9.75 h]; Operator [19.49 h]; Surveyor [9.75 h]; Surveyor Helper [9.75 h]; Loader [10 h]; Water Tanker [10 h]; Dump Truck [10 h]; Plate Compactor [10 h]; Storm MH depth 2.51 - 3.5m [0.23] |
| B6.33 05 39.01.3467_R | Backfilling(Rem) | 2d | 2026-09-22 A | 2026-09-24 A | B6.33 05 39.01.3457 FF, B6.33 05 39.01.3467 | Labor [19.49 h]; Foreman [9.75 h]; Operator [19.49 h]; Surveyor [9.75 h]; Surveyor Helper [9.75 h]; Loader [10 h]; Water Tanker [10 h]; Dump Truck [10 h]; Plate Compactor [10 h]; Storm MH depth 3.51 -4.5m [0.19] |
| B6.33 05 39.01.3427_R | Excavation & Compaction(Rem) | 2d | 2026-10-07 | 2026-10-08 | B6.33 05 39.01.3377_R SS, B6.33 05 39.01.3427 | Labor [7.8 h]; Foreman [3.9 h]; Operator [7.8 h]; Surveyor [3.9 h]; Surveyor Helper [3.9 h]; Excavator (With Bucket) [4 h]; Water Tanker [4 h]; Dump Truck [4 h]; Plate Compactor [4 h]; Storm MH depth 3.51 -4.5m [0.14] |
| B6.33 05 39.01.3437_R | Blinding Conc, & RC Base(Rem) | 2d | 2026-10-07 | 2026-10-08 | B6.33 05 39.01.3427_R SS, B6.33 05 39.01.3437 | Labor [11.69 h]; Foreman [5.85 h]; Laboratory Officer [5.85 h]; Carpenter [5.85 h]; Steelfixer [5.85 h]; Mason [5.85 h]; Storm MH depth 3.51 -4.5m [0.1] |
| B6.33 05 39.01.3447_R | Manhole Installation(Rem) | 2d | 2026-10-07 | 2026-10-08 | B6.33 05 39.01.3437_R SS, B6.33 05 39.01.3447 | Labor [7.8 h]; Operator [7.8 h]; Surveyor [3.9 h]; Surveyor Helper [3.9 h]; Boom Truck [4 h]; Mobile Crane [4 h]; Storm MH depth 3.51 -4.5m [0.47] |
| B6.33 05 39.01.3477_R | Excavation & Compaction(Rem) | 2d | 2026-10-07 | 2026-10-08 | B6.33 05 39.01.3427_R SS, B6.33 05 39.01.3477 | Labor [7.8 h]; Foreman [3.9 h]; Operator [7.8 h]; Surveyor [3.9 h]; Surveyor Helper [3.9 h]; Excavator (With Bucket) [4 h]; Water Tanker [4 h]; Dump Truck [4 h]; Plate Compactor [4 h]; MH depth 4.51 -5.5m [0.04] |
| B6.33 05 39.01.3487_R | Blinding Conc, & RC Base(Rem) | 2d | 2026-10-07 | 2026-10-08 | B6.33 05 39.01.3477_R SS, B6.33 05 39.01.3487 | Labor [11.69 h]; Foreman [5.85 h]; Laboratory Officer [5.85 h]; Carpenter [5.85 h]; Steelfixer [5.85 h]; Mason [5.85 h]; MH depth 4.51 -5.5m [0.03] |
| B6.33 05 39.01.3497_R | Manhole Installation(Rem) | 2d | 2026-10-07 | 2026-10-08 | B6.33 05 39.01.3487_R SS, B6.33 05 39.01.3497 | Labor [7.8 h]; Operator [7.8 h]; Surveyor [3.9 h]; Surveyor Helper [3.9 h]; Boom Truck [4 h]; Mobile Crane [4 h]; MH depth 4.51 -5.5m [0.12] |
| B6.33 05 39.01.3517_R | Backfilling(Rem) | 6d | 2026-10-17 | 2026-10-24 | B6.33 05 39.01.3507 FF, B6.33 05 39.01.3367_R SS, B6.33 05 39.01.4017_R SS, B6.33 05 39.01.3517 | Labor [19.49 h]; Foreman [9.75 h]; Operator [19.49 h]; Surveyor [9.75 h]; Surveyor Helper [9.75 h]; Loader [10 h]; Water Tanker [10 h]; Dump Truck [10 h]; Plate Compactor [10 h]; MH depth 4.51 -5.5m [0.05] |
| B6.33 42 11.35-1.2_R | Fittings & Pipe Installation(Rem) | 2.09d | 2026-10-03 A | 2026-10-05 A | B6.33 42 11.35-1.1 FF, B6.33 42 11.35-1.2 | Labor [17.04 h]; Foreman [8.52 h]; Plumber Helper [8.52 h]; Plumber [8.52 h]; Surveyor [8.52 h]; Surveyor Helper [8.52 h]; less than 1.5 [101.88] |
| B6.33 42 11.36-1.2_R | Fittings & Pipe Installation(Rem) | 2.09d | 2026-09-29 A | 2026-10-03 A | B6.33 42 11.36-1.1 FF, B6.33 42 11.36-1.2 | Labor [19.87 h]; Foreman [9.93 h]; Plumber Helper [9.93 h]; Plumber [9.93 h]; Surveyor [9.93 h]; Surveyor Helper [9.93 h]; less than 1.5 [118.8] |
| B5.33 31 00.01.2159_R | Backfilling & Warrning Tape(Rem) | 4.67d | 2026-10-07 | 2026-10-12 | B5.33 31 00.01.2149, B5.33 31 00.01.2159 | Labor [72.27 h]; Foreman [36.14 h]; Operator [144.54 h]; Surveyor [36.14 h]; Surveyor Helper [36.14 h]; Loader [37.08 h]; Water Tanker [37.08 h]; Dump Truck [37.08 h]; Plate Compactor [37.08 h]; Roller Compactor [37.08 h]; Sew Dia. 150mm Depth: 0.0m - 1.5m [57.96] |
| B5.33 31 00.01.2199_R | Embedment & Test(Rem) | 3.58d | 2026-10-07 | 2026-10-11 | B5.33 31 00.01.2189, B5.33 31 00.01.2199 | Labor [55.82 h]; Foreman [27.91 h]; Plumber Helper [27.91 h]; Plumber [27.91 h]; Operator [55.82 h]; Surveyor [27.91 h]; Surveyor Helper [27.91 h]; Loader [28.64 h]; Water Tanker [28.64 h]; Dump Truck [28.64 h]; Plate Compactor [28.64 h]; Roller Compactor [28.64 h]; Sew Dia. 200mm Depth: 0.0m - 1.5m [29.54] |
| B5.33 31 00.01.2209_R | Backfilling & Warrning Tape(Rem) | 4.56d | 2026-10-07 | 2026-10-12 | B5.33 31 00.01.2199_R FF, B5.33 31 00.01.2159_R SS, B5.33 31 00.01.2209 | Labor [69.8 h]; Foreman [34.9 h]; Operator [139.6 h]; Surveyor [34.9 h]; Surveyor Helper [34.9 h]; Loader [35.81 h]; Water Tanker [35.81 h]; Dump Truck [35.81 h]; Plate Compactor [35.81 h]; Roller Compactor [35.81 h]; Sew Dia. 200mm Depth: 0.0m - 1.5m [14.79] |
| B6.33 05 13.01.04_R | Manhole Installation(Rem) | 2d | 2026-09-16 A | 2026-09-17 A | B6.33 05 13.01.03, B6.33 05 13.01.04 | Labor [4.68 h]; Operator [4.68 h]; Surveyor [2.34 h]; Surveyor Helper [2.34 h]; Boom Truck [2.4 h]; Mobile Crane [2.4 h]; MH depth 1.50 - 2.5m [0.64] |
| B6.33 05 13.01.05_R | Test, Internal Finishing, Benching & Cover(Rem) | 2d | 2026-09-22 A | 2026-09-24 A | B6.33 05 13.01.04_R SS, B6.33 05 13.01.05 | Labor [9.36 h]; Foreman [4.68 h]; Plumber Helper [4.68 h]; Plumber [4.68 h]; Mason [4.68 h]; MH depth 1.50 - 2.5m [0.16] |
| B6.33 05 13.01.06_R | Backfilling(Rem) | 2d | 2026-09-24 A | 2026-09-26 A | B6.33 05 13.025, B6.33 05 13.01.05_R SS, B6.33 05 13.01.06 | Labor [11.69 h]; Foreman [5.85 h]; Operator [11.69 h]; Surveyor [5.85 h]; Surveyor Helper [5.85 h]; Loader [6 h]; Water Tanker [6 h]; Dump Truck [6 h]; Plate Compactor [6 h]; MH depth 1.50 - 2.5m [0.32] |
| B6.33 05 13.05.03_R | Blinding Conc, & RC Base(Rem) | 2d | 2026-09-24 A | 2026-09-27 A | B6.33 05 13.05.02, B6.33 05 13.05.03, B6.33 42 11.31-1 10_R | Labor [3.74 h]; Foreman [1.87 h]; Laboratory Officer [1.87 h]; Carpenter [1.87 h]; Steelfixer [1.87 h]; Mason [1.87 h]; MH depth 2.51 - 3.5m [0.01] |
| B6.33 05 13.05.04_R | Manhole Installation(Rem) | 2d | 2026-09-24 A | 2026-09-27 A | B6.33 05 13.05.03_R SS, B6.33 05 13.05.04 | Labor [2.49 h]; Operator [2.49 h]; Surveyor [1.25 h]; Surveyor Helper [1.25 h]; Boom Truck [1.28 h]; Mobile Crane [1.28 h]; MH depth 2.51 - 3.5m [0.06] |
| B6.33 05 13.05.05_R | Test, Internal Finishing, Benching & Cover(Rem) | 2d | 2026-10-07 | 2026-10-08 | B6.33 05 13.05.04_R SS, B6.33 05 13.05.05 | Labor [4.99 h]; Foreman [2.49 h]; Plumber Helper [2.49 h]; Plumber [2.49 h]; Mason [2.49 h]; MH depth 2.51 - 3.5m [0.01] |
| B6.33 05 13.05.06_R | Backfilling(Rem) | 2d | 2026-10-07 | 2026-10-08 | B6.33 05 13.125, B6.33 05 13.05.05_R SS, B6.33 05 13.05.06 | Labor [6.24 h]; Foreman [3.12 h]; Operator [6.24 h]; Surveyor [3.12 h]; Surveyor Helper [3.12 h]; Loader [3.2 h]; Water Tanker [3.2 h]; Dump Truck [3.2 h]; Plate Compactor [3.2 h]; MH depth 2.51 - 3.5m [0.03] |
| B6.33 05 13.07.02_R | Excavation & Compaction(Rem) | 2d | 2026-09-24 A | 2026-09-26 A | B6.33 05 13.05.02, B6.33 05 13.07.02 | Labor [4.68 h]; Foreman [2.34 h]; Operator [4.68 h]; Surveyor [2.34 h]; Surveyor Helper [2.34 h]; Excavator (With Bucket) [2.4 h]; Water Tanker [2.4 h]; Dump Truck [2.4 h]; Plate Compactor [2.4 h]; Storm MH depth 2.51 - 3.5m [0.09] |
| B6.33 05 13.07.03_R | Blinding Conc, & RC Base(Rem) | 2d | 2026-10-07 | 2026-10-08 | B6.33 05 13.07.02_R SS, B6.33 05 13.07.03 | Labor [7.02 h]; Foreman [3.51 h]; Laboratory Officer [3.51 h]; Carpenter [3.51 h]; Steelfixer [3.51 h]; Mason [3.51 h]; Storm MH depth 2.51 - 3.5m [0.06] |
| B6.33 05 13.07.04_R | Manhole Installation(Rem) | 2d | 2026-10-07 | 2026-10-08 | B6.33 05 13.07.03_R SS, B6.33 05 13.07.04 | Labor [4.68 h]; Operator [4.68 h]; Surveyor [2.34 h]; Surveyor Helper [2.34 h]; Boom Truck [2.4 h]; Mobile Crane [2.4 h]; Storm MH depth 2.51 - 3.5m [0.3] |
| B6.33 05 13.07.05_R | Test, Internal Finishing, Benching & Cover(Rem) | 2d | 2026-10-07 | 2026-10-08 | B6.33 05 13.07.04_R SS, B6.33 05 13.07.05 | Labor [9.36 h]; Foreman [4.68 h]; Plumber Helper [4.68 h]; Plumber [4.68 h]; Mason [4.68 h]; Storm MH depth 2.51 - 3.5m [0.06] |
| B6.33 05 13.07.06_R | Backfilling(Rem) | 2d | 2026-10-07 | 2026-10-08 | B6.33 05 13.045, B6.33 05 13.07.05_R SS, B6.33 05 13.07.06, B6.33 05 13.01.06_R | Labor [11.69 h]; Foreman [5.85 h]; Operator [11.69 h]; Surveyor [5.85 h]; Surveyor Helper [5.85 h]; Loader [6 h]; Water Tanker [6 h]; Dump Truck [6 h]; Plate Compactor [6 h]; Storm MH depth 2.51 - 3.5m [0.14] |
| B6.33 05 40.01.180_R | Blinding Conc.(Rem) | 2d | 2026-09-21 A | 2026-09-22 A | B6.33 05 40.01.170, B6.33 05 40.01.180 | Labor [3.12 h]; Foreman [1.56 h]; Laboratory Officer [1.56 h]; Carpenter [1.56 h]; Steelfixer [1.56 h]; Mason [1.56 h]; Single Catch basin [0.2] |
| B6.33 05 40.01.190_R | Catch Basin Installation(Rem) | 2d | 2026-09-24 A | 2026-09-27 A | B6.33 05 40.01.180_R SS, B6.33 05 13.05.04_R SS, B6.33 05 40.01.190 | Labor [4.68 h]; Foreman [2.34 h]; Carpenter [2.34 h]; Steelfixer [2.34 h]; Mason [2.34 h]; Operator [4.68 h]; Surveyor [2.34 h]; Surveyor Helper [2.34 h]; Boom Truck [2.4 h]; Single Catch basin [0.89] |
| B6.33 05 40.01.200_R | Backfilling, DI Frame & Grate Cover Fixing(Rem) | 2d | 2026-10-01 A | 2026-10-03 A | B6.33 42 11.35-102_R SS, B6.33 05 63.072_R SS, B6.33 05 40.01.200 | Labor [7.8 h]; Foreman [3.9 h]; Operator [7.8 h]; Surveyor [3.9 h]; Surveyor Helper [3.9 h]; Loader [4 h]; Water Tanker [4 h]; Dump Truck [4 h]; Plate Compactor [4 h]; Single Catch basin [0.6] |
| B6.33 05 40.01.730_R | Excavation, Compaction & Vapour Barrier(Rem) | 2d | 2026-10-07 | 2026-10-08 | B6.33 05 40.01.170, B6.33 05 40.01.730 | Labor [4.68 h]; Foreman [2.34 h]; Operator [4.68 h]; Surveyor [2.34 h]; Surveyor Helper [2.34 h]; Excavator (With Bucket) [2.4 h]; Water Tanker [2.4 h]; Dump Truck [2.4 h]; Roller Compactor [2.4 h]; Double Catch basin [0.09] |
| B6.33 05 40.01.740_R | Blinding Conc.(Rem) | 2d | 2026-10-07 | 2026-10-08 | B6.33 05 40.01.730_R SS, B6.33 05 40.01.740 | Labor [4.68 h]; Foreman [2.34 h]; Laboratory Officer [2.34 h]; Carpenter [2.34 h]; Steelfixer [2.34 h]; Mason [2.34 h]; Double Catch basin [0.06] |
| B6.33 05 40.01.750_R | Catch Basin Installation(Rem) | 2d | 2026-10-07 | 2026-10-08 | B6.33 05 40.01.740_R SS, B6.33 05 40.01.750 | Labor [7.02 h]; Foreman [3.51 h]; Carpenter [3.51 h]; Steelfixer [3.51 h]; Mason [3.51 h]; Operator [7.02 h]; Surveyor [3.51 h]; Surveyor Helper [3.51 h]; Boom Truck [3.6 h]; Double Catch basin [0.27] |
| B6.33 05 40.01.760_R | Backfilling, DI Frame & Grate Cover Fixing(Rem) | 2d | 2026-10-07 | 2026-10-08 | B6.33 42 11.36-112_R SS, B6.33 05 40.01.760 | Labor [11.69 h]; Foreman [5.85 h]; Operator [11.69 h]; Surveyor [5.85 h]; Surveyor Helper [5.85 h]; Loader [6 h]; Water Tanker [6 h]; Dump Truck [6 h]; Plate Compactor [6 h]; Double Catch basin [0.18] |
| B6.33 42 11.35-101_R | Catch Basin Opening Prep.(Rem) | 2.09d | 2026-10-07 | 2026-10-10 | B6.33 05 40.01.190_R SS, B6.33 42 11.35-101 | Labor [5.16 h]; Foreman [2.58 h]; Plumber Helper [2.58 h]; Plumber [2.58 h]; less than 1.5 [7.71] |
| B6.33 42 11.35-102_R | Fittings & Pipe Installation(Rem) | 2d | 2026-10-07 | 2026-10-08 | B6.33 42 11.35-101_R SS, B6.33 42 11.35-102 | Labor [15.59 h]; Foreman [7.8 h]; Plumber Helper [7.8 h]; Plumber [7.8 h]; Surveyor [7.8 h]; Surveyor Helper [7.8 h]; less than 1.5 [93.23] |
| B6.33 42 11.36-111_R | Catch Basin Opening Prep.(Rem) | 2.09d | 2026-10-07 | 2026-10-10 | B6.33 05 40.01.190_R SS, B6.33 42 11.36-111 | Labor [5.16 h]; Foreman [2.58 h]; Plumber Helper [2.58 h]; Plumber [2.58 h]; less than 1.5 [2.08] |
| B6.33 42 11.36-112_R | Fittings & Pipe Installation(Rem) | 2.09d | 2026-10-07 | 2026-10-10 | B6.33 42 11.36-111_R SS, B6.33 42 11.36-112 | Labor [5.16 h]; Foreman [2.58 h]; Plumber Helper [2.58 h]; Plumber [2.58 h]; Surveyor [2.58 h]; Surveyor Helper [2.58 h]; less than 1.5 [8.33] |
| B1.2.32 11 13.01.4_R | Subgrade(Rem) | 1.05d | 2026-10-07 | 2026-10-08 | B1.2.31 23 23.01.4, B1.2.32 11 13.01.4 | Subgrade [387.79]; Labor [16.37 h]; Foreman [8.19 h]; Operator [16.37 h]; Surveyor [8.19 h]; Surveyor Helper [8.19 h]; Grader [8.4 h]; Loader [8.4 h]; Water Tanker [8.4 h]; Dump Truck [8.4 h]; Plate Compactor [8.4 h]; Roller Compactor [8.4 h] |
| B1.2.32 11 23.01.4_R | Aggregate Base Course(Rem) | 1.23d | 2026-10-07 | 2026-10-08 | B1.2.32 11 13.01.4_R FF, B1.2.32 11 23.01.4 | Aggregate base course [302.85]; Labor [19.18 h]; Foreman [9.59 h]; Operator [19.18 h]; Surveyor [9.59 h]; Surveyor Helper [9.59 h]; Grader [9.84 h]; Loader [9.84 h]; Water Tanker [9.84 h]; Dump Truck [9.84 h]; Plate Compactor [9.84 h]; Roller Compactor [9.84 h] |
| B5.33 31 00.02.02 5_R | Backfilling & Warrning Tape(Rem) | 4.67d | 2026-10-07 | 2026-10-12 | B5.33 31 00.02.02 4, B5.33 31 00.02.02 5 | Labor [72.26 h]; Foreman [36.13 h]; Operator [144.53 h]; Surveyor [36.13 h]; Surveyor Helper [36.13 h]; Loader [37.08 h]; Water Tanker [37.08 h]; Dump Truck [37.08 h]; Plate Compactor [37.08 h]; Roller Compactor [37.08 h]; Sew Dia. 200mm Depth: 1.51m - 2.5m [42.14] |
| B5.33 05 13.01 4_R | Test, Internal Finishing, Benching & Cover(Rem) | 2.56d | 2026-10-07 | 2026-10-10 | B5.33 05 13.01 3, B5.33 05 13.01 4 | Labor [36.71 h]; Foreman [18.35 h]; Plumber Helper [18.35 h]; Plumber [18.35 h]; Mason [18.35 h]; MH depth 0 - 1.5m [0.16] |
| B5.33 05 13.01 5_R | Backfilling(Rem) | 3.08d | 2026-10-07 | 2026-10-11 | B5.33 05 13.065, B5.33 05 13.01 4_R SS, B5.33 31 00.02.02 5_R SS, B5.33 05 13.01 5 | Labor [45.89 h]; Foreman [22.94 h]; Operator [45.89 h]; Surveyor [22.94 h]; Surveyor Helper [22.94 h]; Loader [23.54 h]; Water Tanker [23.54 h]; Dump Truck [23.54 h]; Plate Compactor [23.54 h]; MH depth 0 - 1.5m [0.33] |
| B5.33 05 13.02 2_R | Blinding Conc, & RC Base(Rem) | 2.04d | 2026-10-07 | 2026-10-10 | B5.33 05 13.02 1, B5.33 05 13.02 2 | Labor [27.53 h]; Foreman [13.77 h]; Laboratory Officer [13.77 h]; Carpenter [13.77 h]; Steelfixer [13.77 h]; Mason [13.77 h]; MH depth 1.51 - 2.5m [0.26] |
| B5.33 05 13.02 3_R | Manhole Installation(Rem) | 1.52d | 2026-10-07 | 2026-10-08 | B5.33 05 13.02 2_R SS, B5.33 05 13.02 3 | Labor [18.35 h]; Operator [18.35 h]; Surveyor [9.18 h]; Surveyor Helper [9.18 h]; Boom Truck [9.42 h]; Mobile Crane [9.42 h]; MH depth 1.51 - 2.5m [1.17] |
| B5.33 05 13.02 4_R | Test, Internal Finishing, Benching & Cover(Rem) | 2.56d | 2026-10-07 | 2026-10-10 | B5.33 05 13.02 3_R SS, B5.33 05 13.02 4 | Labor [36.71 h]; Foreman [18.35 h]; Plumber Helper [18.35 h]; Plumber [18.35 h]; Mason [18.35 h]; MH depth 1.51 - 2.5m [0.32] |
| B5.33 05 13.02 5_R | Backfilling(Rem) | 3.08d | 2026-10-07 | 2026-10-11 | B5.33 05 13.02 4_R SS, B5.33 05 13.01 5_R SS, B5.33 05 13.02 5 | Labor [45.89 h]; Foreman [22.94 h]; Operator [45.89 h]; Surveyor [22.94 h]; Surveyor Helper [22.94 h]; Loader [23.54 h]; Water Tanker [23.54 h]; Dump Truck [23.54 h]; Plate Compactor [23.54 h]; MH depth 1.51 - 2.5m [0.52] |
| B6.33 42 11.02 5_R | Backfilling & Warrning Tape(Rem) | 4d | 2026-10-07 | 2026-10-11 | B6.33 42 11.02 4, B6.33 42 11.02 5 | Labor [24.05 h]; Foreman [12.02 h]; Operator [48.1 h]; Surveyor [12.02 h]; Surveyor Helper [12.02 h]; Loader [12.34 h]; Water Tanker [12.34 h]; Dump Truck [12.34 h]; Plate Compactor [12.34 h]; Roller Compactor [12.34 h]; Depth: 1.51m - 2.5m [0.62] |
| B6.33 05 13.01 3_R | Manhole Installation(Rem) | 2d | 2026-10-07 | 2026-10-08 | B6.33 05 13.01 2, B6.33 05 13.01 3 | Labor [6.6 h]; Operator [6.6 h]; Surveyor [3.3 h]; Surveyor Helper [3.3 h]; Boom Truck [3.38 h]; Mobile Crane [3.38 h]; MH depth 1.50 - 2.5m [0.91] |
| B6.33 05 13.01 4_R | Test, Internal Finishing, Benching & Cover(Rem) | 2d | 2026-10-07 | 2026-10-08 | B6.33 05 13.01 3_R SS, B6.33 05 13.01 4 | Labor [13.19 h]; Foreman [6.6 h]; Plumber Helper [6.6 h]; Plumber [6.6 h]; Mason [6.6 h]; MH depth 1.50 - 2.5m [0.23] |
| B6.33 05 13.01 5_R | Backfilling(Rem) | 4d | 2026-10-17 | 2026-10-21 | B6.33 05 13.01 4_R SS, B6.33 05 39.01.3717_R SS, B6.33 05 13.01 5, B6.33 42 11.13.205_R | Labor [16.49 h]; Foreman [8.24 h]; Operator [16.49 h]; Surveyor [8.24 h]; Surveyor Helper [8.24 h]; Loader [8.46 h]; Water Tanker [8.46 h]; Dump Truck [8.46 h]; Plate Compactor [8.46 h]; MH depth 1.50 - 2.5m [0.45] |
| B6.33 05 13.07 2_R | Blinding Conc, & RC Base(Rem) | 2d | 2026-09-20 A | 2026-09-21 A | B6.33 05 13.07 1, B6.33 05 13.07 2 | Labor [9.89 h]; Foreman [4.95 h]; Laboratory Officer [4.95 h]; Carpenter [4.95 h]; Steelfixer [4.95 h]; Mason [4.95 h]; Storm MH depth 2.51 - 3.5m [0.09] |
| B6.33 05 13.07 3_R | Manhole Installation(Rem) | 2d | 2026-09-26 A | 2026-09-27 A | B6.33 05 13.07 2_R SS, B6.33 05 13.07 3 | Labor [6.24 h]; Operator [6.24 h]; Surveyor [3.12 h]; Surveyor Helper [3.12 h]; Boom Truck [3.2 h]; Mobile Crane [3.2 h]; Storm MH depth 2.51 - 3.5m [0.39] |
| B6.33 05 13.07 5_R | Backfilling(Rem) | 2d | 2026-09-30 A | 2026-10-01 A | B6.33 05 13.07 4_R SS, B6.33 05 13.07 5 | Labor [15.59 h]; Foreman [7.8 h]; Operator [15.59 h]; Surveyor [7.8 h]; Surveyor Helper [7.8 h]; Loader [8 h]; Water Tanker [8 h]; Dump Truck [8 h]; Plate Compactor [8 h]; Storm MH depth 2.51 - 3.5m [0.18] |
| B6.33 05 13.07 4_R | Test, Internal Finishing, Benching & Cover(Rem) | 2d | 2026-10-07 | 2026-10-08 | B6.33 05 13.07 3_R SS, B6.33 05 13.07 4 | Labor [7.48 h]; Foreman [3.74 h]; Plumber Helper [3.74 h]; Plumber [3.74 h]; Mason [3.74 h]; Storm MH depth 2.51 - 3.5m [0.05] |
| B6.33 05 40.01.220_R | Blinding Conc.(Rem) | 2d | 2026-09-19 A | 2026-09-21 A | B6.33 05 40.01.210_R SS, B6.33 05 40.01.220 | Labor [6.24 h]; Foreman [3.12 h]; Laboratory Officer [3.12 h]; Carpenter [3.12 h]; Steelfixer [3.12 h]; Mason [3.12 h]; Single Catch basin [0.4] |
| B6.33 05 40.01.230_R | Catch Basin Installation(Rem) | 2d | 2026-09-20 A | 2026-09-22 A | B6.33 05 40.01.220_R SS, B6.33 05 40.01.230 | Labor [9.36 h]; Foreman [4.68 h]; Carpenter [4.68 h]; Steelfixer [4.68 h]; Mason [4.68 h]; Operator [9.36 h]; Surveyor [4.68 h]; Surveyor Helper [4.68 h]; Boom Truck [4.8 h]; Single Catch basin [1.79] |
| B6.33 05 40.01.240_R | Backfilling, DI Frame & Grate Cover Fixing(Rem) | 2d | 2026-09-26 A | 2026-09-28 A | B6.33 42 11.35 2_R SS, B6.33 05 40.01.240 | Labor [15.59 h]; Foreman [7.8 h]; Operator [15.59 h]; Surveyor [7.8 h]; Surveyor Helper [7.8 h]; Loader [8 h]; Water Tanker [8 h]; Dump Truck [8 h]; Plate Compactor [8 h]; Single Catch basin [1.19] |
| B6.33 05 40.01.210_R | Excavation, Compaction & Vapour Barrier(Rem) | 2d | 2026-10-07 | 2026-10-08 | B6.33 05 13.07 1, B6.33 05 40.01.210 | Labor [6.24 h]; Foreman [3.12 h]; Operator [6.24 h]; Surveyor [3.12 h]; Surveyor Helper [3.12 h]; Excavator (With Bucket) [3.2 h]; Water Tanker [3.2 h]; Dump Truck [3.2 h]; Roller Compactor [3.2 h]; Single Catch basin [0.6] |
| B6.33 42 11.35 1_R | Catch Basin Opening Prep.(Rem) | 2.09d | 2026-10-07 | 2026-10-10 | B6.33 05 40.01.230_R SS, B6.33 42 11.35 1 | Labor [9.97 h]; Foreman [4.98 h]; Plumber Helper [4.98 h]; Plumber [4.98 h]; less than 1.5 [14.9] |
| B6.33 42 11.35 2_R | Fittings & Pipe Installation(Rem) | 2.09d | 2026-10-07 | 2026-10-10 | B6.33 42 11.35 1_R SS, B6.33 42 11.35 2 | Labor [9.97 h]; Foreman [4.98 h]; Plumber Helper [4.98 h]; Plumber [4.98 h]; Surveyor [4.98 h]; Surveyor Helper [4.98 h]; less than 1.5 [59.59] |
| B6.33 42 11.36 1_R | Catch Basin Opening Prep.(Rem) | 2d | 2026-10-19 | 2026-10-20 | B6.33 05 40.01.790 FF, B6.33 42 11.36 1 | Labor [9.97 h]; Foreman [4.98 h]; Plumber Helper [4.98 h]; Plumber [4.98 h]; less than 1.5 [4.03] |
| B6.33 42 11.36 2_R | Fittings & Pipe Installation(Rem) | 2d | 2026-10-19 | 2026-10-20 | B6.33 42 11.36 1_R SS, B6.33 42 11.36 2 | Labor [9.97 h]; Foreman [4.98 h]; Plumber Helper [4.98 h]; Plumber [4.98 h]; Surveyor [4.98 h]; Surveyor Helper [4.98 h]; less than 1.5 [16.11] |
| B3.1. 33 14 13.01 1_R | Excavation(Rem) | 4d | 2026-10-07 | 2026-10-11 | B3.1. 33 14 13.22_R SS, B3.1. 33 14 13.01 1 | Labor [3.43 h]; Foreman [1.72 h]; Operator [3.43 h]; Surveyor [1.72 h]; Surveyor Helper [1.72 h]; Excavator (With Bucket) [1.76 h]; Water Tanker [1.76 h]; Dump Truck [1.76 h]; Plate Compactor [1.76 h]; Depth: 1.51m - 2.5m [0.9] |
| B3.1. 33 14 13.01 2_R | Sand Bedding(Rem) | 4d | 2026-10-07 | 2026-10-11 | B3.1. 33 14 13.01 1_R FF, B3.1. 33 14 13.01 2 | Labor [3.43 h]; Foreman [1.72 h]; Operator [6.86 h]; Surveyor [1.72 h]; Surveyor Helper [1.72 h]; Loader [1.76 h]; Water Tanker [1.76 h]; Dump Truck [1.76 h]; Plate Compactor [1.76 h]; Depth: 1.51m - 2.5m [0.23] |
| B3.1. 33 14 13.01 3_R | Pipe Laying(Rem) | 4d | 2026-10-07 | 2026-10-11 | B3.1. 33 14 13.01 2_R FF, B3.1. 33 14 13.01 3 | Labor [3.43 h]; Foreman [1.72 h]; Plumber Helper [1.72 h]; Plumber [1.72 h]; Operator [1.72 h]; Surveyor [1.72 h]; Surveyor Helper [1.72 h]; Mobile Crane [1.76 h]; Depth: 1.51m - 2.5m [2.03] |
| B3.1. 33 14 13.01 4_R | Embedment & Test(Rem) | 4d | 2026-10-07 | 2026-10-11 | B3.1. 33 14 13.01 3_R FF, B3.33 14 19.01.124_R SS, B3.1. 33 14 13.01 4 | Labor [6.86 h]; Foreman [3.43 h]; Plumber Helper [3.43 h]; Plumber [3.43 h]; Operator [6.86 h]; Surveyor [3.43 h]; Surveyor Helper [3.43 h]; Loader [3.52 h]; Water Tanker [3.52 h]; Dump Truck [3.52 h]; Plate Compactor [3.52 h]; Roller Compactor [3.52 h]; Depth: 1.51m - 2.5m [0.9] |
| B3.1. 33 14 13.01 5_R | Backfilling & Warrning Tape(Rem) | 4d | 2026-10-07 | 2026-10-11 | B3.1. 33 14 13.01 4_R FF, B3.1. 33 14 13.01 5 | Labor [8.58 h]; Foreman [4.29 h]; Operator [17.15 h]; Surveyor [4.29 h]; Surveyor Helper [4.29 h]; Loader [4.4 h]; Water Tanker [4.4 h]; Dump Truck [4.4 h]; Plate Compactor [4.4 h]; Roller Compactor [4.4 h]; Depth: 1.51m - 2.5m [0.45] |
| B3.33 14 19.01.124_R | Burried Isolation Valve Installation(Rem) | 4d | 2026-10-07 | 2026-10-11 | B3.1. 33 14 13.01 3_R SS, B3.33 14 19.01.124 | Labor [4.37 h]; Plumber Helper [2.18 h]; Plumber [2.18 h]; Operator [4.37 h]; Boom Truck [2.24 h]; FF Gate V dia 250 mm [0.26] |
| B1.2.32 11 13.01.5_R | Subgrade(Rem) | 2d | 2026-10-07 | 2026-10-08 | B1.2.31 23 23.01.5, B1.2.32 11 13.01.5 | Subgrade [566.37]; Labor [10.91 h]; Foreman [5.46 h]; Operator [10.91 h]; Surveyor [5.46 h]; Surveyor Helper [5.46 h]; Grader [5.6 h]; Loader [5.6 h]; Water Tanker [5.6 h]; Dump Truck [5.6 h]; Plate Compactor [5.6 h]; Roller Compactor [5.6 h] |
| B1.2.32 11 23.01.5_R | Aggregate Base Course(Rem) | 2d | 2026-10-07 | 2026-10-08 | B1.2.32 11 13.01.5_R FF, B1.2.32 11 23.01.5 | Aggregate base course [485.46]; Labor [14.03 h]; Foreman [7.02 h]; Operator [14.03 h]; Surveyor [7.02 h]; Surveyor Helper [7.02 h]; Grader [7.2 h]; Loader [7.2 h]; Water Tanker [7.2 h]; Dump Truck [7.2 h]; Plate Compactor [7.2 h]; Roller Compactor [7.2 h] |
| B6.33 42 11.01-1017_R | Pipe Laying(Rem) | 2.28d | 2026-10-07 | 2026-10-10 | B6.33 42 11.01-1011, B6.33 42 11.01-1017 | Labor [9.73 h]; Foreman [4.87 h]; Plumber Helper [4.87 h]; Plumber [4.87 h]; Operator [4.87 h]; Surveyor [4.87 h]; Surveyor Helper [4.87 h]; Mobile Crane [4.99 h]; 2.51m - 3.5m [6.82] |
| B6.33 42 11.01-1023_R | Embedment & Test(Rem) | 2.84d | 2026-10-07 | 2026-10-10 | B6.33 42 11.01-1017_R FF, B6.33 42 11.01-1023 | Labor [19.46 h]; Foreman [9.73 h]; Plumber Helper [9.73 h]; Plumber [9.73 h]; Operator [19.46 h]; Surveyor [9.73 h]; Surveyor Helper [9.73 h]; Loader [9.99 h]; Water Tanker [9.99 h]; Dump Truck [9.99 h]; Plate Compactor [9.99 h]; Roller Compactor [9.99 h]; 2.51m - 3.5m [3.03] |
| B6.33 42 11.01-1029_R | Backfilling & Warrning Tape(Rem) | 3.12d | 2026-10-07 | 2026-10-11 | B6.33 42 11.01-1025, B6.33 42 11.01-1023_R SS, B6.33 42 11.01-1029 | Labor [24.33 h]; Foreman [12.16 h]; Operator [48.65 h]; Surveyor [12.16 h]; Surveyor Helper [12.16 h]; Loader [12.48 h]; Water Tanker [12.48 h]; Dump Truck [12.48 h]; Plate Compactor [12.48 h]; Roller Compactor [12.48 h]; 2.51m - 3.5m [1.52] |
| B6.33 05 39.01.2947_R | Manhole Installation(Rem) | 2d | 2026-09-16 A | 2026-09-17 A | B6.33 05 39.01.2937, B6.33 05 39.01.2947 | Labor [2.81 h]; Operator [2.81 h]; Surveyor [1.4 h]; Surveyor Helper [1.4 h]; Boom Truck [1.44 h]; Mobile Crane [1.44 h]; MH depth 1.50 - 2.5m [0.29] |
| B6.33 05 39.01.2967_R | Backfilling(Rem) | 2d | 2026-09-19 A | 2026-09-21 A | B6.33 05 39.01.2957_R SS, B6.33 42 11.01-1.46_R SS, B6.33 05 39.01.2967, B6.33 42 11.361510_R | Labor [4.21 h]; Foreman [2.1 h]; Operator [4.21 h]; Surveyor [2.1 h]; Surveyor Helper [2.1 h]; Loader [2.16 h]; Water Tanker [2.16 h]; Dump Truck [2.16 h]; Plate Compactor [2.16 h]; MH depth 1.50 - 2.5m [0.19] |
| B6.33 05 39.01.2957_R | Test, Internal Finishing, Benching & Cover(Rem) | 2d | 2026-09-24 A | 2026-09-24 A | B6.33 05 39.01.2947_R SS, B6.33 05 39.01.2957 | Labor [5.61 h]; Foreman [2.81 h]; Plumber Helper [2.81 h]; Plumber [2.81 h]; Mason [2.81 h]; MH depth 1.50 - 2.5m [0.1] |
| B6.33 05 39.01.3037_R | Blinding Conc, & RC Base(Rem) | 2d | 2026-09-19 A | 2026-09-22 A | B6.33 05 39.01.3027, B6.33 05 39.01.3037 | Labor [4.21 h]; Foreman [2.1 h]; Laboratory Officer [2.1 h]; Carpenter [2.1 h]; Steelfixer [2.1 h]; Mason [2.1 h]; MH depth 2.51 - 3.5m [0.02] |
| B6.33 05 39.01.3047_R | Manhole Installation(Rem) | 2d | 2026-09-19 A | 2026-09-22 A | B6.33 05 39.01.3037_R SS, B6.33 05 39.01.3047 | Labor [2.81 h]; Operator [2.81 h]; Surveyor [1.4 h]; Surveyor Helper [1.4 h]; Boom Truck [1.44 h]; Mobile Crane [1.44 h]; MH depth 2.51 - 3.5m [0.07] |
| B6.33 05 39.01.3067_R | Backfilling(Rem) | 4d | 2026-09-27 A | 2026-10-01 A | B6.33 05 39.01.3057_R SS, B6.33 05 39.01.4267_R SS, B6.33 05 39.01.3067 | Labor [5.61 h]; Foreman [2.81 h]; Operator [5.61 h]; Surveyor [2.81 h]; Surveyor Helper [2.81 h]; Loader [2.88 h]; Water Tanker [2.88 h]; Dump Truck [2.88 h]; Plate Compactor [2.88 h]; MH depth 2.51 - 3.5m [0.03] |
| B6.33 05 39.01.3057_R | Test, Internal Finishing, Benching & Cover(Rem) | 2d | 2026-10-07 | 2026-10-08 | B6.33 05 39.01.3047_R SS, B6.33 05 39.01.3057 | Labor [5.61 h]; Foreman [2.81 h]; Plumber Helper [2.81 h]; Plumber [2.81 h]; Mason [2.81 h]; MH depth 2.51 - 3.5m [0.02] |
| B6.33 05 39.01.3137_R | Blinding Conc, & RC Base(Rem) | 2d | 2026-10-07 | 2026-10-08 | B6.33 05 39.01.3127, B6.33 05 39.01.3137 | Labor [5.46 h]; Foreman [2.73 h]; Laboratory Officer [2.73 h]; Carpenter [2.73 h]; Steelfixer [2.73 h]; Mason [2.73 h]; Storm MH depth 2.51 - 3.5m [0.05] |
| B6.33 05 39.01.3147_R | Manhole Installation(Rem) | 2d | 2026-10-07 | 2026-10-08 | B6.33 05 39.01.3137_R SS, B6.33 05 39.01.3147 | Labor [3.64 h]; Operator [3.64 h]; Surveyor [1.82 h]; Surveyor Helper [1.82 h]; Boom Truck [1.87 h]; Mobile Crane [1.87 h]; Storm MH depth 2.51 - 3.5m [0.23] |
| B6.33 05 39.01.3157_R | Test, Internal Finishing, Benching & Cover(Rem) | 2d | 2026-10-07 | 2026-10-08 | B6.33 05 39.01.3147_R SS, B6.33 05 39.01.3157 | Labor [7.28 h]; Foreman [3.64 h]; Plumber Helper [3.64 h]; Plumber [3.64 h]; Mason [3.64 h]; Storm MH depth 2.51 - 3.5m [0.05] |
| B6.33 05 39.01.3167_R | Backfilling(Rem) | 4d | 2026-10-07 | 2026-10-11 | B6.33 05 39.01.3157_R SS, B6.33 42 11.35-132_R SS, B6.33 42 11.36-122_R SS, B6.33 05 39.01.3067_R SS, B6.33 05 39.01.3167 | Labor [9.1 h]; Foreman [4.55 h]; Operator [9.1 h]; Surveyor [4.55 h]; Surveyor Helper [4.55 h]; Loader [4.67 h]; Water Tanker [4.67 h]; Dump Truck [4.67 h]; Plate Compactor [4.67 h]; Storm MH depth 2.51 - 3.5m [0.11] |
| B6.33 05 40.01.250_R | Excavation, Compaction & Vapour Barrier(Rem) | 2d | 2026-10-07 | 2026-10-08 | B6.33 05 39.01.3127, B6.33 05 40.01.250 | Labor [2.81 h]; Foreman [1.4 h]; Operator [2.81 h]; Surveyor [1.4 h]; Surveyor Helper [1.4 h]; Excavator (With Bucket) [1.44 h]; Water Tanker [1.44 h]; Dump Truck [1.44 h]; Roller Compactor [1.44 h]; Single Catch basin [0.27] |
| B6.33 05 40.01.260_R | Blinding Conc.(Rem) | 2d | 2026-10-07 | 2026-10-08 | B6.33 05 40.01.250_R SS, B6.33 05 40.01.260 | Labor [2.81 h]; Foreman [1.4 h]; Laboratory Officer [1.4 h]; Carpenter [1.4 h]; Steelfixer [1.4 h]; Mason [1.4 h]; Single Catch basin [0.18] |
| B6.33 05 40.01.270_R | Catch Basin Installation(Rem) | 2d | 2026-10-07 | 2026-10-08 | B6.33 05 40.01.260_R SS, B6.33 05 40.01.270 | Labor [4.21 h]; Foreman [2.1 h]; Carpenter [2.1 h]; Steelfixer [2.1 h]; Mason [2.1 h]; Operator [4.21 h]; Surveyor [2.1 h]; Surveyor Helper [2.1 h]; Boom Truck [2.16 h]; Single Catch basin [0.8] |
| B6.33 05 40.01.280_R | Backfilling, DI Frame & Grate Cover Fixing(Rem) | 2d | 2026-10-07 | 2026-10-08 | B6.33 05 40.01.270_R SS, B6.33 05 40.01.280 | Labor [5.61 h]; Foreman [2.81 h]; Operator [5.61 h]; Surveyor [2.81 h]; Surveyor Helper [2.81 h]; Loader [2.88 h]; Water Tanker [2.88 h]; Dump Truck [2.88 h]; Plate Compactor [2.88 h]; Single Catch basin [0.54] |
| B6.33 42 11.35-131_R | Catch Basin Opening Prep.(Rem) | 2d | 2026-10-07 | 2026-10-08 | B6.33 05 40.01.270_R SS, B6.33 42 11.35-131 | Labor [15.59 h]; Foreman [7.8 h]; Plumber Helper [7.8 h]; Plumber [7.8 h]; less than 1.5 [23.31] |
| B6.33 42 11.35-132_R | Fittings & Pipe Installation(Rem) | 2d | 2026-10-07 | 2026-10-08 | B6.33 42 11.35-131_R SS, B6.33 42 11.35-132 | Labor [15.59 h]; Foreman [7.8 h]; Plumber Helper [7.8 h]; Plumber [7.8 h]; Surveyor [7.8 h]; Surveyor Helper [7.8 h]; less than 1.5 [93.23] |
| B6.33 42 11.36-121_R | Catch Basin Opening Prep.(Rem) | 2.09d | 2026-10-07 | 2026-10-10 | B6.33 05 40.01.270_R SS, B6.33 42 11.36-121 | Labor [5.44 h]; Foreman [2.72 h]; Plumber Helper [2.72 h]; Plumber [2.72 h]; less than 1.5 [8.13] |
| B6.33 42 11.36-122_R | Fittings & Pipe Installation(Rem) | 3d | 2026-10-07 | 2026-10-10 | B6.33 42 11.36-121_R SS, B6.33 42 11.36-122 | Labor [10.29 h]; Foreman [5.15 h]; Plumber Helper [5.15 h]; Plumber [5.15 h]; Surveyor [5.15 h]; Surveyor Helper [5.15 h]; less than 1.5 [61.53] |
| B3.33 14 11.01.0118_R | Backfilling & Warrning Tape(Rem) | 2.18d | 2026-10-07 | 2026-10-10 | B3.33 14 11.01.0116, B3.33 14 13.01.01.5_R SS, B3.33 14 11.01.0118 | Labor [18.36 h]; Foreman [9.18 h]; Operator [36.72 h]; Surveyor [9.18 h]; Surveyor Helper [9.18 h]; Loader [9.42 h]; Water Tanker [9.42 h]; Dump Truck [9.42 h]; Plate Compactor [9.42 h]; Roller Compactor [9.42 h]; Depth: 1.51m - 2.5m |
| B3.33 05 63.02.50_R | Foundations(Rem) | 3d | 2026-10-07 | 2026-10-10 | B3.33 05 63.02.52_R SS, B3.33 05 63.02.50 | Labor [11.69 h]; Foreman [5.85 h]; Laboratory Officer [5.85 h]; Carpenter [5.85 h]; Steelfixer [5.85 h]; Mason [5.85 h]; FF Air valve Dia. 50 mm on pipes with Dia. less than 315 mm [0.05]; FF Air valve chamber; on less than 315 mm Dia. pipeline [0.06] |
| B3.33 05 63.02.51_R | Chamber Curing, Finishing & Steel Cover(Rem) | 3d | 2026-10-07 | 2026-10-10 | B3.33 05 63.02.53_R SS, B3.33 05 63.02.51 | Labor [15.59 h]; Mason [7.8 h]; FF Air valve Dia. 50 mm on pipes with Dia. less than 315 mm [0.06]; FF Air valve chamber; on less than 315 mm Dia. pipeline [0.05] |
| B3.33 05 63.02.52_R | Land Adjustment & Compaction(Rem) | 3d | 2026-10-07 | 2026-10-10 | B3.1. 33 14 13.0116 SS, B3.33 05 63.02.52 | Labor [7.8 h]; Foreman [3.9 h]; Operator [15.59 h]; Surveyor [3.9 h]; Surveyor Helper [3.9 h]; Excavator (With Bucket) [4 h]; Water Tanker [4 h]; Dump Truck [4 h]; Plate Compactor [4 h]; FF Air valve Dia. 50 mm on pipes with Dia. less than 315 mm [0.05]; FF Air valve chamber; on less than 315 mm Dia. pipeline [0.05] |
| B3.33 05 63.02.53_R | Chambers Walls Conc Cast In Situ(Rem) | 3d | 2026-10-07 | 2026-10-10 | B3.33 05 63.02.50_R SS, B3.33 05 63.02.53 | Labor [11.69 h]; Foreman [5.85 h]; Laboratory Officer [5.85 h]; Carpenter [5.85 h]; Steelfixer [5.85 h]; Mason [5.85 h]; FF Air valve Dia. 50 mm on pipes with Dia. less than 315 mm [0.06]; FF Air valve chamber; on less than 315 mm Dia. pipeline [0.06] |
| B3.33 14 19.01.fh25_R | Firehydrant Fixing/Installation(Rem) | 4.97d | 2026-10-07 | 2026-10-12 | B3.33 14 19.01.fh26, B3.33 14 19.01.fh25 | Labor [46.31 h]; Foreman [23.15 h]; Plumber Helper [23.15 h]; Plumber [23.15 h]; Operator [46.31 h]; Surveyor [23.15 h]; Surveyor Helper [23.15 h]; JCB [23.76 h]; 3-outlet fire hydrant (2 x 2.5 inch and 1 x 4.5 inch) in the form of a separate dry vacuum cylinder [4.43] |
| B3.33 14 19.01.fh27_R | Backfilling & Compaction(Rem) | 6.95d | 2026-10-07 | 2026-10-14 | B3.33 14 19.01.fh25_R SS, B3.33 14 19.01.fh27 | Labor [77.18 h]; Foreman [38.59 h]; Operator [77.18 h]; Surveyor [38.59 h]; Surveyor Helper [38.59 h]; Loader [39.6 h]; Water Tanker [39.6 h]; Dump Truck [39.6 h]; Plate Compactor [39.6 h]; 3-outlet fire hydrant (2 x 2.5 inch and 1 x 4.5 inch) in the form of a separate dry vacuum cylinder [1.48] |
| B4.33 14 13.0110_R | Excavation(Rem) | 3.46d | 2026-10-12 | 2026-10-15 | B3.33 05 63.02.89 FF, B3.1. 33 14 13.0110, B4.33 14 13.0110 | Labor [38.41 h]; Foreman [19.21 h]; Operator [38.41 h]; Surveyor [19.21 h]; Surveyor Helper [19.21 h]; Excavator (With Bucket) [19.71 h]; Water Tanker [19.71 h]; Dump Truck [19.71 h]; Plate Compactor [19.71 h]; Dia. 125mm 0.0m - 1.5m [66.35] |
| B4.33 14 13.0112_R | Sand Bedding(Rem) | 2.64d | 2026-10-13 | 2026-10-15 | B4.33 14 13.0110_R FF, B4.33 14 13.0112 | Labor [25.61 h]; Foreman [12.8 h]; Operator [51.21 h]; Surveyor [12.8 h]; Surveyor Helper [12.8 h]; Loader [13.14 h]; Water Tanker [13.14 h]; Dump Truck [13.14 h]; Plate Compactor [13.14 h]; Dia. 125mm 0.0m - 1.5m [16.59] |
| B4.33 14 13.0114_R | Pipe Laying(Rem) | 2.64d | 2026-10-13 | 2026-10-15 | B4.33 14 13.0112_R FF, B4.33 14 13.0114 | Labor [25.61 h]; Foreman [12.8 h]; Plumber Helper [12.8 h]; Plumber [12.8 h]; Operator [12.8 h]; Surveyor [12.8 h]; Surveyor Helper [12.8 h]; Mobile Crane [13.14 h]; Dia. 125mm 0.0m - 1.5m [149.29] |
| B4.33 14 13.0116_R | Embedment & Test(Rem) | 4.29d | 2026-10-13 | 2026-10-18 | B4.33 14 13.0114_R FF, B3.33 14 19.01.142_R SS, B4.33 14 13.0116 | Labor [51.21 h]; Foreman [25.61 h]; Plumber Helper [25.61 h]; Plumber [25.61 h]; Operator [51.21 h]; Surveyor [25.61 h]; Surveyor Helper [25.61 h]; Loader [26.28 h]; Water Tanker [26.28 h]; Dump Truck [26.28 h]; Plate Compactor [26.28 h]; Roller Compactor [26.28 h]; Dia. 125mm 0.0m - 1.5m [66.35] |
| B4.33 14 13.0118_R | Backfilling & Warrning Tape(Rem) | 5.11d | 2026-10-13 | 2026-10-19 | B3.33 14 19.01.143 FF, B3.33 14 19.01.163 FF, B4.33 14 13.0116_R SS, B4.33 14 13.0118 | Labor [64.02 h]; Foreman [32.01 h]; Operator [128.04 h]; Surveyor [32.01 h]; Surveyor Helper [32.01 h]; Loader [32.85 h]; Water Tanker [32.85 h]; Dump Truck [32.85 h]; Plate Compactor [32.85 h]; Roller Compactor [32.85 h]; Dia. 125mm 0.0m - 1.5m [33.17] |
| B3.33 14 19.01.142_R | Burried Isolation Valve Installation(Rem) | 2d | 2026-10-13 | 2026-10-15 | B4.33 14 13.0114_R SS, B3.33 14 19.01.142 | Labor [15.59 h]; Plumber Helper [7.8 h]; Plumber [7.8 h]; Operator [15.59 h]; Boom Truck [8 h]; TSE Gate V Dia. 100 mm [2.8] |
| B3.33 14 19.01.153_R | Burried Isolation Valve Installation(Rem) | 2d | 2026-10-13 | 2026-10-15 | B3.33 14 19.01.142_R SS, B3.33 14 19.01.153 | Labor [15.59 h]; Plumber Helper [7.8 h]; Plumber [7.8 h]; Operator [15.59 h]; Boom Truck [8 h]; TSE Gate V Dia. 150 mm [0.7] |
| B1.2.32 11 13.01.6_R | Subgrade(Rem) | 2d | 2026-10-07 | 2026-10-08 | B1.2.31 23 23.01.6, B1.2.32 11 13.01.6 | Subgrade [468.26]; Labor [10.91 h]; Foreman [5.46 h]; Operator [10.91 h]; Surveyor [5.46 h]; Surveyor Helper [5.46 h]; Grader [5.6 h]; Loader [5.6 h]; Water Tanker [5.6 h]; Dump Truck [5.6 h]; Plate Compactor [5.6 h]; Roller Compactor [5.6 h] |
| B1.2.32 11 23.01.6_R | Aggregate Base Course(Rem) | 2d | 2026-10-07 | 2026-10-08 | B1.2.32 11 13.01.6_R FF, B1.2.32 11 23.01.6 | Aggregate base course [767.06]; Labor [26.82 h]; Foreman [13.41 h]; Operator [26.82 h]; Surveyor [13.41 h]; Surveyor Helper [13.41 h]; Grader [13.76 h]; Loader [13.76 h]; Water Tanker [13.76 h]; Dump Truck [13.76 h]; Plate Compactor [13.76 h]; Roller Compactor [13.76 h] |
| B6.33 42 11.013_R | Pipe Laying(Rem) | 2.28d | 2026-09-21 A | 2026-10-08 | B6.33 42 11.012, B6.33 42 11.013 | Labor [8.99 h]; Foreman [4.5 h]; Plumber Helper [4.5 h]; Plumber [4.5 h]; Operator [4.5 h]; Surveyor [4.5 h]; Surveyor Helper [4.5 h]; Mobile Crane [4.61 h]; Depth less than 1.5 [172.05] |
| B6.33 42 11.014_R | Embedment & Test(Rem) | 2.56d | 2026-09-26 A | 2026-10-08 | B6.33 42 11.013_R FF, B6.33 42 11.014 | Labor [13.49 h]; Foreman [6.75 h]; Plumber Helper [6.75 h]; Plumber [6.75 h]; Operator [13.49 h]; Surveyor [6.75 h]; Surveyor Helper [6.75 h]; Loader [6.92 h]; Water Tanker [6.92 h]; Dump Truck [6.92 h]; Plate Compactor [6.92 h]; Roller Compactor [6.92 h]; Depth less than 1.5 [76.6] |
| B6.33 42 11.015_R | Backfilling & Warrning Tape(Rem) | 2.56d | 2026-10-11 | 2026-10-13 | B6.33 42 11.014_R FF, B6.33 42 11.01-134_R SS, B6.33 42 11.31-1 9_R SS, B6.33 42 11.015 | Labor [13.49 h]; Foreman [6.75 h]; Operator [26.98 h]; Surveyor [6.75 h]; Surveyor Helper [6.75 h]; Loader [6.92 h]; Water Tanker [6.92 h]; Dump Truck [6.92 h]; Plate Compactor [6.92 h]; Roller Compactor [6.92 h]; Depth less than 1.5 [38.3] |
| B6.33 42 11.02.4_R | Embedment & Test(Rem) | 2.84d | 2026-10-13 | 2026-10-17 | B6.33 42 11.02.3, B6.33 42 11.02.4, B6.33 42 11.015_R | Labor [19.24 h]; Foreman [9.62 h]; Plumber Helper [9.62 h]; Plumber [9.62 h]; Operator [19.24 h]; Surveyor [9.62 h]; Surveyor Helper [9.62 h]; Loader [9.87 h]; Water Tanker [9.87 h]; Dump Truck [9.87 h]; Plate Compactor [9.87 h]; Roller Compactor [9.87 h]; Depth: 1.51m - 2.5m [1.23] |
| B6.33 42 11.02.5_R | Backfilling & Warrning Tape(Rem) | 4d | 2026-10-19 | 2026-10-24 | B6.33 42 11.01-1.42, B6.33 42 11.02.4_R FF, B6.33 42 11.02.5, B6.33 42 11.02.4_R, B6.33 42 11.13.105_R, B6.33 05 39.01.3167_R | Labor [24.05 h]; Foreman [12.02 h]; Operator [48.1 h]; Surveyor [12.02 h]; Surveyor Helper [12.02 h]; Loader [12.34 h]; Water Tanker [12.34 h]; Dump Truck [12.34 h]; Plate Compactor [12.34 h]; Roller Compactor [12.34 h]; Depth: 1.51m - 2.5m [0.62] |
| B6.33 42 11.361060_R | Backfilling & Warrning Tape(Rem) | 3.12d | 2026-10-07 | 2026-10-11 | B6.33 42 11.361050, B6.33 42 11.361060 | Labor [24.05 h]; Foreman [12.02 h]; Operator [48.1 h]; Surveyor [12.02 h]; Surveyor Helper [12.02 h]; Loader [12.34 h]; Water Tanker [12.34 h]; Dump Truck [12.34 h]; Plate Compactor [12.34 h]; Roller Compactor [12.34 h]; less than 1.5 [35.17] |
| B6.33 42 11.361070_R | Excavation(Rem) | 2.28d | 2026-10-07 | 2026-10-10 | B6.33 42 11.361020, B6.33 42 11.361070 | Labor [9.15 h]; Foreman [4.58 h]; Operator [9.15 h]; Surveyor [4.58 h]; Surveyor Helper [4.58 h]; Excavator (With Bucket) [4.7 h]; Water Tanker [4.7 h]; Dump Truck [4.7 h]; Plate Compactor [4.7 h]; less than 1.5 [23.28] |
| B6.33 42 11.361080_R | Sand Bedding(Rem) | 2.28d | 2026-10-07 | 2026-10-10 | B6.33 42 11.361070_R FF, B6.33 42 11.361080 | Labor [9.15 h]; Foreman [4.58 h]; Operator [18.31 h]; Surveyor [4.58 h]; Surveyor Helper [4.58 h]; Loader [4.7 h]; Water Tanker [4.7 h]; Dump Truck [4.7 h]; Plate Compactor [4.7 h]; less than 1.5 [5.95] |
| B6.33 42 11.361090_R | Pipe Laying(Rem) | 2.28d | 2026-10-07 | 2026-10-10 | B6.33 42 11.361080_R FF, B6.33 42 11.361090 | Labor [9.15 h]; Foreman [4.58 h]; Plumber Helper [4.58 h]; Plumber [4.58 h]; Operator [4.58 h]; Surveyor [4.58 h]; Surveyor Helper [4.58 h]; Mobile Crane [4.7 h]; less than 1.5 [52.85] |
| B6.33 42 11.361100_R | Embedment & Test(Rem) | 2.56d | 2026-10-07 | 2026-10-10 | B6.33 42 11.361090_R FF, B6.33 42 11.361100 | Labor [13.73 h]; Foreman [6.86 h]; Plumber Helper [6.86 h]; Plumber [6.86 h]; Operator [13.73 h]; Surveyor [6.86 h]; Surveyor Helper [6.86 h]; Loader [7.04 h]; Water Tanker [7.04 h]; Dump Truck [7.04 h]; Plate Compactor [7.04 h]; Roller Compactor [7.04 h]; less than 1.5 [23.45] |
| B6.33 42 11.361110_R | Backfilling & Warrning Tape(Rem) | 2.56d | 2026-10-07 | 2026-10-10 | B6.33 42 11.361100_R FF, B6.33 42 11.361110 | Labor [13.73 h]; Foreman [6.86 h]; Operator [27.46 h]; Surveyor [6.86 h]; Surveyor Helper [6.86 h]; Loader [7.04 h]; Water Tanker [7.04 h]; Dump Truck [7.04 h]; Plate Compactor [7.04 h]; Roller Compactor [7.04 h]; less than 1.5 [11.73] |
| B6.33 42 11.361120_R | Excavation(Rem) | 2.28d | 2026-09-22 A | 2026-10-08 | B6.33 42 11.361070_R SS, B6.33 42 11.361120 | Labor [10.89 h]; Foreman [5.44 h]; Operator [10.89 h]; Surveyor [5.44 h]; Surveyor Helper [5.44 h]; Excavator (With Bucket) [5.59 h]; Water Tanker [5.59 h]; Dump Truck [5.59 h]; Plate Compactor [5.59 h]; less than 1.5 [10.46] |
| B6.33 42 11.361130_R | Sand Bedding(Rem) | 2.28d | 2026-09-26 A | 2026-10-08 | B6.33 42 11.361120_R FF, B6.33 42 11.361130 | Labor [10.89 h]; Foreman [5.44 h]; Operator [21.77 h]; Surveyor [5.44 h]; Surveyor Helper [5.44 h]; Loader [5.59 h]; Water Tanker [5.59 h]; Dump Truck [5.59 h]; Plate Compactor [5.59 h]; less than 1.5 [2.67] |
| B6.33 42 11.361140_R | Pipe Laying(Rem) | 2.28d | 2026-09-27 A | 2026-10-08 | B6.33 42 11.361130_R FF, B6.33 42 11.361140 | Labor [10.89 h]; Foreman [5.44 h]; Plumber Helper [5.44 h]; Plumber [5.44 h]; Operator [5.44 h]; Surveyor [5.44 h]; Surveyor Helper [5.44 h]; Mobile Crane [5.59 h]; less than 1.5 [23.74] |
| B6.33 42 11.361150_R | Embedment & Test(Rem) | 2.56d | 2026-10-01 A | 2026-10-08 | B6.33 42 11.361140_R FF, B6.33 42 11.361150 | Labor [16.33 h]; Foreman [8.16 h]; Plumber Helper [8.16 h]; Plumber [8.16 h]; Operator [16.33 h]; Surveyor [8.16 h]; Surveyor Helper [8.16 h]; Loader [8.38 h]; Water Tanker [8.38 h]; Dump Truck [8.38 h]; Plate Compactor [8.38 h]; Roller Compactor [8.38 h]; less than 1.5 [10.53] |
| B6.33 42 11.361160_R | Backfilling & Warrning Tape(Rem) | 2.56d | 2026-10-07 | 2026-10-10 | B6.33 42 11.361150_R FF, B6.33 05 39.01.3467_R SS, B6.33 42 11.361160 | Labor [16.33 h]; Foreman [8.16 h]; Operator [32.66 h]; Surveyor [8.16 h]; Surveyor Helper [8.16 h]; Loader [8.38 h]; Water Tanker [8.38 h]; Dump Truck [8.38 h]; Plate Compactor [8.38 h]; Roller Compactor [8.38 h]; less than 1.5 [5.27] |
| B6.33 42 11.361170_R | Excavation(Rem) | 2.28d | 2026-09-06 A | 2026-10-08 | B6.33 42 11.361120_R SS, B6.33 42 11.361170 | Labor [10.89 h]; Foreman [5.44 h]; Operator [10.89 h]; Surveyor [5.44 h]; Surveyor Helper [5.44 h]; Excavator (With Bucket) [5.59 h]; Water Tanker [5.59 h]; Dump Truck [5.59 h]; Plate Compactor [5.59 h]; less than 1.5 [8.09] |
| B6.33 42 11.361180_R | Sand Bedding(Rem) | 2.28d | 2026-09-10 A | 2026-10-08 | B6.33 42 11.361170_R FF, B6.33 42 11.361180 | Labor [10.89 h]; Foreman [5.44 h]; Operator [21.77 h]; Surveyor [5.44 h]; Surveyor Helper [5.44 h]; Loader [5.59 h]; Water Tanker [5.59 h]; Dump Truck [5.59 h]; Plate Compactor [5.59 h]; less than 1.5 [2.07] |
| B6.33 42 11.361190_R | Pipe Laying(Rem) | 2.28d | 2026-09-13 A | 2026-10-08 | B6.33 42 11.361180_R FF, B6.33 42 11.361190 | Labor [10.89 h]; Foreman [5.44 h]; Plumber Helper [5.44 h]; Plumber [5.44 h]; Operator [5.44 h]; Surveyor [5.44 h]; Surveyor Helper [5.44 h]; Mobile Crane [5.59 h]; less than 1.5 [18.36] |
| B6.33 42 11.361200_R | Embedment & Test(Rem) | 2.56d | 2026-09-15 A | 2026-10-08 | B6.33 42 11.361190_R FF, B6.33 42 11.361200 | Labor [16.33 h]; Foreman [8.16 h]; Plumber Helper [8.16 h]; Plumber [8.16 h]; Operator [16.33 h]; Surveyor [8.16 h]; Surveyor Helper [8.16 h]; Loader [8.38 h]; Water Tanker [8.38 h]; Dump Truck [8.38 h]; Plate Compactor [8.38 h]; Roller Compactor [8.38 h]; less than 1.5 [8.15] |
| B6.33 42 11.361210_R | Backfilling & Warrning Tape(Rem) | 2.56d | 2026-10-10 | 2026-10-13 | B6.33 42 11.01-1.44, B6.33 42 11.361200_R FF, B6.33 42 11.361210, B6.33 42 11.361110_R | Labor [16.33 h]; Foreman [8.16 h]; Operator [32.66 h]; Surveyor [8.16 h]; Surveyor Helper [8.16 h]; Loader [8.38 h]; Water Tanker [8.38 h]; Dump Truck [8.38 h]; Plate Compactor [8.38 h]; Roller Compactor [8.38 h]; less than 1.5 [4.07] |
| B6.33 42 11.13.1_R | Excavation(Rem) | 2.28d | 2026-09-05 A | 2026-09-19 A | B6.33 42 11.02.1, B6.33 42 11.13.1 | Labor [9.25 h]; Foreman [4.62 h]; Operator [9.25 h]; Surveyor [4.62 h]; Surveyor Helper [4.62 h]; Excavator (With Bucket) [4.74 h]; Water Tanker [4.74 h]; Dump Truck [4.74 h]; Plate Compactor [4.74 h]; 1.51m - 2.5m [5.72] |
| B6.33 42 11.13.2_R | Sand Bedding(Rem) | 2.28d | 2026-09-12 A | 2026-09-24 A | B6.33 42 11.13.1_R FF, B6.33 42 11.13.2 | Labor [9.25 h]; Foreman [4.62 h]; Operator [18.5 h]; Surveyor [4.62 h]; Surveyor Helper [4.62 h]; Loader [4.74 h]; Water Tanker [4.74 h]; Dump Truck [4.74 h]; Plate Compactor [4.74 h]; 1.51m - 2.5m [1.43] |
| B6.33 42 11.13.3_R | Pipe Laying(Rem) | 2.28d | 2026-09-14 A | 2026-10-01 A | B6.33 42 11.13.2_R FF, B6.33 42 11.13.3 | Labor [9.25 h]; Foreman [4.62 h]; Plumber Helper [4.62 h]; Plumber [4.62 h]; Operator [4.62 h]; Surveyor [4.62 h]; Surveyor Helper [4.62 h]; Mobile Crane [4.74 h]; 1.51m - 2.5m [12.86] |
| B6.33 42 11.13.4_R | Embedment & Test(Rem) | 2.84d | 2026-09-26 A | 2026-10-05 A | B6.33 42 11.13.3_R FF, B6.33 42 11.13.4 | Labor [18.5 h]; Foreman [9.25 h]; Plumber Helper [9.25 h]; Plumber [9.25 h]; Operator [18.5 h]; Surveyor [9.25 h]; Surveyor Helper [9.25 h]; Loader [9.49 h]; Water Tanker [9.49 h]; Dump Truck [9.49 h]; Plate Compactor [9.49 h]; Roller Compactor [9.49 h]; 1.51m - 2.5m [5.72] |
| B6.33 42 11.13.5_R | Backfilling & Warrning Tape(Rem) | 3.12d | 2026-09-26 A | 2026-10-06 A | B6.33 42 11.13.4_R FF, B6.33 42 11.13.5 | Labor [23.12 h]; Foreman [11.56 h]; Operator [46.24 h]; Surveyor [11.56 h]; Surveyor Helper [11.56 h]; Loader [11.86 h]; Water Tanker [11.86 h]; Dump Truck [11.86 h]; Plate Compactor [11.86 h]; Roller Compactor [11.86 h]; 1.51m - 2.5m [2.86] |
| B6.33 42 11.361320_R | Excavation(Rem) | 2.28d | 2026-10-07 | 2026-10-10 | B6.33 42 11.361270_R SS, B6.33 42 11.361320 | Labor [9.25 h]; Foreman [4.62 h]; Operator [9.25 h]; Surveyor [4.62 h]; Surveyor Helper [4.62 h]; Excavator (With Bucket) [4.74 h]; Water Tanker [4.74 h]; Dump Truck [4.74 h]; Plate Compactor [4.74 h]; less than 1.5 |
| B6.33 42 11.361330_R | Sand Bedding(Rem) | 2.28d | 2026-10-07 | 2026-10-10 | B6.33 42 11.361320_R FF, B6.33 42 11.361330 | Labor [9.25 h]; Foreman [4.62 h]; Operator [18.5 h]; Surveyor [4.62 h]; Surveyor Helper [4.62 h]; Loader [4.74 h]; Water Tanker [4.74 h]; Dump Truck [4.74 h]; Plate Compactor [4.74 h]; less than 1.5 |
| B6.33 42 11.361340_R | Pipe Laying(Rem) | 2.28d | 2026-10-07 | 2026-10-10 | B6.33 42 11.361330_R FF, B6.33 42 11.361340 | Labor [9.25 h]; Foreman [4.62 h]; Plumber Helper [4.62 h]; Plumber [4.62 h]; Operator [4.62 h]; Surveyor [4.62 h]; Surveyor Helper [4.62 h]; Mobile Crane [4.74 h]; less than 1.5 |
| B6.33 42 11.361350_R | Embedment & Test(Rem) | 2.56d | 2026-10-07 | 2026-10-10 | B6.33 42 11.361340_R FF, B6.33 42 11.361350 | Labor [13.87 h]; Foreman [6.94 h]; Plumber Helper [6.94 h]; Plumber [6.94 h]; Operator [13.87 h]; Surveyor [6.94 h]; Surveyor Helper [6.94 h]; Loader [7.12 h]; Water Tanker [7.12 h]; Dump Truck [7.12 h]; Plate Compactor [7.12 h]; Roller Compactor [7.12 h]; less than 1.5 |
| B6.33 42 11.361360_R | Backfilling & Warrning Tape(Rem) | 2.56d | 2026-10-13 | 2026-10-15 | B6.33 42 11.361350_R FF, B6.33 42 11.361260_R SS, B6.33 42 11.361360 | Labor [13.87 h]; Foreman [6.94 h]; Operator [27.74 h]; Surveyor [6.94 h]; Surveyor Helper [6.94 h]; Loader [7.12 h]; Water Tanker [7.12 h]; Dump Truck [7.12 h]; Plate Compactor [7.12 h]; Roller Compactor [7.12 h]; less than 1.5 |
| B6.33 42 11.13.55_R | Backfilling & Warrning Tape(Rem) | 3.12d | 2026-10-15 | 2026-10-19 | B6.33 42 11.13.45, B6.33 42 11.361160_R SS, B6.33 42 11.361060_R SS, B6.33 42 11.13.55, B6.33 05 39.01.3417_R | Labor [23.12 h]; Foreman [11.56 h]; Operator [46.24 h]; Surveyor [11.56 h]; Surveyor Helper [11.56 h]; Loader [11.86 h]; Water Tanker [11.86 h]; Dump Truck [11.86 h]; Plate Compactor [11.86 h]; Roller Compactor [11.86 h]; 1.51m - 2.5m [2.84] |
| B6.33 42 11.361370_R | Excavation(Rem) | 2.28d | 2026-10-07 | 2026-10-10 | B6.33 42 11.361320_R SS, B6.33 42 11.361370 | Labor [9.47 h]; Foreman [4.73 h]; Operator [9.47 h]; Surveyor [4.73 h]; Surveyor Helper [4.73 h]; Excavator (With Bucket) [4.86 h]; Water Tanker [4.86 h]; Dump Truck [4.86 h]; Plate Compactor [4.86 h]; less than 1.5 |
| B6.33 42 11.361380_R | Sand Bedding(Rem) | 2.28d | 2026-10-07 | 2026-10-10 | B6.33 42 11.361370_R FF, B6.33 42 11.361380 | Labor [9.47 h]; Foreman [4.73 h]; Operator [18.93 h]; Surveyor [4.73 h]; Surveyor Helper [4.73 h]; Loader [4.86 h]; Water Tanker [4.86 h]; Dump Truck [4.86 h]; Plate Compactor [4.86 h]; less than 1.5 |
| B6.33 42 11.361390_R | Pipe Laying(Rem) | 2.28d | 2026-10-07 | 2026-10-10 | B6.33 42 11.361380_R FF, B6.33 42 11.361390 | Labor [9.47 h]; Foreman [4.73 h]; Plumber Helper [4.73 h]; Plumber [4.73 h]; Operator [4.73 h]; Surveyor [4.73 h]; Surveyor Helper [4.73 h]; Mobile Crane [4.86 h]; less than 1.5 |
| B6.33 42 11.361400_R | Embedment & Test(Rem) | 2.56d | 2026-10-07 | 2026-10-10 | B6.33 42 11.361390_R FF, B6.33 42 11.361400 | Labor [14.2 h]; Foreman [7.1 h]; Plumber Helper [7.1 h]; Plumber [7.1 h]; Operator [14.2 h]; Surveyor [7.1 h]; Surveyor Helper [7.1 h]; Loader [7.29 h]; Water Tanker [7.29 h]; Dump Truck [7.29 h]; Plate Compactor [7.29 h]; Roller Compactor [7.29 h]; less than 1.5 |
| B6.33 42 11.361410_R | Backfilling & Warrning Tape(Rem) | 2.56d | 2026-10-15 | 2026-10-18 | B6.33 42 11.361400_R FF, B6.33 42 11.13.55_R SS, B6.33 42 11.361410 | Labor [14.2 h]; Foreman [7.1 h]; Operator [28.4 h]; Surveyor [7.1 h]; Surveyor Helper [7.1 h]; Loader [7.29 h]; Water Tanker [7.29 h]; Dump Truck [7.29 h]; Plate Compactor [7.29 h]; Roller Compactor [7.29 h]; less than 1.5 |
| B6.33 42 11.361220_R | Excavation(Rem) | 2.28d | 2026-10-07 | 2026-10-10 | B6.33 42 11.13.15, B6.33 42 11.361220 | Labor [9.66 h]; Foreman [4.83 h]; Operator [9.66 h]; Surveyor [4.83 h]; Surveyor Helper [4.83 h]; Excavator (With Bucket) [4.95 h]; Water Tanker [4.95 h]; Dump Truck [4.95 h]; Plate Compactor [4.95 h]; less than 1.5 |
| B6.33 42 11.361230_R | Sand Bedding(Rem) | 2.28d | 2026-10-07 | 2026-10-10 | B6.33 42 11.361220_R FF, B6.33 42 11.361230 | Labor [9.66 h]; Foreman [4.83 h]; Operator [19.31 h]; Surveyor [4.83 h]; Surveyor Helper [4.83 h]; Loader [4.95 h]; Water Tanker [4.95 h]; Dump Truck [4.95 h]; Plate Compactor [4.95 h]; less than 1.5 |
| B6.33 42 11.361240_R | Pipe Laying(Rem) | 2.28d | 2026-10-07 | 2026-10-10 | B6.33 42 11.361230_R FF, B6.33 42 11.361240 | Labor [9.66 h]; Foreman [4.83 h]; Plumber Helper [4.83 h]; Plumber [4.83 h]; Operator [4.83 h]; Surveyor [4.83 h]; Surveyor Helper [4.83 h]; Mobile Crane [4.95 h]; less than 1.5 |
| B6.33 42 11.361250_R | Embedment & Test(Rem) | 2.56d | 2026-10-07 | 2026-10-10 | B6.33 42 11.361240_R FF, B6.33 42 11.361250 | Labor [14.48 h]; Foreman [7.24 h]; Plumber Helper [7.24 h]; Plumber [7.24 h]; Operator [14.48 h]; Surveyor [7.24 h]; Surveyor Helper [7.24 h]; Loader [7.43 h]; Water Tanker [7.43 h]; Dump Truck [7.43 h]; Plate Compactor [7.43 h]; Roller Compactor [7.43 h]; less than 1.5 |
| B6.33 42 11.361260_R | Backfilling & Warrning Tape(Rem) | 2.56d | 2026-10-13 | 2026-10-15 | B6.33 42 11.361250_R FF, B6.33 42 11.13.5_R SS, B6.33 42 11.361260, B6.33 42 11.361210_R | Labor [14.48 h]; Foreman [7.24 h]; Operator [28.97 h]; Surveyor [7.24 h]; Surveyor Helper [7.24 h]; Loader [7.43 h]; Water Tanker [7.43 h]; Dump Truck [7.43 h]; Plate Compactor [7.43 h]; Roller Compactor [7.43 h]; less than 1.5 |
| B6.33 42 11.13.105_R | Backfilling & Warrning Tape(Rem) | 3.12d | 2026-10-15 | 2026-10-19 | B6.33 42 11.13.95, B6.33 42 11.361410_R SS, B6.33 42 11.361310_R SS, B6.33 42 11.13.105 | Labor [24.14 h]; Foreman [12.07 h]; Operator [48.28 h]; Surveyor [12.07 h]; Surveyor Helper [12.07 h]; Loader [12.38 h]; Water Tanker [12.38 h]; Dump Truck [12.38 h]; Plate Compactor [12.38 h]; Roller Compactor [12.38 h]; 1.51m - 2.5m [11.76] |
| B6.33 42 11.361270_R | Excavation(Rem) | 2.28d | 2026-10-07 | 2026-10-10 | B6.33 42 11.361220_R SS, B6.33 42 11.361270 | Labor [14.35 h]; Foreman [7.18 h]; Operator [14.35 h]; Surveyor [7.18 h]; Surveyor Helper [7.18 h]; Excavator (With Bucket) [7.36 h]; Water Tanker [7.36 h]; Dump Truck [7.36 h]; Plate Compactor [7.36 h]; less than 1.5 |
| B6.33 42 11.361280_R | Sand Bedding(Rem) | 2.28d | 2026-10-07 | 2026-10-10 | B6.33 42 11.361270_R FF, B6.33 42 11.361280 | Labor [12.62 h]; Foreman [6.31 h]; Operator [25.24 h]; Surveyor [6.31 h]; Surveyor Helper [6.31 h]; Loader [6.47 h]; Water Tanker [6.47 h]; Dump Truck [6.47 h]; Plate Compactor [6.47 h]; less than 1.5 |
| B6.33 42 11.361290_R | Pipe Laying(Rem) | 2.28d | 2026-10-07 | 2026-10-10 | B6.33 42 11.361280_R FF, B6.33 42 11.361290 | Labor [14.39 h]; Foreman [7.19 h]; Plumber Helper [7.19 h]; Plumber [7.19 h]; Operator [7.19 h]; Surveyor [7.19 h]; Surveyor Helper [7.19 h]; Mobile Crane [7.38 h]; less than 1.5 |
| B6.33 42 11.361300_R | Embedment & Test(Rem) | 2.56d | 2026-10-07 | 2026-10-10 | B6.33 42 11.361290_R FF, B6.33 42 11.361300 | Labor [21.58 h]; Foreman [10.79 h]; Plumber Helper [10.79 h]; Plumber [10.79 h]; Operator [21.58 h]; Surveyor [10.79 h]; Surveyor Helper [10.79 h]; Loader [11.07 h]; Water Tanker [11.07 h]; Dump Truck [11.07 h]; Plate Compactor [11.07 h]; Roller Compactor [11.07 h]; less than 1.5 |
| B6.33 42 11.361310_R | Backfilling & Warrning Tape(Rem) | 2.84d | 2026-10-07 | 2026-10-10 | B6.33 42 11.361300_R FF, B6.33 42 11.361310 | Labor [28.77 h]; Foreman [14.39 h]; Operator [57.55 h]; Surveyor [14.39 h]; Surveyor Helper [14.39 h]; Loader [14.76 h]; Water Tanker [14.76 h]; Dump Truck [14.76 h]; Plate Compactor [14.76 h]; Roller Compactor [14.76 h]; less than 1.5 |
| B6.33 42 11.13.115_R | Excavation(Rem) | 2.28d | 2026-09-24 A | 2026-10-08 | B6.33 42 11.13.65, B6.33 42 11.13.115 | Labor [9.25 h]; Foreman [4.62 h]; Operator [9.25 h]; Surveyor [4.62 h]; Surveyor Helper [4.62 h]; Excavator (With Bucket) [4.74 h]; Water Tanker [4.74 h]; Dump Truck [4.74 h]; Plate Compactor [4.74 h]; 1.51m - 2.5m [6.51] |
| B6.33 42 11.13.125_R | Sand Bedding(Rem) | 2.28d | 2026-09-26 A | 2026-10-08 | B6.33 42 11.13.115_R FF, B6.33 42 11.13.125 | Labor [9.25 h]; Foreman [4.62 h]; Operator [18.5 h]; Surveyor [4.62 h]; Surveyor Helper [4.62 h]; Loader [4.74 h]; Water Tanker [4.74 h]; Dump Truck [4.74 h]; Plate Compactor [4.74 h]; 1.51m - 2.5m [1.63] |
| B6.33 42 11.13.135_R | Pipe Laying(Rem) | 2.28d | 2026-09-28 A | 2026-10-08 | B6.33 42 11.13.125_R FF, B6.33 42 11.13.135 | Labor [9.25 h]; Foreman [4.62 h]; Plumber Helper [4.62 h]; Plumber [4.62 h]; Operator [4.62 h]; Surveyor [4.62 h]; Surveyor Helper [4.62 h]; Mobile Crane [4.74 h]; 1.51m - 2.5m [14.62] |
| B6.33 42 11.13.145_R | Embedment & Test(Rem) | 2.84d | 2026-09-30 A | 2026-10-08 | B6.33 42 11.13.135_R FF, B6.33 42 11.13.145 | Labor [18.5 h]; Foreman [9.25 h]; Plumber Helper [9.25 h]; Plumber [9.25 h]; Operator [18.5 h]; Surveyor [9.25 h]; Surveyor Helper [9.25 h]; Loader [9.49 h]; Water Tanker [9.49 h]; Dump Truck [9.49 h]; Plate Compactor [9.49 h]; Roller Compactor [9.49 h]; 1.51m - 2.5m [6.5] |
| B6.33 42 11.13.155_R | Backfilling & Warrning Tape(Rem) | 3.12d | 2026-10-11 | 2026-10-15 | B6.33 42 11.13.145_R FF, B6.33 42 11.03-113_R SS, B6.33 42 11.13.155 | Labor [23.12 h]; Foreman [11.56 h]; Operator [46.24 h]; Surveyor [11.56 h]; Surveyor Helper [11.56 h]; Loader [11.86 h]; Water Tanker [11.86 h]; Dump Truck [11.86 h]; Plate Compactor [11.86 h]; Roller Compactor [11.86 h]; 1.51m - 2.5m [3.25] |
| B6.33 42 11.361420_R | Excavation(Rem) | 2.28d | 2026-10-07 | 2026-10-10 | B6.33 42 11.13.115_R SS, B6.33 42 11.361420 | Labor [9.31 h]; Foreman [4.66 h]; Operator [9.31 h]; Surveyor [4.66 h]; Surveyor Helper [4.66 h]; Excavator (With Bucket) [4.78 h]; Water Tanker [4.78 h]; Dump Truck [4.78 h]; Plate Compactor [4.78 h]; less than 1.5 |
| B6.33 42 11.361430_R | Sand Bedding(Rem) | 2.28d | 2026-10-07 | 2026-10-10 | B6.33 42 11.361420_R FF, B6.33 42 11.361430 | Labor [9.31 h]; Foreman [4.66 h]; Operator [18.63 h]; Surveyor [4.66 h]; Surveyor Helper [4.66 h]; Loader [4.78 h]; Water Tanker [4.78 h]; Dump Truck [4.78 h]; Plate Compactor [4.78 h]; less than 1.5 |
| B6.33 42 11.361440_R | Pipe Laying(Rem) | 2.28d | 2026-10-07 | 2026-10-10 | B6.33 42 11.361430_R FF, B6.33 42 11.361440 | Labor [9.31 h]; Foreman [4.66 h]; Plumber Helper [4.66 h]; Plumber [4.66 h]; Operator [4.66 h]; Surveyor [4.66 h]; Surveyor Helper [4.66 h]; Mobile Crane [4.78 h]; less than 1.5 |
| B6.33 42 11.361450_R | Embedment & Test(Rem) | 2.56d | 2026-10-07 | 2026-10-10 | B6.33 42 11.361440_R FF, B6.33 42 11.361450 | Labor [13.97 h]; Foreman [6.99 h]; Plumber Helper [6.99 h]; Plumber [6.99 h]; Operator [13.97 h]; Surveyor [6.99 h]; Surveyor Helper [6.99 h]; Loader [7.17 h]; Water Tanker [7.17 h]; Dump Truck [7.17 h]; Plate Compactor [7.17 h]; Roller Compactor [7.17 h]; less than 1.5 |
| B6.33 42 11.361460_R | Backfilling & Warrning Tape(Rem) | 2.84d | 2026-10-07 | 2026-10-10 | B6.33 42 11.05-1.67, B6.33 42 11.361450_R FF, B6.33 42 11.361460 | Labor [18.63 h]; Foreman [9.31 h]; Operator [37.25 h]; Surveyor [9.31 h]; Surveyor Helper [9.31 h]; Loader [9.56 h]; Water Tanker [9.56 h]; Dump Truck [9.56 h]; Plate Compactor [9.56 h]; Roller Compactor [9.56 h]; less than 1.5 |
| B6.33 42 11.13.185_R | Pipe Laying(Rem) | 2.28d | 2026-10-07 | 2026-10-10 | B6.33 42 11.13.175, B6.33 42 11.13.185 | Labor [9.25 h]; Foreman [4.62 h]; Plumber Helper [4.62 h]; Plumber [4.62 h]; Operator [4.62 h]; Surveyor [4.62 h]; Surveyor Helper [4.62 h]; Mobile Crane [4.74 h]; 1.51m - 2.5m [6.42] |
| B6.33 42 11.13.195_R | Embedment & Test(Rem) | 2.84d | 2026-10-07 | 2026-10-10 | B6.33 42 11.13.185_R FF, B6.33 42 11.13.195 | Labor [18.5 h]; Foreman [9.25 h]; Plumber Helper [9.25 h]; Plumber [9.25 h]; Operator [18.5 h]; Surveyor [9.25 h]; Surveyor Helper [9.25 h]; Loader [9.49 h]; Water Tanker [9.49 h]; Dump Truck [9.49 h]; Plate Compactor [9.49 h]; Roller Compactor [9.49 h]; 1.51m - 2.5m [2.86] |
| B6.33 42 11.13.205_R | Backfilling & Warrning Tape(Rem) | 3.12d | 2026-10-13 | 2026-10-17 | B6.33 42 11.13.195_R FF, B6.33 42 11.01-1.9_R SS, B6.33 42 11.05-1.69_R SS, B6.33 42 11.03-115_R SS, B6.33 42 11.13.205 | Labor [23.12 h]; Foreman [11.56 h]; Operator [46.24 h]; Surveyor [11.56 h]; Surveyor Helper [11.56 h]; Loader [11.86 h]; Water Tanker [11.86 h]; Dump Truck [11.86 h]; Plate Compactor [11.86 h]; Roller Compactor [11.86 h]; 1.51m - 2.5m [1.43] |
| B6.33 42 11.361470_R | Excavation(Rem) | 2.28d | 2026-10-07 | 2026-10-10 | B6.33 42 11.361420_R SS, B6.33 42 11.361470 | Labor [8.91 h]; Foreman [4.45 h]; Operator [8.91 h]; Surveyor [4.45 h]; Surveyor Helper [4.45 h]; Excavator (With Bucket) [4.57 h]; Water Tanker [4.57 h]; Dump Truck [4.57 h]; Plate Compactor [4.57 h]; less than 1.5 |
| B6.33 42 11.361480_R | Sand Bedding(Rem) | 2.28d | 2026-10-07 | 2026-10-10 | B6.33 42 11.361470_R FF, B6.33 42 11.361480 | Labor [8.91 h]; Foreman [4.45 h]; Operator [17.81 h]; Surveyor [4.45 h]; Surveyor Helper [4.45 h]; Loader [4.57 h]; Water Tanker [4.57 h]; Dump Truck [4.57 h]; Plate Compactor [4.57 h]; less than 1.5 |
| B6.33 42 11.361490_R | Pipe Laying(Rem) | 2.28d | 2026-10-07 | 2026-10-10 | B6.33 42 11.361480_R FF, B6.33 42 11.361490 | Labor [8.91 h]; Foreman [4.45 h]; Plumber Helper [4.45 h]; Plumber [4.45 h]; Operator [4.45 h]; Surveyor [4.45 h]; Surveyor Helper [4.45 h]; Mobile Crane [4.57 h]; less than 1.5 |
| B6.33 42 11.361500_R | Embedment & Test(Rem) | 2.56d | 2026-10-07 | 2026-10-10 | B6.33 42 11.361490_R FF, B6.33 42 11.361500 | Labor [13.36 h]; Foreman [6.68 h]; Plumber Helper [6.68 h]; Plumber [6.68 h]; Operator [13.36 h]; Surveyor [6.68 h]; Surveyor Helper [6.68 h]; Loader [6.85 h]; Water Tanker [6.85 h]; Dump Truck [6.85 h]; Plate Compactor [6.85 h]; Roller Compactor [6.85 h]; less than 1.5 |
| B6.33 42 11.361510_R | Backfilling & Warrning Tape(Rem) | 2.84d | 2026-10-07 | 2026-10-10 | B6.33 42 11.361500_R FF, B6.33 42 11.361510 | Labor [17.81 h]; Foreman [8.91 h]; Operator [35.62 h]; Surveyor [8.91 h]; Surveyor Helper [8.91 h]; Loader [9.14 h]; Water Tanker [9.14 h]; Dump Truck [9.14 h]; Plate Compactor [9.14 h]; Roller Compactor [9.14 h]; less than 1.5 |
| B6.33 42 11.13.215_R | Excavation(Rem) | 2.28d | 2026-10-07 | 2026-10-10 | B6.33 42 11.13.165, B6.33 42 11.13.215 | Labor [9.25 h]; Foreman [4.62 h]; Operator [9.25 h]; Surveyor [4.62 h]; Surveyor Helper [4.62 h]; Excavator (With Bucket) [4.74 h]; Water Tanker [4.74 h]; Dump Truck [4.74 h]; Plate Compactor [4.74 h]; 1.51m - 2.5m [25.11] |
| B6.33 42 11.13.225_R | Sand Bedding(Rem) | 2.28d | 2026-10-07 | 2026-10-10 | B6.33 42 11.13.215_R FF, B6.33 42 11.13.225 | Labor [9.25 h]; Foreman [4.62 h]; Operator [18.5 h]; Surveyor [4.62 h]; Surveyor Helper [4.62 h]; Loader [4.74 h]; Water Tanker [4.74 h]; Dump Truck [4.74 h]; Plate Compactor [4.74 h]; 1.51m - 2.5m [6.33] |
| B6.33 42 11.13.235_R | Pipe Laying(Rem) | 2.28d | 2026-10-07 | 2026-10-10 | B6.33 42 11.13.225_R FF, B6.33 42 11.13.235 | Labor [9.25 h]; Foreman [4.62 h]; Plumber Helper [4.62 h]; Plumber [4.62 h]; Operator [4.62 h]; Surveyor [4.62 h]; Surveyor Helper [4.62 h]; Mobile Crane [4.74 h]; 1.51m - 2.5m [56.5] |
| B6.33 42 11.13.245_R | Embedment & Test(Rem) | 2.84d | 2026-10-07 | 2026-10-10 | B6.33 42 11.13.235_R FF, B6.33 42 11.13.245 | Labor [18.5 h]; Foreman [9.25 h]; Plumber Helper [9.25 h]; Plumber [9.25 h]; Operator [18.5 h]; Surveyor [9.25 h]; Surveyor Helper [9.25 h]; Loader [9.49 h]; Water Tanker [9.49 h]; Dump Truck [9.49 h]; Plate Compactor [9.49 h]; Roller Compactor [9.49 h]; 1.51m - 2.5m [25.11] |
| B6.33 42 11.13.255_R | Backfilling & Warrning Tape(Rem) | 3.12d | 2026-10-11 | 2026-10-15 | B6.33 42 11.13.245_R FF, B6.33 42 11.361560_R SS, B6.33 42 11.13.255 | Labor [23.12 h]; Foreman [11.56 h]; Operator [46.24 h]; Surveyor [11.56 h]; Surveyor Helper [11.56 h]; Loader [11.86 h]; Water Tanker [11.86 h]; Dump Truck [11.86 h]; Plate Compactor [11.86 h]; Roller Compactor [11.86 h]; 1.51m - 2.5m [12.56] |
| B6.33 42 11.361520_R | Excavation(Rem) | 2.28d | 2026-10-07 | 2026-10-10 | B6.33 42 11.361470_R SS, B6.33 42 11.361520 | Labor [12.7 h]; Foreman [6.35 h]; Operator [12.7 h]; Surveyor [6.35 h]; Surveyor Helper [6.35 h]; Excavator (With Bucket) [6.52 h]; Water Tanker [6.52 h]; Dump Truck [6.52 h]; Plate Compactor [6.52 h]; less than 1.5 |
| B6.33 42 11.361530_R | Sand Bedding(Rem) | 2.28d | 2026-10-07 | 2026-10-10 | B6.33 42 11.361520_R FF, B6.33 42 11.361530 | Labor [12.7 h]; Foreman [6.35 h]; Operator [25.4 h]; Surveyor [6.35 h]; Surveyor Helper [6.35 h]; Loader [6.52 h]; Water Tanker [6.52 h]; Dump Truck [6.52 h]; Plate Compactor [6.52 h]; less than 1.5 |
| B6.33 42 11.361540_R | Pipe Laying(Rem) | 2.28d | 2026-10-07 | 2026-10-10 | B6.33 42 11.361530_R FF, B6.33 42 11.361540 | Labor [12.7 h]; Foreman [6.35 h]; Plumber Helper [6.35 h]; Plumber [6.35 h]; Operator [6.35 h]; Surveyor [6.35 h]; Surveyor Helper [6.35 h]; Mobile Crane [6.52 h]; less than 1.5 |
| B6.33 42 11.361550_R | Embedment & Test(Rem) | 2.56d | 2026-10-07 | 2026-10-10 | B6.33 42 11.361540_R FF, B6.33 42 11.361550 | Labor [19.05 h]; Foreman [9.52 h]; Plumber Helper [9.52 h]; Plumber [9.52 h]; Operator [19.05 h]; Surveyor [9.52 h]; Surveyor Helper [9.52 h]; Loader [9.77 h]; Water Tanker [9.77 h]; Dump Truck [9.77 h]; Plate Compactor [9.77 h]; Roller Compactor [9.77 h]; less than 1.5 |
| B6.33 42 11.361560_R | Backfilling & Warrning Tape(Rem) | 2.84d | 2026-10-11 | 2026-10-14 | B6.33 42 11.361550_R FF, B6.33 42 11.13.155_R SS, B6.33 42 11.361560 | Labor [25.4 h]; Foreman [12.7 h]; Operator [50.79 h]; Surveyor [12.7 h]; Surveyor Helper [12.7 h]; Loader [13.03 h]; Water Tanker [13.03 h]; Dump Truck [13.03 h]; Plate Compactor [13.03 h]; Roller Compactor [13.03 h]; less than 1.5 |
| B6.33 05 40.01.130_R | Excavation, Compaction & Vapour Barrier(Rem) | 2d | 2026-09-17 A | 2026-09-17 A | B6.33 42 11.361370_R SS, B6.33 05 40.01.130 | Labor [7.8 h]; Foreman [3.9 h]; Operator [7.8 h]; Surveyor [3.9 h]; Surveyor Helper [3.9 h]; Excavator (With Bucket) [4 h]; Water Tanker [4 h]; Dump Truck [4 h]; Roller Compactor [4 h]; Single Catch basin [0.74] |
| B6.33 05 40.01.140_R | Blinding Conc.(Rem) | 2d | 2026-09-19 A | 2026-09-27 A | B6.33 05 40.01.130_R SS, B6.33 05 40.01.140 | Labor [7.8 h]; Foreman [3.9 h]; Laboratory Officer [3.9 h]; Carpenter [3.9 h]; Steelfixer [3.9 h]; Mason [3.9 h]; Single Catch basin [0.5] |
| B6.33 05 40.01.150_R | Catch Basin Installation(Rem) | 2d | 2026-09-22 A | 2026-09-30 A | B6.33 05 40.01.140_R SS, B6.33 05 40.01.150 | Labor [11.69 h]; Foreman [5.85 h]; Carpenter [5.85 h]; Steelfixer [5.85 h]; Mason [5.85 h]; Operator [11.69 h]; Surveyor [5.85 h]; Surveyor Helper [5.85 h]; Boom Truck [6 h]; Single Catch basin [2.23] |
| B6.33 05 40.01.160_R | Backfilling, DI Frame & Grate Cover Fixing(Rem) | 2d | 2026-10-03 A | 2026-10-05 A | B6.33 42 11.35-12_R SS, B6.33 05 39.01.2967_R SS, B6.33 05 40.01.160 | Labor [15.59 h]; Foreman [7.8 h]; Operator [15.59 h]; Surveyor [7.8 h]; Surveyor Helper [7.8 h]; Loader [8 h]; Water Tanker [8 h]; Dump Truck [8 h]; Plate Compactor [8 h]; Single Catch basin [1.49] |
| B6.33 42 11.35-11_R | Catch Basin Opening Prep.(Rem) | 2.09d | 2026-10-07 | 2026-10-10 | B6.33 05 40.01.150_R SS, B6.33 42 11.35-11 | Labor [9.97 h]; Foreman [4.98 h]; Plumber Helper [4.98 h]; Plumber [4.98 h]; less than 1.5 [14.9] |
| B6.33 42 11.35-12_R | Fittings & Pipe Installation(Rem) | 2.09d | 2026-10-07 | 2026-10-10 | B6.33 42 11.35-11_R SS, B6.33 42 11.35-12 | Labor [9.97 h]; Foreman [4.98 h]; Plumber Helper [4.98 h]; Plumber [4.98 h]; Surveyor [4.98 h]; Surveyor Helper [4.98 h]; less than 1.5 [59.59] |
| B6.33 42 11.36-11_R | Catch Basin Opening Prep.(Rem) | 2d | 2026-10-13 | 2026-10-14 | B6.33 05 40.01.710 FF, B6.33 42 11.36-11 | Labor [9.97 h]; Foreman [4.98 h]; Plumber Helper [4.98 h]; Plumber [4.98 h]; less than 1.5 [4.03] |
| B6.33 42 11.36-12_R | Fittings & Pipe Installation(Rem) | 2d | 2026-10-13 | 2026-10-14 | B6.33 42 11.36-11_R SS, B6.33 42 11.36-12 | Labor [9.97 h]; Foreman [4.98 h]; Plumber Helper [4.98 h]; Plumber [4.98 h]; Surveyor [4.98 h]; Surveyor Helper [4.98 h]; less than 1.5 [16.11] |
| B3.33 14 13.01.01.1_R | Excavation(Rem) | 3d | 2026-10-07 | 2026-10-10 | B6.33 42 11.361220_R SS, B3.33 14 13.01.01.1 | Labor [8.58 h]; Foreman [4.29 h]; Operator [8.58 h]; Surveyor [4.29 h]; Surveyor Helper [4.29 h]; Excavator (With Bucket) [4.4 h]; Water Tanker [4.4 h]; Dump Truck [4.4 h]; Plate Compactor [4.4 h]; Depth: 0.0m - 1.5m [42.84] |
| B3.33 14 13.01.01.2_R | Sand Bedding(Rem) | 3d | 2026-10-07 | 2026-10-10 | B3.33 14 13.01.01.1_R FF, B3.33 14 13.01.01.2 | Labor [7.76 h]; Foreman [3.88 h]; Operator [15.53 h]; Surveyor [3.88 h]; Surveyor Helper [3.88 h]; Loader [3.98 h]; Water Tanker [3.98 h]; Dump Truck [3.98 h]; Plate Compactor [3.98 h]; Depth: 0.0m - 1.5m [9.7] |
| B3.33 14 13.01.01.3_R | Pipe Laying(Rem) | 3d | 2026-10-07 | 2026-10-10 | B3.33 14 13.01.01.2_R FF, B3.33 14 13.01.01.3 | Labor [8.58 h]; Foreman [4.29 h]; Plumber Helper [4.29 h]; Plumber [4.29 h]; Operator [4.29 h]; Surveyor [4.29 h]; Surveyor Helper [4.29 h]; Mobile Crane [4.4 h]; Depth: 0.0m - 1.5m [96.38] |
| B3.33 14 13.01.01.5_R | Backfilling & Warrning Tape(Rem) | 2.38d | 2026-10-07 | 2026-10-10 | B3.33 14 13.01.01.4_R FF, B3.33 14 13.01.01.5 | Labor [21.44 h]; Foreman [10.72 h]; Operator [42.88 h]; Surveyor [10.72 h]; Surveyor Helper [10.72 h]; Loader [11 h]; Water Tanker [11 h]; Dump Truck [11 h]; Plate Compactor [11 h]; Roller Compactor [11 h]; Depth: 0.0m - 1.5m [21.42] |
| B3.33 14 13.01.01.4_R | Embedment & Test(Rem) | 2.1d | 2026-10-07 | 2026-10-10 | B3.33 14 13.01.01.3_R FF, B3.33 14 13.01.01.4 | Labor [17.15 h]; Foreman [8.58 h]; Plumber Helper [8.58 h]; Plumber [8.58 h]; Operator [17.15 h]; Surveyor [8.58 h]; Surveyor Helper [8.58 h]; Loader [8.8 h]; Water Tanker [8.8 h]; Dump Truck [8.8 h]; Plate Compactor [8.8 h]; Roller Compactor [8.8 h]; Depth: 0.0m - 1.5m [42.84] |
| B3.33 14 13.01.02.1_R | Excavation(Rem) | 3d | 2026-10-07 | 2026-10-10 | B3.33 14 13.01.01.1_R SS, B3.33 14 13.01.02.1 | Labor [5.72 h]; Foreman [2.86 h]; Operator [5.72 h]; Surveyor [2.86 h]; Surveyor Helper [2.86 h]; Excavator (With Bucket) [2.93 h]; Water Tanker [2.93 h]; Dump Truck [2.93 h]; Plate Compactor [2.93 h]; Depth: 1.51m - 2.5m |
| B3.33 14 13.01.02.2_R | Sand Bedding(Rem) | 3d | 2026-10-07 | 2026-10-10 | B3.33 14 13.01.02.1_R FF, B3.33 14 13.01.02.2 | Labor [5.72 h]; Foreman [2.86 h]; Operator [11.44 h]; Surveyor [2.86 h]; Surveyor Helper [2.86 h]; Loader [2.93 h]; Water Tanker [2.93 h]; Dump Truck [2.93 h]; Plate Compactor [2.93 h]; Depth: 1.51m - 2.5m |
| B3.33 14 13.01.02.3_R | Pipe Laying(Rem) | 3d | 2026-10-07 | 2026-10-10 | B3.33 14 13.01.02.2_R FF, B3.33 14 13.01.02.3 | Labor [5.72 h]; Foreman [2.86 h]; Plumber Helper [2.86 h]; Plumber [2.86 h]; Operator [2.86 h]; Surveyor [2.86 h]; Surveyor Helper [2.86 h]; Mobile Crane [2.93 h]; Depth: 1.51m - 2.5m |
| B3.33 14 13.01.02.4_R | Embedment & Test(Rem) | 3d | 2026-10-07 | 2026-10-10 | B3.33 14 13.01.02.3_R FF, B3.33 14 19.01.106_R SS, B3.33 14 13.01.02.4 | Labor [11.44 h]; Foreman [5.72 h]; Plumber Helper [5.72 h]; Plumber [5.72 h]; Operator [11.44 h]; Surveyor [5.72 h]; Surveyor Helper [5.72 h]; Loader [5.87 h]; Water Tanker [5.87 h]; Dump Truck [5.87 h]; Plate Compactor [5.87 h]; Roller Compactor [5.87 h]; Depth: 1.51m - 2.5m |
| B3.33 14 13.01.02.5_R | Backfilling & Warrning Tape(Rem) | 3d | 2026-10-17 | 2026-10-20 | B3.33 14 19.01.107 FF, B3.33 14 13.01.02.4_R FF, B3.33 14 13.01.02.5, B3.33 14 11.01.025_R | Labor [14.3 h]; Foreman [7.15 h]; Operator [28.6 h]; Surveyor [7.15 h]; Surveyor Helper [7.15 h]; Loader [7.34 h]; Water Tanker [7.34 h]; Dump Truck [7.34 h]; Plate Compactor [7.34 h]; Roller Compactor [7.34 h]; Depth: 1.51m - 2.5m |
| B3.33 14 19.01.106_R | Burried Isolation Valve Installation(Rem) | 3d | 2026-10-07 | 2026-10-10 | B3.33 14 13.01.02.3_R SS, B3.33 14 19.01.106 | Labor [7.8 h]; Plumber Helper [3.9 h]; Plumber [3.9 h]; Operator [7.8 h]; Boom Truck [4 h]; POT Gate V dia 110 mm [0.41] |
| B3.1. 33 14 13.01_R | Excavation(Rem) | 4d | 2026-10-07 | 2026-10-11 | B3.33 14 13.01.02.1_R SS, B3.33 14 13.01.01.1_R SS, B3.1. 33 14 13.01 | Labor [3.12 h]; Foreman [1.56 h]; Operator [3.12 h]; Surveyor [1.56 h]; Surveyor Helper [1.56 h]; Excavator (With Bucket) [1.6 h]; Water Tanker [1.6 h]; Dump Truck [1.6 h]; Plate Compactor [1.6 h]; Depth: 0.0m - 1.5m [13.15] |
| B3.1. 33 14 13.02_R | Sand Bedding(Rem) | 4d | 2026-10-07 | 2026-10-11 | B3.1. 33 14 13.01_R FF, B3.1. 33 14 13.02 | Labor [3.12 h]; Foreman [1.56 h]; Operator [6.24 h]; Surveyor [1.56 h]; Surveyor Helper [1.56 h]; Loader [1.6 h]; Water Tanker [1.6 h]; Dump Truck [1.6 h]; Plate Compactor [1.6 h]; Depth: 0.0m - 1.5m [3.29] |
| B3.1. 33 14 13.03_R | Pipe Laying(Rem) | 4d | 2026-10-07 | 2026-10-11 | B3.1. 33 14 13.02_R FF, B3.1. 33 14 13.03 | Labor [3.12 h]; Foreman [1.56 h]; Plumber Helper [1.56 h]; Plumber [1.56 h]; Operator [1.56 h]; Surveyor [1.56 h]; Surveyor Helper [1.56 h]; Mobile Crane [1.6 h]; Depth: 0.0m - 1.5m [29.59] |
| B3.1. 33 14 13.04_R | Embedment & Test(Rem) | 4d | 2026-10-19 | 2026-10-22 | B3.33 14 19.01.122 FF, B3.1. 33 14 13.03_R FF, B3.1. 33 14 13.04 | Labor [12.47 h]; Foreman [6.24 h]; Plumber Helper [6.24 h]; Plumber [6.24 h]; Operator [12.47 h]; Surveyor [6.24 h]; Surveyor Helper [6.24 h]; Loader [6.4 h]; Water Tanker [6.4 h]; Dump Truck [6.4 h]; Plate Compactor [6.4 h]; Roller Compactor [6.4 h]; Depth: 0.0m - 1.5m [21.04] |
| B3.1. 33 14 13.05_R | Backfilling & Warrning Tape(Rem) | 4d | 2026-10-19 | 2026-10-22 | B3.1. 33 14 13.04_R FF, B3.1. 33 14 13.05 | Labor [14.97 h]; Foreman [7.48 h]; Operator [29.94 h]; Surveyor [7.48 h]; Surveyor Helper [7.48 h]; Loader [7.68 h]; Water Tanker [7.68 h]; Dump Truck [7.68 h]; Plate Compactor [7.68 h]; Roller Compactor [7.68 h]; Depth: 0.0m - 1.5m [10.52] |
| B3.1. 33 14 13.2_R | Excavation(Rem) | 4d | 2026-10-07 | 2026-10-11 | B3.1. 33 14 13.01_R SS, B3.1. 33 14 13.2 | Labor [3.12 h]; Foreman [1.56 h]; Operator [3.12 h]; Surveyor [1.56 h]; Surveyor Helper [1.56 h]; Excavator (With Bucket) [1.6 h]; Water Tanker [1.6 h]; Dump Truck [1.6 h]; Plate Compactor [1.6 h]; Depth: 1.51m - 2.5m [0.82] |
| B3.1. 33 14 13.3_R | Sand Bedding(Rem) | 4d | 2026-10-07 | 2026-10-11 | B3.1. 33 14 13.2_R FF, B3.1. 33 14 13.3 | Labor [3.12 h]; Foreman [1.56 h]; Operator [6.24 h]; Surveyor [1.56 h]; Surveyor Helper [1.56 h]; Loader [1.6 h]; Water Tanker [1.6 h]; Dump Truck [1.6 h]; Plate Compactor [1.6 h]; Depth: 1.51m - 2.5m [0.21] |
| B3.1. 33 14 13.4_R | Pipe Laying(Rem) | 4d | 2026-10-07 | 2026-10-11 | B3.1. 33 14 13.3_R FF, B3.1. 33 14 13.4 | Labor [7.48 h]; Foreman [3.74 h]; Plumber Helper [3.74 h]; Plumber [3.74 h]; Operator [3.74 h]; Surveyor [3.74 h]; Surveyor Helper [3.74 h]; Mobile Crane [3.84 h]; Depth: 1.51m - 2.5m [2.96] |
| B3.1. 33 14 13.5_R | Embedment & Test(Rem) | 4d | 2026-10-19 | 2026-10-22 | B3.33 14 19.01.122 FF, B3.1. 33 14 13.4_R FF, B3.1. 33 14 13.5 | Labor [9.98 h]; Foreman [4.99 h]; Plumber Helper [4.99 h]; Plumber [4.99 h]; Operator [9.98 h]; Surveyor [4.99 h]; Surveyor Helper [4.99 h]; Loader [5.12 h]; Water Tanker [5.12 h]; Dump Truck [5.12 h]; Plate Compactor [5.12 h]; Roller Compactor [5.12 h]; Depth: 1.51m - 2.5m [1.32] |
| B3.1. 33 14 13.6_R | Backfilling & Warrning Tape(Rem) | 3.12d | 2026-10-24 | 2026-10-27 | B3.1. 33 14 13.5_R FF, B3.1. 33 14 13.6, B3.1. 33 14 13.05_R | Labor [17.46 h]; Foreman [8.73 h]; Operator [34.93 h]; Surveyor [8.73 h]; Surveyor Helper [8.73 h]; Loader [8.96 h]; Water Tanker [8.96 h]; Dump Truck [8.96 h]; Plate Compactor [8.96 h]; Roller Compactor [8.96 h]; Depth: 1.51m - 2.5m [0.66] |
| B3.1. 33 14 13.22_R | Excavation(Rem) | 4d | 2026-10-07 | 2026-10-11 | B3.1. 33 14 13.2_R SS, B3.1. 33 14 13.22 | Labor [31.18 h]; Foreman [15.59 h]; Operator [31.18 h]; Surveyor [15.59 h]; Surveyor Helper [15.59 h]; Excavator (With Bucket) [16 h]; Water Tanker [16 h]; Dump Truck [16 h]; Plate Compactor [16 h]; Depth: 0.0m - 1.5m [5.13] |
| B3.1. 33 14 13.23_R | Sand Bedding(Rem) | 4d | 2026-10-07 | 2026-10-11 | B3.1. 33 14 13.22_R FF, B3.1. 33 14 13.23 | Labor [31.18 h]; Foreman [15.59 h]; Operator [62.37 h]; Surveyor [15.59 h]; Surveyor Helper [15.59 h]; Loader [16 h]; Water Tanker [16 h]; Dump Truck [16 h]; Plate Compactor [16 h]; Depth: 0.0m - 1.5m [1.29] |
| B3.1. 33 14 13.24_R | Pipe Laying(Rem) | 4d | 2026-10-07 | 2026-10-11 | B3.1. 33 14 13.23_R FF, B3.1. 33 14 13.24 | Labor [31.18 h]; Foreman [15.59 h]; Plumber Helper [15.59 h]; Plumber [15.59 h]; Operator [15.59 h]; Surveyor [15.59 h]; Surveyor Helper [15.59 h]; Mobile Crane [16 h]; Depth: 0.0m - 1.5m [11.56] |
| B3.1. 33 14 13.25_R | Embedment & Test(Rem) | 6d | 2026-10-17 | 2026-10-22 | B3.33 14 19.01.122 FF, B3.1. 33 14 13.24_R FF, B3.1. 33 14 13.25 | Labor [62.37 h]; Foreman [31.18 h]; Plumber Helper [31.18 h]; Plumber [31.18 h]; Operator [62.37 h]; Surveyor [31.18 h]; Surveyor Helper [31.18 h]; Loader [32 h]; Water Tanker [32 h]; Dump Truck [32 h]; Plate Compactor [32 h]; Roller Compactor [32 h]; Depth: 0.0m - 1.5m [5.13] |
| B3.1. 33 14 13.26_R | Backfilling & Warrning Tape(Rem) | 7d | 2026-10-25 | 2026-11-01 | B3.33 14 19.01.125 FF, B3.1. 33 14 13.25_R FF, B3.1. 33 14 13.26 | Labor [77.96 h]; Foreman [38.98 h]; Operator [155.92 h]; Surveyor [38.98 h]; Surveyor Helper [38.98 h]; Loader [40 h]; Water Tanker [40 h]; Dump Truck [40 h]; Plate Compactor [40 h]; Roller Compactor [40 h]; Depth: 0.0m - 1.5m [2.57] |
| B3.33 14 19.01.fh19_R | Firehydrant Fixing/Installation(Rem) | 4.97d | 2026-11-10 | 2026-11-16 | B3.33 14 19.01.fh20_R SS, B3.33 14 19.01.fh19 | Labor [46.31 h]; Foreman [23.15 h]; Plumber Helper [23.15 h]; Plumber [23.15 h]; Operator [46.31 h]; Surveyor [23.15 h]; Surveyor Helper [23.15 h]; JCB [23.76 h]; 3-outlet fire hydrant (2 x 2.5 inch and 1 x 4.5 inch) in the form of a separate dry vacuum cylinder [4.43] |
| B3.33 14 19.01.fh20_R | Riser Pipe & Flanged Fittings Installation(Rem) | 3.98d | 2026-11-10 | 2026-11-15 | B3.33 05 63.01.39 FF, B3.33 14 19.01.fh20 | Labor [30.87 h]; Plumber Helper [15.44 h]; Welder [15.44 h]; Plumber [15.44 h]; Surveyor [15.44 h]; Surveyor Helper [15.44 h]; Welding Machine [15.84 h]; 3-outlet fire hydrant (2 x 2.5 inch and 1 x 4.5 inch) in the form of a separate dry vacuum cylinder [1.48] |
| B3.33 14 19.01.fh21_R | Backfilling & Compaction(Rem) | 6.95d | 2026-11-10 | 2026-11-18 | B3.33 05 63.02.59 FF, B3.33 05 63.01.54 FF, B3.33 14 19.01.fh19_R SS, B3.33 14 19.01.fh21, B3.1. 33 14 13.6_R | Labor [77.18 h]; Foreman [38.59 h]; Operator [77.18 h]; Surveyor [38.59 h]; Surveyor Helper [38.59 h]; Loader [39.6 h]; Water Tanker [39.6 h]; Dump Truck [39.6 h]; Plate Compactor [39.6 h]; 3-outlet fire hydrant (2 x 2.5 inch and 1 x 4.5 inch) in the form of a separate dry vacuum cylinder [1.48] |
| B1.2.32 11 13.01.3_R | Subgrade(Rem) | 2d | 2026-10-07 | 2026-10-08 | B1.2.31 23 23.01.3, B1.2.32 11 13.01.3 | Subgrade [394.24]; Labor [9.04 h]; Foreman [4.52 h]; Operator [9.04 h]; Surveyor [4.52 h]; Surveyor Helper [4.52 h]; Grader [4.64 h]; Loader [4.64 h]; Water Tanker [4.64 h]; Dump Truck [4.64 h]; Plate Compactor [4.64 h]; Roller Compactor [4.64 h] |
| B1.2.32 11 23.01.3_R | Aggregate Base Course(Rem) | 1.44d | 2026-10-07 | 2026-10-08 | B1.2.32 11 13.01.3_R SS, B1.2.32 11 23.01.3 | Aggregate base course [652.53]; Labor [22.45 h]; Foreman [11.23 h]; Operator [22.45 h]; Surveyor [11.23 h]; Surveyor Helper [11.23 h]; Grader [11.52 h]; Loader [11.52 h]; Water Tanker [11.52 h]; Dump Truck [11.52 h]; Plate Compactor [11.52 h]; Roller Compactor [11.52 h] |
| B6.33 42 11.03-11_R | Excavation(Rem) | 2.28d | 2026-10-07 | 2026-10-10 | B6.33 05 39.01.3127, B6.33 42 11.03-11 | Labor [12.62 h]; Foreman [6.31 h]; Operator [12.62 h]; Surveyor [6.31 h]; Surveyor Helper [6.31 h]; Excavator (With Bucket) [6.47 h]; Water Tanker [6.47 h]; Dump Truck [6.47 h]; Plate Compactor [6.47 h]; 1.51m - 2.5m [5.19] |
| B6.33 42 11.03-14_R | Sand Bedding(Rem) | 2.28d | 2026-10-07 | 2026-10-10 | B6.33 42 11.03-11_R FF, B6.33 42 11.03-14 | Labor [12.62 h]; Foreman [6.31 h]; Operator [25.24 h]; Surveyor [6.31 h]; Surveyor Helper [6.31 h]; Loader [6.47 h]; Water Tanker [6.47 h]; Dump Truck [6.47 h]; Plate Compactor [6.47 h]; 1.51m - 2.5m [1.3] |
| B6.33 42 11.03-17_R | Pipe Laying(Rem) | 2.28d | 2026-10-07 | 2026-10-10 | B6.33 42 11.03-14_R FF, B6.33 42 11.03-17 | Labor [12.62 h]; Foreman [6.31 h]; Plumber Helper [6.31 h]; Plumber [6.31 h]; Operator [6.31 h]; Surveyor [6.31 h]; Surveyor Helper [6.31 h]; Mobile Crane [6.47 h]; 1.51m - 2.5m [11.69] |
| B6.33 42 11.03-113_R | Backfilling & Warrning Tape(Rem) | 3.3d | 2026-10-11 | 2026-10-15 | B6.33 42 11.03-110 FF, B6.33 42 11.05-1.57, B6.33 42 11.03-113 | Labor [31.55 h]; Foreman [15.77 h]; Operator [63.09 h]; Surveyor [15.77 h]; Surveyor Helper [15.77 h]; Loader [16.19 h]; Water Tanker [16.19 h]; Dump Truck [16.19 h]; Plate Compactor [16.19 h]; Roller Compactor [16.19 h]; 1.51m - 2.5m [2.6] |
| B6.33 42 11.03-12_R | Excavation(Rem) | 2.28d | 2026-10-07 | 2026-10-10 | B6.33 42 11.03-11_R SS, B6.33 42 11.03-12 | Labor [12.62 h]; Foreman [6.31 h]; Operator [12.62 h]; Surveyor [6.31 h]; Surveyor Helper [6.31 h]; Excavator (With Bucket) [6.47 h]; Water Tanker [6.47 h]; Dump Truck [6.47 h]; Plate Compactor [6.47 h]; 1.51m - 2.5m [3.85] |
| B6.33 42 11.03-15_R | Sand Bedding(Rem) | 2.28d | 2026-10-07 | 2026-10-10 | B6.33 42 11.03-12_R FF, B6.33 42 11.03-15 | Labor [12.62 h]; Foreman [6.31 h]; Operator [25.24 h]; Surveyor [6.31 h]; Surveyor Helper [6.31 h]; Loader [6.47 h]; Water Tanker [6.47 h]; Dump Truck [6.47 h]; Plate Compactor [6.47 h]; 1.51m - 2.5m [3.85] |
| B6.33 42 11.03-18_R | Pipe Laying(Rem) | 2.28d | 2026-10-07 | 2026-10-10 | B6.33 42 11.03-15_R FF, B6.33 42 11.03-18 | Labor [12.62 h]; Foreman [6.31 h]; Plumber Helper [6.31 h]; Plumber [6.31 h]; Operator [6.31 h]; Surveyor [6.31 h]; Surveyor Helper [6.31 h]; Mobile Crane [6.47 h]; 1.51m - 2.5m [8.76] |
| B6.33 42 11.03-114_R | Backfilling & Warrning Tape(Rem) | 3.12d | 2026-10-12 | 2026-10-15 | B6.33 42 11.03-111 FF, B6.33 42 11.05-1.61_R SS, B6.33 42 11.03-114 | Labor [31.55 h]; Foreman [15.77 h]; Operator [63.09 h]; Surveyor [15.77 h]; Surveyor Helper [15.77 h]; Loader [16.19 h]; Water Tanker [16.19 h]; Dump Truck [16.19 h]; Plate Compactor [16.19 h]; Roller Compactor [16.19 h]; 1.51m - 2.5m [1.93] |
| B6.33 42 11.03-13_R | Excavation(Rem) | 2.28d | 2026-10-07 | 2026-10-10 | B6.33 42 11.03-12_R SS, B6.33 42 11.03-13 | Labor [12.62 h]; Foreman [6.31 h]; Operator [12.62 h]; Surveyor [6.31 h]; Surveyor Helper [6.31 h]; Excavator (With Bucket) [6.47 h]; Water Tanker [6.47 h]; Dump Truck [6.47 h]; Plate Compactor [6.47 h]; 1.51m - 2.5m [7.8] |
| B6.33 42 11.03-16_R | Sand Bedding(Rem) | 2.28d | 2026-10-07 | 2026-10-10 | B6.33 42 11.03-13_R FF, B6.33 42 11.03-16 | Labor [12.62 h]; Foreman [6.31 h]; Operator [25.24 h]; Surveyor [6.31 h]; Surveyor Helper [6.31 h]; Loader [6.47 h]; Water Tanker [6.47 h]; Dump Truck [6.47 h]; Plate Compactor [6.47 h]; 1.51m - 2.5m [1.95] |
| B6.33 42 11.03-19_R | Pipe Laying(Rem) | 2.28d | 2026-10-07 | 2026-10-10 | B6.33 42 11.03-16_R FF, B6.33 42 11.03-19 | Labor [12.62 h]; Foreman [6.31 h]; Plumber Helper [6.31 h]; Plumber [6.31 h]; Operator [6.31 h]; Surveyor [6.31 h]; Surveyor Helper [6.31 h]; Mobile Crane [6.47 h]; 1.51m - 2.5m [17.55] |
| B6.33 42 11.03-115_R | Backfilling & Warrning Tape(Rem) | 3.12d | 2026-10-13 | 2026-10-17 | B6.33 42 11.03-112 FF, B6.33 42 11.361360_R SS, B6.33 42 11.03-115 | Labor [31.55 h]; Foreman [15.77 h]; Operator [63.09 h]; Surveyor [15.77 h]; Surveyor Helper [15.77 h]; Loader [16.19 h]; Water Tanker [16.19 h]; Dump Truck [16.19 h]; Plate Compactor [16.19 h]; Roller Compactor [16.19 h]; 1.51m - 2.5m [3.9] |
| B6.33 05 13.04-11_R | Excavation & Compaction(Rem) | 2d | 2026-10-07 | 2026-10-08 | B6.33 42 11.03-13_R SS, B6.33 05 13.04-11 | Labor [15.59 h]; Foreman [7.8 h]; Operator [15.59 h]; Surveyor [7.8 h]; Surveyor Helper [7.8 h]; Excavator (With Bucket) [8 h]; Water Tanker [8 h]; Dump Truck [8 h]; Plate Compactor [8 h]; MH depth 1.50 - 2.5m [0.54] |
| B6.33 05 13.04-14_R | Blinding Conc, & RC Base(Rem) | 2d | 2026-10-07 | 2026-10-08 | B6.33 05 13.04-11_R SS, B6.33 05 13.04-14 | Labor [15.59 h]; Foreman [7.8 h]; Laboratory Officer [7.8 h]; Carpenter [7.8 h]; Steelfixer [7.8 h]; Mason [7.8 h]; MH depth 1.50 - 2.5m [0.54] |
| B6.33 05 13.04-17_R | Manhole Installation(Rem) | 2d | 2026-10-07 | 2026-10-08 | B6.33 05 13.04-14_R SS, B6.33 05 13.04-17 | Labor [15.59 h]; Operator [15.59 h]; Surveyor [7.8 h]; Surveyor Helper [7.8 h]; Boom Truck [8 h]; Mobile Crane [8 h]; MH depth 1.50 - 2.5m [2.63] |
| B6.33 05 13.04-113_R | Backfilling(Rem) | 3d | 2026-10-13 | 2026-10-17 | B6.33 05 13.04-110 FF, B6.33 42 11.05-1.65, B6.33 05 13.04-113, B6.33 42 11.015_R | Labor [31.18 h]; Foreman [15.59 h]; Operator [31.18 h]; Surveyor [15.59 h]; Surveyor Helper [15.59 h]; Loader [16 h]; Water Tanker [16 h]; Dump Truck [16 h]; Plate Compactor [16 h]; MH depth 1.50 - 2.5m [1.07] |
| B6.33 05 40.01.290_R | Excavation, Compaction & Vapour Barrier(Rem) | 2d | 2026-10-07 | 2026-10-08 | B6.33 05 13.04-11_R SS, B6.33 05 40.01.290 | Labor [10.29 h]; Foreman [5.15 h]; Operator [10.29 h]; Surveyor [5.15 h]; Surveyor Helper [5.15 h]; Excavator (With Bucket) [5.28 h]; Water Tanker [5.28 h]; Dump Truck [5.28 h]; Roller Compactor [5.28 h]; Single Catch basin [0.99] |
| B6.33 05 40.01.300_R | Blinding Conc.(Rem) | 2d | 2026-10-07 | 2026-10-08 | B6.33 05 40.01.290_R SS, B6.33 05 40.01.300 | Labor [10.29 h]; Foreman [5.15 h]; Laboratory Officer [5.15 h]; Carpenter [5.15 h]; Steelfixer [5.15 h]; Mason [5.15 h]; Single Catch basin [0.66] |
| B6.33 05 40.01.310_R | Catch Basin Installation(Rem) | 2d | 2026-10-07 | 2026-10-08 | B6.33 05 40.01.300_R SS, B6.33 05 40.01.310 | Labor [15.44 h]; Foreman [7.72 h]; Carpenter [7.72 h]; Steelfixer [7.72 h]; Mason [7.72 h]; Operator [15.44 h]; Surveyor [7.72 h]; Surveyor Helper [7.72 h]; Boom Truck [7.92 h]; Single Catch basin [2.95] |
| B6.33 05 40.01.320_R | Backfilling, DI Frame & Grate Cover Fixing(Rem) | 3d | 2026-10-07 | 2026-10-10 | B6.33 42 11.36-1 2_R SS, B6.33 42 11.35-1 2_R SS, B6.33 05 40.01.320 | Labor [20.58 h]; Foreman [10.29 h]; Operator [20.58 h]; Surveyor [10.29 h]; Surveyor Helper [10.29 h]; Loader [10.56 h]; Water Tanker [10.56 h]; Dump Truck [10.56 h]; Plate Compactor [10.56 h]; Single Catch basin [1.97] |
| B6.33 42 11.35-1 1_R | Catch Basin Opening Prep.(Rem) | 2.09d | 2026-10-07 | 2026-10-10 | B6.33 05 40.01.310_R SS, B6.33 42 11.35-1 1 | Labor [12.23 h]; Foreman [6.11 h]; Plumber Helper [6.11 h]; Plumber [6.11 h]; less than 1.5 [18.28] |
| B6.33 42 11.35-1 2_R | Fittings & Pipe Installation(Rem) | 2.09d | 2026-10-07 | 2026-10-10 | B6.33 42 11.35-1 1_R SS, B6.33 42 11.35-1 2 | Labor [12.23 h]; Foreman [6.11 h]; Plumber Helper [6.11 h]; Plumber [6.11 h]; Surveyor [6.11 h]; Surveyor Helper [6.11 h]; less than 1.5 [73.13] |
| B6.33 42 11.36-1 1_R | Catch Basin Opening Prep.(Rem) | 2.09d | 2026-10-07 | 2026-10-10 | B6.33 42 11.35-1 1_R SS, B6.33 42 11.36-1 1 | Labor [12.23 h]; Foreman [6.11 h]; Plumber Helper [6.11 h]; Plumber [6.11 h]; less than 1.5 [18.28] |
| B6.33 42 11.36-1 2_R | Fittings & Pipe Installation(Rem) | 2.09d | 2026-10-07 | 2026-10-10 | B6.33 42 11.36-1 1_R SS, B6.33 42 11.36-1 2 | Labor [12.23 h]; Foreman [6.11 h]; Plumber Helper [6.11 h]; Plumber [6.11 h]; Surveyor [6.11 h]; Surveyor Helper [6.11 h]; less than 1.5 [73.13] |
| B3.1. 33 14 13.01.10_R | Excavation(Rem) | 4d | 2026-10-07 | 2026-10-11 | B3.1. 33 14 13.22_R SS, B3.1. 33 14 13.01.10 | Labor [1.72 h]; Foreman [0.86 h]; Operator [1.72 h]; Surveyor [0.86 h]; Surveyor Helper [0.86 h]; Excavator (With Bucket) [0.88 h]; Water Tanker [0.88 h]; Dump Truck [0.88 h]; Plate Compactor [0.88 h]; Depth: 0.0m - 1.5m [7.23] |
| B3.1. 33 14 13.01.14_R | Sand Bedding(Rem) | 4d | 2026-10-07 | 2026-10-11 | B3.1. 33 14 13.01.10_R FF, B3.1. 33 14 13.01.14 | Labor [3.43 h]; Foreman [1.72 h]; Operator [6.86 h]; Surveyor [1.72 h]; Surveyor Helper [1.72 h]; Loader [1.76 h]; Water Tanker [1.76 h]; Dump Truck [1.76 h]; Plate Compactor [1.76 h]; Depth: 0.0m - 1.5m [3.62] |
| B3.1. 33 14 13.01.18_R | Pipe Laying(Rem) | 4d | 2026-10-07 | 2026-10-11 | B3.1. 33 14 13.01.14_R FF, B3.1. 33 14 13.01.18 | Labor [3.43 h]; Foreman [1.72 h]; Plumber Helper [1.72 h]; Plumber [1.72 h]; Operator [1.72 h]; Surveyor [1.72 h]; Surveyor Helper [1.72 h]; Mobile Crane [1.76 h]; Depth: 0.0m - 1.5m [32.55] |
| B3.1. 33 14 13.01.22_R | Embedment & Test(Rem) | 4d | 2026-10-07 | 2026-10-11 | B3.1. 33 14 13.01.18_R FF, B3.1. 33 14 13.01.22 | Labor [6.86 h]; Foreman [3.43 h]; Plumber Helper [3.43 h]; Plumber [3.43 h]; Operator [6.86 h]; Surveyor [3.43 h]; Surveyor Helper [3.43 h]; Loader [3.52 h]; Water Tanker [3.52 h]; Dump Truck [3.52 h]; Plate Compactor [3.52 h]; Roller Compactor [3.52 h]; Depth: 0.0m - 1.5m [14.47] |
| B3.1. 33 14 13.01.12_R | Excavation(Rem) | 4d | 2026-10-07 | 2026-10-11 | B3.1. 33 14 13.01.10_R SS, B3.1. 33 14 13.01.12 | Labor [2.81 h]; Foreman [1.4 h]; Operator [2.81 h]; Surveyor [1.4 h]; Surveyor Helper [1.4 h]; Excavator (With Bucket) [1.44 h]; Water Tanker [1.44 h]; Dump Truck [1.44 h]; Plate Compactor [1.44 h]; Depth: 1.51m - 2.5m [0.74] |
| B3.1. 33 14 13.01.16_R | Sand Bedding(Rem) | 4d | 2026-10-07 | 2026-10-11 | B3.1. 33 14 13.01.12_R FF, B3.1. 33 14 13.01.16 | Labor [3.43 h]; Foreman [1.72 h]; Operator [6.86 h]; Surveyor [1.72 h]; Surveyor Helper [1.72 h]; Loader [1.76 h]; Water Tanker [1.76 h]; Dump Truck [1.76 h]; Plate Compactor [1.76 h]; Depth: 1.51m - 2.5m [0.23] |
| B3.1. 33 14 13.01.20_R | Pipe Laying(Rem) | 4d | 2026-10-07 | 2026-10-11 | B3.1. 33 14 13.01.16_R FF, B3.1. 33 14 13.01.20 | Labor [3.43 h]; Foreman [1.72 h]; Plumber Helper [1.72 h]; Plumber [1.72 h]; Operator [1.72 h]; Surveyor [1.72 h]; Surveyor Helper [1.72 h]; Mobile Crane [1.76 h]; Depth: 1.51m - 2.5m [2.03] |
| B3.1. 33 14 13.01.24_R | Embedment & Test(Rem) | 4d | 2026-10-07 | 2026-10-11 | B3.1. 33 14 13.01.20_R FF, B3.1. 33 14 13.01.24 | Labor [6.86 h]; Foreman [3.43 h]; Plumber Helper [3.43 h]; Plumber [3.43 h]; Operator [6.86 h]; Surveyor [3.43 h]; Surveyor Helper [3.43 h]; Loader [3.52 h]; Water Tanker [3.52 h]; Dump Truck [3.52 h]; Plate Compactor [3.52 h]; Roller Compactor [3.52 h]; Depth: 1.51m - 2.5m [0.9] |
| B1.2.32 11 13.01.7_R | Subgrade(Rem) | 5d | 2026-10-07 | 2026-10-12 | B1.2.31 23 23.01.7, B1.2.32 11 13.01.7 | Subgrade [5013.15]; Labor [38.2 h]; Foreman [19.1 h]; Operator [38.2 h]; Surveyor [19.1 h]; Surveyor Helper [19.1 h]; Grader [19.6 h]; Loader [19.6 h]; Water Tanker [19.6 h]; Dump Truck [19.6 h]; Plate Compactor [19.6 h]; Roller Compactor [19.6 h] |
| B1.2.32 11 23.01.7_R | Aggregate Base Course(Rem) | 2d | 2026-10-07 | 2026-10-08 | B1.2.32 11 13.01.7_R SS, B1.2.32 11 23.01.7 | Aggregate base course [3819.54]; Labor [31.18 h]; Foreman [15.59 h]; Operator [31.18 h]; Surveyor [15.59 h]; Surveyor Helper [15.59 h]; Grader [16 h]; Loader [16 h]; Water Tanker [16 h]; Dump Truck [16 h]; Plate Compactor [16 h]; Roller Compactor [16 h] |
| B1.2.32 11 26.01.7_R | Bituminous Base Course including Prime Coat (MC1) and tack coat (RC2)(Rem) | 2d | 2026-10-01 A | 2026-10-08 | B1.2.32 11 23.01.7_R SS, B1.2.32 11 26.01.7 | Bituminous base course(Grading I - Class A) [2617.04]; Labor [31.18 h]; Foreman [15.59 h]; Operator [31.18 h]; Surveyor [15.59 h]; Surveyor Helper [15.59 h]; Dump Truck [16 h]; Roller Compactor [16 h]; MC1/RC2 Sprayer [16 h] |
| B5.33 31 23.021_R | Excavation(Rem) | 3d | 2026-10-07 | 2026-10-10 | B6. 33 42 13.011 SS, B5.33 31 23.021 | Labor [46.78 h]; Foreman [23.39 h]; Operator [46.78 h]; Surveyor [23.39 h]; Surveyor Helper [23.39 h]; Excavator (With Bucket) [24 h]; Water Tanker [24 h]; Dump Truck [24 h]; Plate Compactor [24 h]; Sew HDPE Dia. 160 mm depth: 1.5 - 2.5m [159.4] |
| B5.33 31 23.024_R | Embedment & Test(Rem) | 4d | 2026-10-07 | 2026-10-11 | B5.33 31 23.023_R FF, B5.33 31 23.024 | Labor [62.37 h]; Foreman [31.18 h]; Plumber Helper [31.18 h]; Plumber [31.18 h]; Operator [62.37 h]; Surveyor [31.18 h]; Surveyor Helper [31.18 h]; Loader [32 h]; Water Tanker [32 h]; Dump Truck [32 h]; Plate Compactor [32 h]; Roller Compactor [32 h]; Sew HDPE Dia. 160 mm depth: 1.5 - 2.5m [159.4] |
| B5.33 31 23.025_R | Backfilling & Warrning Tape(Rem) | 5d | 2026-10-07 | 2026-10-12 | B5.33 31 00.01.02.59, B5.33 31 00.01.02119, B5.33 31 23.024_R FF, B5.33 31 23.025 | Labor [77.96 h]; Foreman [38.98 h]; Operator [155.92 h]; Surveyor [38.98 h]; Surveyor Helper [38.98 h]; Loader [40 h]; Water Tanker [40 h]; Dump Truck [40 h]; Plate Compactor [40 h]; Roller Compactor [40 h]; Sew HDPE Dia. 160 mm depth: 1.5 - 2.5m [79.7] |
| B5.33 31 23.022_R | Sand Bedding(Rem) | 2d | 2026-10-08 | 2026-10-10 | B5.33 31 23.021_R FF, B5.33 31 23.022 | Labor [31.18 h]; Foreman [15.59 h]; Operator [62.37 h]; Surveyor [15.59 h]; Surveyor Helper [15.59 h]; Loader [16 h]; Water Tanker [16 h]; Dump Truck [16 h]; Plate Compactor [16 h]; Sew HDPE Dia. 160 mm depth: 1.5 - 2.5m [39.85] |
| B5.33 31 23.023_R | Pipe Laying(Rem) | 2d | 2026-10-08 | 2026-10-10 | B5.33 31 23.022_R FF, B5.33 31 23.023 | Labor [31.18 h]; Foreman [15.59 h]; Plumber Helper [15.59 h]; Plumber [15.59 h]; Operator [15.59 h]; Surveyor [15.59 h]; Surveyor Helper [15.59 h]; Mobile Crane [16 h]; Sew HDPE Dia. 160 mm depth: 1.5 - 2.5m [358.65]; Pipe encasement dia 160mm [40]; Pipe encasement dia 150mm [10] |
| B3.33 14 19.01.1_R | Burried Isolation Valve Installation(Rem) | 2d | 2026-10-08 | 2026-10-10 | B5.33 31 23.023_R SS, B3.33 14 19.01.1 | Labor [31.18 h]; Plumber Helper [15.59 h]; Plumber [15.59 h]; Operator [31.18 h]; Boom Truck [16 h]; Gate V dia 150 mm on Dia. 160 mm [0.75] |
| B6. 33 42 13.013_R | Box Reinforced Conc. Walls incl. Water Stop(Rem) | 3d | 2026-09-22 A | 2026-10-07 | B6.33 05 63.061, B6. 33 42 13.012 SS, B6. 33 42 13.013 | Labor [8.73 h]; Laboratory Officer [4.37 h]; Carpenter [4.37 h]; Steelfixer [4.37 h]; Mason [4.37 h]; Operator [8.73 h]; Surveyor [4.37 h]; Surveyor Helper [4.37 h]; Mobile Crane [4.48 h]; Concrete for box culvert [17.89]; Steel Reinforcement for box culverts [2.98] |
| B6. 33 42 13.014_R | Box Reinforced Conc. Slab(Rem) | 3d | 2026-09-29 A | 2026-10-07 | B6. 33 42 13.013_R SS, B6. 33 42 13.014 | Labor [6.24 h]; Laboratory Officer [3.12 h]; Carpenter [3.12 h]; Steelfixer [3.12 h]; Mason [3.12 h]; Operator [6.24 h]; Surveyor [3.12 h]; Surveyor Helper [3.12 h]; Mobile Crane [3.2 h]; Concrete for box culvert [17.89]; Steel Reinforcement for box culverts [2.98] |
| B6. 33 42 13.015_R | Curing & Water Proofing(Rem) | 4.56d | 2026-10-03 A | 2026-10-08 | B6. 33 42 13.014_R SS, B6. 33 42 13.015 | Labor [55.51 h]; Mason [27.75 h]; Concrete for box culvert [99.5] |
| B3.33 14 11.01.011_R | Excavation(Rem) | 3d | 2026-10-07 | 2026-10-10 | B1.2.32 11 26.01.8_R SS, B3.33 14 11.01.011 | Labor [31.18 h]; Foreman [15.59 h]; Operator [31.18 h]; Surveyor [15.59 h]; Surveyor Helper [15.59 h]; Excavator (With Bucket) [16 h]; Water Tanker [16 h]; Dump Truck [16 h]; Plate Compactor [16 h]; Depth: 0.0m - 1.5m [92.75] |
| B3.33 14 11.01.012_R | Sand Bedding(Rem) | 3d | 2026-10-07 | 2026-10-10 | B3.33 14 11.01.011_R FF, B3.33 14 11.01.012 | Labor [31.18 h]; Foreman [15.59 h]; Operator [62.37 h]; Surveyor [15.59 h]; Surveyor Helper [15.59 h]; Loader [16 h]; Water Tanker [16 h]; Dump Truck [16 h]; Plate Compactor [16 h]; Depth: 0.0m - 1.5m [23.2] |
| B3.33 14 11.01.013_R | Pipe Laying(Rem) | 3d | 2026-10-07 | 2026-10-10 | B3.33 14 11.01.012_R FF, B3.33 14 11.01.013 | Labor [31.18 h]; Foreman [15.59 h]; Plumber Helper [15.59 h]; Plumber [15.59 h]; Operator [15.59 h]; Surveyor [15.59 h]; Surveyor Helper [15.59 h]; Mobile Crane [16 h]; Depth: 0.0m - 1.5m [208.92] |
| B3.33 14 11.01.014_R | Embedment & Test(Rem) | 5d | 2026-10-07 | 2026-10-12 | B3.33 14 11.01.013_R FF, B3.33 14 11.01.014 | Labor [62.37 h]; Foreman [31.18 h]; Plumber Helper [31.18 h]; Plumber [31.18 h]; Operator [62.37 h]; Surveyor [31.18 h]; Surveyor Helper [31.18 h]; Loader [32 h]; Water Tanker [32 h]; Dump Truck [32 h]; Plate Compactor [32 h]; Roller Compactor [32 h]; Depth: 0.0m - 1.5m [92.76] |
| B3.33 14 11.01.015_R | Backfilling & Warrning Tape(Rem) | 6d | 2026-10-08 | 2026-10-14 | B3.33 14 11.01.014_R SS, B3.33 14 11.01.024_R FF+2d, B3.33 14 11.01.015 | Labor [77.96 h]; Foreman [38.98 h]; Operator [155.92 h]; Surveyor [38.98 h]; Surveyor Helper [38.98 h]; Loader [40 h]; Water Tanker [40 h]; Dump Truck [40 h]; Plate Compactor [40 h]; Roller Compactor [40 h]; Depth: 0.0m - 1.5m [46.38] |
| B3.33 14 11.01.021_R | Excavation(Rem) | 4d | 2026-10-07 | 2026-10-11 | B3.33 14 11.01.011_R SS, B3.33 14 11.01.021 | Labor [46.78 h]; Foreman [23.39 h]; Operator [46.78 h]; Surveyor [23.39 h]; Surveyor Helper [23.39 h]; Excavator (With Bucket) [24 h]; Water Tanker [24 h]; Dump Truck [24 h]; Plate Compactor [24 h]; Depth: 1.51m - 2.5m [104] |
| B3.33 14 11.01.023_R | Pipe Laying(Rem) | 4d | 2026-10-07 | 2026-10-11 | B3.33 14 11.01.022_R FF, B3.33 14 11.01.023 | Labor [46.78 h]; Foreman [23.39 h]; Plumber Helper [23.39 h]; Plumber [23.39 h]; Operator [23.39 h]; Surveyor [23.39 h]; Surveyor Helper [23.39 h]; Mobile Crane [24 h]; Depth: 1.51m - 2.5m [234] |
| B3.33 14 11.01.024_R | Embedment & Test(Rem) | 5d | 2026-10-07 | 2026-10-12 | B3.33 14 11.01.023_R FF, B3.33 14 11.01.024 | Labor [62.37 h]; Foreman [31.18 h]; Plumber Helper [31.18 h]; Plumber [31.18 h]; Operator [62.37 h]; Surveyor [31.18 h]; Surveyor Helper [31.18 h]; Loader [32 h]; Water Tanker [32 h]; Dump Truck [32 h]; Plate Compactor [32 h]; Roller Compactor [32 h]; Depth: 1.51m - 2.5m [104] |
| B3.33 14 11.01.022_R | Sand Bedding(Rem) | 3d | 2026-10-08 | 2026-10-11 | B3.33 14 11.01.021_R FF, B3.33 14 11.01.022 | Labor [31.18 h]; Foreman [15.59 h]; Operator [62.37 h]; Surveyor [15.59 h]; Surveyor Helper [15.59 h]; Loader [16 h]; Water Tanker [16 h]; Dump Truck [16 h]; Plate Compactor [16 h]; Depth: 1.51m - 2.5m [26] |
| B3.33 14 11.01.025_R | Backfilling & Warrning Tape(Rem) | 6d | 2026-10-10 | 2026-10-17 | B3.33 14 11.01.015_R SS, B3.33 14 11.01.025, B3.33 14 11.01.0118_R | Labor [77.96 h]; Foreman [38.98 h]; Operator [155.92 h]; Surveyor [38.98 h]; Surveyor Helper [38.98 h]; Loader [40 h]; Water Tanker [40 h]; Dump Truck [40 h]; Plate Compactor [40 h]; Roller Compactor [40 h]; Depth: 1.51m - 2.5m [52] |
| B4.33 14 13.081_R | Excavation(Rem) | 2.57d | 2026-10-07 | 2026-10-10 | B3.33 05 63.02.17, B4.33 14 13.081 | Labor [24.48 h]; Foreman [12.24 h]; Operator [24.48 h]; Surveyor [12.24 h]; Surveyor Helper [12.24 h]; Excavator (With Bucket) [12.56 h]; Water Tanker [12.56 h]; Dump Truck [12.56 h]; Plate Compactor [12.56 h]; Dia. 125mm 0.0m - 1.5m [63.43] |
| B4.33 14 13.082_R | Sand Bedding(Rem) | 2.57d | 2026-10-07 | 2026-10-10 | B4.33 14 13.081_R FF, B4.33 14 13.082 | Labor [24.48 h]; Foreman [12.24 h]; Operator [48.96 h]; Surveyor [12.24 h]; Surveyor Helper [12.24 h]; Loader [12.56 h]; Water Tanker [12.56 h]; Dump Truck [12.56 h]; Plate Compactor [12.56 h]; Dia. 125mm 0.0m - 1.5m [15.86] |
| B4.33 14 13.083_R | Pipe Laying(Rem) | 2.57d | 2026-10-07 | 2026-10-10 | B4.33 14 13.082_R FF, B4.33 14 13.083 | Labor [24.48 h]; Foreman [12.24 h]; Plumber Helper [12.24 h]; Plumber [12.24 h]; Operator [12.24 h]; Surveyor [12.24 h]; Surveyor Helper [12.24 h]; Mobile Crane [12.56 h]; Dia. 125mm 0.0m - 1.5m [142.71] |
| B4.33 14 13.084_R | Embedment & Test(Rem) | 4.14d | 2026-10-07 | 2026-10-12 | B4.33 14 13.083_R FF, B4.33 14 13.084 | Labor [48.96 h]; Foreman [24.48 h]; Plumber Helper [24.48 h]; Plumber [24.48 h]; Operator [48.96 h]; Surveyor [24.48 h]; Surveyor Helper [24.48 h]; Loader [25.12 h]; Water Tanker [25.12 h]; Dump Truck [25.12 h]; Plate Compactor [25.12 h]; Roller Compactor [25.12 h]; Dia. 125mm 0.0m - 1.5m [63.43] |
| B2.33 71 19 16_R | Land Adjustment(Rem) | 3d | 2026-10-15 | 2026-10-19 | B4.33 14 13.085 FF, B2.33 71 19 16 | Labor [9.98 h]; Foreman [4.99 h]; Operator [9.98 h]; Surveyor [2.49 h]; Surveyor Helper [2.49 h]; Excavator (With Bucket) [5.12 h]; Water Tanker [5.12 h]; Dump Truck [5.12 h]; Roller Compactor [5.12 h]; Cable 13.8 kV 3Cx 500 mm² Al XLPE,/LLDPE / Unarmored [800.02] |
| B2.33 71 19 17_R | Backfilling(Rem) | 5d | 2026-10-15 | 2026-10-21 | B2.33 71 49.23.010_R SS, B2.33 71 19 17 | Labor [62.37 h]; Foreman [31.18 h]; Operator [62.37 h]; Surveyor [31.18 h]; Surveyor Helper [31.18 h]; Loader [32 h]; Water Tanker [32 h]; Dump Truck [32 h]; Plate Compactor [32 h]; Cable 13.8 kV 3Cx 500 mm² Al XLPE,/LLDPE / Unarmored [2000.04] |
| B2.33 71 49.23.010_R | Cable Pulling(Rem) | 2.6d | 2026-10-15 | 2026-10-18 | B2.33 71 19 16_R SS, B2.33 71 49.23.010 | Labor [24.95 h]; Foreman [12.47 h]; Surveyor [12.47 h]; Surveyor Helper [12.47 h]; Electrician [12.47 h]; Cable 13.8 kV 3Cx 500 mm² Al XLPE,/LLDPE / Unarmored [272.72] |
| B2.33 71 19 18_R | Land Adjustment(Rem) | 1.5d | 2026-10-15 | 2026-10-17 | B2.33 71 19 16_R SS, B2.33 71 19 18 | Labor [23.39 h]; Foreman [11.69 h]; Operator [15.59 h]; Surveyor [3.9 h]; Surveyor Helper [3.9 h]; Excavator (With Bucket) [12 h]; Water Tanker [12 h]; Dump Truck [12 h]; Roller Compactor [12 h]; SL Cable, Copper 4x10mm2/ CU/XLPE/SWA/PVC + 1x10mm2 CU/PVC [208.25] |
| B2.33 71 49.23.64_R | Cable Pulling(Rem) | 2.5d | 2026-10-15 | 2026-10-18 | B2.33 71 19 18_R SS, B2.33 71 49.23.64 | Labor [38.98 h]; Foreman [19.49 h]; Surveyor [19.49 h]; Surveyor Helper [19.49 h]; Electrician [19.49 h]; SL Cable, Copper 4x10mm2/ CU/XLPE/SWA/PVC + 1x10mm2 CU/PVC [624.75] |
| B2.33 71 16.033_R | Lighting Poles Installation Incl power box, Cables(Rem) | 2d | 2026-10-07 | 2026-10-08 | B2.33 71 16.032 SS, DMM2-Proc-Delv-6538_R SS, B2.33 71 16.033 | Labor [14.97 h]; Operator [14.97 h]; Mobile Crane [7.68 h]; Electrician [7.48 h]; Lighting poles with 1 arm, height of ( 12 ) meters [1.73] |
| B2.33 71 16.034_R | Lighting Luminares Inst(Rem) | 2d | 2026-10-07 | 2026-10-08 | B2.33 71 16.033_R SS, B2.33 71 16.034 | Labor [9.98 h]; Operator [9.98 h]; Manlift [5.12 h]; Street Lighting( LED), Lamp Lumen: 24286, Luminare Lumen:20914, complete with control gear and lamp, (140) WATT. [3.52] |
| B1.2.32 11 13.01.8_R | Subgrade(Rem) | 6d | 2026-09-30 A | 2026-10-13 | B1.2.31 23 23.01.8, B1.2.32 11 13.01.8 | Subgrade [3489.43]; Labor [18.71 h]; Foreman [9.36 h]; Operator [18.71 h]; Surveyor [9.36 h]; Surveyor Helper [9.36 h]; Grader [9.6 h]; Loader [9.6 h]; Water Tanker [9.6 h]; Dump Truck [9.6 h]; Plate Compactor [9.6 h]; Roller Compactor [9.6 h] |
| B1.2.32 11 23.01.8_R | Aggregate Base Course(Rem) | 1.95d | 2026-10-07 | 2026-10-08 | B1.2.32 11 13.01.8_R SS, B1.2.32 11 23.01.8 | Aggregate base course [4585.48]; Labor [30.73 h]; Foreman [15.37 h]; Operator [30.73 h]; Surveyor [15.37 h]; Surveyor Helper [15.37 h]; Grader [15.77 h]; Loader [15.77 h]; Water Tanker [15.77 h]; Dump Truck [15.77 h]; Plate Compactor [15.77 h]; Roller Compactor [15.77 h] |
| 32 16 13.031_R | Excavation(Rem) | 2d | 2026-10-07 | 2026-10-08 | B1.2.32 11 23.01.3_R SS, 32 16 13.031 | Curb Stone, Type K1 [47.03]; Labor [28.07 h]; Foreman [14.03 h]; Operator [28.07 h]; Surveyor [14.03 h]; Surveyor Helper [14.03 h]; JCB [14.4 h]; Water Tanker [14.4 h]; Dump Truck [14.4 h]; Plate Compactor [14.4 h] |
| 32 16 13.032_R | PCC(Rem) | 2d | 2026-10-07 | 2026-10-08 | 32 16 13.031_R SS, 32 16 13.032 | Curb Stone, Type K1 [47.06]; Labor [28.07 h]; Mason [14.03 h]; Surveyor [14.03 h]; Surveyor Helper [14.03 h] |
| 32 16 13.033_R | Haunching(Rem) | 1.8d | 2026-10-07 | 2026-10-08 | 32 16 13.032_R SS, 32 16 13.033 | Curb Stone, Type K1 [47.03]; Labor [28.07 h]; Carpenter [14.03 h]; Mason [14.03 h]; Surveyor [14.03 h]; Surveyor Helper [14.03 h] |
| B1.2.32 16.13.01.8_R | Curb Stone, Type K1(Rem) | 1.8d | 2026-10-07 | 2026-10-08 | 32 16 13.033_R SS, B1.2.32 16.13.01.8 | Curb Stone, Type K1 [141.09]; Labor [28.07 h]; Foreman [14.03 h]; Mason [14.03 h]; Operator [28.07 h]; Surveyor [14.03 h]; Surveyor Helper [14.03 h]; JCB [14.4 h] |
| 32 16 13.08_R | Finishing, Fareface(Rem) | 1.8d | 2026-10-07 | 2026-10-08 | B1.2.32 16.13.01.8_R SS, 32 16 13.08 | Curb Stone, Type K1 [31.35]; Labor [28.07 h]; Mason [14.03 h] |
| B1.2.32 11 26.01.8_R | Bituminous Base Course including Prime Coat (MC1) and tack coat (RC2)(Rem) | 2.24d | 2026-09-26 A | 2026-10-08 | B1.2.32 11 23.01.8_R SS, B1.2.32 11 26.01.8 | Bituminous base course(Grading I - Class A) [2231.47]; Labor [34.93 h]; Foreman [17.46 h]; Operator [34.93 h]; Surveyor [17.46 h]; Surveyor Helper [17.46 h]; Dump Truck [17.92 h]; Roller Compactor [17.92 h]; MC1/RC2 Sprayer [17.92 h] |
| B3.2.32 11 23.01.27_R | CMU (Concrete Masonry Unit) Walls Construction(Rem) | 2.5d | 2026-10-07 | 2026-10-10 | DMM2-Proc-Delv-7293 FF, B3.2.32 11 23.01.19, B3.2.32 11 23.01.27 | Labor [23.39 h]; Mason [11.69 h]; Operator [23.39 h]; JCB [12 h]; Concrete masonry unit, 200mm thick wall; for Potable water pump station, for Potable water tank, and for chlorination [160.75] |
| B3.2.32 11 23.01.39_R | Roof Slab & Beams Construction(Rem) | 2d | 2026-10-07 | 2026-10-08 | B3.2.32 11 23.01.19, B3.2.32 11 23.01.39 | Labor [15.59 h]; Carpenter [7.8 h]; Steelfixer [7.8 h]; Mason [7.8 h]; Surveyor [7.8 h]; Surveyor Helper [7.8 h]; Roof Slab and beams for Potable water pump station & Potable water tank & chlorination [73.75] |
| B5.33 31 00.02.05.5_R | Backfilling & Warrning Tape(Rem) | 4.56d | 2026-09-24 A | 2026-10-12 | B5.33 31 00.02.05.4, B5.33 31 00.02.05.5 | Labor [71.06 h]; Foreman [35.53 h]; Operator [142.11 h]; Surveyor [35.53 h]; Surveyor Helper [35.53 h]; Loader [36.46 h]; Water Tanker [36.46 h]; Dump Truck [36.46 h]; Plate Compactor [36.46 h]; Roller Compactor [36.46 h]; Sew Dia. 200mm Depth: 4.51m -5.5m [12.65] |
| B6.33 05 39.01.607_R | Test, Internal Finishing, Benching & Cover(Rem) | 2.56d | 2026-09-22 A | 2026-10-08 | B6.33 05 39.01.597, B6.33 05 39.01.607 | Labor [37.22 h]; Foreman [18.61 h]; Plumber Helper [18.61 h]; Plumber [18.61 h]; Mason [18.61 h]; MH depth 4.51 -5.5m [0.57] |
| B6.33 05 39.01.617_R | Backfilling(Rem) | 3.08d | 2026-09-26 A | 2026-10-08 | B6.33 05 39.01.607_R SS, B5.33 31 00.02.05.5_R SS, B6.33 05 39.01.617 | Labor [46.53 h]; Foreman [23.26 h]; Operator [46.53 h]; Surveyor [23.26 h]; Surveyor Helper [23.26 h]; Loader [23.87 h]; Water Tanker [23.87 h]; Dump Truck [23.87 h]; Plate Compactor [23.87 h]; MH depth 4.51 -5.5m [1.13] |
| B6.33 05 39.01.657_R | Test, Internal Finishing, Benching & Cover(Rem) | 3.04d | 2026-09-28 A | 2026-10-08 | B6.33 05 39.01.647, B6.33 05 39.01.657 | Labor [47.4 h]; Foreman [23.7 h]; Plumber Helper [23.7 h]; Plumber [23.7 h]; Mason [23.7 h]; MH depth 6.0-5.51 m [0.23] |
| B6.33 05 39.01.667_R | Backfilling(Rem) | 3.08d | 2026-09-30 A | 2026-10-08 | B6.33 05 39.01.1467, B6.33 05 39.01.657_R SS, B6.33 05 39.01.617_R SS, B6.33 05 39.01.667 | Labor [48.02 h]; Foreman [24.01 h]; Operator [48.02 h]; Surveyor [24.01 h]; Surveyor Helper [24.01 h]; Loader [24.64 h]; Water Tanker [24.64 h]; Dump Truck [24.64 h]; Plate Compactor [24.64 h]; MH depth 6.0-5.51 m [0.37] |
| B6.33 05 39.01.687_R | Blinding Conc, & RC Base(Rem) | 2.04d | 2026-09-20 A | 2026-10-08 | B6.33 05 39.01.677, B6.33 05 39.01.687 | Labor [29.94 h]; Foreman [14.97 h]; Laboratory Officer [14.97 h]; Carpenter [14.97 h]; Steelfixer [14.97 h]; Mason [14.97 h]; MH depth 6.0- 5.51 m with back drop [0.07] |
| B6.33 05 39.01.697_R | Manhole Installation(Rem) | 1.52d | 2026-09-24 A | 2026-10-07 | B6.33 05 39.01.687_R SS, B6.33 05 39.01.697 | Labor [19.96 h]; Operator [19.96 h]; Surveyor [9.98 h]; Surveyor Helper [9.98 h]; Boom Truck [10.24 h]; Mobile Crane [10.24 h]; MH depth 6.0- 5.51 m with back drop [0.29] |
| B6.33 05 39.01.707_R | Test, Internal Finishing, Benching & Cover(Rem) | 3.52d | 2026-09-30 A | 2026-10-10 | B6.33 05 39.01.697_R SS, B6.33 05 39.01.707 | Labor [39.92 h]; Foreman [19.96 h]; Plumber Helper [19.96 h]; Plumber [19.96 h]; Mason [19.96 h]; MH depth 6.0- 5.51 m with back drop [0.07] |
| B6.33 05 39.01.717_R | Backfilling(Rem) | 4.04d | 2026-10-03 A | 2026-10-10 | B6.33 05 39.01.1667, B6.33 05 39.01.707_R SS, B6.33 05 39.01.667_R SS, B6.33 05 39.01.717 | Labor [49.9 h]; Foreman [24.95 h]; Operator [49.9 h]; Surveyor [24.95 h]; Surveyor Helper [24.95 h]; Loader [25.6 h]; Water Tanker [25.6 h]; Dump Truck [25.6 h]; Plate Compactor [25.6 h]; MH depth 6.0- 5.51 m with back drop [0.13] |
| B6.33 05 39.01.3547_R | Manhole Installation(Rem) | 3d | 2026-09-13 A | 2026-09-15 A | B6.33 05 39.01.3537, B6.33 05 39.01.3547 | Labor [6.2 h]; Operator [6.2 h]; Surveyor [3.1 h]; Surveyor Helper [3.1 h]; Boom Truck [3.18 h]; Mobile Crane [3.18 h]; Storm MH depth 2.51 - 3.5m [0.39] |
| B6.33 05 39.01.3557_R | Test, Internal Finishing, Benching & Cover(Rem) | 3d | 2026-09-20 A | 2026-09-22 A | B6.33 05 39.01.3547_R SS, B6.33 05 39.01.3557 | Labor [12.47 h]; Foreman [6.24 h]; Plumber Helper [6.24 h]; Plumber [6.24 h]; Mason [6.24 h]; Storm MH depth 2.51 - 3.5m [0.08] |
| B6.33 05 39.01.3567_R | Backfilling(Rem) | 3d | 2026-09-20 A | 2026-09-24 A | B6.33 42 11.27-1.10, B6.33 05 39.01.3557_R SS, B6.33 05 39.01.3567 | Labor [15.51 h]; Foreman [7.75 h]; Operator [15.51 h]; Surveyor [7.75 h]; Surveyor Helper [7.75 h]; Loader [7.96 h]; Water Tanker [7.96 h]; Dump Truck [7.96 h]; Plate Compactor [7.96 h]; Storm MH depth 2.51 - 3.5m [0.18] |
| B6.33 05 40.01.370_R | Excavation, Compaction & Vapour Barrier(Rem) | 3d | 2026-10-07 | 2026-10-10 | B6.33 05 39.01.3527, B6.33 05 40.01.370 | Labor [6.24 h]; Foreman [3.12 h]; Operator [6.24 h]; Surveyor [3.12 h]; Surveyor Helper [3.12 h]; Excavator (With Bucket) [3.2 h]; Water Tanker [3.2 h]; Dump Truck [3.2 h]; Roller Compactor [3.2 h]; Single Catch basin [0.6] |
| B6.33 05 40.01.380_R | Blinding Conc.(Rem) | 3d | 2026-10-07 | 2026-10-10 | B6.33 05 40.01.370_R SS, B6.33 05 40.01.380 | Labor [6.24 h]; Foreman [3.12 h]; Laboratory Officer [3.12 h]; Carpenter [3.12 h]; Steelfixer [3.12 h]; Mason [3.12 h]; Single Catch basin [0.4] |
| B6.33 05 40.01.390_R | Catch Basin Installation(Rem) | 3d | 2026-10-07 | 2026-10-10 | B6.33 05 40.01.380_R SS, B6.33 05 40.01.390 | Labor [9.36 h]; Foreman [4.68 h]; Carpenter [4.68 h]; Steelfixer [4.68 h]; Mason [4.68 h]; Operator [9.36 h]; Surveyor [4.68 h]; Surveyor Helper [4.68 h]; Boom Truck [4.8 h]; Single Catch basin [1.79] |
| B6.33 05 40.01.400_R | Backfilling, DI Frame & Grate Cover Fixing(Rem) | 2d | 2026-10-07 | 2026-10-08 | B6.33 42 11.36-1.22, B6.33 42 11.35-1.22, B6.33 05 40.01.390_R SS, B6.33 05 40.01.400 | Labor [15.59 h]; Foreman [7.8 h]; Operator [15.59 h]; Surveyor [7.8 h]; Surveyor Helper [7.8 h]; Loader [8 h]; Water Tanker [8 h]; Dump Truck [8 h]; Plate Compactor [8 h]; Single Catch basin [1.19] |
| B6.33 42 11.35-1.20_R | Catch Basin Opening Prep.(Rem) | 3d | 2026-09-29 A | 2026-10-01 A | B6.33 05 40.01.870 FF, B6.33 42 11.35-1.20 | Labor [9.97 h]; Foreman [4.98 h]; Plumber Helper [4.98 h]; Plumber [4.98 h]; less than 1.5 [14.9] |
| B6.33 42 11.36-1.20_R | Catch Basin Opening Prep.(Rem) | 3d | 2026-09-29 A | 2026-10-01 A | B6.33 42 11.35-1.20_R SS, B6.33 42 11.36-1.20 | Labor [9.97 h]; Foreman [4.98 h]; Plumber Helper [4.98 h]; Plumber [4.98 h]; less than 1.5 [14.9] |
| B3.33 14 13.01.01017_R | Backfilling & Warrning Tape(Rem) | 2.66d | 2026-10-07 | 2026-10-10 | B3.33 14 13.01.01013, B3.33 14 13.01.01017 | Labor [25.84 h]; Foreman [12.92 h]; Operator [51.67 h]; Surveyor [12.92 h]; Surveyor Helper [12.92 h]; Loader [13.26 h]; Water Tanker [13.26 h]; Dump Truck [13.26 h]; Plate Compactor [13.26 h]; Roller Compactor [13.26 h]; Depth: 0.0m - 1.5m [25.81] |
| B3.33 14 13.01.01011_R | Pipe Laying(Rem) | 2d | 2026-10-07 | 2026-10-08 | B3.33 14 13.01.0107, B3.33 14 13.01.01011 | Labor [2.77 h]; Foreman [1.38 h]; Plumber Helper [1.38 h]; Plumber [1.38 h]; Operator [1.38 h]; Surveyor [1.38 h]; Surveyor Helper [1.38 h]; Mobile Crane [1.42 h]; Depth: 1.51m - 2.5m |
| B3.33 14 13.01.01015_R | Embedment & Test(Rem) | 2d | 2026-10-07 | 2026-10-08 | B3.33 14 13.01.01011_R FF, B3.33 14 19.01.112_R SS, B3.33 14 13.01.01015 | Labor [5.54 h]; Foreman [2.77 h]; Plumber Helper [2.77 h]; Plumber [2.77 h]; Operator [5.54 h]; Surveyor [2.77 h]; Surveyor Helper [2.77 h]; Loader [2.84 h]; Water Tanker [2.84 h]; Dump Truck [2.84 h]; Plate Compactor [2.84 h]; Roller Compactor [2.84 h]; Depth: 1.51m - 2.5m |
| B3.33 14 13.01.01019_R | Backfilling & Warrning Tape(Rem) | 2d | 2026-10-07 | 2026-10-08 | B3.33 14 13.01.01015_R FF, B3.33 14 13.01.01019 | Labor [6.92 h]; Foreman [3.46 h]; Operator [13.84 h]; Surveyor [3.46 h]; Surveyor Helper [3.46 h]; Loader [3.55 h]; Water Tanker [3.55 h]; Dump Truck [3.55 h]; Plate Compactor [3.55 h]; Roller Compactor [3.55 h]; Depth: 1.51m - 2.5m |
| B3.33 14 19.01.112_R | Burried Isolation Valve Installation(Rem) | 3d | 2026-10-07 | 2026-10-10 | B3.33 14 13.01.01011_R SS, B3.33 14 19.01.112 | Labor [7.8 h]; Plumber Helper [3.9 h]; Plumber [3.9 h]; Operator [7.8 h]; Boom Truck [4 h]; POT Gate V dia 110 mm [0.41] |
| B4.33 14 13.01-0196_R | Embedment & Test(Rem) | 4.25d | 2026-10-07 | 2026-10-12 | B4.33 14 13.01-0194, B4.33 14 13.01-0196 | Labor [50.66 h]; Foreman [25.33 h]; Plumber Helper [25.33 h]; Plumber [25.33 h]; Operator [50.66 h]; Surveyor [25.33 h]; Surveyor Helper [25.33 h]; Loader [25.99 h]; Water Tanker [25.99 h]; Dump Truck [25.99 h]; Plate Compactor [25.99 h]; Roller Compactor [25.99 h]; Dia. 110mm 0.0m - 1.5m [67.69] |
| B4.33 14 13.01-0198_R | Backfilling & Warrning Tape(Rem) | 5.06d | 2026-10-10 | 2026-10-15 | B3.33 05 63.02.89 FF, B4.33 14 13.075, B4.33 14 13.01-0196_R FF, B4.33 14 13.01-0198 | Labor [63.32 h]; Foreman [31.66 h]; Operator [126.65 h]; Surveyor [31.66 h]; Surveyor Helper [31.66 h]; Loader [32.49 h]; Water Tanker [32.49 h]; Dump Truck [32.49 h]; Plate Compactor [32.49 h]; Roller Compactor [32.49 h]; Dia. 110mm 0.0m - 1.5m [33.84] |
| B4.33 14 13.01-199_R | Excavation(Rem) | 3d | 2026-10-07 | 2026-10-10 | B4.33 14 13.01-0190, B4.33 14 13.01-199 | Labor [31.18 h]; Foreman [15.59 h]; Operator [31.18 h]; Surveyor [15.59 h]; Surveyor Helper [15.59 h]; Excavator (With Bucket) [16 h]; Water Tanker [16 h]; Dump Truck [16 h]; Plate Compactor [16 h]; Dia. 25mm 0.0m - 1.5m [2406.8] |
| B4.33 14 13.01-209_R | Sand Bedding(Rem) | 3d | 2026-10-07 | 2026-10-10 | B4.33 14 13.01-199_R FF, B4.33 14 13.01-209 | Labor [31.18 h]; Foreman [15.59 h]; Operator [62.37 h]; Surveyor [15.59 h]; Surveyor Helper [15.59 h]; Loader [16 h]; Water Tanker [16 h]; Dump Truck [16 h]; Plate Compactor [16 h]; Dia. 25mm 0.0m - 1.5m [601.7] |
| B4.33 14 13.01-219_R | Pipe Laying(Rem) | 3d | 2026-10-07 | 2026-10-10 | B4.33 14 13.01-209_R FF, DMM2-Proc-Delv-5858_R FF, B4.33 14 13.01-219 | Labor [31.18 h]; Foreman [15.59 h]; Plumber Helper [15.59 h]; Plumber [15.59 h]; Operator [15.59 h]; Surveyor [15.59 h]; Surveyor Helper [15.59 h]; Mobile Crane [16 h]; Dia. 25mm 0.0m - 1.5m [5415.29] |
| B4.33 14 13.01-229_R | Embedment & Test(Rem) | 5d | 2026-10-07 | 2026-10-12 | B4.33 14 13.01-219_R FF, B4.33 14 13.01-229 | Labor [62.37 h]; Foreman [31.18 h]; Plumber Helper [31.18 h]; Plumber [31.18 h]; Operator [62.37 h]; Surveyor [31.18 h]; Surveyor Helper [31.18 h]; Loader [32 h]; Water Tanker [32 h]; Dump Truck [32 h]; Plate Compactor [32 h]; Roller Compactor [32 h]; Dia. 25mm 0.0m - 1.5m [2406.8] |
| B4.33 14 13.01-239_R | Backfilling & Warrning Tape(Rem) | 6d | 2026-10-07 | 2026-10-13 | B4.33 14 13.01-229_R FF, B4.33 14 13.01-239 | Labor [77.96 h]; Foreman [38.98 h]; Operator [155.92 h]; Surveyor [38.98 h]; Surveyor Helper [38.98 h]; Loader [40 h]; Water Tanker [40 h]; Dump Truck [40 h]; Plate Compactor [40 h]; Roller Compactor [40 h]; Dia. 25mm 0.0m - 1.5m [1203.39] |
| B4.33 14 13.01-249_R | Excavation(Rem) | 3d | 2026-10-07 | 2026-10-10 | B4.33 14 13.01-199_R FF, B4.33 14 13.01-249 | Labor [31.18 h]; Foreman [15.59 h]; Operator [31.18 h]; Surveyor [15.59 h]; Surveyor Helper [15.59 h]; Excavator (With Bucket) [16 h]; Water Tanker [16 h]; Dump Truck [16 h]; Plate Compactor [16 h]; Dia. 32mm 0.0m - 1.5m [696.6] |
| B4.33 14 13.01-259_R | Sand Bedding(Rem) | 3d | 2026-10-07 | 2026-10-10 | B4.33 14 13.01-249_R FF, B4.33 14 13.01-259 | Labor [31.18 h]; Foreman [15.59 h]; Operator [62.37 h]; Surveyor [15.59 h]; Surveyor Helper [15.59 h]; Loader [16 h]; Water Tanker [16 h]; Dump Truck [16 h]; Plate Compactor [16 h]; Dia. 32mm 0.0m - 1.5m [174.15] |
| B4.33 14 13.01-269_R | Pipe Laying(Rem) | 3d | 2026-10-07 | 2026-10-10 | B4.33 14 13.01-259_R FF, B4.33 14 13.01-269 | Labor [31.18 h]; Foreman [15.59 h]; Plumber Helper [15.59 h]; Plumber [15.59 h]; Operator [15.59 h]; Surveyor [15.59 h]; Surveyor Helper [15.59 h]; Mobile Crane [16 h]; Dia. 32mm 0.0m - 1.5m [1567.35] |
| B4.33 14 13.01-279_R | Embedment & Test(Rem) | 5d | 2026-10-07 | 2026-10-12 | B4.33 14 13.01-269_R FF, B4.33 14 13.01-279 | Labor [62.37 h]; Foreman [31.18 h]; Plumber Helper [31.18 h]; Plumber [31.18 h]; Operator [62.37 h]; Surveyor [31.18 h]; Surveyor Helper [31.18 h]; Loader [32 h]; Water Tanker [32 h]; Dump Truck [32 h]; Plate Compactor [32 h]; Roller Compactor [32 h]; Dia. 32mm 0.0m - 1.5m [696.6] |
| B4.33 14 13.01-289_R | Backfilling & Warrning Tape(Rem) | 6d | 2026-10-07 | 2026-10-13 | B4.33 14 13.01-279_R FF, B4.33 14 13.01-289 | Labor [77.96 h]; Foreman [38.98 h]; Operator [155.92 h]; Surveyor [38.98 h]; Surveyor Helper [38.98 h]; Loader [40 h]; Water Tanker [40 h]; Dump Truck [40 h]; Plate Compactor [40 h]; Roller Compactor [40 h]; Dia. 32mm 0.0m - 1.5m [348.3] |
| B4.33 14 13.01-299_R | Excavation(Rem) | 3d | 2026-10-07 | 2026-10-10 | B4.33 14 13.01-249_R FF, DMM2-Proc-Delv-5878_R SS, B4.33 14 13.01-299 | Labor [31.18 h]; Foreman [15.59 h]; Operator [31.18 h]; Surveyor [15.59 h]; Surveyor Helper [15.59 h]; Excavator (With Bucket) [16 h]; Water Tanker [16 h]; Dump Truck [16 h]; Plate Compactor [16 h]; Dia. 50mm 0.0m - 1.5m [963.61] |
| B4.33 14 13.01-309_R | Sand Bedding(Rem) | 3d | 2026-10-07 | 2026-10-10 | B4.33 14 13.01-299_R FF, B4.33 14 13.01-309 | Labor [31.18 h]; Foreman [15.59 h]; Operator [62.37 h]; Surveyor [15.59 h]; Surveyor Helper [15.59 h]; Loader [16 h]; Water Tanker [16 h]; Dump Truck [16 h]; Plate Compactor [16 h]; Dia. 50mm 0.0m - 1.5m [240.9] |
| B4.33 14 13.01-319_R | Pipe Laying(Rem) | 3d | 2026-10-07 | 2026-10-10 | B4.33 14 13.01-309_R FF, B4.33 14 13.01-319 | Labor [31.18 h]; Foreman [15.59 h]; Plumber Helper [15.59 h]; Plumber [15.59 h]; Operator [15.59 h]; Surveyor [15.59 h]; Surveyor Helper [15.59 h]; Mobile Crane [16 h]; Dia. 50mm 0.0m - 1.5m [2168.11] |
| B4.33 14 13.01-329_R | Embedment & Test(Rem) | 5d | 2026-10-07 | 2026-10-12 | B4.33 14 13.01-319_R FF, B4.33 14 13.01-329 | Labor [62.37 h]; Foreman [31.18 h]; Plumber Helper [31.18 h]; Plumber [31.18 h]; Operator [62.37 h]; Surveyor [31.18 h]; Surveyor Helper [31.18 h]; Loader [32 h]; Water Tanker [32 h]; Dump Truck [32 h]; Plate Compactor [32 h]; Roller Compactor [32 h]; Dia. 50mm 0.0m - 1.5m [963.61] |
| B4.33 14 13.01-339_R | Backfilling & Warrning Tape(Rem) | 6d | 2026-10-07 | 2026-10-13 | B4.33 14 13.01-329_R FF, B4.33 14 13.01-339 | Labor [77.96 h]; Foreman [38.98 h]; Operator [155.92 h]; Surveyor [38.98 h]; Surveyor Helper [38.98 h]; Loader [40 h]; Water Tanker [40 h]; Dump Truck [40 h]; Plate Compactor [40 h]; Roller Compactor [40 h]; Dia. 50mm 0.0m - 1.5m [481.8] |
| B4.33 14 13.01-349_R | Excavation(Rem) | 3d | 2026-09-22 A | 2026-09-28 A | B4.33 14 13.01-299_R FF, B1.1.31 23 23.162, B4.33 14 13.01-349 | Labor [31.18 h]; Foreman [15.59 h]; Operator [31.18 h]; Surveyor [15.59 h]; Surveyor Helper [15.59 h]; Excavator (With Bucket) [16 h]; Water Tanker [16 h]; Dump Truck [16 h]; Plate Compactor [16 h]; Dia. 63mm 0.0m - 1.5m [87.2] |
| B4.33 14 13.01-359_R | Sand Bedding(Rem) | 3d | 2026-10-07 | 2026-10-10 | B4.33 14 13.01-349_R FF, B4.33 14 13.01-359 | Labor [31.18 h]; Foreman [15.59 h]; Operator [62.37 h]; Surveyor [15.59 h]; Surveyor Helper [15.59 h]; Loader [16 h]; Water Tanker [16 h]; Dump Truck [16 h]; Plate Compactor [16 h]; Dia. 63mm 0.0m - 1.5m [21.8] |
| B4.33 14 13.01-369_R | Pipe Laying(Rem) | 3d | 2026-10-07 | 2026-10-10 | B4.33 14 13.01-359_R FF, B4.33 14 13.01-369 | Labor [31.18 h]; Foreman [15.59 h]; Plumber Helper [15.59 h]; Plumber [15.59 h]; Operator [15.59 h]; Surveyor [15.59 h]; Surveyor Helper [15.59 h]; Mobile Crane [16 h]; Dia. 63mm 0.0m - 1.5m [196.2] |
| B4.33 14 13.01-379_R | Embedment & Test(Rem) | 5d | 2026-10-07 | 2026-10-12 | B4.33 14 13.01-369_R FF, B3.33 14 19.01.138_R SS, B4.33 14 13.01-379 | Labor [62.37 h]; Foreman [31.18 h]; Plumber Helper [31.18 h]; Plumber [31.18 h]; Operator [62.37 h]; Surveyor [31.18 h]; Surveyor Helper [31.18 h]; Loader [32 h]; Water Tanker [32 h]; Dump Truck [32 h]; Plate Compactor [32 h]; Roller Compactor [32 h]; Dia. 63mm 0.0m - 1.5m [87.2] |
| B4.33 14 13.01-389_R | Backfilling & Warrning Tape(Rem) | 6d | 2026-10-07 | 2026-10-13 | B3.33 14 19.01.139 FF, B4.33 14 13.01-289_R FF, B4.33 14 13.01-379_R FF, B4.33 14 13.01-389 | Labor [77.96 h]; Foreman [38.98 h]; Operator [155.92 h]; Surveyor [38.98 h]; Surveyor Helper [38.98 h]; Loader [40 h]; Water Tanker [40 h]; Dump Truck [40 h]; Plate Compactor [40 h]; Roller Compactor [40 h]; Dia. 63mm 0.0m - 1.5m [43.6] |
| B4.33 14 13.01-399_R | Excavation(Rem) | 3d | 2026-10-07 | 2026-10-10 | B4.33 14 13.01-349_R SS, B4.33 14 13.01-399 | Labor [31.18 h]; Foreman [15.59 h]; Operator [31.18 h]; Surveyor [15.59 h]; Surveyor Helper [15.59 h]; Excavator (With Bucket) [16 h]; Water Tanker [16 h]; Dump Truck [16 h]; Plate Compactor [16 h]; Dia. 75mm 0.0m - 1.5m [28.21] |
| B4.33 14 13.01-409_R | Sand Bedding(Rem) | 3d | 2026-10-07 | 2026-10-10 | B4.33 14 13.01-399_R FF, B4.33 14 13.01-409 | Labor [31.18 h]; Foreman [15.59 h]; Operator [62.37 h]; Surveyor [15.59 h]; Surveyor Helper [15.59 h]; Loader [16 h]; Water Tanker [16 h]; Dump Truck [16 h]; Plate Compactor [16 h]; Dia. 75mm 0.0m - 1.5m [7.05] |
| B4.33 14 13.01-419_R | Pipe Laying(Rem) | 3d | 2026-10-07 | 2026-10-10 | B4.33 14 13.01-409_R FF, B4.33 14 13.01-419 | Labor [31.18 h]; Foreman [15.59 h]; Plumber Helper [15.59 h]; Plumber [15.59 h]; Operator [15.59 h]; Surveyor [15.59 h]; Surveyor Helper [15.59 h]; Mobile Crane [16 h]; Dia. 75mm 0.0m - 1.5m [63.48] |
| B4.33 14 13.01-429_R | Embedment & Test(Rem) | 5d | 2026-10-07 | 2026-10-12 | B4.33 14 13.01-419_R FF, B3.33 14 19.01.138_R SS, B4.33 14 13.01-429 | Labor [62.37 h]; Foreman [31.18 h]; Plumber Helper [31.18 h]; Plumber [31.18 h]; Operator [62.37 h]; Surveyor [31.18 h]; Surveyor Helper [31.18 h]; Loader [32 h]; Water Tanker [32 h]; Dump Truck [32 h]; Plate Compactor [32 h]; Roller Compactor [32 h]; Dia. 75mm 0.0m - 1.5m [28.21] |
| B4.33 14 13.01-439_R | Backfilling & Warrning Tape(Rem) | 6d | 2026-10-07 | 2026-10-13 | B4.33 14 13.01-429_R FF, B4.33 14 13.01-439 | Labor [77.96 h]; Foreman [38.98 h]; Operator [155.92 h]; Surveyor [38.98 h]; Surveyor Helper [38.98 h]; Loader [40 h]; Water Tanker [40 h]; Dump Truck [40 h]; Plate Compactor [40 h]; Roller Compactor [40 h]; Dia. 75mm 0.0m - 1.5m [14.11] |
| B3.33 14 19.01.138_R | Burried Isolation Valve Installation(Rem) | 2d | 2026-10-07 | 2026-10-08 | B4.33 14 13.01-419_R SS, B3.33 14 19.01.138 | Labor [15.59 h]; Plumber Helper [7.8 h]; Plumber [7.8 h]; Operator [15.59 h]; Boom Truck [8 h]; TSE Gate V Dia. 100 mm [2.8] |
| B1.2.32 11 13.01.10_R | Subgrade(Rem) | 2.1d | 2026-09-19 A | 2026-10-10 | B1.2.31 23 23.01.10, B1.2.32 11 13.01.10 | Subgrade [576.85]; Labor [32.74 h]; Foreman [16.37 h]; Operator [32.74 h]; Surveyor [16.37 h]; Surveyor Helper [16.37 h]; Grader [16.8 h]; Loader [16.8 h]; Water Tanker [16.8 h]; Dump Truck [16.8 h]; Plate Compactor [16.8 h]; Roller Compactor [16.8 h] |
| B1.2.32 11 23.01.10_R | Aggregate Base Course(Rem) | 2.8d | 2026-10-07 | 2026-10-10 | B1.2.32 11 13.01.10_R FF, B1.2.32 11 23.01.10 | Aggregate base course [439.5]; Labor [43.66 h]; Foreman [21.83 h]; Operator [43.66 h]; Surveyor [21.83 h]; Surveyor Helper [21.83 h]; Grader [22.4 h]; Loader [22.4 h]; Water Tanker [22.4 h]; Dump Truck [22.4 h]; Plate Compactor [22.4 h]; Roller Compactor [22.4 h] |
| B1.2.32 11 26.01.10_R | Bituminous Base Course including Prime Coat (MC1) and tack coat (RC2)(Rem) | 2d | 2026-09-24 A | 2026-10-08 | B1.2.32 11 23.01.10_R SS, B1.2.32 11 26.01.10 | Bituminous base course(Grading I - Class A) [218.32]; Labor [9.04 h]; Foreman [4.52 h]; Operator [9.04 h]; Surveyor [4.52 h]; Surveyor Helper [4.52 h]; Dump Truck [4.64 h]; Roller Compactor [4.64 h]; MC1/RC2 Sprayer [4.64 h] |
| B6.33 05 39.01.3687_R | Blinding Conc, & RC Base(Rem) | 3d | 2026-09-12 A | 2026-09-19 A | B6.33 05 39.01.3677, B6.33 05 39.01.3687 | Labor [7.95 h]; Foreman [3.98 h]; Laboratory Officer [3.98 h]; Carpenter [3.98 h]; Steelfixer [3.98 h]; Mason [3.98 h]; Storm MH depth 2.51 - 3.5m [0.07] |
| B6.33 05 39.01.3697_R | Manhole Installation(Rem) | 3d | 2026-09-22 A | 2026-09-26 A | B6.33 05 39.01.3687_R SS, B6.33 05 39.01.3697 | Labor [5.3 h]; Operator [5.3 h]; Surveyor [2.65 h]; Surveyor Helper [2.65 h]; Boom Truck [2.72 h]; Mobile Crane [2.72 h]; Storm MH depth 2.51 - 3.5m [0.33] |
| B6.33 05 39.01.3717_R | Backfilling(Rem) | 3d | 2026-10-11 | 2026-10-13 | B6.33 05 39.01.3707 FF, B6.33 05 39.01.3717, B6.33 05 39.01.3767_R | Labor [13.25 h]; Foreman [6.63 h]; Operator [13.25 h]; Surveyor [6.63 h]; Surveyor Helper [6.63 h]; Loader [6.8 h]; Water Tanker [6.8 h]; Dump Truck [6.8 h]; Plate Compactor [6.8 h]; Storm MH depth 2.51 - 3.5m [0.15] |
| B6.33 05 40.01.450_R | Excavation, Compaction & Vapour Barrier(Rem) | 3d | 2026-10-07 | 2026-10-10 | B6.33 05 39.01.3677, B6.33 05 40.01.450 | Labor [10.29 h]; Foreman [5.15 h]; Operator [10.29 h]; Surveyor [5.15 h]; Surveyor Helper [5.15 h]; Excavator (With Bucket) [5.28 h]; Water Tanker [5.28 h]; Dump Truck [5.28 h]; Roller Compactor [5.28 h]; Single Catch basin [0.99] |
| B6.33 05 40.01.460_R | Blinding Conc.(Rem) | 3d | 2026-10-08 | 2026-10-11 | B6.33 05 40.01.450_R SS+1d, B6.33 05 40.01.460 | Labor [10.29 h]; Foreman [5.15 h]; Laboratory Officer [5.15 h]; Carpenter [5.15 h]; Steelfixer [5.15 h]; Mason [5.15 h]; Single Catch basin [0.66] |
| B6.33 05 40.01.470_R | Catch Basin Installation(Rem) | 3d | 2026-10-12 | 2026-10-14 | B6.33 05 40.01.460_R, B6.33 05 40.01.750_R SS, B6.33 05 40.01.470 | Labor [15.44 h]; Foreman [7.72 h]; Carpenter [7.72 h]; Steelfixer [7.72 h]; Mason [7.72 h]; Operator [15.44 h]; Surveyor [7.72 h]; Surveyor Helper [7.72 h]; Boom Truck [7.92 h]; Single Catch basin [2.95] |
| B6.33 42 11.35-110_R | Catch Basin Opening Prep.(Rem) | 3d | 2026-09-27 A | 2026-10-01 A | B6.33 05 40.01.470_R, B6.33 42 11.35-110 | Labor [10.29 h]; Foreman [5.15 h]; Plumber Helper [5.15 h]; Plumber [5.15 h]; less than 1.5 [15.38] |
| B6.33 42 11.36-183_R | Catch Basin Opening Prep.(Rem) | 3d | 2026-09-24 A | 2026-09-27 A | B6.33 42 11.35-110_R SS, B6.33 42 11.36-183, B6.33 42 11.36-181_R | Labor [10.29 h]; Foreman [5.15 h]; Plumber Helper [5.15 h]; Plumber [5.15 h]; less than 1.5 [15.38] |
| B4.33 14 13.01-0195_R | Pipe Laying(Rem) | 2.59d | 2026-10-07 | 2026-10-10 | B4.33 14 13.01-0193, B4.33 14 13.01-0195 | Labor [24.71 h]; Foreman [12.36 h]; Plumber Helper [12.36 h]; Plumber [12.36 h]; Operator [12.36 h]; Surveyor [12.36 h]; Surveyor Helper [12.36 h]; Mobile Crane [12.68 h]; Dia. 125mm 0.0m - 1.5m [144.08] |
| B4.33 14 13.01-0197_R | Embedment & Test(Rem) | 4.17d | 2026-10-07 | 2026-10-12 | B4.33 14 13.01-0195_R FF, B4.33 14 13.01-0197 | Labor [49.43 h]; Foreman [24.71 h]; Plumber Helper [24.71 h]; Plumber [24.71 h]; Operator [49.43 h]; Surveyor [24.71 h]; Surveyor Helper [24.71 h]; Loader [25.36 h]; Water Tanker [25.36 h]; Dump Truck [25.36 h]; Plate Compactor [25.36 h]; Roller Compactor [25.36 h]; Dia. 125mm 0.0m - 1.5m [64.03] |
| B4.33 14 13.01-0199_R | Backfilling & Warrning Tape(Rem) | 4.96d | 2026-10-07 | 2026-10-12 | B4.33 14 13.01-0197_R FF, B4.33 14 13.01-0199 | Labor [61.78 h]; Foreman [30.89 h]; Operator [123.57 h]; Surveyor [30.89 h]; Surveyor Helper [30.89 h]; Loader [31.7 h]; Water Tanker [31.7 h]; Dump Truck [31.7 h]; Plate Compactor [31.7 h]; Roller Compactor [31.7 h]; Dia. 125mm 0.0m - 1.5m [32.02] |
| B1.2.32 11 13.01.11_R | Subgrade(Rem) | 2d | 2026-10-07 | 2026-10-08 | B1.2.31 23 23.01.11, B1.2.32 11 13.01.11 | Subgrade [471.75]; Labor [10.91 h]; Foreman [5.46 h]; Operator [10.91 h]; Surveyor [5.46 h]; Surveyor Helper [5.46 h]; Grader [5.6 h]; Loader [5.6 h]; Water Tanker [5.6 h]; Dump Truck [5.6 h]; Plate Compactor [5.6 h]; Roller Compactor [5.6 h] |
| B1.2.32 11 23.01.11_R | Aggregate Base Course(Rem) | 2d | 2026-10-07 | 2026-10-08 | B1.2.32 11 13.01.11_R FF, B1.2.32 11 23.01.11 | Aggregate base course [431.31]; Labor [14.97 h]; Foreman [7.48 h]; Operator [14.97 h]; Surveyor [7.48 h]; Surveyor Helper [7.48 h]; Grader [7.68 h]; Loader [7.68 h]; Water Tanker [7.68 h]; Dump Truck [7.68 h]; Plate Compactor [7.68 h]; Roller Compactor [7.68 h] |
| B1.2.32 11 26.01.11_R | Bituminous Base Course including Prime Coat (MC1) and tack coat (RC2)(Rem) | 2d | 2026-09-22 A | 2026-10-08 | B1.2.32 11 23.01.11_R SS, B1.2.32 11 26.01.11 | Bituminous base course(Grading I - Class A) [190.86]; Labor [9.67 h]; Foreman [4.83 h]; Operator [9.67 h]; Surveyor [4.83 h]; Surveyor Helper [4.83 h]; Dump Truck [4.96 h]; Roller Compactor [4.96 h]; MC1/RC2 Sprayer [4.96 h] |
| B6.33 05 39.01.3747_R | Manhole Installation(Rem) | 3d | 2026-10-07 | 2026-10-10 | B6.33 05 39.01.3737, B6.33 05 39.01.3747 | Labor [14.34 h]; Operator [14.34 h]; Surveyor [7.17 h]; Surveyor Helper [7.17 h]; Boom Truck [7.36 h]; Mobile Crane [7.36 h]; Storm MH depth 2.51 - 3.5m [0.91] |
| B6.33 05 39.01.3757_R | Test, Internal Finishing, Benching & Cover(Rem) | 3.67d | 2026-10-07 | 2026-10-11 | B6.33 05 39.01.3747_R SS, B6.33 05 39.01.3757 | Labor [41.58 h]; Foreman [20.79 h]; Plumber Helper [20.79 h]; Plumber [20.79 h]; Mason [20.79 h]; Storm MH depth 2.51 - 3.5m [0.28] |
| B6.33 05 39.01.3767_R | Backfilling(Rem) | 3d | 2026-10-07 | 2026-10-10 | B6.33 05 39.01.3757_R SS, B6.33 05 39.01.3767, B6.33 05 39.01.3567_R | Labor [13.25 h]; Foreman [6.63 h]; Operator [13.25 h]; Surveyor [6.63 h]; Surveyor Helper [6.63 h]; Loader [6.8 h]; Water Tanker [6.8 h]; Dump Truck [6.8 h]; Plate Compactor [6.8 h]; Storm MH depth 2.51 - 3.5m [0.15] |
| B6.33 05 40.01.490_R | Excavation, Compaction & Vapour Barrier(Rem) | 3d | 2026-09-20 A | 2026-10-07 | B6.33 05 39.01.3727, B6.33 05 40.01.490 | Labor [6.24 h]; Foreman [3.12 h]; Operator [6.24 h]; Surveyor [3.12 h]; Surveyor Helper [3.12 h]; Excavator (With Bucket) [3.2 h]; Water Tanker [3.2 h]; Dump Truck [3.2 h]; Roller Compactor [3.2 h]; Single Catch basin [0.6] |
| B6.33 05 40.01.500_R | Blinding Conc.(Rem) | 3d | 2026-09-24 A | 2026-10-07 | B6.33 05 40.01.490_R SS, B6.33 05 40.01.500 | Labor [6.24 h]; Foreman [3.12 h]; Laboratory Officer [3.12 h]; Carpenter [3.12 h]; Steelfixer [3.12 h]; Mason [3.12 h]; Single Catch basin [0.4] |
| B6.33 05 40.01.510_R | Catch Basin Installation(Rem) | 3d | 2026-09-26 A | 2026-10-07 | B6.33 05 40.01.500_R SS, B6.33 05 40.01.510 | Labor [9.36 h]; Foreman [4.68 h]; Carpenter [4.68 h]; Steelfixer [4.68 h]; Mason [4.68 h]; Operator [9.36 h]; Surveyor [4.68 h]; Surveyor Helper [4.68 h]; Boom Truck [4.8 h]; Single Catch basin [1.79] |
| B6.33 05 40.01.520_R | Backfilling, DI Frame & Grate Cover Fixing(Rem) | 2d | 2026-10-01 A | 2026-10-07 | B6.33 42 11.36-197, B6.33 05 40.01.520 | Labor [15.59 h]; Foreman [7.8 h]; Operator [15.59 h]; Surveyor [7.8 h]; Surveyor Helper [7.8 h]; Loader [8 h]; Water Tanker [8 h]; Dump Truck [8 h]; Plate Compactor [8 h]; Single Catch basin [1.19] |
| B6.33 05 40.01.930_R | Excavation, Compaction & Vapour Barrier(Rem) | 2.12d | 2026-09-19 A | 2026-10-07 | B6.33 05 40.01.490_R SS, B6.33 05 40.01.930 | Labor [17.46 h]; Foreman [8.73 h]; Operator [17.46 h]; Surveyor [8.73 h]; Surveyor Helper [8.73 h]; Excavator (With Bucket) [8.96 h]; Water Tanker [8.96 h]; Dump Truck [8.96 h]; Roller Compactor [8.96 h]; Double Catch basin [0.33] |
| B6.33 05 40.01.940_R | Blinding Conc.(Rem) | 2.12d | 2026-09-22 A | 2026-10-07 | B6.33 05 40.01.930_R SS, B6.33 05 40.01.940 | Labor [17.46 h]; Foreman [8.73 h]; Laboratory Officer [8.73 h]; Carpenter [8.73 h]; Steelfixer [8.73 h]; Mason [8.73 h]; Double Catch basin [0.22] |
| B6.33 05 40.01.950_R | Catch Basin Installation(Rem) | 2.68d | 2026-09-27 A | 2026-10-07 | B6.33 05 40.01.940_R SS, B6.33 05 40.01.950 | Labor [26.2 h]; Foreman [13.1 h]; Carpenter [13.1 h]; Steelfixer [13.1 h]; Mason [13.1 h]; Operator [26.2 h]; Surveyor [13.1 h]; Surveyor Helper [13.1 h]; Boom Truck [13.44 h]; Double Catch basin [1.02] |
| B6.33 42 11.36-185_R | Catch Basin Opening Prep.(Rem) | 3d | 2026-09-28 A | 2026-09-30 A | B6.33 42 11.35-112, B6.33 42 11.36-185, B6.33 42 11.36-183_R | Labor [12.23 h]; Foreman [6.11 h]; Plumber Helper [6.11 h]; Plumber [6.11 h]; less than 1.5 [18.28] |
| B1.2.32 11 13.01.14_R | Subgrade(Rem) | 1.05d | 2026-10-07 | 2026-10-08 | B1.2.31 23 23.01.14, B1.2.32 11 13.01.14 | Subgrade [324.1]; Labor [16.37 h]; Foreman [8.19 h]; Operator [16.37 h]; Surveyor [8.19 h]; Surveyor Helper [8.19 h]; Grader [8.4 h]; Loader [8.4 h]; Water Tanker [8.4 h]; Dump Truck [8.4 h]; Plate Compactor [8.4 h]; Roller Compactor [8.4 h] |
| B1.2.32 11 23.01.14_R | Aggregate Base Course(Rem) | 1.53d | 2026-10-07 | 2026-10-08 | B1.2.32 11 13.01.14_R FF, B1.2.32 11 23.01.14 | Aggregate base course [314.84]; Labor [23.86 h]; Foreman [11.93 h]; Operator [23.86 h]; Surveyor [11.93 h]; Surveyor Helper [11.93 h]; Grader [12.24 h]; Loader [12.24 h]; Water Tanker [12.24 h]; Dump Truck [12.24 h]; Plate Compactor [12.24 h]; Roller Compactor [12.24 h] |
| B1.2.32 11 26.01.14_R | Bituminous Base Course including Prime Coat (MC1) and tack coat (RC2)(Rem) | 2d | 2026-09-24 A | 2026-10-08 | B1.2.32 11 23.01.14_R SS, B1.2.32 11 26.01.14 | Bituminous base course(Grading I - Class A) [109.97]; Labor [8.11 h]; Foreman [4.05 h]; Operator [8.11 h]; Surveyor [4.05 h]; Surveyor Helper [4.05 h]; Dump Truck [4.16 h]; Roller Compactor [4.16 h]; MC1/RC2 Sprayer [4.16 h] |
| B5.33 31 00.01.25_R | Embedment & Test(Rem) | 3.67d | 2026-09-24 A | 2026-10-11 | B5.33 31 00.01.17, B5.33 31 00.01.25 | Labor [56.16 h]; Foreman [28.08 h]; Plumber Helper [28.08 h]; Plumber [28.08 h]; Operator [56.16 h]; Surveyor [28.08 h]; Surveyor Helper [28.08 h]; Loader [28.81 h]; Water Tanker [28.81 h]; Dump Truck [28.81 h]; Plate Compactor [28.81 h]; Roller Compactor [28.81 h]; Sew Dia. 150mm Depth: 1.51m - 2.5m [14.11] |
| B5.33 31 00.01.33_R | Backfilling & Warrning Tape(Rem) | 4.56d | 2026-09-26 A | 2026-10-12 | B5.33 31 00.01.25_R FF, B5.33 31 23.025_R SS, B5.33 31 00.01.33 | Labor [70.2 h]; Foreman [35.1 h]; Operator [140.4 h]; Surveyor [35.1 h]; Surveyor Helper [35.1 h]; Loader [36.02 h]; Water Tanker [36.02 h]; Dump Truck [36.02 h]; Plate Compactor [36.02 h]; Roller Compactor [36.02 h]; Sew Dia. 150mm Depth: 1.51m - 2.5m [7.06] |
| B5.33 31 00.01.27_R | Embedment & Test(Rem) | 3.67d | 2026-09-24 A | 2026-10-11 | B5.33 31 00.01.19, B5.33 31 00.01.27 | Labor [56.16 h]; Foreman [28.08 h]; Plumber Helper [28.08 h]; Plumber [28.08 h]; Operator [56.16 h]; Surveyor [28.08 h]; Surveyor Helper [28.08 h]; Loader [28.81 h]; Water Tanker [28.81 h]; Dump Truck [28.81 h]; Plate Compactor [28.81 h]; Roller Compactor [28.81 h]; Sew Dia. 200mm Depth: 2.51m - 3.5m [55.86] |
| B5.33 31 00.01.35_R | Backfilling & Warrning Tape(Rem) | 4.56d | 2026-09-26 A | 2026-10-12 | B5.33 31 00.01.27_R FF, B5.33 31 00.01.35 | Labor [70.2 h]; Foreman [35.1 h]; Operator [140.4 h]; Surveyor [35.1 h]; Surveyor Helper [35.1 h]; Loader [36.02 h]; Water Tanker [36.02 h]; Dump Truck [36.02 h]; Plate Compactor [36.02 h]; Roller Compactor [36.02 h]; Sew Dia. 200mm Depth: 2.51m - 3.5m [27.93] |
| B5.33 31 00.01.29_R | Embedment & Test(Rem) | 3.67d | 2026-09-24 A | 2026-10-11 | B5.33 31 00.01.21, B5.33 31 00.01.29 | Labor [56.16 h]; Foreman [28.08 h]; Plumber Helper [28.08 h]; Plumber [28.08 h]; Operator [56.16 h]; Surveyor [28.08 h]; Surveyor Helper [28.08 h]; Loader [28.81 h]; Water Tanker [28.81 h]; Dump Truck [28.81 h]; Plate Compactor [28.81 h]; Roller Compactor [28.81 h]; Sew Dia. 200mm Depth: 3.51m - 4.5m [75.29] |
| B5.33 31 00.01.31_R | Embedment & Test(Rem) | 3.67d | 2026-09-26 A | 2026-10-11 | B5.33 31 00.01.23, B5.33 31 00.01.31 | Labor [56.16 h]; Foreman [28.08 h]; Plumber Helper [28.08 h]; Plumber [28.08 h]; Operator [56.16 h]; Surveyor [28.08 h]; Surveyor Helper [28.08 h]; Loader [28.81 h]; Water Tanker [28.81 h]; Dump Truck [28.81 h]; Plate Compactor [28.81 h]; Roller Compactor [28.81 h]; Sew Dia. 200mm Depth: 4.51m -5.5m [25.01] |
| B5.33 31 00.01.39_R | Backfilling & Warrning Tape(Rem) | 4.56d | 2026-09-28 A | 2026-10-12 | B5.33 31 00.01.37, B5.33 31 00.01.31_R FF, B5.33 31 00.01.33_R SS, B5.33 31 00.01.35_R SS, B5.33 31 00.01.39 | Labor [70.2 h]; Foreman [35.1 h]; Operator [140.4 h]; Surveyor [35.1 h]; Surveyor Helper [35.1 h]; Loader [36.02 h]; Water Tanker [36.02 h]; Dump Truck [36.02 h]; Plate Compactor [36.02 h]; Roller Compactor [36.02 h]; Sew Dia. 200mm Depth: 4.51m -5.5m [12.5] |
| B6.33 05 39.01.837_R | Blinding Conc, & RC Base(Rem) | 2.04d | 2026-09-22 A | 2026-10-08 | B6.33 05 39.01.827, B6.33 05 39.01.837 | Labor [29.94 h]; Foreman [14.97 h]; Laboratory Officer [14.97 h]; Carpenter [14.97 h]; Steelfixer [14.97 h]; Mason [14.97 h]; MH depth 0 - 1.5m [0.17] |
| B6.33 05 39.01.847_R | Manhole Installation(Rem) | 1.52d | 2026-10-03 A | 2026-10-07 | B6.33 05 39.01.837_R SS, B6.33 05 39.01.847 | Labor [19.96 h]; Operator [19.96 h]; Surveyor [9.98 h]; Surveyor Helper [9.98 h]; Boom Truck [10.24 h]; Mobile Crane [10.24 h]; MH depth 0 - 1.5m [0.86] |
| B6.33 05 39.01.857_R | Test, Internal Finishing, Benching & Cover(Rem) | 2.56d | 2026-10-04 A | 2026-10-08 | B6.33 05 39.01.847_R SS, B6.33 05 39.01.857 | Labor [39.92 h]; Foreman [19.96 h]; Plumber Helper [19.96 h]; Plumber [19.96 h]; Mason [19.96 h]; MH depth 0 - 1.5m [0.17] |
| B6.33 05 39.01.917_R | Backfilling(Rem) | 3.2d | 2026-09-21 A | 2026-10-10 | B6.33 05 39.01.907 FF, B6.33 05 39.01.867 FF, B6.33 05 39.01.917 | Labor [49.9 h]; Foreman [24.95 h]; Operator [49.9 h]; Surveyor [24.95 h]; Surveyor Helper [24.95 h]; Loader [25.6 h]; Water Tanker [25.6 h]; Dump Truck [25.6 h]; Plate Compactor [25.6 h]; MH depth 1.51 - 2.5m [0.56] |
| B6.33 05 39.01.887_R | Blinding Conc, & RC Base(Rem) | 2.04d | 2026-09-28 A | 2026-10-08 | B6.33 05 39.01.877, B6.33 05 39.01.887 | Labor [29.94 h]; Foreman [14.97 h]; Laboratory Officer [14.97 h]; Carpenter [14.97 h]; Steelfixer [14.97 h]; Mason [14.97 h]; MH depth 1.51 - 2.5m [0.29] |
| B6.33 05 39.01.897_R | Manhole Installation(Rem) | 1.52d | 2026-09-30 A | 2026-10-07 | B6.33 05 39.01.887_R SS, B6.33 05 39.01.897 | Labor [19.96 h]; Operator [19.96 h]; Surveyor [9.98 h]; Surveyor Helper [9.98 h]; Boom Truck [10.24 h]; Mobile Crane [10.24 h]; MH depth 1.51 - 2.5m [1.27] |
| B6.33 05 39.01.967_R | Backfilling(Rem) | 3.2d | 2026-09-19 A | 2026-10-10 | B6.33 05 39.01.957 FF, B6.33 05 39.01.967 | Labor [49.9 h]; Foreman [24.95 h]; Operator [49.9 h]; Surveyor [24.95 h]; Surveyor Helper [24.95 h]; Loader [25.6 h]; Water Tanker [25.6 h]; Dump Truck [25.6 h]; Plate Compactor [25.6 h]; MH depth 2.51 - 3.5m [0.71] |
| B6.33 05 39.01.937_R | Blinding Conc, & RC Base(Rem) | 2.04d | 2026-09-21 A | 2026-10-08 | B6.33 05 39.01.927, B6.33 05 39.01.937 | Labor [29.94 h]; Foreman [14.97 h]; Laboratory Officer [14.97 h]; Carpenter [14.97 h]; Steelfixer [14.97 h]; Mason [14.97 h]; MH depth 2.51 - 3.5m [0.35] |
| B6.33 05 39.01.947_R | Manhole Installation(Rem) | 1.52d | 2026-09-24 A | 2026-10-07 | B6.33 05 39.01.937_R SS, B6.33 05 39.01.947 | Labor [19.96 h]; Operator [19.96 h]; Surveyor [9.98 h]; Surveyor Helper [9.98 h]; Boom Truck [10.24 h]; Mobile Crane [10.24 h]; MH depth 2.51 - 3.5m [1.59] |
| B6.33 05 39.01.987_R | Blinding Conc, & RC Base(Rem) | 2.04d | 2026-09-24 A | 2026-10-08 | B6.33 05 39.01.977, B6.33 05 39.01.987 | Labor [29.94 h]; Foreman [14.97 h]; Laboratory Officer [14.97 h]; Carpenter [14.97 h]; Steelfixer [14.97 h]; Mason [14.97 h]; MH depth 4.51 -5.5m [0.61] |
| B6.33 05 39.01.997_R | Manhole Installation(Rem) | 1.52d | 2026-09-26 A | 2026-10-07 | B6.33 05 39.01.987_R SS, B6.33 05 39.01.997 | Labor [19.96 h]; Operator [19.96 h]; Surveyor [9.98 h]; Surveyor Helper [9.98 h]; Boom Truck [10.24 h]; Mobile Crane [10.24 h]; MH depth 4.51 -5.5m [2.73] |
| B6.33 05 39.01.1007_R | Test, Internal Finishing, Benching & Cover(Rem) | 2.56d | 2026-09-29 A | 2026-10-08 | B6.33 05 39.01.997_R SS, B6.33 05 39.01.1007 | Labor [39.92 h]; Foreman [19.96 h]; Plumber Helper [19.96 h]; Plumber [19.96 h]; Mason [19.96 h]; MH depth 4.51 -5.5m [0.61] |
| B6.33 42 11.01-1.7_R | Embedment & Test(Rem) | 3.56d | 2026-10-07 | 2026-10-11 | B6.33 42 11.01-1.5, B6.33 42 11.01-1.7 | Labor [32.9 h]; Foreman [16.45 h]; Plumber Helper [16.45 h]; Plumber [16.45 h]; Operator [32.9 h]; Surveyor [16.45 h]; Surveyor Helper [16.45 h]; Loader [16.88 h]; Water Tanker [16.88 h]; Dump Truck [16.88 h]; Plate Compactor [16.88 h]; Roller Compactor [16.88 h]; Depth: 1.51m - 2.5m [2.11] |
| B6.33 42 11.01-1.9_R | Backfilling & Warrning Tape(Rem) | 3.84d | 2026-10-07 | 2026-10-11 | B6.33 42 11.01-1.7_R FF, B6.33 42 11.01-1.9 | Labor [41.13 h]; Foreman [20.56 h]; Operator [82.26 h]; Surveyor [20.56 h]; Surveyor Helper [20.56 h]; Loader [21.1 h]; Water Tanker [21.1 h]; Dump Truck [21.1 h]; Plate Compactor [21.1 h]; Roller Compactor [21.1 h]; Depth: 1.51m - 2.5m [1.05] |
| B6.33 05 39.01.3587_R | Blinding Conc, & RC Base(Rem) | 3d | 2026-09-19 A | 2026-09-24 A | B6.33 05 39.01.3577, B6.33 05 39.01.3587 | Labor [7.95 h]; Foreman [3.98 h]; Laboratory Officer [3.98 h]; Carpenter [3.98 h]; Steelfixer [3.98 h]; Mason [3.98 h]; MH depth 1.50 - 2.5m [0.18] |
| B6.33 05 39.01.3597_R | Manhole Installation(Rem) | 3d | 2026-09-21 A | 2026-09-27 A | B6.33 05 39.01.3587_R SS, B6.33 05 39.01.3597 | Labor [5.3 h]; Operator [5.3 h]; Surveyor [2.65 h]; Surveyor Helper [2.65 h]; Boom Truck [2.72 h]; Mobile Crane [2.72 h]; MH depth 1.50 - 2.5m [0.62] |
| B6.33 05 40.01.410_R | Excavation, Compaction & Vapour Barrier(Rem) | 3d | 2026-10-07 | 2026-10-10 | B6.33 05 39.01.3577, B6.33 05 40.01.410 | Labor [11.69 h]; Foreman [5.85 h]; Operator [11.69 h]; Surveyor [5.85 h]; Surveyor Helper [5.85 h]; Excavator (With Bucket) [6 h]; Water Tanker [6 h]; Dump Truck [6 h]; Roller Compactor [6 h]; Single Catch basin [1.12] |
| B6.33 05 40.01.420_R | Blinding Conc.(Rem) | 3d | 2026-10-07 | 2026-10-10 | B6.33 05 40.01.410_R SS, B6.33 05 40.01.420 | Labor [11.69 h]; Foreman [5.85 h]; Laboratory Officer [5.85 h]; Carpenter [5.85 h]; Steelfixer [5.85 h]; Mason [5.85 h]; Single Catch basin [0.75] |
| B6.33 05 40.01.430_R | Catch Basin Installation(Rem) | 2.12d | 2026-10-07 | 2026-10-10 | B6.33 05 40.01.420_R SS, B6.33 05 40.01.430 | Labor [17.54 h]; Foreman [8.77 h]; Carpenter [8.77 h]; Steelfixer [8.77 h]; Mason [8.77 h]; Operator [17.54 h]; Surveyor [8.77 h]; Surveyor Helper [8.77 h]; Boom Truck [9 h]; Single Catch basin [3.35] |
| B6.33 05 40.01.440_R | Backfilling, DI Frame & Grate Cover Fixing(Rem) | 2.88d | 2026-10-07 | 2026-10-10 | B6.33 42 11.35-120, B6.33 05 40.01.430_R SS, B6.33 05 40.01.440 | Labor [29.24 h]; Foreman [14.62 h]; Operator [29.24 h]; Surveyor [14.62 h]; Surveyor Helper [14.62 h]; Loader [15 h]; Water Tanker [15 h]; Dump Truck [15 h]; Plate Compactor [15 h]; Single Catch basin [2.23] |
| B6.33 05 40.01.890_R | Excavation, Compaction & Vapour Barrier(Rem) | 3d | 2026-10-07 | 2026-10-10 | B6.33 05 40.01.410_R SS, B6.33 05 40.01.890 | Labor [11.69 h]; Foreman [5.85 h]; Operator [11.69 h]; Surveyor [5.85 h]; Surveyor Helper [5.85 h]; Excavator (With Bucket) [6 h]; Water Tanker [6 h]; Dump Truck [6 h]; Roller Compactor [6 h]; Double Catch basin [0.22] |
| B6.33 05 40.01.900_R | Blinding Conc.(Rem) | 3d | 2026-10-07 | 2026-10-10 | B6.33 05 40.01.890_R SS, B6.33 05 40.01.900 | Labor [11.69 h]; Foreman [5.85 h]; Laboratory Officer [5.85 h]; Carpenter [5.85 h]; Steelfixer [5.85 h]; Mason [5.85 h]; Double Catch basin [0.15] |
| B6.33 05 40.01.910_R | Catch Basin Installation(Rem) | 2.12d | 2026-10-08 | 2026-10-11 | B6.33 05 40.01.900_R SS, B6.33 05 40.01.910, B6.33 05 40.01.510_R | Labor [17.54 h]; Foreman [8.77 h]; Carpenter [8.77 h]; Steelfixer [8.77 h]; Mason [8.77 h]; Operator [17.54 h]; Surveyor [8.77 h]; Surveyor Helper [8.77 h]; Boom Truck [9 h]; Double Catch basin [0.68] |
| B6.33 42 11.35-18_R | Catch Basin Opening Prep.(Rem) | 3d | 2026-09-20 A | 2026-09-22 A | B6.33 05 40.01.910_R SS, B6.33 42 11.35-18 | Labor [13.5 h]; Foreman [6.75 h]; Plumber Helper [6.75 h]; Plumber [6.75 h]; less than 1.5 [20.18] |
| B6.33 42 11.36-181_R | Catch Basin Opening Prep.(Rem) | 3d | 2026-09-20 A | 2026-09-22 A | B6.33 42 11.35-18_R SS, B6.33 42 11.36-181, B6.33 05 40.01.950_R | Labor [13.5 h]; Foreman [6.75 h]; Plumber Helper [6.75 h]; Plumber [6.75 h]; less than 1.5 [20.18] |
| B1.2.32 11 13.01.13_R | Subgrade(Rem) | 2d | 2026-10-10 | 2026-10-11 | B1.2.31 23 23.01.13, B1.2.32 11 13.01.13, B1.2.32 11 13.01.12_R | Subgrade [167.52]; Labor [5.61 h]; Foreman [2.81 h]; Operator [5.61 h]; Surveyor [2.81 h]; Surveyor Helper [2.81 h]; Grader [2.88 h]; Loader [2.88 h]; Water Tanker [2.88 h]; Dump Truck [2.88 h]; Plate Compactor [2.88 h]; Roller Compactor [2.88 h] |
| B1.2.32 11 23.01.13_R | Aggregate Base Course(Rem) | 1.04d | 2026-10-10 | 2026-10-11 | B1.2.32 11 13.01.13_R SS, B1.2.32 11 23.01.13 | Aggregate base course [322.64]; Labor [16.22 h]; Foreman [8.11 h]; Operator [16.22 h]; Surveyor [8.11 h]; Surveyor Helper [8.11 h]; Grader [8.32 h]; Loader [8.32 h]; Water Tanker [8.32 h]; Dump Truck [8.32 h]; Plate Compactor [8.32 h]; Roller Compactor [8.32 h] |
| B1.2.32 11 26.01.13_R | Bituminous Base Course including Prime Coat (MC1) and tack coat (RC2)(Rem) | 1.14d | 2026-10-10 | 2026-10-11 | B1.2.32 11 23.01.13_R SS, B1.2.32 11 26.01.13 | Bituminous base course(Grading I - Class A) [242.32]; Labor [17.78 h]; Foreman [8.89 h]; Operator [17.78 h]; Surveyor [8.89 h]; Surveyor Helper [8.89 h]; Dump Truck [9.12 h]; Roller Compactor [9.12 h]; MC1/RC2 Sprayer [9.12 h] |
| B5.33 31 00.01.02.28_R | Pipe Laying(Rem) | 2.69d | 2026-09-22 A | 2026-10-10 | B5.33 31 00.01.02.24, DMM2-Proc-Delv-4038_R SS, B5.33 31 00.01.02.28 | Labor [41.86 h]; Foreman [20.93 h]; Plumber Helper [20.93 h]; Plumber [20.93 h]; Operator [20.93 h]; Surveyor [20.93 h]; Surveyor Helper [20.93 h]; Mobile Crane [21.48 h]; Sew Dia. 150mm Depth: 1.51m - 2.5m [31.56] |
| B5.33 31 00.01.02.32_R | Embedment & Test(Rem) | 3.67d | 2026-09-26 A | 2026-10-11 | B5.33 31 00.01.02.28_R FF, B5.33 31 00.01.02.32 | Labor [55.87 h]; Foreman [27.94 h]; Plumber Helper [27.94 h]; Plumber [27.94 h]; Operator [55.87 h]; Surveyor [27.94 h]; Surveyor Helper [27.94 h]; Loader [28.67 h]; Water Tanker [28.67 h]; Dump Truck [28.67 h]; Plate Compactor [28.67 h]; Roller Compactor [28.67 h]; Sew Dia. 150mm Depth: 1.51m - 2.5m [14.04] |
| B5.33 31 00.01.02.36_R | Backfilling & Warrning Tape(Rem) | 4.56d | 2026-09-28 A | 2026-10-12 | B5.33 31 00.01.02.32_R FF, B5.33 31 00.01.02.36 | Labor [69.84 h]; Foreman [34.92 h]; Operator [139.68 h]; Surveyor [34.92 h]; Surveyor Helper [34.92 h]; Loader [35.83 h]; Water Tanker [35.83 h]; Dump Truck [35.83 h]; Plate Compactor [35.83 h]; Roller Compactor [35.83 h]; Sew Dia. 150mm Depth: 1.51m - 2.5m [7.03] |
| B5.33 31 00.01.02.34_R | Embedment & Test(Rem) | 3.67d | 2026-09-20 A | 2026-10-11 | B5.33 31 00.01.02.30, B5.33 31 00.01.02.34 | Labor [55.87 h]; Foreman [27.94 h]; Plumber Helper [27.94 h]; Plumber [27.94 h]; Operator [55.87 h]; Surveyor [27.94 h]; Surveyor Helper [27.94 h]; Loader [28.67 h]; Water Tanker [28.67 h]; Dump Truck [28.67 h]; Plate Compactor [28.67 h]; Roller Compactor [28.67 h]; Sew Dia. 150mm Depth: 2.51m - 3.5m [2.52] |
| B5.33 31 00.01.02.38_R | Backfilling & Warrning Tape(Rem) | 10d | 2026-09-22 A | 2026-10-17 | DMM2-Proc-Delv-4058 FF, B5.33 31 00.01.02.34_R FF, B5.33 31 00.01.02.36_R SS, B5.33 31 00.01.02.38, B5.33 31 00.01.29_R, B5.33 31 00.01.39_R, B6.33 05 39.01.717_R | Labor [69.84 h]; Foreman [34.92 h]; Operator [139.68 h]; Surveyor [34.92 h]; Surveyor Helper [34.92 h]; Loader [35.83 h]; Water Tanker [35.83 h]; Dump Truck [35.83 h]; Plate Compactor [35.83 h]; Roller Compactor [35.83 h]; Sew Dia. 150mm Depth: 2.51m - 3.5m [1.26] |
| B6.33 05 39.01.747_R | Manhole Installation(Rem) | 1.52d | 2026-09-26 A | 2026-10-07 | B6.33 05 39.01.737, B6.33 05 39.01.747 | Labor [17.08 h]; Operator [17.08 h]; Surveyor [8.54 h]; Surveyor Helper [8.54 h]; Boom Truck [8.76 h]; Mobile Crane [8.76 h]; MH depth 1.51 - 2.5m [1.09] |
| B6.33 05 39.01.757_R | Test, Internal Finishing, Benching & Cover(Rem) | 2.56d | 2026-09-28 A | 2026-10-08 | B6.33 05 39.01.747_R SS, B6.33 05 39.01.757 | Labor [34.16 h]; Foreman [17.08 h]; Plumber Helper [17.08 h]; Plumber [17.08 h]; Mason [17.08 h]; MH depth 1.51 - 2.5m [0.3] |
| B6.33 05 39.01.767_R | Backfilling(Rem) | 10d | 2026-10-04 A | 2026-11-08 | B6.33 05 39.01.4317 FF, B3.33 14 19.01.83 FF, B5.33 31 23.01-1.28 FF, B6.33 05 39.01.757_R SS, B5.33 31 00.01.02.38_R, B6.33 05 39.01.767 | Labor [68.32 h]; Foreman [34.16 h]; Operator [68.32 h]; Surveyor [34.16 h]; Surveyor Helper [34.16 h]; Loader [35.05 h]; Water Tanker [35.05 h]; Dump Truck [35.05 h]; Plate Compactor [35.05 h]; MH depth 1.51 - 2.5m [0.48] |
| B6.33 05 39.01.797_R | Manhole Installation(Rem) | 1.52d | 2026-09-21 A | 2026-10-07 | B6.33 05 39.01.787, B6.33 05 39.01.797 | Labor [17.08 h]; Operator [17.08 h]; Surveyor [8.54 h]; Surveyor Helper [8.54 h]; Boom Truck [8.76 h]; Mobile Crane [8.76 h]; MH depth 2.51 - 3.5m [1.36] |
| B6.33 05 39.01.807_R | Test, Internal Finishing, Benching & Cover(Rem) | 2.56d | 2026-09-24 A | 2026-10-08 | B6.33 05 39.01.797_R SS, B6.33 05 39.01.807 | Labor [34.16 h]; Foreman [17.08 h]; Plumber Helper [17.08 h]; Plumber [17.08 h]; Mason [17.08 h]; MH depth 2.51 - 3.5m [0.3] |
| B6.33 05 39.01.817_R | Backfilling(Rem) | 10d | 2026-10-01 A | 2026-11-08 | B5.33 05 63.015 FF, B6.33 05 39.01.807_R SS, B6.33 05 39.01.767_R FF, B6.33 05 39.01.817 | Labor [51.24 h]; Foreman [25.62 h]; Operator [51.24 h]; Surveyor [25.62 h]; Surveyor Helper [25.62 h]; Loader [26.29 h]; Water Tanker [26.29 h]; Dump Truck [26.29 h]; Plate Compactor [26.29 h]; MH depth 2.51 - 3.5m [0.61] |
| B6. 33 42 13.46_R | Box Reinforced Conc. Slab(Rem) | 3d | 2026-09-24 A | 2026-10-07 | B6. 33 42 13.36, B6. 33 42 13.46 | Labor [12.47 h]; Laboratory Officer [6.24 h]; Carpenter [6.24 h]; Steelfixer [6.24 h]; Mason [6.24 h]; Operator [12.47 h]; Surveyor [6.24 h]; Surveyor Helper [6.24 h]; Mobile Crane [6.4 h]; Concrete for box culvert [17.89]; Steel Reinforcement for box culverts [2.98] |
| B6. 33 42 13.56_R | Curing & Water Proofing(Rem) | 2.5d | 2026-09-28 A | 2026-10-07 | B6. 33 42 13.46_R SS, B6. 33 42 13.56 | Labor [23.39 h]; Mason [11.69 h]; Concrete for box culvert [27.95]; Steel Reinforcement for box culverts [9.3] |
| B6.33 05 63.012_R | Cocrete Cast for Chamber & Curing(Rem) | 3d | 2026-10-03 A | 2026-10-04 A | B6. 33 42 13.26, B6.33 05 63.012, DMM2-Proc-Delv-7274_R, DMM2-Proc-Delv-7414 | Labor [11.69 h]; Mason [5.85 h]; Operator [11.69 h]; Size 3.0 x 3.0 m, depth 1.51-2.5 m [0.14] |
| B6.33 05 63.021_R | Shuttering, Steel Fixing, CJ & Water Stop(Rem) | 2.5d | 2026-09-21 A | 2026-09-26 A | B6.33 05 63.011, B6. 33 42 13.26, B6.33 05 63.021 | Labor [23.39 h]; Carpenter [11.69 h]; Steelfixer [11.69 h]; Operator [23.39 h]; Boom Truck [12 h]; Mobile Crane [12 h]; Size 3.0 x 1.5 m, depth 1.51-2.5 m [0.04] |
| B6.33 05 63.022_R | Cocrete Cast for Chamber & Curing(Rem) | 2.5d | 2026-10-01 A | 2026-10-03 A | B6.33 05 63.012_R SS, B6.33 05 63.022 | Labor [23.39 h]; Mason [11.69 h]; Operator [23.39 h]; Size 3.0 x 1.5 m, depth 1.51-2.5 m [0.14] |
| B6.33 05 63.031_R | Shuttering, Steel Fixing, CJ & Water Stop(Rem) | 2.5d | 2026-09-24 A | 2026-10-01 A | B6. 33 42 13.26, B6.33 05 63.021_R SS, B6.33 05 63.031 | Labor [23.39 h]; Carpenter [11.69 h]; Steelfixer [11.69 h]; Operator [23.39 h]; Boom Truck [12 h]; Mobile Crane [12 h]; Size 2.5 x 1.5 m, depth 1.51-2.5 m [0.04] |
| B6.33 05 63.032_R | Cocrete Cast for Chamber & Curing(Rem) | 2d | 2026-10-03 A | 2026-10-04 A | B6.33 05 63.022_R SS, B6.33 05 63.032 | Labor [23.39 h]; Mason [11.69 h]; Operator [23.39 h]; Size 2.5 x 1.5 m, depth 1.51-2.5 m [0.14] |
| B6.33 05 63.042_R | Cocrete Cast for Chamber & Curing(Rem) | 2d | 2026-09-27 A | 2026-09-29 A | B6. 33 42 13.26, B1.2.32 11 23.01.18, B6.33 05 63.032_R SS, B6.33 05 63.031_R SS, B6.33 05 63.042 | Labor [23.39 h]; Mason [11.69 h]; Operator [23.39 h]; Size 2.0 x 1.5 m, depth 2.51-3.5 m [0.41] |
| B3.33 14 13-91_R | Excavation(Rem) | 3d | 2026-10-07 | 2026-10-10 | B3.33 14 13.01.0103, B3.33 14 13-91 | Labor [8.73 h]; Foreman [4.37 h]; Operator [8.73 h]; Surveyor [4.37 h]; Surveyor Helper [4.37 h]; Excavator (With Bucket) [4.48 h]; Water Tanker [4.48 h]; Dump Truck [4.48 h]; Plate Compactor [4.48 h]; Depth: 0.0m - 1.5m [43.61] |
| B3.33 14 13-95_R | Sand Bedding(Rem) | 3d | 2026-10-07 | 2026-10-10 | B3.33 14 13-91_R FF, B3.33 14 13-95 | Labor [8.73 h]; Foreman [4.37 h]; Operator [17.46 h]; Surveyor [4.37 h]; Surveyor Helper [4.37 h]; Loader [4.48 h]; Water Tanker [4.48 h]; Dump Truck [4.48 h]; Plate Compactor [4.48 h]; Depth: 0.0m - 1.5m [10.9] |
| B3.33 14 13-99_R | Pipe Laying(Rem) | 3d | 2026-10-07 | 2026-10-10 | B3.33 14 13-95_R FF, B3.33 14 13-99 | Labor [8.73 h]; Foreman [4.37 h]; Plumber Helper [4.37 h]; Plumber [4.37 h]; Operator [4.37 h]; Surveyor [4.37 h]; Surveyor Helper [4.37 h]; Mobile Crane [4.48 h]; Depth: 0.0m - 1.5m [98.12] |
| B3.33 14 13-107_R | Backfilling & Warrning Tape(Rem) | 2.4d | 2026-10-07 | 2026-10-10 | B3.33 14 13-103_R FF, B3.33 14 13-107 | Labor [21.83 h]; Foreman [10.91 h]; Operator [43.66 h]; Surveyor [10.91 h]; Surveyor Helper [10.91 h]; Loader [11.2 h]; Water Tanker [11.2 h]; Dump Truck [11.2 h]; Plate Compactor [11.2 h]; Roller Compactor [11.2 h]; Depth: 0.0m - 1.5m [21.8] |
| B3.33 14 13-103_R | Embedment & Test(Rem) | 2.12d | 2026-10-07 | 2026-10-10 | B3.33 14 13-99_R FF, B3.33 14 13-103 | Labor [17.46 h]; Foreman [8.73 h]; Plumber Helper [8.73 h]; Plumber [8.73 h]; Operator [17.46 h]; Surveyor [8.73 h]; Surveyor Helper [8.73 h]; Loader [8.96 h]; Water Tanker [8.96 h]; Dump Truck [8.96 h]; Plate Compactor [8.96 h]; Roller Compactor [8.96 h]; Depth: 0.0m - 1.5m [43.61] |
| B3.33 14 13-101_R | Pipe Laying(Rem) | 3d | 2026-10-07 | 2026-10-10 | B3.33 14 13-97_R FF, B3.33 14 13-101 | Labor [8.73 h]; Foreman [4.37 h]; Plumber Helper [4.37 h]; Plumber [4.37 h]; Operator [4.37 h]; Surveyor [4.37 h]; Surveyor Helper [4.37 h]; Mobile Crane [4.48 h]; Depth: 1.51m - 2.5m |
| B3.33 14 13-93_R | Excavation(Rem) | 3d | 2026-10-07 | 2026-10-10 | B3.33 14 13-91_R SS, B3.33 14 13-93 | Labor [8.73 h]; Foreman [4.37 h]; Operator [8.73 h]; Surveyor [4.37 h]; Surveyor Helper [4.37 h]; Excavator (With Bucket) [4.48 h]; Water Tanker [4.48 h]; Dump Truck [4.48 h]; Plate Compactor [4.48 h]; Depth: 1.51m - 2.5m |
| B3.33 14 13-97_R | Sand Bedding(Rem) | 3d | 2026-10-07 | 2026-10-10 | B3.33 14 13-93_R FF, B3.33 14 13-97 | Labor [8.73 h]; Foreman [4.37 h]; Operator [17.46 h]; Surveyor [4.37 h]; Surveyor Helper [4.37 h]; Loader [4.48 h]; Water Tanker [4.48 h]; Dump Truck [4.48 h]; Plate Compactor [4.48 h]; Depth: 1.51m - 2.5m |
| B3.33 14 13-105_R | Embedment & Test(Rem) | 2.12d | 2026-10-07 | 2026-10-10 | B3.33 14 13-101_R FF, B3.33 14 13-105 | Labor [17.46 h]; Foreman [8.73 h]; Plumber Helper [8.73 h]; Plumber [8.73 h]; Operator [17.46 h]; Surveyor [8.73 h]; Surveyor Helper [8.73 h]; Loader [8.96 h]; Water Tanker [8.96 h]; Dump Truck [8.96 h]; Plate Compactor [8.96 h]; Roller Compactor [8.96 h]; Depth: 1.51m - 2.5m |
| B3.33 14 13-109_R | Backfilling & Warrning Tape(Rem) | 2.4d | 2026-10-07 | 2026-10-11 | B3.33 14 13-105_R SS, B3.33 14 13-109 | Labor [21.83 h]; Foreman [10.91 h]; Operator [43.66 h]; Surveyor [10.91 h]; Surveyor Helper [10.91 h]; Loader [11.2 h]; Water Tanker [11.2 h]; Dump Truck [11.2 h]; Plate Compactor [11.2 h]; Roller Compactor [11.2 h]; Depth: 1.51m - 2.5m |
| B2.33 71 16.71_R | Excavation(Rem) | 2d | 2026-10-07 | 2026-10-10 | B3.33 14 13-109_R SS, B3.33 14 13-107_R SS, B2.33 71 16.71 | Labor [8 h]; Foreman [4 h]; Operator [8 h]; Surveyor [4 h]; Surveyor Helper [4 h]; Excavator (With Bucket) [4.1 h]; Dump Truck [4.1 h]; Lighting poles with 1 arm, height of ( 10) meters [1.69] |
| B2.33 71 16.72_R | PC & RC Foundation(Rem) | 2d | 2026-10-07 | 2026-10-10 | B2.33 71 16.71_R SS, B2.33 71 16.72 | Labor [15.99 h]; Foreman [8 h]; Laboratory Officer [8 h]; Carpenter [8 h]; Steelfixer [8 h]; Mason [8 h]; Lighting poles with 1 arm, height of ( 10) meters [1.69] |
| B2.33 71 16.73_R | Lighting Poles Installation Incl power box, Cables(Rem) | 2d | 2026-10-07 | 2026-10-10 | B2.33 71 16.72_R SS, B2.33 71 16.73 | Labor [19.99 h]; Operator [19.99 h]; Mobile Crane [10.26 h]; Electrician [9.99 h]; Lighting poles with 1 arm, height of ( 10) meters [3.38] |
| B2.33 71 16.75_R | Excavation(Rem) | 2d | 2026-10-17 | 2026-10-18 | B2.33 71 00 02 154 FF, B2.33 71 16.71_R SS, B2.33 71 16.75 | Labor [8 h]; Foreman [4 h]; Operator [8 h]; Surveyor [4 h]; Surveyor Helper [4 h]; Excavator (With Bucket) [4.1 h]; Dump Truck [4.1 h]; Lighting poles with 2 arms, height of ( 10) meters [0.51] |
| B2.33 71 16.76_R | PC & RC Foundation(Rem) | 2d | 2026-10-17 | 2026-10-18 | B2.33 71 16.75_R SS, B2.33 71 16.76 | Labor [15.99 h]; Foreman [8 h]; Laboratory Officer [8 h]; Carpenter [8 h]; Steelfixer [8 h]; Mason [8 h]; Lighting poles with 2 arms, height of ( 10) meters [0.51] |
| B2.33 71 16.77_R | Lighting Poles Installation Incl power box, Cables(Rem) | 2d | 2026-10-17 | 2026-10-18 | B2.33 71 16.76_R SS, B2.33 71 16.77 | Labor [19.99 h]; Operator [19.99 h]; Mobile Crane [10.26 h]; Electrician [9.99 h]; Lighting poles with 2 arms, height of ( 10) meters [1.03] |
| B2.33 71 16.116_R | Excavation(Rem) | 2d | 2026-11-03 | 2026-11-04 | B2.33 71 19 182 FF, B2.33 71 16.78 FF, B2.33 71 16.75_R SS, B2.33 71 16.116 | Labor [11.99 h]; Foreman [6 h]; Operator [11.99 h]; Surveyor [6 h]; Surveyor Helper [6 h]; Excavator (With Bucket) [6.15 h]; Dump Truck [6.15 h]; Lighting poles with 1 arm, height of ( 12 ) meters [1.38] |
| B2.33 71 16.126_R | PC & RC Foundation(Rem) | 2d | 2026-11-03 | 2026-11-04 | B2.33 71 16.116_R SS, B2.33 71 16.126 | Labor [19.99 h]; Foreman [9.99 h]; Laboratory Officer [9.99 h]; Carpenter [9.99 h]; Steelfixer [9.99 h]; Mason [9.99 h]; Lighting poles with 1 arm, height of ( 12 ) meters [1.38] |
| B2.33 71 16.136_R | Lighting Poles Installation Incl power box, Cables(Rem) | 2d | 2026-11-03 | 2026-11-04 | B2.33 71 16.126_R SS, B2.33 71 16.136 | Labor [23.99 h]; Operator [23.99 h]; Mobile Crane [12.31 h]; Electrician [11.99 h]; Lighting poles with 1 arm, height of ( 12 ) meters [2.77] |
| B1.2.32 11 13.01.12_R | Subgrade(Rem) | 2d | 2026-10-07 | 2026-10-08 | B1.2.31 23 23.01.12, B1.2.32 11 13.01.12 | Subgrade [333.92]; Labor [10.91 h]; Foreman [5.46 h]; Operator [10.91 h]; Surveyor [5.46 h]; Surveyor Helper [5.46 h]; Grader [5.6 h]; Loader [5.6 h]; Water Tanker [5.6 h]; Dump Truck [5.6 h]; Plate Compactor [5.6 h]; Roller Compactor [5.6 h] |
| B1.2.32 11 26.01.12_R | Bituminous Base Course including Prime Coat (MC1) and tack coat (RC2)(Rem) | 2d | 2026-10-07 | 2026-10-08 | B1.2.32 11 23.01.12, B1.2.32 11 26.01.12 | Bituminous base course(Grading I - Class A) [113.31]; Labor [8.11 h]; Foreman [4.05 h]; Operator [8.11 h]; Surveyor [4.05 h]; Surveyor Helper [4.05 h]; Dump Truck [4.16 h]; Roller Compactor [4.16 h]; MC1/RC2 Sprayer [4.16 h] |
| B7.32 31 26.01-1_R | Earthwork(Rem) | 5d | 2026-11-19 | 2026-11-24 | B2.31 23 00.341 FF, B7.32 31 26.01-1 | Labor [46.78 h]; Foreman [23.39 h]; Operator [46.78 h]; Surveyor [23.39 h]; Surveyor Helper [23.39 h]; Excavator (With Bucket) [24 h]; Water Tanker [24 h]; Dump Truck [24 h]; Plate Compactor [24 h]; Steel fence (ZATCA HCIS) [116.81] |
| B7.32 31 26.01-3_R | Foundation(Rem) | 6d | 2026-11-19 | 2026-11-25 | B7.32 31 26.01-1_R SS, B7.32 31 26.01-3 | Labor [62.37 h]; Laboratory Officer [31.18 h]; Carpenter [31.18 h]; Steelfixer [31.18 h]; Mason [31.18 h]; Surveyor [31.18 h]; Surveyor Helper [31.18 h]; Steel fence (ZATCA HCIS) [116.81] |
| B5.1.31 23 16.01.9_R | Footings for wet well & Chambers(Rem) | 3d | 2026-10-07 | 2026-10-10 | B5.1.31 23 16.01.7, B5.1.31 23 16.01.9 | Labor [65.49 h]; Laboratory Officer [32.74 h]; Carpenter [32.74 h]; Steelfixer [32.74 h]; Mason [32.74 h]; Footings for wet well & valve chamber & screening chamber & control room [19.03] |
| B6.33 05 39.01.1407_R | Test, Internal Finishing, Benching & Cover(Rem) | 2.18d | 2026-09-20 A | 2026-10-08 | B6.33 05 39.01.1397, B6.33 05 39.01.1407, B5.33 31 00.01.0238_R | Labor [33.93 h]; Foreman [16.96 h]; Plumber Helper [16.96 h]; Plumber [16.96 h]; Mason [16.96 h]; MH depth 0 - 1.5m [0.15] |
| B6.33 05 39.01.1447_R | Manhole Installation(Rem) | 1.14d | 2026-09-22 A | 2026-10-07 | B6.33 05 39.01.1437, B6.33 05 39.01.1447 | Labor [17.71 h]; Operator [17.71 h]; Surveyor [8.86 h]; Surveyor Helper [8.86 h]; Boom Truck [9.09 h]; Mobile Crane [9.09 h]; MH depth 1.51 - 2.5m [1.13] |
| B6.33 05 39.01.1457_R | Test, Internal Finishing, Benching & Cover(Rem) | 2.18d | 2026-09-26 A | 2026-10-08 | B6.33 05 39.01.1447_R SS, B6.33 05 39.01.1457 | Labor [33.93 h]; Foreman [16.96 h]; Plumber Helper [16.96 h]; Plumber [16.96 h]; Mason [16.96 h]; MH depth 1.51 - 2.5m [0.3] |
| B6.33 05 39.01.1507_R | Test, Internal Finishing, Benching & Cover(Rem) | 2.18d | 2026-09-19 A | 2026-10-08 | B6.33 05 39.01.1497_R SS, B6.33 05 39.01.1507, B6.33 05 39.01.1457_R | Labor [33.93 h]; Foreman [16.96 h]; Plumber Helper [16.96 h]; Plumber [16.96 h]; Mason [16.96 h]; MH depth 2.51 - 3.5m [0.3] |
| B6.33 05 39.01.1497_R | Manhole Installation(Rem) | 1.14d | 2026-09-21 A | 2026-10-07 | B6.33 05 39.01.1487, B6.33 05 39.01.1497 | Labor [17.71 h]; Operator [17.71 h]; Surveyor [8.86 h]; Surveyor Helper [8.86 h]; Boom Truck [9.09 h]; Mobile Crane [9.09 h]; MH depth 2.51 - 3.5m [1.4] |
| B6.33 05 39.01.1557_R | Test, Internal Finishing, Benching & Cover(Rem) | 2.18d | 2026-09-21 A | 2026-10-08 | B6.33 05 39.01.1547_R SS, B6.33 05 39.01.1557, B6.33 05 39.01.1507_R, B5.33 31 00.01.0240_R | Labor [33.93 h]; Foreman [16.96 h]; Plumber Helper [16.96 h]; Plumber [16.96 h]; Mason [16.96 h]; MH depth 3.51 -4.5m [0.56] |
| B6.33 05 39.01.1547_R | Manhole Installation(Rem) | 1.14d | 2026-09-24 A | 2026-10-07 | B6.33 05 39.01.1537, B6.33 05 39.01.1547 | Labor [17.71 h]; Operator [17.71 h]; Surveyor [8.86 h]; Surveyor Helper [8.86 h]; Boom Truck [9.09 h]; Mobile Crane [9.09 h]; MH depth 3.51 -4.5m [2.65] |
| B6.33 05 39.01.1597_R | Manhole Installation(Rem) | 1.14d | 2026-09-20 A | 2026-10-07 | B6.33 05 39.01.1587, B6.33 05 39.01.1597 | Labor [17.71 h]; Operator [17.71 h]; Surveyor [8.86 h]; Surveyor Helper [8.86 h]; Boom Truck [9.09 h]; Mobile Crane [9.09 h]; MH depth 3.51- 4.5 m with back drop [0.51] |
| B6.33 05 39.01.1607_R | Test, Internal Finishing, Benching & Cover(Rem) | 2.18d | 2026-09-24 A | 2026-10-08 | B6.33 05 39.01.1597_R SS, B6.33 05 39.01.1607, B6.33 05 39.01.1557_R, B6.33 05 39.01.1407_R | Labor [33.93 h]; Foreman [16.96 h]; Plumber Helper [16.96 h]; Plumber [16.96 h]; Mason [16.96 h]; MH depth 3.51- 4.5 m with back drop [0.11] |
| B6.33 42 11.05-1.47_R | Embedment & Test(Rem) | 2.35d | 2026-09-16 A | 2026-10-07 | B6.33 42 11.05-1.33_R FF, B6.33 42 11.05-1.47 | Labor [18.99 h]; Foreman [9.5 h]; Plumber Helper [9.5 h]; Plumber [9.5 h]; Operator [18.99 h]; Surveyor [9.5 h]; Surveyor Helper [9.5 h]; Loader [9.74 h]; Water Tanker [9.74 h]; Dump Truck [9.74 h]; Plate Compactor [9.74 h]; Roller Compactor [9.74 h]; 1.51m - 2.5m [0.79] |
| B6.33 42 11.05-1.61_R | Backfilling & Warrning Tape(Rem) | 2.69d | 2026-09-16 A | 2026-10-07 | B6.33 42 11.01-1028, B6.33 42 11.05-1.47_R SS, B6.33 42 11.05-1.61 | Labor [23.74 h]; Foreman [11.87 h]; Operator [47.48 h]; Surveyor [11.87 h]; Surveyor Helper [11.87 h]; Loader [12.18 h]; Water Tanker [12.18 h]; Dump Truck [12.18 h]; Plate Compactor [12.18 h]; Roller Compactor [12.18 h]; 1.51m - 2.5m [1.45] |
| B6.33 42 11.05-1.5_R | Excavation(Rem) | 3d | 2026-09-22 A | 2026-10-07 | B6.33 42 11.05-1.3, B6.33 42 11.05-1.5 | Labor [9.5 h]; Foreman [4.75 h]; Operator [9.5 h]; Surveyor [4.75 h]; Surveyor Helper [4.75 h]; Excavator (With Bucket) [4.87 h]; Water Tanker [4.87 h]; Dump Truck [4.87 h]; Plate Compactor [4.87 h]; 1.51m - 2.5m [2.9] |
| B6.33 42 11.05-1.33_R | Pipe Laying(Rem) | 3d | 2026-09-24 A | 2026-10-07 | B6.33 42 11.05-1.19_R FF, B6.33 42 11.05-1.33 | Labor [9.5 h]; Foreman [4.75 h]; Plumber Helper [4.75 h]; Plumber [4.75 h]; Operator [4.75 h]; Surveyor [4.75 h]; Surveyor Helper [4.75 h]; Mobile Crane [4.87 h]; 1.51m - 2.5m [6.59] |
| B6.33 42 11.05-1.19_R | Sand Bedding(Rem) | 3d | 2026-09-26 A | 2026-10-07 | B6.33 42 11.05-1.5_R FF, B6.33 42 11.05-1.19 | Labor [9.5 h]; Foreman [4.75 h]; Operator [18.99 h]; Surveyor [4.75 h]; Surveyor Helper [4.75 h]; Loader [4.87 h]; Water Tanker [4.87 h]; Dump Truck [4.87 h]; Plate Compactor [4.87 h]; 1.51m - 2.5m [2.9] |
| B6.33 42 11.05-1.7_R | Excavation(Rem) | 3d | 2026-09-20 A | 2026-10-07 | B6.33 42 11.05-1.5_R SS, B6.33 42 11.05-1.7 | Labor [9.5 h]; Foreman [4.75 h]; Operator [9.5 h]; Surveyor [4.75 h]; Surveyor Helper [4.75 h]; Excavator (With Bucket) [4.87 h]; Water Tanker [4.87 h]; Dump Truck [4.87 h]; Plate Compactor [4.87 h]; 1.51m - 2.5m [4.01] |
| B6.33 42 11.05-1.21_R | Sand Bedding(Rem) | 3d | 2026-09-24 A | 2026-10-07 | B6.33 42 11.05-1.7_R FF, B6.33 42 11.05-1.21 | Labor [9.5 h]; Foreman [4.75 h]; Operator [18.99 h]; Surveyor [4.75 h]; Surveyor Helper [4.75 h]; Loader [4.87 h]; Water Tanker [4.87 h]; Dump Truck [4.87 h]; Plate Compactor [4.87 h]; 1.51m - 2.5m [1] |
| B6.33 42 11.05-1.35_R | Pipe Laying(Rem) | 3d | 2026-09-28 A | 2026-10-07 | B6.33 42 11.05-1.21_R FF, B6.33 42 11.05-1.35 | Labor [9.5 h]; Foreman [4.75 h]; Plumber Helper [4.75 h]; Plumber [4.75 h]; Operator [4.75 h]; Surveyor [4.75 h]; Surveyor Helper [4.75 h]; Mobile Crane [4.87 h]; 1.51m - 2.5m [9.02] |
| B6.33 42 11.05-1.49_R | Embedment & Test(Rem) | 2.35d | 2026-10-01 A | 2026-10-07 | B6.33 42 11.05-1.35_R FF, B6.33 42 11.05-1.49 | Labor [18.99 h]; Foreman [9.5 h]; Plumber Helper [9.5 h]; Plumber [9.5 h]; Operator [18.99 h]; Surveyor [9.5 h]; Surveyor Helper [9.5 h]; Loader [9.74 h]; Water Tanker [9.74 h]; Dump Truck [9.74 h]; Plate Compactor [9.74 h]; Roller Compactor [9.74 h]; 1.51m - 2.5m [4.01] |
| B6.33 42 11.05-1.63_R | Backfilling & Warrning Tape(Rem) | 2.69d | 2026-10-03 A | 2026-10-07 | B6.33 42 11.05-1.59, B6.33 42 11.05-1.49_R SS, B6.33 42 11.05-1.63 | Labor [23.74 h]; Foreman [11.87 h]; Operator [47.48 h]; Surveyor [11.87 h]; Surveyor Helper [11.87 h]; Loader [12.18 h]; Water Tanker [12.18 h]; Dump Truck [12.18 h]; Plate Compactor [12.18 h]; Roller Compactor [12.18 h]; 1.51m - 2.5m [2.01] |
| B6.33 42 11.05-1.27_R | Sand Bedding(Rem) | 3d | 2026-09-10 A | 2026-10-07 | B6.33 42 11.05-1.13, B6.33 42 11.05-1.27 | Labor [9.5 h]; Foreman [4.75 h]; Operator [18.99 h]; Surveyor [4.75 h]; Surveyor Helper [4.75 h]; Loader [4.87 h]; Water Tanker [4.87 h]; Dump Truck [4.87 h]; Plate Compactor [4.87 h]; 2.51m - 3.5m [3.11] |
| B6.33 42 11.05-1.69_R | Backfilling & Warrning Tape(Rem) | 2.69d | 2026-09-16 A | 2026-10-07 | B6.33 42 11.34-1.19, B6.33 42 11.05-1.65, B6.33 42 11.05-1.55_R FF, B6.33 05 40.01.280_R SS, B6.33 42 11.05-1.69 | Labor [23.74 h]; Foreman [11.87 h]; Operator [47.48 h]; Surveyor [11.87 h]; Surveyor Helper [11.87 h]; Loader [12.18 h]; Water Tanker [12.18 h]; Dump Truck [12.18 h]; Plate Compactor [12.18 h]; Roller Compactor [12.18 h]; 2.51m - 3.5m [6.04] |
| B6.33 42 11.05-1.55_R | Embedment & Test(Rem) | 2.35d | 2026-09-16 A | 2026-10-07 | B6.33 42 11.05-1.41_R FF, B6.33 42 11.05-1.55 | Labor [18.99 h]; Foreman [9.5 h]; Plumber Helper [9.5 h]; Plumber [9.5 h]; Operator [18.99 h]; Surveyor [9.5 h]; Surveyor Helper [9.5 h]; Loader [9.74 h]; Water Tanker [9.74 h]; Dump Truck [9.74 h]; Plate Compactor [9.74 h]; Roller Compactor [9.74 h]; 2.51m - 3.5m [12.25] |
| B6.33 42 11.05-1.41_R | Pipe Laying(Rem) | 3d | 2026-09-24 A | 2026-10-07 | B6.33 42 11.05-1.27_R FF, B6.33 42 11.05-1.41 | Labor [9.5 h]; Foreman [4.75 h]; Plumber Helper [4.75 h]; Plumber [4.75 h]; Operator [4.75 h]; Surveyor [4.75 h]; Surveyor Helper [4.75 h]; Mobile Crane [4.87 h]; 2.51m - 3.5m [27.62] |
| B6.33 05 39.01.3807_R | Test, Internal Finishing, Benching & Cover(Rem) | 3d | 2026-09-26 A | 2026-09-28 A | B6.33 05 39.01.3797, B6.33 05 39.01.3807 | Labor [1.87 h]; Foreman [0.94 h]; Plumber Helper [0.94 h]; Plumber [0.94 h]; Mason [0.94 h]; MH depth 1.50 - 2.5m [0.03] |
| B6.33 05 39.01.3897_R | Manhole Installation(Rem) | 3d | 2026-09-10 A | 2026-09-19 A | B6.33 05 39.01.3887, B6.33 05 39.01.3897 | Labor [0.94 h]; Operator [0.94 h]; Surveyor [0.47 h]; Surveyor Helper [0.47 h]; Boom Truck [0.48 h]; Mobile Crane [0.48 h]; Storm MH depth 1.50 - 2.5m [0.01] |
| B6.33 05 39.01.3907_R | Test, Internal Finishing, Benching & Cover(Rem) | 3d | 2026-09-19 A | 2026-09-22 A | B6.33 05 39.01.3897_R SS, B6.33 05 39.01.3907 | Labor [1.87 h]; Foreman [0.94 h]; Plumber Helper [0.94 h]; Plumber [0.94 h]; Mason [0.94 h]; Storm MH depth 1.50 - 2.5m [0] |
| B6.33 05 39.01.3917_R | Backfilling(Rem) | 3d | 2026-09-22 A | 2026-09-27 A | B6.33 05 39.01.3907_R SS, B6.33 42 11.361460_R SS, B6.33 05 13.04-113_R SS, B6.33 05 39.01.3917 | Labor [2.34 h]; Foreman [1.17 h]; Operator [2.34 h]; Surveyor [1.17 h]; Surveyor Helper [1.17 h]; Loader [1.2 h]; Water Tanker [1.2 h]; Dump Truck [1.2 h]; Plate Compactor [1.2 h]; Storm MH depth 1.50 - 2.5m [0.01] |
| B6.33 05 39.01.3957_R | Test, Internal Finishing, Benching & Cover(Rem) | 3d | 2026-09-19 A | 2026-09-22 A | B6.33 05 39.01.3947, B6.33 05 39.01.3957 | Labor [1.87 h]; Foreman [0.94 h]; Plumber Helper [0.94 h]; Plumber [0.94 h]; Mason [0.94 h]; Storm MH depth 2.51 - 3.5m [0.01] |
| B6.33 05 40.01.530_R | Excavation, Compaction & Vapour Barrier(Rem) | 3d | 2026-09-10 A | 2026-09-19 A | B6.33 05 39.01.3927, B6.33 05 40.01.530 | Labor [6.55 h]; Foreman [3.27 h]; Operator [6.55 h]; Surveyor [3.27 h]; Surveyor Helper [3.27 h]; Excavator (With Bucket) [3.36 h]; Water Tanker [3.36 h]; Dump Truck [3.36 h]; Roller Compactor [3.36 h]; Single Catch basin [0.63] |
| B6.33 05 40.01.540_R | Blinding Conc.(Rem) | 3d | 2026-09-19 A | 2026-09-21 A | B6.33 05 40.01.530_R SS, B6.33 05 40.01.540 | Labor [6.55 h]; Foreman [3.27 h]; Laboratory Officer [3.27 h]; Carpenter [3.27 h]; Steelfixer [3.27 h]; Mason [3.27 h]; Single Catch basin [0.42] |
| B6.33 05 40.01.550_R | Catch Basin Installation(Rem) | 3d | 2026-09-20 A | 2026-09-24 A | B6.33 05 40.01.540_R SS, B6.33 05 40.01.550 | Labor [9.82 h]; Foreman [4.91 h]; Carpenter [4.91 h]; Steelfixer [4.91 h]; Mason [4.91 h]; Operator [9.82 h]; Surveyor [4.91 h]; Surveyor Helper [4.91 h]; Boom Truck [5.04 h]; Single Catch basin [1.88] |
| B6.33 05 40.01.560_R | Backfilling, DI Frame & Grate Cover Fixing(Rem) | 2.05d | 2026-09-29 A | 2026-09-30 A | B6.33 05 40.01.720 FF, B6.33 42 11.35-126, B6.33 05 39.01.3817, B6.33 05 40.01.550_R SS, B6.33 05 40.01.160_R SS, B6.33 05 40.01.560 | Labor [16.37 h]; Foreman [8.19 h]; Operator [16.37 h]; Surveyor [8.19 h]; Surveyor Helper [8.19 h]; Loader [8.4 h]; Water Tanker [8.4 h]; Dump Truck [8.4 h]; Plate Compactor [8.4 h]; Single Catch basin [1.25] |
| B6.33 05 40.01.970_R | Excavation, Compaction & Vapour Barrier(Rem) | 3d | 2026-09-10 A | 2026-09-19 A | B6.33 05 40.01.530_R SS, B6.33 05 40.01.970 | Labor [11.69 h]; Foreman [5.85 h]; Operator [11.69 h]; Surveyor [5.85 h]; Surveyor Helper [5.85 h]; Excavator (With Bucket) [6 h]; Water Tanker [6 h]; Dump Truck [6 h]; Roller Compactor [6 h]; Double Catch basin [0.22] |
| B6.33 05 40.01.980_R | Blinding Conc.(Rem) | 3d | 2026-09-19 A | 2026-09-21 A | B6.33 05 40.01.970_R SS, B6.33 05 40.01.980 | Labor [11.69 h]; Foreman [5.85 h]; Laboratory Officer [5.85 h]; Carpenter [5.85 h]; Steelfixer [5.85 h]; Mason [5.85 h]; Double Catch basin [0.15] |
| B6.33 05 40.01.990_R | Catch Basin Installation(Rem) | 2.12d | 2026-09-20 A | 2026-09-24 A | B6.33 05 40.01.980_R SS, B6.33 05 40.01.990 | Labor [17.54 h]; Foreman [8.77 h]; Carpenter [8.77 h]; Steelfixer [8.77 h]; Mason [8.77 h]; Operator [17.54 h]; Surveyor [8.77 h]; Surveyor Helper [8.77 h]; Boom Truck [9 h]; Double Catch basin [0.68] |
| B6.33 42 11.35-114_R | Catch Basin Opening Prep.(Rem) | 3d | 2026-09-20 A | 2026-09-22 A | B6.33 05 40.01.550_R SS, DMM2-Proc-Delv-7510_R SS, DMM2-Proc-Delv-5748_R SS, B6.33 42 11.35-114 | Labor [5.72 h]; Foreman [2.86 h]; Plumber Helper [2.86 h]; Plumber [2.86 h]; less than 1.5 [8.55] |
| B6.33 42 11.36-187_R | Catch Basin Opening Prep.(Rem) | 3d | 2026-09-19 A | 2026-09-22 A | B6.33 42 11.35-114_R SS, B6.33 42 11.36-187 | Labor [5.72 h]; Foreman [2.86 h]; Plumber Helper [2.86 h]; Plumber [2.86 h]; less than 1.5 [8.55] |
| B3.33 14 13-10103_R | Embedment & Test(Rem) | 2.15d | 2026-09-22 A | 2026-09-27 A | B3.33 14 13-1099, B3.33 14 13-10103 | Labor [17.93 h]; Foreman [8.97 h]; Plumber Helper [8.97 h]; Plumber [8.97 h]; Operator [17.93 h]; Surveyor [8.97 h]; Surveyor Helper [8.97 h]; Loader [9.2 h]; Water Tanker [9.2 h]; Dump Truck [9.2 h]; Plate Compactor [9.2 h]; Roller Compactor [9.2 h]; Depth: 0.0m - 1.5m [44.78] |
| B3.33 14 13-10107_R | Backfilling & Warrning Tape(Rem) | 2.44d | 2026-09-28 A | 2026-09-30 A | B3.33 14 13.02.18 FF, B3.33 14 13-10103_R SS, B3.33 14 13-10107 | Labor [22.41 h]; Foreman [11.21 h]; Operator [44.83 h]; Surveyor [11.21 h]; Surveyor Helper [11.21 h]; Loader [11.5 h]; Water Tanker [11.5 h]; Dump Truck [11.5 h]; Plate Compactor [11.5 h]; Roller Compactor [11.5 h]; Depth: 0.0m - 1.5m [22.39] |
| B3.33 14 13-10101_R | Pipe Laying(Rem) | 3d | 2026-10-07 | 2026-10-10 | B3.33 14 13-1097_R FF, B3.33 14 13-10101 | Labor [4.95 h]; Foreman [2.48 h]; Plumber Helper [2.48 h]; Plumber [2.48 h]; Operator [2.48 h]; Surveyor [2.48 h]; Surveyor Helper [2.48 h]; Mobile Crane [2.54 h]; Depth: 1.51m - 2.5m |
| B3.33 14 13-10105_R | Embedment & Test(Rem) | 3d | 2026-10-07 | 2026-10-10 | B3.33 14 13-10101_R FF, B3.33 14 13-10105 | Labor [9.91 h]; Foreman [4.95 h]; Plumber Helper [4.95 h]; Plumber [4.95 h]; Operator [9.91 h]; Surveyor [4.95 h]; Surveyor Helper [4.95 h]; Loader [5.08 h]; Water Tanker [5.08 h]; Dump Truck [5.08 h]; Plate Compactor [5.08 h]; Roller Compactor [5.08 h]; Depth: 1.51m - 2.5m |
| B3.33 14 13-10109_R | Backfilling & Warrning Tape(Rem) | 3d | 2026-10-07 | 2026-10-10 | B3.33 14 13-10105_R FF, B3.33 14 13-10109 | Labor [12.39 h]; Foreman [6.19 h]; Operator [24.77 h]; Surveyor [6.19 h]; Surveyor Helper [6.19 h]; Loader [6.36 h]; Water Tanker [6.36 h]; Dump Truck [6.36 h]; Plate Compactor [6.36 h]; Roller Compactor [6.36 h]; Depth: 1.51m - 2.5m |
| B3.33 14 13-1093_R | Excavation(Rem) | 3d | 2026-10-07 | 2026-10-10 | B3.33 14 13-1091, B3.33 14 13-1093 | Labor [4.95 h]; Foreman [2.48 h]; Operator [4.95 h]; Surveyor [2.48 h]; Surveyor Helper [2.48 h]; Excavator (With Bucket) [2.54 h]; Water Tanker [2.54 h]; Dump Truck [2.54 h]; Plate Compactor [2.54 h]; Depth: 1.51m - 2.5m |
| B3.33 14 13-1097_R | Sand Bedding(Rem) | 3d | 2026-10-07 | 2026-10-10 | B3.33 14 13-1093_R FF, B3.33 14 13-1097 | Labor [4.95 h]; Foreman [2.48 h]; Operator [9.91 h]; Surveyor [2.48 h]; Surveyor Helper [2.48 h]; Loader [2.54 h]; Water Tanker [2.54 h]; Dump Truck [2.54 h]; Plate Compactor [2.54 h]; Depth: 1.51m - 2.5m |
| B3.33 05 63.01.55_R | Foundations(Rem) | 3.5d | 2026-10-07 | 2026-10-11 | B3.33 05 63.01.57, B3.33 05 63.01.55 | Labor [23.39 h]; Foreman [11.69 h]; Laboratory Officer [11.69 h]; Carpenter [11.69 h]; Steelfixer [11.69 h]; Mason [11.69 h]; FF Wash out valve Dia. 100 mm on pipes with Dia. 110-400 mm [0.1]; FF Wash out valve chamber; on 110-400 mm Dia. pipeline [0.13] |
| B3.33 05 63.01.56_R | Chamber Curing, Finishing & Steel Cover(Rem) | 4d | 2026-10-07 | 2026-10-11 | B3.1. 33 14 13-027, B3.1. 33 14 13-025, B3.33 05 63.01.58_R SS, B3.33 05 63.01.56 | Labor [31.18 h]; Mason [15.59 h]; FF Wash out valve Dia. 100 mm on pipes with Dia. 110-400 mm [0.13]; FF Wash out valve chamber; on 110-400 mm Dia. pipeline [0.1] |
| B3.33 05 63.01.58_R | Chambers Walls Conc Cast In Situ(Rem) | 3.5d | 2026-10-07 | 2026-10-11 | B3.33 05 63.01.55_R SS, B3.33 05 63.01.58 | Labor [23.39 h]; Foreman [11.69 h]; Laboratory Officer [11.69 h]; Carpenter [11.69 h]; Steelfixer [11.69 h]; Mason [11.69 h]; FF Wash out valve Dia. 100 mm on pipes with Dia. 110-400 mm [0.13]; FF Wash out valve chamber; on 110-400 mm Dia. pipeline [0.13] |
| B3.33 05 63.01.59_R | Valve & Fitting Installation(Rem) | 4d | 2026-11-04 | 2026-11-09 | B3.33 05 63.02.74 FF, B3.33 05 63.01.56_R SS, B3.33 05 63.01.59 | Labor [31.18 h]; Plumber Helper [15.59 h]; Plumber [15.59 h]; Operator [31.18 h]; Boom Truck [16 h]; FF Wash out valve Dia. 100 mm on pipes with Dia. 110-400 mm [0.19]; FF Wash out valve chamber; on 110-400 mm Dia. pipeline [0.19] |
| B3.33 14 19.01.fh40_R | Firehydrant Fixing/Installation(Rem) | 4.97d | 2026-10-07 | 2026-10-12 | DMM2-Proc-Delv-7178, B3.33 14 19.01.fh41_R SS, B3.33 14 19.01.fh40 | Labor [46.31 h]; Foreman [23.15 h]; Plumber Helper [23.15 h]; Plumber [23.15 h]; Operator [46.31 h]; Surveyor [23.15 h]; Surveyor Helper [23.15 h]; JCB [23.76 h]; 3-outlet fire hydrant (2 x 2.5 inch and 1 x 4.5 inch) in the form of a separate dry vacuum cylinder [4.43] |
| B3.33 14 19.01.fh41_R | Riser Pipe & Flanged Fittings Installation(Rem) | 3.98d | 2026-10-07 | 2026-10-11 | B3.1. 33 14 13-019, B3.1. 33 14 13-017, B3.33 14 19.01.fh41 | Labor [30.87 h]; Plumber Helper [15.44 h]; Welder [15.44 h]; Plumber [15.44 h]; Surveyor [15.44 h]; Surveyor Helper [15.44 h]; Welding Machine [15.84 h]; 3-outlet fire hydrant (2 x 2.5 inch and 1 x 4.5 inch) in the form of a separate dry vacuum cylinder [1.48] |
| B3.33 14 19.01.fh42_R | Backfilling & Compaction(Rem) | 6.95d | 2026-10-07 | 2026-10-14 | B3.33 14 19.01.fh40_R SS, B3.33 14 19.01.fh42 | Labor [77.18 h]; Foreman [38.59 h]; Operator [77.18 h]; Surveyor [38.59 h]; Surveyor Helper [38.59 h]; Loader [39.6 h]; Water Tanker [39.6 h]; Dump Truck [39.6 h]; Plate Compactor [39.6 h]; 3-outlet fire hydrant (2 x 2.5 inch and 1 x 4.5 inch) in the form of a separate dry vacuum cylinder [1.48] |
| B4.33 14 13.01-0120_R | Embedment & Test(Rem) | 4.2d | 2026-10-07 | 2026-10-12 | B4.33 14 13.01-0116, B4.33 14 13.01-0120 | Labor [49.88 h]; Foreman [24.94 h]; Plumber Helper [24.94 h]; Plumber [24.94 h]; Operator [49.88 h]; Surveyor [24.94 h]; Surveyor Helper [24.94 h]; Loader [25.59 h]; Water Tanker [25.59 h]; Dump Truck [25.59 h]; Plate Compactor [25.59 h]; Roller Compactor [25.59 h]; Dia. 110mm 0.0m - 1.5m [66.64] |
| B4.33 14 13.01-0124_R | Backfilling & Warrning Tape(Rem) | 5d | 2026-10-20 | 2026-10-25 | B4.32 84 13.063 FF, B4.33 14 13.01-0120_R FF, B4.33 14 13.01-0124 | Labor [62.35 h]; Foreman [31.17 h]; Operator [124.7 h]; Surveyor [31.17 h]; Surveyor Helper [31.17 h]; Loader [31.99 h]; Water Tanker [31.99 h]; Dump Truck [31.99 h]; Plate Compactor [31.99 h]; Roller Compactor [31.99 h]; Dia. 110mm 0.0m - 1.5m [33.32] |
| B2.33 71 16.91_R | Excavation(Rem) | 2d | 2026-10-07 | 2026-10-08 | B2.33 71 16.91 | Labor [23.39 h]; Foreman [11.69 h]; Operator [23.39 h]; Surveyor [11.69 h]; Surveyor Helper [11.69 h]; Excavator (With Bucket) [12 h]; Dump Truck [12 h]; Lighting poles with 1 arm, height of ( 10) meters [3.3] |
| B2.33 71 16.92_R | PC & RC Foundation(Rem) | 2d | 2026-10-10 | 2026-10-11 | B2.33 71 16.91_R, B2.33 71 16.92 | Labor [38.98 h]; Foreman [19.49 h]; Laboratory Officer [19.49 h]; Carpenter [19.49 h]; Steelfixer [19.49 h]; Mason [19.49 h]; Lighting poles with 1 arm, height of ( 10) meters [3.3] |
| B2.33 71 16.93_R | Lighting Poles Installation Incl power box, Cables(Rem) | 2d | 2026-10-10 | 2026-10-11 | B2.33 71 16.92_R FF, B2.33 71 16.93 | Labor [46.78 h]; Operator [46.78 h]; Mobile Crane [24 h]; Electrician [23.39 h]; Lighting poles with 1 arm, height of ( 10) meters [6.6] |
| B2.26.56.19.16_R | Lighting Luminares Inst(Rem) | 2d | 2026-10-12 | 2026-10-13 | B2.33 71 16.93_R, B2.26.56.19.16 | Labor [31.18 h]; Operator [31.18 h]; Manlift [16 h]; Street Lighting( LED), Lamp Lumen: 14560, Luminare Lumen:12700 , complete with control gear and lamp, (80) WATT. [18] |
| B2.1.33 81 26.162_R | Excavation(Rem) | 1d | 2026-10-25 | 2026-10-25 | B2.33 71 00 02 84, B2.33 71 00 02 81, B2.1.33 81 26.162 | Labor [17.15 h]; Foreman [8.58 h]; Operator [17.15 h]; Surveyor [8.58 h]; Surveyor Helper [8.58 h]; Excavator (With Bucket) [8.8 h]; Water Tanker [8.8 h]; Dump Truck [8.8 h]; Plate Compactor [8.8 h]; (6*50mm) HDPE ducts [69.2] |
| B2.1.33 81 26.163_R | HDPE Pipe, Shuttering, Steel Fixing & Conc. Cast(Rem) | 1d | 2026-10-25 | 2026-10-25 | B2.1.33 81 26.162_R FF, B2.1.33 81 26.163 | Labor [60.03 h]; Laboratory Officer [30.02 h]; Carpenter [30.02 h]; Steelfixer [30.02 h]; Mason [30.02 h]; Surveyor [30.02 h]; Surveyor Helper [30.02 h]; (6*50mm) HDPE ducts [207.6] |
| B2.1.33 81 26.164_R | Backfilling & Warrning Tape(Rem) | 1d | 2026-10-25 | 2026-10-25 | B2.1.33 81 26.163_R FF, B2.1.33 81 26.164 | Labor [51.45 h]; Foreman [25.73 h]; Operator [102.91 h]; Surveyor [25.73 h]; Surveyor Helper [25.73 h]; Loader [26.4 h]; Water Tanker [26.4 h]; Dump Truck [26.4 h]; Plate Compactor [26.4 h]; Roller Compactor [26.4 h]; (6*50mm) HDPE ducts [69.2] |
| B2.1.33 81 26.165_R | Excavation(Rem) | 1d | 2026-10-25 | 2026-10-25 | B2.1.33 81 26.162_R FF, B2.1.33 81 26.165 | Labor [17.15 h]; Foreman [8.58 h]; Operator [17.15 h]; Surveyor [8.58 h]; Surveyor Helper [8.58 h]; Excavator (With Bucket) [8.8 h]; Water Tanker [8.8 h]; Dump Truck [8.8 h]; Plate Compactor [8.8 h]; (6*50mm+2*32mm) HDPE ducts [26.68] |
| B2.1.33 81 26.166_R | HDPE Pipe, Shuttering, Steel Fixing & Conc. Cast(Rem) | 1d | 2026-10-25 | 2026-10-25 | B2.1.33 81 26.165_R FF, B2.1.33 81 26.166 | Labor [25.73 h]; Laboratory Officer [12.86 h]; Carpenter [12.86 h]; Steelfixer [12.86 h]; Mason [12.86 h]; Surveyor [12.86 h]; Surveyor Helper [12.86 h]; (6*50mm+2*32mm) HDPE ducts [80.02] |
| B2.1.33 81 26.167_R | Backfilling & Warrning Tape(Rem) | 1d | 2026-10-25 | 2026-10-25 | B2.1.33 81 26.166_R FF, B2.1.33 81 26.167 | Labor [25.73 h]; Foreman [12.86 h]; Operator [51.45 h]; Surveyor [12.86 h]; Surveyor Helper [12.86 h]; Loader [13.2 h]; Water Tanker [13.2 h]; Dump Truck [13.2 h]; Plate Compactor [13.2 h]; Roller Compactor [13.2 h]; (6*50mm+2*32mm) HDPE ducts [26.68] |
| B2.1.33 81 26.168_R | Excavation(Rem) | 1d | 2026-10-25 | 2026-10-25 | B2.1.33 81 26.165_R SS, B2.1.33 81 26.168 | Labor [17.15 h]; Foreman [8.58 h]; Operator [17.15 h]; Surveyor [8.58 h]; Surveyor Helper [8.58 h]; Excavator (With Bucket) [8.8 h]; Water Tanker [8.8 h]; Dump Truck [8.8 h]; Plate Compactor [8.8 h]; (6*50mm+4*32mm) HDPE ducts [8.25] |
| B2.1.33 81 26.169_R | HDPE Pipe, Shuttering, Steel Fixing & Conc. Cast(Rem) | 1d | 2026-10-25 | 2026-10-25 | B2.1.33 81 26.168_R FF, B2.1.33 81 26.169 | Labor [25.73 h]; Laboratory Officer [12.86 h]; Carpenter [12.86 h]; Steelfixer [12.86 h]; Mason [12.86 h]; Surveyor [12.86 h]; Surveyor Helper [12.86 h]; (6*50mm+4*32mm) HDPE ducts [24.75] |
| B2.1.33 81 26.170_R | Backfilling & Warrning Tape(Rem) | 1d | 2026-10-25 | 2026-10-25 | B2.1.33 81 26.169_R FF, B2.1.33 81 26.170 | Labor [25.73 h]; Foreman [12.86 h]; Operator [51.45 h]; Surveyor [12.86 h]; Surveyor Helper [12.86 h]; Loader [13.2 h]; Water Tanker [13.2 h]; Dump Truck [13.2 h]; Plate Compactor [13.2 h]; Roller Compactor [13.2 h]; (6*50mm+4*32mm) HDPE ducts [8.25] |
| B2.1.33 81 26.171_R | Excavation(Rem) | 1d | 2026-10-25 | 2026-10-25 | B2.1.33 81 26.168_R FF, B2.1.33 81 26.171 | Labor [17.15 h]; Foreman [8.58 h]; Operator [17.15 h]; Surveyor [8.58 h]; Surveyor Helper [8.58 h]; Excavator (With Bucket) [8.8 h]; Water Tanker [8.8 h]; Dump Truck [8.8 h]; Plate Compactor [8.8 h]; (2*32mm) HDPE ducts [4.73] |
| B2.1.33 81 26.172_R | HDPE Pipe, Shuttering, Steel Fixing & Conc. Cast(Rem) | 1d | 2026-10-25 | 2026-10-25 | B2.1.33 81 26.171_R FF, B2.1.33 81 26.172 | Labor [25.73 h]; Laboratory Officer [12.86 h]; Carpenter [12.86 h]; Steelfixer [12.86 h]; Mason [12.86 h]; Surveyor [12.86 h]; Surveyor Helper [12.86 h]; (2*32mm) HDPE ducts [14.19] |
| B2.1.33 81 26.173_R | Backfilling & Warrning Tape(Rem) | 1d | 2026-10-25 | 2026-10-25 | B2.1.33 81 26.172_R FF, B2.1.33 81 26.167_R FF, B2.1.33 81 26.164_R FF, B2.1.33 81 26.173 | Labor [25.73 h]; Foreman [12.86 h]; Operator [51.45 h]; Surveyor [12.86 h]; Surveyor Helper [12.86 h]; Loader [13.2 h]; Water Tanker [13.2 h]; Dump Truck [13.2 h]; Plate Compactor [13.2 h]; Roller Compactor [13.2 h]; (2*32mm) HDPE ducts [4.73] |
| B2.31 23 00.630_R | Excavation(Rem) | 2d | 2026-10-25 | 2026-10-26 | B2.1.33 81 26.171_R SS, B2.31 23 00.630 | Labor [10.29 h]; Foreman [5.15 h]; Operator [10.29 h]; Surveyor [5.15 h]; Surveyor Helper [5.15 h]; Excavator (With Bucket) [5.28 h]; Water Tanker [5.28 h]; Dump Truck [5.28 h]; Plate Compactor [5.28 h]; Manhole Type 1 [0.41] |
| B2.33 71 00.268_R | Manhole Installation(Rem) | 2d | 2026-10-25 | 2026-10-26 | B2.31 23 00.630_R FF, B2.33 71 00.268 | Labor [10.29 h]; Laboratory Officer [5.15 h]; Carpenter [5.15 h]; Steelfixer [5.15 h]; Mason [5.15 h]; Surveyor [5.15 h]; Surveyor Helper [5.15 h]; Manhole Type 1 [1.23] |
| B2.33 71 00.269_R | Backfilling & Warrning Tape(Rem) | 2d | 2026-10-25 | 2026-10-26 | B2.33 71 00.268_R FF, B2.1.33 81 26.173_R FF, B2.33 71 00.269 | Labor [30.87 h]; Foreman [15.44 h]; Operator [61.75 h]; Surveyor [15.44 h]; Surveyor Helper [15.44 h]; Loader [15.84 h]; Water Tanker [15.84 h]; Dump Truck [15.84 h]; Plate Compactor [15.84 h]; Roller Compactor [15.84 h]; Manhole Type 1 [0.41] |
| B2.31 23 00.631_R | Excavation(Rem) | 2d | 2026-10-25 | 2026-10-26 | B2.31 23 00.630_R SS, B2.31 23 00.631 | Labor [10.29 h]; Foreman [5.15 h]; Operator [10.29 h]; Surveyor [5.15 h]; Surveyor Helper [5.15 h]; Excavator (With Bucket) [5.28 h]; Water Tanker [5.28 h]; Dump Truck [5.28 h]; Plate Compactor [5.28 h]; Manhole Type 2 [0.17] |
| B2.33 71 00.270_R | Manhole Installation(Rem) | 2d | 2026-10-25 | 2026-10-26 | B2.31 23 00.631_R FF, B2.33 71 00.270 | Labor [10.29 h]; Laboratory Officer [5.15 h]; Carpenter [5.15 h]; Steelfixer [5.15 h]; Mason [5.15 h]; Surveyor [5.15 h]; Surveyor Helper [5.15 h]; Manhole Type 2 [0.51] |
| B2.33 71 00.271_R | Backfilling & Warrning Tape(Rem) | 2d | 2026-10-25 | 2026-10-26 | B2.33 71 00.270_R FF, B2.1.33 81 26.170_R FF, B2.33 71 00.271 | Labor [25.73 h]; Foreman [12.86 h]; Operator [51.45 h]; Surveyor [12.86 h]; Surveyor Helper [12.86 h]; Loader [13.2 h]; Water Tanker [13.2 h]; Dump Truck [13.2 h]; Plate Compactor [13.2 h]; Roller Compactor [13.2 h]; Manhole Type 2 [0.17] |
| B2.31 23 00.629_R | Excavation(Rem) | 1d | 2026-10-26 | 2026-10-26 | B2.31 23 00.631_R FF, B2.31 23 00.629 | Labor [17.15 h]; Foreman [8.58 h]; Operator [17.15 h]; Surveyor [8.58 h]; Surveyor Helper [8.58 h]; Excavator (With Bucket) [8.8 h]; Water Tanker [8.8 h]; Dump Truck [8.8 h]; Plate Compactor [8.8 h]; Road crossing ducts, (6*50mm) HDPE [3.92] |
| B2.33 71 00.266_R | Shuttering, Steel Fixing Incl. UPVC Pipe & Conc. Cast(Rem) | 1d | 2026-10-26 | 2026-10-26 | B2.31 23 00.629_R FF, B2.33 71 00.266 | Labor [25.73 h]; Laboratory Officer [12.86 h]; Carpenter [12.86 h]; Steelfixer [12.86 h]; Mason [12.86 h]; Surveyor [12.86 h]; Surveyor Helper [12.86 h]; Road crossing ducts, (6*50mm) HDPE [11.75] |
| B2.33 71 00.267_R | Backfilling & Warrning Tape(Rem) | 1d | 2026-10-26 | 2026-10-26 | B2.33 71 00.266_R FF, B2.33 71 00.267 | Labor [25.73 h]; Foreman [12.86 h]; Operator [51.45 h]; Surveyor [12.86 h]; Surveyor Helper [12.86 h]; Loader [13.2 h]; Water Tanker [13.2 h]; Dump Truck [13.2 h]; Plate Compactor [13.2 h]; Roller Compactor [13.2 h]; Road crossing ducts, (6*50mm) HDPE [3.92] |
| B1.2.32 11 13.01.15_R | Subgrade(Rem) | 2.8d | 2026-10-07 | 2026-10-10 | B1.2.31 23 23.01.15, DMM2-Proc-Delv-7500, B1.2.32 11 13.01.15 | Subgrade [6300.66]; Labor [43.66 h]; Foreman [21.83 h]; Operator [43.66 h]; Surveyor [21.83 h]; Surveyor Helper [21.83 h]; Grader [22.4 h]; Loader [22.4 h]; Water Tanker [22.4 h]; Dump Truck [22.4 h]; Plate Compactor [22.4 h]; Roller Compactor [22.4 h] |
| B1.2.32 11 23.01.15_R | Aggregate Base Course(Rem) | 3.5d | 2026-10-07 | 2026-10-11 | B1.2.32 11 13.01.15_R FF, DMM2-Proc-Delv-7498_R SS, B1.2.32 11 23.01.15 | Aggregate base course [6000.71]; Labor [54.57 h]; Foreman [27.29 h]; Operator [54.57 h]; Surveyor [27.29 h]; Surveyor Helper [27.29 h]; Grader [28 h]; Loader [28 h]; Water Tanker [28 h]; Dump Truck [28 h]; Plate Compactor [28 h]; Roller Compactor [28 h] |
| B6.33 05 39.01.1657_R | Test, Internal Finishing, Benching & Cover(Rem) | 2.18d | 2026-09-27 A | 2026-10-08 | B6.33 05 39.01.1647, B6.33 05 39.01.1657, B6.33 05 39.01.1607_R | Labor [33.93 h]; Foreman [16.96 h]; Plumber Helper [16.96 h]; Plumber [16.96 h]; Mason [16.96 h]; MH depth 1.51 - 2.5m [0.3] |
| B6.33 05 39.01.1697_R | Manhole Installation(Rem) | 1.14d | 2026-09-24 A | 2026-10-07 | B6.33 05 39.01.1687, B6.33 05 39.01.1697 | Labor [17.71 h]; Operator [17.71 h]; Surveyor [8.86 h]; Surveyor Helper [8.86 h]; Boom Truck [9.09 h]; Mobile Crane [9.09 h]; MH depth 2.51 - 3.5m [1.4] |
| B6.33 05 39.01.1707_R | Test, Internal Finishing, Benching & Cover(Rem) | 2.18d | 2026-09-29 A | 2026-10-08 | B6.33 05 39.01.1697_R SS, B6.33 05 39.01.1707, B6.33 05 39.01.1657_R | Labor [33.93 h]; Foreman [16.96 h]; Plumber Helper [16.96 h]; Plumber [16.96 h]; Mason [16.96 h]; MH depth 2.51 - 3.5m [0.3] |
| B6.33 42 11.01-134_R | Backfilling & Warrning Tape(Rem) | 3.75d | 2026-09-22 A | 2026-10-07 | B6.33 42 11.01-128, B6.33 42 11.01-134 | Labor [35.99 h]; Foreman [18 h]; Operator [71.99 h]; Surveyor [18 h]; Surveyor Helper [18 h]; Loader [18.47 h]; Water Tanker [18.47 h]; Dump Truck [18.47 h]; Plate Compactor [18.47 h]; Roller Compactor [18.47 h]; Depth: 1.51m - 2.5m [0.66] |
| B6.33 42 11.01-136_R | Backfilling & Warrning Tape(Rem) | 2.96d | 2026-09-16 A | 2026-10-07 | B6.33 42 11.01-130_R FF, B6.33 42 11.01-136 | Labor [25.71 h]; Foreman [12.85 h]; Operator [51.42 h]; Surveyor [12.85 h]; Surveyor Helper [12.85 h]; Loader [13.19 h]; Water Tanker [13.19 h]; Dump Truck [13.19 h]; Plate Compactor [13.19 h]; Roller Compactor [13.19 h]; 1.51m - 2.5m [1.57] |
| B6.33 42 11.01-130_R | Embedment & Test(Rem) | 2.57d | 2026-09-16 A | 2026-10-07 | B6.33 42 11.01-124_R FF, B6.33 42 11.01-130 | Labor [20.57 h]; Foreman [10.28 h]; Plumber Helper [10.28 h]; Plumber [10.28 h]; Operator [20.57 h]; Surveyor [10.28 h]; Surveyor Helper [10.28 h]; Loader [10.55 h]; Water Tanker [10.55 h]; Dump Truck [10.55 h]; Plate Compactor [10.55 h]; Roller Compactor [10.55 h]; 1.51m - 2.5m [0.86] |
| B6.33 42 11.01-118_R | Sand Bedding(Rem) | 3d | 2026-09-21 A | 2026-10-07 | B6.33 42 11.01-112, B6.33 42 11.01-118 | Labor [10.28 h]; Foreman [5.14 h]; Operator [20.57 h]; Surveyor [5.14 h]; Surveyor Helper [5.14 h]; Loader [5.28 h]; Water Tanker [5.28 h]; Dump Truck [5.28 h]; Plate Compactor [5.28 h]; 1.51m - 2.5m [3.14] |
| B6.33 42 11.01-124_R | Pipe Laying(Rem) | 3d | 2026-09-26 A | 2026-10-07 | B6.33 42 11.01-118_R FF, B6.33 42 11.01-124 | Labor [10.28 h]; Foreman [5.14 h]; Plumber Helper [5.14 h]; Plumber [5.14 h]; Operator [5.14 h]; Surveyor [5.14 h]; Surveyor Helper [5.14 h]; Mobile Crane [5.28 h]; 1.51m - 2.5m [7.14] |
| B6.33 42 11.01-132_R | Embedment & Test(Rem) | 3.76d | 2026-09-24 A | 2026-10-07 | B6.33 42 11.01-126, B6.33 42 11.01-132 | Labor [41.05 h]; Foreman [20.53 h]; Plumber Helper [20.53 h]; Plumber [20.53 h]; Operator [41.05 h]; Surveyor [20.53 h]; Surveyor Helper [20.53 h]; Loader [21.06 h]; Water Tanker [21.06 h]; Dump Truck [21.06 h]; Plate Compactor [21.06 h]; Roller Compactor [21.06 h]; 1.51m - 2.5m [8.67] |
| B6.33 05 39.01.3977_R | Excavation & Compaction(Rem) | 3d | 2026-09-20 A | 2026-09-22 A | B6.33 42 11.01-114, B6.33 05 39.01.3977 | Labor [0.94 h]; Foreman [0.47 h]; Operator [0.94 h]; Surveyor [0.47 h]; Surveyor Helper [0.47 h]; Excavator (With Bucket) [0.48 h]; Water Tanker [0.48 h]; Dump Truck [0.48 h]; Plate Compactor [0.48 h]; MH depth 1.50 - 2.5m [0.03] |
| B6.33 05 39.01.4017_R | Backfilling(Rem) | 3d | 2026-09-20 A | 2026-09-24 A | B6.33 05 39.01.4007_R SS, B6.33 05 39.01.4017, B6.33 42 11.01-132_R | Labor [2.34 h]; Foreman [1.17 h]; Operator [2.34 h]; Surveyor [1.17 h]; Surveyor Helper [1.17 h]; Loader [1.2 h]; Water Tanker [1.2 h]; Dump Truck [1.2 h]; Plate Compactor [1.2 h]; MH depth 1.50 - 2.5m [0.06] |
| B6.33 05 39.01.3987_R | Blinding Conc, & RC Base(Rem) | 3d | 2026-09-22 A | 2026-09-28 A | B6.33 05 39.01.3977_R SS, B6.33 05 39.01.3987 | Labor [1.4 h]; Foreman [0.7 h]; Laboratory Officer [0.7 h]; Carpenter [0.7 h]; Steelfixer [0.7 h]; Mason [0.7 h]; MH depth 1.50 - 2.5m [0.03] |
| B6.33 05 39.01.3997_R | Manhole Installation(Rem) | 3d | 2026-09-26 A | 2026-10-01 A | B6.33 05 39.01.3987_R SS, B6.33 05 39.01.3997 | Labor [0.94 h]; Operator [0.94 h]; Surveyor [0.47 h]; Surveyor Helper [0.47 h]; Boom Truck [0.48 h]; Mobile Crane [0.48 h]; MH depth 1.50 - 2.5m [0.1] |
| B6.33 05 39.01.4007_R | Test, Internal Finishing, Benching & Cover(Rem) | 3d | 2026-09-30 A | 2026-10-07 A | B6.33 05 39.01.3997_R SS, B6.33 05 39.01.4007 | Labor [1.87 h]; Foreman [0.94 h]; Plumber Helper [0.94 h]; Plumber [0.94 h]; Mason [0.94 h]; MH depth 1.50 - 2.5m [0.03] |
| B6.33 05 40.01.600_R | Backfilling, DI Frame & Grate Cover Fixing(Rem) | 3d | 2026-09-20 A | 2026-09-22 A | B6.33 42 11.36-1101, B6.33 42 11.35-128, B6.33 05 40.01.600, B6.33 05 39.01.3807_R, B6.33 05 39.01.3957_R | Labor [5.77 h]; Foreman [2.88 h]; Operator [5.77 h]; Surveyor [2.88 h]; Surveyor Helper [2.88 h]; Loader [2.96 h]; Water Tanker [2.96 h]; Dump Truck [2.96 h]; Plate Compactor [2.96 h]; Single Catch basin [0.44] |
| B6.33 05 40.01.570_R | Excavation, Compaction & Vapour Barrier(Rem) | 3d | 2026-09-21 A | 2026-09-24 A | B6.33 05 39.01.3977_R SS, B6.33 05 40.01.570 | Labor [2.31 h]; Foreman [1.15 h]; Operator [2.31 h]; Surveyor [1.15 h]; Surveyor Helper [1.15 h]; Excavator (With Bucket) [1.18 h]; Water Tanker [1.18 h]; Dump Truck [1.18 h]; Roller Compactor [1.18 h]; Single Catch basin [0.22] |
| B6.33 05 40.01.580_R | Blinding Conc.(Rem) | 3d | 2026-09-26 A | 2026-09-29 A | B6.33 05 40.01.570_R SS, B6.33 05 40.01.580 | Labor [2.31 h]; Foreman [1.15 h]; Laboratory Officer [1.15 h]; Carpenter [1.15 h]; Steelfixer [1.15 h]; Mason [1.15 h]; Single Catch basin [0.15] |
| B6.33 05 40.01.590_R | Catch Basin Installation(Rem) | 3d | 2026-10-03 A | 2026-10-06 A | B6.33 05 40.01.580_R SS, B6.33 05 40.01.590 | Labor [3.46 h]; Foreman [1.73 h]; Carpenter [1.73 h]; Steelfixer [1.73 h]; Mason [1.73 h]; Operator [3.46 h]; Surveyor [1.73 h]; Surveyor Helper [1.73 h]; Boom Truck [1.78 h]; Single Catch basin [0.66] |
| B6.33 42 11.35-116_R | Catch Basin Opening Prep.(Rem) | 3d | 2026-09-21 A | 2026-09-24 A | B6.33 05 40.01.590_R SS, B6.33 42 11.35-116 | Labor [4.03 h]; Foreman [2.01 h]; Plumber Helper [2.01 h]; Plumber [2.01 h]; less than 1.5 [6.02] |
| B6.33 42 11.36-189_R | Catch Basin Opening Prep.(Rem) | 3d | 2026-09-20 A | 2026-09-22 A | B6.33 42 11.35-116_R SS, B6.33 05 40.01.590_R SS, B6.33 42 11.36-189, B6.33 42 11.36-187_R | Labor [4.03 h]; Foreman [2.01 h]; Plumber Helper [2.01 h]; Plumber [2.01 h]; less than 1.5 [6.02] |
| B3.33 14 13-11103_R | Embedment & Test(Rem) | 3d | 2026-09-16 A | 2026-09-20 A | B3.33 14 19.01.116, B3.33 14 13-1199_R FF, B3.33 14 13-11103 | Labor [13.1 h]; Foreman [6.55 h]; Plumber Helper [6.55 h]; Plumber [6.55 h]; Operator [13.1 h]; Surveyor [6.55 h]; Surveyor Helper [6.55 h]; Loader [6.72 h]; Water Tanker [6.72 h]; Dump Truck [6.72 h]; Plate Compactor [6.72 h]; Roller Compactor [6.72 h]; Depth: 0.0m - 1.5m [32.71] |
| B3.33 14 13-1191_R | Excavation(Rem) | 3d | 2026-09-16 A | 2026-09-20 A | B1.2.32 11 26.01.16 FF, B3.33 14 13-1191 | Labor [6.55 h]; Foreman [3.27 h]; Operator [6.55 h]; Surveyor [3.27 h]; Surveyor Helper [3.27 h]; Excavator (With Bucket) [3.36 h]; Water Tanker [3.36 h]; Dump Truck [3.36 h]; Plate Compactor [3.36 h]; Depth: 0.0m - 1.5m [32.71] |
| B3.33 14 13-1195_R | Sand Bedding(Rem) | 3d | 2026-09-16 A | 2026-09-20 A | B3.33 14 13-1191_R FF, B3.33 14 13-1195 | Labor [6.55 h]; Foreman [3.27 h]; Operator [13.1 h]; Surveyor [3.27 h]; Surveyor Helper [3.27 h]; Loader [3.36 h]; Water Tanker [3.36 h]; Dump Truck [3.36 h]; Plate Compactor [3.36 h]; Depth: 0.0m - 1.5m [8.18] |
| B3.33 14 13-1199_R | Pipe Laying(Rem) | 3d | 2026-09-16 A | 2026-09-20 A | B3.33 14 13-1195_R FF, B3.33 14 13-1199 | Labor [6.55 h]; Foreman [3.27 h]; Plumber Helper [3.27 h]; Plumber [3.27 h]; Operator [3.27 h]; Surveyor [3.27 h]; Surveyor Helper [3.27 h]; Mobile Crane [3.36 h]; Depth: 0.0m - 1.5m [73.59] |
| B3.33 14 13-11107_R | Backfilling & Warrning Tape(Rem) | 2.05d | 2026-09-17 A | 2026-09-19 A | B3.33 14 13.01.02 5, B3.33 14 13-11107 | Labor [16.37 h]; Foreman [8.19 h]; Operator [32.74 h]; Surveyor [8.19 h]; Surveyor Helper [8.19 h]; Loader [8.4 h]; Water Tanker [8.4 h]; Dump Truck [8.4 h]; Plate Compactor [8.4 h]; Roller Compactor [8.4 h]; Depth: 0.0m - 1.5m [16.35] |
| B3.33 14 13-11101_R | Pipe Laying(Rem) | 3d | 2026-10-07 | 2026-10-10 | B3.33 14 13-1197_R FF, B3.33 14 13-11101 | Labor [6.55 h]; Foreman [3.27 h]; Plumber Helper [3.27 h]; Plumber [3.27 h]; Operator [3.27 h]; Surveyor [3.27 h]; Surveyor Helper [3.27 h]; Mobile Crane [3.36 h]; Depth: 1.51m - 2.5m |
| B3.33 14 13-11105_R | Embedment & Test(Rem) | 3d | 2026-10-07 | 2026-10-10 | B3.33 14 19.01.116, B3.33 14 13-11101_R FF, B3.33 14 13-11103_R FF, B3.33 14 13-11105 | Labor [13.1 h]; Foreman [6.55 h]; Plumber Helper [6.55 h]; Plumber [6.55 h]; Operator [13.1 h]; Surveyor [6.55 h]; Surveyor Helper [6.55 h]; Loader [6.72 h]; Water Tanker [6.72 h]; Dump Truck [6.72 h]; Plate Compactor [6.72 h]; Roller Compactor [6.72 h]; Depth: 1.51m - 2.5m |
| B3.33 14 13-1193_R | Excavation(Rem) | 3d | 2026-10-07 | 2026-10-10 | B3.33 14 13-1191_R SS, B3.33 14 13-1193 | Labor [6.55 h]; Foreman [3.27 h]; Operator [6.55 h]; Surveyor [3.27 h]; Surveyor Helper [3.27 h]; Excavator (With Bucket) [3.36 h]; Water Tanker [3.36 h]; Dump Truck [3.36 h]; Plate Compactor [3.36 h]; Depth: 1.51m - 2.5m |
| B3.33 14 13-1197_R | Sand Bedding(Rem) | 3d | 2026-10-07 | 2026-10-10 | B3.33 14 13-1193_R FF, B3.33 14 13-1197 | Labor [6.55 h]; Foreman [3.27 h]; Operator [13.1 h]; Surveyor [3.27 h]; Surveyor Helper [3.27 h]; Loader [3.36 h]; Water Tanker [3.36 h]; Dump Truck [3.36 h]; Plate Compactor [3.36 h]; Depth: 1.51m - 2.5m |
| B3.33 14 13-11109_R | Backfilling & Warrning Tape(Rem) | 2.05d | 2026-10-07 | 2026-10-10 | B3.33 14 19.01.117 FF, B3.33 14 13-11105_R FF, B3.33 14 13-11109 | Labor [16.37 h]; Foreman [8.19 h]; Operator [32.74 h]; Surveyor [8.19 h]; Surveyor Helper [8.19 h]; Loader [8.4 h]; Water Tanker [8.4 h]; Dump Truck [8.4 h]; Plate Compactor [8.4 h]; Roller Compactor [8.4 h]; Depth: 1.51m - 2.5m |
| B3.33 05 63.02.35_R | Foundations(Rem) | 2.5d | 2026-10-07 | 2026-10-10 | B3.33 05 63.02.37_R SS, B3.33 05 63.02.35 | Labor [23.39 h]; Foreman [11.69 h]; Laboratory Officer [11.69 h]; Carpenter [11.69 h]; Steelfixer [11.69 h]; Mason [11.69 h]; POT Air valve Dia. 50 mm on pipes with Dia. less than 315 mm [0.03]; Air valve chamber; on less than 315 mm Dia. pipeline [0.12] |
| B3.33 05 63.02.36_R | Chamber Curing, Finishing & Steel Cover(Rem) | 3d | 2026-10-07 | 2026-10-10 | B3.33 05 63.02.38_R SS, B3.33 05 63.02.36 | Labor [31.18 h]; Mason [15.59 h]; POT Air valve Dia. 50 mm on pipes with Dia. less than 315 mm [0.12]; Air valve chamber; on less than 315 mm Dia. pipeline [0.09] |
| B3.33 05 63.02.37_R | Land Adjustment & Compaction(Rem) | 2d | 2026-10-07 | 2026-10-08 | B3.33 14 13-1193_R SS, B3.33 05 63.02.37 | Labor [15.59 h]; Foreman [7.8 h]; Operator [31.18 h]; Surveyor [7.8 h]; Surveyor Helper [7.8 h]; Excavator (With Bucket) [8 h]; Water Tanker [8 h]; Dump Truck [8 h]; Plate Compactor [8 h]; POT Air valve Dia. 50 mm on pipes with Dia. less than 315 mm [0.12]; Air valve chamber; on less than 315 mm Dia. pipeline [0.09] |
| B3.33 05 63.02.38_R | Chambers Walls Conc Cast In Situ(Rem) | 2.5d | 2026-10-07 | 2026-10-10 | B3.33 05 63.02.35_R SS, B3.33 05 63.02.38 | Labor [23.39 h]; Foreman [11.69 h]; Laboratory Officer [11.69 h]; Carpenter [11.69 h]; Steelfixer [11.69 h]; Mason [11.69 h]; POT Air valve Dia. 50 mm on pipes with Dia. less than 315 mm [0.26]; Air valve chamber; on less than 315 mm Dia. pipeline [0.12] |
| B3.33 14 19.01.fh43_R | Firehydrant Fixing/Installation(Rem) | 3.5d | 2026-10-07 | 2026-10-11 | B3.33 14 19.01.fh44_R FF, B3.33 14 19.01.fh43 | Labor [23.39 h]; Foreman [11.69 h]; Plumber Helper [11.69 h]; Plumber [11.69 h]; Operator [23.39 h]; Surveyor [11.69 h]; Surveyor Helper [11.69 h]; JCB [12 h]; 3-outlet fire hydrant (2 x 2.5 inch and 1 x 4.5 inch) in the form of a separate dry vacuum cylinder [2.24] |
| B3.33 14 19.01.fh44_R | Riser Pipe & Flanged Fittings Installation(Rem) | 3d | 2026-10-07 | 2026-10-10 | B3.1. 33 14 13-01100, B3.1. 33 14 13-0198, B3.33 14 19.01.fh44 | Labor [15.59 h]; Plumber Helper [7.8 h]; Welder [7.8 h]; Plumber [7.8 h]; Surveyor [7.8 h]; Surveyor Helper [7.8 h]; Welding Machine [8 h]; 3-outlet fire hydrant (2 x 2.5 inch and 1 x 4.5 inch) in the form of a separate dry vacuum cylinder [0.75] |
| B2.31 23 00.643_R | Excavation(Rem) | 3d | 2026-10-07 | 2026-10-10 | B6.33 05 40.01.600_R SS, B2.31 23 00.643 | Labor [7.8 h]; Foreman [3.9 h]; Operator [7.8 h]; Surveyor [3.9 h]; Surveyor Helper [3.9 h]; Excavator (With Bucket) [4 h]; Water Tanker [4 h]; Dump Truck [4 h]; Plate Compactor [4 h]; Excavation for Trench size 40cm wide and 80cm deep (for 1 cable) [25]; Duct bank for MV cables UPVC (2xDia. 150mm) [4.27] |
| B2.33 71 00.294_R | Shuttering, Steel Fixing Incl. UPVC Pipe & Conc. Cast(Rem) | 3d | 2026-10-07 | 2026-10-10 | B2.31 23 00.643_R SS, B2.33 71 00.294 | Labor [11.69 h]; Laboratory Officer [5.85 h]; Carpenter [5.85 h]; Steelfixer [5.85 h]; Mason [5.85 h]; Surveyor [5.85 h]; Surveyor Helper [5.85 h]; Excavation for Trench size 40cm wide and 80cm deep (for 1 cable) [75]; Duct bank for MV cables UPVC (2xDia. 150mm) [17.19] |
| B2.33 71 00 02 85_R | Excavation(Rem) | 2d | 2026-10-11 | 2026-10-12 | B2.31 23 00.643_R, B2.33 71 00 02 85 | Labor [17.46 h]; Foreman [8.73 h]; Operator [17.46 h]; Surveyor [8.73 h]; Surveyor Helper [8.73 h]; Excavator (With Bucket) [8.96 h]; Water Tanker [8.96 h]; Dump Truck [8.96 h]; Plate Compactor [8.96 h]; SL Excavation for Trench size 60cm wide and 65cm deep ( for 2 cables); Road Crossing Duct for Street Lighting cables UPVC (4xDia. 110mm) [5] |
| B2.33 71 00 02 86_R | Shuttering, Steel Fixing Incl. UPVC Pipe & Conc. Cast(Rem) | 2d | 2026-10-13 | 2026-10-14 | B2.33 71 00 02 85_R, B2.33 71 00 02 86 | Labor [52.39 h]; Laboratory Officer [26.2 h]; Carpenter [26.2 h]; Steelfixer [26.2 h]; Mason [26.2 h]; Surveyor [26.2 h]; Surveyor Helper [26.2 h]; SL Excavation for Trench size 60cm wide and 65cm deep ( for 2 cables); Road Crossing Duct for Street Lighting cables UPVC (4xDia. 110mm) [14.99] |
| B2.33 71 00 02 87_R | Backfilling & Warrning Tape(Rem) | 2d | 2026-10-15 | 2026-10-17 | B2.33 71 00 02 86_R, B2.33 71 00 02 87 | Labor [43.66 h]; Foreman [21.83 h]; Operator [87.32 h]; Surveyor [21.83 h]; Surveyor Helper [21.83 h]; Loader [22.4 h]; Water Tanker [22.4 h]; Dump Truck [22.4 h]; Plate Compactor [22.4 h]; Roller Compactor [22.4 h]; SL Excavation for Trench size 60cm wide and 65cm deep ( for 2 cables); Road Crossing Duct for Street Lighting cables UPVC (4xDia. 110mm) [5] |
| B2.33 71 19 222_R | Land Adjustment(Rem) | 2d | 2026-10-26 | 2026-10-28 | B2.33 71 00 02 88, B2.33 71 16.99, B2.33 71 19 222 | Labor [26.2 h]; Foreman [13.1 h]; Operator [17.46 h]; Surveyor [4.37 h]; Surveyor Helper [4.37 h]; Excavator (With Bucket) [13.44 h]; Water Tanker [13.44 h]; Dump Truck [13.44 h]; Roller Compactor [13.44 h]; SL Cable, Copper 4x10mm2/ CU/XLPE/SWA/PVC + 1x10mm2 CU/PVC [233.24] |
| B2.33 71 49.23.192_R | Cable Pulling(Rem) | 2d | 2026-10-28 | 2026-10-31 | B2.33 71 19 222_R, B2.33 71 49.23.192 | Labor [43.66 h]; Foreman [21.83 h]; Surveyor [21.83 h]; Surveyor Helper [21.83 h]; Electrician [21.83 h]; SL Cable, Copper 4x10mm2/ CU/XLPE/SWA/PVC + 1x10mm2 CU/PVC [699.72] |
| B2.33 71 19 232_R | Backfilling(Rem) | 2d | 2026-10-31 | 2026-11-02 | B2.33 71 16.94, B2.33 71 19 46, B2.33 71 16.98, B2.33 71 49.23.192_R, B2.33 71 19 232 | Labor [52.39 h]; Foreman [26.2 h]; Operator [52.39 h]; Surveyor [26.2 h]; Surveyor Helper [26.2 h]; Loader [26.88 h]; Water Tanker [26.88 h]; Dump Truck [26.88 h]; Plate Compactor [26.88 h]; SL Cable, Copper 4x10mm2/ CU/XLPE/SWA/PVC + 1x10mm2 CU/PVC [233.24] |
| B2.33 71 16.95_R | Excavation(Rem) | 2d | 2026-10-07 | 2026-10-08 | DMM2-Proc-Delv-6538_R SS, B2.33 71 16.95 | Labor [3.45 h]; Foreman [1.72 h]; Operator [3.45 h]; Surveyor [1.72 h]; Surveyor Helper [1.72 h]; Excavator (With Bucket) [1.77 h]; Dump Truck [1.77 h]; Lighting poles with 1 arm, height of ( 10) meters [0.49] |
| B2.33 71 16.96_R | PC & RC Foundation(Rem) | 2d | 2026-10-07 | 2026-10-08 | B2.33 71 16.95_R SS, B2.33 71 16.96 | Labor [5.75 h]; Foreman [2.87 h]; Laboratory Officer [2.87 h]; Carpenter [2.87 h]; Steelfixer [2.87 h]; Mason [2.87 h]; Lighting poles with 1 arm, height of ( 10) meters [0.49] |
| B2.33 71 16.97_R | Lighting Poles Installation Incl power box, Cables(Rem) | 2d | 2026-10-07 | 2026-10-08 | B2.33 71 16.96_R SS, B2.33 71 16.97 | Labor [6.9 h]; Operator [6.9 h]; Mobile Crane [3.54 h]; Electrician [3.45 h]; Lighting poles with 1 arm, height of ( 10) meters [0.97] |
| B2.1.33 81 26.174_R | Excavation(Rem) | 2d | 2026-10-07 | 2026-10-08 | B2.1.33 81 26.174 | Labor [9.36 h]; Foreman [4.68 h]; Operator [9.36 h]; Surveyor [4.68 h]; Surveyor Helper [4.68 h]; Excavator (With Bucket) [4.8 h]; Water Tanker [4.8 h]; Dump Truck [4.8 h]; Plate Compactor [4.8 h]; (6*50mm) HDPE ducts [37.75] |
| B2.1.33 81 26.175_R | HDPE Pipe, Shuttering, Steel Fixing & Conc. Cast(Rem) | 2d | 2026-10-07 | 2026-10-08 | B2.1.33 81 26.174_R SS, B2.1.33 81 26.175 | Labor [28.07 h]; Laboratory Officer [14.03 h]; Carpenter [14.03 h]; Steelfixer [14.03 h]; Mason [14.03 h]; Surveyor [14.03 h]; Surveyor Helper [14.03 h]; (6*50mm) HDPE ducts [113.24] |
| B2.1.33 81 26.177_R | Excavation(Rem) | 2d | 2026-10-07 | 2026-10-08 | B2.1.33 81 26.174_R SS, B2.1.33 81 26.177 | Labor [9.36 h]; Foreman [4.68 h]; Operator [9.36 h]; Surveyor [4.68 h]; Surveyor Helper [4.68 h]; Excavator (With Bucket) [4.8 h]; Water Tanker [4.8 h]; Dump Truck [4.8 h]; Plate Compactor [4.8 h]; (6*50mm+2*32mm) HDPE ducts [14.55] |
| B2.1.33 81 26.178_R | HDPE Pipe, Shuttering, Steel Fixing & Conc. Cast(Rem) | 2d | 2026-10-07 | 2026-10-08 | B2.1.33 81 26.177_R SS, B2.1.33 81 26.178 | Labor [28.07 h]; Laboratory Officer [14.03 h]; Carpenter [14.03 h]; Steelfixer [14.03 h]; Mason [14.03 h]; Surveyor [14.03 h]; Surveyor Helper [14.03 h]; (6*50mm+2*32mm) HDPE ducts [43.65] |
| B2.1.33 81 26.180_R | Excavation(Rem) | 2d | 2026-10-07 | 2026-10-08 | B2.1.33 81 26.177_R FF, B2.1.33 81 26.177_R SS, B2.1.33 81 26.180 | Labor [9.36 h]; Foreman [4.68 h]; Operator [9.36 h]; Surveyor [4.68 h]; Surveyor Helper [4.68 h]; Excavator (With Bucket) [4.8 h]; Water Tanker [4.8 h]; Dump Truck [4.8 h]; Plate Compactor [4.8 h]; (6*50mm+4*32mm) HDPE ducts [4.5] |
| B2.1.33 81 26.181_R | HDPE Pipe, Shuttering, Steel Fixing & Conc. Cast(Rem) | 2d | 2026-10-07 | 2026-10-08 | B2.1.33 81 26.180_R SS, B2.1.33 81 26.181 | Labor [28.07 h]; Laboratory Officer [14.03 h]; Carpenter [14.03 h]; Steelfixer [14.03 h]; Mason [14.03 h]; Surveyor [14.03 h]; Surveyor Helper [14.03 h]; (6*50mm+4*32mm) HDPE ducts [13.5] |
| B1.2.32 11 13.01.16_R | Subgrade(Rem) | 5d | 2026-09-20 A | 2026-09-24 A | B1.2.31 23 23.01.16, B1.2.32 11 13.01.16 | Subgrade [375.19]; Labor [10.91 h]; Foreman [5.46 h]; Operator [10.91 h]; Surveyor [5.46 h]; Surveyor Helper [5.46 h]; Grader [5.6 h]; Loader [5.6 h]; Water Tanker [5.6 h]; Dump Truck [5.6 h]; Plate Compactor [5.6 h]; Roller Compactor [5.6 h] |
| B1.2.32 11 23.01.16_R | Aggregate Base Course(Rem) | 1.5d | 2026-10-07 | 2026-10-08 | B1.2.32 11 13.01.16_R SS, B1.2.32 11 23.01.16 | Aggregate base course [535.99]; Labor [23.39 h]; Foreman [11.69 h]; Operator [23.39 h]; Surveyor [11.69 h]; Surveyor Helper [11.69 h]; Grader [12 h]; Loader [12 h]; Water Tanker [12 h]; Dump Truck [12 h]; Plate Compactor [12 h]; Roller Compactor [12 h] |
| B6.33 42 11.01-1.38_R | Embedment & Test(Rem) | 2.55d | 2026-09-16 A | 2026-10-07 | B6.33 42 11.01-1.30_R FF, B6.33 42 11.01-1.38 | Labor [20.29 h]; Foreman [10.14 h]; Plumber Helper [10.14 h]; Plumber [10.14 h]; Operator [20.29 h]; Surveyor [10.14 h]; Surveyor Helper [10.14 h]; Loader [10.41 h]; Water Tanker [10.41 h]; Dump Truck [10.41 h]; Plate Compactor [10.41 h]; Roller Compactor [10.41 h]; 1.51m - 2.5m [4.28] |
| B6.33 42 11.01-1.46_R | Backfilling & Warrning Tape(Rem) | 2.94d | 2026-09-16 A | 2026-10-07 | B6.33 42 11.01-1.38_R SS, B6.33 42 11.01-1.46 | Labor [73.01 h]; Foreman [36.51 h]; Operator [146.02 h]; Surveyor [36.51 h]; Surveyor Helper [36.51 h]; Loader [37.46 h]; Water Tanker [37.46 h]; Dump Truck [37.46 h]; Plate Compactor [37.46 h]; Roller Compactor [37.46 h]; 1.51m - 2.5m [6.17] |
| B6.33 42 11.01-1.30_R | Pipe Laying(Rem) | 3d | 2026-09-26 A | 2026-10-07 | B6.33 42 11.01-1.22, B6.33 42 11.01-1.30 | Labor [9.02 h]; Foreman [4.51 h]; Plumber Helper [4.51 h]; Plumber [4.51 h]; Operator [4.51 h]; Surveyor [4.51 h]; Surveyor Helper [4.51 h]; Mobile Crane [4.63 h]; 1.51m - 2.5m [8.57] |
| B6.33 42 11.01-1.40_R | Embedment & Test(Rem) | 2.84d | 2026-09-16 A | 2026-10-07 | B6.33 42 11.01-1.32_R FF, B6.33 42 11.01-1.40 | Labor [25.19 h]; Foreman [12.59 h]; Plumber Helper [12.59 h]; Plumber [12.59 h]; Operator [25.19 h]; Surveyor [12.59 h]; Surveyor Helper [12.59 h]; Loader [12.92 h]; Water Tanker [12.92 h]; Dump Truck [12.92 h]; Plate Compactor [12.92 h]; Roller Compactor [12.92 h]; 1.51m - 2.5m [7.79] |
| B6.33 42 11.01-1.48_R | Backfilling & Warrning Tape(Rem) | 3.3d | 2026-09-20 A | 2026-10-07 | B6.33 42 11.01-1.40_R SS, B6.33 42 11.01-1.48, B6.33 42 11.01-136_R | Labor [31.49 h]; Foreman [15.74 h]; Operator [62.97 h]; Surveyor [15.74 h]; Surveyor Helper [15.74 h]; Loader [16.15 h]; Water Tanker [16.15 h]; Dump Truck [16.15 h]; Plate Compactor [16.15 h]; Roller Compactor [16.15 h]; 1.51m - 2.5m [3.89] |
| B6.33 42 11.01-1.32_R | Pipe Laying(Rem) | 3d | 2026-09-27 A | 2026-10-07 | B6.33 42 11.01-1.24, B6.33 42 11.01-1.32 | Labor [9.65 h]; Foreman [4.82 h]; Plumber Helper [4.82 h]; Plumber [4.82 h]; Operator [4.82 h]; Surveyor [4.82 h]; Surveyor Helper [4.82 h]; Mobile Crane [4.95 h]; 1.51m - 2.5m [13.42] |
| B6.33 05 39.01.4257_R | Test, Internal Finishing, Benching & Cover(Rem) | 3d | 2026-09-22 A | 2026-09-26 A | B6.33 05 39.01.4247, B6.33 05 39.01.4257 | Labor [1.87 h]; Foreman [0.94 h]; Plumber Helper [0.94 h]; Plumber [0.94 h]; Mason [0.94 h]; Storm MH depth 2.51 - 3.5m [0.01] |
| B6.33 05 39.01.4267_R | Backfilling(Rem) | 6d | 2026-09-27 A | 2026-10-04 A | B6.33 05 39.01.4257_R SS, B6.33 05 39.01.3517_R SS, B6.33 05 39.01.4267, B6.33 42 11.36-189_R | Labor [2.34 h]; Foreman [1.17 h]; Operator [2.34 h]; Surveyor [1.17 h]; Surveyor Helper [1.17 h]; Loader [1.2 h]; Water Tanker [1.2 h]; Dump Truck [1.2 h]; Plate Compactor [1.2 h]; Storm MH depth 2.51 - 3.5m [0.03] |
| B6.33 05 40.01.640_R | Backfilling, DI Frame & Grate Cover Fixing(Rem) | 3d | 2026-09-27 A | 2026-09-30 A | B6.33 42 11.36-1103_R SS, B6.33 42 11.35-130_R SS, B6.33 05 40.01.640 | Labor [7.02 h]; Foreman [3.51 h]; Operator [7.02 h]; Surveyor [3.51 h]; Surveyor Helper [3.51 h]; Loader [3.6 h]; Water Tanker [3.6 h]; Dump Truck [3.6 h]; Plate Compactor [3.6 h]; Single Catch basin [0.54] |
| B6.33 05 40.01.630_R | Catch Basin Installation(Rem) | 3d | 2026-09-29 A | 2026-10-03 A | B6.33 05 40.01.620, B6.33 05 40.01.630 | Labor [4.21 h]; Foreman [2.1 h]; Carpenter [2.1 h]; Steelfixer [2.1 h]; Mason [2.1 h]; Operator [4.21 h]; Surveyor [2.1 h]; Surveyor Helper [2.1 h]; Boom Truck [2.16 h]; Single Catch basin [0.8] |
| B6.33 42 11.35-118_R | Catch Basin Opening Prep.(Rem) | 3d | 2026-09-21 A | 2026-09-24 A | B6.33 05 40.01.630_R SS, B6.33 42 11.35-118 | Labor [10.29 h]; Foreman [5.15 h]; Plumber Helper [5.15 h]; Plumber [5.15 h]; less than 1.5 [15.38] |
| B6.33 42 11.35-130_R | Fittings & Pipe Installation(Rem) | 3d | 2026-09-27 A | 2026-09-30 A | B6.33 42 11.35-118_R SS, B6.33 42 11.35-1.2_R SS, B6.33 42 11.35-130 | Labor [10.29 h]; Foreman [5.15 h]; Plumber Helper [5.15 h]; Plumber [5.15 h]; Surveyor [5.15 h]; Surveyor Helper [5.15 h]; less than 1.5 [61.53] |
| B6.33 42 11.36-1103_R | Fittings & Pipe Installation(Rem) | 3d | 2026-09-21 A | 2026-09-26 A | B6.33 42 11.36-191_R SS, B6.33 42 11.36-1103 | Labor [10.29 h]; Foreman [5.15 h]; Plumber Helper [5.15 h]; Plumber [5.15 h]; Surveyor [5.15 h]; Surveyor Helper [5.15 h]; less than 1.5 [61.53] |
| B6.33 42 11.36-191_R | Catch Basin Opening Prep.(Rem) | 3d | 2026-09-21 A | 2026-09-24 A | B6.33 05 40.01.630_R SS, B6.33 42 11.36-191 | Labor [10.29 h]; Foreman [5.15 h]; Plumber Helper [5.15 h]; Plumber [5.15 h]; less than 1.5 [15.38] |
| B5.33 31 00.01.0238_R | Embedment & Test(Rem) | 3.81d | 2026-10-07 | 2026-10-11 | B5.33 31 00.01.0230, B5.33 31 00.01.0238 | Labor [59.5 h]; Foreman [29.75 h]; Plumber Helper [29.75 h]; Plumber [29.75 h]; Operator [59.5 h]; Surveyor [29.75 h]; Surveyor Helper [29.75 h]; Loader [30.53 h]; Water Tanker [30.53 h]; Dump Truck [30.53 h]; Plate Compactor [30.53 h]; Roller Compactor [30.53 h]; Sew Dia. 200mm Depth: 2.51m - 3.5m [59.18] |
| B5.33 31 00.01.0240_R | Embedment & Test(Rem) | 3.82d | 2026-10-07 | 2026-10-11 | B3.33 14 19.01.103 FF, B5.33 31 00.01.0232, B5.33 31 00.01.0240 | Labor [59.61 h]; Foreman [29.81 h]; Plumber Helper [29.81 h]; Plumber [29.81 h]; Operator [59.61 h]; Surveyor [29.81 h]; Surveyor Helper [29.81 h]; Loader [30.58 h]; Water Tanker [30.58 h]; Dump Truck [30.58 h]; Plate Compactor [30.58 h]; Roller Compactor [30.58 h]; Sew Dia. 200mm Depth: 3.51m - 4.5m [79.91] |
| B6.33 05 39.01.1757_R | Test, Internal Finishing, Benching & Cover(Rem) | 2.18d | 2026-10-03 A | 2026-10-08 | B6.33 05 39.01.1747, B6.33 05 39.01.1757, B6.33 05 39.01.1707_R | Labor [33.93 h]; Foreman [16.96 h]; Plumber Helper [16.96 h]; Plumber [16.96 h]; Mason [16.96 h]; MH depth 1.51 - 2.5m [0.3] |
| B6.33 05 39.01.1857_R | Test, Internal Finishing, Benching & Cover(Rem) | 2.18d | 2026-10-05 A | 2026-10-08 | B6.33 05 39.01.1847, B6.33 05 39.01.1857, B6.33 05 39.01.1757_R | Labor [33.93 h]; Foreman [16.96 h]; Plumber Helper [16.96 h]; Plumber [16.96 h]; Mason [16.96 h]; MH depth 3.51 -4.5m [0.56] |
| B3.33 14 13.01.01107_R | Backfilling & Warrning Tape(Rem) | 2d | 2026-09-17 A | 2026-09-20 A | B3.33 14 13.01.01103_R SS, B3.33 14 13-11107_R SS, B3.33 14 13-11109_R SS, B3.33 14 13.01.01107 | Labor [15.59 h]; Foreman [7.8 h]; Operator [31.18 h]; Surveyor [7.8 h]; Surveyor Helper [7.8 h]; Loader [8 h]; Water Tanker [8 h]; Dump Truck [8 h]; Plate Compactor [8 h]; Roller Compactor [8 h]; Depth: 0.0m - 1.5m [15.57] |
| B3.33 14 13.01.0199_R | Pipe Laying(Rem) | 3d | 2026-09-20 A | 2026-09-22 A | B3.33 14 13.01.0195, B3.33 14 13.01.0199 | Labor [6.24 h]; Foreman [3.12 h]; Plumber Helper [3.12 h]; Plumber [3.12 h]; Operator [3.12 h]; Surveyor [3.12 h]; Surveyor Helper [3.12 h]; Mobile Crane [3.2 h]; Depth: 0.0m - 1.5m [70.09] |
| B3.33 14 13.01.01103_R | Embedment & Test(Rem) | 3d | 2026-09-24 A | 2026-09-26 A | B3.33 14 19.01.118, B3.33 14 13.01.0199_R FF, B3.33 14 13.01.01103 | Labor [12.47 h]; Foreman [6.24 h]; Plumber Helper [6.24 h]; Plumber [6.24 h]; Operator [12.47 h]; Surveyor [6.24 h]; Surveyor Helper [6.24 h]; Loader [6.4 h]; Water Tanker [6.4 h]; Dump Truck [6.4 h]; Plate Compactor [6.4 h]; Roller Compactor [6.4 h]; Depth: 0.0m - 1.5m [31.15] |
| B3.33 14 13.01.01101_R | Pipe Laying(Rem) | 3d | 2026-10-07 | 2026-10-10 | B3.33 14 13.01.0197, B3.33 14 13.01.01101 | Labor [6.24 h]; Foreman [3.12 h]; Plumber Helper [3.12 h]; Plumber [3.12 h]; Operator [3.12 h]; Surveyor [3.12 h]; Surveyor Helper [3.12 h]; Mobile Crane [3.2 h]; Depth: 1.51m - 2.5m |
| B3.33 14 13.01.01105_R | Embedment & Test(Rem) | 3d | 2026-10-07 | 2026-10-10 | B3.33 14 19.01.118, B3.33 14 13.01.01101_R FF, B3.33 14 13.01.01105 | Labor [12.47 h]; Foreman [6.24 h]; Plumber Helper [6.24 h]; Plumber [6.24 h]; Operator [12.47 h]; Surveyor [6.24 h]; Surveyor Helper [6.24 h]; Loader [6.4 h]; Water Tanker [6.4 h]; Dump Truck [6.4 h]; Plate Compactor [6.4 h]; Roller Compactor [6.4 h]; Depth: 1.51m - 2.5m |
| B3.33 14 13.01.01109_R | Backfilling & Warrning Tape(Rem) | 2d | 2026-10-07 | 2026-10-08 | B3.33 14 13.01.01105_R SS, B3.33 14 13.01.01107_R FF, B3.33 14 13.01.01109 | Labor [15.59 h]; Foreman [7.8 h]; Operator [31.18 h]; Surveyor [7.8 h]; Surveyor Helper [7.8 h]; Loader [8 h]; Water Tanker [8 h]; Dump Truck [8 h]; Plate Compactor [8 h]; Roller Compactor [8 h]; Depth: 1.51m - 2.5m |
| B3.33 05 63.01.25_R | Foundations(Rem) | 2.12d | 2026-10-12 | 2026-10-14 | B3.33 05 63.01.27_R SS, B3.33 05 63.01.25 | Labor [17.54 h]; Foreman [8.77 h]; Laboratory Officer [8.77 h]; Carpenter [8.77 h]; Steelfixer [8.77 h]; Mason [8.77 h]; POT Wash out valve Dia. 100 mm on pipes with Dia. 110-400 mm [0.13]; Wash out valve chamber; on 110-400 mm Dia. pipeline [0.13] |
| B3.33 05 63.01.26_R | Chamber Curing, Finishing & Steel Cover(Rem) | 2.5d | 2026-10-12 | 2026-10-14 | B3.33 05 63.01.28_R SS, B3.33 05 63.01.26 | Labor [23.39 h]; Mason [11.69 h]; POT Wash out valve Dia. 100 mm on pipes with Dia. 110-400 mm [0.1]; Wash out valve chamber; on 110-400 mm Dia. pipeline [0.1] |
| B3.33 05 63.01.27_R | Land Adjustment & Compaction(Rem) | 3d | 2026-10-12 | 2026-10-14 | B3.33 14 13.02.31 FF, B3.33 05 63.01.27 | Labor [11.69 h]; Foreman [5.85 h]; Operator [23.39 h]; Surveyor [5.85 h]; Surveyor Helper [5.85 h]; Excavator (With Bucket) [6 h]; Water Tanker [6 h]; Dump Truck [6 h]; Plate Compactor [6 h]; POT Wash out valve Dia. 100 mm on pipes with Dia. 110-400 mm [0.1]; Wash out valve chamber; on 110-400 mm Dia. pipeline [0.1] |
| B3.33 05 63.01.28_R | Chambers Walls Conc Cast In Situ(Rem) | 2.12d | 2026-10-12 | 2026-10-14 | B3.33 05 63.01.25_R SS, B3.33 05 63.01.28 | Labor [17.54 h]; Foreman [8.77 h]; Laboratory Officer [8.77 h]; Carpenter [8.77 h]; Steelfixer [8.77 h]; Mason [8.77 h]; POT Wash out valve Dia. 100 mm on pipes with Dia. 110-400 mm [0.13]; Wash out valve chamber; on 110-400 mm Dia. pipeline [0.13] |
| B3.33 14 19.01.134_R | Burried Isolation Valve Installation(Rem) | 4d | 2026-11-11 | 2026-11-15 | B3.33 05 63.01.44 FF, B3.1. 33 14 13..9, B3.1. 33 14 13..11, B3.33 14 19.01.134 | Labor [11.69 h]; Plumber Helper [5.85 h]; Plumber [5.85 h]; Operator [11.69 h]; Boom Truck [6 h]; FF Gate V dia 250 mm [0.7] |
| B3.33 05 63.02.80_R | Foundations(Rem) | 3.5d | 2026-10-07 | 2026-10-11 | B3.33 05 63.02.82_R SS, B3.33 05 63.02.80 | Labor [23.39 h]; Foreman [11.69 h]; Laboratory Officer [11.69 h]; Carpenter [11.69 h]; Steelfixer [11.69 h]; Mason [11.69 h]; FF Air valve Dia. 50 mm on pipes with Dia. less than 315 mm [0.09]; FF Air valve chamber; on less than 315 mm Dia. pipeline [0.12] |
| B3.33 05 63.02.81_R | Chamber Curing, Finishing & Steel Cover(Rem) | 4d | 2026-10-07 | 2026-10-11 | B3.33 05 63.02.83_R SS, B3.33 05 63.02.81 | Labor [31.18 h]; Mason [15.59 h]; FF Air valve Dia. 50 mm on pipes with Dia. less than 315 mm [0.12]; FF Air valve chamber; on less than 315 mm Dia. pipeline [0.09] |
| B3.33 05 63.02.82_R | Land Adjustment & Compaction(Rem) | 3d | 2026-10-07 | 2026-10-10 | B3.1. 33 14 13..15, B3.1. 33 14 13..13, B3.33 05 63.02.82 | Labor [15.59 h]; Foreman [7.8 h]; Operator [31.18 h]; Surveyor [7.8 h]; Surveyor Helper [7.8 h]; Excavator (With Bucket) [8 h]; Water Tanker [8 h]; Dump Truck [8 h]; Plate Compactor [8 h]; FF Air valve Dia. 50 mm on pipes with Dia. less than 315 mm [0.09]; FF Air valve chamber; on less than 315 mm Dia. pipeline [0.09] |
| B3.33 05 63.02.83_R | Chambers Walls Conc Cast In Situ(Rem) | 3.5d | 2026-10-07 | 2026-10-11 | B3.33 05 63.02.80_R SS, B3.33 05 63.02.83 | Labor [23.39 h]; Foreman [11.69 h]; Laboratory Officer [11.69 h]; Carpenter [11.69 h]; Steelfixer [11.69 h]; Mason [11.69 h]; FF Air valve Dia. 50 mm on pipes with Dia. less than 315 mm [0.12]; FF Air valve chamber; on less than 315 mm Dia. pipeline [0.12] |
| B3.33 05 63.01.60_R | Foundations(Rem) | 3.5d | 2026-10-07 | 2026-10-11 | B3.33 05 63.01.62_R SS, B3.33 05 63.01.60 | Labor [23.39 h]; Foreman [11.69 h]; Laboratory Officer [11.69 h]; Carpenter [11.69 h]; Steelfixer [11.69 h]; Mason [11.69 h]; FF Wash out valve Dia. 100 mm on pipes with Dia. 110-400 mm [0.1]; FF Wash out valve chamber; on 110-400 mm Dia. pipeline [0.13] |
| B3.33 05 63.01.61_R | Chamber Curing, Finishing & Steel Cover(Rem) | 4d | 2026-10-07 | 2026-10-11 | B3.33 05 63.01.63_R SS, B3.33 05 63.01.61 | Labor [31.18 h]; Mason [15.59 h]; FF Wash out valve Dia. 100 mm on pipes with Dia. 110-400 mm [0.13]; FF Wash out valve chamber; on 110-400 mm Dia. pipeline [0.1] |
| B3.33 05 63.01.62_R | Land Adjustment & Compaction(Rem) | 3d | 2026-10-07 | 2026-10-10 | B3.1. 33 14 13..15, B3.1. 33 14 13..13, B3.33 05 63.01.62 | Labor [15.59 h]; Foreman [7.8 h]; Operator [31.18 h]; Surveyor [7.8 h]; Surveyor Helper [7.8 h]; Excavator (With Bucket) [8 h]; Water Tanker [8 h]; Dump Truck [8 h]; Plate Compactor [8 h]; FF Wash out valve Dia. 100 mm on pipes with Dia. 110-400 mm [0.1]; FF Wash out valve chamber; on 110-400 mm Dia. pipeline [0.1] |
| B3.33 05 63.01.63_R | Chambers Walls Conc Cast In Situ(Rem) | 3.5d | 2026-10-07 | 2026-10-11 | B3.33 05 63.01.60_R SS, B3.33 05 63.01.63 | Labor [23.39 h]; Foreman [11.69 h]; Laboratory Officer [11.69 h]; Carpenter [11.69 h]; Steelfixer [11.69 h]; Mason [11.69 h]; FF Wash out valve Dia. 100 mm on pipes with Dia. 110-400 mm [0.13]; FF Wash out valve chamber; on 110-400 mm Dia. pipeline [0.13] |
| B3.33 14 19.01.fh46_R | Firehydrant Fixing/Installation(Rem) | 4.97d | 2026-10-07 | 2026-10-12 | B3.33 14 19.01.fh47_R SS, B3.33 14 19.01.fh46 | Labor [46.31 h]; Foreman [23.15 h]; Plumber Helper [23.15 h]; Plumber [23.15 h]; Operator [46.31 h]; Surveyor [23.15 h]; Surveyor Helper [23.15 h]; JCB [23.76 h]; 3-outlet fire hydrant (2 x 2.5 inch and 1 x 4.5 inch) in the form of a separate dry vacuum cylinder [4.43] |
| B3.33 14 19.01.fh47_R | Riser Pipe & Flanged Fittings Installation(Rem) | 3.98d | 2026-10-07 | 2026-10-11 | B3.1. 33 14 13..11, B3.1. 33 14 13..9, B3.33 14 19.01.fh47 | Labor [30.87 h]; Plumber Helper [15.44 h]; Welder [15.44 h]; Plumber [15.44 h]; Surveyor [15.44 h]; Surveyor Helper [15.44 h]; Welding Machine [15.84 h]; 3-outlet fire hydrant (2 x 2.5 inch and 1 x 4.5 inch) in the form of a separate dry vacuum cylinder [1.48] |
| B3.33 14 19.01.fh48_R | Backfilling & Compaction(Rem) | 6.95d | 2026-11-12 | 2026-11-19 | B3.33 14 19.01.135 FF, B3.33 14 19.01.129 FF, B3.33 14 19.01.fh5, B3.33 14 19.01.fh46_R SS, B3.33 14 19.01.fh48 | Labor [77.18 h]; Foreman [38.59 h]; Operator [77.18 h]; Surveyor [38.59 h]; Surveyor Helper [38.59 h]; Loader [39.6 h]; Water Tanker [39.6 h]; Dump Truck [39.6 h]; Plate Compactor [39.6 h]; 3-outlet fire hydrant (2 x 2.5 inch and 1 x 4.5 inch) in the form of a separate dry vacuum cylinder [1.48] |
| B1.2.32 11 13.01.17_R | Subgrade(Rem) | 1.05d | 2026-09-19 A | 2026-09-22 A | B1.2.31 23 23.01.17, B1.2.32 11 13.01.17 | Subgrade [409.84]; Labor [16.37 h]; Foreman [8.19 h]; Operator [16.37 h]; Surveyor [8.19 h]; Surveyor Helper [8.19 h]; Grader [8.4 h]; Loader [8.4 h]; Water Tanker [8.4 h]; Dump Truck [8.4 h]; Plate Compactor [8.4 h]; Roller Compactor [8.4 h] |
| B1.2.32 11 23.01.17_R | Aggregate Base Course(Rem) | 1.3d | 2026-10-07 | 2026-10-08 | B1.2.32 11 13.01.17_R SS, B1.2.32 11 23.01.17 | Aggregate base course [507.43]; Labor [20.27 h]; Foreman [10.14 h]; Operator [20.27 h]; Surveyor [10.14 h]; Surveyor Helper [10.14 h]; Grader [10.4 h]; Loader [10.4 h]; Water Tanker [10.4 h]; Dump Truck [10.4 h]; Plate Compactor [10.4 h]; Roller Compactor [10.4 h] |

Changed:

| ID | Task | Start | Finish | Duration | Complete | Total float | Predecessors | Other |
| --- | --- | --- | --- | --- | --- | --- | --- | --- |
| Milstones | **Milestones** |  | 2027-01-29 → 2027-02-15 (+17d) |  |  |  |  |  |
| Cont. Milstones | **Contractual Milestones** |  | 2027-01-29 → 2027-02-15 (+17d) |  |  |  |  |  |
| DMM-Mil-4 | Engineering - Finish | 2026-10-05 → 2026-10-25 (+20d) | 2026-10-05 → 2026-10-25 (+20d) |  |  | 8d → 9.32d |  |  |
| DMM-Mil-2 | Medium Voltage Network - Finish | 2026-11-08 → 2026-12-05 (+27d) | 2026-11-08 → 2026-12-05 (+27d) |  |  | 71d → 62.91d | B2.33 71 00.297 FF, B2.33 71 00.295 FF, B2.33 71 00.293 FF, B2.33 71 00.289 FF, B2.33 71 00.291 FF, B2.33 71 00 02 45 FF, B2.33 71 00.287 FF, B2.33 71 00.285 FF, B2.33 71 00.213 FF, B2.33 71 00.021 FF, B1.2.31 23 16.01.16, B2 33 73 00.01.19 → B2.33 71 00.297 FF, B2.33 71 00.295 FF, B2.33 71 00.293 FF, B2.33 71 00.289 FF, B2.33 71 00.291 FF, B2.33 71 00 02 45 FF, B2.33 71 00.287 FF, B2.33 71 00.285 FF, B2.33 71 00.213 FF, B2.33 71 00.021_R FF, B1.2.31 23 16.01.16, B2 33 73 00.01.19 |  |
| DMM-Mil-3 | Road Works & Asphalt - Finish | 2026-11-22 → 2026-12-12 (+20d) | 2026-11-22 → 2026-12-12 (+20d) |  |  | 25d → 23.32d | B1.2.32 11 26.01.1 FF, B1.2.32 11 26.01.10 FF, B1.2.32 11 26.01.11 FF, B1.2.32 11 26.01.12 FF, B1.2.32 11 26.01.13 FF, B1.2.32 11 26.01.14 FF, B1.2.32 11 26.01.15 FF, B1.2.32 11 26.01.16 FF, B1.2.32 11 26.01.17 FF, B1.2.32 11 26.01.2 FF, B1.2.32 11 26.01.3 FF, B1.2.32 11 26.01.4 FF, B1.2.32 11 26.01.5 FF, B1.2.32 11 26.01.6 FF, B1.2.32 11 26.01.7 FF, B1.2.32 11 26.01.8 FF, B1.2.32 11 26.01.9 FF, DMM-Mil-48 FF → B1.2.32 11 26.01.1_R FF, B1.2.32 11 26.01.10_R FF, B1.2.32 11 26.01.11_R FF, B1.2.32 11 26.01.12_R FF, B1.2.32 11 26.01.13_R FF, B1.2.32 11 26.01.14_R FF, B1.2.32 11 26.01.15 FF, B1.2.32 11 26.01.16 FF, B1.2.32 11 26.01.17 FF, B1.2.32 11 26.01.2_R FF, B1.2.32 11 26.01.3 FF, B1.2.32 11 26.01.4 FF, B1.2.32 11 26.01.5 FF, B1.2.32 11 26.01.6 FF, B1.2.32 11 26.01.7_R FF, B1.2.32 11 26.01.8_R FF, B1.2.32 11 26.01.9 FF, DMM-Mil-48 FF |  |
| DMM-Mil-28 | Project Commencement Finish | 2027-01-29 → 2027-02-15 (+17d) | 2027-01-29 → 2027-02-15 (+17d) |  |  |  | Clsout.13.2.1.11 FF, DMM-Mil-5 FF, DMM-Mil-10 FF, DMM-Mil-7 FF, DMM-Mil-11 FF, DMM-Mil-8 FF, DMM-Mil-6 FF, DMM-Mil-12 FF, DMM-Mil-9 FF, DMM-Mil-17 FF, DMM-Mil-18 FF, DMM-Mil-15 FF, DMM-Mil-16 FF, DMM-Mil-13 FF, DMM-Mil-14 FF, DMM2-Mob-44 FF, DMM-Mil-2 FF → Clsout.13.2.1.11 FF, DMM-Mil-5 FF, DMM-Mil-10 FF, DMM-Mil-7 FF, DMM-Mil-11 FF, DMM-Mil-8 FF, DMM-Mil-6 FF, DMM-Mil-12 FF, DMM-Mil-9 FF, DMM-Mil-17 FF, DMM-Mil-18 FF, DMM-Mil-15 FF, DMM-Mil-16 FF, DMM-Mil-13 FF, DMM-Mil-14 FF, DMM-Mil-2 FF |  |
| Control | **Control Milestones** | 2026-10-21 → 2026-11-10 (+20d) | 2026-11-30 → 2026-12-19 (+19d) |  |  |  |  |  |
| Networks Milstones | **Networks & Stations** | 2026-10-24 → 2026-11-22 (+29d) | 2026-11-30 → 2026-12-16 (+16d) |  |  |  |  |  |
| DMM-Mil-5 | Sewerage Network - Finish | 2026-10-24 → 2026-11-22 (+29d) | 2026-10-24 → 2026-11-22 (+29d) |  |  | 84d → 74.1d | B6.33 05 39.01.817 FF, B6.33 05 39.01.1017 FF, B5.33 31 00.01.0248 FF, B3.33 14 19.01.33, B5.33 05 63.015 FF → B6.33 05 39.01.817_R FF, B6.33 05 39.01.1017 FF, B5.33 31 00.01.0248 FF, B3.33 14 19.01.33, B5.33 05 13.054_R, B6.33 05 39.01.1857_R |  |
| DMM-Mil-6 | Storm Water Network - Finish | 2026-11-30 → 2026-12-01 (+1d) | 2026-11-30 → 2026-12-01 (+1d) |  |  | 13d → 21.72d |  |  |
| DMM-Mil-7 | Potable Water Network - Finish | 2026-11-12 → 2026-12-02 (+20d) | 2026-11-12 → 2026-12-02 (+20d) |  |  | 67d → 64.32d | B3.33 14 19.01.fm18 FF, B3.33 05 63.02.34 FF, B3.33 14 13-10107 FF, B3.33 14 13.02.013, B3.33 14 19.01.109 → B3.33 14 19.01.fm18 FF, B3.33 05 63.02.34 FF, B3.33 14 13-10107_R FF, B3.33 14 13.02.013, B3.33 14 19.01.109 |  |
| DMM-Mil-10 | Low Voltage Network - Finish | 2026-11-16 → 2026-12-05 (+19d) | 2026-11-16 → 2026-12-05 (+19d) |  |  | 64d → 62.32d |  |  |
| DMM-Mil-8 | TSE Network - Finish | 2026-11-17 → 2026-12-09 (+22d) | 2026-11-17 → 2026-12-09 (+22d) |  |  | 63d → 58.32d |  |  |
| DMM-Mil-9 | Telecommunication Network - Finish | 2026-11-28 → 2026-12-10 (+12d) | 2026-11-28 → 2026-12-10 (+12d) |  |  | 54.88d → 57.32d |  |  |
| DMM-Mil-18 | Sewage Lift Station - Finish | 2026-11-22 → 2026-12-12 (+20d) | 2026-11-22 → 2026-12-12 (+20d) |  |  | 34d → 31.32d |  |  |
| DMM-Mil-48 | Bituminous concrete Wearing Course - Finish | 2026-11-22 → 2026-12-12 (+20d) | 2026-11-22 → 2026-12-12 (+20d) |  |  | 0d → 1.32d |  |  |
| DMM-Mil-11 | Fire Fighting Network - Finish | 2026-11-25 → 2026-12-15 (+20d) | 2026-11-25 → 2026-12-15 (+20d) |  |  | 56d → 53.32d | B3.33 14 19.01.fm51 FF, B3.33 05 63.02.59, B3.33 14 19.01.fh21, B3.33 05 63.01.59 FF, B3.33 14 19.01.fh30 FF, B3.33 05 63.02.49 FF, B3.33 14 19.01.fh39, B3.33 05 63.02.69 → B3.33 14 19.01.fm51 FF, B3.33 05 63.02.59, B3.33 14 19.01.fh21_R, B3.33 05 63.01.59_R FF, B3.33 14 19.01.fh30 FF, B3.33 05 63.02.49 FF, B3.33 14 19.01.fh39, B3.33 05 63.02.69 |  |
| DMM-Mil-12 | Street Lighting Network - Finish | 2026-11-25 → 2026-12-16 (+21d) | 2026-11-25 → 2026-12-16 (+21d) |  |  | 56d → 52.91d | B2.33 71 26 045 FF, B2.33 71 26 034 FF, B2.33 71 26 033 FF, B2.33 71 26 032 FF, B2.33 71 26 031 FF, B2.33 71 26 03 FF, B2.33 71 19 43, B2.33 71 26 044, B2.33 71 19 31 → B2.33 71 26 045 FF, B2.33 71 26 034 FF, B2.33 71 26 033 FF, B2.33 71 26 032 FF, B2.33 71 26 031 FF, B2.33 71 26 03 FF, B2.33 71 19 43, B2.33 71 26 044, B2.33 71 19 31, B2.33 71 16.58 FF, B2.33 71 19 172 FF |  |
| DMM-Mil-17 | Potable Water Pump Station - Finish | 2026-11-26 → 2026-12-16 (+20d) | 2026-11-26 → 2026-12-16 (+20d) |  |  | 3d → 1.32d |  |  |
| Zonewise | **Zonewise Milestones** | 2026-10-21 → 2026-11-10 (+20d) | 2026-11-29 → 2026-12-19 (+20d) |  |  |  |  |  |
| DMM-Mil-13 | Zone 01 - Finish | 2026-10-21 → 2026-11-10 (+20d) | 2026-10-21 → 2026-11-10 (+20d) |  |  | 41d → 50.32d |  |  |
| DMM-Mil-15 | Zone 03 - Finish | 2026-11-22 → 2026-12-12 (+20d) | 2026-11-22 → 2026-12-12 (+20d) |  |  | 59d → 56.32d |  |  |
| DMM-Mil-14 | Zone 02 - Finish | 2026-11-29 → 2026-12-17 (+18d) | 2026-11-29 → 2026-12-17 (+18d) |  |  | 36.76d → 35d |  |  |
| DMM-Mil-16 | Zone 04 - Finish | 2026-11-29 → 2026-12-19 (+20d) | 2026-11-29 → 2026-12-19 (+20d) |  |  | 53d → 50.91d |  |  |
| 2 | **Mobilization** |  | 2027-01-29 → 2026-09-15 (-136d) |  |  |  |  |  |
| Site | **Site Facilities and Offices** |  | 2027-01-29 → 2026-09-15 (-136d) |  |  |  |  |  |
| DMM2-Mob-44 | Level of Effort (Indirect Resources) (Completed) |  | 2027-01-29 → 2026-09-15 A (-136d) | 454d → 338d | 74% → 100% | 0d → none |  | was named Level of Effort (Indirect Resources) |
| Eng | **Engineering** |  | 2026-10-05 → 2026-10-25 (+20d) |  |  |  |  |  |
| Prequalification | **Prequalifications & Materials Submissions** |  | 2026-10-05 → 2026-10-25 (+20d) |  |  |  |  |  |
| Prequal Submit | **Submittals** |  | 2026-09-22 → 2026-10-13 (+21d) |  |  |  |  |  |
| SDS | **Wet Networks & Stations** |  | 2026-09-19 → 2026-10-10 (+21d) |  |  |  |  |  |
| DMM2-Eng-PQ-081 | Prepare & Submit for Solenoid Primary Control Valves Materials |  |  | 2.25d → 3d |  |  |  |  |
| DMM2-Eng-PQ-1648 | Prepare & Submit for Dripper Materials |  |  | 2.25d → 3d |  |  |  |  |
| DMM2-Eng-PQ-1658 | Prepare & Submit for Bubbler Materials |  |  | 2.25d → 3d |  |  |  |  |
| DMM2-Eng-PQ-1668 | Prepare & Submit for Pull Box Materials |  |  | 2.25d → 3d |  |  |  |  |
| DMM2-Eng-PQ-1678 | Prepare & Submit for Two wire decoder cable 12 awg Materials |  |  | 2.25d → 3d |  |  |  |  |
| Pot Pump St. | **Potable Water Pump Station** |  | 2026-09-19 → 2026-10-10 (+21d) |  |  |  |  |  |
| 3 | **Mechanical** |  | 2026-09-19 → 2026-10-10 (+21d) |  |  |  |  |  |
| DMM2-Eng-PQ-0127 | Prepare & Submit for Hose Bibb Materials | 2026-09-16 → 2026-10-07 (+21d) | 2026-09-19 → 2026-10-10 (+21d) |  |  | 17d → 15.32d |  |  |
| Guard Room | **Guard Rooms** |  | 2026-09-22 → 2026-10-13 (+21d) |  |  |  |  |  |
| GR MAT Mech | **Mechanical** |  | 2026-09-22 → 2026-10-13 (+21d) |  |  |  |  |  |
| DMM2-Eng-PQ-041 | Prepare & Submit for PPR Pipes Materials | 2026-09-16 → 2026-10-07 (+21d) | 2026-09-17 → 2026-10-08 (+21d) |  |  | 16d → 17.32d |  |  |
| DMM2-Eng-PQ-044 | Prepare & Submit for Clean out Materials | 2026-09-16 → 2026-10-07 (+21d) | 2026-09-17 → 2026-10-08 (+21d) |  |  | 8d → 8.32d |  |  |
| DMM2-Eng-PQ-046 | Prepare & Submit for Electrical Water Heater Materials | 2026-09-16 → 2026-10-07 (+21d) | 2026-09-17 → 2026-10-08 (+21d) |  |  | 16d → 16.32d |  |  |
| DMM2-Eng-PQ-048 | Prepare & Submit for Shower Materials | 2026-09-16 → 2026-10-07 (+21d) | 2026-09-17 → 2026-10-08 (+21d) |  |  | 12d → 13.32d |  |  |
| DMM2-Eng-PQ-049 | Prepare & Submit for Toilet Materials | 2026-09-19 → 2026-10-10 (+21d) | 2026-09-20 → 2026-10-11 (+21d) |  |  | 12d → 13.32d |  |  |
| DMM2-Eng-PQ-050 | Prepare & Submit for Semi Pedestal Sink Materials | 2026-09-21 → 2026-10-12 (+21d) | 2026-09-22 → 2026-10-13 (+21d) |  |  | 12d → 13.32d |  |  |
| GR MAT Elec | **Electrical** |  | 2026-09-17 → 2026-10-08 (+21d) |  |  |  |  |  |
| DMM2-Eng-PQ-062 | Prepare & Submit for PC Workstation Materials | 2026-09-16 → 2026-10-07 (+21d) | 2026-09-17 → 2026-10-08 (+21d) |  |  | 16d → 17.32d |  |  |
| DMM2-Eng-PQ-063 | Prepare & Submit for 50 inch Screen Materials | 2026-09-16 → 2026-10-07 (+21d) | 2026-09-17 → 2026-10-08 (+21d) |  |  | 16d → 17.32d |  |  |
| Approvals | **Approvals** |  | 2026-10-05 → 2026-10-25 (+20d) |  |  |  |  |  |
| SDS | **Wet Networks & Stations** |  | 2026-09-22 → 2026-10-13 (+21d) |  |  |  |  |  |
| Pot Pump St. | **Potable Water Pump Station** |  | 2026-09-22 → 2026-10-13 (+21d) |  |  |  |  |  |
| 3 | **Mechanical** |  | 2026-09-22 → 2026-10-13 (+21d) |  |  |  |  |  |
| DMM2-Eng-PQ-578 | Review & Approval for Hose Bibb Materials | 2026-09-20 → 2026-10-11 (+21d) | 2026-09-22 → 2026-10-13 (+21d) |  |  | 17d → 15.32d |  |  |
| DMM2-Eng-PQ-688 | Review & Approval for Signages Materials | 2026-09-16 → 2026-09-17 A (+1d) | 2026-09-22 A |  | 0% → 100% | 18d → none |  |  |
| Guard Room | **Guard Rooms** |  | 2026-10-05 → 2026-10-25 (+20d) |  |  |  |  |  |
| GR MAT Mech | **Mechanical** |  | 2026-10-05 → 2026-10-25 (+20d) |  |  |  |  |  |
| DMM2-Eng-PQ-1408 | Review & Approval for DX Wall Mounted Split/AC Materials | 2026-09-19 → 2026-10-10 (+21d) | 2026-09-26 → 2026-10-15 (+19d) |  |  | 16d → 17.32d |  |  |
| DMM2-Eng-PQ-1428 | Review & Approval for Clean out Materials | 2026-09-19 → 2026-10-10 (+21d) | 2026-09-22 → 2026-10-13 (+21d) |  |  | 8d → 8.32d |  |  |
| DMM2-Eng-PQ-1468 | Review & Approval for Shower Materials | 2026-09-19 → 2026-10-10 (+21d) | 2026-09-26 → 2026-10-15 (+19d) |  |  | 16d → 17.32d |  |  |
| DMM2-Eng-PQ-1478 | Review & Approval for Toilet Materials | 2026-09-21 → 2026-10-12 (+21d) | 2026-09-28 → 2026-10-18 (+20d) |  |  | 14d → 15.32d | DMM2-Eng-PQ-049 → DMM2-Eng-PQ-049, DMM2-Eng-MS-378_R |  |
| DMM2-Eng-PQ-1438 | Review & Approval for Floor Drain Materials | 2026-09-24 → 2026-10-14 (+20d) | 2026-09-28 → 2026-10-18 (+20d) |  |  | 8d → 8.32d |  |  |
| DMM2-Eng-PQ-1488 | Review & Approval for Semi Pedestal Sink Materials | 2026-09-24 → 2026-10-14 (+20d) | 2026-09-30 → 2026-10-20 (+20d) |  |  | 12d → 13.32d |  |  |
| DMM2-Eng-PQ-1448 | Review & Approval for Electrical Water Heater Materials | 2026-09-29 → 2026-10-19 (+20d) | 2026-10-05 → 2026-10-25 (+20d) |  |  | 8d → 8.32d |  |  |
| GR MAT Elec | **Electrical** |  | 2026-09-26 → 2026-10-15 (+19d) |  |  |  |  |  |
| DMM2-Eng-PQ-1538 | Review & Approval for Wiring Devices Materials | 2026-09-16 → 2026-10-07 (+21d) | 2026-09-22 → 2026-10-13 (+21d) |  |  | 18d → 19.32d |  |  |
| DMM2-Eng-PQ-1548 | Review & Approval for Ground Wires, Rods, Pits, Clamping Materials | 2026-09-16 → 2026-10-07 (+21d) | 2026-09-22 → 2026-10-13 (+21d) |  |  | 18d → 19.32d |  |  |
| DMM2-Eng-PQ-1578 | Review & Approval for Data and Voice System Materials | 2026-09-16 → 2026-10-07 (+21d) | 2026-09-22 → 2026-10-13 (+21d) |  |  | 18d → 19.32d |  |  |
| DMM2-Eng-PQ-1588 | Review & Approval for Data Cabinet Materials | 2026-09-16 → 2026-10-07 (+21d) | 2026-09-22 → 2026-10-13 (+21d) |  |  | 18d → 19.32d |  |  |

| ID | Task | Start | Finish | Duration | Complete | Total float | Predecessors | Other |
| --- | --- | --- | --- | --- | --- | --- | --- | --- |
| DMM2-Eng-PQ-1598 | Review & Approval for Data/ Voice RJ45 Outlet Materials | 2026-09-16 → 2026-10-07 (+21d) | 2026-09-22 → 2026-10-13 (+21d) |  |  | 18d → 19.32d |  |  |
| DMM2-Eng-PQ-1608 | Review & Approval for PC Workstation Materials | 2026-09-19 → 2026-10-10 (+21d) | 2026-09-26 → 2026-10-15 (+19d) |  |  | 16d → 17.32d |  |  |
| DMM2-Eng-PQ-1618 | Review & Approval for 50 inch Screen Materials | 2026-09-19 → 2026-10-10 (+21d) | 2026-09-26 → 2026-10-15 (+19d) |  |  | 16d → 17.32d |  |  |
| MSs | **Method Statements** |  | 2026-09-16 → 2026-09-26 (+10d) |  |  |  |  |  |
| 2 | **Submittals & Approvals** |  | 2026-09-16 → 2026-09-26 (+10d) |  |  |  |  |  |
| Guard Room | **Guard Rooms** |  | 2026-09-16 → 2026-09-24 (+8d) |  |  |  |  |  |
| 2 | **Electrical** |  | 2026-09-16 → 2026-09-24 (+8d) |  |  |  |  |  |
| DMM2-Eng-MS-378 | Review & Approval (70.11% Completed) |  | 2026-09-16 → 2026-09-15 A (-1d) | 226d → 225d | 70% → 100% | 115d → none |  | was named Review & Approval; resources Eng.Labour [1647.49 h] → Eng.Labour [1155.05 h] |
| SDS | **Wet Networks & Stations** |  | 2026-09-16 → 2026-09-26 (+10d) |  |  |  |  |  |
| DMM2-Eng-MS-158 | Review & Approval |  |  |  |  |  | DMM2-Eng-MS-148, DMM2-Eng-MS-118, DMM2-Eng-MS-378 SS → DMM2-Eng-MS-148, DMM2-Eng-MS-118 |  |
| Pot Pump St. | **Potable Water Pump Station** |  | 2026-09-16 → 2026-09-26 (+10d) |  |  |  |  |  |
| DMM2-Eng-MS-228 | Prepare & Submit (90.63% Completed) |  | 2026-09-16 → 2026-09-15 A (-1d) | 224d → 223d | 91% → 100% | 115d → none |  | was named Prepare & Submit; resources Eng.Labour [1632.91 h] → Eng.Labour [1479.9 h] |
| DMM2-Eng-MS-238 | Review & Approval (90.63% Completed) |  | 2026-09-16 → 2026-09-15 A (-1d) | 223d → 222d | 91% → 100% | 115d → none |  | was named Review & Approval; resources Eng.Labour [1625.62 h] → Eng.Labour [1473.3 h] |
| Sewer Lift St. | **Sewer Lift Station** |  | 2026-09-16 → 2026-09-17 (+1d) |  |  |  |  |  |
| DMM2-Eng-MS-248 | Prepare & Submit (90.63% Completed) |  | 2026-09-16 → 2026-09-15 A (-1d) | 224d → 223d | 91% → 100% | 115d → none |  | was named Prepare & Submit; resources Eng.Labour [1632.91 h] → Eng.Labour [1479.9 h] |
| DMM2-Eng-MS-258 | Review & Approval (90.63% Completed) |  | 2026-09-16 → 2026-09-15 A (-1d) | 223d → 222d | 91% → 100% | 115d → none |  | was named Review & Approval; resources Eng.Labour [1625.62 h] → Eng.Labour [1473.3 h] |
| DMM2-Eng-MS-268 | Prepare & Submit |  |  |  |  |  | DMM2-Eng-MS-248 SS → DMM2-Eng-MS-208 |  |
| DMM2-Eng-MS-298 | Review & Approval |  |  |  |  |  | DMM2-Eng-MS-288, DMM2-Eng-MS-258 SS, DMM2-Eng-MS-238 SS → DMM2-Eng-MS-288 |  |
| Procurement | **Procurement** |  | 2026-12-09 → 2026-12-29 (+20d) |  |  |  |  |  |
| PR & PO | **PR & PO** |  | 2026-10-07 → 2026-10-27 (+20d) |  |  |  |  |  |
| Site Grading | **Earth & Road Works** |  | 2026-10-07 → 2026-10-27 (+20d) |  |  |  |  |  |
| DMM2-Proc-PO-09 | PR & PO for Traffic Signs Materials | 2026-09-16 → 2026-10-07 (+21d) | 2026-09-17 → 2026-10-08 (+21d) |  |  | 20d → 21.32d |  |  |
| DMM2-Proc-PO-07 | PR & PO for Pavement Markings Materials | 2026-09-19 → 2026-10-10 (+21d) | 2026-09-20 → 2026-10-11 (+21d) |  |  | 20d → 21.32d |  |  |
| DMM2-Proc-PO-010 | PR & PO for ground Mounted Information Signs Materials | 2026-10-06 → 2026-10-26 (+20d) | 2026-10-07 → 2026-10-27 (+20d) |  |  | 8d → 9.32d |  |  |
| Wet | **Wet Networks & Stations** |  | 2026-10-03 → 2026-10-22 (+19d) |  |  |  |  |  |
| Sewer | **Sewerage Network** |  | 2026-09-17 → 2026-10-08 (+21d) |  |  |  |  |  |
| DMM2-Proc-PO-019 | PR & PO for Discharge Chamber Materials | 2026-09-16 → 2026-10-07 (+21d) | 2026-09-17 → 2026-10-08 (+21d) |  |  | 92d → 96.32d |  |  |
| Pot Pump St. | **Potable Water Pump Station** |  | 2026-10-03 → 2026-10-22 (+19d) |  |  |  |  |  |
| 1 | **Civil & Architecture** | 2026-09-16 → 2026-10-07 (+21d) | 2026-09-26 → 2026-10-15 (+19d) |  |  |  |  |  |
| DMM2-Proc-PO-030 | PR & PO for Stairs Materials | 2026-09-16 → 2026-10-07 (+21d) | 2026-09-17 → 2026-10-08 (+21d) |  |  | 3d → 1.32d |  |  |
| DMM2-Proc-PO-031 | PR & PO for CMU Walls Materials | 2026-09-16 → 2026-10-07 (+21d) | 2026-09-17 → 2026-10-08 (+21d) |  |  | 17d → 111.32d |  |  |
| DMM2-Proc-PO-035 | PR & PO for Gravel Materials | 2026-09-16 → 2026-10-07 (+21d) | 2026-09-17 → 2026-10-08 (+21d) |  |  | 52d → 50.32d |  |  |
| DMM2-Proc-PO-032 | PR & PO for Stainless Steel Ladder Materials | 2026-09-19 → 2026-10-10 (+21d) | 2026-09-20 → 2026-10-11 (+21d) |  |  | 3d → 1.32d |  |  |
| DMM2-Proc-PO-034 | PR & PO for Metal Railing Materials | 2026-09-21 → 2026-10-12 (+21d) | 2026-09-22 → 2026-10-13 (+21d) |  |  | 3d → 1.32d |  |  |
| DMM2-Proc-PO-036 | PR & PO for Handrail Materials | 2026-09-21 → 2026-10-12 (+21d) | 2026-09-22 → 2026-10-13 (+21d) |  |  | 3d → 1.32d |  |  |
| DMM2-Proc-PO-033 | PR & PO for Steel shutter Door Materials | 2026-09-24 → 2026-10-14 (+20d) | 2026-09-26 → 2026-10-15 (+19d) |  |  | 23d → 21.32d |  |  |
| 3 | **Mechanical** |  | 2026-10-03 → 2026-10-22 (+19d) |  |  |  |  |  |
| DMM2-Proc-PO-042 | PR & PO for Sand Trap Louver Materials | 2026-09-16 → 2026-10-07 (+21d) | 2026-09-17 → 2026-10-08 (+21d) |  |  | 4d → 2.32d |  |  |
| DMM2-Proc-PO-188 | PR & PO for Fans Materials | 2026-09-16 → 2026-10-07 (+21d) | 2026-09-17 → 2026-10-08 (+21d) |  |  | 22d → 20.32d |  |  |
| DMM2-Proc-PO-198 | PR & PO for Louvers Materials | 2026-09-16 → 2026-10-07 (+21d) | 2026-09-17 → 2026-10-08 (+21d) |  |  | 42d → 40.32d |  |  |
| DMM2-Proc-PO-041 | PR & PO for Strainers Materials | 2026-09-19 → 2026-10-10 (+21d) | 2026-09-20 → 2026-10-11 (+21d) |  |  | 4d → 2.32d |  |  |
| DMM2-Proc-PO-045 | PR & PO for Exhaust Fans Materials | 2026-09-21 → 2026-10-12 (+21d) | 2026-09-22 → 2026-10-13 (+21d) |  |  | 4d → 2.32d |  |  |
| DMM2-Proc-PO-050 | PR & PO for Trench Drain Materials | 2026-09-22 → 2026-10-13 (+21d) | 2026-09-24 → 2026-10-14 (+20d) |  |  | 40d → 38.32d | DMM2-Eng-PQ-638, DMM2-Eng-SD-018, DMM2-Proc-PO-168, DMM2-Proc-Delv-2648 → DMM2-Eng-PQ-638, DMM2-Eng-SD-018, DMM2-Proc-PO-168, DMM2-Proc-Delv-2648_R |  |
| DMM2-Proc-PO-044 | PR & PO for Hose Bibb Materials | 2026-09-24 → 2026-10-14 (+20d) | 2026-09-26 → 2026-10-15 (+19d) |  |  | 17d → 15.32d |  |  |
| DMM2-Proc-PO-046 | PR & PO for Chlorine Cylinder Racks Materials | 2026-09-24 → 2026-10-14 (+20d) | 2026-09-26 → 2026-10-15 (+19d) |  |  | 4d → 2.32d |  |  |
| DMM2-Proc-PO-047 | PR & PO for Chlorinators Materials | 2026-09-27 → 2026-10-17 (+20d) | 2026-09-28 → 2026-10-18 (+20d) |  |  | 13d → 11.32d |  |  |
| DMM2-Proc-PO-048 | PR & PO for Discharge Line Analyzer Materials | 2026-09-29 → 2026-10-19 (+20d) | 2026-09-30 → 2026-10-20 (+20d) |  |  | 13d → 11.32d |  |  |
| DMM2-Proc-PO-049 | PR & PO for Emergency shower Materials | 2026-10-01 → 2026-10-21 (+20d) | 2026-10-03 → 2026-10-22 (+19d) |  |  | 17d → 15.32d |  |  |
| 2 | **Electrical** | 2026-09-16 → 2026-10-07 (+21d) | 2026-09-17 → 2026-10-08 (+21d) |  |  |  |  |  |
| DMM2-Proc-PO-051 | PR & PO for Switches and Circuit Breakers Materials | 2026-09-16 → 2026-10-07 (+21d) | 2026-09-17 → 2026-10-08 (+21d) |  |  | 57d → 55.32d |  |  |
| Sewer Lift St. | **Sewer Lift Station** |  | 2026-09-28 → 2026-10-13 (+15d) |  |  |  |  |  |
| 1 | **Civil & Architecture** | 2026-09-16 → 2026-10-07 (+21d) | 2026-09-28 → 2026-10-13 (+15d) |  |  |  |  |  |
| DMM2-Proc-PO-052 | PR & PO for Metal Ladders Materials | 2026-09-16 → 2026-10-07 (+21d) | 2026-09-17 → 2026-10-08 (+21d) |  |  | 21d → 19.32d |  |  |
| DMM2-Proc-PO-054 | PR & PO for Internal painting (Acrylic) Materials | 2026-09-19 → 2026-10-10 (+21d) | 2026-09-20 → 2026-10-11 (+21d) |  |  | 21d → 19.32d |  |  |
| DMM2-Proc-PO-055 | PR & PO for Signages Materials | 2026-09-24 → 2026-10-10 (+16d) | 2026-09-26 → 2026-10-11 (+15d) |  |  | 33d → 35.32d |  |  |
| DMM2-Proc-PO-053 | PR & PO for Metal Covers Materials | 2026-09-27 → 2026-10-12 (+15d) | 2026-09-28 → 2026-10-13 (+15d) |  |  | 34d → 36.32d |  |  |
| 3 | **Mechanical** |  | 2026-09-17 → 2026-10-08 (+21d) |  |  |  |  |  |
| DMM2-Proc-PO-067 | PR & PO for Scupper Materials | 2026-09-16 → 2026-10-07 (+21d) | 2026-09-17 → 2026-10-08 (+21d) |  |  | 27d → 25.32d | DMM2-Eng-PQ-808, DMM2-Eng-SD-020, DMM2-Proc-PO-066 → DMM2-Eng-PQ-808, DMM2-Eng-SD-020, DMM2-Proc-PO-066, DMM2-Eng-MS-258_R |  |
| 2 | **Electrical** |  | 2026-09-17 → 2026-10-08 (+21d) |  |  |  |  |  |
| DMM2-Proc-PO-078 | PR & PO for Surfaced Mounted Light (LED) Materials | 2026-09-16 → 2026-10-07 (+21d) | 2026-09-17 → 2026-10-08 (+21d) |  |  | 33d → 31.32d |  |  |
| Landscape | **Landscape Works** |  | 2026-09-17 → 2026-10-08 (+21d) |  |  |  |  |  |
| DMM2-Proc-PO-0103 | PR & PO for Fences (ZATCA HCIS) Materials | 2026-09-16 → 2026-10-07 (+21d) | 2026-09-17 → 2026-10-08 (+21d) |  |  | 62d → 60.32d |  |  |
| DMM2-Proc-PO-0104 | PR & PO Prepare & Submit for Fences (MODON) Materials | 2026-09-16 → 2026-10-07 (+21d) | 2026-09-17 → 2026-10-08 (+21d) |  |  | 52d → 50.32d |  |  |
| DMM2-Proc-PO-0105 | PR & PO for Vehicle Steel Gate Materials | 2026-09-16 → 2026-10-07 (+21d) | 2026-09-17 → 2026-10-08 (+21d) |  |  | 42d → 40.32d |  |  |
| DMM2-Proc-PO-0106 | PR & PO for Vehicle and Pedestrian Steel Gate Materials | 2026-09-16 → 2026-10-07 (+21d) | 2026-09-17 → 2026-10-08 (+21d) |  |  | 8d → 6.32d |  |  |
| Guard Room | **Guard Rooms** |  | 2026-10-07 → 2026-10-27 (+20d) |  |  |  |  |  |
| GR MAT Civil | **Civil & Architecture** |  | 2026-09-22 → 2026-10-13 (+21d) |  |  |  |  |  |
| DMM2-Proc-PO-0108 | PR & PO for Stone Coping Materials | 2026-09-16 → 2026-10-07 (+21d) | 2026-09-17 → 2026-10-08 (+21d) |  |  | 33d → 31.32d |  |  |
| DMM2-Proc-PO-0114 | PR & PO for Fluid-Applied Water Proofing Paint Materials | 2026-09-16 → 2026-10-07 (+21d) | 2026-09-17 → 2026-10-08 (+21d) |  |  | 44d → 42.32d |  |  |
| DMM2-Proc-PO-0117 | PR & PO for Porcelain Flooring Tiles Materials | 2026-09-16 → 2026-10-07 (+21d) | 2026-09-17 → 2026-10-08 (+21d) |  |  | 3d → 1.32d |  |  |

| ID | Task | Start | Finish | Duration | Complete | Total float | Predecessors | Other |
| --- | --- | --- | --- | --- | --- | --- | --- | --- |
| DMM2-Proc-PO-0118 | PR & PO for gypsum Board Suspended Ceiling Materials | 2026-09-16 → 2026-10-07 (+21d) | 2026-09-17 → 2026-10-08 (+21d) |  |  | 33d → 31.32d |  |  |
| DMM2-Proc-PO-0119 | PR & PO for Painting Materials | 2026-09-16 → 2026-10-07 (+21d) | 2026-09-17 → 2026-10-08 (+21d) |  |  | 21d → 19.32d |  |  |
| DMM2-Proc-PO-0120 | PR & PO for Raised Floor System Materials | 2026-09-16 → 2026-10-07 (+21d) | 2026-09-17 → 2026-10-08 (+21d) |  |  | 46d → 44.32d |  |  |
| DMM2-Proc-PO-0121 | PR & PO for Steel Doors Materials | 2026-09-16 → 2026-10-07 (+21d) | 2026-09-17 → 2026-10-08 (+21d) |  |  | 44d → 42.32d |  |  |
| DMM2-Proc-PO-0122 | PR & PO for Wood Doors Materials | 2026-09-16 → 2026-10-07 (+21d) | 2026-09-17 → 2026-10-08 (+21d) |  |  | 49d → 47.32d |  |  |
| DMM2-Proc-PO-0123 | PR & PO for Aluminum Windows Materials | 2026-09-16 → 2026-10-07 (+21d) | 2026-09-17 → 2026-10-08 (+21d) |  |  | 39d → 37.32d |  |  |
| DMM2-Proc-PO-0111 | PR & PO for Reinforced Concrete Materials | 2026-09-19 → 2026-10-10 (+21d) | 2026-09-20 → 2026-10-11 (+21d) |  |  | 21d → 19.32d |  |  |
| DMM2-Proc-PO-0113 | PR & PO for Board Insulation Materials | 2026-09-21 → 2026-10-12 (+21d) | 2026-09-22 → 2026-10-13 (+21d) |  |  | 21d → 19.32d |  |  |
| GR MAT Mech | **Mechanical** |  | 2026-10-07 → 2026-10-27 (+20d) |  |  |  |  |  |
| DMM2-Proc-PO-0130 | PR & PO for Floor Drain Materials |  |  | 2d → 1.91d |  |  |  |  |
| DMM2-Proc-PO-0124 | PR & PO for Exhaust Axial Fans Materials | 2026-09-16 → 2026-10-07 (+21d) | 2026-09-17 → 2026-10-08 (+21d) |  |  | 36d → 34.32d |  |  |
| DMM2-Proc-PO-0126 | PR & PO for PPR Pipes Materials | 2026-09-16 → 2026-10-07 (+21d) | 2026-09-17 → 2026-10-08 (+21d) |  |  | 13d → 11.32d |  |  |
| DMM2-Proc-PO-0128 | PR & PO for Scupper Materials | 2026-09-16 → 2026-10-07 (+21d) | 2026-09-17 → 2026-10-08 (+21d) |  |  | 17d → 15.32d |  |  |
| DMM2-Proc-PO-0129 | PR & PO for Clean out Materials | 2026-09-24 → 2026-10-14 (+20d) | 2026-09-24 → 2026-10-14 (+20d) |  |  | 16d → 14.32d |  |  |
| DMM2-Proc-PO-0127 | PR & PO for DX Wall Mounted Split/AC Materials | 2026-09-27 → 2026-10-17 (+20d) | 2026-09-28 → 2026-10-18 (+20d) |  |  | 36d → 34.32d |  |  |
| DMM2-Proc-PO-0133 | PR & PO for Shower Materials | 2026-09-27 → 2026-10-17 (+20d) | 2026-09-28 → 2026-10-18 (+20d) |  |  | 40d → 38.32d |  |  |
| DMM2-Proc-PO-0134 | PR & PO for Toilet Materials | 2026-09-29 → 2026-10-19 (+20d) | 2026-09-30 → 2026-10-20 (+20d) |  |  | 35d → 33.32d |  |  |
| DMM2-Proc-PO-0135 | PR & PO for Semi Pedestal Sink Materials | 2026-10-01 → 2026-10-21 (+20d) | 2026-10-03 → 2026-10-22 (+19d) |  |  | 36d → 34.32d |  |  |
| DMM2-Proc-PO-0131 | PR & PO for Electrical Water Heater Materials | 2026-10-06 → 2026-10-26 (+20d) | 2026-10-07 → 2026-10-27 (+20d) |  |  | 10d → 8.32d |  |  |
| GR MAT Elec | **Electrical** |  | 2026-09-28 → 2026-10-18 (+20d) |  |  |  |  |  |
| DMM2-Proc-PO-0137 | PR & PO for Panelboards Materials | 2026-09-16 → 2026-10-07 (+21d) | 2026-09-17 → 2026-10-08 (+21d) |  |  | 38d → 36.32d |  |  |
| DMM2-Proc-PO-0139 | PR & PO for Lighting Materials | 2026-09-16 → 2026-10-07 (+21d) | 2026-09-17 → 2026-10-08 (+21d) |  |  | 33d → 31.32d |  |  |
| DMM2-Proc-PO-0142 | PR & PO for Enclosed Switches and Circuit Breakers Materials | 2026-09-16 → 2026-10-07 (+21d) | 2026-09-17 → 2026-10-08 (+21d) |  |  | 36d → 34.32d |  |  |
| DMM2-Proc-PO-0143 | PR & PO for Fire Alarm System Materials | 2026-09-16 → 2026-10-07 (+21d) | 2026-09-17 → 2026-10-08 (+21d) |  |  | 3d → 1.32d |  |  |
| DMM2-Proc-PO-0140 | PR & PO for Wiring Devices Materials | 2026-09-24 → 2026-10-14 (+20d) | 2026-09-26 → 2026-10-15 (+19d) |  |  | 29d → 27.32d |  |  |
| DMM2-Proc-PO-0145 | PR & PO for Data Cabinet Materials | 2026-09-24 → 2026-10-14 (+20d) | 2026-09-26 → 2026-10-15 (+19d) |  |  | 34d → 32.32d |  |  |
| DMM2-Proc-PO-0146 | PR & PO for Data/ Voice RJ45 Outlet Materials | 2026-09-27 → 2026-10-17 (+20d) | 2026-09-28 → 2026-10-18 (+20d) |  |  | 34d → 32.32d |  |  |
| DMM2-Proc-PO-0147 | PR & PO for PC Workstation Materials | 2026-09-27 → 2026-10-17 (+20d) | 2026-09-28 → 2026-10-18 (+20d) |  |  | 39d → 37.32d |  |  |
| DMM2-Proc-PO-0148 | PR & PO for 50 inch Screen Materials | 2026-09-27 → 2026-10-17 (+20d) | 2026-09-28 → 2026-10-18 (+20d) |  |  | 41d → 39.32d |  |  |
| Mauf. & Delivery | **Manufacturing & Delivery** |  | 2026-12-09 → 2026-12-29 (+20d) |  |  |  |  |  |
| Long Lead | **Long Lead Items** |  | 2026-11-02 → 2026-11-24 (+22d) |  |  |  |  |  |
| Zone 01 | **Zone 01** |  | 2026-10-10 → 2026-11-01 (+22d) |  |  |  |  |  |
| SDS | **Wet Networks & Stations** |  | 2026-10-10 → 2026-11-01 (+22d) |  |  |  |  |  |
| DMM2-Proc-Delv-1888 | Manuf. & Delivery for GRP Pipes Materials |  |  |  |  |  |  | resources Labor [347.6 h]; Operator [347.6 h]; Mobile Crane [160 h]; Sew Dia. 150mm Depth: 1.51m - 2.5m; Sew Dia. 200mm Depth: 1.51m - 2.5m; Sew Dia. 200mm Depth: 2.51m - 3.5m; Sew Dia. 200mm Depth: 3.51m - 4.5m → Labor [347.94 h]; Operator [347.94 h]; Mobile Crane [160 h]; Sew Dia. 150mm Depth: 1.51m - 2.5m; Sew Dia. 200mm Depth: 1.51m - 2.5m; Sew Dia. 200mm Depth: 2.51m - 3.5m; Sew Dia. 200mm Depth: 3.51m - 4.5m |
| DMM2-Proc-Delv-1898 | Manuf. & Delivery for Inlet Manholes Materials |  |  |  |  |  |  | resources Labor [347.6 h]; Operator [347.6 h]; Mobile Crane [160 h]; MH depth 0 - 1.5m; MH depth 1.51 - 2.5m; MH depth 2.51 - 3.5m; MH depth 2.51- 3.5 m with back drop; MH depth 3.51 -4.5m; MH depth 3.51- 4.5 m with back drop → Labor [347.94 h]; Operator [347.94 h]; Mobile Crane [160 h]; MH depth 0 - 1.5m; MH depth 1.51 - 2.5m; MH depth 2.51 - 3.5m; MH depth 2.51- 3.5 m with back drop; MH depth 3.51 -4.5m; MH depth 3.51- 4.5 m with back drop |
| DMM2-Proc-Delv-508 | Manuf. & Delivery for GRP Pipes Materials |  |  |  |  |  |  | resources Labor [347.6 h]; Operator [347.6 h]; Mobile Crane [160 h]; Depth: 1.51m - 2.5m; 1.51m - 2.5m; 2.51m - 3.5m; 3.51m - 4.5m → Labor [347.94 h]; Operator [347.94 h]; Mobile Crane [160 h]; Depth: 1.51m - 2.5m; 1.51m - 2.5m; 2.51m - 3.5m; 3.51m - 4.5m |
| DMM2-Proc-Delv-528 | Manuf. & Delivery for Inlet Manholes Materials |  |  |  |  |  |  | resources Labor [434.5 h]; Operator [434.5 h]; Mobile Crane [200 h]; MH depth 1.50 - 2.5m; MH depth 2.51 - 3.5m; MH depth 3.51 - 4.5m; Storm MH depth 2.51 - 3.5m; Storm MH depth 3.51 -4.5m; MH depth 4.51 -5.5m → Labor [434.92 h]; Operator [434.92 h]; Mobile Crane [200 h]; MH depth 1.50 - 2.5m; MH depth 2.51 - 3.5m; MH depth 3.51 - 4.5m; Storm MH depth 2.51 - 3.5m; Storm MH depth 3.51 -4.5m; MH depth 4.51 -5.5m |
| DMM2-Proc-Delv-538 | Manuf. & Delivery for Catch Basin Materials |  |  |  |  |  |  | resources Labor [434.5 h]; Operator [434.5 h]; Mobile Crane [200 h]; Single Catch basin; Double Catch basin → Labor [434.92 h]; Operator [434.92 h]; Mobile Crane [200 h]; Single Catch basin; Double Catch basin |
| Potable | **Potable Network** |  | 2026-09-20 → 2026-10-08 (+18d) |  |  |  |  |  |
| DMM2-Proc-Delv-598 | Manuf. & Delivery for HDPE Pipes Materials |  |  |  |  |  |  | resources Labor [695.19 h]; Operator [695.19 h]; Mobile Crane [320 h]; Depth: 0.0m - 1.5m; Depth: 1.51m - 2.5m → Labor [695.88 h]; Operator [695.88 h]; Mobile Crane [320 h]; Depth: 0.0m - 1.5m; Depth: 1.51m - 2.5m |
| DMM2-Proc-Delv-608 | Manuf. & Delivery for Valves Materials |  |  |  |  |  |  | resources Labor [434.5 h]; Operator [434.5 h]; Mobile Crane [200 h]; POT Gate V dia 110 mm; POT Air valve Dia. 50 mm on pipes with Dia. less than 315 mm → Labor [434.92 h]; Operator [434.92 h]; Mobile Crane [200 h]; POT Gate V dia 110 mm; POT Air valve Dia. 50 mm on pipes with Dia. less than 315 mm |
| DMM2-Proc-Delv-618 | Manuf. & Delivery for Valves Chambers Materials (75.00% Completed) |  | 2026-09-20 → 2026-09-15 A (-5d) | 111d → 107d | 75% → 100% | 112d → none |  | was named Manuf. & Delivery for Valves Chambers Materials; resources Labor [260.7 h]; Operator [260.7 h]; Mobile Crane [120 h]; Air valve chamber; on less than 315 mm Dia. pipeline → Labor [195.71 h]; Operator [195.71 h]; Mobile Crane [90 h]; Air valve chamber; on less than 315 mm Dia. pipeline |
| DMM2-Proc-Delv-1958 | Manuf. & Delivery for Fire Hydrant Materials |  |  |  |  |  |  | resources Labor [521.4 h]; Operator [521.4 h]; Mobile Crane [240 h]; 3-outlet fire hydrant (2 x 2.5 inch and 1 x 4.5 inch) in the form of a separate dry vacuum cylinder → Labor [521.91 h]; Operator [521.91 h]; Mobile Crane [240 h]; 3-outlet fire hydrant (2 x 2.5 inch and 1 x 4.5 inch) in the form of a separate dry vacuum cylinder |
| DMM2-Proc-Delv-668 | Manuf. & Delivery for HDPE Pipes Materials |  |  |  |  |  |  | resources Labor [260.7 h]; Operator [260.7 h]; Mobile Crane [120 h]; Depth: 0.0m - 1.5m; Depth: 1.51m - 2.5m → Labor [260.95 h]; Operator [260.95 h]; Mobile Crane [120 h]; Depth: 0.0m - 1.5m; Depth: 1.51m - 2.5m |
| DMM2-Proc-Delv-678 | Manuf. & Delivery for Valves Materials |  |  |  |  |  |  | resources Labor [434.5 h]; Operator [434.5 h]; Mobile Crane [200 h]; FF Gate V dia 250 mm; FF Wash out valve Dia. 100 mm on pipes with Dia. 110-400 mm; FF Air valve Dia. 50 mm on pipes with Dia. less than 315 mm → Labor [434.92 h]; Operator [434.92 h]; Mobile Crane [200 h]; FF Gate V dia 250 mm; FF Wash out valve Dia. 100 mm on pipes with Dia. 110-400 mm; FF Air valve Dia. 50 mm on pipes with Dia. less than 315 mm |
| DMM2-Proc-Delv-688 | Manuf. & Delivery for Valves Chambers Materials |  |  |  |  |  |  | resources Labor [347.6 h]; Operator [347.6 h]; Mobile Crane [160 h]; FF Wash out valve chamber; on 110-400 mm Dia. pipeline; FF Air valve chamber; on less than 315 mm Dia. pipeline → Labor [347.94 h]; Operator [347.94 h]; Mobile Crane [160 h]; FF Wash out valve chamber; on 110-400 mm Dia. pipeline; FF Air valve chamber; on less than 315 mm Dia. pipeline |
| TSE | **TSE Network** |  | 2026-10-10 → 2026-11-01 (+22d) |  |  |  |  |  |
| DMM2-Proc-Delv-638 | Manuf. & Delivery for HDPE Pipes Materials |  |  |  |  |  |  | resources Labor [347.6 h]; Operator [347.6 h]; Mobile Crane [160 h]; Dia. 90mm 0.0m - 1.5m; Dia. 110mm 0.0m - 1.5m → Labor [347.94 h]; Operator [347.94 h]; Mobile Crane [160 h]; Dia. 90mm 0.0m - 1.5m; Dia. 110mm 0.0m - 1.5m |
| DMM2-Proc-Delv-658 | Manuf. & Delivery for Valves Materials |  |  |  |  |  |  | resources Labor [347.6 h]; Operator [347.6 h]; Mobile Crane [160 h]; TSE Gate V Dia. 100 mm; TSE Wash out valve Dia. 100 mm on pipes with Dia. 110-400 mm; TSE Air valve Dia. 50 mm on pipes with Dia. less than 315 mm → Labor [347.94 h]; Operator [347.94 h]; Mobile Crane [160 h]; TSE Gate V Dia. 100 mm; TSE Wash out valve Dia. 100 mm on pipes with Dia. 110-400 mm; TSE Air valve Dia. 50 mm on pipes with Dia. less than 315 mm |
| DMM2-Proc-Delv-648 | Manuf. & Delivery for Solenoid Primary Control Valves Materials | 2026-09-16 → 2026-10-10 (+24d) | 2026-10-10 → 2026-11-01 (+22d) |  |  | 25d → 20.32d | DMM2-Proc-PO-025, B4.33 14 13.063 SS → DMM2-Proc-PO-025, B4.33 14 13.063 SS, DMM2-Proc-Delv-618_R | resources Labor [347.6 h]; Operator [347.6 h]; Mobile Crane [160 h]; Solenoid Valve box. 1 Solenoid valve Dia. 1 inch.; Solenoid Valve box. 1 Solenoid valve Dia. 1.5 inch.; Solenoid Valve box. 1 Solenoid valve Dia. 2.0inch. → Labor [347.94 h]; Operator [347.94 h]; Mobile Crane [160 h]; Solenoid Valve box. 1 Solenoid valve Dia. 1 inch.; Solenoid Valve box. 1 Solenoid valve Dia. 1.5 inch.; Solenoid Valve box. 1 Solenoid valve Dia. 2.0inch. |
| SDS1 | **Dry Networks** |  | 2026-09-20 → 2026-10-10 (+20d) |  |  |  |  |  |
| DMM2-Proc-Delv-1218 | Manuf. & Delivery for MV Cables Materials |  |  |  |  |  |  | resources Labor [434.5 h]; Operator [434.5 h]; Mobile Crane [200 h]; Cable 13.8 kV 3Cx 500 mm² Al XLPE,/LLDPE / Unarmored → Labor [434.92 h]; Operator [434.92 h]; Mobile Crane [200 h]; Cable 13.8 kV 3Cx 500 mm² Al XLPE,/LLDPE / Unarmored |
| DMM2-Proc-Delv-1258 | Manuf. & Delivery for LV Cables Materials |  |  |  |  |  |  | resources Labor [434.5 h]; Operator [434.5 h]; Mobile Crane [200 h]; Cable, Copper 4x10mm2/ CU/XLPE/SWA/PVC + 1x10mm2 CU/PVC → Labor [434.92 h]; Operator [434.92 h]; Mobile Crane [200 h]; Cable, Copper 4x10mm2/ CU/XLPE/SWA/PVC + 1x10mm2 CU/PVC |
| DMM2-Proc-Delv-1278 | Manuf. & Delivery for HDPE Ducts Materials |  |  |  |  |  |  | resources Labor [521.4 h]; Operator [521.4 h]; Mobile Crane [240 h]; (6*50mm) HDPE ducts; (6*50mm+2*32mm) HDPE ducts; (6*50mm+4*32mm) HDPE ducts; (2*32mm) HDPE ducts; (4*32mm) HDPE ducts; Road crossing ducts, (6*50mm) HDPE; Road crossing ducts, (2*32mm) HDPE → Labor [521.91 h]; Operator [521.91 h]; Mobile Crane [240 h]; (6*50mm) HDPE ducts; (6*50mm+2*32mm) HDPE ducts; (6*50mm+4*32mm) HDPE ducts; (2*32mm) HDPE ducts; (4*32mm) HDPE ducts; Road crossing ducts, (6*50mm) HDPE; Road crossing ducts, (2*32mm) HDPE |
| DMM2-Proc-Delv-1288 | Manuf. & Delivery for Manholes Type 1&2 Materials |  |  |  |  |  |  | resources Labor [521.4 h]; Operator [521.4 h]; Mobile Crane [240 h]; Manhole Type 1; Manhole Type 2 → Labor [521.91 h]; Operator [521.91 h]; Mobile Crane [240 h]; Manhole Type 1; Manhole Type 2 |
| SL | **Street Lighting** |  | 2026-09-20 → 2026-10-10 (+20d) |  |  |  |  |  |
| DMM2-Proc-Delv-1308 | Manuf. & Delivery for SL Cables Materials |  |  |  |  |  |  | resources Labor [521.4 h]; Operator [521.4 h]; Mobile Crane [240 h]; SL Cable, Copper 4x10mm2/ CU/XLPE/SWA/PVC + 1x10mm2 CU/PVC → Labor [521.91 h]; Operator [521.91 h]; Mobile Crane [240 h]; SL Cable, Copper 4x10mm2/ CU/XLPE/SWA/PVC + 1x10mm2 CU/PVC |
| DMM2-Proc-Delv-1318 | Manuf. & Delivery for SL Poles Materials |  |  |  |  |  | DMM2-Proc-PO-092, B2.33 71 16.021 SS → DMM2-Proc-PO-092 | resources Labor [434.5 h]; Operator [434.5 h]; Mobile Crane [200 h]; Lighting poles with 1 arm, height of ( 10) meters → Labor [434.92 h]; Operator [434.92 h]; Mobile Crane [200 h]; Lighting poles with 1 arm, height of ( 10) meters |
| DMM2-Proc-Delv-1328 | Manuf. & Delivery for SL Luminares Materials (80.00% Completed) |  | 2026-09-20 → 2026-09-15 A (-5d) | 214d → 210d | 80% → 100% | 112d → none |  | was named Manuf. & Delivery for SL Luminares Materials; resources Labor [347.6 h]; Operator [347.6 h]; Mobile Crane [160 h]; Street Lighting( LED), Lamp Lumen: 14560, Luminare Lumen:12700 , complete with control gear and lamp, (80) WATT. → Labor [278.35 h]; Operator [278.35 h]; Mobile Crane [128 h]; Street Lighting( LED), Lamp Lumen: 14560, Luminare Lumen:12700 , complete with control gear and lamp, (80) WATT. |
| Zone 02 | **Zone 02** |  | 2026-11-02 → 2026-11-24 (+22d) |  |  |  |  |  |
| SDS | **Wet Networks & Stations** |  | 2026-11-02 → 2026-11-24 (+22d) |  |  |  |  |  |
| Sewer | **Sewerage Network** |  | 2026-10-10 → 2026-10-31 (+21d) |  |  |  |  |  |
| DMM2-Proc-Delv-2298 | Manuf. & Delivery for HDPE Pipes Materials |  |  |  |  |  | DMM2-Proc-PO-016, B5.33 31 23.021 SS → DMM2-Proc-PO-016 | resources Labor [260.7 h]; Operator [260.7 h]; Mobile Crane [120 h]; Sew HDPE Dia. 160 mm depth: 1.5 - 2.5m → Labor [260.95 h]; Operator [260.95 h]; Mobile Crane [120 h]; Sew HDPE Dia. 160 mm depth: 1.5 - 2.5m |
| DMM2-Proc-Delv-3628 | Manuf. & Delivery for GRP Pipes Materials |  |  |  |  |  |  | resources Labor [434.5 h]; Operator [434.5 h]; Mobile Crane [200 h]; Sew Dia. 150mm Depth: 0.0m - 1.5m; Sew Dia. 200mm Depth: 0.0m - 1.5m; Sew Dia. 200mm Depth: 1.51m - 2.5m → Labor [434.92 h]; Operator [434.92 h]; Mobile Crane [200 h]; Sew Dia. 150mm Depth: 0.0m - 1.5m; Sew Dia. 200mm Depth: 0.0m - 1.5m; Sew Dia. 200mm Depth: 1.51m - 2.5m |
| DMM2-Proc-Delv-2328 | Manuf. & Delivery for Discharge Chamber Materials (0.00% Completed) |  | 2026-09-28 → 2026-09-15 A (-13d) | 220d → 210d | 0% → 100% | 84d → none | DMM2-Proc-Delv-3638 SS, DMM2-Proc-PO-019 FF → DMM2-Proc-Delv-3638 SS | was named Manuf. & Delivery for Discharge Chamber Materials; resources Labor [173.8 h]; Operator [173.8 h]; Mobile Crane [80 h]; Sew. Discharge chamber, size 1500*2000 mm approximately → Labor; Operator; Mobile Crane; Sew. Discharge chamber, size 1500*2000 mm approximately |
| DMM2-Proc-Delv-3638 | Manuf. & Delivery for Inlet Manholes Materials |  |  |  |  |  |  | resources Labor [434.5 h]; Operator [434.5 h]; Mobile Crane [200 h]; MH depth 0 - 1.5m; MH depth 1.51 - 2.5m → Labor [434.92 h]; Operator [434.92 h]; Mobile Crane [200 h]; MH depth 0 - 1.5m; MH depth 1.51 - 2.5m |
| DMM2-Proc-Delv-2318 | Manuf. & Delivery for Valves Materials |  |  |  |  |  | DMM2-Proc-PO-018, B5.33 31 23.021 SS → DMM2-Proc-PO-018 | resources Labor [434.5 h]; Operator [434.5 h]; Mobile Crane [200 h]; Gate V dia 150 mm on Dia. 160 mm; Air V with dia (50) mm on pipes with dia(160 ) mm. → Labor [434.92 h]; Operator [434.92 h]; Mobile Crane [200 h]; Gate V dia 150 mm on Dia. 160 mm; Air V with dia (50) mm on pipes with dia(160 ) mm. |
| DMM2-Proc-Delv-2308 | Manuf. & Delivery for Valves Chambers Materials | 2026-09-22 → 2026-10-13 (+21d) | 2026-10-10 → 2026-10-31 (+21d) |  |  | 92d → 88.76d |  | resources Labor [260.7 h]; Operator [260.7 h]; Mobile Crane [120 h]; Air valve chamber; on 160 mm dia pipeline → Labor [260.95 h]; Operator [260.95 h]; Mobile Crane [120 h]; Air valve chamber; on 160 mm dia pipeline |
| DMM2-Proc-Delv-2248 | Manuf. & Delivery for GRP Pipes Materials |  |  |  |  |  |  | resources Labor [347.6 h]; Operator [347.6 h]; Mobile Crane [160 h]; Depth less than 1.5; Depth: 1.51m - 2.5m; less than 1.5; 1.51m - 2.5m; 2.51m - 3.5m; 3.51m - 4.5m → Labor [347.94 h]; Operator [347.94 h]; Mobile Crane [160 h]; Depth less than 1.5; Depth: 1.51m - 2.5m; less than 1.5; 1.51m - 2.5m; 2.51m - 3.5m; 3.51m - 4.5m |
| DMM2-Proc-Delv-2268 | Manuf. & Delivery for Inlet Manholes Materials |  |  |  |  |  | DMM2-Proc-PO-013, DMM2-Proc-Delv-528, DMM2-Proc-Delv-7510 SS → DMM2-Proc-PO-013, DMM2-Proc-Delv-528 | resources Labor [434.5 h]; Operator [434.5 h]; Mobile Crane [200 h]; MH depth 1.50 - 2.5m; MH depth 2.51 - 3.5m; Storm MH depth 2.51 - 3.5m; Storm MH depth 3.51 -4.5m; MH depth 4.51 -5.5m → Labor [434.92 h]; Operator [434.92 h]; Mobile Crane [200 h]; MH depth 1.50 - 2.5m; MH depth 2.51 - 3.5m; Storm MH depth 2.51 - 3.5m; Storm MH depth 3.51 -4.5m; MH depth 4.51 -5.5m |

| ID | Task | Start | Finish | Duration | Complete | Total float | Predecessors | Other |
| --- | --- | --- | --- | --- | --- | --- | --- | --- |
| DMM2-Proc-Delv-2278 | Manuf. & Delivery for Concrete Chambers & Catch Basin Materials |  |  |  |  |  |  | resources Labor [434.5 h]; Operator [434.5 h]; Mobile Crane [200 h]; Size 1.5 x 1.5 m, depth 2.51-3.5 m; Size 1.5 x 1.5 m, depth 3.51-4.5 m; Single Catch basin; Double Catch basin → Labor [434.92 h]; Operator [434.92 h]; Mobile Crane [200 h]; Size 1.5 x 1.5 m, depth 2.51-3.5 m; Size 1.5 x 1.5 m, depth 3.51-4.5 m; Single Catch basin; Double Catch basin |
| Potable | **Potable Network** |  | 2026-09-20 → 2026-10-11 (+21d) |  |  |  |  |  |
| DMM2-Proc-Delv-2338 | Manuf. & Delivery for HDPE Pipes Materials |  |  |  |  |  |  | resources Labor [868.99 h]; Operator [868.99 h]; Mobile Crane [400 h]; Depth: 0.0m - 1.5m; Depth: 1.51m - 2.5m → Labor [869.84 h]; Operator [869.84 h]; Mobile Crane [400 h]; Depth: 0.0m - 1.5m; Depth: 1.51m - 2.5m |
| DMM2-Proc-Delv-2348 | Manuf. & Delivery for Valves Materials |  |  |  |  |  |  | resources Labor [608.29 h]; Operator [608.29 h]; Mobile Crane [280 h]; POT Gate V dia 110 mm; POT Wash out valve Dia. 100 mm on pipes with Dia. 110-400 mm; POT Air valve Dia. 50 mm on pipes with Dia. less than 315 mm → Labor [608.89 h]; Operator [608.89 h]; Mobile Crane [280 h]; POT Gate V dia 110 mm; POT Wash out valve Dia. 100 mm on pipes with Dia. 110-400 mm; POT Air valve Dia. 50 mm on pipes with Dia. less than 315 mm |
| DMM2-Proc-Delv-2358 | Manuf. & Delivery for Valves Chambers Materials |  |  |  |  |  | DMM2-Proc-PO-022, DMM2-Proc-Delv-618 SS → DMM2-Proc-PO-022 | resources Labor [260.6 h]; Operator [260.7 h]; Mobile Crane [120 h]; Wash out valve chamber; on 110-400 mm Dia. pipeline; Air valve chamber; on less than 315 mm Dia. pipeline → Labor [260.86 h]; Operator [260.95 h]; Mobile Crane [120 h]; Wash out valve chamber; on 110-400 mm Dia. pipeline; Air valve chamber; on less than 315 mm Dia. pipeline |
| DMM2-Proc-Delv-2368 | Manuf. & Delivery for Flow Meter Materials | 2026-09-16 → 2026-10-07 (+21d) | 2026-09-20 → 2026-10-11 (+21d) |  |  | 71d → 68.32d |  | resources Labor [608.29 h]; Operator [608.29 h]; Mobile Crane [280 h]; Flow meter → Labor [608.89 h]; Operator [608.89 h]; Mobile Crane [280 h]; Flow meter |
| DMM2-Proc-Delv-3648 | Manuf. & Delivery for Flow Meter Chamber Materials | 2026-09-16 → 2026-10-07 (+21d) | 2026-09-20 → 2026-10-11 (+21d) |  |  | 71d → 68.32d |  | resources Labor [434.5 h]; Operator [434.5 h]; Mobile Crane [200 h]; Flow meter chamber → Labor [434.92 h]; Operator [434.92 h]; Mobile Crane [200 h]; Flow meter chamber |
| Fire Fighting | **Fire Fighting Network** |  | 2026-09-28 → 2026-10-15 (+17d) |  |  |  |  |  |
| DMM2-Proc-Delv-2408 | Manuf. & Delivery for HDPE Pipes Materials |  |  |  |  |  |  | resources Labor [260.7 h]; Operator [260.7 h]; Mobile Crane [120 h]; Depth: 0.0m - 1.5m; Depth: 1.51m - 2.5m → Labor [260.95 h]; Operator [260.95 h]; Mobile Crane [120 h]; Depth: 0.0m - 1.5m; Depth: 1.51m - 2.5m |
| DMM2-Proc-Delv-2418 | Manuf. & Delivery for Valves Materials |  |  |  |  |  |  | resources Labor [434.5 h]; Operator [434.5 h]; Mobile Crane [200 h]; FF Gate V dia 250 mm; FF Wash out valve Dia. 100 mm on pipes with Dia. 110-400 mm; FF Air valve Dia. 50 mm on pipes with Dia. less than 315 mm → Labor [434.92 h]; Operator [434.92 h]; Mobile Crane [200 h]; FF Gate V dia 250 mm; FF Wash out valve Dia. 100 mm on pipes with Dia. 110-400 mm; FF Air valve Dia. 50 mm on pipes with Dia. less than 315 mm |
| DMM2-Proc-Delv-3698 | Manuf. & Delivery for Fire Hydrant Materials |  |  |  |  |  |  | resources Labor [434.5 h]; Operator [434.5 h]; Mobile Crane [200 h]; 3-outlet fire hydrant (2 x 2.5 inch and 1 x 4.5 inch) in the form of a separate dry vacuum cylinder → Labor [434.92 h]; Operator [434.92 h]; Mobile Crane [200 h]; 3-outlet fire hydrant (2 x 2.5 inch and 1 x 4.5 inch) in the form of a separate dry vacuum cylinder |
| DMM2-Proc-Delv-2428 | Manuf. & Delivery for Valves Chambers Materials (33.33% Completed) |  | 2026-09-28 → 2026-09-15 A (-13d) | 96d → 86d | 33% → 100% | 106d → none |  | was named Manuf. & Delivery for Valves Chambers Materials; resources Labor [521.4 h]; Operator [521.4 h]; Mobile Crane [240 h]; FF Wash out valve chamber; on 110-400 mm Dia. pipeline; FF Air valve chamber; on less than 315 mm Dia. pipeline → Labor [173.95 h]; Operator [173.95 h]; Mobile Crane [79.99 h]; FF Wash out valve chamber; on 110-400 mm Dia. pipeline; FF Air valve chamber; on less than 315 mm Dia. pipeline |
| TSE | **TSE Network** |  | 2026-11-02 → 2026-11-24 (+22d) |  |  |  |  |  |
| DMM2-Proc-Delv-2378 | Manuf. & Delivery for HDPE Pipes Materials |  |  |  |  |  |  | resources Labor [521.4 h]; Operator [521.4 h]; Mobile Crane [240 h]; Dia. 125mm 0.0m - 1.5m → Labor [521.91 h]; Operator [521.91 h]; Mobile Crane [240 h]; Dia. 125mm 0.0m - 1.5m |
| DMM2-Proc-Delv-2398 | Manuf. & Delivery for Valves Materials |  |  |  |  |  |  | resources Labor [434.5 h]; Operator [434.5 h]; Mobile Crane [200 h]; TSE Gate V Dia. 100 mm; TSE Gate V Dia. 150 mm → Labor [434.92 h]; Operator [434.92 h]; Mobile Crane [200 h]; TSE Gate V Dia. 100 mm; TSE Gate V Dia. 150 mm |
| DMM2-Proc-Delv-2388 | Manuf. & Delivery for Solenoid Primary Control Valves Materials | 2026-10-11 → 2026-11-02 (+22d) | 2026-11-02 → 2026-11-24 (+22d) |  |  | 29d → 24.32d |  | resources Labor [347.6 h]; Operator [347.6 h]; Mobile Crane [160 h]; Solenoid Valve box. 1 Solenoid valve Dia. 1 inch.; Solenoid Valve box. 1 Solenoid valve Dia. 1.5 inch.; Solenoid Valve box. 1 Solenoid valve Dia. 2.0inch. → Labor [347.94 h]; Operator [347.94 h]; Mobile Crane [160 h]; Solenoid Valve box. 1 Solenoid valve Dia. 1 inch.; Solenoid Valve box. 1 Solenoid valve Dia. 1.5 inch.; Solenoid Valve box. 1 Solenoid valve Dia. 2.0inch. |
| Pot Pump St. | **Potable Water Pump Station** |  | 2026-10-26 → 2026-11-15 (+20d) |  |  |  |  |  |
| 3 | **Mechanical** |  | 2026-10-15 → 2026-11-04 (+20d) |  |  |  |  |  |
| DMM2-Proc-Delv-2508 | Manuf. & Delivery for Water Pumps Materials |  |  |  |  |  |  | resources Labor [1216.59 h]; Operator [1216.59 h]; Mobile Crane [560 h]; Vertical multistage cintrifugal pump → Labor [1217.78 h]; Operator [1217.78 h]; Mobile Crane [560 h]; Vertical multistage cintrifugal pump |
| DMM2-Proc-Delv-2518 | Manuf. & Delivery for Fire Pumps Materials (80.00% Completed) |  | 2026-09-27 → 2026-09-15 A (-12d) | 155d → 146d | 80% → 100% | 29d → none |  | was named Manuf. & Delivery for Fire Pumps Materials; resources Labor [1216.59 h]; Operator [1216.59 h]; Mobile Crane [560 h]; Split case cintrifugal pump; Vertical multistage cintrifugal (jockey) pump → Labor [974.23 h]; Operator [974.23 h]; Mobile Crane [448 h]; Split case cintrifugal pump; Vertical multistage cintrifugal (jockey) pump |
| DMM2-Proc-Delv-3748 | Manuf. & Delivery for Gate Valves Materials |  |  |  |  |  | DMM2-Proc-PO-168, DMM2-Proc-PO-021, B1.1.31 23 23.102, DMM2-Proc-Delv-3738 SS+25d → DMM2-Proc-PO-168, DMM2-Proc-PO-021, B1.1.31 23 23.102 | resources Labor [695.19 h]; Operator [695.19 h]; Mobile Crane [320 h]; Gate Valve DN60,; Gate Valve DN80,; Gate Valve DN100,; Gate Valve DN200,; Gate Valve DN350, → Labor [695.88 h]; Operator [695.88 h]; Mobile Crane [320 h]; Gate Valve DN60,; Gate Valve DN80,; Gate Valve DN100,; Gate Valve DN200,; Gate Valve DN350, |
| DMM2-Proc-Delv-3728 | Manuf. & Delivery for Submersible Pumps Materials |  |  |  |  |  |  | resources Labor [1390.39 h]; Operator [1390.39 h]; Mobile Crane [640 h]; Submersible pump → Labor [1391.75 h]; Operator [1391.75 h]; Mobile Crane [640 h]; Submersible pump |
| DMM2-Proc-Delv-2538 | Manuf. & Delivery for OverHead Crane Materials (80.00% Completed) |  | 2026-09-30 → 2026-09-15 A (-15d) | 99d → 87d | 80% → 100% | 18d → none |  | was named Manuf. & Delivery for OverHead Crane Materials; resources Labor [1042.79 h]; Operator [1042.79 h]; Mobile Crane [480 h]; OverHead Crane → Labor [835.05 h]; Operator [835.05 h]; Mobile Crane [384 h]; OverHead Crane |
| DMM2-Proc-Delv-2528 | Manuf. & Delivery for Butterfly Valve Materials (80.00% Completed) |  | 2026-10-03 → 2026-09-15 A (-18d) | 92d → 78d | 80% → 100% | 18d → none |  | was named Manuf. & Delivery for Butterfly Valve Materials; resources Labor [868.99 h]; Operator [868.99 h]; Mobile Crane [400 h]; Butterfly Valve DN200; Butterfly Valve DN300 → Labor [695.88 h]; Operator [695.88 h]; Mobile Crane [320 h]; Butterfly Valve DN200; Butterfly Valve DN300 |
| DMM2-Proc-Delv-3768 | Manuf. & Delivery for Electromagnetic Flow Meters Materials (80.00% Completed) |  | 2026-10-03 → 2026-09-15 A (-18d) | 90d → 76d | 80% → 100% | 40d → none |  | was named Manuf. & Delivery for Electromagnetic Flow Meters Materials; resources Labor [868.99 h]; Operator [868.99 h]; Mobile Crane [400 h]; Electromagnetic Flowmeter DN80, PN16; Electromagnetic Flowmeter DN200, PN16 → Labor [695.88 h]; Operator [695.88 h]; Mobile Crane [320 h]; Electromagnetic Flowmeter DN80, PN16; Electromagnetic Flowmeter DN200, PN16 |
| DMM2-Proc-Delv-3758 | Manuf. & Delivery for Non Return (Flap) Materials (80.00% Completed) |  | 2026-10-03 → 2026-09-15 A (-18d) | 87d → 73d | 80% → 100% | 7d → none |  | was named Manuf. & Delivery for Non Return (Flap) Materials; resources Labor [782.09 h]; Operator [782.09 h]; Mobile Crane [360 h]; Non return Valve DN60; Non return Valve DN300 → Labor [626.29 h]; Operator [626.29 h]; Mobile Crane [288 h]; Non return Valve DN60; Non return Valve DN300 |
| DMM2-Proc-Delv-3738 | Manuf. & Delivery for DI Pipes Materials (80.00% Completed) |  | 2026-09-22 → 2026-09-15 A (-7d) | 78d → 72d | 80% → 100% | 13d → none |  | was named Manuf. & Delivery for DI Pipes Materials; resources Labor [695.19 h]; Operator [695.19 h]; Mobile Crane [320 h]; BDI Dia. 80 mm; BDI Dia. 100 mm; BDI Dia. 200 mm; BDI Dia. 300 mm; BDI Dia. 350 mm; DDI Dia. 60 mm; DDI Dia. 80 mm; DDI Dia. 100 mm; DDI Dia. 200 mm; DDI Dia. 300 mm; DDI Dia. 350 mm → Labor [556.7 h]; Operator [556.7 h]; Mobile Crane [256 h]; BDI Dia. 80 mm; BDI Dia. 100 mm; BDI Dia. 200 mm; BDI Dia. 300 mm; BDI Dia. 350 mm; DDI Dia. 60 mm; DDI Dia. 80 mm; DDI Dia. 100 mm; DDI Dia. 200 mm; DDI Dia. 300 mm; DDI Dia. 350 mm |
| DMM2-Proc-Delv-3778 | Manuf. & Delivery for Surge Tank Materials | 2026-09-16 → 2026-10-07 (+21d) | 2026-10-15 → 2026-11-04 (+20d) |  |  | 13d → 11.32d | DMM2-Proc-PO-063, B1.1.31 23 23.102, DMM2-Proc-Delv-3738 SS+10d, DMM2-Proc-PO-064 → DMM2-Proc-PO-063, B1.1.31 23 23.102, DMM2-Proc-Delv-3738_R SS, DMM2-Proc-PO-064 | resources Labor [1129.69 h]; Operator [1129.69 h]; Mobile Crane [520 h]; Surge Tank → Labor [1130.8 h]; Operator [1130.8 h]; Mobile Crane [520 h]; Surge Tank |
| 2 | **Electrical** |  | 2026-10-26 → 2026-11-15 (+20d) |  |  |  |  |  |
| DMM2-Proc-Delv-3868 | Manuf. & Delivery for PLC System Materials (80.00% Completed) |  | 2026-09-30 → 2026-09-15 A (-15d) | 177d → 165d | 80% → 100% | 46d → none |  | was named Manuf. & Delivery for PLC System Materials; resources Labor [1042.79 h]; Operator [1042.79 h]; Mobile Crane [480 h]; Testing and commissioning of PLC system, serving the pumping station and all related utilities → Labor [835.05 h]; Operator [835.05 h]; Mobile Crane [384 h]; Testing and commissioning of PLC system, serving the pumping station and all related utilities |
| DMM2-Proc-Delv-3808 | Manuf. & Delivery for Motor Control Center (MCC) Materials (80.00% Completed) |  | 2026-09-27 → 2026-09-15 A (-12d) | 172.25d → 163.25d | 80% → 100% | 25d → none |  | was named Manuf. & Delivery for Motor Control Center (MCC) Materials; resources Labor [782.09 h]; Operator [782.09 h]; Mobile Crane [360 h]; MCC - 200AT/200AF, 400V, 3PH, 60HZ, → Labor [626.29 h]; Operator [626.29 h]; Mobile Crane [288 h]; MCC - 200AT/200AF, 400V, 3PH, 60HZ, |
| DMM2-Proc-Delv-3848 | Manuf. & Delivery for Generators Materials |  |  |  |  |  |  | resources Labor [1216.59 h]; Operator [1216.59 h]; Mobile Crane [560 h]; Standby Diesel Generator Set 550 KVA, 400/230KVA, 3P, 60Hz in Sound Attenuated Enclosure → Labor [1217.78 h]; Operator [1217.78 h]; Mobile Crane [560 h]; Standby Diesel Generator Set 550 KVA, 400/230KVA, 3P, 60Hz in Sound Attenuated Enclosure |
| DMM2-Proc-Delv-2648 | Manuf. & Delivery for LV Cables Materials (80.00% Completed) |  | 2026-09-21 → 2026-09-15 A (-6d) | 127d → 122d | 80% → 100% | 7d → none |  | was named Manuf. & Delivery for LV Cables Materials; resources Labor [434.5 h]; Operator [434.5 h]; Mobile Crane [200 h]; 4x1Cx 630mm2 Cu/XLPE//PVC from nearest power supply (SEC) and from generator to the ATS and from ATS to MCC-PW; 4Cx 10mm2 Cu/XLPE/SWA/PVC from MCC-PW to ELP; 4/Cx35mm²+1Cx16mm², CU/MICA/XLPE/LSOH, FIRE RESISTANT CABLE FROM MCC-PW TO Fire pump control panel; 4/Cx6mm² Cu/XLPE/PVC + 1Cx6mm² Cu/PVC from MCC-PW to potable water pumps; 4Cx 25mm2 + 1Cx16mm2 Cu/XLPE/PVC FROM MCC-PW to DB-PW; 3Cx 6mm2 Cu/XLPE/PVC FROM MCC-PW to the two fuel pumps.; 4Cx 25mm2 + 1Cx11mm2 Cu/XLPE/PVC FROM MCC-PW to DB-CH; 3Cx 6mm2 Cu/XLPE/PVC FROM MCC-SPS to the two fuel pumps.; 4Cx 10mm2 + 1Cx10mm2 Cu/XLPE/PVC FROM MCC-PW to EPS; 4Cx 6mm2 Cu/XLPE/SWA/PVC FROM EPS to LIGHTING POLES → Labor [347.94 h]; Operator [347.94 h]; Mobile Crane [160 h]; 4x1Cx 630mm2 Cu/XLPE//PVC from nearest power supply (SEC) and from generator to the ATS and from ATS to MCC-PW; 4Cx 10mm2 Cu/XLPE/SWA/PVC from MCC-PW to ELP; 4/Cx35mm²+1Cx16mm², CU/MICA/XLPE/LSOH, FIRE RESISTANT CABLE FROM MCC-PW TO Fire pump control panel; 4/Cx6mm² Cu/XLPE/PVC + 1Cx6mm² Cu/PVC from MCC-PW to potable water pumps; 4Cx 25mm2 + 1Cx16mm2 Cu/XLPE/PVC FROM MCC-PW to DB-PW; 3Cx 6mm2 Cu/XLPE/PVC FROM MCC-PW to the two fuel pumps.; 4Cx 25mm2 + 1Cx11mm2 Cu/XLPE/PVC FROM MCC-PW to DB-CH; 3Cx 6mm2 Cu/XLPE/PVC FROM MCC-SPS to the two fuel pumps.; 4Cx 10mm2 + 1Cx10mm2 Cu/XLPE/PVC FROM MCC-PW to EPS; 4Cx 6mm2 Cu/XLPE/SWA/PVC FROM EPS to LIGHTING POLES |
| DMM2-Proc-Delv-3828 | Manuf. & Delivery for Local Control Panel Materials (80.00% Completed) |  | 2026-09-21 → 2026-09-15 A (-6d) | 106.2d → 102d | 80% → 100% | 33.8d → none |  | was named Manuf. & Delivery for Local Control Panel Materials; resources Labor [782.09 h]; Operator [782.09 h]; Mobile Crane [360 h]; Local Control Panel, IP 65 → Labor [626.29 h]; Operator [626.29 h]; Mobile Crane [288 h]; Local Control Panel, IP 65 |
| DMM2-Proc-Delv-3858 | Manuf. & Delivery for Addressable Fire Alarm System Materials | 2026-09-16 → 2026-10-07 (+21d) | 2026-10-15 → 2026-11-04 (+20d) |  |  | 25d → 23.32d | DMM2-Proc-PO-208, DMM2-Proc-Delv-3808 SS+10d → DMM2-Proc-PO-208, DMM2-Proc-Delv-3808_R SS | resources Labor [434.5 h]; Operator [434.5 h]; Mobile Crane [200 h]; Addressable fire alarm system → Labor [434.92 h]; Operator [434.92 h]; Mobile Crane [200 h]; Addressable fire alarm system |
| DMM2-Proc-Delv-3878 | Manuf. & Delivery for Automatic Transfer Switch ATS panel Materials | 2026-09-16 → 2026-10-07 (+21d) | 2026-10-08 → 2026-10-28 (+20d) |  |  | 31d → 29.32d |  | resources Labor [1216.59 h]; Operator [1216.59 h]; Mobile Crane [560 h]; supply, install, test & commission Automatic Transfer Switch ATS panel → Labor [1217.78 h]; Operator [1217.78 h]; Mobile Crane [560 h]; supply, install, test & commission Automatic Transfer Switch ATS panel |
| DMM2-Proc-Delv-3838 | Manuf. & Delivery for Panelboards Materials | 2026-10-08 → 2026-10-28 (+20d) | 2026-10-26 → 2026-11-15 (+20d) |  |  | 10d → 8.32d |  | resources Labor [1042.79 h]; Operator [1042.79 h]; Mobile Crane [480 h]; DB-PW Panel: 100 Ampere, 3P, IP66,60Hz incomer MCCB; DB-CL Panel: 100 Ampere, 3P, IP66,60Hz incomer MCCB; ELP Panel: phtocell , timer,40 Ampere, 3P, IP66,60Hz incomer MCCB & 5ways outgoing MCCB → Labor [1043.81 h]; Operator [1043.81 h]; Mobile Crane [480 h]; DB-PW Panel: 100 Ampere, 3P, IP66,60Hz incomer MCCB; DB-CL Panel: 100 Ampere, 3P, IP66,60Hz incomer MCCB; ELP Panel: phtocell , timer,40 Ampere, 3P, IP66,60Hz incomer MCCB & 5ways outgoing MCCB |
| SDS1 | **Dry Networks** |  | 2026-10-10 → 2026-10-29 (+19d) |  |  |  |  |  |
| MV | **Medium Voltage Network** |  | 2026-09-28 → 2026-10-18 (+20d) |  |  |  |  |  |
| DMM2-Proc-Delv-2958 | Manuf. & Delivery for MV Cables Materials |  |  |  |  |  |  | resources Labor [434.5 h]; Operator [434.5 h]; Mobile Crane [200 h]; Cable 13.8 kV 3Cx 500 mm² Al XLPE,/LLDPE / Unarmored; Copper Cable 13.8 kV 3Cx 50 mm² CU/XLPE/STA/PVC → Labor [434.92 h]; Operator [434.92 h]; Mobile Crane [200 h]; Cable 13.8 kV 3Cx 500 mm² Al XLPE,/LLDPE / Unarmored; Copper Cable 13.8 kV 3Cx 50 mm² CU/XLPE/STA/PVC |
| DMM2-Proc-Delv-2978 | Manuf. & Delivery for Unit Substation Materials (90.00% Completed) |  | 2026-09-28 → 2026-09-15 A (-13d) | 205d → 195d | 90% → 100% | 106d → none |  | was named Manuf. & Delivery for Unit Substation Materials; resources Labor [782.09 h]; Operator [782.09 h]; Mobile Crane [360 h]; Unit Substation 13.8/0.4 K V, 500kVA → Labor [704.57 h]; Operator [704.57 h]; Mobile Crane [324 h]; Unit Substation 13.8/0.4 K V, 500kVA |
| DMM2-Proc-Delv-2988 | Manuf. & Delivery for RMU Materials (90.00% Completed) |  | 2026-09-28 → 2026-09-15 A (-13d) | 205d → 195d | 90% → 100% | 106d → none |  | was named Manuf. & Delivery for RMU Materials; resources Labor [521.4 h]; Operator [521.4 h]; Mobile Crane [240 h]; RMU, 13.8KV → Labor [469.72 h]; Operator [469.72 h]; Mobile Crane [216 h]; RMU, 13.8KV |
| DMM2-Proc-Delv-2998 | Manuf. & Delivery for LV Cables Materials |  |  |  |  |  |  | resources Labor [782.09 h]; Operator [782.09 h]; Mobile Crane [360 h]; Cable, Copper 4x10mm2/ CU/XLPE/SWA/PVC + 1x10mm2 CU/PVC; Cable, Copper 4x50mm2/ CU/XLPE/PVC +1x25mm2 CU/PVC → Labor [782.86 h]; Operator [782.86 h]; Mobile Crane [360 h]; Cable, Copper 4x10mm2/ CU/XLPE/SWA/PVC + 1x10mm2 CU/PVC; Cable, Copper 4x50mm2/ CU/XLPE/PVC +1x25mm2 CU/PVC |
| DMM2-Proc-Delv-3018 | Manuf. & Delivery for HDPE Ducts Materials |  |  |  |  |  |  | resources Labor [260.7 h]; Operator [260.7 h]; Mobile Crane [120 h]; (6*50mm) HDPE ducts; (6*50mm+2*32mm) HDPE ducts; (6*50mm+4*32mm) HDPE ducts; (2*32mm) HDPE ducts; (4*32mm) HDPE ducts; (6*50mm+6*32mm) HDPE ducts; Telecom (6*32mm) HDPE ducts; Road crossing ducts, (6*50mm) HDPE; Road crossing ducts, (2*32mm) HDPE → Labor [260.95 h]; Operator [260.95 h]; Mobile Crane [120 h]; (6*50mm) HDPE ducts; (6*50mm+2*32mm) HDPE ducts; (6*50mm+4*32mm) HDPE ducts; (2*32mm) HDPE ducts; (4*32mm) HDPE ducts; (6*50mm+6*32mm) HDPE ducts; Telecom (6*32mm) HDPE ducts; Road crossing ducts, (6*50mm) HDPE; Road crossing ducts, (2*32mm) HDPE |
| DMM2-Proc-Delv-3028 | Manuf. & Delivery for Manholes Type 1&2 Materials |  |  |  |  |  |  | resources Labor [521.4 h]; Operator [521.4 h]; Mobile Crane [240 h]; Manhole Type 1; Manhole Type 2 → Labor [521.91 h]; Operator [521.91 h]; Mobile Crane [240 h]; Manhole Type 1; Manhole Type 2 |
| SL | **Street Lighting** |  | 2026-10-10 → 2026-10-29 (+19d) |  |  |  |  |  |
| DMM2-Proc-Delv-3068 | Manuf. & Delivery for SL Luminares Materials (80.11% Completed) |  | 2026-09-20 → 2026-09-15 A (-5d) | 214d → 210d | 80% → 100% | 112d → none |  | was named Manuf. & Delivery for SL Luminares Materials; resources Labor [347.6 h]; Operator [347.6 h]; Mobile Crane [160 h]; Street Lighting( LED), Lamp Lumen: 14560, Luminare Lumen:12700 , complete with control gear and lamp, (80) WATT.; Street Lighting( LED), Lamp Lumen: 24286, Luminare Lumen:20914, complete with control gear and lamp, (140) WATT. → Labor [278.72 h]; Operator [278.72 h]; Mobile Crane [128.17 h]; Street Lighting( LED), Lamp Lumen: 14560, Luminare Lumen:12700 , complete with control gear and lamp, (80) WATT.; Street Lighting( LED), Lamp Lumen: 24286, Luminare Lumen:20914, complete with control gear and lamp, (140) WATT. |
| DMM2-Proc-Delv-3058 | Manuf. & Delivery for SL Poles Materials |  |  |  |  |  |  | resources Labor [434.5 h]; Operator [434.5 h]; Mobile Crane [200 h]; Lighting poles with 2 arms, height of ( 10) meters; Lighting poles with 1 arm, height of ( 10) meters; Lighting poles with 1 arm, height of ( 12 ) meters → Labor [434.92 h]; Operator [434.92 h]; Mobile Crane [200 h]; Lighting poles with 2 arms, height of ( 10) meters; Lighting poles with 1 arm, height of ( 10) meters; Lighting poles with 1 arm, height of ( 12 ) meters |
| DMM2-Proc-Delv-3038 | Manuf. & Delivery for SL Pillars Materials (80.11% Completed) |  | 2026-10-10 → 2026-09-15 A (-25d) | 167d → 147d | 80% → 100% | 96d → none |  | was named Manuf. & Delivery for SL Pillars Materials; resources Labor [695.19 h]; Operator [695.19 h]; Mobile Crane [320 h]; Street Lighting Feeder pillars, work shall include earthing for the lighting pillars. → Labor [557.44 h]; Operator [557.44 h]; Mobile Crane [256.34 h]; Street Lighting Feeder pillars, work shall include earthing for the lighting pillars. |
| DMM2-Proc-Delv-3048 | Manuf. & Delivery for SL Cables Materials |  |  |  |  |  |  | resources Labor [521.4 h]; Operator [521.4 h]; Mobile Crane [240 h]; SL Cable, Copper 4x10mm2/ CU/XLPE/SWA/PVC + 1x10mm2 CU/PVC → Labor [521.91 h]; Operator [521.91 h]; Mobile Crane [240 h]; SL Cable, Copper 4x10mm2/ CU/XLPE/SWA/PVC + 1x10mm2 CU/PVC |
| Zone 03 | **Zone 03** |  | 2026-11-02 → 2026-11-24 (+22d) |  |  |  |  |  |
| SDS | **Wet Networks & Stations** |  | 2026-11-02 → 2026-11-24 (+22d) |  |  |  |  |  |
| Sewer | **Sewerage Network** |  | 2026-10-08 → 2026-10-28 (+20d) |  |  |  |  |  |
| DMM2-Proc-Delv-5368 | Manuf. & Delivery for GRP Pipes Materials |  |  |  |  |  |  | resources Labor [434.5 h]; Operator [434.5 h]; Mobile Crane [200 h]; Sew Dia. 150mm Depth: 1.51m - 2.5m; Sew Dia. 150mm Depth: 2.51m - 3.5m; Sew Dia. 200mm Depth: 2.51m - 3.5m; Sew Dia. 200mm Depth: 3.51m - 4.5m; Sew Dia. 200mm Depth: 4.51m -5.5m → Labor [434.92 h]; Operator [434.92 h]; Mobile Crane [200 h]; Sew Dia. 150mm Depth: 1.51m - 2.5m; Sew Dia. 150mm Depth: 2.51m - 3.5m; Sew Dia. 200mm Depth: 2.51m - 3.5m; Sew Dia. 200mm Depth: 3.51m - 4.5m; Sew Dia. 200mm Depth: 4.51m -5.5m |
| DMM2-Proc-Delv-4038 | Manuf. & Delivery for HDPE Pipes Materials (0.00% Completed) |  | 2026-10-08 → 2026-09-15 A (-23d) | 242.75d → 223.75d | 0% → 100% | 97d → none |  | was named Manuf. & Delivery for HDPE Pipes Materials; resources Labor [330.22 h]; Operator [330.22 h]; Mobile Crane [152 h]; Sew HDPE Dia. 160 mm depth: 0- 1.5m → Labor; Operator; Mobile Crane; Sew HDPE Dia. 160 mm depth: 0- 1.5m |
| DMM2-Proc-Delv-5378 | Manuf. & Delivery for Inlet Manholes Materials |  |  |  |  |  |  | resources Labor [434.5 h]; Operator [434.5 h]; Mobile Crane [200 h]; MH depth 0 - 1.5m; MH depth 1.51 - 2.5m; MH depth 2.51 - 3.5m; MH depth 4.51 -5.5m; MH depth 4.51-5.5 m with back drop; MH depth 6.0-5.51 m; MH depth 6.0- 5.51 m with back drop → Labor [434.92 h]; Operator [434.92 h]; Mobile Crane [200 h]; MH depth 0 - 1.5m; MH depth 1.51 - 2.5m; MH depth 2.51 - 3.5m; MH depth 4.51 -5.5m; MH depth 4.51-5.5 m with back drop; MH depth 6.0-5.51 m; MH depth 6.0- 5.51 m with back drop |
| DMM2-Proc-Delv-4048 | Manuf. & Delivery for Valves Chambers Materials | 2026-09-16 → 2026-09-17 A (+1d) | 2026-10-04 → 2026-10-19 (+15d) |  | 0% → 33% | 96d → 103.27d |  | resources Labor [260.7 h]; Operator [260.7 h]; Mobile Crane [120 h]; Wash out chamber; on 160 mm dia pipeline → Labor [260.95 h]; Operator [260.95 h]; Mobile Crane [120 h]; Wash out chamber; on 160 mm dia pipeline |
| DMM2-Proc-Delv-4058 | Manuf. & Delivery for Valves Materials | 2026-09-16 → 2026-09-24 A (+8d) | 2026-10-04 A |  | 0% → 100% | 75d → none |  | resources Labor [260.7 h]; Operator [260.7 h]; Mobile Crane [120 h]; Gate V dia 150 mm on Dia. 160 mm; Wash out valve with dia (100 ) mm on pipes with dia (160) mm → Labor [260.95 h]; Operator [260.95 h]; Mobile Crane [120 h]; Gate V dia 150 mm on Dia. 160 mm; Wash out valve with dia (100 ) mm on pipes with dia (160) mm |
| DMM2-Proc-Delv-3988 | Manuf. & Delivery for GRP Pipes Materials |  |  |  |  |  |  | resources Labor [347.6 h]; Operator [347.6 h]; Mobile Crane [160 h]; Depth: 1.51m - 2.5m; 2.51m - 3.5m → Labor [347.94 h]; Operator [347.94 h]; Mobile Crane [160 h]; Depth: 1.51m - 2.5m; 2.51m - 3.5m |
| DMM2-Proc-Delv-4008 | Manuf. & Delivery for Inlet Manholes Materials |  |  |  |  |  |  | resources Labor [347.6 h]; Operator [347.6 h]; Mobile Crane [160 h]; MH depth 1.50 - 2.5m; Storm MH depth 2.51 - 3.5m → Labor [347.94 h]; Operator [347.94 h]; Mobile Crane [160 h]; MH depth 1.50 - 2.5m; Storm MH depth 2.51 - 3.5m |
| DMM2-Proc-Delv-4018 | Manuf. & Delivery for Concrete Chambers & Catch Basin Materials |  |  |  |  |  |  | resources Labor [434.5 h]; Operator [434.5 h]; Mobile Crane [200 h]; Size 3.0 x 3.0 m, depth 1.51-2.5 m; Size 3.0 x 1.5 m, depth 1.51-2.5 m; Size 2.5 x 1.5 m, depth 1.51-2.5 m; Size 2.0 x 1.5 m, depth 2.51-3.5 m; Single Catch basin; Double Catch basin → Labor [434.92 h]; Operator [434.92 h]; Mobile Crane [200 h]; Size 3.0 x 3.0 m, depth 1.51-2.5 m; Size 3.0 x 1.5 m, depth 1.51-2.5 m; Size 2.5 x 1.5 m, depth 1.51-2.5 m; Size 2.0 x 1.5 m, depth 2.51-3.5 m; Single Catch basin; Double Catch basin |
| Potable | **Potable Network** |  | 2026-09-19 → 2026-10-10 (+21d) |  |  |  |  |  |
| DMM2-Proc-Delv-4078 | Manuf. & Delivery for HDPE Pipes Materials |  |  |  |  |  |  | resources Labor [434.5 h]; Operator [434.5 h]; Mobile Crane [200 h]; Depth: 0.0m - 1.5m; Depth: 1.51m - 2.5m → Labor [434.92 h]; Operator [434.92 h]; Mobile Crane [200 h]; Depth: 0.0m - 1.5m; Depth: 1.51m - 2.5m |
| DMM2-Proc-Delv-4088 | Manuf. & Delivery for Valves Materials |  |  |  |  |  |  | resources Labor [434.5 h]; Operator [434.5 h]; Mobile Crane [200 h]; POT Gate V dia 110 mm; POT Wash out valve Dia. 100 mm on pipes with Dia. 110-400 mm; POT Air valve Dia. 50 mm on pipes with Dia. less than 315 mm → Labor [434.92 h]; Operator [434.92 h]; Mobile Crane [200 h]; POT Gate V dia 110 mm; POT Wash out valve Dia. 100 mm on pipes with Dia. 110-400 mm; POT Air valve Dia. 50 mm on pipes with Dia. less than 315 mm |
| DMM2-Proc-Delv-4098 | Manuf. & Delivery for Valves Chambers Materials (80.00% Completed) |  | 2026-09-19 → 2026-09-15 A (-4d) | 105d → 102d | 80% → 100% | 113d → none |  | was named Manuf. & Delivery for Valves Chambers Materials; resources Labor [260.7 h]; Operator [260.7 h]; Mobile Crane [120 h]; Wash out valve chamber; on 110-400 mm Dia. pipeline; Air valve chamber; on less than 315 mm Dia. pipeline → Labor [208.76 h]; Operator [208.76 h]; Mobile Crane [96 h]; Wash out valve chamber; on 110-400 mm Dia. pipeline; Air valve chamber; on less than 315 mm Dia. pipeline |
| Fire Fighting | **Fire Fighting Network** |  | 2026-09-17 → 2026-10-08 (+21d) |  |  |  |  |  |
| DMM2-Proc-Delv-4148 | Manuf. & Delivery for HDPE Pipes Materials |  |  |  |  |  |  | resources Labor [260.7 h]; Operator [260.7 h]; Mobile Crane [120 h]; Depth: 0.0m - 1.5m; Depth: 1.51m - 2.5m → Labor [260.95 h]; Operator [260.95 h]; Mobile Crane [120 h]; Depth: 0.0m - 1.5m; Depth: 1.51m - 2.5m |
| DMM2-Proc-Delv-4158 | Manuf. & Delivery for Valves Materials |  |  |  |  |  |  | resources Labor [434.5 h]; Operator [434.5 h]; Mobile Crane [200 h]; FF Gate V dia 250 mm; FF Wash out valve Dia. 100 mm on pipes with Dia. 110-400 mm; FF Air valve Dia. 50 mm on pipes with Dia. less than 315 mm → Labor [434.92 h]; Operator [434.92 h]; Mobile Crane [200 h]; FF Gate V dia 250 mm; FF Wash out valve Dia. 100 mm on pipes with Dia. 110-400 mm; FF Air valve Dia. 50 mm on pipes with Dia. less than 315 mm |
| DMM2-Proc-Delv-5438 | Manuf. & Delivery for Fire Hydrant Materials |  |  |  |  |  |  | resources Labor [521.4 h]; Operator [521.4 h]; Mobile Crane [240 h]; 3-outlet fire hydrant (2 x 2.5 inch and 1 x 4.5 inch) in the form of a separate dry vacuum cylinder → Labor [521.91 h]; Operator [521.91 h]; Mobile Crane [240 h]; 3-outlet fire hydrant (2 x 2.5 inch and 1 x 4.5 inch) in the form of a separate dry vacuum cylinder |
| DMM2-Proc-Delv-4168 | Manuf. & Delivery for Valves Chambers Materials (80.00% Completed) |  | 2026-09-17 → 2026-09-15 A (-2d) | 106d → 104d | 80% → 100% | 114d → none |  | was named Manuf. & Delivery for Valves Chambers Materials; resources Labor [434.5 h]; Operator [434.5 h]; Mobile Crane [200 h]; FF Wash out valve chamber; on 110-400 mm Dia. pipeline; FF Air valve chamber; on less than 315 mm Dia. pipeline → Labor [347.94 h]; Operator [347.94 h]; Mobile Crane [160 h]; FF Wash out valve chamber; on 110-400 mm Dia. pipeline; FF Air valve chamber; on less than 315 mm Dia. pipeline |

| ID | Task | Start | Finish | Duration | Complete | Total float | Predecessors | Other |
| --- | --- | --- | --- | --- | --- | --- | --- | --- |
| TSE | **TSE Network** |  | 2026-11-02 → 2026-11-24 (+22d) |  |  |  |  |  |
| DMM2-Proc-Delv-4118 | Manuf. & Delivery for HDPE Pipes Materials |  |  |  |  |  |  | resources Labor [521.4 h]; Operator [521.4 h]; Mobile Crane [240 h]; Dia. 25mm 0.0m - 1.5m; Dia. 32mm 0.0m - 1.5m; Dia. 50mm 0.0m - 1.5m; Dia. 63mm 0.0m - 1.5m; Dia. 75mm 0.0m - 1.5m; Dia. 110mm 0.0m - 1.5m; Dia. 125mm 0.0m - 1.5m → Labor [521.91 h]; Operator [521.91 h]; Mobile Crane [240 h]; Dia. 25mm 0.0m - 1.5m; Dia. 32mm 0.0m - 1.5m; Dia. 50mm 0.0m - 1.5m; Dia. 63mm 0.0m - 1.5m; Dia. 75mm 0.0m - 1.5m; Dia. 110mm 0.0m - 1.5m; Dia. 125mm 0.0m - 1.5m |
| DMM2-Proc-Delv-4138 | Manuf. & Delivery for Valves Materials |  |  |  |  |  |  | resources Labor [434.5 h]; Operator [434.5 h]; Mobile Crane [200 h]; TSE Gate V Dia. 100 mm; TSE Air valve Dia. 50 mm on pipes with Dia. less than 315 mm → Labor [434.92 h]; Operator [434.92 h]; Mobile Crane [200 h]; TSE Gate V Dia. 100 mm; TSE Air valve Dia. 50 mm on pipes with Dia. less than 315 mm |
| DMM2-Proc-Delv-4128 | Manuf. & Delivery for Solenoid Primary Control Valves Materials | 2026-10-22 → 2026-11-14 (+23d) | 2026-11-02 → 2026-11-24 (+22d) |  |  | 29d → 24.32d |  | resources Labor [347.6 h]; Operator [347.6 h]; Mobile Crane [160 h]; Solenoid Valve box. 1 Solenoid valve Dia. 1 inch.; Solenoid Valve box. 1 Solenoid valve Dia. 1.5 inch.; Solenoid Valve box. 1 Solenoid valve Dia. 2.0inch. → Labor [347.94 h]; Operator [347.94 h]; Mobile Crane [160 h]; Solenoid Valve box. 1 Solenoid valve Dia. 1 inch.; Solenoid Valve box. 1 Solenoid valve Dia. 1.5 inch.; Solenoid Valve box. 1 Solenoid valve Dia. 2.0inch. |
| Sewer Lift St. | **Sewer Lift Station** |  | 2026-10-21 → 2026-11-10 (+20d) |  |  |  |  |  |
| 3 | **Mechanical** |  | 2026-10-21 → 2026-11-10 (+20d) |  |  |  |  |  |
| DMM2-Proc-Delv-4518 | Manuf. & Delivery for JIB Crane Materials (46.78% Completed) |  | 2026-10-04 → 2026-09-15 A (-19d) | 243d → 213d | 47% → 100% | 20d → none |  | was named Manuf. & Delivery for JIB Crane Materials; resources Labor [1390.39 h]; Operator [1390.39 h]; Mobile Crane [640 h]; JIB Crane → Labor [651.09 h]; Operator [651.09 h]; Mobile Crane [299.41 h]; JIB Crane |
| DMM2-Proc-Delv-4448 | Manuf. & Delivery for Double Flanged DI Pipes Materials (0.00% Completed) |  | 2026-10-10 → 2026-09-15 A (-25d) | 231d → 211d | 0% → 100% | 13d → none |  | was named Manuf. & Delivery for Double Flanged DI Pipes Materials; resources Labor [608.29 h]; Operator [608.29 h]; Mobile Crane [280 h]; Double flanged ductile iron pipe with Dia. 150 mm → Labor; Operator; Mobile Crane; Double flanged ductile iron pipe with Dia. 150 mm |
| DMM2-Proc-Delv-4478 | Manuf. & Delivery for Non Return Valve (Flap) Materials (0.00% Completed) |  | 2026-10-10 → 2026-09-15 A (-25d) | 207d → 187d | 0% → 100% | 22d → none |  | was named Manuf. & Delivery for Non Return Valve (Flap) Materials; resources Labor [868.99 h]; Operator [868.99 h]; Mobile Crane [400 h]; Non return Valve DN150 → Labor; Operator; Mobile Crane; Non return Valve DN150 |
| DMM2-Proc-Delv-4488 | Manuf. & Delivery for Basket Screens Materials | 2026-09-16 → 2026-10-07 (+21d) | 2026-10-10 → 2026-10-29 (+19d) |  |  | 21d → 19.32d |  | resources Labor [695.19 h]; Operator [695.19 h]; Mobile Crane [320 h]; Basket screens → Labor [695.88 h]; Operator [695.88 h]; Mobile Crane [320 h]; Basket screens |
| DMM2-Proc-Delv-4508 | Manuf. & Delivery for Surge Tank Materials | 2026-09-16 → 2026-10-07 (+21d) | 2026-10-21 → 2026-11-10 (+20d) |  |  | 14d → 12.32d |  | resources Labor [1216.59 h]; Operator [1216.59 h]; Mobile Crane [560 h]; Surge Tank → Labor [1217.78 h]; Operator [1217.78 h]; Mobile Crane [560 h]; Surge Tank |
| DMM2-Proc-Delv-4438 | Manuf. & Delivery for Submersible Pumps Materials | 2026-09-27 → 2026-10-17 (+20d) | 2026-10-11 → 2026-10-31 (+20d) |  |  | 17d → 15.32d |  | resources Labor [1216.59 h]; Operator [1216.59 h]; Mobile Crane [560 h]; Submersibel, wet installed pump → Labor [1217.78 h]; Operator [1217.78 h]; Mobile Crane [560 h]; Submersibel, wet installed pump |
| DMM2-Proc-Delv-4458 | Manuf. & Delivery for Buried Flanged DI Pipes Materials | 2026-10-11 → 2026-10-31 (+20d) | 2026-10-12 → 2026-11-01 (+20d) |  |  | 13d → 11.32d | DMM2-Proc-PO-058, DMM2-Proc-Delv-4448, DMM2-Proc-PO-071 → DMM2-Proc-PO-058, DMM2-Proc-Delv-4448_R, DMM2-Proc-PO-071 | resources Labor [521.4 h]; Operator [521.4 h]; Mobile Crane [240 h]; Buried ductile iron pipes with Dia. 150 mm → Labor [521.91 h]; Operator [521.91 h]; Mobile Crane [240 h]; Buried ductile iron pipes with Dia. 150 mm |
| DMM2-Proc-Delv-4498 | Manuf. & Delivery for Odor Control Unit Materials | 2026-10-11 → 2026-10-31 (+20d) | 2026-10-13 → 2026-11-02 (+20d) |  |  | 21d → 19.32d |  | resources Labor [868.99 h]; Operator [868.99 h]; Mobile Crane [400 h]; Odor Control Unit → Labor [869.84 h]; Operator [869.84 h]; Mobile Crane [400 h]; Odor Control Unit |
| 2 | **Electrical** |  | 2026-10-14 → 2026-11-03 (+20d) |  |  |  |  |  |
| DMM2-Proc-Delv-4608 | Manuf. & Delivery for Automatic Transfer (Switch ATS) Materials (0.00% Completed) |  | 2026-10-10 → 2026-09-15 A (-25d) | 243d → 203d | 0% → 100% | 20d → none |  | was named Manuf. & Delivery for Automatic Transfer (Switch ATS) Materials; resources Labor [868.99 h]; Operator [868.99 h]; Mobile Crane [400 h]; Automatic Transfer Switch ATS panel → Labor; Operator; Mobile Crane; Automatic Transfer Switch ATS panel |
| DMM2-Proc-Delv-4628 | Manuf. & Delivery for Displacement Rotary Type Pump Materials (42.56% Completed) |  | 2026-10-14 → 2026-09-15 A (-29d) | 219d → 195d | 43% → 100% | 11d → none |  | was named Manuf. & Delivery for Displacement Rotary Type Pump Materials; resources Labor [1390.39 h]; Operator [1390.39 h]; Mobile Crane [640 h]; Positive displacement rotary type pump → Labor [592.28 h]; Operator [592.28 h]; Mobile Crane [272.36 h]; Positive displacement rotary type pump |
| DMM2-Proc-Delv-4668 | Manuf. & Delivery for PLC System Materials (80.00% Completed) |  | 2026-10-04 → 2026-09-15 A (-19d) | 174.5d → 159.5d | 80% → 100% | 41d → none |  | was named Manuf. & Delivery for PLC System Materials; resources Labor [1042.79 h]; Operator [1042.79 h]; Mobile Crane [480 h]; Supply, installation, testing and commissioning of PLC system → Labor [835.05 h]; Operator [835.05 h]; Mobile Crane [384 h]; Supply, installation, testing and commissioning of PLC system |
| DMM2-Proc-Delv-4578 | Manuf. & Delivery for Low Voltage Cables Materials (50.00% Completed) |  | 2026-10-04 → 2026-09-15 A (-19d) | 152d → 137d | 50% → 100% | 35d → none |  | was named Manuf. & Delivery for Low Voltage Cables Materials; resources Labor [521.4 h]; Operator [521.4 h]; Mobile Crane [240 h]; 4Cx 95mm2 Cu/XLPE//PVC from nearest power supply (SEC) and generator to the ATS and from ATS to MCC-SPS; 4Cx 10mm2 Cu/XLPE/SWA/PVC from MCC-SPS to ELP; 4Cx 35mm2 + 1Cx16mm2 SUBMERGED RUBBER INSULATED FLEXIBLE CABLE from MCC to PUMP1& PUMP2.; 4Cx 10mm2 + 1Cx10mm2 Cu/XLPE/PVC FROM MCC-SPS to DB-SPS; 4Cx 10mm2 + 1Cx10mm2 Cu/XLPE/PVC FROM MCC-SPS to Penstok; 4Cx 10mm2 + 1Cx10mm2 Cu/XLPE/PVC FROM MCC-SPS to Odor Control Unit; 4Cx 6mm2 + 1Cx6mm2 Cu/XLPE/PVC FROM MCC-SPS to the mechanical bar screen; 3Cx 6mm2 Cu/XLPE/PVC FROM MCC-SPS to the two fuel pumps.; 4Cx 6mm2 + 1Cx6mm2 Cu/XLPE/PVC FROM MCC-SPS to the mechanical crane → Labor [260.95 h]; Operator [260.95 h]; Mobile Crane [120 h]; 4Cx 95mm2 Cu/XLPE//PVC from nearest power supply (SEC) and generator to the ATS and from ATS to MCC-SPS; 4Cx 10mm2 Cu/XLPE/SWA/PVC from MCC-SPS to ELP; 4Cx 35mm2 + 1Cx16mm2 SUBMERGED RUBBER INSULATED FLEXIBLE CABLE from MCC to PUMP1& PUMP2.; 4Cx 10mm2 + 1Cx10mm2 Cu/XLPE/PVC FROM MCC-SPS to DB-SPS; 4Cx 10mm2 + 1Cx10mm2 Cu/XLPE/PVC FROM MCC-SPS to Penstok; 4Cx 10mm2 + 1Cx10mm2 Cu/XLPE/PVC FROM MCC-SPS to Odor Control Unit; 4Cx 6mm2 + 1Cx6mm2 Cu/XLPE/PVC FROM MCC-SPS to the mechanical bar screen; 3Cx 6mm2 Cu/XLPE/PVC FROM MCC-SPS to the two fuel pumps.; 4Cx 6mm2 + 1Cx6mm2 Cu/XLPE/PVC FROM MCC-SPS to the mechanical crane |
| DMM2-Proc-Delv-4588 | Manuf. & Delivery for Standby Diesel Generator Materials |  |  |  |  |  |  | resources Labor [1390.39 h]; Operator [1390.39 h]; Mobile Crane [640 h]; Standby Diesel Generator Set 100 KVA, 400/230KVA, 3P, 60Hz in Sound Attenuated Enclosure → Labor [1391.75 h]; Operator [1391.75 h]; Mobile Crane [640 h]; Standby Diesel Generator Set 100 KVA, 400/230KVA, 3P, 60Hz in Sound Attenuated Enclosure |
| DMM2-Proc-Delv-4598 | Manuf. & Delivery for Fuel Pump Materials (50.00% Completed) |  | 2026-10-10 → 2026-09-15 A (-25d) | 131d → 111d | 50% → 100% | 21d → none |  | was named Manuf. & Delivery for Fuel Pump Materials; resources Labor [1042.79 h]; Operator [1042.79 h]; Mobile Crane [480 h]; Manually operated fuel pump → Labor [521.91 h]; Operator [521.91 h]; Mobile Crane [240 h]; Manually operated fuel pump |
| DMM2-Proc-Delv-4558 | Manuf. & Delivery for Motor Control Center (MCC) Materials | 2026-09-19 → 2026-10-10 (+21d) | 2026-09-21 → 2026-10-12 (+21d) |  |  | 33d → 31.32d |  | resources Labor [1042.79 h]; Operator [1042.79 h]; Mobile Crane [480 h]; MCC - 160AT/250AF, 400V, 3PH, 60HZ, → Labor [1043.81 h]; Operator [1043.81 h]; Mobile Crane [480 h]; MCC - 160AT/250AF, 400V, 3PH, 60HZ, |
| DMM2-Proc-Delv-4568 | Manuf. & Delivery for Local Control Panel Materials | 2026-10-11 → 2026-10-31 (+20d) | 2026-10-13 → 2026-11-02 (+20d) |  |  | 21d → 19.32d |  | resources Labor [521.4 h]; Operator [521.4 h]; Mobile Crane [240 h]; Local Control Panel, IP 65 → Labor [521.91 h]; Operator [521.91 h]; Mobile Crane [240 h]; Local Control Panel, IP 65 |
| SDS1 | **Dry Networks** |  | 2026-10-10 → 2026-10-29 (+19d) |  |  |  |  |  |
| MV | **Medium Voltage Network** |  | 2026-10-10 → 2026-10-29 (+19d) |  |  |  |  |  |
| DMM2-Proc-Delv-4698 | Manuf. & Delivery for MV Cables Materials |  |  |  |  |  |  | resources Labor [434.5 h]; Operator [434.5 h]; Mobile Crane [200 h]; Cable 13.8 kV 3Cx 500 mm² Al XLPE,/LLDPE / Unarmored; Copper Cable 13.8 kV 3Cx 50 mm² CU/XLPE/STA/PVC → Labor [434.92 h]; Operator [434.92 h]; Mobile Crane [200 h]; Cable 13.8 kV 3Cx 500 mm² Al XLPE,/LLDPE / Unarmored; Copper Cable 13.8 kV 3Cx 50 mm² CU/XLPE/STA/PVC |
| DMM2-Proc-Delv-4728 | Manuf. & Delivery for RMU Materials (80.11% Completed) |  | 2026-10-10 → 2026-09-15 A (-25d) | 146d → 126d | 80% → 100% | 96d → none |  | was named Manuf. & Delivery for RMU Materials; resources Labor [521.4 h]; Operator [521.4 h]; Mobile Crane [240 h]; RMU, 13.8KV → Labor [418.08 h]; Operator [418.08 h]; Mobile Crane [192.26 h]; RMU, 13.8KV |
| DMM2-Proc-Delv-4718 | Manuf. & Delivery for Unit Substation Materials (80.11% Completed) |  | 2026-10-10 → 2026-09-15 A (-25d) | 145d → 125d | 80% → 100% | 96d → none |  | was named Manuf. & Delivery for Unit Substation Materials; resources Labor [868.99 h]; Operator [868.99 h]; Mobile Crane [400 h]; Unit Substation 13.8/0.4 K V, 500kVA → Labor [696.8 h]; Operator [696.8 h]; Mobile Crane [320.43 h]; Unit Substation 13.8/0.4 K V, 500kVA |
| LV | **Low Voltage Network** |  | 2026-10-10 → 2026-10-29 (+19d) |  |  |  |  |  |
| DMM2-Proc-Delv-4738 | Manuf. & Delivery for LV Cables Materials |  |  |  |  |  | DMM2-Proc-PO-086, DMM2-Proc-Delv-2998, DMM2-Proc-Delv-2648 SS → DMM2-Proc-PO-086, DMM2-Proc-Delv-2998 | resources Labor [104.28 h]; Operator [104.28 h]; Mobile Crane [48 h]; Cable, Copper 4x10mm2/ CU/XLPE/SWA/PVC + 1x10mm2 CU/PVC; Cable, Copper 4x50mm2/ CU/XLPE/PVC +1x25mm2 CU/PVC → Labor [104.38 h]; Operator [104.38 h]; Mobile Crane [48 h]; Cable, Copper 4x10mm2/ CU/XLPE/SWA/PVC + 1x10mm2 CU/PVC; Cable, Copper 4x50mm2/ CU/XLPE/PVC +1x25mm2 CU/PVC |
| DMM2-Proc-Delv-7199 | Manuf. & Delivery for LV Panels Materials (80.11% Completed) |  | 2026-10-10 → 2026-09-15 A (-25d) | 153d → 133d | 80% → 100% | 70d → none |  | was named Manuf. & Delivery for LV Panels Materials; resources Labor [782.09 h]; Operator [782.09 h]; Mobile Crane [360 h]; 0.6/1 KV Low Voltage Distribution Panels for Industrial UPS - Cameras → Labor [627.12 h]; Operator [627.12 h]; Mobile Crane [288.38 h]; 0.6/1 KV Low Voltage Distribution Panels for Industrial UPS - Cameras |
| DMM2-Proc-Delv-4748 | Manuf. & Delivery for LV Pillars Materials (80.11% Completed) |  | 2026-10-10 → 2026-09-15 A (-25d) | 149d → 129d | 80% → 100% | 70d → none |  | was named Manuf. & Delivery for LV Pillars Materials; resources Labor [782.09 h]; Operator [782.09 h]; Mobile Crane [360 h]; 0.6/1 KV Low Voltage Distribution Pillars with 5 Outgoing feeders rated 200 Ampers Fuse type → Labor [627.12 h]; Operator [627.12 h]; Mobile Crane [288.38 h]; 0.6/1 KV Low Voltage Distribution Pillars with 5 Outgoing feeders rated 200 Ampers Fuse type |
| DMM2-Proc-Delv-4758 | Manuf. & Delivery for HDPE Ducts Materials |  |  |  |  |  |  | resources Labor [260.7 h]; Operator [260.7 h]; Mobile Crane [120 h]; (6*50mm) HDPE ducts; (6*50mm+2*32mm) HDPE ducts; (6*50mm+4*32mm) HDPE ducts; (2*32mm) HDPE ducts; (4*32mm) HDPE ducts; (6*50mm+6*32mm) HDPE ducts; Road crossing ducts, (6*50mm) HDPE; Road crossing ducts, (6*50mm+4*32mm) HDPE; Road crossing ducts, (2*32mm) HDPE → Labor [260.95 h]; Operator [260.95 h]; Mobile Crane [120 h]; (6*50mm) HDPE ducts; (6*50mm+2*32mm) HDPE ducts; (6*50mm+4*32mm) HDPE ducts; (2*32mm) HDPE ducts; (4*32mm) HDPE ducts; (6*50mm+6*32mm) HDPE ducts; Road crossing ducts, (6*50mm) HDPE; Road crossing ducts, (6*50mm+4*32mm) HDPE; Road crossing ducts, (2*32mm) HDPE |
| DMM2-Proc-Delv-4768 | Manuf. & Delivery for Manholes Type 1&2 Materials |  |  |  |  |  |  | resources Labor [173.8 h]; Operator [173.8 h]; Mobile Crane [80 h]; Manhole Type 1; Manhole Type 2 → Labor [173.97 h]; Operator [173.97 h]; Mobile Crane [80 h]; Manhole Type 1; Manhole Type 2 |
| SL | **Street Lighting** |  | 2026-10-10 → 2026-10-29 (+19d) |  |  |  |  |  |
| DMM2-Proc-Delv-4798 | Manuf. & Delivery for SL Poles Materials (90.00% Completed) |  | 2026-09-28 → 2026-09-15 A (-13d) | 181.75d → 171.75d | 90% → 100% | 106d → none |  | was named Manuf. & Delivery for SL Poles Materials; resources Labor [434.5 h]; Operator [434.5 h]; Mobile Crane [200 h]; Lighting poles with 2 arms, height of ( 10) meters; Lighting poles with 1 arm, height of ( 10) meters; Lighting poles with 1 arm, height of ( 12 ) meters; Lighting poles with 2 arms , height of (16 ) meters → Labor [391.43 h]; Operator [391.43 h]; Mobile Crane [180 h]; Lighting poles with 2 arms, height of ( 10) meters; Lighting poles with 1 arm, height of ( 10) meters; Lighting poles with 1 arm, height of ( 12 ) meters; Lighting poles with 2 arms , height of (16 ) meters |
| DMM2-Proc-Delv-4778 | Manuf. & Delivery for SL Pillars Materials (90.00% Completed) |  | 2026-10-10 → 2026-09-15 A (-25d) | 165d → 145d | 90% → 100% | 96d → none |  | was named Manuf. & Delivery for SL Pillars Materials; resources Labor [695.19 h]; Operator [695.19 h]; Mobile Crane [320 h]; Street Lighting Feeder pillars, work shall include earthing for the lighting pillars. → Labor [626.29 h]; Operator [626.29 h]; Mobile Crane [288 h]; Street Lighting Feeder pillars, work shall include earthing for the lighting pillars. |
| DMM2-Proc-Delv-4788 | Manuf. & Delivery for SL Cables Materials (90.00% Completed) |  | 2026-09-28 → 2026-09-15 A (-13d) | 144d → 134d | 90% → 100% | 106d → none |  | was named Manuf. & Delivery for SL Cables Materials; resources Labor [434.5 h]; Operator [434.5 h]; Mobile Crane [200 h]; SL Cable, Copper 4x10mm2/ CU/XLPE/SWA/PVC + 1x10mm2 CU/PVC; Cable, Copper 4x16mm2/ CU/XLPE/SWA/PVC + 1x16mm2 CU/PVC → Labor [391.43 h]; Operator [391.43 h]; Mobile Crane [180 h]; SL Cable, Copper 4x10mm2/ CU/XLPE/SWA/PVC + 1x10mm2 CU/PVC; Cable, Copper 4x16mm2/ CU/XLPE/SWA/PVC + 1x16mm2 CU/PVC |
| DMM2-Proc-Delv-4808 | Manuf. & Delivery for SL Luminares Materials (90.00% Completed) |  | 2026-09-28 → 2026-09-15 A (-13d) | 141d → 131d | 90% → 100% | 106d → none |  | was named Manuf. & Delivery for SL Luminares Materials; resources Labor [347.6 h]; Operator [347.6 h]; Mobile Crane [160 h]; Street Lighting( LED), Lamp Lumen: 14560, Luminare Lumen:12700 , complete with control gear and lamp, (80) WATT.; Street Lighting( LED), Lamp Lumen: 24286, Luminare Lumen:20914, complete with control gear and lamp, (140) WATT.; Street Lighting( LED), Lamp Lumen: 34805, Luminare Lumen:28310, complete with control gear and lamp, (190) WATT. → Labor [313.14 h]; Operator [313.14 h]; Mobile Crane [144 h]; Street Lighting( LED), Lamp Lumen: 14560, Luminare Lumen:12700 , complete with control gear and lamp, (80) WATT.; Street Lighting( LED), Lamp Lumen: 24286, Luminare Lumen:20914, complete with control gear and lamp, (140) WATT.; Street Lighting( LED), Lamp Lumen: 34805, Luminare Lumen:28310, complete with control gear and lamp, (190) WATT. |
| Zone 04 | **Zone 04** |  | 2026-10-15 → 2026-11-10 (+26d) |  |  |  |  |  |
| SDS | **Wet Networks & Stations** |  | 2026-10-15 → 2026-11-04 (+20d) |  |  |  |  |  |
| DMM2-Proc-Delv-7108 | Manuf. & Delivery for GRP Pipes Materials |  |  |  |  |  |  | resources Labor [347.6 h]; Operator [347.6 h]; Mobile Crane [160 h]; Sew Dia. 150mm Depth: 1.51m - 2.5m; Sew Dia. 150mm Depth: 2.51m - 3.5m; Sew Dia. 200mm Depth: 1.51m - 2.5m; Sew Dia. 200mm Depth: 2.51m - 3.5m; Sew Dia. 200mm Depth: 3.51m - 4.5m; Sew Dia. 200mm Depth: 4.51m -5.5m → Labor [347.94 h]; Operator [347.94 h]; Mobile Crane [160 h]; Sew Dia. 150mm Depth: 1.51m - 2.5m; Sew Dia. 150mm Depth: 2.51m - 3.5m; Sew Dia. 200mm Depth: 1.51m - 2.5m; Sew Dia. 200mm Depth: 2.51m - 3.5m; Sew Dia. 200mm Depth: 3.51m - 4.5m; Sew Dia. 200mm Depth: 4.51m -5.5m |
| DMM2-Proc-Delv-7118 | Manuf. & Delivery for Inlet Manholes Materials |  |  |  |  |  |  | resources Labor [434.5 h]; Operator [434.5 h]; Mobile Crane [200 h]; MH depth 0 - 1.5m; MH depth 1.51 - 2.5m; MH depth 2.51 - 3.5m; MH depth 3.51 -4.5m; MH depth 3.51- 4.5 m with back drop → Labor [434.92 h]; Operator [434.92 h]; Mobile Crane [200 h]; MH depth 0 - 1.5m; MH depth 1.51 - 2.5m; MH depth 2.51 - 3.5m; MH depth 3.51 -4.5m; MH depth 3.51- 4.5 m with back drop |
| Storm | **Storm Network** |  | 2026-10-04 → 2026-10-24 (+20d) |  |  |  |  |  |
| DMM2-Proc-Delv-5728 | Manuf. & Delivery for GRP Pipes Materials |  |  |  |  |  |  | resources Labor [347.6 h]; Operator [347.6 h]; Mobile Crane [160 h]; Depth: 1.51m - 2.5m; 1.51m - 2.5m; 2.51m - 3.5m → Labor [347.94 h]; Operator [347.94 h]; Mobile Crane [160 h]; Depth: 1.51m - 2.5m; 1.51m - 2.5m; 2.51m - 3.5m |
| DMM2-Proc-Delv-5748 | Manuf. & Delivery for Inlet Manholes Materials (90.00% Completed) |  | 2026-09-28 → 2026-09-15 A (-13d) | 151.67d → 141.67d | 90% → 100% | 45d → none |  | was named Manuf. & Delivery for Inlet Manholes Materials; resources Labor [434.5 h]; Operator [434.5 h]; Mobile Crane [200 h]; MH depth 1.50 - 2.5m; Storm MH depth 1.50 - 2.5m; Storm MH depth 2.51 - 3.5m → Labor [391.43 h]; Operator [391.43 h]; Mobile Crane [180 h]; MH depth 1.50 - 2.5m; Storm MH depth 1.50 - 2.5m; Storm MH depth 2.51 - 3.5m |
| DMM2-Proc-Delv-5758 | Manuf. & Delivery for Concrete Chambers & Catch Basin Materials (40.05% Completed) |  | 2026-10-04 → 2026-09-15 A (-19d) | 142d → 127d | 40% → 100% | 40d → none |  | was named Manuf. & Delivery for Concrete Chambers & Catch Basin Materials; resources Labor [434.5 h]; Operator [434.5 h]; Mobile Crane [200 h]; Single Catch basin; Double Catch basin → Labor [174.2 h]; Operator [174.2 h]; Mobile Crane [80.11 h]; Single Catch basin; Double Catch basin |
| Potable | **Potable Network** |  | 2026-09-19 → 2026-10-07 (+18d) |  |  |  |  |  |
| DMM2-Proc-Delv-5818 | Manuf. & Delivery for HDPE Pipes Materials |  |  |  |  |  |  | resources Labor [347.6 h]; Operator [347.6 h]; Mobile Crane [160 h]; Depth: 0.0m - 1.5m; Depth: 1.51m - 2.5m → Labor [347.94 h]; Operator [347.94 h]; Mobile Crane [160 h]; Depth: 0.0m - 1.5m; Depth: 1.51m - 2.5m |
| DMM2-Proc-Delv-5828 | Manuf. & Delivery for Valves Materials |  |  |  |  |  |  | resources Labor [521.4 h]; Operator [521.4 h]; Mobile Crane [240 h]; POT Gate V dia 110 mm; POT Wash out valve Dia. 100 mm on pipes with Dia. 110-400 mm; POT Air valve Dia. 50 mm on pipes with Dia. less than 315 mm → Labor [521.91 h]; Operator [521.91 h]; Mobile Crane [240 h]; POT Gate V dia 110 mm; POT Wash out valve Dia. 100 mm on pipes with Dia. 110-400 mm; POT Air valve Dia. 50 mm on pipes with Dia. less than 315 mm |
| DMM2-Proc-Delv-5838 | Manuf. & Delivery for Valves Chambers Materials (80.00% Completed) |  | 2026-09-19 → 2026-09-15 A (-4d) | 86.4d → 83.4d | 80% → 100% | 113d → none |  | was named Manuf. & Delivery for Valves Chambers Materials; resources Labor [260.7 h]; Operator [260.7 h]; Mobile Crane [120 h]; Wash out valve chamber; on 110-400 mm Dia. pipeline; Air valve chamber; on less than 315 mm Dia. pipeline → Labor [208.76 h]; Operator [208.76 h]; Mobile Crane [96 h]; Wash out valve chamber; on 110-400 mm Dia. pipeline; Air valve chamber; on less than 315 mm Dia. pipeline |
| Fire Fighting | **Fire Fighting Network** |  | 2026-09-19 → 2026-10-10 (+21d) |  |  |  |  |  |
| DMM2-Proc-Delv-5888 | Manuf. & Delivery for HDPE Pipes Materials |  |  |  |  |  |  | resources Labor [260.7 h]; Operator [260.7 h]; Mobile Crane [120 h]; Depth: 0.0m - 1.5m; Depth: 1.51m - 2.5m → Labor [260.95 h]; Operator [260.95 h]; Mobile Crane [120 h]; Depth: 0.0m - 1.5m; Depth: 1.51m - 2.5m |
| DMM2-Proc-Delv-5898 | Manuf. & Delivery for Valves Materials |  |  |  |  |  |  | resources Labor [521.4 h]; Operator [521.4 h]; Mobile Crane [240 h]; FF Gate V dia 250 mm; FF Wash out valve Dia. 100 mm on pipes with Dia. 110-400 mm; FF Air valve Dia. 50 mm on pipes with Dia. less than 315 mm → Labor [521.91 h]; Operator [521.91 h]; Mobile Crane [240 h]; FF Gate V dia 250 mm; FF Wash out valve Dia. 100 mm on pipes with Dia. 110-400 mm; FF Air valve Dia. 50 mm on pipes with Dia. less than 315 mm |
| DMM2-Proc-Delv-7178 | Manuf. & Delivery for Fire Hydrant Materials |  |  |  |  |  |  | resources Labor [521.4 h]; Operator [521.4 h]; Mobile Crane [240 h]; 3-outlet fire hydrant (2 x 2.5 inch and 1 x 4.5 inch) in the form of a separate dry vacuum cylinder → Labor [521.91 h]; Operator [521.91 h]; Mobile Crane [240 h]; 3-outlet fire hydrant (2 x 2.5 inch and 1 x 4.5 inch) in the form of a separate dry vacuum cylinder |
| DMM2-Proc-Delv-5908 | Manuf. & Delivery for Valves Chambers Materials (80.00% Completed) |  | 2026-09-19 → 2026-09-15 A (-4d) | 87d → 84d | 80% → 100% | 87d → none |  | was named Manuf. & Delivery for Valves Chambers Materials; resources Labor [434.5 h]; Operator [434.5 h]; Mobile Crane [200 h]; FF Wash out valve chamber; on 110-400 mm Dia. pipeline; FF Air valve chamber; on less than 315 mm Dia. pipeline → Labor [347.94 h]; Operator [347.94 h]; Mobile Crane [160 h]; FF Wash out valve chamber; on 110-400 mm Dia. pipeline; FF Air valve chamber; on less than 315 mm Dia. pipeline |
| TSE | **TSE Network** |  | 2026-10-15 → 2026-11-04 (+20d) |  |  |  |  |  |
| DMM2-Proc-Delv-5858 | Manuf. & Delivery for HDPE Pipes Materials (90.00% Completed) |  | 2026-09-17 → 2026-09-15 A (-2d) | 235.61d → 225.61d | 90% → 100% | 11d → none |  | was named Manuf. & Delivery for HDPE Pipes Materials; resources Labor [104.28 h]; Operator [104.28 h]; Mobile Crane [48 h]; Dia. 90mm 0.0m - 1.5m; Dia. 110mm 0.0m - 1.5m → Labor [93.94 h]; Operator [93.94 h]; Mobile Crane [43.2 h]; Dia. 90mm 0.0m - 1.5m; Dia. 110mm 0.0m - 1.5m |
| DMM2-Proc-Delv-5878 | Manuf. & Delivery for Valves Materials (80.00% Completed) |  | 2026-09-17 → 2026-09-15 A (-2d) | 157.38d → 147.38d | 80% → 100% | 114d → none |  | was named Manuf. & Delivery for Valves Materials; resources Labor [104.28 h]; Operator [104.28 h]; Mobile Crane [48 h]; TSE Gate V Dia. 100 mm; TSE Wash out valve Dia. 100 mm on pipes with Dia. 110-400 mm; TSE Air valve Dia. 50 mm on pipes with Dia. less than 315 mm → Labor [83.51 h]; Operator [83.51 h]; Mobile Crane [38.4 h]; TSE Gate V Dia. 100 mm; TSE Wash out valve Dia. 100 mm on pipes with Dia. 110-400 mm; TSE Air valve Dia. 50 mm on pipes with Dia. less than 315 mm |
| DMM2-Proc-Delv-5868 | Manuf. & Delivery for Solenoid Primary Control Valves Materials | 2026-09-16 → 2026-10-07 (+21d) | 2026-10-15 → 2026-11-04 (+20d) |  |  | 44d → 41.32d |  | resources Labor [104.28 h]; Operator [104.28 h]; Mobile Crane [48 h]; Solenoid Valve box. 1 Solenoid valve Dia. 1 inch.; Solenoid Valve box. 1 Solenoid valve Dia. 1.5 inch.; Solenoid Valve box. 1 Solenoid valve Dia. 2.0inch. → Labor [104.38 h]; Operator [104.38 h]; Mobile Crane [48 h]; Solenoid Valve box. 1 Solenoid valve Dia. 1 inch.; Solenoid Valve box. 1 Solenoid valve Dia. 1.5 inch.; Solenoid Valve box. 1 Solenoid valve Dia. 2.0inch. |
| SDS1 | **Dry Networks** |  | 2026-10-10 → 2026-11-10 (+31d) |  |  |  |  |  |
| MV | **Medium Voltage Network** |  | 2026-10-10 → 2026-11-10 (+31d) |  |  |  |  |  |
| DMM2-Proc-Delv-6438 | Manuf. & Delivery for MV Cables Materials |  |  |  |  |  |  | resources Labor [434.5 h]; Operator [434.5 h]; Mobile Crane [200 h]; Cable 13.8 kV 3Cx 500 mm² Al XLPE,/LLDPE / Unarmored; Copper Cable 13.8 kV 3Cx 50 mm² CU/XLPE/STA/PVC → Labor [434.92 h]; Operator [434.92 h]; Mobile Crane [200 h]; Cable 13.8 kV 3Cx 500 mm² Al XLPE,/LLDPE / Unarmored; Copper Cable 13.8 kV 3Cx 50 mm² CU/XLPE/STA/PVC |
| DMM2-Proc-Delv-6458 | Manuf. & Delivery for Unit Substation Materials (80.11% Completed) |  | 2026-10-10 → 2026-09-15 A (-25d) | 192.75d → 172.75d | 80% → 100% | 93d → none |  | was named Manuf. & Delivery for Unit Substation Materials; resources Labor [868.99 h]; Operator [868.99 h]; Mobile Crane [400 h]; Unit Substation 13.8/0.4 K V, 500kVA → Labor [696.8 h]; Operator [696.8 h]; Mobile Crane [320.43 h]; Unit Substation 13.8/0.4 K V, 500kVA |
| DMM2-Proc-Delv-6468 | Manuf. & Delivery for RMU Materials (80.11% Completed) |  | 2026-10-10 → 2026-09-15 A (-25d) | 192.75d → 172.75d | 80% → 100% | 26d → none |  | was named Manuf. & Delivery for RMU Materials; resources Labor [521.4 h]; Operator [521.4 h]; Mobile Crane [240 h]; RMU, 13.8KV → Labor [418.08 h]; Operator [418.08 h]; Mobile Crane [192.26 h]; RMU, 13.8KV |
| DMM2-Proc-Delv-6478 | Manuf. & Delivery for LV Cables Materials |  |  |  |  |  | DMM2-Proc-PO-086, DMM2-Proc-Delv-4738, DMM2-Proc-Delv-4578 SS → DMM2-Proc-PO-086, DMM2-Proc-Delv-4738 | resources Labor [104.28 h]; Operator [104.28 h]; Mobile Crane [48 h]; Cable, Copper 4x10mm2/ CU/XLPE/SWA/PVC + 1x10mm2 CU/PVC; Cable, Copper 4x50mm2/ CU/XLPE/PVC +1x25mm2 CU/PVC → Labor [104.38 h]; Operator [104.38 h]; Mobile Crane [48 h]; Cable, Copper 4x10mm2/ CU/XLPE/SWA/PVC + 1x10mm2 CU/PVC; Cable, Copper 4x50mm2/ CU/XLPE/PVC +1x25mm2 CU/PVC |
| DMM2-Proc-Delv-6498 | Manuf. & Delivery for HDPE Ducts Materials |  |  |  |  |  |  | resources Labor [260.7 h]; Operator [260.7 h]; Mobile Crane [120 h]; (6*50mm) HDPE ducts; (6*50mm+2*32mm) HDPE ducts; (6*50mm+4*32mm) HDPE ducts; (2*32mm) HDPE ducts; Road crossing ducts, (6*50mm) HDPE → Labor [260.95 h]; Operator [260.95 h]; Mobile Crane [120 h]; (6*50mm) HDPE ducts; (6*50mm+2*32mm) HDPE ducts; (6*50mm+4*32mm) HDPE ducts; (2*32mm) HDPE ducts; Road crossing ducts, (6*50mm) HDPE |
| DMM2-Proc-Delv-6508 | Manuf. & Delivery for Manholes Type 1&2 Materials |  |  |  |  |  |  | resources Labor [191.18 h]; Operator [191.18 h]; Mobile Crane [88 h]; Manhole Type 1; Manhole Type 2 → Labor [191.37 h]; Operator [191.37 h]; Mobile Crane [88 h]; Manhole Type 1; Manhole Type 2 |
| SL | **Street Lighting** |  | 2026-10-10 → 2026-10-29 (+19d) |  |  |  |  |  |
| DMM2-Proc-Delv-6548 | Manuf. & Delivery for SL Luminares Materials (90.00% Completed) |  | 2026-09-28 → 2026-09-15 A (-13d) | 187.75d → 177.75d | 90% → 100% | 90d → none |  | was named Manuf. & Delivery for SL Luminares Materials; resources Labor [347.6 h]; Operator [347.6 h]; Mobile Crane [160 h]; Street Lighting( LED), Lamp Lumen: 14560, Luminare Lumen:12700 , complete with control gear and lamp, (80) WATT. → Labor [313.14 h]; Operator [313.14 h]; Mobile Crane [144 h]; Street Lighting( LED), Lamp Lumen: 14560, Luminare Lumen:12700 , complete with control gear and lamp, (80) WATT. |

| ID | Task | Start | Finish | Duration | Complete | Total float | Predecessors | Other |
| --- | --- | --- | --- | --- | --- | --- | --- | --- |
| DMM2-Proc-Delv-6538 | Manuf. & Delivery for SL Poles Materials (90.00% Completed) |  | 2026-09-28 → 2026-09-15 A (-13d) | 179d → 169d | 90% → 100% | 106d → none |  | was named Manuf. & Delivery for SL Poles Materials; resources Labor [434.5 h]; Operator [434.5 h]; Mobile Crane [200 h]; Lighting poles with 1 arm, height of ( 10) meters → Labor [391.43 h]; Operator [391.43 h]; Mobile Crane [180 h]; Lighting poles with 1 arm, height of ( 10) meters |
| DMM2-Proc-Delv-6528 | Manuf. & Delivery for SL Cables Materials |  |  |  |  |  | DMM2-Proc-PO-091, DMM2-Proc-Delv-4788 SS → DMM2-Proc-PO-091 | resources Labor [434.5 h]; Operator [434.5 h]; Mobile Crane [200 h]; SL Cable, Copper 4x10mm2/ CU/XLPE/SWA/PVC + 1x10mm2 CU/PVC → Labor [434.92 h]; Operator [434.92 h]; Mobile Crane [200 h]; SL Cable, Copper 4x10mm2/ CU/XLPE/SWA/PVC + 1x10mm2 CU/PVC |
| DMM2-Proc-Delv-6518 | Manuf. & Delivery for SL Pillars Materials (50.00% Completed) |  | 2026-10-10 → 2026-09-15 A (-25d) | 71d → 51d | 50% → 100% | 87d → none |  | was named Manuf. & Delivery for SL Pillars Materials; resources Labor [695.19 h]; Operator [695.19 h]; Mobile Crane [320 h]; Street Lighting Feeder pillars, work shall include earthing for the lighting pillars. → Labor [347.94 h]; Operator [347.94 h]; Mobile Crane [160 h]; Street Lighting Feeder pillars, work shall include earthing for the lighting pillars. |
| Short Lead | **Short Lead Items** |  | 2026-12-09 → 2026-12-29 (+20d) |  |  |  |  |  |
| Zone 01 | **Zone 01** |  | 2026-12-09 → 2026-12-29 (+20d) |  |  |  |  |  |
| Site Grading | **Earth & Road Works** |  | 2026-11-03 → 2026-11-15 (+12d) |  |  |  |  |  |
| DMM2-Proc-Delv-7200 | Manuf. & Delivery for Embankment & Backfilling Materials |  |  |  |  |  |  | resources Labor [243.32 h]; Operator [243.32 h]; Mobile Crane [112 h] → Labor [243.56 h]; Operator [243.56 h]; Mobile Crane [112 h] |
| DMM2-Proc-Delv-7203 | Manuf. & Delivery for Subgrade Materials |  |  |  |  |  |  | resources Labor [208.56 h]; Operator [208.56 h]; Mobile Crane [96 h] → Labor [208.76 h]; Operator [208.76 h]; Mobile Crane [96 h] |
| DMM2-Proc-Delv-7201 | Manuf. & Delivery for Agg. Base Coarse (90.00% Completed) |  | 2026-10-22 → 2026-09-15 A (-37d) | 143.76d → 112.76d | 90% → 100% | 85d → none |  | was named Manuf. & Delivery for Agg. Base Coarse; resources Labor [208.56 h]; Operator [208.56 h]; Mobile Crane [96 h] → Labor [187.89 h]; Operator [187.89 h]; Mobile Crane [86.4 h] |
| DMM2-Proc-Delv-7202 | Manuf. & Delivery for Asphalt Materials (40.00% Completed) |  | 2026-10-27 → 2026-09-15 A (-42d) | 149.76d → 90.76d | 40% → 100% | 22d → none |  | was named Manuf. & Delivery for Asphalt Materials; resources Labor [260.7 h]; Operator [260.7 h]; Mobile Crane [120 h] → Labor [104.38 h]; Operator [104.38 h]; Mobile Crane [48 h] |
| DMM2-Proc-Delv-7204 | Manuf. & Delivery for Curbstone Materials (0.00% Completed) |  | 2026-10-04 → 2026-09-15 A (-19d) | 31d → 18d | 0% → 100% | 27d → none | DMM2-Proc-PO-05, DMM2-Proc-Delv-7205 FF → DMM2-Proc-PO-05 | was named Manuf. & Delivery for Curbstone Materials; resources Labor [139.04 h]; Operator [139.04 h]; Mobile Crane [64 h] → Labor; Operator; Mobile Crane |
| DMM2-Proc-Delv-7205 | Manuf. & Delivery for Interlock Materials | 2026-09-16 → 2026-09-30 A (+14d) | 2026-10-04 → 2026-10-15 (+11d) |  | 0% → 50% | 7d → 40.82d |  | resources Labor [260.7 h]; Operator [260.7 h]; Mobile Crane [120 h] → Labor [260.95 h]; Operator [260.95 h]; Mobile Crane [120 h] |
| DMM2-Proc-Delv-7206 | Manuf. & Delivery for Pavement Markings Materials | 2026-10-05 → 2026-10-15 (+10d) | 2026-10-15 → 2026-10-27 (+12d) |  |  | 35d → 40.82d | DMM2-Proc-PO-07, DMM2-Proc-Delv-7204, DMM2-Proc-Delv-7200 → DMM2-Proc-PO-07, DMM2-Proc-Delv-7204_R, DMM2-Proc-Delv-7200 | resources Labor [173.8 h]; Operator [173.8 h]; Mobile Crane [80 h] → Labor [173.97 h]; Operator [173.97 h]; Mobile Crane [80 h] |
| DMM2-Proc-Delv-7208 | Manuf. & Delivery for Traffic Signs Materials | 2026-10-17 → 2026-10-27 (+10d) | 2026-10-27 → 2026-11-08 (+12d) |  |  | 35d → 40.82d |  | resources Labor [173.8 h]; Operator [173.8 h]; Mobile Crane [80 h] → Labor [173.97 h]; Operator [173.97 h]; Mobile Crane [80 h] |
| DMM2-Proc-Delv-7209 | Manuf. & Delivery for ground Mounted Information Signs Materials | 2026-10-08 → 2026-10-28 (+20d) | 2026-10-19 → 2026-11-08 (+20d) |  |  | 74d → 71.32d |  | resources Labor [347.6 h]; Operator [347.6 h]; Mobile Crane [160 h] → Labor [347.94 h]; Operator [347.94 h]; Mobile Crane [160 h] |
| DMM2-Proc-Delv-7207 | Manuf. & Delivery for Wheels Stopper (precast concrete) Materials | 2026-11-02 → 2026-11-12 (+10d) | 2026-11-03 → 2026-11-15 (+12d) |  |  | 71d → 75.82d |  | resources Labor [173.8 h]; Operator [173.8 h]; Mobile Crane [80 h] → Labor [173.97 h]; Operator [173.97 h]; Mobile Crane [80 h] |
| SDS | **Wet Networks & Stations** |  | 2026-10-13 → 2026-11-04 (+22d) |  |  |  |  |  |
| DMM2-Proc-Delv-7213 | Manuf. & Delivery for uPVC Pipes Materials |  |  |  |  |  |  | resources Labor [451.88 h]; Operator [451.88 h]; Mobile Crane [208 h] → Labor [452.32 h]; Operator [452.32 h]; Mobile Crane [208 h] |
| TSE | **TSE Network** | 2026-09-27 → 2026-10-19 (+22d) | 2026-10-13 → 2026-11-04 (+22d) |  |  |  |  |  |
| DMM2-Proc-Delv-7256 | Manuf. & Delivery for Dripper Materials | 2026-09-27 → 2026-10-19 (+22d) | 2026-10-13 → 2026-11-04 (+22d) |  |  | 28d → 23.32d |  | resources Labor [260.7 h]; Operator [260.7 h]; Mobile Crane [120 h] → Labor [260.95 h]; Operator [260.95 h]; Mobile Crane [120 h] |
| DMM2-Proc-Delv-7257 | Manuf. & Delivery for Bubbler Materials | 2026-09-27 → 2026-10-19 (+22d) | 2026-10-13 → 2026-11-04 (+22d) |  |  | 34d → 29.32d |  | resources Labor [260.7 h]; Operator [260.7 h]; Mobile Crane [120 h] → Labor [260.95 h]; Operator [260.95 h]; Mobile Crane [120 h] |
| DMM2-Proc-Delv-7258 | Manuf. & Delivery for Pull Box Materials | 2026-09-27 → 2026-10-19 (+22d) | 2026-10-13 → 2026-11-04 (+22d) |  |  | 27d → 22.32d |  | resources Labor [260.7 h]; Operator [260.7 h]; Mobile Crane [120 h] → Labor [260.95 h]; Operator [260.95 h]; Mobile Crane [120 h] |
| DMM2-Proc-Delv-7259 | Manuf. & Delivery for Two Wire Decoder Cable 12 awg Materials | 2026-09-27 → 2026-10-19 (+22d) | 2026-10-13 → 2026-11-04 (+22d) |  |  | 25d → 20.32d |  | resources Labor [260.7 h]; Operator [260.7 h]; Mobile Crane [120 h] → Labor [260.95 h]; Operator [260.95 h]; Mobile Crane [120 h] |
| SDS1 | **Dry Networks** | 2026-09-29 → 2026-10-19 (+20d) | 2026-10-07 → 2026-10-27 (+20d) |  |  |  |  |  |
| SL | **Street Lighting** | 2026-09-29 → 2026-10-19 (+20d) | 2026-10-07 → 2026-10-27 (+20d) |  |  |  |  |  |
| DMM2-Proc-Delv-7240 | Manuf. & Delivery for SL Earthing Materials | 2026-09-29 → 2026-10-19 (+20d) | 2026-10-04 → 2026-10-24 (+20d) |  |  | 91d → 89.32d |  | resources Labor [260.7 h]; Operator [260.7 h]; Mobile Crane [120 h] → Labor [260.95 h]; Operator [260.95 h]; Mobile Crane [120 h] |
| DMM2-Proc-Delv-7241 | Manuf. & Delivery for SL Drawpits Materials | 2026-10-04 → 2026-10-24 (+20d) | 2026-10-07 → 2026-10-27 (+20d) |  |  | 88d → 87.32d |  | resources Labor [434.5 h]; Operator [434.5 h]; Mobile Crane [200 h] → Labor [434.92 h]; Operator [434.92 h]; Mobile Crane [200 h] |
| Landscape | **Landscape Works** | 2026-09-16 → 2026-10-07 (+21d) | 2026-12-09 → 2026-12-29 (+20d) |  |  |  |  |  |
| DMM2-Proc-Delv-7242 | Manuf. & Delivery for Trees Materials | 2026-09-16 → 2026-10-07 (+21d) | 2026-10-21 → 2026-11-10 (+20d) |  |  | 29d → 27.32d |  | resources Labor [260.7 h]; Operator [260.7 h]; Mobile Crane [120 h] → Labor [260.95 h]; Operator [260.95 h]; Mobile Crane [120 h] |
| DMM2-Proc-Delv-7244 | Manuf. & Delivery for Geotextile Layers Materials | 2026-09-16 → 2026-10-07 (+21d) | 2026-10-21 → 2026-11-10 (+20d) |  |  | 7d → 5.32d |  | resources Labor [173.8 h]; Operator [173.8 h]; Mobile Crane [80 h] → Labor [173.97 h]; Operator [173.97 h]; Mobile Crane [80 h] |
| DMM2-Proc-Delv-7246 | Manuf. & Delivery for Large Shrubs Materials | 2026-09-16 → 2026-10-07 (+21d) | 2026-09-30 → 2026-10-20 (+20d) |  |  | 39d → 37.32d |  | resources Labor [208.56 h]; Operator [208.56 h]; Mobile Crane [96 h] → Labor [208.76 h]; Operator [208.76 h]; Mobile Crane [96 h] |
| DMM2-Proc-Delv-7248 | Manuf. & Delivery for Gravel/Stone Mulch Materials | 2026-09-16 → 2026-10-07 (+21d) | 2026-10-10 → 2026-10-29 (+19d) |  |  | 17d → 15.32d |  | resources Labor [173.8 h]; Operator [173.8 h]; Mobile Crane [80 h] → Labor [173.97 h]; Operator [173.97 h]; Mobile Crane [80 h] |
| DMM2-Proc-Delv-7252 | Manuf. & Delivery for Vehicle and Pedestrian Steel Gate Materials | 2026-09-19 → 2026-10-10 (+21d) | 2026-10-24 → 2026-11-12 (+19d) |  |  | 8d → 6.32d |  | resources Labor [347.6 h]; Operator [347.6 h]; Mobile Crane [160 h] → Labor [347.94 h]; Operator [347.94 h]; Mobile Crane [160 h] |
| DMM2-Proc-Delv-7251 | Manuf. & Delivery for Vehicle Steel Gate Materials | 2026-10-25 → 2026-11-14 (+20d) | 2026-11-04 → 2026-11-24 (+20d) |  |  | 12d → 10.32d |  | resources Labor [347.6 h]; Operator [347.6 h]; Mobile Crane [160 h] → Labor [347.94 h]; Operator [347.94 h]; Mobile Crane [160 h] |
| DMM2-Proc-Delv-7245 | Manuf. & Delivery for Plastic edge Materials | 2026-10-31 → 2026-11-19 (+19d) | 2026-11-10 → 2026-11-30 (+20d) |  |  | 7d → 5.32d |  | resources Labor [173.8 h]; Operator [173.8 h]; Mobile Crane [80 h] → Labor [173.97 h]; Operator [173.97 h]; Mobile Crane [80 h] |
| DMM2-Proc-Delv-7250 | Manuf. & Delivery Prepare & Submit for Fences (MODON) Materials | 2026-11-05 → 2026-11-25 (+20d) | 2026-11-16 → 2026-12-06 (+20d) |  |  | 12d → 10.32d |  | resources Labor [347.6 h]; Operator [347.6 h]; Mobile Crane [160 h] → Labor [347.94 h]; Operator [347.94 h]; Mobile Crane [160 h] |
| DMM2-Proc-Delv-7247 | Manuf. & Delivery for Plants Materials | 2026-11-11 → 2026-12-01 (+20d) | 2026-11-28 → 2026-12-17 (+19d) |  |  | 10d → 8.32d |  | resources Labor [260.7 h]; Operator [260.7 h]; Mobile Crane [120 h] → Labor [260.95 h]; Operator [260.95 h]; Mobile Crane [120 h] |
| DMM2-Proc-Delv-7249 | Manuf. & Delivery for Fences (ZATCA HCIS) Materials | 2026-11-17 → 2026-12-07 (+20d) | 2026-11-28 → 2026-12-17 (+19d) |  |  | 12d → 10.32d |  | resources Labor [347.6 h]; Operator [347.6 h]; Mobile Crane [160 h] → Labor [347.94 h]; Operator [347.94 h]; Mobile Crane [160 h] |
| DMM2-Proc-Delv-7243 | Manuf. & Delivery for Ornamental Grasses Materials | 2026-11-29 → 2026-12-19 (+20d) | 2026-12-09 → 2026-12-29 (+20d) |  |  | 12d → 10.32d |  | resources Labor [173.8 h]; Operator [173.8 h]; Mobile Crane [80 h] → Labor [173.97 h]; Operator [173.97 h]; Mobile Crane [80 h] |
| Zone 02 | **Zone 02** |  | 2026-12-03 → 2026-12-23 (+20d) |  |  |  |  |  |
| Site Grading | **Earth & Road Works** |  | 2026-11-08 → 2026-11-19 (+11d) |  |  |  |  |  |
| DMM2-Proc-Delv-7263 | Manuf. & Delivery for Embankment & Backfilling Materials |  |  |  |  |  |  | resources Labor [243.32 h]; Operator [243.32 h]; Mobile Crane [112 h] → Labor [243.5 h]; Operator [243.5 h]; Mobile Crane [112 h] |
| DMM2-Proc-Delv-7266 | Manuf. & Delivery for Subgrade Materials |  |  |  |  |  |  | resources Labor [173.8 h]; Operator [173.8 h]; Mobile Crane [80 h] → Labor [173.97 h]; Operator [173.97 h]; Mobile Crane [80 h] |
| DMM2-Proc-Delv-7264 | Manuf. & Delivery for Agg. Base Coarse (30.00% Completed) |  | 2026-09-24 → 2026-09-15 A (-9d) | 111.76d → 104.76d | 30% → 100% | 109d → none |  | was named Manuf. & Delivery for Agg. Base Coarse; resources Labor [173.8 h]; Operator [173.8 h]; Mobile Crane [80 h] → Labor [52.19 h]; Operator [52.19 h]; Mobile Crane [24 h] |
| DMM2-Proc-Delv-7265 | Manuf. & Delivery for Asphalt Materials | 2026-10-17 → 2026-09-17 A (-30d) |  |  | 0% → 50% | 22d → 40.82d | DMM2-Proc-PO-03, DMM2-Proc-Delv-7202 FF → DMM2-Proc-PO-03, DMM2-Proc-Delv-7202_R FF | resources Labor [260.7 h]; Operator [260.7 h]; Mobile Crane [120 h] → Labor [260.95 h]; Operator [260.95 h]; Mobile Crane [120 h] |
| DMM2-Proc-Delv-7267 | Manuf. & Delivery for Curbstone Materials | 2026-10-05 A | 2026-10-13 → 2026-10-11 (-2d) |  | 0% → 50% | 27d → 47.32d | DMM2-Proc-PO-05, DMM2-Proc-Delv-7204 → DMM2-Proc-PO-05, DMM2-Proc-Delv-7204_R | resources Labor [139.04 h]; Operator [139.04 h]; Mobile Crane [64 h] → Labor [139.18 h]; Operator [139.18 h]; Mobile Crane [64 h] |
| DMM2-Proc-Delv-7268 | Manuf. & Delivery for Interlock Materials | 2026-10-05 A | 2026-10-21 → 2026-10-15 (-6d) |  | 0% → 50% | 7d → 32.82d |  | resources Labor [260.7 h]; Operator [260.7 h]; Mobile Crane [120 h] → Labor [260.95 h]; Operator [260.95 h]; Mobile Crane [120 h] |
| DMM2-Proc-Delv-7269 | Manuf. & Delivery for Pavement Markings Materials | 2026-10-17 → 2026-10-27 (+10d) | 2026-10-27 → 2026-11-08 (+12d) |  |  | 35d → 40.82d |  | resources Labor [173.8 h]; Operator [173.8 h]; Mobile Crane [80 h] → Labor [173.97 h]; Operator [173.97 h]; Mobile Crane [80 h] |
| DMM2-Proc-Delv-7271 | Manuf. & Delivery for Traffic Signs Materials | 2026-10-28 → 2026-11-08 (+11d) | 2026-11-08 → 2026-11-19 (+11d) |  |  | 35d → 40.82d |  | resources Labor [173.8 h]; Operator [173.8 h]; Mobile Crane [80 h] → Labor [173.97 h]; Operator [173.97 h]; Mobile Crane [80 h] |
| DMM2-Proc-Delv-7272 | Manuf. & Delivery for ground Mounted Information Signs Materials | 2026-10-20 → 2026-11-09 (+20d) | 2026-10-31 → 2026-11-19 (+19d) |  |  | 74d → 71.32d |  | resources Labor [347.6 h]; Operator [347.6 h]; Mobile Crane [160 h] → Labor [347.94 h]; Operator [347.94 h]; Mobile Crane [160 h] |
| DMM2-Proc-Delv-7270 | Manuf. & Delivery for Wheels Stopper (precast concrete) Materials | 2026-11-02 → 2026-11-12 (+10d) | 2026-11-03 → 2026-11-15 (+12d) |  |  | 71d → 75.82d |  | resources Labor [173.8 h]; Operator [173.8 h]; Mobile Crane [80 h] → Labor [173.97 h]; Operator [173.97 h]; Mobile Crane [80 h] |
| SDS | **Wet Networks & Stations** |  | 2026-11-01 → 2026-11-21 (+20d) |  |  |  |  |  |
| Storm | **Storm Network** |  | 2026-10-07 → 2026-09-22 (-15d) |  |  |  |  |  |
| DMM2-Proc-Delv-7277 | Manuf. & Delivery for uPVC Pipes Materials (77.75% Completed) |  | 2026-09-22 → 2026-09-15 A (-7d) | 231.18d → 225.18d | 78% → 100% | 110d → none |  | was named Manuf. & Delivery for uPVC Pipes Materials; resources Labor [451.88 h]; Operator [451.88 h]; Mobile Crane [208 h] → Labor [351.68 h]; Operator [351.68 h]; Mobile Crane [161.72 h] |
| DMM2-Proc-Delv-7274 | Manuf. & Delivery for Steel Reinforcement Materials (40.00% Completed) |  | 2026-10-07 → 2026-09-15 A (-22d) | 116d → 98d | 40% → 100% | 98d → none |  | was named Manuf. & Delivery for Steel Reinforcement Materials; resources Labor [521.4 h]; Operator [521.4 h]; Mobile Crane [240 h] → Labor [208.76 h]; Operator [208.76 h]; Mobile Crane [96 h] |
| TSE | **TSE Network** | 2026-10-03 → 2026-10-25 (+22d) | 2026-10-13 → 2026-11-04 (+22d) |  |  |  |  |  |
| DMM2-Proc-Delv-7382 | Manuf. & Delivery for Pull Box Materials | 2026-10-03 → 2026-10-25 (+22d) | 2026-10-13 → 2026-11-04 (+22d) |  |  | 27d → 22.32d |  | resources Labor [260.7 h]; Operator [260.7 h]; Mobile Crane [120 h] → Labor [260.95 h]; Operator [260.95 h]; Mobile Crane [120 h] |
| DMM2-Proc-Delv-7383 | Manuf. & Delivery for Two Wire Decoder Cable 12 awg Materials | 2026-10-03 → 2026-10-25 (+22d) | 2026-10-13 → 2026-11-04 (+22d) |  |  | 25d → 20.32d |  | resources Labor [260.7 h]; Operator [260.7 h]; Mobile Crane [120 h] → Labor [260.95 h]; Operator [260.95 h]; Mobile Crane [120 h] |
| DMM2-Proc-Delv-7380 | Manuf. & Delivery for Dripper Materials | 2026-10-06 → 2026-10-28 (+22d) | 2026-10-13 → 2026-11-04 (+22d) |  |  | 28d → 23.32d |  | resources Labor [260.7 h]; Operator [260.7 h]; Mobile Crane [120 h] → Labor [260.95 h]; Operator [260.95 h]; Mobile Crane [120 h] |
| DMM2-Proc-Delv-7381 | Manuf. & Delivery for Bubbler Materials | 2026-10-06 → 2026-10-28 (+22d) | 2026-10-13 → 2026-11-04 (+22d) |  |  | 34d → 29.32d |  | resources Labor [260.7 h]; Operator [260.7 h]; Mobile Crane [120 h] → Labor [260.95 h]; Operator [260.95 h]; Mobile Crane [120 h] |
| Pot Pump St. | **Potable Water Pump Station** |  | 2026-11-01 → 2026-11-21 (+20d) |  |  |  |  |  |
| 1 | **Civil & Architecture** |  | 2026-10-20 → 2026-11-09 (+20d) |  |  |  |  |  |
| DMM2-Proc-Delv-7293 | Manuf. & Delivery for CMU Walls Materials | 2026-09-19 A | 2026-09-21 A |  | 0% → 100% | 17d → none |  | resources Labor [173.8 h]; Operator [173.8 h]; Mobile Crane [80 h] → Labor [173.97 h]; Operator [173.97 h]; Mobile Crane [80 h] |
| DMM2-Proc-Delv-7297 | Manuf. & Delivery for Gravel Materials | 2026-09-19 → 2026-10-10 (+21d) | 2026-09-20 → 2026-10-11 (+21d) |  |  | 52d → 50.32d |  | resources Labor [104.28 h]; Operator [104.28 h]; Mobile Crane [48 h] → Labor [104.38 h]; Operator [104.38 h]; Mobile Crane [48 h] |
| DMM2-Proc-Delv-7294 | Manuf. & Delivery for Stainless Steel Ladder Materials | 2026-09-22 → 2026-10-13 (+21d) | 2026-10-10 → 2026-10-29 (+19d) |  |  | 20d → 18.32d | DMM2-Proc-PO-032, DMM2-Proc-Delv-2648 → DMM2-Proc-PO-032, DMM2-Proc-Delv-2648_R | resources Labor [260.7 h]; Operator [260.7 h]; Mobile Crane [120 h] → Labor [260.95 h]; Operator [260.95 h]; Mobile Crane [120 h] |
| DMM2-Proc-Delv-7298 | Manuf. & Delivery for Handrail Materials | 2026-09-24 → 2026-10-14 (+20d) | 2026-10-11 → 2026-10-31 (+20d) |  |  | 3d → 1.32d |  | resources Labor [260.7 h]; Operator [260.7 h]; Mobile Crane [120 h] → Labor [260.95 h]; Operator [260.95 h]; Mobile Crane [120 h] |
| DMM2-Proc-Delv-7292 | Manuf. & Delivery for Stairs Materials | 2026-10-04 → 2026-10-24 (+20d) | 2026-10-12 → 2026-11-01 (+20d) |  |  | 18d → 16.32d | DMM2-Proc-PO-030, DMM2-Proc-Delv-2648, DMM2-Proc-Delv-2528 → DMM2-Proc-PO-030, DMM2-Proc-Delv-2648_R, DMM2-Proc-Delv-2528_R | resources Labor [521.4 h]; Operator [521.4 h]; Mobile Crane [240 h] → Labor [521.91 h]; Operator [521.91 h]; Mobile Crane [240 h] |
| DMM2-Proc-Delv-7295 | Manuf. & Delivery for Steel shutter Door Materials | 2026-10-04 → 2026-10-24 (+20d) | 2026-10-20 → 2026-11-09 (+20d) |  |  | 17d → 15.32d |  | resources Labor [260.7 h]; Operator [260.7 h]; Mobile Crane [120 h] → Labor [260.95 h]; Operator [260.95 h]; Mobile Crane [120 h] |
| DMM2-Proc-Delv-7296 | Manuf. & Delivery for Metal Railing Materials | 2026-10-12 → 2026-11-01 (+20d) | 2026-10-20 → 2026-11-09 (+20d) |  |  | 17d → 15.32d |  | resources Labor [260.7 h]; Operator [260.7 h]; Mobile Crane [120 h] → Labor [260.95 h]; Operator [260.95 h]; Mobile Crane [120 h] |
| 3 | **Mechanical** | 2026-09-19 → 2026-10-10 (+21d) | 2026-11-01 → 2026-11-21 (+20d) |  |  |  |  |  |

| ID | Task | Start | Finish | Total float | Predecessors | Other |
| --- | --- | --- | --- | --- | --- | --- |
| DMM2-Proc-Delv-7304 | Manuf. & Delivery for Sand Trap Louver Materials | 2026-09-19 → 2026-10-10 (+21d) | 2026-09-30 → 2026-10-20 (+20d) | 9d → 7.32d |  | resources Labor [173.8 h]; Operator [347.6 h]; Mobile Crane [80 h] → Labor [173.97 h]; Operator [347.94 h]; Mobile Crane [80 h] |
| DMM2-Proc-Delv-7393 | Manuf. & Delivery for Fans Materials | 2026-09-19 → 2026-10-10 (+21d) | 2026-09-30 → 2026-10-20 (+20d) | 22d → 20.32d |  | resources Labor [347.6 h]; Operator [347.6 h]; Mobile Crane [160 h] → Labor [347.94 h]; Operator [347.94 h]; Mobile Crane [160 h] |
| DMM2-Proc-Delv-7312 | Manuf. & Delivery for Trench Drain Materials | 2026-09-26 → 2026-10-15 (+19d) | 2026-10-01 → 2026-10-21 (+20d) | 40d → 38.32d |  | resources Labor [208.56 h]; Operator [208.56 h]; Mobile Crane [96 h] → Labor [208.76 h]; Operator [208.76 h]; Mobile Crane [96 h] |
| DMM2-Proc-Delv-7306 | Manuf. & Delivery for Hose Bibb Materials | 2026-09-27 → 2026-10-17 (+20d) | 2026-10-07 → 2026-10-27 (+20d) | 36d → 34.32d |  | resources Labor [173.8 h]; Operator [173.8 h]; Mobile Crane [80 h] → Labor [173.97 h]; Operator [173.97 h]; Mobile Crane [80 h] |
| DMM2-Proc-Delv-7308 | Manuf. & Delivery for Chlorine Cylinder Racks Materials | 2026-09-27 → 2026-10-17 (+20d) | 2026-10-19 → 2026-11-08 (+20d) | 4d → 2.32d | DMM2-Proc-PO-046, DMM2-Proc-Delv-2648 → DMM2-Proc-PO-046, DMM2-Proc-Delv-2648_R | resources Labor [347.6 h]; Operator [347.6 h]; Mobile Crane [160 h] → Labor [347.94 h]; Operator [347.94 h]; Mobile Crane [160 h] |
| DMM2-Proc-Delv-7309 | Manuf. & Delivery for Chlorinators Materials | 2026-09-29 → 2026-10-19 (+20d) | 2026-10-07 → 2026-10-27 (+20d) | 16d → 14.32d | DMM2-Proc-PO-047, DMM2-Proc-Delv-2648 → DMM2-Proc-PO-047, DMM2-Proc-Delv-2648_R | resources Labor [347.6 h]; Operator [347.6 h]; Mobile Crane [160 h] → Labor [347.94 h]; Operator [347.94 h]; Mobile Crane [160 h] |
| DMM2-Proc-Delv-7305 | Manuf. & Delivery for FM200 Supression System Materials | 2026-10-04 → 2026-10-21 (+17d) | 2026-10-20 → 2026-11-07 (+18d) | 7d → 7.32d | DMM2-Proc-PO-043, DMM2-Proc-Delv-2648, DMM2-Proc-Delv-7304, DMM2-Proc-Delv-3748, DMM2-Proc-Delv-3758 → DMM2-Proc-PO-043, DMM2-Proc-Delv-2648_R, DMM2-Proc-Delv-7304, DMM2-Proc-Delv-3748, DMM2-Proc-Delv-3758_R | resources Labor [347.6 h]; Operator [347.6 h]; Mobile Crane [160 h] → Labor [347.94 h]; Operator [347.94 h]; Mobile Crane [160 h] |
| DMM2-Proc-Delv-7310 | Manuf. & Delivery for Discharge Line Analyzer Materials | 2026-10-01 → 2026-10-21 (+20d) | 2026-10-11 → 2026-10-31 (+20d) | 13d → 11.32d | DMM2-Proc-PO-048, DMM2-Proc-Delv-2648 → DMM2-Proc-PO-048, DMM2-Proc-Delv-2648_R | resources Labor [347.6 h]; Operator [347.6 h]; Mobile Crane [160 h] → Labor [347.94 h]; Operator [347.94 h]; Mobile Crane [160 h] |
| DMM2-Proc-Delv-7394 | Manuf. & Delivery for Louvers Materials | 2026-10-01 → 2026-10-21 (+20d) | 2026-10-18 → 2026-11-07 (+20d) | 32d → 30.32d |  | resources Labor [260.7 h]; Operator [260.7 h]; Mobile Crane [120 h] → Labor [260.95 h]; Operator [260.95 h]; Mobile Crane [120 h] |
| DMM2-Proc-Delv-7311 | Manuf. & Delivery for Emergency shower Materials | 2026-10-04 → 2026-10-24 (+20d) | 2026-10-14 → 2026-11-03 (+20d) | 32d → 30.32d |  | resources Labor [173.8 h]; Operator [173.8 h]; Mobile Crane [80 h] → Labor [173.97 h]; Operator [173.97 h]; Mobile Crane [80 h] |
| DMM2-Proc-Delv-7307 | Manuf. & Delivery for Exhaust Fans Materials | 2026-10-12 → 2026-11-01 (+20d) | 2026-10-22 → 2026-11-11 (+20d) | 3d → 1.32d |  | resources Labor [173.8 h]; Operator [173.8 h]; Mobile Crane [80 h] → Labor [173.97 h]; Operator [173.97 h]; Mobile Crane [80 h] |
| DMM2-Proc-Delv-7303 | Manuf. & Delivery for Strainers Materials | 2026-10-21 → 2026-11-10 (+20d) | 2026-11-01 → 2026-11-21 (+20d) | 17d → 15.32d |  | resources Labor [173.8 h]; Operator [173.8 h]; Mobile Crane [80 h] → Labor [173.97 h]; Operator [173.97 h]; Mobile Crane [80 h] |
| 2 | **Electrical** | 2026-10-19 → 2026-11-08 (+20d) | 2026-10-24 → 2026-11-12 (+19d) |  |  |  |
| DMM2-Proc-Delv-7396 | Manuf. & Delivery for Switches and Circuit Breakers Materials | 2026-10-19 → 2026-11-08 (+20d) | 2026-10-24 → 2026-11-12 (+19d) | 32d → 30.32d |  | resources Labor [208.56 h]; Operator [208.56 h]; Mobile Crane [96 h] → Labor [208.76 h]; Operator [208.76 h]; Mobile Crane [96 h] |
| Landscape | **Landscape Works** | 2026-10-01 → 2026-10-21 (+20d) | 2026-12-03 → 2026-12-23 (+20d) |  |  |  |
| DMM2-Proc-Delv-7332 | Manuf. & Delivery for Large Shrubs Materials | 2026-10-01 → 2026-10-21 (+20d) | 2026-10-04 → 2026-10-24 (+20d) | 39d → 37.32d |  | resources Labor [208.56 h]; Operator [208.56 h]; Mobile Crane [96 h] → Labor [208.76 h]; Operator [208.76 h]; Mobile Crane [96 h] |
| DMM2-Proc-Delv-7328 | Manuf. & Delivery for Trees Materials | 2026-10-22 → 2026-11-11 (+20d) | 2026-11-08 → 2026-11-28 (+20d) | 29d → 27.32d |  | resources Labor [260.7 h]; Operator [260.7 h]; Mobile Crane [120 h] → Labor [260.95 h]; Operator [260.95 h]; Mobile Crane [120 h] |
| DMM2-Proc-Delv-7330 | Manuf. & Delivery for Geotextile Layers Materials | 2026-10-22 → 2026-11-11 (+20d) | 2026-11-02 → 2026-11-22 (+20d) | 11d → 9.32d |  | resources Labor [173.8 h]; Operator [173.8 h]; Mobile Crane [80 h] → Labor [173.97 h]; Operator [173.97 h]; Mobile Crane [80 h] |
| DMM2-Proc-Delv-7334 | Manuf. & Delivery for Gravel/Stone Mulch Materials | 2026-10-22 → 2026-11-11 (+20d) | 2026-10-29 → 2026-11-18 (+20d) | 7d → 5.32d |  | resources Labor [173.8 h]; Operator [173.8 h]; Mobile Crane [80 h] → Labor [173.97 h]; Operator [173.97 h]; Mobile Crane [80 h] |
| DMM2-Proc-Delv-7338 | Manuf. & Delivery for Vehicle and Pedestrian Steel Gate Materials | 2026-10-25 → 2026-11-14 (+20d) | 2026-11-04 → 2026-11-24 (+20d) | 8d → 6.32d |  | resources Labor [347.6 h]; Operator [347.6 h]; Mobile Crane [160 h] → Labor [347.94 h]; Operator [347.94 h]; Mobile Crane [160 h] |
| DMM2-Proc-Delv-7337 | Manuf. & Delivery for Vehicle Steel Gate Materials | 2026-11-05 → 2026-11-25 (+20d) | 2026-11-16 → 2026-12-06 (+20d) | 16d → 14.32d |  | resources Labor [347.6 h]; Operator [347.6 h]; Mobile Crane [160 h] → Labor [347.94 h]; Operator [347.94 h]; Mobile Crane [160 h] |
| DMM2-Proc-Delv-7331 | Manuf. & Delivery for Plastic edge Materials | 2026-11-11 → 2026-12-01 (+20d) | 2026-11-22 → 2026-12-12 (+20d) | 7d → 5.32d |  | resources Labor [173.8 h]; Operator [173.8 h]; Mobile Crane [80 h] → Labor [173.97 h]; Operator [173.97 h]; Mobile Crane [80 h] |
| DMM2-Proc-Delv-7335 | Manuf. & Delivery for Fences (ZATCA HCIS) Materials | 2026-11-17 → 2026-12-07 (+20d) | 2026-12-03 → 2026-12-23 (+20d) | 12d → 10.32d |  | resources Labor [330.22 h]; Operator [330.22 h]; Mobile Crane [152 h] → Labor [330.54 h]; Operator [330.54 h]; Mobile Crane [152 h] |
| DMM2-Proc-Delv-7336 | Manuf. & Delivery for Fences (MODON) Materials | 2026-11-17 → 2026-12-07 (+20d) | 2026-12-03 → 2026-12-23 (+20d) | 12d → 10.32d |  | resources Labor [347.6 h]; Operator [347.6 h]; Mobile Crane [160 h] → Labor [347.94 h]; Operator [347.94 h]; Mobile Crane [160 h] |
| DMM2-Proc-Delv-7329 | Manuf. & Delivery for Ornamental Grasses Materials | 2026-11-29 → 2026-12-19 (+20d) | 2026-12-01 → 2026-12-21 (+20d) | 12d → 10.32d |  | resources Labor [173.8 h]; Operator [173.8 h]; Mobile Crane [80 h] → Labor [173.97 h]; Operator [173.97 h]; Mobile Crane [80 h] |
| DMM2-Proc-Delv-7333 | Manuf. & Delivery for Plants Materials | 2026-11-29 → 2026-12-19 (+20d) | 2026-12-03 → 2026-12-23 (+20d) | 10d → 8.32d |  | resources Labor [260.7 h]; Operator [260.7 h]; Mobile Crane [120 h] → Labor [260.95 h]; Operator [260.95 h]; Mobile Crane [120 h] |
| Guard Room | **Guard Rooms** | 2026-09-16 → 2026-10-07 (+21d) | 2026-10-27 → 2026-11-16 (+20d) |  |  |  |
| GR MAT Civil | **Civil & Architecture** | 2026-09-16 → 2026-10-07 (+21d) | 2026-10-18 → 2026-11-07 (+20d) |  |  |  |
| DMM2-Proc-Delv-7343 | Manuf. & Delivery for Water proofing Membrane Materials | 2026-09-16 → 2026-10-07 (+21d) | 2026-09-21 → 2026-10-12 (+21d) | 46d → 44.32d |  | resources Labor [260.7 h]; Operator [260.7 h]; Mobile Crane [120 h] → Labor [260.95 h]; Operator [260.95 h]; Mobile Crane [120 h] |
| DMM2-Proc-Delv-7344 | Manuf. & Delivery for Concrete Masonry Materials | 2026-09-22 → 2026-10-07 (+15d) | 2026-09-28 → 2026-10-12 (+14d) | 17d → 20.32d |  | resources Labor [260.7 h]; Operator [260.7 h]; Mobile Crane [120 h] → Labor [260.95 h]; Operator [260.95 h]; Mobile Crane [120 h] |
| DMM2-Proc-Delv-7342 | Manuf. & Delivery for Fluid-Applied Water Proofing Paint Materials | 2026-09-19 → 2026-10-10 (+21d) | 2026-09-21 → 2026-10-12 (+21d) | 44d → 42.32d |  | resources Labor [347.6 h]; Operator [347.6 h]; Mobile Crane [160 h] → Labor [347.94 h]; Operator [347.94 h]; Mobile Crane [160 h] |
| DMM2-Proc-Delv-7345 | Manuf. & Delivery for Porcelain Flooring Tiles Materials | 2026-09-19 → 2026-10-10 (+21d) | 2026-10-06 → 2026-10-26 (+20d) | 21d → 19.32d |  | resources Labor [260.7 h]; Operator [260.7 h]; Mobile Crane [120 h] → Labor [260.95 h]; Operator [260.95 h]; Mobile Crane [120 h] |
| DMM2-Proc-Delv-7341 | Manuf. & Delivery for Board Insulation Materials | 2026-09-29 → 2026-10-14 (+15d) | 2026-10-06 → 2026-10-21 (+15d) | 17d → 19.32d |  | resources Labor [260.7 h]; Operator [260.7 h]; Mobile Crane [120 h] → Labor [260.95 h]; Operator [260.95 h]; Mobile Crane [120 h] |
| DMM2-Proc-Delv-7339 | Manuf. & Delivery for Stone Coping Materials | 2026-10-07 → 2026-10-22 (+15d) | 2026-10-10 → 2026-10-25 (+15d) | 18d → 20.32d |  | resources Labor [260.7 h]; Operator [260.7 h]; Mobile Crane [120 h] → Labor [260.95 h]; Operator [260.95 h]; Mobile Crane [120 h] |
| DMM2-Proc-Delv-7346 | Manuf. & Delivery for gypsum Board Suspended Ceiling Materials | 2026-10-07 → 2026-10-22 (+15d) | 2026-10-10 → 2026-10-25 (+15d) | 31d → 33.32d |  | resources Labor [260.7 h]; Operator [260.7 h]; Mobile Crane [120 h] → Labor [260.95 h]; Operator [260.95 h]; Mobile Crane [120 h] |
| DMM2-Proc-Delv-7348 | Manuf. & Delivery for Raised Floor System Materials | 2026-10-07 → 2026-10-22 (+15d) | 2026-10-10 → 2026-10-25 (+15d) | 31d → 33.32d |  | resources Labor [260.7 h]; Operator [260.7 h]; Mobile Crane [120 h] → Labor [260.95 h]; Operator [260.95 h]; Mobile Crane [120 h] |
| DMM2-Proc-Delv-7351 | Manuf. & Delivery for Aluminum Windows Materials | 2026-10-07 → 2026-10-22 (+15d) | 2026-10-10 → 2026-10-25 (+15d) | 24d → 26.32d |  | resources Labor [347.6 h]; Operator [347.6 h]; Mobile Crane [160 h] → Labor [347.94 h]; Operator [347.94 h]; Mobile Crane [160 h] |
| DMM2-Proc-Delv-7340 | Manuf. & Delivery for Vapor Retarders Materials | 2026-10-07 → 2026-10-27 (+20d) | 2026-10-12 → 2026-11-01 (+20d) | 34d → 32.32d |  | resources Labor [347.6 h]; Operator [347.6 h]; Mobile Crane [160 h] → Labor [347.94 h]; Operator [347.94 h]; Mobile Crane [160 h] |
| DMM2-Proc-Delv-7347 | Manuf. & Delivery for Painting Materials | 2026-10-11 → 2026-10-27 (+16d) | 2026-10-12 → 2026-10-28 (+16d) | 31d → 32.32d |  | resources Labor [260.7 h]; Operator [260.7 h]; Mobile Crane [120 h] → Labor [260.95 h]; Operator [260.95 h]; Mobile Crane [120 h] |
| DMM2-Proc-Delv-7349 | Manuf. & Delivery for Steel Doors Materials | 2026-10-07 → 2026-10-27 (+20d) | 2026-10-12 → 2026-11-01 (+20d) | 29d → 27.32d |  | resources Labor [521.4 h]; Operator [521.4 h]; Mobile Crane [240 h] → Labor [521.91 h]; Operator [521.91 h]; Mobile Crane [240 h] |
| DMM2-Proc-Delv-7350 | Manuf. & Delivery for Wood Doors Materials | 2026-10-13 → 2026-11-02 (+20d) | 2026-10-18 → 2026-11-07 (+20d) | 29d → 27.32d |  | resources Labor [347.6 h]; Operator [347.6 h]; Mobile Crane [160 h] → Labor [347.94 h]; Operator [347.94 h]; Mobile Crane [160 h] |
| GR MAT Mech | **Mechanical** | 2026-09-16 → 2026-10-07 (+21d) | 2026-10-22 → 2026-11-07 (+16d) |  |  |  |
| DMM2-Proc-Delv-7353 | Manuf. & Delivery for uPVC Pipes Materials | 2026-09-16 → 2026-10-07 (+21d) | 2026-09-17 → 2026-10-08 (+21d) | 8d → 6.32d |  | resources Labor [260.7 h]; Operator [260.7 h]; Mobile Crane [120 h] → Labor [260.95 h]; Operator [260.95 h]; Mobile Crane [120 h] |
| DMM2-Proc-Delv-7360 | Manuf. & Delivery for Manhole Materials | 2026-09-16 → 2026-10-07 (+21d) | 2026-09-19 → 2026-10-10 (+21d) | 25d → 23.32d |  | resources Labor [260.7 h]; Operator [260.7 h]; Mobile Crane [120 h] → Labor [260.95 h]; Operator [260.95 h]; Mobile Crane [120 h] |
| DMM2-Proc-Delv-7354 | Manuf. & Delivery for PPR Pipes Materials | 2026-09-19 → 2026-10-10 (+21d) | 2026-09-21 → 2026-10-12 (+21d) | 13d → 11.32d |  | resources Labor [260.7 h]; Operator [260.7 h]; Mobile Crane [120 h] → Labor [260.95 h]; Operator [260.95 h]; Mobile Crane [120 h] |
| DMM2-Proc-Delv-7356 | Manuf. & Delivery for Scupper Materials | 2026-09-19 → 2026-10-10 (+21d) | 2026-09-21 → 2026-10-12 (+21d) | 17d → 15.32d |  | resources Labor [260.7 h]; Operator [260.7 h]; Mobile Crane [120 h] → Labor [260.95 h]; Operator [260.95 h]; Mobile Crane [120 h] |
| DMM2-Proc-Delv-7358 | Manuf. & Delivery for Floor Drain Materials | 2026-09-22 → 2026-10-13 (+21d) | 2026-09-24 → 2026-10-14 (+20d) | 19d → 17.32d |  | resources Labor [173.8 h]; Operator [173.8 h]; Mobile Crane [80 h] → Labor [173.97 h]; Operator [173.97 h]; Mobile Crane [80 h] |
| DMM2-Proc-Delv-7357 | Manuf. & Delivery for Clean out Materials | 2026-09-26 → 2026-10-15 (+19d) | 2026-09-26 → 2026-10-15 (+19d) | 16d → 14.32d |  | resources Labor [260.7 h]; Operator [260.7 h]; Mobile Crane [120 h] → Labor [260.95 h]; Operator [260.95 h]; Mobile Crane [120 h] |
| DMM2-Proc-Delv-7362 | Manuf. & Delivery for Toilet Materials | 2026-10-01 → 2026-10-21 (+20d) | 2026-10-04 → 2026-10-24 (+20d) | 35d → 33.32d |  | resources Labor [260.7 h]; Operator [260.7 h]; Mobile Crane [120 h] → Labor [260.95 h]; Operator [260.95 h]; Mobile Crane [120 h] |
| DMM2-Proc-Delv-7361 | Manuf. & Delivery for Shower Materials | 2026-10-05 → 2026-10-25 (+20d) | 2026-10-06 → 2026-10-26 (+20d) | 35d → 33.32d |  | resources Labor [260.7 h]; Operator [260.7 h]; Mobile Crane [120 h] → Labor [260.95 h]; Operator [260.95 h]; Mobile Crane [120 h] |
| DMM2-Proc-Delv-7363 | Manuf. & Delivery for Semi Pedestal Sink Materials | 2026-10-05 → 2026-10-25 (+20d) | 2026-10-06 → 2026-10-26 (+20d) | 35d → 33.32d |  | resources Labor [260.7 h]; Operator [260.7 h]; Mobile Crane [120 h] → Labor [260.95 h]; Operator [260.95 h]; Mobile Crane [120 h] |
| DMM2-Proc-Delv-7352 | Manuf. & Delivery for Exhaust Axial Fans Materials | 2026-10-11 → 2026-10-26 (+15d) | 2026-10-13 → 2026-10-28 (+15d) | 18d → 20.32d |  | resources Labor [347.6 h]; Operator [347.6 h]; Mobile Crane [160 h] → Labor [347.94 h]; Operator [347.94 h]; Mobile Crane [160 h] |
| DMM2-Proc-Delv-7364 | Manuf. & Delivery for Fire Extinguishers (CO2 & Powder) Materials | 2026-10-12 → 2026-10-27 (+15d) | 2026-10-14 → 2026-10-29 (+15d) | 17d → 19.32d |  | resources Labor [347.6 h]; Operator [347.6 h]; Mobile Crane [160 h] → Labor [347.94 h]; Operator [347.94 h]; Mobile Crane [160 h] |
| DMM2-Proc-Delv-7359 | Manuf. & Delivery for Electrical Water Heater Materials | 2026-10-15 → 2026-10-31 (+16d) | 2026-10-20 → 2026-11-04 (+15d) | 17d → 19.32d |  | resources Labor [347.6 h]; Operator [347.6 h]; Mobile Crane [160 h] → Labor [347.94 h]; Operator [347.94 h]; Mobile Crane [160 h] |
| DMM2-Proc-Delv-7355 | Manuf. & Delivery for DX Wall Mounted Split/AC Materials | 2026-10-21 → 2026-11-05 (+15d) | 2026-10-22 → 2026-11-07 (+16d) | 17d → 19.32d |  | resources Labor [347.6 h]; Operator [347.6 h]; Mobile Crane [160 h] → Labor [347.94 h]; Operator [347.94 h]; Mobile Crane [160 h] |
| GR MAT Elec | **Electrical** | 2026-09-19 → 2026-10-10 (+21d) | 2026-10-27 → 2026-11-16 (+20d) |  |  |  |
| DMM2-Proc-Delv-7370 | Manuf. & Delivery for Enclosed Switches and Circuit Breakers Materials | 2026-09-19 → 2026-10-10 (+21d) | 2026-09-21 → 2026-10-12 (+21d) | 36d → 34.32d |  | resources Labor [347.6 h]; Operator [347.6 h]; Mobile Crane [160 h] → Labor [347.94 h]; Operator [347.94 h]; Mobile Crane [160 h] |
| DMM2-Proc-Delv-7367 | Manuf. & Delivery for Lighting Materials | 2026-09-29 → 2026-10-13 (+14d) | 2026-10-04 → 2026-10-18 (+14d) | 41d → 44.32d |  | resources Labor [347.6 h]; Operator [347.6 h]; Mobile Crane [160 h] → Labor [347.94 h]; Operator [347.94 h]; Mobile Crane [160 h] |
| DMM2-Proc-Delv-7368 | Manuf. & Delivery for Wiring Devices Materials | 2026-09-29 → 2026-10-17 (+18d) | 2026-10-03 → 2026-10-20 (+17d) | 27d → 27.32d |  | resources Labor [347.6 h]; Operator [347.6 h]; Mobile Crane [160 h] → Labor [347.94 h]; Operator [347.94 h]; Mobile Crane [160 h] |
| DMM2-Proc-Delv-7369 | Manuf. & Delivery for Ground Wires, Rods, Pits, Clamping Materials | 2026-09-29 → 2026-10-17 (+18d) | 2026-10-03 → 2026-10-20 (+17d) | 35d → 35.32d |  | resources Labor [260.7 h]; Operator [260.7 h]; Mobile Crane [120 h] → Labor [260.95 h]; Operator [260.95 h]; Mobile Crane [120 h] |
| DMM2-Proc-Delv-7375 | Manuf. & Delivery for PC Workstation Materials | 2026-10-04 → 2026-10-21 (+17d) | 2026-10-05 → 2026-10-22 (+17d) | 35d → 35.32d |  | resources Labor [260.7 h]; Operator [260.7 h]; Mobile Crane [120 h] → Labor [260.95 h]; Operator [260.95 h]; Mobile Crane [120 h] |
| DMM2-Proc-Delv-7366 | Manuf. & Delivery for Low Voltage Cable Materials | 2026-10-07 → 2026-10-22 (+15d) | 2026-10-11 → 2026-10-26 (+15d) | 23d → 25.32d |  | resources Labor [347.6 h]; Operator [347.6 h]; Mobile Crane [160 h] → Labor [347.94 h]; Operator [347.94 h]; Mobile Crane [160 h] |
| DMM2-Proc-Delv-7371 | Manuf. & Delivery for Fire Alarm System Materials | 2026-10-07 → 2026-10-22 (+15d) | 2026-10-11 → 2026-10-26 (+15d) | 17d → 19.32d |  | resources Labor [347.6 h]; Operator [347.6 h]; Mobile Crane [160 h] → Labor [347.94 h]; Operator [347.94 h]; Mobile Crane [160 h] |
| DMM2-Proc-Delv-7376 | Manuf. & Delivery for 50 inch Screen Materials | 2026-10-11 → 2026-10-26 (+15d) | 2026-10-13 → 2026-10-28 (+15d) | 31d → 33.32d |  | resources Labor [260.7 h]; Operator [260.7 h]; Mobile Crane [120 h] → Labor [260.95 h]; Operator [260.95 h]; Mobile Crane [120 h] |
| DMM2-Proc-Delv-7374 | Manuf. & Delivery for Data/ Voice RJ45 Outlet Materials | 2026-10-12 → 2026-10-27 (+15d) | 2026-10-14 → 2026-10-29 (+15d) | 23d → 25.32d |  | resources Labor [347.6 h]; Operator [347.6 h]; Mobile Crane [160 h] → Labor [347.94 h]; Operator [347.94 h]; Mobile Crane [160 h] |
| DMM2-Proc-Delv-7373 | Manuf. & Delivery for Data Cabinet Materials | 2026-10-15 → 2026-10-31 (+16d) | 2026-10-20 → 2026-11-04 (+15d) | 23d → 25.32d |  | resources Labor [347.6 h]; Operator [347.6 h]; Mobile Crane [160 h] → Labor [347.94 h]; Operator [347.94 h]; Mobile Crane [160 h] |
| DMM2-Proc-Delv-7365 | Manuf. & Delivery for Panelboards Materials | 2026-10-27 → 2026-11-16 (+20d) | 2026-10-27 → 2026-11-16 (+20d) | 10d → 8.32d |  | resources Labor [434.5 h]; Operator [434.5 h]; Mobile Crane [200 h] → Labor [434.92 h]; Operator [434.92 h]; Mobile Crane [200 h] |
| Zone 03 | **Zone 03** |  | 2026-11-11 → 2026-11-23 (+12d) |  |  |  |
| Site Grading | **Earth & Road Works** |  | 2026-11-11 → 2026-11-23 (+12d) |  |  |  |
| DMM2-Proc-Delv-7403 | Manuf. & Delivery for Embankment & Backfilling Materials |  |  |  |  | resources Labor [243.32 h]; Operator [243.32 h]; Mobile Crane [112 h] → Labor [243.56 h]; Operator [243.56 h]; Mobile Crane [112 h] |

| ID | Task | Start | Finish | Duration | Complete | Total float | Predecessors | Other |
| --- | --- | --- | --- | --- | --- | --- | --- | --- |
| DMM2-Proc-Delv-7406 | Manuf. & Delivery for Subgrade Materials |  |  |  |  |  |  | resources Labor [173.8 h]; Operator [173.8 h]; Mobile Crane [80 h] → Labor [173.97 h]; Operator [173.97 h]; Mobile Crane [80 h] |
| DMM2-Proc-Delv-7404 | Manuf. & Delivery for Agg. Base Coarse (40.00% Completed) |  | 2026-09-22 → 2026-09-15 A (-7d) | 112.76d → 106.76d | 40% → 100% | 110d → none |  | was named Manuf. & Delivery for Agg. Base Coarse; resources Labor [173.8 h]; Operator [173.8 h]; Mobile Crane [80 h] → Labor [69.59 h]; Operator [69.59 h]; Mobile Crane [32 h] |
| DMM2-Proc-Delv-7405 | Manuf. & Delivery for Asphalt Materials (30.00% Completed) |  | 2026-09-29 → 2026-09-15 A (-14d) | 98.26d → 87.76d | 30% → 100% | 7.5d → none |  | was named Manuf. & Delivery for Asphalt Materials; resources Labor [260.7 h]; Operator [260.7 h]; Mobile Crane [120 h] → Labor [78.29 h]; Operator [78.29 h]; Mobile Crane [36 h] |
| DMM2-Proc-Delv-7408 | Manuf. & Delivery for Interlock Materials | 2026-09-16 → 2026-10-07 (+21d) | 2026-10-04 → 2026-10-24 (+20d) |  |  | 4d → 5.32d |  | resources Labor [260.7 h]; Operator [260.7 h]; Mobile Crane [120 h] → Labor [260.95 h]; Operator [260.95 h]; Mobile Crane [120 h] |
| DMM2-Proc-Delv-7407 | Manuf. & Delivery for Curbstone Materials | 2026-09-29 → 2026-10-13 (+14d) | 2026-10-05 → 2026-10-19 (+14d) |  |  | 8.5d → 15.07d | DMM2-Proc-PO-05, DMM2-Proc-Delv-7405 → DMM2-Proc-PO-05, DMM2-Proc-Delv-7405_R | resources Labor [139.04 h]; Operator [139.04 h]; Mobile Crane [64 h] → Labor [139.18 h]; Operator [139.18 h]; Mobile Crane [64 h] |
| DMM2-Proc-Delv-7412 | Manuf. & Delivery for ground Mounted Information Signs Materials | 2026-10-08 → 2026-10-28 (+20d) | 2026-10-13 → 2026-11-02 (+20d) |  |  | 8d → 9.32d |  | resources Labor [347.6 h]; Operator [347.6 h]; Mobile Crane [160 h] → Labor [347.94 h]; Operator [347.94 h]; Mobile Crane [160 h] |
| DMM2-Proc-Delv-7409 | Manuf. & Delivery for Pavement Markings Materials | 2026-10-28 → 2026-11-08 (+11d) | 2026-11-01 → 2026-11-12 (+11d) |  |  | 35d → 40.82d |  | resources Labor [173.8 h]; Operator [173.8 h]; Mobile Crane [80 h] → Labor [173.97 h]; Operator [173.97 h]; Mobile Crane [80 h] |
| DMM2-Proc-Delv-7410 | Manuf. & Delivery for Wheels Stopper (precast concrete) Materials | 2026-11-02 → 2026-11-12 (+10d) | 2026-11-03 → 2026-11-15 (+12d) |  |  | 71d → 75.82d |  | resources Labor [173.8 h]; Operator [173.8 h]; Mobile Crane [80 h] → Labor [173.97 h]; Operator [173.97 h]; Mobile Crane [80 h] |
| DMM2-Proc-Delv-7411 | Manuf. & Delivery for Traffic Signs Materials | 2026-11-09 → 2026-11-19 (+10d) | 2026-11-11 → 2026-11-23 (+12d) |  |  | 35d → 40.82d |  | resources Labor [173.8 h]; Operator [173.8 h]; Mobile Crane [80 h] → Labor [173.97 h]; Operator [173.97 h]; Mobile Crane [80 h] |
| SDS | **Wet Networks & Stations** |  | 2026-10-31 → 2026-11-22 (+22d) |  |  |  |  |  |
| Storm | **Storm Network** |  | 2026-09-24 → 2026-09-27 (+3d) |  |  |  |  |  |
| DMM2-Proc-Delv-7417 | Manuf. & Delivery for uPVC Pipes Materials (80.00% Completed) |  | 2026-09-22 → 2026-09-15 A (-7d) | 104.41d → 99.21d | 80% → 100% | 110.8d → none |  | was named Manuf. & Delivery for uPVC Pipes Materials; resources Labor [451.88 h]; Operator [451.88 h]; Mobile Crane [208 h] → Labor [361.86 h]; Operator [361.86 h]; Mobile Crane [166.4 h] |
| DMM2-Proc-Delv-7414 | Manuf. & Delivery for Steel Reinforcement Materials (50.00% Completed) |  | 2026-09-24 → 2026-09-15 A (-9d) | 99d → 92d | 50% → 100% | 109d → none |  | was named Manuf. & Delivery for Steel Reinforcement Materials; resources Labor [243.32 h]; Operator [243.32 h]; Mobile Crane [112 h] → Labor [121.78 h]; Operator [121.78 h]; Mobile Crane [56 h] |
| TSE | **TSE Network** | 2026-10-14 → 2026-11-05 (+22d) | 2026-10-31 → 2026-11-22 (+22d) |  |  |  |  |  |
| DMM2-Proc-Delv-7490 | Manuf. & Delivery for Dripper Materials | 2026-10-14 → 2026-11-05 (+22d) | 2026-10-21 → 2026-11-12 (+22d) |  |  | 28d → 23.32d |  | resources Labor [260.7 h]; Operator [260.7 h]; Mobile Crane [120 h] → Labor [260.95 h]; Operator [260.95 h]; Mobile Crane [120 h] |
| DMM2-Proc-Delv-7491 | Manuf. & Delivery for Bubbler Materials | 2026-10-14 → 2026-11-05 (+22d) | 2026-10-31 → 2026-11-22 (+22d) |  |  | 34d → 29.32d |  | resources Labor [260.7 h]; Operator [260.7 h]; Mobile Crane [120 h] → Labor [260.95 h]; Operator [260.95 h]; Mobile Crane [120 h] |
| DMM2-Proc-Delv-7492 | Manuf. & Delivery for Pull Box Materials | 2026-10-14 → 2026-11-05 (+22d) | 2026-10-31 → 2026-11-22 (+22d) |  |  | 27d → 22.32d |  | resources Labor [260.7 h]; Operator [260.7 h]; Mobile Crane [120 h] → Labor [260.95 h]; Operator [260.95 h]; Mobile Crane [120 h] |
| DMM2-Proc-Delv-7493 | Manuf. & Delivery for Two Wire Decoder Cable 12 awg Materials | 2026-10-14 → 2026-11-05 (+22d) | 2026-10-31 → 2026-11-22 (+22d) |  |  | 25d → 20.32d |  | resources Labor [260.7 h]; Operator [260.7 h]; Mobile Crane [120 h] → Labor [260.95 h]; Operator [260.95 h]; Mobile Crane [120 h] |
| Sewer Lift St. | **Sewer Lift Station** |  | 2026-10-17 → 2026-11-05 (+19d) |  |  |  |  |  |
| 1 | **Civil & Architecture** | 2026-09-19 → 2026-10-10 (+21d) | 2026-10-15 → 2026-11-04 (+20d) |  |  |  |  |  |
| DMM2-Proc-Delv-7432 | Manuf. & Delivery for Metal Ladders Materials | 2026-09-19 → 2026-10-10 (+21d) | 2026-09-21 → 2026-10-12 (+21d) |  |  | 33d → 31.32d |  | resources Labor [521.4 h]; Operator [521.4 h]; Mobile Crane [240 h] → Labor [521.91 h]; Operator [521.91 h]; Mobile Crane [240 h] |
| DMM2-Proc-Delv-7434 | Manuf. & Delivery for Internal painting (Acrylic) Materials | 2026-09-21 → 2026-10-12 (+21d) | 2026-09-26 → 2026-10-15 (+19d) |  |  | 27d → 25.32d |  | resources Labor [260.7 h]; Operator [260.7 h]; Mobile Crane [120 h] → Labor [260.95 h]; Operator [260.95 h]; Mobile Crane [120 h] |
| DMM2-Proc-Delv-7435 | Manuf. & Delivery for Signages Materials | 2026-10-11 → 2026-10-31 (+20d) | 2026-10-13 → 2026-11-02 (+20d) |  |  | 21d → 19.32d | DMM2-Proc-PO-055, DMM2-Proc-Delv-7434, DMM2-Proc-Delv-4598, DMM2-Proc-PO-094 → DMM2-Proc-PO-055, DMM2-Proc-Delv-7434, DMM2-Proc-Delv-4598_R, DMM2-Proc-PO-094 | resources Labor [521.4 h]; Operator [521.4 h]; Mobile Crane [240 h] → Labor [521.91 h]; Operator [521.91 h]; Mobile Crane [240 h] |
| DMM2-Proc-Delv-7433 | Manuf. & Delivery for Metal Covers Materials | 2026-10-14 → 2026-11-03 (+20d) | 2026-10-15 → 2026-11-04 (+20d) |  |  | 21d → 19.32d |  | resources Labor [521.4 h]; Operator [521.4 h]; Mobile Crane [240 h] → Labor [521.91 h]; Operator [521.91 h]; Mobile Crane [240 h] |
| 3 | **Mechanical** |  | 2026-10-17 → 2026-11-05 (+19d) |  |  |  |  |  |
| DMM2-Proc-Delv-7439 | Manuf. & Delivery for Geotextile Membrane Materials (30.00% Completed) |  | 2026-10-03 → 2026-09-15 A (-18d) | 211d → 197d | 30% → 100% | 24d → none |  | was named Manuf. & Delivery for Geotextile Membrane Materials; resources Labor [347.6 h]; Operator [347.6 h]; Mobile Crane [160 h] → Labor [104.38 h]; Operator [104.38 h]; Mobile Crane [48 h] |
| DMM2-Proc-Delv-7445 | Manuf. & Delivery for Penstock Materials | 2026-09-16 → 2026-10-07 (+21d) | 2026-10-04 → 2026-10-24 (+20d) |  |  | 33d → 31.32d |  | resources Labor [695.19 h]; Operator [695.19 h]; Mobile Crane [320 h] → Labor [695.88 h]; Operator [695.88 h]; Mobile Crane [320 h] |
| DMM2-Proc-Delv-7447 | Manuf. & Delivery for Scupper Materials | 2026-09-19 → 2026-10-10 (+21d) | 2026-10-12 → 2026-11-01 (+20d) |  |  | 27d → 25.32d |  | resources Labor [347.6 h]; Operator [347.6 h]; Mobile Crane [160 h] → Labor [347.94 h]; Operator [347.94 h]; Mobile Crane [160 h] |
| DMM2-Proc-Delv-7446 | Manuf. & Delivery for Screening Container Materials | 2026-10-13 → 2026-11-02 (+20d) | 2026-10-17 → 2026-11-05 (+19d) |  |  | 20d → 18.32d |  | resources Labor [868.99 h]; Operator [868.99 h]; Mobile Crane [400 h] → Labor [869.84 h]; Operator [869.84 h]; Mobile Crane [400 h] |
| 2 | **Electrical** | 2026-09-16 → 2026-10-07 (+21d) | 2026-10-14 → 2026-11-03 (+20d) |  |  |  |  |  |
| DMM2-Proc-Delv-7454 | Manuf. & Delivery for Under Ground Fuel Tank Materials | 2026-09-16 → 2026-10-07 (+21d) | 2026-10-10 → 2026-10-29 (+19d) |  |  | 21d → 19.32d |  | resources Labor [1216.59 h]; Operator [1216.59 h]; Mobile Crane [560 h] → Labor [1217.78 h]; Operator [1217.78 h]; Mobile Crane [560 h] |
| DMM2-Proc-Delv-7456 | Manuf. & Delivery for Electrical Hand Holes Materials | 2026-09-19 → 2026-10-10 (+21d) | 2026-09-21 → 2026-10-12 (+21d) |  |  | 33d → 31.32d |  | resources Labor [434.5 h]; Operator [434.5 h]; Mobile Crane [200 h] → Labor [434.92 h]; Operator [434.92 h]; Mobile Crane [200 h] |
| DMM2-Proc-Delv-7457 | Manuf. & Delivery for Galvanized Steel Pole Materials | 2026-09-19 → 2026-10-10 (+21d) | 2026-09-21 → 2026-10-12 (+21d) |  |  | 33d → 31.32d |  | resources Labor [521.4 h]; Operator [521.4 h]; Mobile Crane [240 h] → Labor [521.91 h]; Operator [521.91 h]; Mobile Crane [240 h] |
| DMM2-Proc-Delv-7458 | Manuf. & Delivery for Surfaced Mounted Light (LED) Materials | 2026-09-19 → 2026-10-10 (+21d) | 2026-09-21 → 2026-10-12 (+21d) |  |  | 33d → 31.32d |  | resources Labor [434.5 h]; Operator [434.5 h]; Mobile Crane [200 h] → Labor [434.92 h]; Operator [434.92 h]; Mobile Crane [200 h] |
| DMM2-Proc-Delv-7460 | Manuf. & Delivery for Process Control Wiring Materials | 2026-10-05 → 2026-10-25 (+20d) | 2026-10-06 → 2026-10-26 (+20d) |  |  | 45d → 43.32d |  | resources Labor [695.19 h]; Operator [695.19 h]; Mobile Crane [320 h] → Labor [695.88 h]; Operator [695.88 h]; Mobile Crane [320 h] |
| DMM2-Proc-Delv-7461 | Manuf. & Delivery for Instrumentation for Process Systems Materials | 2026-10-05 → 2026-10-25 (+20d) | 2026-10-14 → 2026-11-03 (+20d) |  |  | 41d → 39.32d | DMM2-Proc-PO-081, DMM2-Proc-Delv-4668 → DMM2-Proc-PO-081, DMM2-Proc-Delv-4668_R | resources Labor [695.19 h]; Operator [695.19 h]; Mobile Crane [320 h] → Labor [695.88 h]; Operator [695.88 h]; Mobile Crane [320 h] |
| Zone 04 | **Zone 04** |  | 2026-11-09 → 2026-11-29 (+20d) |  |  |  |  |  |
| Site Grading | **Earth & Road Works** |  | 2026-11-03 → 2026-11-15 (+12d) |  |  |  |  |  |
| DMM2-Proc-Delv-7497 | Manuf. & Delivery for Embankment & Backfilling Materials |  |  |  |  |  |  | resources Labor [243.32 h]; Operator [243.32 h]; Mobile Crane [112 h] → Labor [243.56 h]; Operator [243.56 h]; Mobile Crane [112 h] |
| DMM2-Proc-Delv-7500 | Manuf. & Delivery for Subgrade Materials |  |  |  |  |  |  | resources Labor [139.04 h]; Operator [139.04 h]; Mobile Crane [64 h] → Labor [139.18 h]; Operator [139.18 h]; Mobile Crane [64 h] |
| DMM2-Proc-Delv-7498 | Manuf. & Delivery for Agg. Base Coarse (10.00% Completed) |  | 2026-09-26 → 2026-09-15 A (-11d) | 95.96d → 88.76d | 10% → 100% | 108.8d → none |  | was named Manuf. & Delivery for Agg. Base Coarse; resources Labor [139.04 h]; Operator [139.04 h]; Mobile Crane [64 h] → Labor [13.92 h]; Operator [13.92 h]; Mobile Crane [6.4 h] |
| DMM2-Proc-Delv-7499 | Manuf. & Delivery for Asphalt Materials | 2026-09-29 → 2026-10-13 (+14d) | 2026-10-07 → 2026-10-21 (+14d) |  |  | 7.5d → 14.07d | DMM2-Proc-PO-03, DMM2-Proc-Delv-7405 → DMM2-Proc-PO-03, DMM2-Proc-Delv-7405_R | resources Labor [121.66 h]; Operator [121.66 h]; Mobile Crane [56 h] → Labor [121.78 h]; Operator [121.78 h]; Mobile Crane [56 h] |
| DMM2-Proc-Delv-7501 | Manuf. & Delivery for Curbstone Materials | 2026-10-05 → 2026-10-19 (+14d) | 2026-10-14 → 2026-10-28 (+14d) |  |  | 8.5d → 15.07d |  | resources Labor [139.04 h]; Operator [139.04 h]; Mobile Crane [64 h] → Labor [139.18 h]; Operator [139.18 h]; Mobile Crane [64 h] |
| DMM2-Proc-Delv-7502 | Manuf. & Delivery for Interlock Materials | 2026-10-07 → 2026-10-25 (+18d) | 2026-10-17 → 2026-11-02 (+16d) |  |  | 7.5d → 11.32d |  | resources Labor [260.7 h]; Operator [260.7 h]; Mobile Crane [120 h] → Labor [260.95 h]; Operator [260.95 h]; Mobile Crane [120 h] |
| DMM2-Proc-Delv-7505 | Manuf. & Delivery for Traffic Signs Materials | 2026-10-17 → 2026-11-03 (+17d) | 2026-10-20 → 2026-11-05 (+16d) |  |  | 7.5d → 11.32d |  | resources Labor [173.8 h]; Operator [173.8 h]; Mobile Crane [80 h] → Labor [173.97 h]; Operator [173.97 h]; Mobile Crane [80 h] |
| DMM2-Proc-Delv-7506 | Manuf. & Delivery for ground Mounted Information Signs Materials | 2026-10-14 → 2026-11-03 (+20d) | 2026-10-19 → 2026-11-08 (+20d) |  |  | 8d → 9.32d |  | resources Labor [347.6 h]; Operator [347.6 h]; Mobile Crane [160 h] → Labor [347.94 h]; Operator [347.94 h]; Mobile Crane [160 h] |
| DMM2-Proc-Delv-7503 | Manuf. & Delivery for Pavement Markings Materials | 2026-11-02 → 2026-11-12 (+10d) | 2026-11-03 → 2026-11-15 (+12d) |  |  | 35d → 40.82d |  | resources Labor [173.8 h]; Operator [173.8 h]; Mobile Crane [80 h] → Labor [173.97 h]; Operator [173.97 h]; Mobile Crane [80 h] |
| DMM2-Proc-Delv-7504 | Manuf. & Delivery for Wheels Stopper (precast concrete) Materials | 2026-11-02 → 2026-11-12 (+10d) | 2026-11-03 → 2026-11-15 (+12d) |  |  | 71d → 75.82d |  | resources Labor [173.8 h]; Operator [173.8 h]; Mobile Crane [80 h] → Labor [173.97 h]; Operator [173.97 h]; Mobile Crane [80 h] |
| SDS | **Wet Networks & Stations** |  | 2026-11-04 → 2026-11-26 (+22d) |  |  |  |  |  |
| DMM2-Proc-Delv-7510 | Manuf. & Delivery for uPVC Pipes Materials (60.00% Completed) |  | 2026-09-29 → 2026-09-15 A (-14d) | 124.61d → 114.21d | 60% → 100% | 105.6d → none |  | was named Manuf. & Delivery for uPVC Pipes Materials; resources Labor [451.88 h]; Operator [451.88 h]; Mobile Crane [208 h] → Labor [271.39 h]; Operator [271.39 h]; Mobile Crane [124.8 h] |
| TSE | **TSE Network** | 2026-10-31 → 2026-11-22 (+22d) | 2026-11-04 → 2026-11-26 (+22d) |  |  |  |  |  |
| DMM2-Proc-Delv-7554 | Manuf. & Delivery for Bubbler Materials | 2026-10-31 → 2026-11-22 (+22d) | 2026-10-31 → 2026-11-22 (+22d) |  |  | 34d → 29.32d |  | resources Labor [260.7 h]; Operator [260.7 h]; Mobile Crane [120 h] → Labor [260.95 h]; Operator [260.95 h]; Mobile Crane [120 h] |
| DMM2-Proc-Delv-7556 | Manuf. & Delivery for Two Wire Decoder Cable 12 awg Materials | 2026-10-31 → 2026-11-22 (+22d) | 2026-10-31 → 2026-11-22 (+22d) |  |  | 25d → 20.32d |  | resources Labor [260.7 h]; Operator [260.7 h]; Mobile Crane [120 h] → Labor [260.95 h]; Operator [260.95 h]; Mobile Crane [120 h] |
| DMM2-Proc-Delv-7555 | Manuf. & Delivery for Pull Box Materials | 2026-11-01 → 2026-11-23 (+22d) | 2026-11-04 → 2026-11-26 (+22d) |  |  | 27d → 22.32d |  | resources Labor [260.7 h]; Operator [260.7 h]; Mobile Crane [120 h] → Labor [260.95 h]; Operator [260.95 h]; Mobile Crane [120 h] |
| Landscape | **Landscape Works** | 2026-09-16 → 2026-10-07 (+21d) | 2026-11-09 → 2026-11-29 (+20d) |  |  |  |  |  |
| DMM2-Proc-Delv-7540 | Manuf. & Delivery for Ornamental Grasses Materials | 2026-09-16 → 2026-10-07 (+21d) | 2026-09-19 → 2026-10-10 (+21d) |  |  | 48d → 46.32d |  | resources Labor [173.8 h]; Operator [173.8 h]; Mobile Crane [80 h] → Labor [173.97 h]; Operator [173.97 h]; Mobile Crane [80 h] |
| DMM2-Proc-Delv-7543 | Manuf. & Delivery for Large Shrubs Materials | 2026-09-16 → 2026-10-07 (+21d) | 2026-09-19 → 2026-10-10 (+21d) |  |  | 51d → 49.32d |  | resources Labor [208.56 h]; Operator [208.56 h]; Mobile Crane [96 h] → Labor [208.76 h]; Operator [208.76 h]; Mobile Crane [96 h] |
| DMM2-Proc-Delv-7539 | Manuf. & Delivery for Trees Materials | 2026-10-22 → 2026-11-11 (+20d) | 2026-10-25 → 2026-11-14 (+20d) |  |  | 39d → 37.32d |  | resources Labor [260.7 h]; Operator [260.7 h]; Mobile Crane [120 h] → Labor [260.95 h]; Operator [260.95 h]; Mobile Crane [120 h] |
| DMM2-Proc-Delv-7541 | Manuf. & Delivery for Geotextile Layers Materials | 2026-11-03 → 2026-11-23 (+20d) | 2026-11-09 → 2026-11-29 (+20d) |  |  | 11d → 9.32d |  | resources Labor [173.8 h]; Operator [173.8 h]; Mobile Crane [80 h] → Labor [173.97 h]; Operator [173.97 h]; Mobile Crane [80 h] |
| Construction | **Construction** |  | 2026-12-21 → 2027-01-09 (+19d) |  |  |  |  |  |
| Mil.Cons.Fin | Construction - Finish Milstone | 2026-12-21 → 2026-12-29 (+8d) | 2026-12-21 → 2026-12-29 (+8d) |  |  | 0d → 8d |  |  |
| Zone 01 | **Zone 01** |  | 2026-11-30 → 2026-12-01 (+1d) |  |  |  |  |  |
| Dewatering | **Earthworks & Site Grading** |  | 2026-09-30 → 2026-10-19 (+19d) |  |  |  |  |  |
| B1.1.31 23 16.01 | Excavation (all types of soil) (92.00% Completed) |  | 2026-09-20 → 2026-09-15 A (-5d) | 281.99d → 278d | 92% → 100% | 112.01d → none |  | was named Excavation (all types of soil); resources Excavation (all types of soil) [63428.3]; Labor [31.18 h]; Foreman [15.59 h]; Operator [31.18 h]; Surveyor [15.59 h]; Surveyor Helper [15.59 h]; Excavator (With Bucket) [16 h]; Water Tanker [16 h]; Dump Truck [16 h]; Plate Compactor [16 h] → Excavation (all types of soil) [58354.1]; Labor [28.69 h]; Foreman [14.34 h]; Operator [28.69 h]; Surveyor [14.34 h]; Surveyor Helper [14.34 h]; Excavator (With Bucket) [14.72 h]; Water Tanker [14.72 h]; Dump Truck [14.72 h]; Plate Compactor [14.72 h] |
| B1.1.31 23 23.01 | Engineering Backfiling - Road 01 - Part 01 |  |  |  |  |  | B1.1.31 23 16.01 SS → B1.1.31 23 19.01 |  |
| B1.1.31 23 23.22 | Engineering Backfiling - Service Road (12.00% Completed) |  | 2026-09-30 → 2026-09-15 A (-15d) | 279d → 267d | 12% → 100% | 13d → none |  | was named Engineering Backfiling - Service Road; resources Fill [46556.1]; Labor [311.85 h]; Foreman [155.92 h]; Operator [311.85 h]; Surveyor [155.92 h]; Surveyor Helper [155.92 h]; Loader [160 h]; Water Tanker [160 h]; Dump Truck [160 h]; Plate Compactor [160 h]; Roller Compactor [160 h] → Fill [5586.73]; Labor [37.42 h]; Foreman [18.71 h]; Operator [37.42 h]; Surveyor [18.71 h]; Surveyor Helper [18.71 h]; Loader [19.2 h]; Water Tanker [19.2 h]; Dump Truck [19.2 h]; Plate Compactor [19.2 h]; Roller Compactor [19.2 h] |
| RD 01 | **Road 01** |  | 2026-11-12 → 2026-12-01 (+19d) |  |  |  |  |  |
| Wet Networks | **Wet Networks** |  | 2026-11-10 → 2026-11-30 (+20d) |  |  |  |  |  |
| Sewerage Network | **Sewerage Network** |  | 2026-09-20 → 2026-10-28 (+38d) |  |  |  |  |  |
| Manholes | **Manholes ?1200** |  | 2026-09-20 → 2026-10-28 (+38d) |  |  |  |  |  |

| ID | Task | Start | Finish | Duration | Complete | Total float | Predecessors | Other |
| --- | --- | --- | --- | --- | --- | --- | --- | --- |
| 2 | **Depth From 0.0m to 1.5m** |  | 2026-09-19 → 2026-10-11 (+22d) |  |  |  |  |  |
| B5.33 05 13.014 | Test, Internal Finishing, Benching & Cover (43.20% Completed) |  | 2026-09-19 → 2026-09-15 A (-4d) | 93.04d → 90d | 43% → 100% | 113d → none |  | was named Test, Internal Finishing, Benching & Cover; resources Labor [62.37 h]; Foreman [31.18 h]; Plumber Helper [31.18 h]; Plumber [31.18 h]; Mason [31.18 h]; MH depth 0 - 1.5m [0.27] → Labor [26.94 h]; Foreman [13.47 h]; Plumber Helper [13.47 h]; Plumber [13.47 h]; Mason [13.47 h]; MH depth 0 - 1.5m [0.12] |
| B5.33 05 13.015 | Backfilling |  |  |  |  |  | B5.33 05 13.014 SS → B5.33 05 13.013 |  |
| 3 | **Depth From 1.5m to 2.5m** |  | 2026-09-20 → 2026-10-14 (+24d) |  |  |  |  |  |
| B5.33 05 13.024 | Test, Internal Finishing, Benching & Cover (43.20% Completed) |  | 2026-09-20 → 2026-09-15 A (-5d) | 93.04d → 90d | 43% → 100% | 112.96d → none |  | was named Test, Internal Finishing, Benching & Cover; resources Labor [62.37 h]; Foreman [31.18 h]; Plumber Helper [31.18 h]; Plumber [31.18 h]; Mason [31.18 h]; MH depth 1.51 - 2.5m [0.5] → Labor [26.94 h]; Foreman [13.47 h]; Plumber Helper [13.47 h]; Plumber [13.47 h]; Mason [13.47 h]; MH depth 1.51 - 2.5m [0.22] |
| 4 | **Depth From 2.5m to 3.5m** |  | 2026-09-20 → 2026-10-21 (+31d) |  |  |  |  |  |
| B5.33 05 13.034 | Test, Internal Finishing, Benching & Cover (43.20% Completed) |  | 2026-09-20 → 2026-09-15 A (-5d) | 93.04d → 90d | 43% → 100% | 112.96d → none |  | was named Test, Internal Finishing, Benching & Cover; resources Labor [62.37 h]; Foreman [31.18 h]; Plumber Helper [31.18 h]; Plumber [31.18 h]; Mason [31.18 h]; MH depth 2.51 - 3.5m [0.55] → Labor [26.94 h]; Foreman [13.47 h]; Plumber Helper [13.47 h]; Plumber [13.47 h]; Mason [13.47 h]; MH depth 2.51 - 3.5m [0.24] |
| B5.33 05 13.035 | Backfilling |  |  |  |  |  | B5.33 05 13.025, B5.33 31 00.02.035, B5.33 05 13.034 SS → B5.33 05 13.025, B5.33 31 00.02.035 |  |
| 4 | **Depth From 2.5m to 3.5m Backdrop** |  | 2026-09-20 → 2026-10-21 (+31d) |  |  |  |  |  |
| B5.33 05 13.044 | Test, Internal Finishing, Benching & Cover (43.20% Completed) |  | 2026-09-20 → 2026-09-15 A (-5d) | 92.24d → 89.2d | 43% → 100% | 112.96d → none |  | was named Test, Internal Finishing, Benching & Cover; resources Labor [62.37 h]; Foreman [31.18 h]; Plumber Helper [31.18 h]; Plumber [31.18 h]; Mason [31.18 h]; MH depth 2.51- 3.5 m with back drop [0.11] → Labor [26.94 h]; Foreman [13.47 h]; Plumber Helper [13.47 h]; Plumber [13.47 h]; Mason [13.47 h]; MH depth 2.51- 3.5 m with back drop [0.05] |
| B5.33 05 13.045 | Backfilling |  |  |  |  |  | B5.33 31 00.02.045, B5.33 05 13.035, B5.33 05 13.044 SS → B5.33 31 00.02.045, B5.33 05 13.035 |  |
| 1 | **Depth From 3.5m to 4.5m** |  | 2026-09-20 → 2026-10-28 (+38d) |  |  |  |  |  |
| B5.33 05 13.054 | Test, Internal Finishing, Benching & Cover (43.20% Completed) |  | 2026-09-20 → 2026-09-15 A (-5d) | 93.04d → 90d | 43% → 100% | 112.96d → none |  | was named Test, Internal Finishing, Benching & Cover; resources Labor [62.37 h]; Foreman [31.18 h]; Plumber Helper [31.18 h]; Plumber [31.18 h]; Mason [31.18 h]; MH depth 3.51 -4.5m [1.01] → Labor [26.94 h]; Foreman [13.47 h]; Plumber Helper [13.47 h]; Plumber [13.47 h]; Mason [13.47 h]; MH depth 3.51 -4.5m [0.44] |
| B5.33 05 13.055 | Backfilling |  |  |  |  |  | B5.33 05 13.045, B5.33 05 13.054 SS → B5.33 05 13.045 |  |
| 1 | **Depth From 3.5m to 4.5m Backdrop** |  | 2026-09-20 → 2026-10-25 (+35d) |  |  |  |  |  |
| B5.33 05 13.064 | Test, Internal Finishing, Benching & Cover (43.20% Completed) |  | 2026-09-20 → 2026-09-15 A (-5d) | 93.04d → 90d | 43% → 100% | 112.96d → none |  | was named Test, Internal Finishing, Benching & Cover; resources Labor [62.37 h]; Foreman [31.18 h]; Plumber Helper [31.18 h]; Plumber [31.18 h]; Mason [31.18 h]; MH depth 3.51- 4.5 m with back drop [0.2] → Labor [26.94 h]; Foreman [13.47 h]; Plumber Helper [13.47 h]; Plumber [13.47 h]; Mason [13.47 h]; MH depth 3.51- 4.5 m with back drop [0.08] |
| B5.33 05 13.065 | Backfilling |  |  |  |  |  | B5.33 05 13.055, B5.33 05 13.064 SS → B5.33 05 13.055 |  |
| Storm | **Storm Network** |  | 2026-09-19 → 2026-10-05 (+16d) |  |  |  |  |  |
| B6.33 42 11.054 | Embedment & Test |  |  | 51.73d → 52.73d |  |  |  |  |
| B6.33 42 11.055 | Backfilling & Warrning Tape |  |  | 48.73d → 49.73d |  |  |  |  |
| Strom Manholes | **Manholes** |  | 2026-09-19 → 2026-10-05 (+16d) |  |  |  |  |  |
| 1 | **?1200** |  | 2026-09-19 → 2026-09-26 (+7d) |  |  |  |  |  |
| B6.33 05 13.012 | Blinding Conc, & RC Base |  |  | 0.75d → 1.75d |  |  |  |  |
| B6.33 05 13.014 | Test, Internal Finishing, Benching & Cover (90.00% Completed) |  | 2026-09-19 → 2026-09-15 A (-4d) | 79d → 77d | 90% → 100% | 113d → none |  | was named Test, Internal Finishing, Benching & Cover; resources Labor [62.37 h]; Foreman [31.18 h]; Plumber Helper [31.18 h]; Plumber [31.18 h]; Mason [31.18 h]; MH depth 1.50 - 2.5m [1.07] → Labor [56.13 h]; Foreman [28.07 h]; Plumber Helper [28.07 h]; Plumber [28.07 h]; Mason [28.07 h]; MH depth 1.50 - 2.5m [0.97] |
| 4 | **Depth From 2.5m to 3.5m** |  | 2026-09-19 → 2026-09-22 (+3d) |  |  |  |  |  |
| B6.33 05 13.025 | Backfilling |  |  |  |  |  | B6.33 05 13.024 SS → B6.33 42 11.114 |  |
| B6.33 05 13.024 | Test, Internal Finishing, Benching & Cover (90.00% Completed) |  | 2026-09-19 → 2026-09-15 A (-4d) | 80d → 78d | 90% → 100% | 113d → none |  | was named Test, Internal Finishing, Benching & Cover; resources Labor [62.37 h]; Foreman [31.18 h]; Plumber Helper [31.18 h]; Plumber [31.18 h]; Mason [31.18 h]; MH depth 2.51 - 3.5m [0.29] → Labor [56.13 h]; Foreman [28.07 h]; Plumber Helper [28.07 h]; Plumber [28.07 h]; Mason [28.07 h]; MH depth 2.51 - 3.5m [0.26] |
| 1 | **Depth From 3.5m to 4.5m** |  | 2026-09-19 → 2026-09-26 (+7d) |  |  |  |  |  |
| B6.33 05 13.105 | Test, Internal Finishing, Benching & Cover (90.00% Completed) |  | 2026-09-19 → 2026-09-15 A (-4d) | 79d → 77d | 90% → 100% | 113d → none |  | was named Test, Internal Finishing, Benching & Cover; resources Labor [62.37 h]; Foreman [31.18 h]; Plumber Helper [31.18 h]; Plumber [31.18 h]; Mason [31.18 h]; MH depth 3.51 - 4.5m [0.19] → Labor [56.13 h]; Foreman [28.07 h]; Plumber Helper [28.07 h]; Plumber [28.07 h]; Mason [28.07 h]; MH depth 3.51 - 4.5m [0.17] |
| B6.33 05 13.125 | Backfilling |  |  |  |  |  | B6.33 05 13.105 SS → B6.33 05 13.95 |  |
| 2 | **?1500** |  | 2026-09-19 → 2026-09-30 (+11d) |  |  |  |  |  |
| 3 | **Depth From 1.5m to 2.5m** |  | 2026-09-19 → 2026-09-27 (+8d) |  |  |  |  |  |
| B6.33 05 13.044 | Test, Internal Finishing, Benching & Cover (90.00% Completed) |  | 2026-09-19 → 2026-09-15 A (-4d) | 79d → 77d | 90% → 100% | 113d → none |  | was named Test, Internal Finishing, Benching & Cover; resources Labor [62.37 h]; Foreman [31.18 h]; Plumber Helper [31.18 h]; Plumber [31.18 h]; Mason [31.18 h]; MH depth 1.50 - 2.5m [1.22] → Labor [56.13 h]; Foreman [28.07 h]; Plumber Helper [28.07 h]; Plumber [28.07 h]; Mason [28.07 h]; MH depth 1.50 - 2.5m [1.1] |
| B6.33 05 13.045 | Backfilling |  |  |  |  |  | B6.33 05 13.015, B6.33 05 13.044 SS → B6.33 05 13.015 |  |
| 4 | **Depth From 2.5m to 3.5m** |  | 2026-09-19 → 2026-09-30 (+11d) |  |  |  |  |  |
| B6.33 05 13.054 | Test, Internal Finishing, Benching & Cover (90.00% Completed) |  | 2026-09-19 → 2026-09-15 A (-4d) | 80d → 78d | 90% → 100% | 113d → none |  | was named Test, Internal Finishing, Benching & Cover; resources Labor [62.37 h]; Foreman [31.18 h]; Plumber Helper [31.18 h]; Plumber [31.18 h]; Mason [31.18 h]; MH depth 2.51 - 3.5m [0.17] → Labor [56.13 h]; Foreman [28.07 h]; Plumber Helper [28.07 h]; Plumber [28.07 h]; Mason [28.07 h]; MH depth 2.51 - 3.5m [0.15] |
| B6.33 05 13.055 | Backfilling |  |  |  |  |  | B6.33 05 13.054 SS → B6.33 05 13.054 SS+1d, B6.33 05 13.054 FF+1d |  |
| 3 | **?2000** |  | 2026-09-19 → 2026-10-05 (+16d) |  |  |  |  |  |
| 4 | **Depth From 2.5m to 3.5m** |  | 2026-09-19 → 2026-10-04 (+15d) |  |  |  |  |  |
| B6.33 05 13.074 | Test, Internal Finishing, Benching & Cover (90.00% Completed) |  | 2026-09-19 → 2026-09-15 A (-4d) | 79d → 77d | 90% → 100% | 113d → none |  | was named Test, Internal Finishing, Benching & Cover; resources Labor [62.37 h]; Foreman [31.18 h]; Plumber Helper [31.18 h]; Plumber [31.18 h]; Mason [31.18 h]; Storm MH depth 2.51 - 3.5m [0.42] → Labor [56.13 h]; Foreman [28.07 h]; Plumber Helper [28.07 h]; Plumber [28.07 h]; Mason [28.07 h]; Storm MH depth 2.51 - 3.5m [0.37] |
| B6.33 05 13.075 | Backfilling |  |  |  |  |  | B6.33 05 13.074 SS → B6.33 05 13.074 SS+1d, B6.33 05 13.074 FF+1d |  |
| 1 | **Depth From 3.5m to 4.5m** |  | 2026-09-19 → 2026-10-05 (+16d) |  |  |  |  |  |
| B6.33 05 13.084 | Test, Internal Finishing, Benching & Cover (90.00% Completed) |  | 2026-09-19 → 2026-09-15 A (-4d) | 79d → 77d | 90% → 100% | 113d → none |  | was named Test, Internal Finishing, Benching & Cover; resources Labor [62.37 h]; Foreman [31.18 h]; Plumber Helper [31.18 h]; Plumber [31.18 h]; Mason [31.18 h]; Storm MH depth 3.51 -4.5m [0.39] → Labor [56.13 h]; Foreman [28.07 h]; Plumber Helper [28.07 h]; Plumber [28.07 h]; Mason [28.07 h]; Storm MH depth 3.51 -4.5m [0.35] |
| B6.33 05 13.085 | Backfilling |  |  |  |  |  | B6.33 05 13.084 SS, B6.33 05 13.01.06 SS → B6.33 05 13.084 SS+1d, B6.33 05 13.084 FF+1d |  |
| Catch Basins | **Catch Basins** |  | 2026-09-19 → 2026-09-29 (+10d) |  |  |  |  |  |
| Sing | **Single** |  | 2026-09-19 → 2026-09-29 (+10d) |  |  |  |  |  |
| B6.33 05 63.072 | Backfilling, DI Frame & Grate Cover Fixing (90.00% Completed) |  | 2026-09-19 → 2026-09-15 A (-4d) | 79.85d → 77.85d | 90% → 100% | 113d → none |  | was named Backfilling, DI Frame & Grate Cover Fixing; resources Labor [77.96 h]; Foreman [38.98 h]; Operator [77.96 h]; Surveyor [38.98 h]; Surveyor Helper [38.98 h]; Loader [40 h]; Water Tanker [40 h]; Dump Truck [40 h]; Plate Compactor [40 h]; Single Catch basin [5.96] → Labor [70.17 h]; Foreman [35.08 h]; Operator [70.17 h]; Surveyor [35.08 h]; Surveyor Helper [35.08 h]; Loader [36 h]; Water Tanker [36 h]; Dump Truck [36 h]; Plate Compactor [36 h]; Single Catch basin [5.36] |
| Dou | **Double** |  | 2026-09-19 → 2026-09-22 (+3d) |  |  |  |  |  |
| B6.33 05 63.082 | Backfilling, DI Frame & Grate Cover Fixing (90.00% Completed) |  | 2026-09-19 → 2026-09-15 A (-4d) | 40d → 38d | 90% → 100% | 0d → none |  | was named Backfilling, DI Frame & Grate Cover Fixing; resources Labor [77.96 h]; Foreman [38.98 h]; Operator [77.96 h]; Surveyor [38.98 h]; Surveyor Helper [38.98 h]; Loader [40 h]; Water Tanker [40 h]; Dump Truck [40 h]; Plate Compactor [40 h]; Double Catch basin [1.19] → Labor [70.17 h]; Foreman [35.08 h]; Operator [70.17 h]; Surveyor [35.08 h]; Surveyor Helper [35.08 h]; Loader [36 h]; Water Tanker [36 h]; Dump Truck [36 h]; Plate Compactor [36 h]; Double Catch basin [1.07] |
| Potable | **Potable Network** |  | 2026-09-26 → 2026-10-15 (+19d) |  |  |  |  |  |
| Valves & Chambers | **Valves & Chambers** |  | 2026-09-26 → 2026-10-15 (+19d) |  |  |  |  |  |
| GV | **Gate Valves** |  | 2026-09-19 → 2026-10-10 (+21d) |  |  |  |  |  |
| 1 | **Gate valves dia (110) mm** |  | 2026-09-19 → 2026-10-10 (+21d) |  |  |  |  |  |
| B3.33 14 19.01.105 | Spindle & Surface Box | 2026-09-16 → 2026-10-07 (+21d) | 2026-09-19 → 2026-10-10 (+21d) |  |  | 107d → 104.32d |  |  |
| 2 | **Air Valves** |  | 2026-09-26 → 2026-10-15 (+19d) |  |  |  |  |  |
| 4 | **Air valves on less than 315 mm. (In Chamber)** |  | 2026-09-26 → 2026-10-15 (+19d) |  |  |  |  |  |
| B3.33 05 63.02.011 | Land Adjustment & Compaction |  |  |  |  |  | B1.2.32 11 26.01.1 SS → B3.33 14 13.01.024 |  |
| B3.33 05 63.02.013 | Chambers Walls Conc Cast In Situ |  |  |  |  |  | B3.33 05 63.02.012, DMM2-Proc-Delv-7414 SS → B3.33 05 63.02.012 |  |
| B3.33 05 63.02.014 | Chamber Curing, Finishing & Steel Cover (50.00% Completed) |  | 2026-09-19 → 2026-09-15 A (-4d) | 81d → 79d | 50% → 100% | 94d → none |  | was named Chamber Curing, Finishing & Steel Cover; resources Labor [62.37 h]; Mason [31.18 h]; POT Air valve Dia. 50 mm on pipes with Dia. less than 315 mm [0.24]; Air valve chamber; on less than 315 mm Dia. pipeline [0.18] → Labor [31.18 h]; Mason [15.59 h]; POT Air valve Dia. 50 mm on pipes with Dia. less than 315 mm [0.12]; Air valve chamber; on less than 315 mm Dia. pipeline [0.09] |
| B3.33 05 63.02.015 | Valve & Fitting Installation | 2026-09-20 → 2026-10-11 (+21d) | 2026-09-26 → 2026-10-15 (+19d) |  |  | 94d → 91.32d | B3.33 05 63.02.014 → B3.33 05 63.02.014_R |  |
| Fire Fighting | **Fire Fighting Network** |  | 2026-10-06 → 2026-10-26 (+20d) |  |  |  |  |  |
| HDPE | **HDPE Pipes** |  | 2026-09-20 → 2026-09-26 (+6d) |  |  |  |  |  |
| ?250mm | **?250mm** |  | 2026-09-20 → 2026-09-26 (+6d) |  |  |  |  |  |
| Depth: 0.0m - 1.5m | **Depth: 0.0m - 1.5m** |  | 2026-09-20 → 2026-09-26 (+6d) |  |  |  |  |  |
| B3.1. 33 14 13.015 | Backfilling & Warrning Tape (95.00% Completed) |  | 2026-09-20 → 2026-09-15 A (-5d) | 126d → 124d | 95% → 100% | 112d → none |  | was named Backfilling & Warrning Tape; resources Labor [77.96 h]; Foreman [38.98 h]; Operator [155.92 h]; Surveyor [38.98 h]; Surveyor Helper [38.98 h]; Loader [40 h]; Water Tanker [40 h]; Dump Truck [40 h]; Plate Compactor [40 h]; Roller Compactor [40 h]; Depth: 0.0m - 1.5m [65.75] → Labor [74.06 h]; Foreman [37.03 h]; Operator [148.13 h]; Surveyor [37.03 h]; Surveyor Helper [37.03 h]; Loader [38 h]; Water Tanker [38 h]; Dump Truck [38 h]; Plate Compactor [38 h]; Roller Compactor [38 h]; Depth: 0.0m - 1.5m [62.46] |
| Depth: 1.51m - 2.5m | **Depth: 1.51m - 2.5m** |  | 2026-09-20 → 2026-09-26 (+6d) |  |  |  |  |  |
| B3.1. 33 14 13.025 | Backfilling & Warrning Tape (95.00% Completed) |  | 2026-09-20 → 2026-09-15 A (-5d) | 114d → 112d | 95% → 100% | 112d → none |  | was named Backfilling & Warrning Tape; resources Labor [77.96 h]; Foreman [38.98 h]; Operator [155.92 h]; Surveyor [38.98 h]; Surveyor Helper [38.98 h]; Loader [40 h]; Water Tanker [40 h]; Dump Truck [40 h]; Plate Compactor [40 h]; Roller Compactor [40 h]; Depth: 1.51m - 2.5m [4.11] → Labor [74.06 h]; Foreman [37.03 h]; Operator [148.13 h]; Surveyor [37.03 h]; Surveyor Helper [37.03 h]; Loader [38 h]; Water Tanker [38 h]; Dump Truck [38 h]; Plate Compactor [38 h]; Roller Compactor [38 h]; Depth: 1.51m - 2.5m [3.9] |
| Valves & Chambers | **Valves & Chambers** |  | 2026-10-06 → 2026-10-26 (+20d) |  |  |  |  |  |
| GV | **Gate Valves** |  | 2026-10-06 → 2026-10-26 (+20d) |  |  |  |  |  |
| 1 | **Gate valves dia (250) mm** |  | 2026-10-06 → 2026-10-26 (+20d) |  |  |  |  |  |

| ID | Task | Start | Finish | Duration | Complete | Total float | Predecessors | Other |
| --- | --- | --- | --- | --- | --- | --- | --- | --- |
| B3.33 14 19.01.121 | Spindle & Surface Box | 2026-10-03 → 2026-10-22 (+19d) | 2026-10-06 → 2026-10-26 (+20d) |  |  | 67d → 64.32d | B3.33 14 19.01.120, B3.33 14 19.01.133, B3.33 14 19.01.127 → B3.33 14 19.01.120, B3.33 14 19.01.133, B3.33 14 19.01.127, B3.1. 33 14 13.025_R |  |
| 2 | **Air Valves** |  | 2026-09-28 → 2026-10-18 (+20d) |  |  |  |  |  |
| 4 | **Air valves on less than 315 mm. (In Chamber)** |  | 2026-09-28 → 2026-10-18 (+20d) |  |  |  |  |  |
| B3.33 05 63.02.41 | Chamber Curing, Finishing & Steel Cover (50.00% Completed) |  | 2026-09-20 → 2026-09-15 A (-5d) | 81d → 79d | 50% → 100% | 63d → none |  | was named Chamber Curing, Finishing & Steel Cover; resources Labor [62.37 h]; Mason [31.18 h]; FF Air valve Dia. 50 mm on pipes with Dia. less than 315 mm [0.24]; FF Air valve chamber; on less than 315 mm Dia. pipeline [0.18] → Labor [31.18 h]; Mason [15.59 h]; FF Air valve Dia. 50 mm on pipes with Dia. less than 315 mm [0.12]; FF Air valve chamber; on less than 315 mm Dia. pipeline [0.09] |
| B3.33 05 63.02.44 | Valve & Fitting Installation | 2026-09-21 → 2026-10-12 (+21d) | 2026-09-28 → 2026-10-18 (+20d) |  |  | 63d → 60.32d | B3.33 05 63.02.41, B3.33 05 63.01.31 → B3.33 05 63.02.41_R, B3.33 05 63.01.31 |  |
| B3.33 05 63.01.34 | Valve & Fitting Installation |  |  |  |  |  | B3.33 05 63.01.31, B3.1. 33 14 13.025 SS → B3.33 05 63.01.31 |  |
| B3.33 14 19.01.fh5 | Backfilling & Compaction |  |  |  |  |  | B3.33 14 19.01.fh3, B3.1. 33 14 13-01106, B3.33 14 19.01.fh43 SS → B3.33 14 19.01.fh3, B3.1. 33 14 13-01106 |  |
| TSE | **TSE Network** |  | 2026-11-10 → 2026-11-30 (+20d) |  |  |  |  |  |
| B4.33 14 13.071 | Excavation |  |  | 7.25d → 8d |  |  |  |  |
| B4.33 14 13.072 | Sand Bedding |  |  | 9.5d → 10.5d |  |  |  |  |
| Valves & Chambers | **Valves & Chambers** |  | 2026-11-10 → 2026-11-30 (+20d) |  |  |  |  |  |
| GV | **Gate Valves** |  | 2026-09-19 → 2026-10-10 (+21d) |  |  |  |  |  |
| 1 | **Gate valves dia (250) mm** |  | 2026-09-19 → 2026-10-10 (+21d) |  |  |  |  |  |
| B3.33 14 19.01.137 | Spindle & Surface Box | 2026-09-16 → 2026-10-07 (+21d) | 2026-09-19 → 2026-10-10 (+21d) |  |  | 60d → 57.32d |  |  |
| 2 | **Air Valves** |  | 2026-09-26 → 2026-10-15 (+19d) |  |  |  |  |  |
| 4 | **Air valves on less than 315 mm. (In Chamber)** |  | 2026-09-26 → 2026-10-15 (+19d) |  |  |  |  |  |
| B3.33 05 63.02.86 | Chamber Curing, Finishing & Steel Cover (50.00% Completed) |  | 2026-09-19 → 2026-09-15 A (-4d) | 82d → 80d | 50% → 100% | 5d → none |  | was named Chamber Curing, Finishing & Steel Cover; resources Labor [62.37 h]; Mason [31.18 h]; TSE Air valve Dia. 50 mm on pipes with Dia. less than 315 mm [0.19] → Labor [31.18 h]; Mason [15.59 h]; TSE Air valve Dia. 50 mm on pipes with Dia. less than 315 mm [0.1] |
| B3.33 05 63.02.89 | Valve & Fitting Installation | 2026-09-20 → 2026-10-11 (+21d) | 2026-09-26 → 2026-10-15 (+19d) |  |  | 5d → 6.32d | B3.33 05 63.02.86 → B3.33 05 63.02.86_R |  |
| Washout Valves | **Washout Valves** |  | 2026-11-10 → 2026-11-30 (+20d) |  |  |  |  |  |
| 4 | **Washout valves on 110-400 mm. (In Chamber)** |  | 2026-11-10 → 2026-11-30 (+20d) |  |  |  |  |  |
| B3.33 05 63.01.65 | Foundations (60.00% Completed) |  | 2026-09-19 → 2026-09-15 A (-4d) | 85.2d → 84d | 60% → 100% | 113.8d → none |  | was named Foundations; resources Labor [46.78 h]; Foreman [23.39 h]; Laboratory Officer [23.39 h]; Carpenter [23.39 h]; Steelfixer [23.39 h]; Mason [23.39 h]; TSE Wash out valve Dia. 100 mm on pipes with Dia. 110-400 mm [0.1] → Labor [28.07 h]; Foreman [14.03 h]; Laboratory Officer [14.03 h]; Carpenter [14.03 h]; Steelfixer [14.03 h]; Mason [14.03 h]; TSE Wash out valve Dia. 100 mm on pipes with Dia. 110-400 mm [0.06] |
| B3.33 05 63.01.68 | Chambers Walls Conc Cast In Situ (60.00% Completed) |  | 2026-09-19 → 2026-09-15 A (-4d) | 84.2d → 83d | 60% → 100% | 113.8d → none |  | was named Chambers Walls Conc Cast In Situ; resources Labor [46.78 h]; Foreman [23.39 h]; Laboratory Officer [23.39 h]; Carpenter [23.39 h]; Steelfixer [23.39 h]; Mason [23.39 h]; TSE Wash out valve Dia. 100 mm on pipes with Dia. 110-400 mm [0.1] → Labor [28.07 h]; Foreman [14.03 h]; Laboratory Officer [14.03 h]; Carpenter [14.03 h]; Steelfixer [14.03 h]; Mason [14.03 h]; TSE Wash out valve Dia. 100 mm on pipes with Dia. 110-400 mm [0.06] |
| B3.33 05 63.01.66 | Chamber Curing, Finishing & Steel Cover (60.00% Completed) |  | 2026-09-19 → 2026-09-15 A (-4d) | 82.6d → 81d | 60% → 100% | 66.4d → none |  | was named Chamber Curing, Finishing & Steel Cover; resources Labor [62.37 h]; Mason [31.18 h]; TSE Wash out valve Dia. 100 mm on pipes with Dia. 110-400 mm [0.19] → Labor [37.42 h]; Mason [18.71 h]; TSE Wash out valve Dia. 100 mm on pipes with Dia. 110-400 mm [0.12] |
| B3.33 05 63.01.69 | Valve & Fitting Installation | 2026-11-08 → 2026-11-28 (+20d) | 2026-11-10 → 2026-11-30 (+20d) |  |  | 25d → 22.32d | B3.33 05 63.01.66, B4.32 84 13.30 → B3.33 05 63.01.66_R, B4.32 84 13.30 |  |
| Solenoid valves | **Solenoid valves** | 2026-10-14 → 2026-11-05 (+22d) | 2026-11-07 → 2026-11-26 (+19d) |  |  |  |  |  |
| Solenoid valve ?1.0 | **1 Solenoid valve ?1.0 inch with box** | 2026-10-14 → 2026-11-05 (+22d) | 2026-11-03 → 2026-11-23 (+20d) |  |  |  |  |  |
| B4.32 84 13.31 | Cable Laying Two-Wire Decoder (12 AWG) | 2026-10-14 → 2026-11-05 (+22d) | 2026-10-17 → 2026-11-08 (+22d) |  |  | 31d → 26.32d |  |  |
| B4.32 84 13.066 | Pull Box Installation | 2026-10-18 → 2026-11-09 (+22d) | 2026-10-20 → 2026-11-11 (+22d) |  |  | 31d → 26.32d |  |  |
| B4.32 84 13.32 | Solenoid Valve Box Installation | 2026-10-18 → 2026-11-09 (+22d) | 2026-10-20 → 2026-11-11 (+22d) |  |  | 34d → 29.32d |  |  |
| B4.32 84 13.33 | Bubblers Installation | 2026-11-01 → 2026-11-21 (+20d) | 2026-11-03 → 2026-11-23 (+20d) |  |  | 25d → 22.32d |  |  |
| Solenoid valve ?1.5 | **1 Solenoid valve ?1.5 inch with box** | 2026-10-18 → 2026-11-09 (+22d) | 2026-10-27 → 2026-11-18 (+22d) |  |  |  |  |  |
| B4.32 84 13.34 | Cable Laying Two-Wire Decoder (12 AWG) | 2026-10-18 → 2026-11-09 (+22d) | 2026-10-20 → 2026-11-11 (+22d) |  |  | 31d → 26.32d |  |  |
| B4.32 84 13.067 | Pull Box Installation | 2026-10-21 → 2026-11-12 (+22d) | 2026-10-24 → 2026-11-15 (+22d) |  |  | 31d → 26.32d |  |  |
| B4.32 84 13.35 | Solenoid Valve Box Installation | 2026-10-21 → 2026-11-12 (+22d) | 2026-10-24 → 2026-11-15 (+22d) |  |  | 31d → 26.32d |  |  |
| B4.32 84 13.36 | Bubblers Installation | 2026-10-25 → 2026-11-16 (+22d) | 2026-10-27 → 2026-11-18 (+22d) |  |  | 31d → 26.32d |  |  |
| Solenoid valve ?2.0 | **1 Solenoid valve ?2.0 inch with box** | 2026-10-21 → 2026-11-12 (+22d) | 2026-11-07 → 2026-11-26 (+19d) |  |  |  |  |  |
| B4.32 84 13.28 | Cable Laying Two-Wire Decoder (12 AWG) | 2026-10-21 → 2026-11-12 (+22d) | 2026-10-24 → 2026-11-15 (+22d) |  |  | 31d → 26.32d |  |  |
| B4.32 84 13.068 | Pull Box Installation | 2026-10-25 → 2026-11-16 (+22d) | 2026-10-27 → 2026-11-18 (+22d) |  |  | 31d → 26.32d |  |  |
| B4.32 84 13.29 | Solenoid Valve Box Installation | 2026-10-25 → 2026-11-16 (+22d) | 2026-10-27 → 2026-11-18 (+22d) |  |  | 31d → 26.32d |  |  |
| B4.32 84 13.30 | Bubblers Installation | 2026-11-04 → 2026-11-24 (+20d) | 2026-11-07 → 2026-11-26 (+19d) |  |  | 25d → 22.32d |  |  |
| Dry Networks | **Dry Networks** |  | 2026-11-08 → 2026-11-28 (+20d) |  |  |  |  |  |
| MV Network | **Medium Voltage Network** |  | 2026-10-03 → 2026-10-22 (+19d) |  |  |  |  |  |
| Duct Banks | **Duct Banks** |  | 2026-09-19 → 2026-10-10 (+21d) |  |  |  |  |  |
| 4 Way | **4 Way** |  | 2026-09-19 → 2026-10-10 (+21d) |  |  |  |  |  |
| B2.33 71 00.021 | Backfilling & Warrning Tape (71.00% Completed) |  | 2026-09-19 → 2026-09-15 A (-4d) | 89d → 87d | 71% → 100% | 57d → none |  | was named Backfilling & Warrning Tape; resources Labor [62.37 h]; Foreman [31.18 h]; Operator [124.74 h]; Surveyor [31.18 h]; Surveyor Helper [31.18 h]; Loader [32 h]; Water Tanker [32 h]; Dump Truck [32 h]; Plate Compactor [32 h]; Roller Compactor [32 h]; Excavation for Trench size 60cm wide and 80cm deep ( for 2 cables) [166.24]; Duct bank for MV cables UPVC (4xDia. 150mm) [2.75] → Labor [44.28 h]; Foreman [22.14 h]; Operator [88.56 h]; Surveyor [22.14 h]; Surveyor Helper [22.14 h]; Loader [22.72 h]; Water Tanker [22.72 h]; Dump Truck [22.72 h]; Plate Compactor [22.72 h]; Roller Compactor [22.72 h]; Excavation for Trench size 60cm wide and 80cm deep ( for 2 cables) [118.03]; Duct bank for MV cables UPVC (4xDia. 150mm) [1.95] |
| Cables | **Cables** |  | 2026-10-03 → 2026-10-22 (+19d) |  |  |  |  |  |
| 3C,500mm2 | **3C,500mm2** |  | 2026-10-03 → 2026-10-22 (+19d) |  |  |  |  |  |
| B2.33 71 49.23.01 | Cable 13.8 kV Unarmored |  |  |  |  |  | B1.2.32 11 26.01.1 SS → B2.33 71 00.021 SS+1d, B2.33 71 00.021 FF+1d |  |
| B2.33 71 49.23.02 | Straight joints cables | 2026-09-16 → 2026-10-07 (+21d) | 2026-09-19 → 2026-10-10 (+21d) |  |  | 85d → 82.32d |  |  |
| B2.33 71 49.23.03 | Cable Termination | 2026-09-29 → 2026-10-19 (+20d) | 2026-10-03 → 2026-10-22 (+19d) |  |  | 78d → 75.32d |  |  |
| Low Voltage Network | **Low Voltage Network** |  | 2026-11-08 → 2026-11-28 (+20d) |  |  |  |  |  |
| Duct Banks | **Duct Banks** |  | 2026-11-08 → 2026-11-28 (+20d) |  |  |  |  |  |
| B2.33 71 00 02 97 | Excavation |  |  |  |  |  | B4.33 14 13.065, B1.2.32 11 26.01.1 SS → B4.33 14 13.065 |  |
| 4 Way | **6 Way** |  | 2026-11-08 → 2026-11-28 (+20d) |  |  |  |  |  |
| B2.33 71 00 02 101 | Shuttering, Steel Fixing Incl. UPVC Pipe & Conc. Cast (0.00% Completed) |  | 2026-09-17 → 2026-09-15 A (-2d) | 5d → 6d | 0% → 100% | 105d → none |  | was named Shuttering, Steel Fixing Incl. UPVC Pipe & Conc. Cast; resources Labor [93.55 h]; Laboratory Officer [46.78 h]; Carpenter [46.78 h]; Steelfixer [46.78 h]; Mason [46.78 h]; Surveyor [46.78 h]; Surveyor Helper [46.78 h]; Excavation for Trench size 90cm wide and 65cm deep ( for 3 cables); Duct bank for LV cables UPVC (6xDia. 110mm) [15]; SL LV Excavation for Trench size 90cm wide and 65cm deep ( for 3 cables) → Labor; Laboratory Officer; Carpenter; Steelfixer; Mason; Surveyor; Surveyor Helper; Excavation for Trench size 90cm wide and 65cm deep ( for 3 cables); Duct bank for LV cables UPVC (6xDia. 110mm); SL LV Excavation for Trench size 90cm wide and 65cm deep ( for 3 cables) |
| B2.33 71 00 02 102 | Backfilling & Warrning Tape | 2026-11-05 → 2026-11-25 (+20d) | 2026-11-08 → 2026-11-28 (+20d) |  |  | 65d → 62.32d | B2.33 71 00 02 101, B2.33 71 00 02 99 SS, B2.33 71 00 01 13, B2.33 71 00.267, B2.33 71 00 02 141, B2.33 71 00 02 153, B2.33 71 00 02 150, B2.33 71 00 02 99 → B2.33 71 00 02 101_R, B2.33 71 00 02 99 SS, B2.33 71 00 01 13, B2.33 71 00.267_R, B2.33 71 00 02 141, B2.33 71 00 02 153, B2.33 71 00 02 150, B2.33 71 00 02 99 |  |
| Street Lighting | **Street Lighting** |  | 2026-11-07 → 2026-11-26 (+19d) |  |  |  |  |  |
| Cables | **Cables** |  | 2026-11-07 → 2026-11-26 (+19d) |  |  |  |  |  |
| 4C,10+1C,10mm2 | **4C,10+1C,10mm2** |  | 2026-11-07 → 2026-11-26 (+19d) |  |  |  |  |  |
| B2.33 71 19 62 | Land Adjustment (50.00% Completed) |  | 2026-09-16 → 2026-09-15 A (-1d) | 5d → 4d | 50% → 100% | 115d → none |  | was named Land Adjustment; resources Labor [31.18 h]; Foreman [15.59 h]; Operator [31.18 h]; Surveyor [7.8 h]; Surveyor Helper [7.8 h]; Excavator (With Bucket) [16 h]; Water Tanker [16 h]; Dump Truck [16 h]; Roller Compactor [16 h]; SL Cable, Copper 4x10mm2/ CU/XLPE/SWA/PVC + 1x10mm2 CU/PVC [416.5] → Labor [15.59 h]; Foreman [7.8 h]; Operator [15.59 h]; Surveyor [3.9 h]; Surveyor Helper [3.9 h]; Excavator (With Bucket) [8 h]; Water Tanker [8 h]; Dump Truck [8 h]; Roller Compactor [8 h]; SL Cable, Copper 4x10mm2/ CU/XLPE/SWA/PVC + 1x10mm2 CU/PVC [208.25] |
| B2.33 71 49.23.112 | Cable Pulling (50.00% Completed) |  | 2026-09-17 → 2026-09-15 A (-2d) |  | 50% → 100% | 103d → none |  | was named Cable Pulling; resources Labor [62.37 h]; Foreman [31.18 h]; Surveyor [31.18 h]; Surveyor Helper [31.18 h]; Electrician [31.18 h]; SL Cable, Copper 4x10mm2/ CU/XLPE/SWA/PVC + 1x10mm2 CU/PVC [1249.49] → Labor [31.18 h]; Foreman [15.59 h]; Surveyor [15.59 h]; Surveyor Helper [15.59 h]; Electrician [15.59 h]; SL Cable, Copper 4x10mm2/ CU/XLPE/SWA/PVC + 1x10mm2 CU/PVC [624.75] |
| B2.33 71 19 72 | Backfilling | 2026-11-04 → 2026-11-24 (+20d) | 2026-11-07 → 2026-11-26 (+19d) |  |  | 64d → 62.32d | B2.33 71 49.23.112, B2.33 71 16.28 FF → B2.33 71 49.23.112_R, B2.33 71 16.28 FF |  |
| Earthing | **Earthing** | 2026-09-19 → 2026-10-10 (+21d) | 2026-09-27 → 2026-10-17 (+20d) |  |  |  |  |  |
| B2.33 71 19 011 | Land Adjustment | 2026-09-19 → 2026-10-10 (+21d) | 2026-09-20 → 2026-10-11 (+21d) |  |  | 27d → 28.32d | B2.33 71 16.021 → B2.33 71 16.021_R |  |
| B2.33 71 19 012 | Earth Rods & Conduits | 2026-09-21 → 2026-10-12 (+21d) | 2026-09-22 → 2026-10-13 (+21d) |  |  | 27d → 28.32d |  |  |
| B2.33 71 19 013 | Backfilling | 2026-09-24 → 2026-10-14 (+20d) | 2026-09-27 → 2026-10-17 (+20d) |  |  | 27d → 28.32d |  |  |
| SL Poles | **SL Poles** |  | 2026-10-06 → 2026-10-26 (+20d) |  |  |  |  |  |
| Pole (10 M Sngl Arm) | **Pole (10 M Single Arm)** |  | 2026-10-06 → 2026-10-26 (+20d) |  |  |  |  |  |
| B2.33 71 16.021 | Excavation (92.00% Completed) |  | 2026-09-17 → 2026-09-15 A (-2d) | 17.1d → 15.1d | 92% → 100% | 27d → none |  | was named Excavation; resources Labor [31.18 h]; Foreman [15.59 h]; Operator [31.18 h]; Surveyor [15.59 h]; Surveyor Helper [15.59 h]; Excavator (With Bucket) [16 h]; Dump Truck [16 h]; Lighting poles with 1 arm, height of ( 10) meters [6.6] → Labor [28.69 h]; Foreman [14.34 h]; Operator [28.69 h]; Surveyor [14.34 h]; Surveyor Helper [14.34 h]; Excavator (With Bucket) [14.72 h]; Dump Truck [14.72 h]; Lighting poles with 1 arm, height of ( 10) meters [6.07] |
| B2.33 71 16.022 | PC & RC Foundation (92.00% Completed) |  | 2026-09-17 → 2026-09-15 A (-2d) | 16.1d → 14.1d | 92% → 100% | 114d → none |  | was named PC & RC Foundation; resources Labor [62.37 h]; Foreman [31.18 h]; Laboratory Officer [31.18 h]; Carpenter [31.18 h]; Steelfixer [31.18 h]; Mason [31.18 h]; Lighting poles with 1 arm, height of ( 10) meters [6.6] → Labor [57.38 h]; Foreman [28.69 h]; Laboratory Officer [28.69 h]; Carpenter [28.69 h]; Steelfixer [28.69 h]; Mason [28.69 h]; Lighting poles with 1 arm, height of ( 10) meters [6.07] |

| ID | Task | Start | Finish | Duration | Complete | Total float | Predecessors | Other |
| --- | --- | --- | --- | --- | --- | --- | --- | --- |
| B2.33 71 16.023 | Lighting Poles Installation Incl power box, Cables (92.00% Completed) |  | 2026-09-17 → 2026-09-15 A (-2d) | 15.1d → 13.1d | 92% → 100% | 114d → none |  | was named Lighting Poles Installation Incl power box, Cables; resources Labor [46.78 h]; Operator [46.78 h]; Mobile Crane [24 h]; Electrician [23.39 h]; Lighting poles with 1 arm, height of ( 10) meters [13.2] → Labor [43.03 h]; Operator [43.03 h]; Mobile Crane [22.08 h]; Electrician [21.52 h]; Lighting poles with 1 arm, height of ( 10) meters [12.14] |
| B2.26.56.19.01 | Lighting Luminares Inst (92.00% Completed) |  | 2026-09-17 → 2026-09-15 A (-2d) | 7.52d → 5.52d | 92% → 100% | 94d → none |  | was named Lighting Luminares Inst; resources Labor [46.78 h]; Operator [46.78 h]; Manlift [24 h]; Street Lighting( LED), Lamp Lumen: 14560, Luminare Lumen:12700 , complete with control gear and lamp, (80) WATT. [54] → Labor [43.03 h]; Operator [43.03 h]; Manlift [22.08 h]; Street Lighting( LED), Lamp Lumen: 14560, Luminare Lumen:12700 , complete with control gear and lamp, (80) WATT. [49.68] |
| B2.33 71 16.025 | Backfilling, Grouting & Chamfering | 2026-10-04 → 2026-10-24 (+20d) | 2026-10-06 → 2026-10-26 (+20d) |  |  | 82d → 82.32d | B2.26.56.19.01, B2.33 71 00 02 72 → B2.26.56.19.01_R, B2.33 71 00 02 72 |  |
| Telecommunication | **Telecommunication Network** |  | 2026-09-24 → 2026-10-14 (+20d) |  |  |  |  |  |
| Manholes | **Manholes** |  | 2026-09-17 → 2026-10-08 (+21d) |  |  |  |  |  |
| Manhole Type 1 | **Manhole Type 1** |  | 2026-09-17 → 2026-10-08 (+21d) |  |  |  |  |  |
| B2.31 23 00.571 | Excavation (88.00% Completed) |  | 2026-09-17 → 2026-09-15 A (-2d) | 6d → 4d | 88% → 100% | 114d → none |  | was named Excavation; resources Labor [31.18 h]; Foreman [15.59 h]; Operator [31.18 h]; Surveyor [15.59 h]; Surveyor Helper [15.59 h]; Excavator (With Bucket) [16 h]; Water Tanker [16 h]; Dump Truck [16 h]; Plate Compactor [16 h]; Manhole Type 1 [1.24] → Labor [27.44 h]; Foreman [13.72 h]; Operator [27.44 h]; Surveyor [13.72 h]; Surveyor Helper [13.72 h]; Excavator (With Bucket) [14.08 h]; Water Tanker [14.08 h]; Dump Truck [14.08 h]; Plate Compactor [14.08 h]; Manhole Type 1 [1.09] |
| B2.33 71 00.141 | Manhole Installation (88.00% Completed) |  | 2026-09-17 → 2026-09-15 A (-2d) | 4d → 2d | 88% → 100% | 114d → none |  | was named Manhole Installation; resources Labor [31.18 h]; Laboratory Officer [15.59 h]; Carpenter [15.59 h]; Steelfixer [15.59 h]; Mason [15.59 h]; Surveyor [15.59 h]; Surveyor Helper [15.59 h]; Manhole Type 1 [3.72] → Labor [27.44 h]; Laboratory Officer [13.72 h]; Carpenter [13.72 h]; Steelfixer [13.72 h]; Mason [13.72 h]; Surveyor [13.72 h]; Surveyor Helper [13.72 h]; Manhole Type 1 [3.27] |
| B2.33 71 00.151 | Backfilling & Warrning Tape (88.00% Completed) |  | 2026-09-17 → 2026-09-15 A (-2d) | 3d → 1d | 88% → 100% | 105d → none |  | was named Backfilling & Warrning Tape; resources Labor [77.96 h]; Foreman [38.98 h]; Operator [155.92 h]; Surveyor [38.98 h]; Surveyor Helper [38.98 h]; Loader [40 h]; Water Tanker [40 h]; Dump Truck [40 h]; Plate Compactor [40 h]; Roller Compactor [40 h]; Manhole Type 1 [1.24] → Labor [68.61 h]; Foreman [34.3 h]; Operator [137.21 h]; Surveyor [34.3 h]; Surveyor Helper [34.3 h]; Loader [35.2 h]; Water Tanker [35.2 h]; Dump Truck [35.2 h]; Plate Compactor [35.2 h]; Roller Compactor [35.2 h]; Manhole Type 1 [1.09] |
| Manhole Type 2 | **Manhole Type 2** |  | 2026-09-17 → 2026-10-08 (+21d) |  |  |  |  |  |
| B2.31 23 00.581 | Excavation (88.00% Completed) |  | 2026-09-17 → 2026-09-15 A (-2d) | 8d → 6d | 88% → 100% | 114d → none |  | was named Excavation; resources Labor [31.18 h]; Foreman [15.59 h]; Operator [31.18 h]; Surveyor [15.59 h]; Surveyor Helper [15.59 h]; Excavator (With Bucket) [16 h]; Water Tanker [16 h]; Dump Truck [16 h]; Plate Compactor [16 h]; Manhole Type 2 [0.52] → Labor [27.44 h]; Foreman [13.72 h]; Operator [27.44 h]; Surveyor [13.72 h]; Surveyor Helper [13.72 h]; Excavator (With Bucket) [14.08 h]; Water Tanker [14.08 h]; Dump Truck [14.08 h]; Plate Compactor [14.08 h]; Manhole Type 2 [0.46] |
| B2.33 71 00.161 | Manhole Installation (88.00% Completed) |  | 2026-09-17 → 2026-09-15 A (-2d) | 6d → 4d | 88% → 100% | 114d → none |  | was named Manhole Installation; resources Labor [31.18 h]; Laboratory Officer [15.59 h]; Carpenter [15.59 h]; Steelfixer [15.59 h]; Mason [15.59 h]; Surveyor [15.59 h]; Surveyor Helper [15.59 h]; Manhole Type 2 [1.56] → Labor [27.44 h]; Laboratory Officer [13.72 h]; Carpenter [13.72 h]; Steelfixer [13.72 h]; Mason [13.72 h]; Surveyor [13.72 h]; Surveyor Helper [13.72 h]; Manhole Type 2 [1.37] |
| B2.33 71 00.171 | Backfilling & Warrning Tape (88.00% Completed) |  | 2026-09-17 → 2026-09-15 A (-2d) | 5d → 3d | 88% → 100% | 105d → none |  | was named Backfilling & Warrning Tape; resources Labor [62.37 h]; Foreman [31.18 h]; Operator [124.74 h]; Surveyor [31.18 h]; Surveyor Helper [31.18 h]; Loader [32 h]; Water Tanker [32 h]; Dump Truck [32 h]; Plate Compactor [32 h]; Roller Compactor [32 h]; Manhole Type 2 [0.52] → Labor [54.89 h]; Foreman [27.44 h]; Operator [109.77 h]; Surveyor [27.44 h]; Surveyor Helper [27.44 h]; Loader [28.16 h]; Water Tanker [28.16 h]; Dump Truck [28.16 h]; Plate Compactor [28.16 h]; Roller Compactor [28.16 h]; Manhole Type 2 [0.46] |
| B2.31 23 00.591 | Excavation |  |  |  |  |  | B2.33 71 00.021 SS → B2.33 71 00 02 100 |  |
| Ducts | **Ducts** |  | 2026-09-17 → 2026-10-08 (+21d) |  |  |  |  |  |
| (6*50mm) | **Size (6*50mm) HDPE ducts** |  | 2026-09-17 → 2026-10-08 (+21d) |  |  |  |  |  |
| B2.1.33 81 26.11 | Excavation |  |  |  |  |  | B2.1.33 81 26.180 SS → B2.31 23 00.591 |  |
| B2.1.33 81 26.13 | Backfilling & Warrning Tape (88.00% Completed) |  | 2026-09-17 → 2026-09-15 A (-2d) | 8d → 6d | 88% → 100% | 93d → none |  | was named Backfilling & Warrning Tape; resources Labor [77.96 h]; Foreman [38.98 h]; Operator [155.92 h]; Surveyor [38.98 h]; Surveyor Helper [38.98 h]; Loader [40 h]; Water Tanker [40 h]; Dump Truck [40 h]; Plate Compactor [40 h]; Roller Compactor [40 h]; (6*50mm) HDPE ducts [125.82] → Labor [68.61 h]; Foreman [34.3 h]; Operator [137.21 h]; Surveyor [34.3 h]; Surveyor Helper [34.3 h]; Loader [35.2 h]; Water Tanker [35.2 h]; Dump Truck [35.2 h]; Plate Compactor [35.2 h]; Roller Compactor [35.2 h]; (6*50mm) HDPE ducts [110.72] |
| (6*50mm+2*32mm) | **Size (6*50mm+2*32mm) HDPE ducts** |  | 2026-09-17 → 2026-10-08 (+21d) |  |  |  |  |  |
| B2.1.33 81 26.21 | Excavation |  |  | 2d → 1d |  |  |  |  |
| B2.1.33 81 26.23 | Backfilling & Warrning Tape (88.00% Completed) |  | 2026-09-17 → 2026-09-15 A (-2d) | 7d → 5d | 88% → 100% | 109d → none |  | was named Backfilling & Warrning Tape; resources Labor [77.96 h]; Foreman [38.98 h]; Operator [155.92 h]; Surveyor [38.98 h]; Surveyor Helper [38.98 h]; Loader [40 h]; Water Tanker [40 h]; Dump Truck [40 h]; Plate Compactor [40 h]; Roller Compactor [40 h]; (6*50mm+2*32mm) HDPE ducts [48.51] → Labor [68.61 h]; Foreman [34.3 h]; Operator [137.21 h]; Surveyor [34.3 h]; Surveyor Helper [34.3 h]; Loader [35.2 h]; Water Tanker [35.2 h]; Dump Truck [35.2 h]; Plate Compactor [35.2 h]; Roller Compactor [35.2 h]; (6*50mm+2*32mm) HDPE ducts [42.68] |
| (6*50mm+4*32mm) | **Size (6*50mm+4*32mm) HDPE ducts** |  | 2026-09-17 → 2026-10-08 (+21d) |  |  |  |  |  |
| B2.1.33 81 26.31 | Excavation (88.00% Completed) |  | 2026-09-17 → 2026-09-15 A (-2d) | 10.94d → 8.94d | 88% → 100% | 114d → none |  | was named Excavation; resources Labor [31.18 h]; Foreman [15.59 h]; Operator [31.18 h]; Surveyor [15.59 h]; Surveyor Helper [15.59 h]; Excavator (With Bucket) [16 h]; Water Tanker [16 h]; Dump Truck [16 h]; Plate Compactor [16 h]; (6*50mm+4*32mm) HDPE ducts [15] → Labor [27.44 h]; Foreman [13.72 h]; Operator [27.44 h]; Surveyor [13.72 h]; Surveyor Helper [13.72 h]; Excavator (With Bucket) [14.08 h]; Water Tanker [14.08 h]; Dump Truck [14.08 h]; Plate Compactor [14.08 h]; (6*50mm+4*32mm) HDPE ducts [13.2] |
| B2.1.33 81 26.32 | HDPE Pipe, Shuttering, Steel Fixing & Conc. Cast (88.00% Completed) |  | 2026-09-17 → 2026-09-15 A (-2d) | 7d → 5d | 88% → 100% | 114d → none |  | was named HDPE Pipe, Shuttering, Steel Fixing & Conc. Cast; resources Labor [93.55 h]; Laboratory Officer [46.78 h]; Carpenter [46.78 h]; Steelfixer [46.78 h]; Mason [46.78 h]; Surveyor [46.78 h]; Surveyor Helper [46.78 h]; (6*50mm+4*32mm) HDPE ducts [45] → Labor [82.33 h]; Laboratory Officer [41.16 h]; Carpenter [41.16 h]; Steelfixer [41.16 h]; Mason [41.16 h]; Surveyor [41.16 h]; Surveyor Helper [41.16 h]; (6*50mm+4*32mm) HDPE ducts [39.6] |
| B2.1.33 81 26.33 | Backfilling & Warrning Tape (88.00% Completed) |  | 2026-09-17 → 2026-09-15 A (-2d) | 6d → 4d | 88% → 100% | 114d → none |  | was named Backfilling & Warrning Tape; resources Labor [77.96 h]; Foreman [38.98 h]; Operator [155.92 h]; Surveyor [38.98 h]; Surveyor Helper [38.98 h]; Loader [40 h]; Water Tanker [40 h]; Dump Truck [40 h]; Plate Compactor [40 h]; Roller Compactor [40 h]; (6*50mm+4*32mm) HDPE ducts [15] → Labor [68.61 h]; Foreman [34.3 h]; Operator [137.21 h]; Surveyor [34.3 h]; Surveyor Helper [34.3 h]; Loader [35.2 h]; Water Tanker [35.2 h]; Dump Truck [35.2 h]; Plate Compactor [35.2 h]; Roller Compactor [35.2 h]; (6*50mm+4*32mm) HDPE ducts [13.2] |
| (2*32mm) | **Size (2*32mm) HDPE ducts** |  | 2026-09-17 → 2026-10-08 (+21d) |  |  |  |  |  |
| B2.1.33 81 26.41 | Excavation (88.00% Completed) |  | 2026-09-17 → 2026-09-15 A (-2d) | 10.94d → 8.94d | 88% → 100% | 114d → none |  | was named Excavation; resources Labor [31.18 h]; Foreman [15.59 h]; Operator [31.18 h]; Surveyor [15.59 h]; Surveyor Helper [15.59 h]; Excavator (With Bucket) [16 h]; Water Tanker [16 h]; Dump Truck [16 h]; Plate Compactor [16 h]; (2*32mm) HDPE ducts [8.6] → Labor [27.44 h]; Foreman [13.72 h]; Operator [27.44 h]; Surveyor [13.72 h]; Surveyor Helper [13.72 h]; Excavator (With Bucket) [14.08 h]; Water Tanker [14.08 h]; Dump Truck [14.08 h]; Plate Compactor [14.08 h]; (2*32mm) HDPE ducts [7.57] |
| B2.1.33 81 26.42 | HDPE Pipe, Shuttering, Steel Fixing & Conc. Cast (88.00% Completed) |  | 2026-09-17 → 2026-09-15 A (-2d) | 7d → 5d | 88% → 100% | 114d → none |  | was named HDPE Pipe, Shuttering, Steel Fixing & Conc. Cast; resources Labor [93.55 h]; Laboratory Officer [46.78 h]; Carpenter [46.78 h]; Steelfixer [46.78 h]; Mason [46.78 h]; Surveyor [46.78 h]; Surveyor Helper [46.78 h]; (2*32mm) HDPE ducts [25.8] → Labor [82.33 h]; Laboratory Officer [41.16 h]; Carpenter [41.16 h]; Steelfixer [41.16 h]; Mason [41.16 h]; Surveyor [41.16 h]; Surveyor Helper [41.16 h]; (2*32mm) HDPE ducts [22.7] |
| B2.1.33 81 26.43 | Backfilling & Warrning Tape (88.00% Completed) |  | 2026-09-17 → 2026-09-15 A (-2d) | 5d → 3d | 88% → 100% | 110d → none |  | was named Backfilling & Warrning Tape; resources Labor [77.96 h]; Foreman [38.98 h]; Operator [155.92 h]; Surveyor [38.98 h]; Surveyor Helper [38.98 h]; Loader [40 h]; Water Tanker [40 h]; Dump Truck [40 h]; Plate Compactor [40 h]; Roller Compactor [40 h]; (2*32mm) HDPE ducts [8.6] → Labor [68.61 h]; Foreman [34.3 h]; Operator [137.21 h]; Surveyor [34.3 h]; Surveyor Helper [34.3 h]; Loader [35.2 h]; Water Tanker [35.2 h]; Dump Truck [35.2 h]; Plate Compactor [35.2 h]; Roller Compactor [35.2 h]; (2*32mm) HDPE ducts [7.57] |
| (4*32mm) | **Size (4*32mm) HDPE ducts** |  | 2026-09-17 → 2026-10-08 (+21d) |  |  |  |  |  |
| B2.1.33 81 26.51 | Excavation (88.00% Completed) |  | 2026-09-17 → 2026-09-15 A (-2d) | 9.94d → 7.94d | 88% → 100% | 114d → none |  | was named Excavation; resources Labor [31.18 h]; Foreman [15.59 h]; Operator [31.18 h]; Surveyor [15.59 h]; Surveyor Helper [15.59 h]; Excavator (With Bucket) [16 h]; Water Tanker [16 h]; Dump Truck [16 h]; Plate Compactor [16 h]; (4*32mm) HDPE ducts [5.13] → Labor [27.44 h]; Foreman [13.72 h]; Operator [27.44 h]; Surveyor [13.72 h]; Surveyor Helper [13.72 h]; Excavator (With Bucket) [14.08 h]; Water Tanker [14.08 h]; Dump Truck [14.08 h]; Plate Compactor [14.08 h]; (4*32mm) HDPE ducts [4.52] |
| B2.1.33 81 26.52 | HDPE Pipe, Shuttering, Steel Fixing & Conc. Cast (88.00% Completed) |  | 2026-09-17 → 2026-09-15 A (-2d) | 7d → 5d | 88% → 100% | 114d → none |  | was named HDPE Pipe, Shuttering, Steel Fixing & Conc. Cast; resources Labor [93.55 h]; Laboratory Officer [46.78 h]; Carpenter [46.78 h]; Steelfixer [46.78 h]; Mason [46.78 h]; Surveyor [46.78 h]; Surveyor Helper [46.78 h]; (4*32mm) HDPE ducts [15.4] → Labor [82.33 h]; Laboratory Officer [41.16 h]; Carpenter [41.16 h]; Steelfixer [41.16 h]; Mason [41.16 h]; Surveyor [41.16 h]; Surveyor Helper [41.16 h]; (4*32mm) HDPE ducts [13.55] |
| B2.1.33 81 26.53 | Backfilling & Warrning Tape (88.00% Completed) |  | 2026-09-17 → 2026-09-15 A (-2d) | 6d → 4d | 88% → 100% | 110d → none |  | was named Backfilling & Warrning Tape; resources Labor [77.96 h]; Foreman [38.98 h]; Operator [155.92 h]; Surveyor [38.98 h]; Surveyor Helper [38.98 h]; Loader [40 h]; Water Tanker [40 h]; Dump Truck [40 h]; Plate Compactor [40 h]; Roller Compactor [40 h]; (4*32mm) HDPE ducts [5.13] → Labor [68.61 h]; Foreman [34.3 h]; Operator [137.21 h]; Surveyor [34.3 h]; Surveyor Helper [34.3 h]; Loader [35.2 h]; Water Tanker [35.2 h]; Dump Truck [35.2 h]; Plate Compactor [35.2 h]; Roller Compactor [35.2 h]; (4*32mm) HDPE ducts [4.52] |
| Demolishing | **Demolishing and Site Clearing** |  | 2026-09-24 → 2026-10-14 (+20d) |  |  |  |  |  |
| B2.1.02 41 00.011 | Excavation (88.00% Completed) |  | 2026-09-17 → 2026-09-15 A (-2d) | 11d → 9d | 88% → 100% | 114d → none |  | was named Excavation; resources Labor [31.18 h]; Foreman [15.59 h]; Operator [31.18 h]; Surveyor [15.59 h]; Surveyor Helper [15.59 h]; Excavator (With Bucket) [16 h]; Water Tanker [16 h]; Dump Truck [16 h]; Plate Compactor [16 h]; Telecommunication Manholes [0.5]; Telecommunication network components [143.13] → Labor [27.44 h]; Foreman [13.72 h]; Operator [27.44 h]; Surveyor [13.72 h]; Surveyor Helper [13.72 h]; Excavator (With Bucket) [14.08 h]; Water Tanker [14.08 h]; Dump Truck [14.08 h]; Plate Compactor [14.08 h]; Telecommunication Manholes [0.44]; Telecommunication network components [125.95] |
| B2.1.02 41 00.012 | Old Manholes Grubbing (88.00% Completed) |  | 2026-09-17 → 2026-09-15 A (-2d) | 10d → 8d | 88% → 100% | 114d → none |  | was named Old Manholes Grubbing; resources Labor [46.78 h]; Operator [46.78 h]; JCB [24 h]; Telecommunication Manholes [1] → Labor [41.16 h]; Operator [41.16 h]; JCB [21.12 h]; Telecommunication Manholes [0.88] |
| B2.1.02 41 00.013 | Old Network Components Grubbing (88.00% Completed) |  | 2026-09-17 → 2026-09-15 A (-2d) | 8d → 6d | 88% → 100% | 114d → none |  | was named Old Network Components Grubbing; resources Labor [46.78 h]; Operator [46.78 h]; JCB [24 h]; Telecommunication network components [286.24] → Labor [41.16 h]; Operator [41.16 h]; JCB [21.12 h]; Telecommunication network components [251.89] |
| B2.1.02 41 00.014 | New Manholes Installation (88.00% Completed) |  | 2026-09-17 → 2026-09-15 A (-2d) | 6d → 4d | 88% → 100% | 43d → none |  | was named New Manholes Installation; resources Foreman [31.18 h]; Operator [62.37 h]; Boom Truck [32 h]; Electrician [31.18 h]; Telecommunication Manholes [2] → Foreman [27.44 h]; Operator [54.89 h]; Boom Truck [28.16 h]; Electrician [27.44 h]; Telecommunication Manholes [1.76] |
| B2.1.02 41 00.015 | New Network Components Installation (88.00% Completed) |  | 2026-09-17 → 2026-09-15 A (-2d) | 5d → 3d | 88% → 100% | 103d → none |  | was named New Network Components Installation; resources Foreman [31.18 h]; Operator [62.37 h]; Boom Truck [32 h]; Electrician [31.18 h]; Telecommunication network components [572.5] → Foreman [27.44 h]; Operator [54.89 h]; Boom Truck [28.16 h]; Electrician [27.44 h]; Telecommunication network components [503.8] |
| B2.1.02 41 00.016 | Backfilling & Warrning Tape | 2026-09-19 → 2026-10-10 (+21d) | 2026-09-24 → 2026-10-14 (+20d) |  |  | 43d → 45.32d | B2.1.02 41 00.014 → B2.1.02 41 00.014_R |  |
| Earth & Road Works | **Earth & Road Works** |  | 2026-10-08 → 2026-10-27 (+19d) |  |  |  |  |  |
| B1.2.31 23 16.01.1 | Roadway Excavation |  |  |  |  |  | B2.33 71 00.211, B2.33 71 00.021 SS → B2.33 71 00.211 |  |
| Earth Layers | **Earth Layers** |  | 2026-09-22 → 2026-10-13 (+21d) |  |  |  |  |  |
| B1.2.32 11 13.01.1 | Subgrade (65.00% Completed) |  | 2026-09-21 → 2026-09-15 A (-6d) | 217.9d → 213d | 65% → 100% | 111.1d → none |  | was named Subgrade; resources Subgrade [19770.9]; Labor [218.29 h]; Foreman [109.15 h]; Operator [218.29 h]; Surveyor [109.15 h]; Surveyor Helper [109.15 h]; Grader [112 h]; Loader [112 h]; Water Tanker [112 h]; Dump Truck [112 h]; Plate Compactor [112 h]; Roller Compactor [112 h] → Subgrade [12851.1]; Labor [141.89 h]; Foreman [70.95 h]; Operator [141.89 h]; Surveyor [70.95 h]; Surveyor Helper [70.95 h]; Grader [72.8 h]; Loader [72.8 h]; Water Tanker [72.8 h]; Dump Truck [72.8 h]; Plate Compactor [72.8 h]; Roller Compactor [72.8 h] |
| B1.2.32 11 23.01.1 | Aggregate Base Course (90.00% Completed) |  | 2026-09-22 → 2026-09-15 A (-7d) | 122d → 116d | 90% → 100% | 110d → none |  | was named Aggregate Base Course; resources Aggregate base course [13180.6]; Labor [171.52 h]; Foreman [85.76 h]; Operator [171.52 h]; Surveyor [85.76 h]; Surveyor Helper [85.76 h]; Grader [88 h]; Loader [88 h]; Water Tanker [88 h]; Dump Truck [88 h]; Plate Compactor [88 h]; Roller Compactor [88 h] → Aggregate base course [11862.5]; Labor [154.36 h]; Foreman [77.18 h]; Operator [154.36 h]; Surveyor [77.18 h]; Surveyor Helper [77.18 h]; Grader [79.2 h]; Loader [79.2 h]; Water Tanker [79.2 h]; Dump Truck [79.2 h]; Plate Compactor [79.2 h]; Roller Compactor [79.2 h] |
| Interlock | **Interlock** | 2026-09-26 → 2026-10-14 (+18d) | 2026-09-28 → 2026-10-17 (+19d) |  |  |  |  |  |
| B1.2.32 14 13.13.1 | 60mm thick - Interlocking Block Pavers | 2026-09-26 → 2026-10-14 (+18d) | 2026-09-28 → 2026-10-17 (+19d) |  |  | 22.76d → 22d |  |  |
| Curbstone | **Curbstone** |  | 2026-10-01 → 2026-10-20 (+19d) |  |  |  |  |  |
| Pre Install | **Pre-Installation** |  | 2026-09-24 → 2026-10-14 (+20d) |  |  |  |  |  |
| 32 16 131 | Excavation (25.00% Completed) |  | 2026-09-24 → 2026-09-15 A (-9d) | 2d → 3.8d | 25% → 100% | 45d → none | B2.31 23 00.41 FF → B1.2.32 11 23.01.1 FF | was named Excavation; resources Curb Stone, Type K1 [759.98]; Edge Curb, Type K4 [557.68]; Heel Curb, Type K5 [364.82]; Labor [62.37 h]; Foreman [31.18 h]; Operator [62.37 h]; Surveyor [31.18 h]; Surveyor Helper [31.18 h]; JCB [32 h]; Water Tanker [32 h]; Dump Truck [32 h]; Plate Compactor [32 h] → Curb Stone, Type K1 [190]; Edge Curb, Type K4 [139.42]; Heel Curb, Type K5 [91.21]; Labor [15.59 h]; Foreman [7.8 h]; Operator [15.59 h]; Surveyor [7.8 h]; Surveyor Helper [7.8 h]; JCB [8 h]; Water Tanker [8 h]; Dump Truck [8 h]; Plate Compactor [8 h] |
| 32 16 133 | Haunching (25.00% Completed) |  | 2026-09-24 → 2026-09-15 A (-9d) | 3d → 2.8d | 25% → 100% | 45d → none |  | was named Haunching; resources Curb Stone, Type K1 [759.98]; Edge Curb, Type K4 [557.68]; Heel Curb, Type K5 [364.82]; Labor [124.74 h]; Carpenter [62.37 h]; Mason [62.37 h]; Surveyor [62.37 h]; Surveyor Helper [62.37 h] → Curb Stone, Type K1 [190]; Edge Curb, Type K4 [139.42]; Heel Curb, Type K5 [91.21]; Labor [31.18 h]; Carpenter [15.59 h]; Mason [15.59 h]; Surveyor [15.59 h]; Surveyor Helper [15.59 h] |
| 32 16 132 | PCC (25.00% Completed) |  | 2026-09-24 → 2026-09-15 A (-9d) | 5.55d → 1.8d | 25% → 100% | 45d → none |  | was named PCC; resources Curb Stone, Type K1 [759.98]; Edge Curb, Type K4 [557.68]; Heel Curb, Type K5 [364.82]; Labor [124.74 h]; Mason [62.37 h]; Surveyor [62.37 h]; Surveyor Helper [62.37 h] → Curb Stone, Type K1 [190]; Edge Curb, Type K4 [139.42]; Heel Curb, Type K5 [91.21]; Labor [31.18 h]; Mason [15.59 h]; Surveyor [15.59 h]; Surveyor Helper [15.59 h] |
| Installation | **Installation** |  | 2026-10-01 → 2026-10-20 (+19d) |  |  |  |  |  |
| B1.2.32 16.13.01.1 | Curb Stone, Type K1 (10.00% Completed) |  | 2026-09-28 → 2026-09-15 A (-13d) | 3.6d → 1.8d | 10% → 100% | 42.76d → none | B1.2.32 14 13.13.1 FF, 32 16 133 SS → 32 16 133 SS | was named Curb Stone, Type K1; resources Curb Stone, Type K1 [2279.94]; Labor [140.33 h]; Foreman [70.17 h]; Mason [70.17 h]; Operator [140.33 h]; Surveyor [70.17 h]; Surveyor Helper [70.17 h]; JCB [72 h] → Curb Stone, Type K1 [227.99]; Labor [14.03 h]; Foreman [7.02 h]; Mason [7.02 h]; Operator [14.03 h]; Surveyor [7.02 h]; Surveyor Helper [7.02 h]; JCB [7.2 h] |
| B1.2.32 16.13.03.1 | Edge Curb, Type K4 | 2026-09-28 → 2026-10-17 (+19d) | 2026-09-30 → 2026-10-19 (+19d) |  |  | 42.76d → 45d | B1.2.32 14 13.13.1, 32 16 133, B1.2.32 16.13.01.1 → B1.2.32 14 13.13.1, 32 16 133_R, B1.2.32 16.13.01.1_R |  |
| B1.2.32 16.13.041 | Heel Curb, Type K5 | 2026-09-30 → 2026-10-19 (+19d) | 2026-10-01 → 2026-10-20 (+19d) |  |  | 42.76d → 45d | B1.2.32 14 13.13.1, 32 16 133, B1.2.32 16.13.03.1 → B1.2.32 14 13.13.1, 32 16 133_R, B1.2.32 16.13.03.1 |  |
| Finishing | **Finishing** | 2026-09-30 → 2026-10-19 (+19d) | 2026-10-01 → 2026-10-20 (+19d) |  |  |  |  |  |
| 32 16 134 | Finishing, Fareface | 2026-09-30 → 2026-10-19 (+19d) | 2026-10-01 → 2026-10-20 (+19d) |  |  | 42.76d → 45d | B1.2.32 16.13.01.1 SS, B1.2.32 16.13.03.1 SS, B1.2.32 16.13.041 SS → B1.2.32 16.13.01.1_R SS, B1.2.32 16.13.03.1 SS, B1.2.32 16.13.041 SS |  |
| Asphalt Layers | **Asphalt Layers** |  | 2026-09-29 → 2026-10-15 (+16d) |  |  |  |  |  |
| B1.2.32 11 26.01.1 | Bituminous Base Course including Prime Coat (MC1) and tack coat (RC2) (92.00% Completed) |  | 2026-09-22 → 2026-09-15 A (-7d) | 106.03d → 100.03d | 92% → 100% | 46d → none |  | was named Bituminous Base Course including Prime Coat (MC1) and tack coat (RC2); resources Bituminous base course(Grading I - Class A) [9030.96]; Labor [93.55 h]; Foreman [46.78 h]; Operator [93.55 h]; Surveyor [46.78 h]; Surveyor Helper [46.78 h]; Dump Truck [48 h]; Roller Compactor [48 h]; MC1/RC2 Sprayer [48 h] → Bituminous base course(Grading I - Class A) [8308.48]; Labor [86.07 h]; Foreman [43.03 h]; Operator [86.07 h]; Surveyor [43.03 h]; Surveyor Helper [43.03 h]; Dump Truck [44.16 h]; Roller Compactor [44.16 h]; MC1/RC2 Sprayer [44.16 h] |
| B1.2.32 12 16.01.1 | Bituminous concrete Wearing Course, including tack coat (RC2) | 2026-09-24 → 2026-10-11 (+17d) | 2026-09-29 → 2026-10-15 (+16d) |  |  | 46d → 50.32d | B1.2.32 11 26.01.1 → B1.2.32 11 26.01.1_R |  |
| Pavement Marking | **Pavement Marking** | 2026-10-03 → 2026-10-19 (+16d) | 2026-10-05 → 2026-10-21 (+16d) |  |  |  |  |  |
| B1.2.32 17 23.01.1 | Retroreflective Thermoplastic White Traffic lines | 2026-10-03 → 2026-10-19 (+16d) | 2026-10-05 → 2026-10-21 (+16d) |  |  | 55d → 67.32d |  |  |
| B1.2.32 17 23.02.1 | Retroreflective Thermoplastic Yellow, Traffic lines | 2026-10-03 → 2026-10-19 (+16d) | 2026-10-04 → 2026-10-20 (+16d) |  |  | 55d → 67.32d |  |  |
| Traffic Signs | **Traffic Signs** | 2026-09-26 → 2026-10-14 (+18d) | 2026-10-08 → 2026-10-27 (+19d) |  |  |  |  |  |
| Pre Install | **Pre-Installation** | 2026-09-26 → 2026-10-14 (+18d) | 2026-10-01 → 2026-10-20 (+19d) |  |  |  |  |  |
| 10 14 53.1 | Excavation | 2026-09-26 → 2026-10-14 (+18d) | 2026-09-28 → 2026-10-17 (+19d) |  |  | 22.76d → 22d |  |  |
| 10 14 53.01 | Foundation | 2026-09-28 → 2026-10-17 (+19d) | 2026-10-01 → 2026-10-20 (+19d) |  |  | 27.76d → 30d |  |  |
| Installation | **Installation** | 2026-10-01 → 2026-10-20 (+19d) | 2026-10-08 → 2026-10-27 (+19d) |  |  |  |  |  |
| B1.2.10 14 53.011 | 1 Sheet Alumenium, Single post | 2026-10-01 → 2026-10-20 (+19d) | 2026-10-06 → 2026-10-25 (+19d) |  |  | 27.76d → 30d |  |  |

| ID | Task | Start | Finish | Duration | Complete | Total float | Predecessors | Other |
| --- | --- | --- | --- | --- | --- | --- | --- | --- |
| B1.2.10 14 14.01.1 | Ground mounted, 1 Sheet Alumenium, Single post | 2026-10-06 → 2026-10-25 (+19d) | 2026-10-08 → 2026-10-27 (+19d) |  |  | 27.76d → 30d |  |  |
| B1.2.10 14 53.021 | 2 Sheet Alumenium, Single post | 2026-10-06 → 2026-10-25 (+19d) | 2026-10-08 → 2026-10-27 (+19d) |  |  | 27.76d → 30d |  |  |
| Road Misc. | **Miscellaneous** | 2026-09-30 → 2026-10-17 (+17d) | 2026-10-01 → 2026-10-18 (+17d) |  |  |  |  |  |
| B1.2.32 12 19.13.01 | Speed Tables | 2026-09-30 → 2026-10-17 (+17d) | 2026-10-01 → 2026-10-18 (+17d) |  |  | 55d → 67.32d |  |  |
| Landscape | **Landscape** |  | 2026-11-12 → 2026-12-01 (+19d) |  |  |  |  |  |
| Geotextile | **Geotextile** | 2026-10-21 → 2026-11-09 (+19d) | 2026-11-04 → 2026-11-23 (+19d) |  |  |  |  |  |
| B7.31 32 19.23.01 | Geotextile to protect trees planting soil | 2026-10-21 → 2026-11-09 (+19d) | 2026-10-28 → 2026-11-16 (+19d) |  |  | 22.76d → 22d |  |  |
| B7.31 32 19.23.02 | Geotextile below gravel bed | 2026-10-28 → 2026-11-16 (+19d) | 2026-11-04 → 2026-11-23 (+19d) |  |  | 22.76d → 22d |  |  |
| Steel fence (MODON) | **Steel fence (MODON)** |  | 2026-09-30 → 2026-10-24 (+24d) |  |  |  |  |  |
| B7.32 31 26.021 | Earthwork (70.00% Completed) |  | 2026-09-28 → 2026-09-15 A (-13d) | 105d → 103d | 70% → 100% | 22.76d → none | 10 14 53.1 FF → B1.2.32 11 23.01.1 FF | was named Earthwork; resources Labor [46.78 h]; Foreman [23.39 h]; Operator [46.78 h]; Surveyor [23.39 h]; Surveyor Helper [23.39 h]; Excavator (With Bucket) [24 h]; Water Tanker [24 h]; Dump Truck [24 h]; Plate Compactor [24 h]; Steel fence (MODON) [93.38] → Labor [32.74 h]; Foreman [16.37 h]; Operator [32.74 h]; Surveyor [16.37 h]; Surveyor Helper [16.37 h]; Excavator (With Bucket) [16.8 h]; Water Tanker [16.8 h]; Dump Truck [16.8 h]; Plate Compactor [16.8 h]; Steel fence (MODON) [65.36] |
| B7.32 31 26.022 | Foundation (70.00% Completed) |  | 2026-09-21 → 2026-09-15 A (-6d) | 102.2d → 101d | 70% → 100% | 40.8d → none |  | was named Foundation; resources Labor [62.37 h]; Laboratory Officer [31.18 h]; Carpenter [31.18 h]; Steelfixer [31.18 h]; Mason [31.18 h]; Surveyor [31.18 h]; Surveyor Helper [31.18 h]; Steel fence (MODON) [93.37] → Labor [43.66 h]; Laboratory Officer [21.83 h]; Carpenter [21.83 h]; Steelfixer [21.83 h]; Mason [21.83 h]; Surveyor [21.83 h]; Surveyor Helper [21.83 h]; Steel fence (MODON) [65.36] |
| B7.32 31 26.023 | Fence Installation | 2026-09-21 → 2026-10-15 (+24d) | 2026-09-30 → 2026-10-24 (+24d) |  |  | 40.8d → 35.8d | B7.32 31 26.022 → B7.32 31 26.022_R |  |
| Gates | **Gates** | 2026-09-28 → 2026-10-17 (+19d) | 2026-10-21 → 2026-11-09 (+19d) |  |  |  |  |  |
| Gates (1.6x 2.7)m | **Size (1.6x 2.7)m** | 2026-09-28 → 2026-10-17 (+19d) | 2026-10-15 → 2026-11-03 (+19d) |  |  |  |  |  |
| B7.32 31 26.03.021 | Earthwork | 2026-09-28 → 2026-10-17 (+19d) | 2026-10-04 → 2026-10-22 (+18d) |  |  | 22.76d → 22d | B7.32 31 26.021 → B7.32 31 26.021_R |  |
| B7.32 31 26.03.022 | Foundation | 2026-10-04 → 2026-10-22 (+18d) | 2026-10-10 → 2026-10-28 (+18d) |  |  | 27.76d → 27d |  |  |
| B7.32 31 26.03.023 | Gate Installation | 2026-10-10 → 2026-10-28 (+18d) | 2026-10-15 → 2026-11-03 (+19d) |  |  | 27.76d → 27d |  |  |
| Gates (4.5x 2.7)m | **Size (4.5x 2.7)m** | 2026-10-04 → 2026-10-22 (+18d) | 2026-10-21 → 2026-11-09 (+19d) |  |  |  |  |  |
| B7.32 31 26.03.041 | Earthwork | 2026-10-04 → 2026-10-22 (+18d) | 2026-10-10 → 2026-10-28 (+18d) |  |  | 22.76d → 22d |  |  |
| B7.32 31 26.03.042 | Foundation | 2026-10-10 → 2026-10-28 (+18d) | 2026-10-15 → 2026-11-03 (+19d) |  |  | 22.76d → 22d |  |  |
| B7.32 31 26.03.043 | Gate Installation | 2026-10-15 → 2026-11-03 (+19d) | 2026-10-21 → 2026-11-09 (+19d) |  |  | 22.76d → 22d |  |  |
| Trees | **Trees** | 2026-11-07 → 2026-11-25 (+18d) | 2026-11-12 → 2026-12-01 (+19d) |  |  |  |  |  |
| B7.32 93 43.02 | Cassia Glauca | 2026-11-07 → 2026-11-25 (+18d) | 2026-11-12 → 2026-12-01 (+19d) |  |  | 20.76d → 20d |  |  |
| Service Road | **Service Road** |  | 2026-11-30 → 2026-12-01 (+1d) |  |  |  |  |  |
| Wet Networks | **Wet Networks** |  | 2026-11-30 → 2026-12-01 (+1d) |  |  |  |  |  |
| Storm | **Storm Network** |  | 2026-11-30 → 2026-12-01 (+1d) |  |  |  |  |  |
| GRP | **GRP** | 2026-10-01 → 2026-10-19 (+18d) | 2026-11-09 → 2026-11-24 (+15d) |  |  |  |  |  |
| ?40011 | **?1300** | 2026-10-01 → 2026-10-19 (+18d) | 2026-10-22 → 2026-11-10 (+19d) |  |  |  |  |  |
| 3 | **Depth From 3.5m to 4.5m** | 2026-10-01 → 2026-10-19 (+18d) | 2026-10-22 → 2026-11-10 (+19d) |  |  |  |  |  |
| B6.33 42 11.26.1 | Excavation | 2026-10-01 → 2026-10-19 (+18d) | 2026-10-04 → 2026-10-22 (+18d) |  |  | 13d → 21.72d | B6.33 05 13.081, B1.1.31 23 23.22 → B6.33 05 13.081, B1.1.31 23 23.22_R, B1.1.31 23 16.01_R |  |
| B6.33 42 11.26.2 | Sand Bedding | 2026-10-05 → 2026-10-22 (+17d) | 2026-10-07 → 2026-10-26 (+19d) |  |  | 73d → 27.72d |  |  |
| B6.33 42 11.26.3 | Pipe Laying | 2026-10-08 → 2026-10-26 (+18d) | 2026-10-11 → 2026-10-29 (+18d) |  |  | 73d → 27.72d |  |  |
| B6.33 42 11.26.4 | Embedment & Test | 2026-10-12 → 2026-10-29 (+17d) | 2026-10-15 → 2026-11-03 (+19d) |  |  | 73d → 27.72d |  |  |
| B6.33 42 11.26.5 | Backfilling & Warrning Tape | 2026-10-17 → 2026-11-03 (+17d) | 2026-10-22 → 2026-11-10 (+19d) |  |  | 73d → 27.72d | B6.33 42 11.26.4, B6.33 42 11.055, B6.33 42 11.0405 → B6.33 42 11.26.4, B6.33 42 11.055, B6.33 42 11.0405, B6.33 05 13.084_R |  |
| ?40012 | **?1400** | 2026-10-05 → 2026-10-22 (+17d) | 2026-10-31 → 2026-11-18 (+18d) |  |  |  |  |  |
| 1 | **Depth From 3.5m to 4.5m** | 2026-10-05 → 2026-10-22 (+17d) | 2026-10-27 → 2026-11-15 (+19d) |  |  |  |  |  |
| B6.33 42 11.30.1 | Excavation | 2026-10-05 → 2026-10-22 (+17d) | 2026-10-07 → 2026-10-26 (+19d) |  |  | 13d → 21.72d |  |  |
| B6.33 42 11.30.2 | Sand Bedding | 2026-10-08 → 2026-10-26 (+18d) | 2026-10-11 → 2026-10-29 (+18d) |  |  | 75d → 29.72d |  |  |
| B6.33 42 11.30.3 | Pipe Laying | 2026-10-12 → 2026-10-29 (+17d) | 2026-10-14 → 2026-11-02 (+19d) |  |  | 75d → 29.72d |  |  |
| B6.33 42 11.30.4 | Embedment & Test | 2026-10-15 → 2026-11-02 (+18d) | 2026-10-20 → 2026-11-08 (+19d) |  |  | 75d → 29.72d |  |  |
| B6.33 42 11.30.5 | Backfilling & Warrning Tape | 2026-10-21 → 2026-11-08 (+18d) | 2026-10-27 → 2026-11-15 (+19d) |  |  | 75d → 29.72d |  |  |
| 4 | **Depth From 2.5m to 3.5m** | 2026-10-08 → 2026-10-26 (+18d) | 2026-10-31 → 2026-11-18 (+18d) |  |  |  |  |  |
| B6.33 42 11.29.1 | Excavation | 2026-10-08 → 2026-10-26 (+18d) | 2026-10-11 → 2026-10-29 (+18d) |  |  | 13d → 21.72d |  |  |
| B6.33 42 11.29.2 | Sand Bedding | 2026-10-12 → 2026-10-29 (+17d) | 2026-10-14 → 2026-11-02 (+19d) |  |  | 72d → 26.72d |  |  |
| B6.33 42 11.29.3 | Pipe Laying | 2026-10-15 → 2026-11-02 (+18d) | 2026-10-18 → 2026-11-05 (+18d) |  |  | 72d → 26.72d |  |  |
| B6.33 42 11.29.4 | Embedment & Test | 2026-10-19 → 2026-11-05 (+17d) | 2026-10-24 → 2026-11-11 (+18d) |  |  | 72d → 26.72d |  |  |
| B6.33 42 11.29.5 | Backfilling & Warrning Tape | 2026-10-25 → 2026-11-11 (+17d) | 2026-10-31 → 2026-11-18 (+18d) |  |  | 72d → 26.72d |  |  |
| ?400121 | **?1500** | 2026-10-12 → 2026-10-29 (+17d) | 2026-11-09 → 2026-11-24 (+15d) |  |  |  |  |  |
| 4 | **Depth From 2.5m to 3.5m** | 2026-10-12 → 2026-10-29 (+17d) | 2026-11-02 → 2026-11-21 (+19d) |  |  |  |  |  |
| B6.33 42 11.33.1 | Excavation | 2026-10-12 → 2026-10-29 (+17d) | 2026-10-14 → 2026-11-02 (+19d) |  |  | 13d → 21.72d |  |  |
| B6.33 42 11.33.2 | Sand Bedding | 2026-10-15 → 2026-11-02 (+18d) | 2026-10-18 → 2026-11-05 (+18d) |  |  | 70d → 24.72d |  |  |
| B6.33 42 11.33.3 | Pipe Laying | 2026-10-19 → 2026-11-05 (+17d) | 2026-10-21 → 2026-11-09 (+19d) |  |  | 70d → 24.72d |  |  |
| B6.33 42 11.33.4 | Embedment & Test | 2026-10-22 → 2026-11-09 (+18d) | 2026-10-26 → 2026-11-14 (+19d) |  |  | 70d → 24.72d |  |  |
| B6.33 42 11.33.5 | Backfilling & Warrning Tape | 2026-10-27 → 2026-11-14 (+18d) | 2026-11-02 → 2026-11-21 (+19d) |  |  | 70d → 24.72d |  |  |
| 1 | **Depth From 3.5m to 4.5m** | 2026-10-15 → 2026-11-02 (+18d) | 2026-11-09 → 2026-11-24 (+15d) |  |  |  |  |  |
| B6.33 42 11.34.1 | Excavation | 2026-10-15 → 2026-11-02 (+18d) | 2026-10-18 → 2026-11-05 (+18d) |  |  | 13d → 21.72d |  |  |
| B6.33 42 11.34.2 | Sand Bedding | 2026-10-19 → 2026-11-05 (+17d) | 2026-10-21 → 2026-11-09 (+19d) |  |  | 72d → 26.72d |  |  |
| B6.33 42 11.34.3 | Pipe Laying | 2026-10-22 → 2026-11-09 (+18d) | 2026-10-25 → 2026-11-12 (+18d) |  |  | 72d → 26.72d |  |  |
| B6.33 42 11.34.4 | Embedment & Test | 2026-10-26 → 2026-11-12 (+17d) | 2026-10-31 → 2026-11-18 (+18d) |  |  | 72d → 26.72d |  |  |
| B6.33 42 11.34.5 | Backfilling & Warrning Tape | 2026-11-03 → 2026-11-21 (+18d) | 2026-11-09 → 2026-11-24 (+15d) | 6d → 3d |  | 70d → 24.72d | B6.33 42 11.34.4, B6.33 42 11.33.5, B6.33 42 11.30.5, B6.33 42 11.29.5 → B6.33 42 11.34.4, B6.33 42 11.33.5, B6.33 42 11.30.5, B6.33 42 11.29.5, B6.33 42 11.35.11_R |  |
| Strom Manholes | **Manholes** | 2026-10-19 → 2026-11-05 (+17d) | 2026-11-21 → 2026-12-01 (+10d) |  |  |  |  |  |
| 3 | **?2000** | 2026-10-19 → 2026-11-05 (+17d) | 2026-11-21 → 2026-12-01 (+10d) |  |  |  |  |  |
| 4 | **Depth From 2.5m to 3.5m** | 2026-10-19 → 2026-11-05 (+17d) | 2026-11-10 → 2026-11-26 (+16d) |  |  |  |  |  |
| B6.33 05 13.07.1 | Excavation & Compaction | 2026-10-19 → 2026-11-05 (+17d) | 2026-10-21 → 2026-11-09 (+19d) |  |  | 13d → 21.72d |  |  |
| B6.33 05 13.07.2 | Blinding Conc, & RC Base | 2026-10-22 → 2026-11-09 (+18d) | 2026-10-26 → 2026-11-14 (+19d) |  |  | 25d → 22.72d |  |  |
| B6.33 05 13.07.3 | Manhole Installation | 2026-10-27 → 2026-11-14 (+18d) | 2026-10-29 → 2026-11-17 (+19d) |  |  | 25d → 22.72d |  |  |
| B6.33 05 13.07.4 | Test, Internal Finishing, Benching & Cover | 2026-10-31 → 2026-11-17 (+17d) | 2026-11-04 → 2026-11-23 (+19d) |  |  | 25d → 22.72d |  |  |
| B6.33 05 13.07.5 | Backfilling | 2026-11-05 → 2026-11-23 (+18d) | 2026-11-10 → 2026-11-26 (+16d) | 5d → 3d |  | 25d → 22.72d |  |  |
| 1 | **Depth From 3.5m to 4.5m** | 2026-10-22 → 2026-11-09 (+18d) | 2026-11-15 → 2026-11-28 (+13d) |  |  |  |  |  |
| B6.33 05 13.08.1 | Excavation & Compaction | 2026-10-22 → 2026-11-09 (+18d) | 2026-10-25 → 2026-11-12 (+18d) |  |  | 13d → 21.72d |  |  |

| ID | Task | Start | Finish | Duration | Complete | Total float | Predecessors | Other |
| --- | --- | --- | --- | --- | --- | --- | --- | --- |
| B6.33 05 13.08.2 | Blinding Conc, & RC Base | 2026-10-26 → 2026-11-12 (+17d) | 2026-10-29 → 2026-11-17 (+19d) |  |  | 21d → 21.72d |  |  |
| B6.33 05 13.08.3 | Manhole Installation | 2026-10-31 → 2026-11-17 (+17d) | 2026-11-02 → 2026-11-21 (+19d) |  |  | 21d → 21.72d |  |  |
| B6.33 05 13.08.4 | Test, Internal Finishing, Benching & Cover | 2026-11-03 → 2026-11-21 (+18d) | 2026-11-09 → 2026-11-24 (+15d) | 6d → 3d |  | 21d → 21.72d |  |  |
| B6.33 05 13.08.5 | Backfilling | 2026-11-10 → 2026-11-24 (+14d) | 2026-11-15 → 2026-11-28 (+13d) | 5d → 3d |  | 21d → 21.72d | B6.33 05 13.08.4, B6.33 05 13.05.06, B6.33 05 13.07.06 → B6.33 05 13.08.4, B6.33 05 13.05.06_R, B6.33 05 13.07.06_R |  |
| 3 | **Depth From 4.5m to 5.5m** | 2026-10-26 → 2026-11-12 (+17d) | 2026-11-21 → 2026-12-01 (+10d) |  |  |  |  |  |
| B6.33 05 13.09.1 | Excavation & Compaction | 2026-10-26 → 2026-11-12 (+17d) | 2026-10-28 → 2026-11-16 (+19d) |  |  | 13d → 22.72d |  |  |
| B6.33 05 13.09.2 | Blinding Conc, & RC Base | 2026-10-29 → 2026-11-16 (+18d) | 2026-11-02 → 2026-11-21 (+19d) |  |  | 22d → 22.72d |  |  |
| B6.33 05 13.09.3 | Manhole Installation | 2026-11-03 → 2026-11-21 (+18d) | 2026-11-07 → 2026-11-23 (+16d) | 4d → 2d |  | 22d → 22.72d |  |  |
| B6.33 05 13.09.4 | Test, Internal Finishing, Benching & Cover | 2026-11-08 → 2026-11-23 (+15d) | 2026-11-14 → 2026-11-26 (+12d) | 6d → 3d |  | 22d → 22.72d |  |  |
| B6.33 05 13.09.5 | Backfilling | 2026-11-16 → 2026-11-28 (+12d) | 2026-11-21 → 2026-12-01 (+10d) | 5d → 3d |  | 21d → 21.72d | B6.33 05 13.09.4, B6.33 05 13.08.5, B6.33 05 13.07.5 → B6.33 05 13.09.4, B6.33 05 13.08.5, B6.33 05 13.07.5, B6.33 42 11.34.5 |  |
| Catch Basins | **Catch Basins** |  | 2026-11-30 → 2026-11-25 (-5d) |  |  |  |  |  |
| Sing | **Single** |  | 2026-11-30 → 2026-11-17 (-13d) |  |  |  |  |  |
| B6.33 05 63.07.1 | Excavation, Compaction & Vapour Barrier (4.76% Completed) |  | 2026-10-28 → 2026-09-15 A (-43d) | 98d → 96d | 5% → 100% | 13d → none | B6.33 05 13.09.1 FF → B1.2.32 11 23.01.1 FF | was named Excavation, Compaction & Vapour Barrier; resources Labor [31.18 h]; Foreman [15.59 h]; Operator [31.18 h]; Surveyor [15.59 h]; Surveyor Helper [15.59 h]; Excavator (With Bucket) [16 h]; Water Tanker [16 h]; Dump Truck [16 h]; Roller Compactor [16 h]; Single Catch basin [2.98] → Labor [1.48 h]; Foreman [0.74 h]; Operator [1.48 h]; Surveyor [0.74 h]; Surveyor Helper [0.74 h]; Excavator (With Bucket) [0.76 h]; Water Tanker [0.76 h]; Dump Truck [0.76 h]; Roller Compactor [0.76 h]; Single Catch basin [0.14] |
| B6.33 05 63.07.2 | Blinding Conc. (4.76% Completed) |  | 2026-09-19 → 2026-09-15 A (-4d) | 97d → 95d | 5% → 100% | 113d → none |  | was named Blinding Conc.; resources Labor [31.18 h]; Foreman [15.59 h]; Laboratory Officer [15.59 h]; Carpenter [15.59 h]; Steelfixer [15.59 h]; Mason [15.59 h]; Single Catch basin [1.99] → Labor [1.48 h]; Foreman [0.74 h]; Laboratory Officer [0.74 h]; Carpenter [0.74 h]; Steelfixer [0.74 h]; Mason [0.74 h]; Single Catch basin [0.09] |
| B6.33 05 63.07.3 | Catch Basin Installation (4.76% Completed) |  | 2026-09-20 → 2026-09-15 A (-5d) | 93d → 90d | 5% → 100% | 112d → none |  | was named Catch Basin Installation; resources Labor [46.78 h]; Foreman [23.39 h]; Carpenter [23.39 h]; Steelfixer [23.39 h]; Mason [23.39 h]; Operator [46.78 h]; Surveyor [23.39 h]; Surveyor Helper [23.39 h]; Boom Truck [24 h]; Single Catch basin [8.93] → Labor [2.23 h]; Foreman [1.11 h]; Carpenter [1.11 h]; Steelfixer [1.11 h]; Mason [1.11 h]; Operator [2.23 h]; Surveyor [1.11 h]; Surveyor Helper [1.11 h]; Boom Truck [1.14 h]; Single Catch basin [0.43] |
| B6.33 05 63.07.4 | Backfilling, DI Frame & Grate Cover Fixing | 2026-11-25 → 2026-10-11 (-45d) | 2026-11-30 → 2026-10-13 (-48d) | 5d → 3d |  | 13d → 62.92d | B6.33 42 11.35.12, B6.33 05 40.01.760, B6.33 05 63.08.4 → B6.33 42 11.35.12, B6.33 05 40.01.760_R, B6.33 05 63.08.4 |  |
| Dou | **Double** | 2026-10-29 → 2026-10-07 (-22d) | 2026-11-24 → 2026-11-25 (+1d) |  |  |  |  |  |
| B6.33 05 63.08.4 | Backfilling, DI Frame & Grate Cover Fixing | 2026-11-19 → 2026-10-07 (-43d) | 2026-11-24 → 2026-10-10 (-45d) | 5d → 3d |  | 13d → 62.92d |  |  |
| B6.33 05 63.08.1 | Excavation, Compaction & Vapour Barrier | 2026-10-29 → 2026-11-16 (+18d) | 2026-11-01 → 2026-11-19 (+18d) |  |  | 13d → 71.12d | B6.33 05 63.07.1, B1.1.31 23 19.02 → B6.33 05 63.07.1_R, B1.1.31 23 19.02 |  |
| B6.33 05 63.08.2 | Blinding Conc. | 2026-11-02 → 2026-11-19 (+17d) | 2026-11-04 → 2026-11-23 (+19d) |  |  | 13d → 71.12d |  |  |
| B6.33 05 63.08.3 | Catch Basin Installation | 2026-11-05 → 2026-11-23 (+18d) | 2026-11-09 → 2026-11-25 (+16d) | 4d → 2d |  | 13d → 71.12d | B6.33 05 63.08.2, DMM2-Proc-Delv-5758 → B6.33 05 63.08.2, DMM2-Proc-Delv-5758_R |  |
| UPVC | **UPVC** |  | 2026-11-18 → 2026-09-30 (-49d) |  |  |  |  |  |
| UPVC300 | **?300 From 0.0 to 1.5m** |  | 2026-09-19 → 2026-09-29 (+10d) |  |  |  |  |  |
| B6.33 42 11.35.11 | Catch Basin Opening Prep. (3.81% Completed) |  | 2026-09-19 → 2026-09-15 A (-4d) | 94d → 92d | 4% → 100% | 113d → none |  | was named Catch Basin Opening Prep.; resources Labor [31.18 h]; Foreman [15.59 h]; Plumber Helper [15.59 h]; Plumber [15.59 h]; less than 1.5 [46.62] → Labor [1.19 h]; Foreman [0.59 h]; Plumber Helper [0.59 h]; Plumber [0.59 h]; less than 1.5 [1.78] |
| B6.33 42 11.35.12 | Fittings & Pipe Installation |  |  |  |  |  | B6.33 42 11.35.11 SS → B6.33 42 11.35.11 SS+1d, B6.33 42 11.35.11 FF+1d |  |
| UPVC3001 | **?400 From 0.0 to 1.5m** | 2026-11-10 → 2026-09-20 (-51d) | 2026-11-18 → 2026-09-30 (-49d) |  |  |  |  |  |
| B6.33 42 11.36.11 | Catch Basin Opening Prep. | 2026-11-10 → 2026-09-20 A (-51d) | 2026-11-12 → 2026-09-27 A (-46d) |  | 0% → 100% | 13d → none |  |  |
| B6.33 42 11.36.12 | Fittings & Pipe Installation | 2026-11-14 → 2026-09-26 A (-49d) | 2026-11-18 → 2026-09-30 A (-49d) | 5d → 2d | 0% → 100% | 13d → none |  |  |
| SDS1 | **Dry Networks** | 2026-09-28 → 2026-10-18 (+20d) | 2026-11-07 → 2026-11-26 (+19d) |  |  |  |  |  |
| SL | **Street Lighting** | 2026-09-28 → 2026-10-18 (+20d) | 2026-11-07 → 2026-11-26 (+19d) |  |  |  |  |  |
| Duct Banks | **Duct Banks** | 2026-10-11 → 2026-10-31 (+20d) | 2026-10-25 → 2026-11-12 (+18d) |  |  |  |  |  |
| 2 Way | **2 Way** | 2026-10-11 → 2026-10-31 (+20d) | 2026-10-15 → 2026-11-04 (+20d) |  |  |  |  |  |
| B2.33 71 00 02 011 | Excavation | 2026-10-11 → 2026-10-31 (+20d) | 2026-10-12 → 2026-11-01 (+20d) |  |  | 75d → 73.32d |  |  |
| B2.33 71 00 02 012 | Shuttering, Steel Fixing Incl. UPVC Pipe & Conc. Cast | 2026-10-13 → 2026-11-02 (+20d) | 2026-10-15 → 2026-11-04 (+20d) |  |  | 80d → 78.32d |  |  |
| B2.33 71 00 02 013 | Backfilling & Warrning Tape | 2026-10-13 → 2026-11-02 (+20d) | 2026-10-15 → 2026-11-04 (+20d) |  |  | 80d → 78.32d |  |  |
| 4 Way | **4 Way** | 2026-10-13 → 2026-11-02 (+20d) | 2026-10-25 → 2026-11-12 (+18d) |  |  |  |  |  |
| B2.33 71 00 02 021 | Excavation | 2026-10-13 → 2026-11-02 (+20d) | 2026-10-14 → 2026-11-03 (+20d) |  |  | 75d → 73.32d |  |  |
| B2.33 71 00 02 022 | Shuttering, Steel Fixing Incl. UPVC Pipe & Conc. Cast | 2026-10-15 → 2026-11-04 (+20d) | 2026-10-18 → 2026-11-07 (+20d) |  |  | 75d → 73.32d |  |  |
| B2.33 71 00 02 023 | Backfilling & Warrning Tape | 2026-10-21 → 2026-11-09 (+19d) | 2026-10-25 → 2026-11-12 (+18d) |  |  | 72.76d → 72d |  |  |
| Drawpits | **Drawpits** | 2026-10-15 → 2026-11-04 (+20d) | 2026-10-21 → 2026-11-10 (+20d) |  |  |  |  |  |
| B2.33 71 00 02 041 | Excavation | 2026-10-15 → 2026-11-04 (+20d) | 2026-10-17 → 2026-11-05 (+19d) |  |  | 80d → 79.32d |  |  |
| B2.33 71 00 02 042 | Drawpits Installation | 2026-10-18 → 2026-11-07 (+20d) | 2026-10-19 → 2026-11-08 (+20d) |  |  | 80d → 79.32d |  |  |
| B2.33 71 00 02 043 | Backfilling & Warrning Tape | 2026-10-20 → 2026-11-09 (+20d) | 2026-10-21 → 2026-11-10 (+20d) |  |  | 80d → 79.32d |  |  |
| Cables | **Cables** | 2026-09-30 → 2026-10-20 (+20d) | 2026-10-28 → 2026-11-16 (+19d) |  |  |  |  |  |
| 4C,10+1C,10mm2 | **4C,10+1C,10mm2** | 2026-09-30 → 2026-10-20 (+20d) | 2026-10-28 → 2026-11-16 (+19d) |  |  |  |  |  |
| B2.33 71 19 242 | Land Adjustment | 2026-09-30 → 2026-10-20 (+20d) | 2026-10-03 → 2026-10-22 (+19d) |  |  | 29d → 30.32d |  |  |
| B2.33 71 49.23.202 | Cable Pulling | 2026-10-04 → 2026-10-24 (+20d) | 2026-10-05 → 2026-10-25 (+20d) |  |  | 29d → 30.32d |  |  |
| B2.33 71 19 252 | Backfilling | 2026-10-25 → 2026-11-12 (+18d) | 2026-10-28 → 2026-11-16 (+19d) |  |  | 72.76d → 72d |  |  |
| SL Poles | **SL Poles** | 2026-09-28 → 2026-10-18 (+20d) | 2026-11-07 → 2026-11-26 (+19d) |  |  |  |  |  |
| Pole (10 M Sngl Arm) | **Pole (10 M Single Arm)** | 2026-09-28 → 2026-10-18 (+20d) | 2026-11-07 → 2026-11-26 (+19d) |  |  |  |  |  |
| B2.33 71 16.25 | Excavation | 2026-09-28 → 2026-10-18 (+20d) | 2026-09-29 → 2026-10-19 (+20d) |  |  | 27d → 28.32d |  |  |
| B2.33 71 16.26 | PC & RC Foundation | 2026-09-30 → 2026-10-20 (+20d) | 2026-10-03 → 2026-10-22 (+19d) |  |  | 27d → 28.32d |  |  |
| B2.33 71 16.27 | Lighting Poles Installation Incl power box, Cables | 2026-10-04 → 2026-10-24 (+20d) | 2026-10-07 → 2026-10-27 (+20d) |  |  | 27d → 28.32d |  |  |
| B2.26.56.19.1 | Lighting Luminares Inst | 2026-10-08 → 2026-10-28 (+20d) | 2026-10-11 → 2026-10-31 (+20d) |  |  | 84d → 82.32d |  |  |
| B2.33 71 16.28 | Backfilling, Grouting & Chamfering | 2026-11-04 → 2026-11-24 (+20d) | 2026-11-07 → 2026-11-26 (+19d) |  |  | 64d → 62.32d |  |  |
| Relocate SLP | **Relocate Lighting Poles** | 2026-09-30 → 2026-10-20 (+20d) | 2026-10-28 → 2026-11-16 (+19d) |  |  |  |  |  |
| B2.1.02 41 00.16 | Excavation (Evacuation Around Poles) | 2026-09-30 → 2026-10-20 (+20d) | 2026-10-01 → 2026-10-21 (+20d) |  |  | 87d → 85.32d |  |  |
| B2.1.02 41 00.17 | Old Poles Grubbing | 2026-10-03 → 2026-10-22 (+19d) | 2026-10-05 → 2026-10-25 (+20d) |  |  | 87d → 85.32d |  |  |
| B2.1.02 41 00.17a | Poles Transferring & Installation Incl. Foundation | 2026-10-06 → 2026-10-26 (+20d) | 2026-10-07 → 2026-10-27 (+20d) |  |  | 87d → 85.32d |  |  |
| B2.1.02 41 00.18 | Backfilling & Warrning Tape | 2026-10-25 → 2026-11-12 (+18d) | 2026-10-28 → 2026-11-16 (+19d) |  |  | 72.76d → 72d |  |  |
| Earthing | **Earthing** | 2026-10-08 → 2026-10-28 (+20d) | 2026-10-15 → 2026-11-04 (+20d) |  |  |  |  |  |
| B2.33 71 19 13 | Land Adjustment | 2026-10-08 → 2026-10-28 (+20d) | 2026-10-10 → 2026-10-29 (+19d) |  |  | 27d → 28.32d |  |  |
| B2.33 71 19 14 | Earth Rods & Conduits | 2026-10-11 → 2026-10-31 (+20d) | 2026-10-12 → 2026-11-01 (+20d) |  |  | 27d → 28.32d |  |  |
| B2.33 71 19 15 | Backfilling | 2026-10-13 → 2026-11-02 (+20d) | 2026-10-15 → 2026-11-04 (+20d) |  |  | 27d → 28.32d |  |  |
| Earth & Road Works | **Earth & Road Works** |  | 2026-10-26 → 2026-11-15 (+20d) |  |  |  |  |  |
| Earth Works | **Earth Works** |  | 2026-10-01 → 2026-10-21 (+20d) |  |  |  |  |  |
| B1.2.31 23 23.01.2 | Embankment Backfiling (12.00% Completed) |  | 2026-10-01 → 2026-09-15 A (-16d) | 214d → 199d | 12% → 100% | 103d → none |  | was named Embankment Backfiling; resources Embankment backfiling [119504]; Labor [233.89 h]; Foreman [116.94 h]; Operator [233.89 h]; Surveyor [116.94 h]; Surveyor Helper [116.94 h]; Loader [120 h]; Water Tanker [120 h]; Dump Truck [120 h]; Plate Compactor [120 h]; Roller Compactor [120 h] → Embankment backfiling [14340.5]; Labor [28.07 h]; Foreman [14.03 h]; Operator [28.07 h]; Surveyor [14.03 h]; Surveyor Helper [14.03 h]; Loader [14.4 h]; Water Tanker [14.4 h]; Dump Truck [14.4 h]; Plate Compactor [14.4 h]; Roller Compactor [14.4 h] |
| Earth Layers | **Earth Layers** |  | 2026-09-19 → 2026-10-10 (+21d) |  |  |  |  |  |
| B1.2.32 11 23.01.2 | Aggregate Base Course (22.00% Completed) |  | 2026-09-19 → 2026-09-15 A (-4d) | 32.24d → 26d | 22% → 100% | 33d → none |  | was named Aggregate Base Course; resources Aggregate base course [12315.7]; Labor [124.74 h]; Foreman [62.37 h]; Operator [124.74 h]; Surveyor [62.37 h]; Surveyor Helper [62.37 h]; Grader [64 h]; Loader [64 h]; Water Tanker [64 h]; Dump Truck [64 h]; Plate Compactor [64 h]; Roller Compactor [64 h] → Aggregate base course [2709.46]; Labor [27.44 h]; Foreman [13.72 h]; Operator [27.44 h]; Surveyor [13.72 h]; Surveyor Helper [13.72 h]; Grader [14.08 h]; Loader [14.08 h]; Water Tanker [14.08 h]; Dump Truck [14.08 h]; Plate Compactor [14.08 h]; Roller Compactor [14.08 h] |
| B1.2.32 11 13.01.2 | Subgrade (50.00% Completed) |  | 2026-09-19 → 2026-09-15 A (-4d) | 20d → 14d | 50% → 100% | 113d → none |  | was named Subgrade; resources Subgrade [18473.6]; Labor [171.52 h]; Foreman [85.76 h]; Operator [171.52 h]; Surveyor [85.76 h]; Surveyor Helper [85.76 h]; Grader [88 h]; Loader [88 h]; Water Tanker [88 h]; Dump Truck [88 h]; Plate Compactor [88 h]; Roller Compactor [88 h] → Subgrade [9236.79]; Labor [85.76 h]; Foreman [42.88 h]; Operator [85.76 h]; Surveyor [42.88 h]; Surveyor Helper [42.88 h]; Grader [44 h]; Loader [44 h]; Water Tanker [44 h]; Dump Truck [44 h]; Plate Compactor [44 h]; Roller Compactor [44 h] |

| ID | Task | Start | Finish | Duration | Complete | Total float | Predecessors | Other |
| --- | --- | --- | --- | --- | --- | --- | --- | --- |
| Interlock | **Interlock** | 2026-10-13 → 2026-11-02 (+20d) | 2026-10-15 → 2026-11-04 (+20d) |  |  |  |  |  |
| B1.2.32 14 13.13.2 | 60mm thick - Interlocking Block Pavers | 2026-10-13 → 2026-11-02 (+20d) | 2026-10-15 → 2026-11-04 (+20d) |  |  | 27d → 28.32d | B1.2.32 11 23.01.2 SS, B2.33 71 19 15 SS → B1.2.32 11 23.01.2_R SS, B2.33 71 19 15 SS |  |
| Curbstone | **Curbstone** | 2026-09-20 → 2026-10-11 (+21d) | 2026-10-24 → 2026-11-12 (+19d) |  |  |  |  |  |
| Pre Install | **Pre-Installation** | 2026-09-20 → 2026-10-11 (+21d) | 2026-09-29 → 2026-10-19 (+20d) |  |  |  |  |  |
| 32 16 13.0021 | Excavation | 2026-09-20 → 2026-10-11 (+21d) | 2026-09-21 → 2026-10-12 (+21d) |  |  | 33d → 34.32d | B1.2.32 11 23.01.2 → B1.2.32 11 23.01.2_R |  |
| 32 16 13.0023 | Haunching | 2026-09-22 → 2026-10-13 (+21d) | 2026-09-26 → 2026-10-15 (+19d) |  |  | 39d → 40.32d |  |  |
| 32 16 13.0024 | PCC | 2026-09-27 → 2026-10-17 (+20d) | 2026-09-29 → 2026-10-19 (+20d) |  |  | 39d → 40.32d |  |  |
| Installation | **Installation** | 2026-10-14 → 2026-11-02 (+19d) | 2026-10-18 → 2026-11-07 (+20d) |  |  |  |  |  |
| B1.2.32 16.13.01.2 | Curb Stone, Type K1 | 2026-10-14 → 2026-11-02 (+19d) | 2026-10-15 → 2026-11-03 (+19d) |  |  | 27d → 29.32d |  |  |
| B1.2.32 16.13.03.2 | Edge Curb, Type K4 | 2026-10-14 → 2026-11-02 (+19d) | 2026-10-15 → 2026-11-03 (+19d) |  |  | 27d → 29.32d |  |  |
| B1.2.32 16.13.042 | Heel Curb, Type K5 | 2026-10-17 → 2026-11-05 (+19d) | 2026-10-18 → 2026-11-07 (+20d) |  |  | 27d → 28.32d |  |  |
| Finishing | **Finishing** | 2026-10-22 → 2026-11-11 (+20d) | 2026-10-24 → 2026-11-12 (+19d) |  |  |  |  |  |
| 32 16 13.0022 | Finishing, Fareface | 2026-10-22 → 2026-11-11 (+20d) | 2026-10-24 → 2026-11-12 (+19d) |  |  | 42d → 40.32d |  |  |
| Asphalt Layers | **Asphalt Layers** |  | 2026-10-21 → 2026-11-10 (+20d) |  |  |  |  |  |
| B1.2.32 11 26.01.2 | Bituminous Base Course including Prime Coat (MC1) and tack coat (RC2) (0.00% Completed) |  | 2026-09-20 → 2026-09-15 A (-5d) | 27d → 18d | 0% → 100% | 52d → none |  | was named Bituminous Base Course including Prime Coat (MC1) and tack coat (RC2); resources Bituminous base course(Grading I - Class A) [8438.37]; Labor [77.96 h]; Foreman [38.98 h]; Operator [77.96 h]; Surveyor [38.98 h]; Surveyor Helper [38.98 h]; Dump Truck [40 h]; Roller Compactor [40 h]; MC1/RC2 Sprayer [40 h] → Bituminous base course(Grading I - Class A); Labor; Foreman; Operator; Surveyor; Surveyor Helper; Dump Truck; Roller Compactor; MC1/RC2 Sprayer |
| B1.2.32 12 16.01.2 | Bituminous concrete Wearing Course, including tack coat (RC2) | 2026-10-17 → 2026-11-05 (+19d) | 2026-10-21 → 2026-11-10 (+20d) |  |  | 27d → 28.32d | B1.2.32 11 26.01.2 SS, B1.2.32 16.13.042 SS → B1.2.32 11 26.01.2_R SS, B1.2.32 16.13.042 SS |  |
| Pavement Marking | **Pavement Marking** | 2026-10-25 → 2026-11-14 (+20d) | 2026-10-26 → 2026-11-15 (+20d) |  |  |  |  |  |
| B1.2.32 17 23.01.2 | Retroreflective Thermoplastic White Traffic lines | 2026-10-25 → 2026-11-14 (+20d) | 2026-10-26 → 2026-11-15 (+20d) |  |  | 42d → 40.32d |  |  |
| B1.2.32 17 23.02.2 | Retroreflective Thermoplastic Yellow, Traffic lines | 2026-10-25 → 2026-11-14 (+20d) | 2026-10-26 → 2026-11-15 (+20d) |  |  | 42d → 40.32d |  |  |
| Traffic Signs | **Traffic Signs** | 2026-09-22 → 2026-10-13 (+21d) | 2026-10-01 → 2026-10-21 (+20d) |  |  |  |  |  |
| Pre Install | **Pre-Installation** | 2026-09-22 → 2026-10-13 (+21d) | 2026-09-27 → 2026-10-17 (+20d) |  |  |  |  |  |
| B2.31 23 00.41 | Excavation | 2026-09-22 → 2026-10-13 (+21d) | 2026-09-24 → 2026-10-14 (+20d) |  |  | 33d → 34.32d |  |  |
| 10 14 53.02 | Foundation | 2026-09-26 → 2026-10-15 (+19d) | 2026-09-27 → 2026-10-17 (+20d) |  |  | 33d → 34.32d |  |  |
| Installation | **Installation** | 2026-09-28 → 2026-10-18 (+20d) | 2026-10-01 → 2026-10-21 (+20d) |  |  |  |  |  |
| B1.2.10 14 53.317 | 1 Sheet Alumenium, Single post | 2026-09-28 → 2026-10-18 (+20d) | 2026-09-29 → 2026-10-19 (+20d) |  |  | 33d → 34.32d |  |  |
| B1.2.10 14 14.01.18 | Ground mounted, 1 Sheet Alumenium, Single post | 2026-09-30 → 2026-10-20 (+20d) | 2026-10-01 → 2026-10-21 (+20d) |  |  | 33d → 34.32d |  |  |
| B1.2.10 14 53.318 | 2 Sheet Alumenium, Single post | 2026-09-30 → 2026-10-20 (+20d) | 2026-10-01 → 2026-10-21 (+20d) |  |  | 33d → 34.32d |  |  |
| Road Misc. | **Miscellaneous** | 2026-10-22 → 2026-11-11 (+20d) | 2026-10-24 → 2026-11-12 (+19d) |  |  |  |  |  |
| B1.2.32 12 19.13.02 | Speed Tables | 2026-10-22 → 2026-11-11 (+20d) | 2026-10-24 → 2026-11-12 (+19d) |  |  | 42d → 40.32d |  |  |
| B1.1.02 41 00.02 | Removal of bituminous concrete wearing course |  |  | 4d → 5d |  |  |  |  |
| Zone 02 | **Zone 02** |  | 2026-12-21 → 2027-01-09 (+19d) |  |  |  |  |  |
| Dewatering | **Earthworks & Site Grading** |  | 2026-09-24 → 2026-10-14 (+20d) |  |  |  |  |  |
| B1.1.31 23 16.02 | Excavation (all types of soil) (95.00% Completed) |  | 2026-09-24 → 2026-09-15 A (-9d) | 280.23d → 274d | 95% → 100% | 109.78d → none |  | was named Excavation (all types of soil); resources Excavation (all types of soil) [83594.4]; Labor [218.29 h]; Foreman [109.15 h]; Operator [218.29 h]; Surveyor [109.15 h]; Surveyor Helper [109.15 h]; Excavator (With Bucket) [112 h]; Water Tanker [112 h]; Dump Truck [112 h]; Plate Compactor [112 h] → Excavation (all types of soil) [79414.7]; Labor [207.38 h]; Foreman [103.69 h]; Operator [207.38 h]; Surveyor [103.69 h]; Surveyor Helper [103.69 h]; Excavator (With Bucket) [106.4 h]; Water Tanker [106.4 h]; Dump Truck [106.4 h]; Plate Compactor [106.4 h] |
| B1.1.31 23 23.72 | Engineering Backfiling - Management Road 01 |  |  |  |  |  | B1.1.31 23 23.62, B1.1.31 23 23.62 FF → B1.1.31 23 23.62 |  |
| B1.1.31 23 23.42 | Engineering Backfiling - Commercial Road 01 |  |  |  |  |  | B1.1.31 23 23.72, B1.1.31 23 23.72 FF → B1.1.31 23 23.01 |  |
| B1.1.31 23 23.02 | Engineering Backfiling - Arterial Roads |  |  |  |  |  | B1.1.31 23 23.82 → B1.1.31 23 23.32 |  |
| B1.1.31 23 23.112 | Engineering Backfiling - Guard Rooms |  |  | 29.01d → 30.01d |  |  | B1.1.31 23 23.102 → B1.1.31 23 23.102, B1.1.31 23 23.82 |  |
| B1.1.31 23 23.92 | Engineering Backfiling - Service Road |  |  |  |  |  | B1.1.31 23 16.02 SS → B1.1.31 23 23.112 SS+2d, B1.1.31 23 23.112 FF+2d |  |
| Service Road | **Service Road** |  | 2026-11-14 → 2026-12-02 (+18d) |  |  |  |  |  |
| Wet Networks | **Wet Networks** |  | 2026-10-26 → 2026-11-07 (+12d) |  |  |  |  |  |
| Stormwater Network | **Stormwater Network** |  | 2026-10-26 → 2026-11-07 (+12d) |  |  |  |  |  |
| GRP | **GRP** |  | 2026-09-20 → 2026-10-14 (+24d) |  |  |  |  |  |
| ?40011 | **?1500** |  | 2026-09-20 → 2026-10-14 (+24d) |  |  |  |  |  |
| 3 | **Depth From 2.5m to 3.5m** |  | 2026-09-20 → 2026-10-14 (+24d) |  |  |  |  |  |
| B6.33 42 11.31-1 3 | Sand Bedding (67.47% Completed) |  | 2026-09-19 → 2026-09-15 A (-4d) | 27.38d → 26.1d | 67% → 100% | 113.72d → none |  | was named Sand Bedding; resources Labor [31.18 h]; Foreman [15.59 h]; Operator [62.37 h]; Surveyor [15.59 h]; Surveyor Helper [15.59 h]; Loader [16 h]; Water Tanker [16 h]; Dump Truck [16 h]; Plate Compactor [16 h]; 2.51m - 3.5m [7.33] → Labor [21.04 h]; Foreman [10.52 h]; Operator [42.08 h]; Surveyor [10.52 h]; Surveyor Helper [10.52 h]; Loader [10.8 h]; Water Tanker [10.8 h]; Dump Truck [10.8 h]; Plate Compactor [10.8 h]; 2.51m - 3.5m [4.95] |
| B6.33 42 11.31-1 5 | Pipe Laying (39.69% Completed) |  | 2026-09-19 → 2026-09-15 A (-4d) | 26.38d → 25.1d | 40% → 100% | 113.72d → none |  | was named Pipe Laying; resources Labor [31.18 h]; Foreman [15.59 h]; Plumber Helper [15.59 h]; Plumber [15.59 h]; Operator [15.59 h]; Surveyor [15.59 h]; Surveyor Helper [15.59 h]; Mobile Crane [16 h]; 2.51m - 3.5m → Labor [12.38 h]; Foreman [6.19 h]; Plumber Helper [6.19 h]; Plumber [6.19 h]; Operator [6.19 h]; Surveyor [6.19 h]; Surveyor Helper [6.19 h]; Mobile Crane [6.35 h]; 2.51m - 3.5m |
| B6.33 42 11.31-1 7 | Embedment & Test (67.47% Completed) |  | 2026-09-19 → 2026-09-15 A (-4d) | 24.84d → 23d | 67% → 100% | 113.16d → none |  | was named Embedment & Test; resources Labor [62.37 h]; Foreman [31.18 h]; Plumber Helper [31.18 h]; Plumber [31.18 h]; Operator [62.37 h]; Surveyor [31.18 h]; Surveyor Helper [31.18 h]; Loader [32 h]; Water Tanker [32 h]; Dump Truck [32 h]; Plate Compactor [32 h]; Roller Compactor [32 h]; 2.51m - 3.5m [30.32] → Labor [42.08 h]; Foreman [21.04 h]; Plumber Helper [21.04 h]; Plumber [21.04 h]; Operator [42.08 h]; Surveyor [21.04 h]; Surveyor Helper [21.04 h]; Loader [21.59 h]; Water Tanker [21.59 h]; Dump Truck [21.59 h]; Plate Compactor [21.59 h]; Roller Compactor [21.59 h]; 2.51m - 3.5m [20.46] |
| B6.33 42 11.31-1 9 | Backfilling & Warrning Tape (67.47% Completed) |  | 2026-09-20 → 2026-09-15 A (-5d) | 23.12d → 21d | 67% → 100% | 112.88d → none |  | was named Backfilling & Warrning Tape; resources Labor [77.96 h]; Foreman [38.98 h]; Operator [155.92 h]; Surveyor [38.98 h]; Surveyor Helper [38.98 h]; Loader [40 h]; Water Tanker [40 h]; Dump Truck [40 h]; Plate Compactor [40 h]; Roller Compactor [40 h]; 2.51m - 3.5m [14.67] → Labor [52.6 h]; Foreman [26.3 h]; Operator [105.21 h]; Surveyor [26.3 h]; Surveyor Helper [26.3 h]; Loader [26.99 h]; Water Tanker [26.99 h]; Dump Truck [26.99 h]; Plate Compactor [26.99 h]; Roller Compactor [26.99 h]; 2.51m - 3.5m [9.9] |
| 1 | **Depth From 3.5m to 4.5m** |  | 2026-09-19 → 2026-10-14 (+25d) |  |  |  |  |  |
| B6.33 42 11.31-1 4 | Sand Bedding (67.47% Completed) |  | 2026-09-19 → 2026-09-15 A (-4d) | 28.38d → 27.1d | 67% → 100% | 113.72d → none |  | was named Sand Bedding; resources Labor [31.18 h]; Foreman [15.59 h]; Operator [62.37 h]; Surveyor [15.59 h]; Surveyor Helper [15.59 h]; Loader [16 h]; Water Tanker [16 h]; Dump Truck [16 h]; Plate Compactor [16 h]; 3.51m - 4.5m [5.16] → Labor [21.04 h]; Foreman [10.52 h]; Operator [42.08 h]; Surveyor [10.52 h]; Surveyor Helper [10.52 h]; Loader [10.8 h]; Water Tanker [10.8 h]; Dump Truck [10.8 h]; Plate Compactor [10.8 h]; 3.51m - 4.5m [3.48] |
| B6.33 42 11.31-1 6 | Pipe Laying (67.47% Completed) |  | 2026-09-19 → 2026-09-15 A (-4d) | 27.38d → 26.1d | 67% → 100% | 113.72d → none |  | was named Pipe Laying; resources Labor [31.18 h]; Foreman [15.59 h]; Plumber Helper [15.59 h]; Plumber [15.59 h]; Operator [15.59 h]; Surveyor [15.59 h]; Surveyor Helper [15.59 h]; Mobile Crane [16 h]; 3.51m - 4.5m [46.48] → Labor [21.04 h]; Foreman [10.52 h]; Plumber Helper [10.52 h]; Plumber [10.52 h]; Operator [10.52 h]; Surveyor [10.52 h]; Surveyor Helper [10.52 h]; Mobile Crane [10.8 h]; 3.51m - 4.5m [31.36] |
| B6.33 42 11.31-1 8 | Embedment & Test (67.47% Completed) |  | 2026-09-19 → 2026-09-15 A (-4d) | 24.84d → 23d | 67% → 100% | 113.16d → none |  | was named Embedment & Test; resources Labor [62.37 h]; Foreman [31.18 h]; Plumber Helper [31.18 h]; Plumber [31.18 h]; Operator [62.37 h]; Surveyor [31.18 h]; Surveyor Helper [31.18 h]; Loader [32 h]; Water Tanker [32 h]; Dump Truck [32 h]; Plate Compactor [32 h]; Roller Compactor [32 h]; 3.51m - 4.5m [20.67] → Labor [42.08 h]; Foreman [21.04 h]; Plumber Helper [21.04 h]; Plumber [21.04 h]; Operator [42.08 h]; Surveyor [21.04 h]; Surveyor Helper [21.04 h]; Loader [21.59 h]; Water Tanker [21.59 h]; Dump Truck [21.59 h]; Plate Compactor [21.59 h]; Roller Compactor [21.59 h]; 3.51m - 4.5m [13.95] |
| B6.33 42 11.31-1 10 | Backfilling & Warrning Tape (67.47% Completed) |  | 2026-09-19 → 2026-09-15 A (-4d) | 20.94d → 19d | 67% → 100% | 113.06d → none |  | was named Backfilling & Warrning Tape; resources Labor [77.96 h]; Foreman [38.98 h]; Operator [155.92 h]; Surveyor [38.98 h]; Surveyor Helper [38.98 h]; Loader [40 h]; Water Tanker [40 h]; Dump Truck [40 h]; Plate Compactor [40 h]; Roller Compactor [40 h]; 3.51m - 4.5m [10.32] → Labor [52.6 h]; Foreman [26.3 h]; Operator [105.21 h]; Surveyor [26.3 h]; Surveyor Helper [26.3 h]; Loader [26.99 h]; Water Tanker [26.99 h]; Dump Truck [26.99 h]; Plate Compactor [26.99 h]; Roller Compactor [26.99 h]; 3.51m - 4.5m [6.97] |
| Strom Manholes | **Manholes** |  | 2026-09-24 → 2026-10-24 (+30d) |  |  |  |  |  |
| 2 | **?1500** |  | 2026-09-24 → 2026-10-21 (+27d) |  |  |  |  |  |
| 1 | **Depth From 2.5m to 3.5m** |  | 2026-09-24 → 2026-10-21 (+27d) |  |  |  |  |  |
| B6.33 05 39.01.3337 | Blinding Conc, & RC Base (75.00% Completed) |  | 2026-09-17 → 2026-09-15 A (-2d) | 25d → 24d | 75% → 100% | 114d → none |  | was named Blinding Conc, & RC Base; resources Labor [46.78 h]; Foreman [23.39 h]; Laboratory Officer [23.39 h]; Carpenter [23.39 h]; Steelfixer [23.39 h]; Mason [23.39 h]; MH depth 2.51 - 3.5m [0.24] → Labor [35.08 h]; Foreman [17.54 h]; Laboratory Officer [17.54 h]; Carpenter [17.54 h]; Steelfixer [17.54 h]; Mason [17.54 h]; MH depth 2.51 - 3.5m [0.18] |
| B6.33 05 39.01.3347 | Manhole Installation (75.00% Completed) |  | 2026-09-17 → 2026-09-15 A (-2d) | 22d → 21d | 75% → 100% | 109d → none |  | was named Manhole Installation; resources Labor [31.18 h]; Operator [31.18 h]; Surveyor [15.59 h]; Surveyor Helper [15.59 h]; Boom Truck [16 h]; Mobile Crane [16 h]; MH depth 2.51 - 3.5m [0.8] → Labor [23.39 h]; Operator [23.39 h]; Surveyor [11.69 h]; Surveyor Helper [11.69 h]; Boom Truck [12 h]; Mobile Crane [12 h]; MH depth 2.51 - 3.5m [0.6] |
| B6.33 05 39.01.3367 | Backfilling (75.00% Completed) |  | 2026-09-24 → 2026-09-15 A (-9d) | 21.25d → 20d | 75% → 100% | 109d → none | B6.33 05 39.01.3357 FF, B6.33 05 13.01 5 SS, B6.33 05 13.07 5 SS → B6.33 05 13.01 5 SS, B6.33 05 13.07 5 SS | was named Backfilling; resources Labor [77.96 h]; Foreman [38.98 h]; Operator [77.96 h]; Surveyor [38.98 h]; Surveyor Helper [38.98 h]; Loader [40 h]; Water Tanker [40 h]; Dump Truck [40 h]; Plate Compactor [40 h]; MH depth 2.51 - 3.5m [0.34] → Labor [58.47 h]; Foreman [29.24 h]; Operator [58.47 h]; Surveyor [29.24 h]; Surveyor Helper [29.24 h]; Loader [30 h]; Water Tanker [30 h]; Dump Truck [30 h]; Plate Compactor [30 h]; MH depth 2.51 - 3.5m [0.25] |
| B6.33 05 39.01.3357 | Test, Internal Finishing, Benching & Cover | 2026-09-19 → 2026-10-07 (+18d) | 2026-09-24 → 2026-10-12 (+18d) |  |  | 109d → 106.32d | B6.33 05 39.01.3347 → B6.33 05 39.01.3347_R |  |
| 3 | **?2000** |  | 2026-09-24 → 2026-10-24 (+30d) |  |  |  |  |  |
| 3 | **Depth From 2.5m to 3.5m** |  | 2026-09-24 → 2026-10-14 (+20d) |  |  |  |  |  |
| B6.33 05 39.01.3377 | Excavation & Compaction (75.00% Completed) |  | 2026-09-17 → 2026-09-15 A (-2d) | 25d → 24d | 75% → 100% | 114d → none |  | was named Excavation & Compaction; resources Labor [31.18 h]; Foreman [15.59 h]; Operator [31.18 h]; Surveyor [15.59 h]; Surveyor Helper [15.59 h]; Excavator (With Bucket) [16 h]; Water Tanker [16 h]; Dump Truck [16 h]; Plate Compactor [16 h]; Storm MH depth 2.51 - 3.5m [0.63] → Labor [23.39 h]; Foreman [11.69 h]; Operator [23.39 h]; Surveyor [11.69 h]; Surveyor Helper [11.69 h]; Excavator (With Bucket) [12 h]; Water Tanker [12 h]; Dump Truck [12 h]; Plate Compactor [12 h]; Storm MH depth 2.51 - 3.5m [0.47] |
| B6.33 05 39.01.3387 | Blinding Conc, & RC Base (75.00% Completed) |  | 2026-09-17 → 2026-09-15 A (-2d) | 23d → 22d | 75% → 100% | 114d → none |  | was named Blinding Conc, & RC Base; resources Labor [46.78 h]; Foreman [23.39 h]; Laboratory Officer [23.39 h]; Carpenter [23.39 h]; Steelfixer [23.39 h]; Mason [23.39 h]; Storm MH depth 2.51 - 3.5m [0.42] → Labor [35.08 h]; Foreman [17.54 h]; Laboratory Officer [17.54 h]; Carpenter [17.54 h]; Steelfixer [17.54 h]; Mason [17.54 h]; Storm MH depth 2.51 - 3.5m [0.31] |
| B6.33 05 39.01.3397 | Manhole Installation (75.00% Completed) |  | 2026-09-17 → 2026-09-15 A (-2d) | 22d → 21d | 75% → 100% | 109d → none |  | was named Manhole Installation; resources Labor [31.18 h]; Operator [31.18 h]; Surveyor [15.59 h]; Surveyor Helper [15.59 h]; Boom Truck [16 h]; Mobile Crane [16 h]; Storm MH depth 2.51 - 3.5m [1.97] → Labor [23.39 h]; Operator [23.39 h]; Surveyor [11.69 h]; Surveyor Helper [11.69 h]; Boom Truck [12 h]; Mobile Crane [12 h]; Storm MH depth 2.51 - 3.5m [1.48] |
| B6.33 05 39.01.3417 | Backfilling (75.00% Completed) |  | 2026-09-24 → 2026-09-15 A (-9d) | 20.25d → 19d | 75% → 100% | 109d → none | B6.33 05 39.01.3407 FF → B6.33 05 39.01.3397 | was named Backfilling; resources Labor [77.96 h]; Foreman [38.98 h]; Operator [77.96 h]; Surveyor [38.98 h]; Surveyor Helper [38.98 h]; Loader [40 h]; Water Tanker [40 h]; Dump Truck [40 h]; Plate Compactor [40 h]; Storm MH depth 2.51 - 3.5m [0.91] → Labor [58.47 h]; Foreman [29.24 h]; Operator [58.47 h]; Surveyor [29.24 h]; Surveyor Helper [29.24 h]; Loader [30 h]; Water Tanker [30 h]; Dump Truck [30 h]; Plate Compactor [30 h]; Storm MH depth 2.51 - 3.5m [0.68] |
| B6.33 05 39.01.3407 | Test, Internal Finishing, Benching & Cover | 2026-09-19 → 2026-10-10 (+21d) | 2026-09-24 → 2026-10-14 (+20d) |  |  | 109d → 42.8d | B6.33 05 39.01.3397 → B6.33 05 39.01.3397_R |  |
| 1 | **Depth From 3.5m to 4.5m** |  | 2026-09-24 → 2026-10-14 (+20d) |  |  |  |  |  |
| B6.33 05 39.01.3427 | Excavation & Compaction (75.00% Completed) |  | 2026-09-17 → 2026-09-15 A (-2d) | 30d → 29d | 75% → 100% | 114d → none |  | was named Excavation & Compaction; resources Labor [31.18 h]; Foreman [15.59 h]; Operator [31.18 h]; Surveyor [15.59 h]; Surveyor Helper [15.59 h]; Excavator (With Bucket) [16 h]; Water Tanker [16 h]; Dump Truck [16 h]; Plate Compactor [16 h]; Storm MH depth 3.51 -4.5m [0.57] → Labor [23.39 h]; Foreman [11.69 h]; Operator [23.39 h]; Surveyor [11.69 h]; Surveyor Helper [11.69 h]; Excavator (With Bucket) [12 h]; Water Tanker [12 h]; Dump Truck [12 h]; Plate Compactor [12 h]; Storm MH depth 3.51 -4.5m [0.43] |
| B6.33 05 39.01.3437 | Blinding Conc, & RC Base (75.00% Completed) |  | 2026-09-17 → 2026-09-15 A (-2d) | 28d → 27d | 75% → 100% | 114d → none |  | was named Blinding Conc, & RC Base; resources Labor [46.78 h]; Foreman [23.39 h]; Laboratory Officer [23.39 h]; Carpenter [23.39 h]; Steelfixer [23.39 h]; Mason [23.39 h]; Storm MH depth 3.51 -4.5m [0.39] → Labor [35.08 h]; Foreman [17.54 h]; Laboratory Officer [17.54 h]; Carpenter [17.54 h]; Steelfixer [17.54 h]; Mason [17.54 h]; Storm MH depth 3.51 -4.5m [0.29] |

| ID | Task | Start | Finish | Duration | Complete | Total float | Predecessors | Other |
| --- | --- | --- | --- | --- | --- | --- | --- | --- |
| B6.33 05 39.01.3447 | Manhole Installation (75.00% Completed) |  | 2026-09-17 → 2026-09-15 A (-2d) | 25d → 24d | 75% → 100% | 109d → none |  | was named Manhole Installation; resources Labor [31.18 h]; Operator [31.18 h]; Surveyor [15.59 h]; Surveyor Helper [15.59 h]; Boom Truck [16 h]; Mobile Crane [16 h]; Storm MH depth 3.51 -4.5m [1.87] → Labor [23.39 h]; Operator [23.39 h]; Surveyor [11.69 h]; Surveyor Helper [11.69 h]; Boom Truck [12 h]; Mobile Crane [12 h]; Storm MH depth 3.51 -4.5m [1.41] |
| B6.33 05 39.01.3467 | Backfilling (75.00% Completed) |  | 2026-09-24 → 2026-09-15 A (-9d) | 22d → 21d | 75% → 100% | 109d → none | B6.33 05 39.01.3457 FF → B6.33 05 39.01.3417 | was named Backfilling; resources Labor [77.96 h]; Foreman [38.98 h]; Operator [77.96 h]; Surveyor [38.98 h]; Surveyor Helper [38.98 h]; Loader [40 h]; Water Tanker [40 h]; Dump Truck [40 h]; Plate Compactor [40 h]; Storm MH depth 3.51 -4.5m [0.78] → Labor [58.47 h]; Foreman [29.24 h]; Operator [58.47 h]; Surveyor [29.24 h]; Surveyor Helper [29.24 h]; Loader [30 h]; Water Tanker [30 h]; Dump Truck [30 h]; Plate Compactor [30 h]; Storm MH depth 3.51 -4.5m [0.58] |
| B6.33 05 39.01.3457 | Test, Internal Finishing, Benching & Cover | 2026-09-19 → 2026-10-10 (+21d) | 2026-09-24 → 2026-10-14 (+20d) |  |  | 109d → 106.32d | B6.33 05 39.01.3447 → B6.33 05 39.01.3447_R |  |
| 2 | **Depth From 4.5m to 5.5m** |  | 2026-09-24 → 2026-10-24 (+30d) |  |  |  |  |  |
| B6.33 05 39.01.3477 | Excavation & Compaction (75.00% Completed) |  | 2026-09-17 → 2026-09-15 A (-2d) | 33d → 32d | 75% → 100% | 43d → none |  | was named Excavation & Compaction; resources Labor [31.18 h]; Foreman [15.59 h]; Operator [31.18 h]; Surveyor [15.59 h]; Surveyor Helper [15.59 h]; Excavator (With Bucket) [16 h]; Water Tanker [16 h]; Dump Truck [16 h]; Plate Compactor [16 h]; MH depth 4.51 -5.5m [0.14] → Labor [23.39 h]; Foreman [11.69 h]; Operator [23.39 h]; Surveyor [11.69 h]; Surveyor Helper [11.69 h]; Excavator (With Bucket) [12 h]; Water Tanker [12 h]; Dump Truck [12 h]; Plate Compactor [12 h]; MH depth 4.51 -5.5m [0.11] |
| B6.33 05 39.01.3487 | Blinding Conc, & RC Base (75.00% Completed) |  | 2026-09-17 → 2026-09-15 A (-2d) | 30d → 29d | 75% → 100% | 114d → none |  | was named Blinding Conc, & RC Base; resources Labor [46.78 h]; Foreman [23.39 h]; Laboratory Officer [23.39 h]; Carpenter [23.39 h]; Steelfixer [23.39 h]; Mason [23.39 h]; MH depth 4.51 -5.5m [0.1] → Labor [35.08 h]; Foreman [17.54 h]; Laboratory Officer [17.54 h]; Carpenter [17.54 h]; Steelfixer [17.54 h]; Mason [17.54 h]; MH depth 4.51 -5.5m [0.08] |
| B6.33 05 39.01.3497 | Manhole Installation (75.00% Completed) |  | 2026-09-17 → 2026-09-15 A (-2d) | 27d → 26d | 75% → 100% | 109d → none |  | was named Manhole Installation; resources Labor [31.18 h]; Operator [31.18 h]; Surveyor [15.59 h]; Surveyor Helper [15.59 h]; Boom Truck [16 h]; Mobile Crane [16 h]; MH depth 4.51 -5.5m [0.47] → Labor [23.39 h]; Operator [23.39 h]; Surveyor [11.69 h]; Surveyor Helper [11.69 h]; Boom Truck [12 h]; Mobile Crane [12 h]; MH depth 4.51 -5.5m [0.35] |
| B6.33 05 39.01.3517 | Backfilling (75.00% Completed) |  | 2026-09-24 → 2026-09-15 A (-9d) | 24d → 23d | 75% → 100% | 109d → none | B6.33 05 39.01.3507 FF, B6.33 05 39.01.3367 SS, B6.33 05 39.01.4017 SS → B6.33 05 39.01.3367 SS, B6.33 05 39.01.4017 SS | was named Backfilling; resources Labor [77.96 h]; Foreman [38.98 h]; Operator [77.96 h]; Surveyor [38.98 h]; Surveyor Helper [38.98 h]; Loader [40 h]; Water Tanker [40 h]; Dump Truck [40 h]; Plate Compactor [40 h]; MH depth 4.51 -5.5m [0.19] → Labor [58.47 h]; Foreman [29.24 h]; Operator [58.47 h]; Surveyor [29.24 h]; Surveyor Helper [29.24 h]; Loader [30 h]; Water Tanker [30 h]; Dump Truck [30 h]; Plate Compactor [30 h]; MH depth 4.51 -5.5m [0.14] |
| B6.33 05 39.01.3507 | Test, Internal Finishing, Benching & Cover | 2026-09-19 → 2026-10-10 (+21d) | 2026-09-24 → 2026-10-14 (+20d) |  |  | 109d → 106.32d | B6.33 05 39.01.3497 → B6.33 05 39.01.3497_R |  |
| Catch Basins | **Catch Basins** |  | 2026-10-26 → 2026-11-07 (+12d) |  |  |  |  |  |
| Sing | **Single** | 2026-09-19 → 2026-10-10 (+21d) | 2026-10-19 → 2026-10-31 (+12d) |  |  |  |  |  |
| B6.33 05 40.01.330 | Excavation, Compaction & Vapour Barrier | 2026-09-19 → 2026-10-10 (+21d) | 2026-09-21 → 2026-10-12 (+21d) |  |  | 43d → 97.32d | B6.33 05 39.01.3477 → B6.33 05 39.01.3477_R |  |
| B6.33 05 40.01.340 | Blinding Conc. | 2026-09-22 → 2026-10-13 (+21d) | 2026-09-26 → 2026-10-15 (+19d) |  |  | 43d → 97.32d |  |  |
| B6.33 05 40.01.350 | Catch Basin Installation | 2026-09-27 → 2026-10-17 (+20d) | 2026-09-30 → 2026-10-20 (+20d) |  |  | 43d → 97.32d |  |  |
| B6.33 05 40.01.360 | Backfilling, DI Frame & Grate Cover Fixing | 2026-10-13 → 2026-10-24 (+11d) | 2026-10-19 → 2026-10-31 (+12d) |  |  | 43d → 42.8d | B6.33 42 11.36-1.2 → B6.33 42 11.36-1.2_R, B6.33 42 11.02.5_R |  |
| Dou | **Double** | 2026-09-22 → 2026-10-13 (+21d) | 2026-10-26 → 2026-11-07 (+12d) |  |  |  |  |  |
| B6.33 05 40.01.810 | Excavation, Compaction & Vapour Barrier | 2026-09-22 → 2026-10-13 (+21d) | 2026-09-26 → 2026-10-15 (+19d) |  |  | 44d → 98.32d |  |  |
| B6.33 05 40.01.820 | Blinding Conc. | 2026-09-27 → 2026-10-17 (+20d) | 2026-09-29 → 2026-10-19 (+20d) |  |  | 44d → 98.32d |  |  |
| B6.33 05 40.01.830 | Catch Basin Installation | 2026-10-01 → 2026-10-21 (+20d) | 2026-10-05 → 2026-10-25 (+20d) |  |  | 43d → 97.32d |  |  |
| B6.33 05 40.01.840 | Backfilling, DI Frame & Grate Cover Fixing | 2026-10-20 → 2026-10-31 (+11d) | 2026-10-26 → 2026-11-07 (+12d) |  |  | 43d → 42.78d |  |  |
| UPVC | **UPVC** |  | 2026-10-12 → 2026-10-05 (-7d) |  |  |  |  |  |
| UPVC300 | **?300 From 0.0 to 1.5m** |  | 2026-10-08 → 2026-10-05 (-3d) |  |  |  |  |  |
| B6.33 42 11.35-1.2 | Fittings & Pipe Installation (45.36% Completed) |  | 2026-10-08 → 2026-09-15 A (-23d) | 34.09d → 33d | 45% → 100% | 97d → none | B6.33 42 11.35-1.1 FF → B6.33 42 11.31-1 2 FF | was named Fittings & Pipe Installation; resources Labor [31.18 h]; Foreman [15.59 h]; Plumber Helper [15.59 h]; Plumber [15.59 h]; Surveyor [15.59 h]; Surveyor Helper [15.59 h]; less than 1.5 [186.46] → Labor [14.15 h]; Foreman [7.07 h]; Plumber Helper [7.07 h]; Plumber [7.07 h]; Surveyor [7.07 h]; Surveyor Helper [7.07 h]; less than 1.5 [84.58] |
| B6.33 42 11.35-1.1 | Catch Basin Opening Prep. | 2026-10-06 → 2026-09-29 A (-7d) | 2026-10-08 → 2026-10-01 A (-7d) |  | 0% → 100% | 43d → none |  |  |
| UPVC3001 | **?400 From 0.0 to 1.5m** |  | 2026-10-12 → 2026-10-03 (-9d) |  |  |  |  |  |
| B6.33 42 11.36-1.2 | Fittings & Pipe Installation (36.29% Completed) |  | 2026-10-12 → 2026-09-15 A (-27d) | 31.09d → 30d | 36% → 100% | 43d → none | B6.33 42 11.36-1.1 FF → B6.33 42 11.35-1.2 SS+1d, B6.33 42 11.35-1.2 FF+1d | was named Fittings & Pipe Installation; resources Labor [31.18 h]; Foreman [15.59 h]; Plumber Helper [15.59 h]; Plumber [15.59 h]; Surveyor [15.59 h]; Surveyor Helper [15.59 h]; less than 1.5 [186.46] → Labor [11.32 h]; Foreman [5.66 h]; Plumber Helper [5.66 h]; Plumber [5.66 h]; Surveyor [5.66 h]; Surveyor Helper [5.66 h]; less than 1.5 [67.66] |
| B6.33 42 11.36-1.1 | Catch Basin Opening Prep. | 2026-10-10 → 2026-09-26 A (-14d) | 2026-10-12 → 2026-09-29 A (-13d) |  | 0% → 100% | 43d → none |  |  |
| Dry Networks | **Dry Networks** | 2026-10-05 → 2026-10-24 (+19d) | 2026-11-09 → 2026-11-29 (+20d) |  |  |  |  |  |
| Street Lighting | **Street Lighting** | 2026-10-05 → 2026-10-24 (+19d) | 2026-11-09 → 2026-11-29 (+20d) |  |  |  |  |  |
| SL Poles | **SL Poles** | 2026-10-05 → 2026-10-24 (+19d) | 2026-10-21 → 2026-11-09 (+19d) |  |  |  |  |  |
| Pole (10 M Sngl Arm) | **Pole (10 M Single Arm)** | 2026-10-05 → 2026-10-24 (+19d) | 2026-10-21 → 2026-11-09 (+19d) |  |  |  |  |  |
| B2.33 71 16.63 | Excavation | 2026-10-05 → 2026-10-24 (+19d) | 2026-10-07 → 2026-10-26 (+19d) |  |  | 0.76d → 0d |  |  |
| B2.33 71 16.64 | PC & RC Foundation | 2026-10-07 → 2026-10-26 (+19d) | 2026-10-11 → 2026-10-29 (+18d) |  |  | 72.76d → 72d |  |  |
| B2.33 71 16.65 | Lighting Poles Installation Incl power box, Cables | 2026-10-11 → 2026-10-29 (+18d) | 2026-10-14 → 2026-11-02 (+19d) |  |  | 72.76d → 72d |  |  |
| B2.26.56.19.9 | Lighting Luminares Inst | 2026-10-14 → 2026-11-02 (+19d) | 2026-10-18 → 2026-11-05 (+18d) |  |  | 72.76d → 72d |  |  |
| B2.33 71 16.66 | Backfilling, Grouting & Chamfering | 2026-10-18 → 2026-11-05 (+18d) | 2026-10-21 → 2026-11-09 (+19d) |  |  | 72.76d → 72d |  |  |
| Earthing | **Earthing** | 2026-10-07 → 2026-10-26 (+19d) | 2026-11-09 → 2026-11-29 (+20d) |  |  |  |  |  |
| B2.33 71 19 32 | Land Adjustment | 2026-10-07 → 2026-10-26 (+19d) | 2026-10-10 → 2026-10-28 (+18d) |  |  | 0.76d → 0d |  |  |
| B2.33 71 19 33 | Earth Rods & Conduits | 2026-10-10 → 2026-10-28 (+18d) | 2026-10-12 → 2026-10-31 (+19d) |  |  | 86.76d → 86d |  |  |
| B2.33 71 19 34 | Backfilling | 2026-11-07 → 2026-11-26 (+19d) | 2026-11-09 → 2026-11-29 (+20d) |  |  | 65d → 63.32d |  |  |
| LV Network | **Low Voltage Network** | 2026-10-10 → 2026-10-28 (+18d) | 2026-10-20 → 2026-11-08 (+19d) |  |  |  |  |  |
| MV Replacing | **Cable Replacement** | 2026-10-10 → 2026-10-28 (+18d) | 2026-10-20 → 2026-11-08 (+19d) |  |  |  |  |  |
| B2.33 71 49.23.101 | Excavation | 2026-10-10 → 2026-10-28 (+18d) | 2026-10-12 → 2026-10-31 (+19d) |  |  | 0.76d → 0d |  |  |
| B2.33 71 49.23.98 | Old Cable Grubbing | 2026-10-12 → 2026-10-31 (+19d) | 2026-10-14 → 2026-11-02 (+19d) |  |  | 0.76d → 0d |  |  |
| B2.33 71 49.23.99 | New Cable Installation | 2026-10-14 → 2026-11-02 (+19d) | 2026-10-17 → 2026-11-04 (+18d) |  |  | 0.76d → 0d |  |  |
| B2.33 71 49.23.100 | Backfilling & Warrning Tape | 2026-10-17 → 2026-11-04 (+18d) | 2026-10-20 → 2026-11-08 (+19d) |  |  | 0.76d → 0d |  |  |
| Earth & Road Works | **Earth & Road Works** |  | 2026-11-14 → 2026-12-02 (+18d) |  |  |  |  |  |
| Earth Works | **Earth Works** |  | 2026-09-24 → 2026-10-13 (+19d) |  |  |  |  |  |
| B1.2.31 23 16.01.9 | Roadway Excavation | 2026-09-21 → 2026-10-11 (+20d) | 2026-09-24 → 2026-10-13 (+19d) |  |  | 0.76d → 0d |  |  |
| Earth Layers | **Earth Layers** | 2026-09-24 → 2026-10-13 (+19d) | 2026-09-29 → 2026-10-18 (+19d) |  |  |  |  |  |
| B1.2.32 11 13.01.9 | Subgrade | 2026-09-24 → 2026-10-13 (+19d) | 2026-09-27 → 2026-10-15 (+18d) |  |  | 0.76d → 0d |  |  |
| B1.2.32 11 23.01.9 | Aggregate Base Course | 2026-09-27 → 2026-10-15 (+18d) | 2026-09-29 → 2026-10-18 (+19d) |  |  | 0.76d → 0d |  |  |
| Interlock | **Interlock** | 2026-10-20 → 2026-11-08 (+19d) | 2026-10-24 → 2026-11-11 (+18d) |  |  |  |  |  |
| B1.2.32 14 13.13.9 | 60mm thick - Interlocking Block Pavers | 2026-10-20 → 2026-11-08 (+19d) | 2026-10-24 → 2026-11-11 (+18d) |  |  | 0.76d → 0d |  |  |
| Curbstone | **Curbstone** | 2026-10-20 → 2026-11-08 (+19d) | 2026-11-04 → 2026-11-23 (+19d) |  |  |  |  |  |
| Pre Install | **Pre-Installation** | 2026-10-20 → 2026-11-08 (+19d) | 2026-10-27 → 2026-11-15 (+19d) |  |  |  |  |  |
| B2.31 23 00.241 | Excavation | 2026-10-20 → 2026-11-08 (+19d) | 2026-10-22 → 2026-11-10 (+19d) |  |  | 10.76d → 13d |  |  |
| B1.2.32 14 13.13.29 | PCC | 2026-10-22 → 2026-11-10 (+19d) | 2026-10-25 → 2026-11-12 (+18d) |  |  | 10.76d → 13d |  |  |
| 32 16 13.009 | Haunching | 2026-10-25 → 2026-11-12 (+18d) | 2026-10-27 → 2026-11-15 (+19d) |  |  | 10.76d → 13d |  |  |
| Installation | **Installation** | 2026-10-27 → 2026-11-15 (+19d) | 2026-11-04 → 2026-11-23 (+19d) |  |  |  |  |  |
| B1.2.32 16.13.01.9 | Curb Stone, Type K1 | 2026-10-27 → 2026-11-15 (+19d) | 2026-10-29 → 2026-11-17 (+19d) |  |  | 10.76d → 13d |  |  |
| B1.2.32 16.13.02.8 | Dropped Curb, Type K3 | 2026-10-29 → 2026-11-17 (+19d) | 2026-10-31 → 2026-11-18 (+18d) |  |  | 10.76d → 13d |  |  |
| B1.2.32 16.13.03.9 | Edge Curb, Type K4 | 2026-10-31 → 2026-11-18 (+18d) | 2026-11-02 → 2026-11-21 (+19d) |  |  | 10.76d → 13d |  |  |
| B1.2.32 16.13.049 | Heel Curb, Type K5 | 2026-11-02 → 2026-11-21 (+19d) | 2026-11-04 → 2026-11-23 (+19d) |  |  | 10.76d → 13d |  |  |
| Finishing | **Finishing** | 2026-11-02 → 2026-11-21 (+19d) | 2026-11-04 → 2026-11-23 (+19d) |  |  |  |  |  |
| 32 16 13.09 | Finishing, Fareface | 2026-11-02 → 2026-11-21 (+19d) | 2026-11-04 → 2026-11-23 (+19d) |  |  | 10.76d → 13d |  |  |
| Asphalt Layers | **Asphalt Layers** | 2026-09-29 → 2026-10-18 (+19d) | 2026-11-10 → 2026-11-29 (+19d) |  |  |  |  |  |
| B1.2.32 11 26.01.9 | Bituminous Base Course including Prime Coat (MC1) and tack coat (RC2) | 2026-09-29 → 2026-10-18 (+19d) | 2026-10-05 → 2026-10-24 (+19d) |  |  | 0.76d → 0d |  |  |
| B1.2.32 12 16.01.9 | Bituminous concrete Wearing Course, including tack coat (RC2) | 2026-11-04 → 2026-11-23 (+19d) | 2026-11-10 → 2026-11-29 (+19d) |  |  | 10.76d → 13d |  |  |
| Pavement Marking | **Pavement Marking** | 2026-11-12 → 2026-12-01 (+19d) | 2026-11-14 → 2026-12-02 (+18d) |  |  |  |  |  |

| ID | Task | Start | Finish | Duration | Complete | Total float | Predecessors | Other |
| --- | --- | --- | --- | --- | --- | --- | --- | --- |
| B1.2.32 17 23.01.9 | Retroreflective Thermoplastic White Traffic lines | 2026-11-12 → 2026-12-01 (+19d) | 2026-11-14 → 2026-12-02 (+18d) |  |  | 26.76d → 26d |  |  |
| B1.2.32 17 23.02.9 | Retroreflective Thermoplastic Yellow, Traffic lines | 2026-11-12 → 2026-12-01 (+19d) | 2026-11-14 → 2026-12-02 (+18d) |  |  | 26.76d → 26d |  |  |
| Traffic Signs | **Traffic Signs** | 2026-10-20 → 2026-11-08 (+19d) | 2026-10-27 → 2026-11-15 (+19d) |  |  |  |  |  |
| Pre Install | **Pre-Installation** | 2026-10-20 → 2026-11-08 (+19d) | 2026-10-25 → 2026-11-12 (+18d) |  |  |  |  |  |
| B2.31 23 00.251 | Excavation | 2026-10-20 → 2026-11-08 (+19d) | 2026-10-22 → 2026-11-10 (+19d) |  |  | 0.76d → 0d |  |  |
| 10 14 53.09 | Foundation | 2026-10-22 → 2026-11-10 (+19d) | 2026-10-25 → 2026-11-12 (+18d) |  |  | 55.76d → 54d |  |  |
| Installation | **Installation** | 2026-10-25 → 2026-11-12 (+18d) | 2026-10-27 → 2026-11-15 (+19d) |  |  |  |  |  |
| B1.2.10 14 53.019 | 1 Sheet Alumenium, Single post | 2026-10-25 → 2026-11-12 (+18d) | 2026-10-27 → 2026-11-15 (+19d) |  |  | 55.76d → 54d |  |  |
| Road Misc. | **Miscellaneous** | 2026-11-10 → 2026-11-29 (+19d) | 2026-11-12 → 2026-12-01 (+19d) |  |  |  |  |  |
| B1.2.32 12 19.13.09 | Speed Tables | 2026-11-10 → 2026-11-29 (+19d) | 2026-11-12 → 2026-12-01 (+19d) |  |  | 26.76d → 26d |  |  |
| Enterance RD 01 | **Entrance Road 01** |  | 2026-12-16 → 2027-01-04 (+19d) |  |  |  |  |  |
| Wet Networks | **Wet Networks** |  | 2026-09-22 → 2026-10-12 (+20d) |  |  |  |  |  |
| Sewerage Network | **Sewerage Network** |  | 2026-09-22 → 2026-10-12 (+20d) |  |  |  |  |  |
| GRP | **GRP Pipes** |  | 2026-09-22 → 2026-10-12 (+20d) |  |  |  |  |  |
| 150 | **?150** |  | 2026-09-21 → 2026-10-12 (+21d) |  |  |  |  |  |
| 1 | **Depth From 0.0m - 1.5m** |  | 2026-09-21 → 2026-10-12 (+21d) |  |  |  |  |  |
| B5.33 31 00.01.2159 | Backfilling & Warrning Tape (7.30% Completed) |  | 2026-09-21 → 2026-09-15 A (-6d) | 110.56d → 105.89d | 7% → 100% | 111d → none |  | was named Backfilling & Warrning Tape; resources Labor [77.96 h]; Foreman [38.98 h]; Operator [155.92 h]; Surveyor [38.98 h]; Surveyor Helper [38.98 h]; Loader [40 h]; Water Tanker [40 h]; Dump Truck [40 h]; Plate Compactor [40 h]; Roller Compactor [40 h]; Sew Dia. 150mm Depth: 0.0m - 1.5m [62.53] → Labor [5.69 h]; Foreman [2.85 h]; Operator [11.38 h]; Surveyor [2.85 h]; Surveyor Helper [2.85 h]; Loader [2.92 h]; Water Tanker [2.92 h]; Dump Truck [2.92 h]; Plate Compactor [2.92 h]; Roller Compactor [2.92 h]; Sew Dia. 150mm Depth: 0.0m - 1.5m [4.56] |
| 1 | **?200** |  | 2026-09-22 → 2026-10-12 (+20d) |  |  |  |  |  |
| 1 | **Depth From 0.0m - 1.5m** |  | 2026-09-22 → 2026-10-12 (+20d) |  |  |  |  |  |
| B5.33 31 00.01.2199 | Embedment & Test (10.51% Completed) |  | 2026-09-20 → 2026-09-15 A (-5d) | 143.02d → 139.44d | 11% → 100% | 112.42d → none |  | was named Embedment & Test; resources Labor [62.37 h]; Foreman [31.18 h]; Plumber Helper [31.18 h]; Plumber [31.18 h]; Operator [62.37 h]; Surveyor [31.18 h]; Surveyor Helper [31.18 h]; Loader [32 h]; Water Tanker [32 h]; Dump Truck [32 h]; Plate Compactor [32 h]; Roller Compactor [32 h]; Sew Dia. 200mm Depth: 0.0m - 1.5m [33.01] → Labor [6.55 h]; Foreman [3.28 h]; Plumber Helper [3.28 h]; Plumber [3.28 h]; Operator [6.55 h]; Surveyor [3.28 h]; Surveyor Helper [3.28 h]; Loader [3.36 h]; Water Tanker [3.36 h]; Dump Truck [3.36 h]; Plate Compactor [3.36 h]; Roller Compactor [3.36 h]; Sew Dia. 200mm Depth: 0.0m - 1.5m [3.47] |
| B5.33 31 00.01.2209 | Backfilling & Warrning Tape (10.47% Completed) |  | 2026-09-22 → 2026-09-15 A (-7d) | 136.56d → 132d | 10% → 100% | 110d → none |  | was named Backfilling & Warrning Tape; resources Labor [77.96 h]; Foreman [38.98 h]; Operator [155.92 h]; Surveyor [38.98 h]; Surveyor Helper [38.98 h]; Loader [40 h]; Water Tanker [40 h]; Dump Truck [40 h]; Plate Compactor [40 h]; Roller Compactor [40 h]; Sew Dia. 200mm Depth: 0.0m - 1.5m [16.52] → Labor [8.16 h]; Foreman [4.08 h]; Operator [16.33 h]; Surveyor [4.08 h]; Surveyor Helper [4.08 h]; Loader [4.19 h]; Water Tanker [4.19 h]; Dump Truck [4.19 h]; Plate Compactor [4.19 h]; Roller Compactor [4.19 h]; Sew Dia. 200mm Depth: 0.0m - 1.5m [1.73] |
| Stormwater Network | **Stormwater Network** |  | 2026-09-19 → 2026-10-10 (+21d) |  |  |  |  |  |
| B6.33 42 11.02.02 | Excavation |  |  | 13.75d → 14.5d |  |  | B1.1.31 23 23.52, DMM2-Proc-Delv-7414 SS → B1.1.31 23 23.52 |  |
| B6.33 42 11.02.03 | Sand Bedding |  |  | 16d → 17d |  |  |  |  |
| B6.33 42 11.02.04 | Pipe Laying |  |  | 18.25d → 19.25d |  |  |  |  |
| Strom Manholes | **Manholes** |  | 2026-09-17 → 2026-10-08 (+21d) |  |  |  |  |  |
| 1 | **?1200** |  | 2026-09-17 → 2026-09-26 (+9d) |  |  |  |  |  |
| 4 | **Depth From 1.5m to 2.5m** |  | 2026-09-17 → 2026-09-26 (+9d) |  |  |  |  |  |
| B6.33 05 13.01.04 | Manhole Installation (85.00% Completed) |  | 2026-09-17 → 2026-09-15 A (-2d) | 89d → 88d | 85% → 100% | 114d → none |  | was named Manhole Installation; resources Labor [31.18 h]; Operator [31.18 h]; Surveyor [15.59 h]; Surveyor Helper [15.59 h]; Boom Truck [16 h]; Mobile Crane [16 h]; MH depth 1.50 - 2.5m [4.3] → Labor [26.51 h]; Operator [26.51 h]; Surveyor [13.25 h]; Surveyor Helper [13.25 h]; Boom Truck [13.6 h]; Mobile Crane [13.6 h]; MH depth 1.50 - 2.5m [3.65] |
| B6.33 05 13.01.05 | Test, Internal Finishing, Benching & Cover (85.00% Completed) |  | 2026-09-17 → 2026-09-15 A (-2d) | 83d → 82d | 85% → 100% | 114d → none |  | was named Test, Internal Finishing, Benching & Cover; resources Labor [62.37 h]; Foreman [31.18 h]; Plumber Helper [31.18 h]; Plumber [31.18 h]; Mason [31.18 h]; MH depth 1.50 - 2.5m [1.07] → Labor [53.01 h]; Foreman [26.51 h]; Plumber Helper [26.51 h]; Plumber [26.51 h]; Mason [26.51 h]; MH depth 1.50 - 2.5m [0.91] |
| B6.33 05 13.01.06 | Backfilling (85.00% Completed) |  | 2026-09-17 → 2026-09-15 A (-2d) | 77d → 76d | 85% → 100% | 114d → none |  | was named Backfilling; resources Labor [77.96 h]; Foreman [38.98 h]; Operator [77.96 h]; Surveyor [38.98 h]; Surveyor Helper [38.98 h]; Loader [40 h]; Water Tanker [40 h]; Dump Truck [40 h]; Plate Compactor [40 h]; MH depth 1.50 - 2.5m [2.15] → Labor [66.27 h]; Foreman [33.13 h]; Operator [66.27 h]; Surveyor [33.13 h]; Surveyor Helper [33.13 h]; Loader [34 h]; Water Tanker [34 h]; Dump Truck [34 h]; Plate Compactor [34 h]; MH depth 1.50 - 2.5m [1.83] |
| 2 | **?1500** |  | 2026-09-17 → 2026-10-08 (+21d) |  |  |  |  |  |
| 4 | **Depth From 2.5m to 3.5m** |  | 2026-09-17 → 2026-10-08 (+21d) |  |  |  |  |  |
| B6.33 05 13.05.03 | Blinding Conc, & RC Base (92.00% Completed) |  | 2026-09-17 → 2026-09-15 A (-2d) | 89d → 88d | 92% → 100% | 114d → none |  | was named Blinding Conc, & RC Base; resources Labor [46.78 h]; Foreman [23.39 h]; Laboratory Officer [23.39 h]; Carpenter [23.39 h]; Steelfixer [23.39 h]; Mason [23.39 h]; MH depth 2.51 - 3.5m [0.17] → Labor [43.03 h]; Foreman [21.52 h]; Laboratory Officer [21.52 h]; Carpenter [21.52 h]; Steelfixer [21.52 h]; Mason [21.52 h]; MH depth 2.51 - 3.5m [0.16] |
| B6.33 05 13.05.04 | Manhole Installation (92.00% Completed) |  | 2026-09-17 → 2026-09-15 A (-2d) | 83d → 82d | 92% → 100% | 114d → none |  | was named Manhole Installation; resources Labor [31.18 h]; Operator [31.18 h]; Surveyor [15.59 h]; Surveyor Helper [15.59 h]; Boom Truck [16 h]; Mobile Crane [16 h]; MH depth 2.51 - 3.5m [0.8] → Labor [28.69 h]; Operator [28.69 h]; Surveyor [14.34 h]; Surveyor Helper [14.34 h]; Boom Truck [14.72 h]; Mobile Crane [14.72 h]; MH depth 2.51 - 3.5m [0.73] |
| B6.33 05 13.05.05 | Test, Internal Finishing, Benching & Cover (92.00% Completed) |  | 2026-09-17 → 2026-09-15 A (-2d) | 77d → 76d | 92% → 100% | 114d → none |  | was named Test, Internal Finishing, Benching & Cover; resources Labor [62.37 h]; Foreman [31.18 h]; Plumber Helper [31.18 h]; Plumber [31.18 h]; Mason [31.18 h]; MH depth 2.51 - 3.5m [0.17] → Labor [57.38 h]; Foreman [28.69 h]; Plumber Helper [28.69 h]; Plumber [28.69 h]; Mason [28.69 h]; MH depth 2.51 - 3.5m [0.16] |
| B6.33 05 13.05.06 | Backfilling (92.00% Completed) |  | 2026-09-17 → 2026-09-15 A (-2d) | 76d → 75d | 92% → 100% | 65d → none |  | was named Backfilling; resources Labor [77.96 h]; Foreman [38.98 h]; Operator [77.96 h]; Surveyor [38.98 h]; Surveyor Helper [38.98 h]; Loader [40 h]; Water Tanker [40 h]; Dump Truck [40 h]; Plate Compactor [40 h]; MH depth 2.51 - 3.5m [0.34] → Labor [71.72 h]; Foreman [35.86 h]; Operator [71.72 h]; Surveyor [35.86 h]; Surveyor Helper [35.86 h]; Loader [36.8 h]; Water Tanker [36.8 h]; Dump Truck [36.8 h]; Plate Compactor [36.8 h]; MH depth 2.51 - 3.5m [0.31] |
| 3 | **?2000** |  | 2026-09-17 → 2026-10-08 (+21d) |  |  |  |  |  |
| 4 | **Depth From 2.5m to 3.5m** |  | 2026-09-17 → 2026-10-08 (+21d) |  |  |  |  |  |
| B6.33 05 13.07.02 | Excavation & Compaction (85.00% Completed) |  | 2026-09-17 → 2026-09-15 A (-2d) | 89d → 88d | 85% → 100% | 114d → none |  | was named Excavation & Compaction; resources Labor [31.18 h]; Foreman [15.59 h]; Operator [31.18 h]; Surveyor [15.59 h]; Surveyor Helper [15.59 h]; Excavator (With Bucket) [16 h]; Water Tanker [16 h]; Dump Truck [16 h]; Plate Compactor [16 h]; Storm MH depth 2.51 - 3.5m [0.63] → Labor [26.51 h]; Foreman [13.25 h]; Operator [26.51 h]; Surveyor [13.25 h]; Surveyor Helper [13.25 h]; Excavator (With Bucket) [13.6 h]; Water Tanker [13.6 h]; Dump Truck [13.6 h]; Plate Compactor [13.6 h]; Storm MH depth 2.51 - 3.5m [0.54] |
| B6.33 05 13.07.03 | Blinding Conc, & RC Base (85.00% Completed) |  | 2026-09-17 → 2026-09-15 A (-2d) | 83d → 82d | 85% → 100% | 114d → none |  | was named Blinding Conc, & RC Base; resources Labor [46.78 h]; Foreman [23.39 h]; Laboratory Officer [23.39 h]; Carpenter [23.39 h]; Steelfixer [23.39 h]; Mason [23.39 h]; Storm MH depth 2.51 - 3.5m [0.42] → Labor [39.76 h]; Foreman [19.88 h]; Laboratory Officer [19.88 h]; Carpenter [19.88 h]; Steelfixer [19.88 h]; Mason [19.88 h]; Storm MH depth 2.51 - 3.5m [0.35] |
| B6.33 05 13.07.04 | Manhole Installation (85.00% Completed) |  | 2026-09-17 → 2026-09-15 A (-2d) | 77d → 76d | 85% → 100% | 114d → none |  | was named Manhole Installation; resources Labor [31.18 h]; Operator [31.18 h]; Surveyor [15.59 h]; Surveyor Helper [15.59 h]; Boom Truck [16 h]; Mobile Crane [16 h]; Storm MH depth 2.51 - 3.5m [1.97] → Labor [26.51 h]; Operator [26.51 h]; Surveyor [13.25 h]; Surveyor Helper [13.25 h]; Boom Truck [13.6 h]; Mobile Crane [13.6 h]; Storm MH depth 2.51 - 3.5m [1.67] |
| B6.33 05 13.07.05 | Test, Internal Finishing, Benching & Cover (85.00% Completed) |  | 2026-09-17 → 2026-09-15 A (-2d) | 75d → 74d | 85% → 100% | 114d → none |  | was named Test, Internal Finishing, Benching & Cover; resources Labor [62.37 h]; Foreman [31.18 h]; Plumber Helper [31.18 h]; Plumber [31.18 h]; Mason [31.18 h]; Storm MH depth 2.51 - 3.5m [0.42] → Labor [53.01 h]; Foreman [26.51 h]; Plumber Helper [26.51 h]; Plumber [26.51 h]; Mason [26.51 h]; Storm MH depth 2.51 - 3.5m [0.35] |
| B6.33 05 13.07.06 | Backfilling (85.00% Completed) |  | 2026-09-17 → 2026-09-15 A (-2d) | 74d → 73d | 85% → 100% | 65d → none |  | was named Backfilling; resources Labor [77.96 h]; Foreman [38.98 h]; Operator [77.96 h]; Surveyor [38.98 h]; Surveyor Helper [38.98 h]; Loader [40 h]; Water Tanker [40 h]; Dump Truck [40 h]; Plate Compactor [40 h]; Storm MH depth 2.51 - 3.5m [0.91] → Labor [66.27 h]; Foreman [33.13 h]; Operator [66.27 h]; Surveyor [33.13 h]; Surveyor Helper [33.13 h]; Loader [34 h]; Water Tanker [34 h]; Dump Truck [34 h]; Plate Compactor [34 h]; Storm MH depth 2.51 - 3.5m [0.77] |
| Catch Basins | **Catch Basins** |  | 2026-09-19 → 2026-10-10 (+21d) |  |  |  |  |  |
| Sing | **Single** |  | 2026-09-17 → 2026-10-03 (+16d) |  |  |  |  |  |
| B6.33 05 40.01.170 | Excavation, Compaction & Vapour Barrier |  |  |  |  |  | B6.33 05 13.07.02 SS → B6.33 05 13.05.02 |  |
| B6.33 05 40.01.180 | Blinding Conc. (90.00% Completed) |  | 2026-09-17 → 2026-09-15 A (-2d) | 111d → 110d | 90% → 100% | 114d → none |  | was named Blinding Conc.; resources Labor [31.18 h]; Foreman [15.59 h]; Laboratory Officer [15.59 h]; Carpenter [15.59 h]; Steelfixer [15.59 h]; Mason [15.59 h]; Single Catch basin [1.99] → Labor [28.07 h]; Foreman [14.03 h]; Laboratory Officer [14.03 h]; Carpenter [14.03 h]; Steelfixer [14.03 h]; Mason [14.03 h]; Single Catch basin [1.79] |
| B6.33 05 40.01.200 | Backfilling, DI Frame & Grate Cover Fixing (90.00% Completed) |  | 2026-09-17 → 2026-09-15 A (-2d) | 94d → 93d | 90% → 100% | 1d → none |  | was named Backfilling, DI Frame & Grate Cover Fixing; resources Labor [77.96 h]; Foreman [38.98 h]; Operator [77.96 h]; Surveyor [38.98 h]; Surveyor Helper [38.98 h]; Loader [40 h]; Water Tanker [40 h]; Dump Truck [40 h]; Plate Compactor [40 h]; Single Catch basin [5.96] → Labor [70.17 h]; Foreman [35.08 h]; Operator [70.17 h]; Surveyor [35.08 h]; Surveyor Helper [35.08 h]; Loader [36 h]; Water Tanker [36 h]; Dump Truck [36 h]; Plate Compactor [36 h]; Single Catch basin [5.36] |
| B6.33 05 40.01.190 | Catch Basin Installation (90.00% Completed) |  | 2026-09-17 → 2026-09-15 A (-2d) | 94d → 93d | 90% → 100% | 114d → none |  | was named Catch Basin Installation; resources Labor [46.78 h]; Foreman [23.39 h]; Carpenter [23.39 h]; Steelfixer [23.39 h]; Mason [23.39 h]; Operator [46.78 h]; Surveyor [23.39 h]; Surveyor Helper [23.39 h]; Boom Truck [24 h]; Single Catch basin [8.93] → Labor [42.1 h]; Foreman [21.05 h]; Carpenter [21.05 h]; Steelfixer [21.05 h]; Mason [21.05 h]; Operator [42.1 h]; Surveyor [21.05 h]; Surveyor Helper [21.05 h]; Boom Truck [21.6 h]; Single Catch basin [8.04] |
| Dou | **Double** |  | 2026-09-17 → 2026-10-08 (+21d) |  |  |  |  |  |
| B6.33 05 40.01.730 | Excavation, Compaction & Vapour Barrier (85.00% Completed) |  | 2026-09-17 → 2026-09-15 A (-2d) | 107d → 106d | 85% → 100% | 114d → none |  | was named Excavation, Compaction & Vapour Barrier; resources Labor [31.18 h]; Foreman [15.59 h]; Operator [31.18 h]; Surveyor [15.59 h]; Surveyor Helper [15.59 h]; Excavator (With Bucket) [16 h]; Water Tanker [16 h]; Dump Truck [16 h]; Roller Compactor [16 h]; Double Catch basin [0.6] → Labor [26.51 h]; Foreman [13.25 h]; Operator [26.51 h]; Surveyor [13.25 h]; Surveyor Helper [13.25 h]; Excavator (With Bucket) [13.6 h]; Water Tanker [13.6 h]; Dump Truck [13.6 h]; Roller Compactor [13.6 h]; Double Catch basin [0.51] |
| B6.33 05 40.01.740 | Blinding Conc. (85.00% Completed) |  | 2026-09-17 → 2026-09-15 A (-2d) | 105d → 104d | 85% → 100% | 114d → none |  | was named Blinding Conc.; resources Labor [31.18 h]; Foreman [15.59 h]; Laboratory Officer [15.59 h]; Carpenter [15.59 h]; Steelfixer [15.59 h]; Mason [15.59 h]; Double Catch basin [0.39] → Labor [26.51 h]; Foreman [13.25 h]; Laboratory Officer [13.25 h]; Carpenter [13.25 h]; Steelfixer [13.25 h]; Mason [13.25 h]; Double Catch basin [0.33] |
| B6.33 05 40.01.760 | Backfilling, DI Frame & Grate Cover Fixing (85.00% Completed) |  | 2026-09-17 → 2026-09-15 A (-2d) | 102d → 101d | 85% → 100% | 70d → none |  | was named Backfilling, DI Frame & Grate Cover Fixing; resources Labor [77.96 h]; Foreman [38.98 h]; Operator [77.96 h]; Surveyor [38.98 h]; Surveyor Helper [38.98 h]; Loader [40 h]; Water Tanker [40 h]; Dump Truck [40 h]; Plate Compactor [40 h]; Double Catch basin [1.19] → Labor [66.27 h]; Foreman [33.13 h]; Operator [66.27 h]; Surveyor [33.13 h]; Surveyor Helper [33.13 h]; Loader [34 h]; Water Tanker [34 h]; Dump Truck [34 h]; Plate Compactor [34 h]; Double Catch basin [1.01] |
| B6.33 05 40.01.750 | Catch Basin Installation (85.00% Completed) |  | 2026-09-17 → 2026-09-15 A (-2d) | 94.67d → 93.67d | 85% → 100% | 114d → none |  | was named Catch Basin Installation; resources Labor [46.78 h]; Foreman [23.39 h]; Carpenter [23.39 h]; Steelfixer [23.39 h]; Mason [23.39 h]; Operator [46.78 h]; Surveyor [23.39 h]; Surveyor Helper [23.39 h]; Boom Truck [24 h]; Double Catch basin [1.81] → Labor [39.76 h]; Foreman [19.88 h]; Carpenter [19.88 h]; Steelfixer [19.88 h]; Mason [19.88 h]; Operator [39.76 h]; Surveyor [19.88 h]; Surveyor Helper [19.88 h]; Boom Truck [20.4 h]; Double Catch basin [1.54] |
| UPVC | **UPVC** |  | 2026-09-19 → 2026-10-10 (+21d) |  |  |  |  |  |
| UPVC300 | **?300 From 0.0 to 1.5m** |  | 2026-09-19 → 2026-10-10 (+21d) |  |  |  |  |  |
| B6.33 42 11.35-102 | Fittings & Pipe Installation (50.00% Completed) |  | 2026-09-17 → 2026-09-15 A (-2d) | 126d → 125d | 50% → 100% | 114d → none |  | was named Fittings & Pipe Installation; resources Labor [31.18 h]; Foreman [15.59 h]; Plumber Helper [15.59 h]; Plumber [15.59 h]; Surveyor [15.59 h]; Surveyor Helper [15.59 h]; less than 1.5 [186.46] → Labor [15.59 h]; Foreman [7.8 h]; Plumber Helper [7.8 h]; Plumber [7.8 h]; Surveyor [7.8 h]; Surveyor Helper [7.8 h]; less than 1.5 [93.23] |
| B6.33 42 11.35-101 | Catch Basin Opening Prep. (83.46% Completed) |  | 2026-09-19 → 2026-09-15 A (-4d) | 89.09d → 88d | 83% → 100% | 113.91d → none |  | was named Catch Basin Opening Prep.; resources Labor [31.18 h]; Foreman [15.59 h]; Plumber Helper [15.59 h]; Plumber [15.59 h]; less than 1.5 [46.62] → Labor [26.03 h]; Foreman [13.01 h]; Plumber Helper [13.01 h]; Plumber [13.01 h]; less than 1.5 [38.91] |
| UPVC3001 | **?400 From 0.0 to 1.5m** |  | 2026-09-19 → 2026-10-10 (+21d) |  |  |  |  |  |
| B6.33 42 11.36-112 | Fittings & Pipe Installation (83.46% Completed) |  | 2026-09-19 → 2026-09-15 A (-4d) | 117.09d → 116d | 83% → 100% | 113.91d → none |  | was named Fittings & Pipe Installation; resources Labor [31.18 h]; Foreman [15.59 h]; Plumber Helper [15.59 h]; Plumber [15.59 h]; Surveyor [15.59 h]; Surveyor Helper [15.59 h]; less than 1.5 [50.4] → Labor [26.03 h]; Foreman [13.01 h]; Plumber Helper [13.01 h]; Plumber [13.01 h]; Surveyor [13.01 h]; Surveyor Helper [13.01 h]; less than 1.5 [42.07] |
| B6.33 42 11.36-111 | Catch Basin Opening Prep. (83.46% Completed) |  | 2026-09-19 → 2026-09-15 A (-4d) | 89.09d → 88d | 83% → 100% | 113.91d → none |  | was named Catch Basin Opening Prep.; resources Labor [31.18 h]; Foreman [15.59 h]; Plumber Helper [15.59 h]; Plumber [15.59 h]; less than 1.5 [12.6] → Labor [26.03 h]; Foreman [13.01 h]; Plumber Helper [13.01 h]; Plumber [13.01 h]; less than 1.5 [10.52] |
| Dry Networks | **Dry Networks** | 2026-09-16 → 2026-10-07 (+21d) | 2026-11-17 → 2026-12-02 (+15d) |  |  |  |  |  |
| MV | **Medium Voltage Network** | 2026-09-16 → 2026-10-07 (+21d) | 2026-10-17 → 2026-11-05 (+19d) |  |  |  |  |  |
| Duct Banks | **Duct Banks** | 2026-09-16 → 2026-10-07 (+21d) | 2026-10-17 → 2026-11-05 (+19d) |  |  |  |  |  |
| 4 Way | **4 Way** | 2026-09-16 → 2026-10-07 (+21d) | 2026-10-17 → 2026-11-05 (+19d) |  |  |  |  |  |
| B2.31 23 00.602 | Excavation | 2026-09-16 → 2026-10-07 (+21d) | 2026-09-19 → 2026-10-10 (+21d) |  |  | 34d → 32.32d |  |  |
| B2.33 71 00.212 | Shuttering, Steel Fixing Incl. UPVC Pipe & Conc. Cast | 2026-09-20 → 2026-10-11 (+21d) | 2026-09-28 → 2026-10-18 (+20d) |  |  | 34d → 32.32d |  |  |
| B2.33 71 00.213 | Backfilling & Warrning Tape | 2026-10-11 → 2026-10-31 (+20d) | 2026-10-17 → 2026-11-05 (+19d) |  |  | 34d → 32.32d | B2.33 71 00.212, B2.33 71 49.23.69, B2.33 71 49.23.70 → B2.33 71 00.212, B2.33 71 49.23.69, B2.33 71 49.23.70, B2.33 71 19 17_R |  |
| Cables | **Cables** | 2026-09-29 → 2026-10-19 (+20d) | 2026-10-10 → 2026-10-29 (+19d) |  |  |  |  |  |

| ID | Task | Start | Finish | Duration | Complete | Total float | Predecessors | Other |
| --- | --- | --- | --- | --- | --- | --- | --- | --- |
| 3C,500mm2 | **3C,500mm2** | 2026-09-29 → 2026-10-19 (+20d) | 2026-10-10 → 2026-10-29 (+19d) |  |  |  |  |  |
| B2.33 71 49.23.68 | Cable 13.8 kV Unarmored | 2026-09-29 → 2026-10-19 (+20d) | 2026-10-03 → 2026-10-22 (+19d) |  |  | 34d → 32.32d |  |  |
| B2.33 71 49.23.69 | Straight joints cables | 2026-10-04 → 2026-10-24 (+20d) | 2026-10-06 → 2026-10-26 (+20d) |  |  | 34d → 32.32d |  |  |
| B2.33 71 49.23.70 | Cable Termination | 2026-10-07 → 2026-10-27 (+20d) | 2026-10-10 → 2026-10-29 (+19d) |  |  | 34d → 32.32d |  |  |
| LV Network | **Low Voltage Network** | 2026-10-18 → 2026-11-07 (+20d) | 2026-10-31 → 2026-11-19 (+19d) |  |  |  |  |  |
| Duct Banks | **Duct Banks** | 2026-10-18 → 2026-11-07 (+20d) | 2026-10-31 → 2026-11-19 (+19d) |  |  |  |  |  |
| 2 Way | **2 Way** | 2026-10-18 → 2026-11-07 (+20d) | 2026-10-26 → 2026-11-15 (+20d) |  |  |  |  |  |
| B2.33 71 00 02 46 | Excavation | 2026-10-18 → 2026-11-07 (+20d) | 2026-10-19 → 2026-11-08 (+20d) |  |  | 62d → 62.32d |  |  |
| B2.33 71 00 02 47 | Shuttering, Steel Fixing Incl. UPVC Pipe & Conc. Cast | 2026-10-20 → 2026-11-09 (+20d) | 2026-10-22 → 2026-11-11 (+20d) |  |  | 67d → 64.32d |  |  |
| B2.33 71 00 02 48 | Backfilling & Warrning Tape | 2026-10-24 → 2026-11-12 (+19d) | 2026-10-26 → 2026-11-15 (+20d) |  |  | 67d → 64.32d |  |  |
| 4 Way | **4 Way** | 2026-10-20 → 2026-11-09 (+20d) | 2026-10-31 → 2026-11-19 (+19d) |  |  |  |  |  |
| B2.33 71 00 02 49 | Excavation | 2026-10-20 → 2026-11-09 (+20d) | 2026-10-21 → 2026-11-10 (+20d) |  |  | 62d → 62.32d | B2.33 71 00 02 46, DMM2-Proc-Delv-4748, DMM2-Proc-Delv-7199 → B2.33 71 00 02 46, DMM2-Proc-Delv-4748_R, DMM2-Proc-Delv-7199_R |  |
| B2.33 71 00 02 50 | Shuttering, Steel Fixing Incl. UPVC Pipe & Conc. Cast | 2026-10-22 → 2026-11-11 (+20d) | 2026-10-25 → 2026-11-14 (+20d) |  |  | 66d → 63.32d |  |  |
| B2.33 71 00 02 51 | Backfilling & Warrning Tape | 2026-10-28 → 2026-11-17 (+20d) | 2026-10-31 → 2026-11-19 (+19d) |  |  | 66d → 63.32d |  |  |
| Cables | **Cables** | 2026-10-26 → 2026-11-15 (+20d) | 2026-10-27 → 2026-11-16 (+20d) |  |  |  |  |  |
| 4C,10+1C,10mm2 | **4C,10+1C,10mm2** | 2026-10-26 → 2026-11-15 (+20d) | 2026-10-27 → 2026-11-16 (+20d) |  |  |  |  |  |
| B2.33 71 00 01 1 | Cable Pulling | 2026-10-26 → 2026-11-15 (+20d) | 2026-10-27 → 2026-11-16 (+20d) |  |  | 66d → 63.32d |  |  |
| Street Lighting | **Street Lighting** | 2026-10-18 → 2026-11-07 (+20d) | 2026-11-05 → 2026-12-02 (+27d) |  |  |  |  |  |
| Duct Banks | **Duct Banks** | 2026-10-22 → 2026-11-11 (+20d) | 2026-10-31 → 2026-11-19 (+19d) |  |  |  |  |  |
| 4 Way | **4 Way** | 2026-10-22 → 2026-11-11 (+20d) | 2026-10-31 → 2026-11-19 (+19d) |  |  |  |  |  |
| B2.33 71 00 02 52 | Excavation | 2026-10-22 → 2026-11-11 (+20d) | 2026-10-24 → 2026-11-12 (+19d) |  |  | 62d → 62.32d |  |  |
| B2.33 71 00 02 53 | Shuttering, Steel Fixing Incl. UPVC Pipe & Conc. Cast | 2026-10-25 → 2026-11-14 (+20d) | 2026-10-27 → 2026-11-16 (+20d) |  |  | 62d → 62.32d |  |  |
| B2.33 71 00 02 54 | Backfilling & Warrning Tape | 2026-10-28 → 2026-11-17 (+20d) | 2026-10-31 → 2026-11-19 (+19d) |  |  | 67d → 67.32d |  |  |
| Drawpits | **Drawpits** | 2026-10-25 → 2026-11-14 (+20d) | 2026-11-03 → 2026-11-23 (+20d) |  |  |  |  |  |
| B2.33 71 00 02 55 | Excavation | 2026-10-25 → 2026-11-14 (+20d) | 2026-10-27 → 2026-11-16 (+20d) |  |  | 64d → 62.32d |  |  |
| B2.33 71 00 02 56 | Drawpits Installation | 2026-10-28 → 2026-11-17 (+20d) | 2026-10-31 → 2026-11-19 (+19d) |  |  | 64d → 62.32d |  |  |
| B2.33 71 00 02 57 | Backfilling & Warrning Tape | 2026-11-01 → 2026-11-21 (+20d) | 2026-11-03 → 2026-11-23 (+20d) |  |  | 64d → 62.32d |  |  |
| Cables | **Cables** | 2026-10-28 → 2026-11-17 (+20d) | 2026-11-05 → 2026-11-25 (+20d) |  |  |  |  |  |
| 4C,10+1C,10mm2 | **4C,10+1C,10mm2** | 2026-10-28 → 2026-11-17 (+20d) | 2026-11-05 → 2026-11-25 (+20d) |  |  |  |  |  |
| B2.33 71 19 82 | Land Adjustment | 2026-10-28 → 2026-11-17 (+20d) | 2026-10-31 → 2026-11-19 (+19d) |  |  | 62d → 62.32d |  |  |
| B2.33 71 49.23.122 | Cable Pulling | 2026-11-01 → 2026-11-21 (+20d) | 2026-11-02 → 2026-11-22 (+20d) |  |  | 62d → 62.32d |  |  |
| B2.33 71 19 92 | Backfilling | 2026-11-03 → 2026-11-23 (+20d) | 2026-11-05 → 2026-11-25 (+20d) |  |  | 62d → 62.32d |  |  |
| SL Poles | **SL Poles** | 2026-10-18 → 2026-11-07 (+20d) | 2026-11-03 → 2026-12-02 (+29d) |  |  |  |  |  |
| Pole (10 M Sngl Arm) | **Pole (10 M Single Arm)** | 2026-10-18 → 2026-11-07 (+20d) | 2026-11-03 → 2026-12-02 (+29d) |  |  |  |  |  |
| B2.33 71 16.39 | Excavation | 2026-10-18 → 2026-11-07 (+20d) | 2026-10-20 → 2026-11-09 (+20d) |  |  | 69d → 69.32d |  |  |
| B2.33 71 16.40 | PC & RC Foundation | 2026-10-21 → 2026-11-10 (+20d) | 2026-10-24 → 2026-11-12 (+19d) |  |  | 69d → 69.32d |  |  |
| B2.33 71 16.41 | Lighting Poles Installation Incl power box, Cables | 2026-10-25 → 2026-11-14 (+20d) | 2026-10-27 → 2026-11-16 (+20d) |  |  | 69d → 69.32d |  |  |
| B2.26.56.19.3 | Lighting Luminares Inst | 2026-10-28 → 2026-11-17 (+20d) | 2026-10-29 → 2026-11-18 (+20d) |  |  | 69d → 69.32d |  |  |
| B2.33 71 16.42 | Backfilling, Grouting & Chamfering | 2026-10-31 → 2026-12-01 (+31d) | 2026-11-03 → 2026-12-02 (+29d) | 3d → 2d |  | 68.91d → 59.32d |  |  |
| Telecommunication | **Telecommunication Network** | 2026-11-01 → 2026-11-21 (+20d) | 2026-11-17 → 2026-12-01 (+14d) |  |  |  |  |  |
| Ducts | **Ducts** | 2026-11-01 → 2026-11-21 (+20d) | 2026-11-15 → 2026-11-28 (+13d) |  |  |  |  |  |
| (6*50mm) | **Size (6*50mm) HDPE ducts** | 2026-11-01 → 2026-11-21 (+20d) | 2026-11-10 → 2026-11-25 (+15d) |  |  |  |  |  |
| B2.1.33 81 26.69 | Excavation | 2026-11-01 → 2026-11-21 (+20d) | 2026-11-03 → 2026-11-21 (+18d) | 2d → 1d |  | 54.88d → 57.32d |  |  |
| B2.1.33 81 26.70 | HDPE Pipe, Shuttering, Steel Fixing & Conc. Cast | 2026-11-03 → 2026-11-22 (+19d) | 2026-11-07 → 2026-11-23 (+16d) | 3d → 2d |  | 63.88d → 62.32d |  |  |
| B2.1.33 81 26.71 | Backfilling & Warrning Tape | 2026-11-07 → 2026-11-24 (+17d) | 2026-11-10 → 2026-11-25 (+15d) | 3d → 2d |  | 63.88d → 62.32d | B2.1.33 81 26.70, B2.33 71 00.191, B2.33 71 00.171, B2.33 71 00.151 → B2.1.33 81 26.70, B2.33 71 00.191, B2.33 71 00.171_R, B2.33 71 00.151_R |  |
| (2*32mm) | **Size (2*32mm) HDPE ducts** | 2026-11-03 → 2026-11-22 (+19d) | 2026-11-12 → 2026-11-28 (+16d) |  |  |  |  |  |
| B2.1.33 81 26.78 | Excavation | 2026-11-03 → 2026-11-22 (+19d) | 2026-11-05 → 2026-11-22 (+17d) | 2d → 1d |  | 54.88d → 57.32d |  |  |
| B2.1.33 81 26.79 | HDPE Pipe, Shuttering, Steel Fixing & Conc. Cast | 2026-11-05 → 2026-11-23 (+18d) | 2026-11-09 → 2026-11-24 (+15d) | 3d → 2d |  | 61.88d → 63.32d |  |  |
| B2.1.33 81 26.80 | Backfilling & Warrning Tape | 2026-11-09 → 2026-11-26 (+17d) | 2026-11-12 → 2026-11-28 (+16d) | 3d → 2d |  | 61.88d → 62.32d | B2.1.33 81 26.79 → B2.1.33 81 26.79, B2.1.33 81 26.71 |  |
| (4*32mm) | **Size (4*32mm) HDPE ducts** | 2026-11-05 → 2026-11-23 (+18d) | 2026-11-15 → 2026-11-28 (+13d) |  |  |  |  |  |
| B2.1.33 81 26.81 | Excavation | 2026-11-05 → 2026-11-23 (+18d) | 2026-11-08 → 2026-11-23 (+15d) | 2d → 1d |  | 59.88d → 62.32d |  |  |
| B2.1.33 81 26.82 | HDPE Pipe, Shuttering, Steel Fixing & Conc. Cast | 2026-11-08 → 2026-11-24 (+16d) | 2026-11-11 → 2026-11-25 (+14d) | 3d → 2d |  | 59.88d → 62.32d |  |  |
| B2.1.33 81 26.83 | Backfilling & Warrning Tape | 2026-11-11 → 2026-11-26 (+15d) | 2026-11-15 → 2026-11-28 (+13d) | 3d → 2d |  | 59.88d → 62.32d |  |  |
| Manholes | **Manholes** | 2026-11-05 → 2026-11-23 (+18d) | 2026-11-14 → 2026-11-30 (+16d) |  |  |  |  |  |
| Manhole Type 2 | **Manhole Type 2** | 2026-11-05 → 2026-11-23 (+18d) | 2026-11-14 → 2026-11-30 (+16d) |  |  |  |  |  |
| B2.31 23 00.607 | Excavation | 2026-11-05 → 2026-11-23 (+18d) | 2026-11-08 → 2026-11-23 (+15d) | 2d → 1d |  | 54.88d → 57.32d |  |  |
| B2.33 71 00.222 | Manhole Installation | 2026-11-08 → 2026-11-24 (+16d) | 2026-11-10 → 2026-11-24 (+14d) | 2d → 1d |  | 60.88d → 65.32d |  |  |
| B2.33 71 00.223 | Backfilling & Warrning Tape | 2026-11-10 → 2026-11-29 (+19d) | 2026-11-14 → 2026-11-30 (+16d) | 3d → 2d |  | 60.88d → 62.32d | B2.33 71 00.222 → B2.33 71 00.222, B2.1.33 81 26.80, B2.1.33 81 26.83 |  |
| Crossing Ducts | **Road Crossing Ducts** | 2026-11-08 → 2026-11-24 (+16d) | 2026-11-17 → 2026-12-01 (+14d) |  |  |  |  |  |
| 1 | **Size (6*50mm) HDPE** | 2026-11-08 → 2026-11-24 (+16d) | 2026-11-17 → 2026-11-29 (+12d) |  |  |  |  |  |
| B2.31 23 00.608 | Excavation | 2026-11-08 → 2026-11-24 (+16d) | 2026-11-10 → 2026-11-24 (+14d) | 2d → 1d |  | 54.88d → 57.32d |  |  |
| B2.33 71 00.224 | Shuttering, Steel Fixing Incl. UPVC Pipe & Conc. Cast | 2026-11-10 → 2026-11-25 (+15d) | 2026-11-14 → 2026-11-26 (+12d) | 3d → 2d |  | 61.88d → 65.32d |  |  |
| B2.33 71 00.225 | Backfilling & Warrning Tape | 2026-11-14 → 2026-11-28 (+14d) | 2026-11-17 → 2026-11-29 (+12d) | 3d → 2d |  | 61.88d → 65.32d |  |  |
| 2 | **Size (2*32mm) HDPE** | 2026-11-08 → 2026-11-25 (+17d) | 2026-11-14 → 2026-12-01 (+17d) |  |  |  |  |  |
| B2.31 23 00.609 | Excavation | 2026-11-08 → 2026-11-25 (+17d) | 2026-11-10 → 2026-11-25 (+15d) | 2d → 1d |  | 54.88d → 57.32d | B2.31 23 00.608 SS → B2.31 23 00.608 |  |
| B2.33 71 00.226 | Shuttering, Steel Fixing Incl. UPVC Pipe & Conc. Cast | 2026-11-10 → 2026-11-26 (+16d) | 2026-11-11 → 2026-11-28 (+17d) | 1d → 2d |  | 64.88d → 64.32d |  |  |
| B2.33 71 00.227 | Backfilling & Warrning Tape | 2026-11-11 → 2026-11-30 (+19d) | 2026-11-14 → 2026-12-01 (+17d) |  |  | 64.88d → 63.32d | B2.33 71 00.226, B2.1.33 81 26.68 SS → B2.33 71 00.226, B2.1.33 81 26.68 |  |
| Earth & Road Works | **Earth & Road Works** |  | 2026-11-19 → 2026-12-09 (+20d) |  |  |  |  |  |
| Earth Layers | **Earth Layers** |  | 2026-09-17 → 2026-10-08 (+21d) |  |  |  |  |  |
| B1.2.32 11 13.01.4 | Subgrade (65.00% Completed) |  | 2026-09-17 → 2026-09-15 A (-2d) | 162.28d → 161.23d | 65% → 100% | 48.95d → none |  | was named Subgrade; resources Subgrade [1107.99]; Labor [46.78 h]; Foreman [23.39 h]; Operator [46.78 h]; Surveyor [23.39 h]; Surveyor Helper [23.39 h]; Grader [24 h]; Loader [24 h]; Water Tanker [24 h]; Dump Truck [24 h]; Plate Compactor [24 h]; Roller Compactor [24 h] → Subgrade [720.19]; Labor [30.41 h]; Foreman [15.2 h]; Operator [30.41 h]; Surveyor [15.2 h]; Surveyor Helper [15.2 h]; Grader [15.6 h]; Loader [15.6 h]; Water Tanker [15.6 h]; Dump Truck [15.6 h]; Plate Compactor [15.6 h]; Roller Compactor [15.6 h] |

| ID | Task | Start | Finish | Duration | Complete | Total float | Predecessors | Other |
| --- | --- | --- | --- | --- | --- | --- | --- | --- |
| B1.2.32 11 23.01.4 | Aggregate Base Course (59.00% Completed) |  | 2026-09-17 → 2026-09-15 A (-2d) | 85.23d → 84d | 59% → 100% | 48.77d → none |  | was named Aggregate Base Course; resources Aggregate base course [738.65]; Labor [46.78 h]; Foreman [23.39 h]; Operator [46.78 h]; Surveyor [23.39 h]; Surveyor Helper [23.39 h]; Grader [24 h]; Loader [24 h]; Water Tanker [24 h]; Dump Truck [24 h]; Plate Compactor [24 h]; Roller Compactor [24 h] → Aggregate base course [435.81]; Labor [27.6 h]; Foreman [13.8 h]; Operator [27.6 h]; Surveyor [13.8 h]; Surveyor Helper [13.8 h]; Grader [14.16 h]; Loader [14.16 h]; Water Tanker [14.16 h]; Dump Truck [14.16 h]; Plate Compactor [14.16 h]; Roller Compactor [14.16 h] |
| Interlock | **Interlock** | 2026-11-03 → 2026-12-03 (+30d) | 2026-11-05 → 2026-12-05 (+30d) |  |  |  |  |  |
| B1.2.32 14 13.13.4 | 60mm thick - Interlocking Block Pavers | 2026-11-03 → 2026-12-03 (+30d) | 2026-11-05 → 2026-12-05 (+30d) |  |  | 68.91d → 59.32d | B1.2.32 11 23.01.4, B2.33 71 16.42 → B1.2.32 11 23.01.4_R, B2.33 71 16.42 |  |
| Curbstone | **Curbstone** | 2026-09-27 → 2026-10-15 (+18d) | 2026-10-13 → 2026-11-01 (+19d) |  |  |  |  |  |
| Pre Install | **Pre-Installation** | 2026-09-27 → 2026-10-15 (+18d) | 2026-10-04 → 2026-10-22 (+18d) |  |  |  |  |  |
| B2.31 23 00.91 | Excavation | 2026-09-27 → 2026-10-15 (+18d) | 2026-09-29 → 2026-10-18 (+19d) |  |  | 25.76d → 28d |  |  |
| B1.2.32 14 13.13.24 | PCC | 2026-09-29 → 2026-10-18 (+19d) | 2026-10-01 → 2026-10-20 (+19d) |  |  | 25.76d → 28d |  |  |
| 32 16 13.004 | Haunching | 2026-10-01 → 2026-10-20 (+19d) | 2026-10-04 → 2026-10-22 (+18d) |  |  | 25.76d → 28d |  |  |
| Installation | **Installation** | 2026-10-04 → 2026-10-22 (+18d) | 2026-10-11 → 2026-10-29 (+18d) |  |  |  |  |  |
| B1.2.32 16.13.01.4 | Curb Stone, Type K1 | 2026-10-04 → 2026-10-22 (+18d) | 2026-10-06 → 2026-10-25 (+19d) |  |  | 25.76d → 28d |  |  |
| B1.2.32 16.13.03.4 | Edge Curb, Type K4 | 2026-10-06 → 2026-10-25 (+19d) | 2026-10-08 → 2026-10-27 (+19d) |  |  | 25.76d → 28d |  |  |
| B1.2.32 16.13.044 | Heel Curb, Type K5 | 2026-10-08 → 2026-10-27 (+19d) | 2026-10-11 → 2026-10-29 (+18d) |  |  | 25.76d → 28d |  |  |
| Finishing | **Finishing** | 2026-10-11 → 2026-10-29 (+18d) | 2026-10-13 → 2026-11-01 (+19d) |  |  |  |  |  |
| 32 16 13.04 | Finishing, Fareface | 2026-10-11 → 2026-10-29 (+18d) | 2026-10-13 → 2026-11-01 (+19d) |  |  | 25.76d → 28d |  |  |
| Asphalt Layers | **Asphalt Layers** | 2026-09-21 → 2026-10-12 (+21d) | 2026-09-29 → 2026-10-19 (+20d) |  |  |  |  |  |
| B1.2.32 11 26.01.4 | Bituminous Base Course including Prime Coat (MC1) and tack coat (RC2) | 2026-09-21 → 2026-10-12 (+21d) | 2026-09-22 → 2026-10-13 (+21d) |  |  | 46d → 47.32d | B1.2.32 11 23.01.4, B1.2.32 11 26.01.5, B1.1.31 23 23.112 → B1.2.32 11 23.01.4_R, B1.2.32 11 26.01.5, B1.1.31 23 23.112 |  |
| B1.2.32 12 16.01.4 | Bituminous concrete Wearing Course, including tack coat (RC2) | 2026-09-24 → 2026-10-14 (+20d) | 2026-09-29 → 2026-10-19 (+20d) |  |  | 46d → 47.32d |  |  |
| Pavement Marking | **Pavement Marking** | 2026-09-30 → 2026-10-20 (+20d) | 2026-10-01 → 2026-10-21 (+20d) |  |  |  |  |  |
| B1.2.32 17 23.01.4 | Retroreflective Thermoplastic White Traffic lines | 2026-09-30 → 2026-10-20 (+20d) | 2026-10-01 → 2026-10-21 (+20d) |  |  | 98d → 97.32d |  |  |
| B1.2.32 17 23.02.4 | Retroreflective Thermoplastic Yellow, Traffic lines | 2026-09-30 → 2026-10-20 (+20d) | 2026-10-01 → 2026-10-21 (+20d) |  |  | 98d → 97.32d |  |  |
| Traffic Signs | **Traffic Signs** | 2026-09-27 → 2026-10-15 (+18d) | 2026-11-19 → 2026-12-09 (+20d) |  |  |  |  |  |
| Pre Install | **Pre-Installation** | 2026-09-27 → 2026-10-15 (+18d) | 2026-11-18 → 2026-12-08 (+20d) |  |  |  |  |  |
| B2.31 23 00.101 | Excavation | 2026-09-27 → 2026-10-15 (+18d) | 2026-09-29 → 2026-10-18 (+19d) |  |  | 28.76d → 28d |  |  |
| 10 14 53.04 | Foundation | 2026-11-17 → 2026-12-07 (+20d) | 2026-11-18 → 2026-12-08 (+20d) |  |  | 8d → 6.32d |  |  |
| Installation | **Installation** | 2026-11-05 → 2026-12-06 (+31d) | 2026-11-19 → 2026-12-09 (+20d) |  |  |  |  |  |
| B1.2.10 14 53.014 | 1 Sheet Alumenium, Single post | 2026-11-05 → 2026-12-06 (+31d) | 2026-11-07 → 2026-12-06 (+29d) |  |  | 68.91d → 59.32d |  |  |
| B1.2.10 14 14.01.4 | Ground mounted, 1 Sheet Alumenium, Single post | 2026-11-19 → 2026-12-09 (+20d) | 2026-11-19 → 2026-12-09 (+20d) |  |  | 57d → 56.32d |  |  |
| Landscape | **Landscape** | 2026-09-29 → 2026-10-18 (+19d) | 2026-12-16 → 2027-01-04 (+19d) |  |  |  |  |  |
| Fences | **Fences** | 2026-09-29 → 2026-10-18 (+19d) | 2026-12-16 → 2027-01-04 (+19d) |  |  |  |  |  |
| (ZATCA HCIS) | **Steel fence (ZATCA HCIS)** | 2026-09-29 → 2026-10-18 (+19d) | 2026-12-16 → 2027-01-04 (+19d) |  |  |  |  |  |
| B7.32 93 43.04.14 | Earthwork | 2026-09-29 → 2026-10-18 (+19d) | 2026-10-05 → 2026-10-24 (+19d) |  |  | 28.76d → 28d |  |  |
| B7.32 93 43.04.50 | Foundation | 2026-11-12 → 2026-12-02 (+20d) | 2026-11-18 → 2026-12-08 (+20d) |  |  | 8d → 6.32d |  |  |
| B7.32 93 43.04.56 | Fence Installation | 2026-12-10 → 2026-12-29 (+19d) | 2026-12-16 → 2027-01-04 (+19d) |  |  | 6.76d → 6d |  |  |
| (MODON) fence | **Steel fence (MODON)** | 2026-10-05 → 2026-10-24 (+19d) | 2026-12-07 → 2026-12-27 (+20d) |  |  |  |  |  |
| B7.32 93 43.04.12 | Earthwork | 2026-10-05 → 2026-10-24 (+19d) | 2026-10-12 → 2026-10-31 (+19d) |  |  | 28.76d → 28d |  |  |
| B7.32 93 43.04.48 | Foundation | 2026-11-19 → 2026-12-09 (+20d) | 2026-11-22 → 2026-12-12 (+20d) |  |  | 8d → 6.32d |  |  |
| B7.32 93 43.04.54 | Fence Installation | 2026-12-05 → 2026-12-24 (+19d) | 2026-12-07 → 2026-12-27 (+20d) |  |  | 12d → 10.32d |  |  |
| Gates | **Gates** | 2026-11-05 → 2026-11-25 (+20d) | 2026-11-29 → 2026-12-19 (+20d) |  |  |  |  |  |
| Size (4.35x 2.7)m | **Size (4.35x 2.7)m** | 2026-11-05 → 2026-11-25 (+20d) | 2026-11-29 → 2026-12-19 (+20d) |  |  |  |  |  |
| B7.32 93 43.04.10 | Earthwork | 2026-11-05 → 2026-11-25 (+20d) | 2026-11-10 → 2026-11-30 (+20d) |  |  | 8d → 6.32d |  |  |
| B7.32 93 43.04.46 | Foundation | 2026-11-23 → 2026-12-13 (+20d) | 2026-11-25 → 2026-12-15 (+20d) |  |  | 8d → 6.32d |  |  |
| B7.32 93 43.04.52 | Gate Installation | 2026-11-26 → 2026-12-16 (+20d) | 2026-11-29 → 2026-12-19 (+20d) |  |  | 8d → 6.32d |  |  |
| Geotextile | **Geotextile** | 2026-11-03 → 2026-11-23 (+20d) | 2026-11-16 → 2026-12-06 (+20d) |  |  |  |  |  |
| B7.31 32 19.23.2 | Geotextile to protect trees planting soil | 2026-11-03 → 2026-11-23 (+20d) | 2026-11-08 → 2026-11-28 (+20d) |  |  | 32d → 30.32d |  |  |
| B7.31 32 19.23.3 | Geotextile below gravel bed | 2026-11-11 → 2026-12-01 (+20d) | 2026-11-16 → 2026-12-06 (+20d) |  |  | 8d → 6.32d |  |  |
| Trees | **Trees** | 2026-12-01 → 2026-12-21 (+20d) | 2026-12-07 → 2026-12-27 (+20d) |  |  |  |  |  |
| B7.32 93 43.01 | Azadirachta indica | 2026-12-01 → 2026-12-21 (+20d) | 2026-12-03 → 2026-12-23 (+20d) |  |  | 10d → 8.32d |  |  |
| B7.32 93 43.04 | Delonix Regia | 2026-12-05 → 2026-12-24 (+19d) | 2026-12-07 → 2026-12-27 (+20d) |  |  | 10d → 8.32d | B1.2.32 11 13.01.4, B7.32 93 43.01, B1.2.32 12 16.01.4, DMM2-Proc-Delv-7333 → B1.2.32 11 13.01.4_R, B7.32 93 43.01, B1.2.32 12 16.01.4, DMM2-Proc-Delv-7333 |  |
| B7.32 93 43.06 | Schinus Molle | 2026-12-05 → 2026-12-24 (+19d) | 2026-12-07 → 2026-12-27 (+20d) |  |  | 10d → 8.32d | B1.2.32 11 13.01.4, B7.32 93 43.04 FF, B1.2.32 12 16.01.4, DMM2-Proc-Delv-7333 → B1.2.32 11 13.01.4_R, B7.32 93 43.04 FF, B1.2.32 12 16.01.4, DMM2-Proc-Delv-7333 |  |
| Entrance Road 02 | **Entrance Road 02** |  | 2026-12-21 → 2027-01-09 (+19d) |  |  |  |  |  |
| Wet Networks | **Wet Networks** |  | 2026-11-09 → 2026-11-26 (+17d) |  |  |  |  |  |
| Sewerage Network | **Sewerage Network** |  | 2026-10-24 → 2026-11-17 (+24d) |  |  |  |  |  |
| GRP | **GRP Pipes** |  | 2026-09-22 → 2026-10-12 (+20d) |  |  |  |  |  |
| 200 | **?200** |  | 2026-09-22 → 2026-10-12 (+20d) |  |  |  |  |  |
| 3 | **Depth From 1.5m to 2.5m** |  | 2026-09-22 → 2026-10-12 (+20d) |  |  |  |  |  |
| B5.33 31 00.02.02 5 | Backfilling & Warrning Tape (7.31% Completed) |  | 2026-09-22 → 2026-09-15 A (-7d) | 139.79d → 135.12d | 7% → 100% | 110d → none |  | was named Backfilling & Warrning Tape; resources Labor [77.96 h]; Foreman [38.98 h]; Operator [155.92 h]; Surveyor [38.98 h]; Surveyor Helper [38.98 h]; Loader [40 h]; Water Tanker [40 h]; Dump Truck [40 h]; Plate Compactor [40 h]; Roller Compactor [40 h]; Sew Dia. 200mm Depth: 1.51m - 2.5m [45.46] → Labor [5.7 h]; Foreman [2.85 h]; Operator [11.4 h]; Surveyor [2.85 h]; Surveyor Helper [2.85 h]; Loader [2.92 h]; Water Tanker [2.92 h]; Dump Truck [2.92 h]; Plate Compactor [2.92 h]; Roller Compactor [2.92 h]; Sew Dia. 200mm Depth: 1.51m - 2.5m [3.32] |
| Manholes | **Manholes ?1200** |  | 2026-09-20 → 2026-10-11 (+21d) |  |  |  |  |  |
| 2 | **Depth From 0.0m to 1.5m** |  | 2026-09-20 → 2026-10-11 (+21d) |  |  |  |  |  |
| B5.33 05 13.01 4 | Test, Internal Finishing, Benching & Cover (41.14% Completed) |  | 2026-09-19 → 2026-09-15 A (-4d) | 80.56d → 78d | 41% → 100% | 113.44d → none |  | was named Test, Internal Finishing, Benching & Cover; resources Labor [62.37 h]; Foreman [31.18 h]; Plumber Helper [31.18 h]; Plumber [31.18 h]; Mason [31.18 h]; MH depth 0 - 1.5m [0.27] → Labor [25.66 h]; Foreman [12.83 h]; Plumber Helper [12.83 h]; Plumber [12.83 h]; Mason [12.83 h]; MH depth 0 - 1.5m [0.11] |
| B5.33 05 13.01 5 | Backfilling (41.14% Completed) |  | 2026-09-20 → 2026-09-15 A (-5d) | 77.75d → 74.67d | 41% → 100% | 112.92d → none |  | was named Backfilling; resources Labor [77.96 h]; Foreman [38.98 h]; Operator [77.96 h]; Surveyor [38.98 h]; Surveyor Helper [38.98 h]; Loader [40 h]; Water Tanker [40 h]; Dump Truck [40 h]; Plate Compactor [40 h]; MH depth 0 - 1.5m [0.55] → Labor [32.08 h]; Foreman [16.04 h]; Operator [32.08 h]; Surveyor [16.04 h]; Surveyor Helper [16.04 h]; Loader [16.46 h]; Water Tanker [16.46 h]; Dump Truck [16.46 h]; Plate Compactor [16.46 h]; MH depth 0 - 1.5m [0.23] |
| 3 | **Depth From 1.5m to 2.5m** |  | 2026-09-20 → 2026-10-11 (+21d) |  |  |  |  |  |
| B5.33 05 13.02 2 | Blinding Conc, & RC Base (41.14% Completed) |  | 2026-09-19 → 2026-09-15 A (-4d) | 118.04d → 116d | 41% → 100% | 113d → none |  | was named Blinding Conc, & RC Base; resources Labor [46.78 h]; Foreman [23.39 h]; Laboratory Officer [23.39 h]; Carpenter [23.39 h]; Steelfixer [23.39 h]; Mason [23.39 h]; MH depth 1.51 - 2.5m [0.45] → Labor [19.25 h]; Foreman [9.62 h]; Laboratory Officer [9.62 h]; Carpenter [9.62 h]; Steelfixer [9.62 h]; Mason [9.62 h]; MH depth 1.51 - 2.5m [0.18] |
| B5.33 05 13.02 3 | Manhole Installation (41.14% Completed) |  | 2026-09-17 → 2026-09-15 A (-2d) | 88.52d → 87d | 41% → 100% | 114.48d → none |  | was named Manhole Installation; resources Labor [31.18 h]; Operator [31.18 h]; Surveyor [15.59 h]; Surveyor Helper [15.59 h]; Boom Truck [16 h]; Mobile Crane [16 h]; MH depth 1.51 - 2.5m [1.99] → Labor [12.83 h]; Operator [12.83 h]; Surveyor [6.42 h]; Surveyor Helper [6.42 h]; Boom Truck [6.58 h]; Mobile Crane [6.58 h]; MH depth 1.51 - 2.5m [0.82] |
| B5.33 05 13.02 4 | Test, Internal Finishing, Benching & Cover (41.14% Completed) |  | 2026-09-19 → 2026-09-15 A (-4d) | 83.56d → 81d | 41% → 100% | 113.44d → none |  | was named Test, Internal Finishing, Benching & Cover; resources Labor [62.37 h]; Foreman [31.18 h]; Plumber Helper [31.18 h]; Plumber [31.18 h]; Mason [31.18 h]; MH depth 1.51 - 2.5m [0.55] → Labor [25.66 h]; Foreman [12.83 h]; Plumber Helper [12.83 h]; Plumber [12.83 h]; Mason [12.83 h]; MH depth 1.51 - 2.5m [0.23] |
| B5.33 05 13.02 5 | Backfilling (41.14% Completed) |  | 2026-09-20 → 2026-09-15 A (-5d) | 77.75d → 74.67d | 41% → 100% | 107.92d → none |  | was named Backfilling; resources Labor [77.96 h]; Foreman [38.98 h]; Operator [77.96 h]; Surveyor [38.98 h]; Surveyor Helper [38.98 h]; Loader [40 h]; Water Tanker [40 h]; Dump Truck [40 h]; Plate Compactor [40 h]; MH depth 1.51 - 2.5m [0.88] → Labor [32.08 h]; Foreman [16.04 h]; Operator [32.08 h]; Surveyor [16.04 h]; Surveyor Helper [16.04 h]; Loader [16.46 h]; Water Tanker [16.46 h]; Dump Truck [16.46 h]; Plate Compactor [16.46 h]; MH depth 1.51 - 2.5m [0.36] |
| Sew Plot Connection | **Sewerage Plot Connection** | 2026-09-20 → 2026-10-14 (+24d) | 2026-10-08 → 2026-11-17 (+40d) |  |  |  |  |  |
| B5..33 31 16.011 | Excavation | 2026-09-20 → 2026-10-14 (+24d) | 2026-09-21 → 2026-10-26 (+35d) | 2d → 10d |  | 93d → 74.1d | B5.33 05 63.011, B1.1.31 23 23.2 → B5.33 05 63.011, B1.1.31 23 23.2, B1.1.31 23 16.02_R |  |
| B5..33 31 16.012 | Sand Bedding | 2026-09-22 → 2026-10-26 (+34d) | 2026-09-24 → 2026-10-28 (+34d) |  |  | 93d → 74.1d |  |  |
| B5..33 31 16.013 | Pipe Laying, Fittings | 2026-09-26 → 2026-10-28 (+32d) | 2026-09-28 → 2026-11-01 (+34d) |  |  | 93d → 74.1d |  |  |
| B5..33 31 16.014 | Embedment & Test | 2026-09-29 → 2026-11-01 (+33d) | 2026-10-03 → 2026-11-05 (+33d) |  |  | 93d → 74.1d |  |  |

| ID | Task | Start | Finish | Duration | Complete | Total float | Predecessors | Other |
| --- | --- | --- | --- | --- | --- | --- | --- | --- |
| B5..33 31 16.015 | Backfilling & Warrning Tape | 2026-10-04 → 2026-11-05 (+32d) | 2026-10-08 → 2026-11-17 (+40d) | 5d → 10d |  | 93d → 74.1d |  |  |
| Discharge Ch | **Discharge Chamber** | 2026-09-16 → 2026-10-07 (+21d) | 2026-10-24 → 2026-11-04 (+11d) |  |  |  |  |  |
| B5.33 05 63.011 | Excavation & Compaction | 2026-09-16 → 2026-10-07 (+21d) | 2026-09-19 → 2026-10-10 (+21d) |  |  | 88d → 77.32d |  |  |
| B5.33 05 63.012 | Blinding Conc, & RC Base | 2026-09-20 → 2026-10-11 (+21d) | 2026-09-22 → 2026-10-13 (+21d) |  |  | 88d → 92.32d |  |  |
| B5.33 05 63.013 | Chamber Installation | 2026-09-29 → 2026-10-19 (+20d) | 2026-10-05 → 2026-10-25 (+20d) |  |  | 84d → 88.32d | B5.33 05 63.012, DMM2-Proc-Delv-2328, DMM2-Proc-Delv-1888 → B5.33 05 63.012, DMM2-Proc-Delv-2328_R, DMM2-Proc-Delv-1888 |  |
| B5.33 05 63.014 | Test, Internal Finishing, Benching & Cover | 2026-10-06 → 2026-10-26 (+20d) | 2026-10-10 → 2026-10-29 (+19d) |  |  | 91d → 88.32d |  |  |
| B5.33 05 63.015 | Backfilling | 2026-10-19 → 2026-10-31 (+12d) | 2026-10-24 → 2026-11-04 (+11d) |  |  | 84d → 88.32d | B5.33 05 63.014, B5.33 05 13.02 5, B5.33 31 23.01-1.28, B6.33 05 39.01.767 → B5.33 05 63.014, B5.33 05 13.02 5_R |  |
| Stormwater Network | **Stormwater Network** |  | 2026-11-09 → 2026-10-27 (-13d) |  |  |  |  |  |
| GRP | **GRP** |  | 2026-11-09 → 2026-10-11 (-29d) |  |  |  |  |  |
| ?400 | **?400** |  | 2026-11-09 → 2026-10-11 (-29d) |  |  |  |  |  |
| 3 | **Depth From 1.5m to 2.5m** |  | 2026-11-09 → 2026-10-11 (-29d) |  |  |  |  |  |
| B6.33 42 11.02 1 | Excavation |  |  |  |  |  | B5.33 31 00.02.02 5 SS → B1.2.31 23 16.01.4 |  |
| B6.33 42 11.02 5 | Backfilling & Warrning Tape (69.15% Completed) |  | 2026-11-09 → 2026-09-15 A (-55d) | 139.12d → 137d | 69% → 100% | 70d → none | B6.33 42 11.02 4, B6.33 42 11.34.5 FF → B6.33 42 11.02 4 | was named Backfilling & Warrning Tape; resources Labor [77.96 h]; Foreman [38.98 h]; Operator [155.92 h]; Surveyor [38.98 h]; Surveyor Helper [38.98 h]; Loader [40 h]; Water Tanker [40 h]; Dump Truck [40 h]; Plate Compactor [40 h]; Roller Compactor [40 h]; Depth: 1.51m - 2.5m [2] → Labor [53.91 h]; Foreman [26.96 h]; Operator [107.83 h]; Surveyor [26.96 h]; Surveyor Helper [26.96 h]; Loader [27.66 h]; Water Tanker [27.66 h]; Dump Truck [27.66 h]; Plate Compactor [27.66 h]; Roller Compactor [27.66 h]; Depth: 1.51m - 2.5m [1.38] |
| Strom Manholes | **Manholes** |  | 2026-09-17 → 2026-10-21 (+34d) |  |  |  |  |  |
| 1 | **?1200** |  | 2026-09-17 → 2026-10-21 (+34d) |  |  |  |  |  |
| 3 | **Depth From 1.5m to 2.5m** |  | 2026-09-17 → 2026-10-21 (+34d) |  |  |  |  |  |
| B6.33 05 13.01 3 | Manhole Installation (78.85% Completed) |  | 2026-09-17 → 2026-09-15 A (-2d) | 86d → 85d | 79% → 100% | 114d → none |  | was named Manhole Installation; resources Labor [31.18 h]; Operator [31.18 h]; Surveyor [15.59 h]; Surveyor Helper [15.59 h]; Boom Truck [16 h]; Mobile Crane [16 h]; MH depth 1.50 - 2.5m [4.3] → Labor [24.59 h]; Operator [24.59 h]; Surveyor [12.29 h]; Surveyor Helper [12.29 h]; Boom Truck [12.62 h]; Mobile Crane [12.62 h]; MH depth 1.50 - 2.5m [3.39] |
| B6.33 05 13.01 4 | Test, Internal Finishing, Benching & Cover (78.85% Completed) |  | 2026-09-17 → 2026-09-15 A (-2d) | 84d → 83d | 79% → 100% | 114d → none |  | was named Test, Internal Finishing, Benching & Cover; resources Labor [62.37 h]; Foreman [31.18 h]; Plumber Helper [31.18 h]; Plumber [31.18 h]; Mason [31.18 h]; MH depth 1.50 - 2.5m [1.07] → Labor [49.18 h]; Foreman [24.59 h]; Plumber Helper [24.59 h]; Plumber [24.59 h]; Mason [24.59 h]; MH depth 1.50 - 2.5m [0.85] |
| B6.33 05 13.01 5 | Backfilling (78.85% Completed) |  | 2026-09-17 → 2026-09-15 A (-2d) | 81d → 80d | 79% → 100% | 114d → none |  | was named Backfilling; resources Labor [77.96 h]; Foreman [38.98 h]; Operator [77.96 h]; Surveyor [38.98 h]; Surveyor Helper [38.98 h]; Loader [40 h]; Water Tanker [40 h]; Dump Truck [40 h]; Plate Compactor [40 h]; MH depth 1.50 - 2.5m [2.15] → Labor [61.47 h]; Foreman [30.74 h]; Operator [61.47 h]; Surveyor [30.74 h]; Surveyor Helper [30.74 h]; Loader [31.54 h]; Water Tanker [31.54 h]; Dump Truck [31.54 h]; Plate Compactor [31.54 h]; MH depth 1.50 - 2.5m [1.69] |
| 3 | **?2000** |  | 2026-09-17 → 2026-10-08 (+21d) |  |  |  |  |  |
| 4 | **Depth From 2.5m to 3.5m** |  | 2026-09-17 → 2026-10-08 (+21d) |  |  |  |  |  |
| B6.33 05 13.07 2 | Blinding Conc, & RC Base (78.85% Completed) |  | 2026-09-17 → 2026-09-15 A (-2d) | 86d → 85d | 79% → 100% | 114d → none |  | was named Blinding Conc, & RC Base; resources Labor [46.78 h]; Foreman [23.39 h]; Laboratory Officer [23.39 h]; Carpenter [23.39 h]; Steelfixer [23.39 h]; Mason [23.39 h]; Storm MH depth 2.51 - 3.5m [0.42] → Labor [36.88 h]; Foreman [18.44 h]; Laboratory Officer [18.44 h]; Carpenter [18.44 h]; Steelfixer [18.44 h]; Mason [18.44 h]; Storm MH depth 2.51 - 3.5m [0.33] |
| B6.33 05 13.07 4 | Test, Internal Finishing, Benching & Cover (88.00% Completed) |  | 2026-09-17 → 2026-09-15 A (-2d) | 83d → 82d | 88% → 100% | 114d → none |  | was named Test, Internal Finishing, Benching & Cover; resources Labor [62.37 h]; Foreman [31.18 h]; Plumber Helper [31.18 h]; Plumber [31.18 h]; Mason [31.18 h]; Storm MH depth 2.51 - 3.5m [0.42] → Labor [54.89 h]; Foreman [27.44 h]; Plumber Helper [27.44 h]; Plumber [27.44 h]; Mason [27.44 h]; Storm MH depth 2.51 - 3.5m [0.37] |
| B6.33 05 13.07 3 | Manhole Installation (80.00% Completed) |  | 2026-09-17 → 2026-09-15 A (-2d) | 82d → 81d | 80% → 100% | 114d → none |  | was named Manhole Installation; resources Labor [31.18 h]; Operator [31.18 h]; Surveyor [15.59 h]; Surveyor Helper [15.59 h]; Boom Truck [16 h]; Mobile Crane [16 h]; Storm MH depth 2.51 - 3.5m [1.97] → Labor [24.95 h]; Operator [24.95 h]; Surveyor [12.47 h]; Surveyor Helper [12.47 h]; Boom Truck [12.8 h]; Mobile Crane [12.8 h]; Storm MH depth 2.51 - 3.5m [1.58] |
| B6.33 05 13.07 5 | Backfilling (80.00% Completed) |  | 2026-09-17 → 2026-09-15 A (-2d) | 79d → 78d | 80% → 100% | 114d → none |  | was named Backfilling; resources Labor [77.96 h]; Foreman [38.98 h]; Operator [77.96 h]; Surveyor [38.98 h]; Surveyor Helper [38.98 h]; Loader [40 h]; Water Tanker [40 h]; Dump Truck [40 h]; Plate Compactor [40 h]; Storm MH depth 2.51 - 3.5m [0.91] → Labor [62.37 h]; Foreman [31.18 h]; Operator [62.37 h]; Surveyor [31.18 h]; Surveyor Helper [31.18 h]; Loader [32 h]; Water Tanker [32 h]; Dump Truck [32 h]; Plate Compactor [32 h]; Storm MH depth 2.51 - 3.5m [0.73] |
| Catch Basins | **Catch Basins** |  | 2026-09-30 → 2026-10-27 (+27d) |  |  |  |  |  |
| Sing | **Single** |  | 2026-09-17 → 2026-10-08 (+21d) |  |  |  |  |  |
| B6.33 05 40.01.210 | Excavation, Compaction & Vapour Barrier (80.00% Completed) |  | 2026-09-17 → 2026-09-15 A (-2d) | 88d → 87d | 80% → 100% | 104d → none |  | was named Excavation, Compaction & Vapour Barrier; resources Labor [31.18 h]; Foreman [15.59 h]; Operator [31.18 h]; Surveyor [15.59 h]; Surveyor Helper [15.59 h]; Excavator (With Bucket) [16 h]; Water Tanker [16 h]; Dump Truck [16 h]; Roller Compactor [16 h]; Single Catch basin [2.98] → Labor [24.95 h]; Foreman [12.47 h]; Operator [24.95 h]; Surveyor [12.47 h]; Surveyor Helper [12.47 h]; Excavator (With Bucket) [12.8 h]; Water Tanker [12.8 h]; Dump Truck [12.8 h]; Roller Compactor [12.8 h]; Single Catch basin [2.38] |
| B6.33 05 40.01.220 | Blinding Conc. (80.00% Completed) |  | 2026-09-17 → 2026-09-15 A (-2d) | 86d → 85d | 80% → 100% | 114d → none |  | was named Blinding Conc.; resources Labor [31.18 h]; Foreman [15.59 h]; Laboratory Officer [15.59 h]; Carpenter [15.59 h]; Steelfixer [15.59 h]; Mason [15.59 h]; Single Catch basin [1.99] → Labor [24.95 h]; Foreman [12.47 h]; Laboratory Officer [12.47 h]; Carpenter [12.47 h]; Steelfixer [12.47 h]; Mason [12.47 h]; Single Catch basin [1.59] |
| B6.33 05 40.01.230 | Catch Basin Installation (80.00% Completed) |  | 2026-09-17 → 2026-09-15 A (-2d) | 83d → 82d | 80% → 100% | 114d → none |  | was named Catch Basin Installation; resources Labor [46.78 h]; Foreman [23.39 h]; Carpenter [23.39 h]; Steelfixer [23.39 h]; Mason [23.39 h]; Operator [46.78 h]; Surveyor [23.39 h]; Surveyor Helper [23.39 h]; Boom Truck [24 h]; Single Catch basin [8.93] → Labor [37.42 h]; Foreman [18.71 h]; Carpenter [18.71 h]; Steelfixer [18.71 h]; Mason [18.71 h]; Operator [37.42 h]; Surveyor [18.71 h]; Surveyor Helper [18.71 h]; Boom Truck [19.2 h]; Single Catch basin [7.15] |
| B6.33 05 40.01.240 | Backfilling, DI Frame & Grate Cover Fixing (80.00% Completed) |  | 2026-09-17 → 2026-09-15 A (-2d) | 78d → 77d | 80% → 100% | 75d → none |  | was named Backfilling, DI Frame & Grate Cover Fixing; resources Labor [77.96 h]; Foreman [38.98 h]; Operator [77.96 h]; Surveyor [38.98 h]; Surveyor Helper [38.98 h]; Loader [40 h]; Water Tanker [40 h]; Dump Truck [40 h]; Plate Compactor [40 h]; Single Catch basin [5.96] → Labor [62.37 h]; Foreman [31.18 h]; Operator [62.37 h]; Surveyor [31.18 h]; Surveyor Helper [31.18 h]; Loader [32 h]; Water Tanker [32 h]; Dump Truck [32 h]; Plate Compactor [32 h]; Single Catch basin [4.76] |
| Dou | **Double** | 2026-09-19 → 2026-10-10 (+21d) | 2026-09-30 → 2026-10-27 (+27d) |  |  |  |  |  |
| B6.33 05 40.01.770 | Excavation, Compaction & Vapour Barrier | 2026-09-19 → 2026-10-10 (+21d) | 2026-09-21 → 2026-10-12 (+21d) |  |  | 104d → 59.32d | B6.33 05 40.01.210 → B6.33 05 40.01.210_R |  |
| B6.33 05 40.01.780 | Blinding Conc. | 2026-09-22 → 2026-10-13 (+21d) | 2026-09-26 → 2026-10-15 (+19d) |  |  | 104d → 59.32d |  |  |
| B6.33 05 40.01.790 | Catch Basin Installation | 2026-09-27 → 2026-10-17 (+20d) | 2026-09-30 → 2026-10-20 (+20d) |  |  | 104d → 59.32d |  |  |
| B6.33 05 40.01.800 | Backfilling, DI Frame & Grate Cover Fixing | 2026-09-19 → 2026-10-21 (+32d) | 2026-09-27 → 2026-10-27 (+30d) |  |  | 68.91d → 59.32d | B6.33 42 11.36 2 → B6.33 42 11.36 2_R |  |
| UPVC | **UPVC** |  | 2026-09-30 → 2026-10-20 (+20d) |  |  |  |  |  |
| UPVC300 | **?300 From 0.0 to 1.5m** |  | 2026-09-19 → 2026-10-10 (+21d) |  |  |  |  |  |
| B6.33 42 11.35 1 | Catch Basin Opening Prep. (68.04% Completed) |  | 2026-09-19 → 2026-09-15 A (-4d) | 92.09d → 91d | 68% → 100% | 113.91d → none |  | was named Catch Basin Opening Prep.; resources Labor [31.18 h]; Foreman [15.59 h]; Plumber Helper [15.59 h]; Plumber [15.59 h]; less than 1.5 [46.62] → Labor [21.22 h]; Foreman [10.61 h]; Plumber Helper [10.61 h]; Plumber [10.61 h]; less than 1.5 [31.72] |
| B6.33 42 11.35 2 | Fittings & Pipe Installation (68.04% Completed) |  | 2026-09-19 → 2026-09-15 A (-4d) | 87.09d → 86d | 68% → 100% | 113.91d → none |  | was named Fittings & Pipe Installation; resources Labor [31.18 h]; Foreman [15.59 h]; Plumber Helper [15.59 h]; Plumber [15.59 h]; Surveyor [15.59 h]; Surveyor Helper [15.59 h]; less than 1.5 [186.46] → Labor [21.22 h]; Foreman [10.61 h]; Plumber Helper [10.61 h]; Plumber [10.61 h]; Surveyor [10.61 h]; Surveyor Helper [10.61 h]; less than 1.5 [126.87] |
| UPVC3001 | **?400 From 0.0 to 1.5m** |  | 2026-09-30 → 2026-10-20 (+20d) |  |  |  |  |  |
| B6.33 42 11.36 2 | Fittings & Pipe Installation (68.04% Completed) |  | 2026-09-19 → 2026-09-15 A (-4d) | 88.09d → 87d | 68% → 100% | 68.91d → none |  | was named Fittings & Pipe Installation; resources Labor [31.18 h]; Foreman [15.59 h]; Plumber Helper [15.59 h]; Plumber [15.59 h]; Surveyor [15.59 h]; Surveyor Helper [15.59 h]; less than 1.5 [50.4] → Labor [21.22 h]; Foreman [10.61 h]; Plumber Helper [10.61 h]; Plumber [10.61 h]; Surveyor [10.61 h]; Surveyor Helper [10.61 h]; less than 1.5 [34.29] |
| B6.33 42 11.36 1 | Catch Basin Opening Prep. (68.04% Completed) |  | 2026-09-30 → 2026-09-15 A (-15d) | 86.09d → 85d | 68% → 100% | 104d → none | B6.33 05 40.01.790 FF → B6.33 42 11.35 1 FF+1d | was named Catch Basin Opening Prep.; resources Labor [31.18 h]; Foreman [15.59 h]; Plumber Helper [15.59 h]; Plumber [15.59 h]; less than 1.5 [12.6] → Labor [21.22 h]; Foreman [10.61 h]; Plumber Helper [10.61 h]; Plumber [10.61 h]; less than 1.5 [8.57] |
| Potable Water | **Potable Water Network** |  | 2026-11-07 → 2026-11-26 (+19d) |  |  |  |  |  |
| B3.33 14 13.01.02 5 | Backfilling & Warrning Tape |  |  |  |  |  | B3.33 14 13.01.02 4, B3.33 14 11.01.0118 SS → B3.33 14 13.01.02 4 |  |
| Crossing | **Plots and Buildings Crossing** | 2026-10-06 → 2026-10-26 (+20d) | 2026-10-25 → 2026-11-14 (+20d) |  |  |  |  |  |
| B3.33 14 13.02.011 | Earthwork | 2026-10-06 → 2026-10-26 (+20d) | 2026-10-13 → 2026-11-02 (+20d) |  |  | 67d → 64.32d |  |  |
| B3.33 14 13.02.012 | Sand Bedding | 2026-10-14 → 2026-11-03 (+20d) | 2026-10-17 → 2026-11-05 (+19d) |  |  | 83d → 80.32d |  |  |
| B3.33 14 13.02.013 | Tee, Pipe (Crossing) Installation & Backfilling | 2026-10-18 → 2026-11-07 (+20d) | 2026-10-25 → 2026-11-14 (+20d) |  |  | 83d → 80.32d |  |  |
| Valves & Chambers | **Valves & Chambers** |  | 2026-11-07 → 2026-11-26 (+19d) |  |  |  |  |  |
| GV | **Gate Valves** |  | 2026-10-21 → 2026-11-10 (+20d) |  |  |  |  |  |
| 1 | **Gate valves dia (110) mm** |  | 2026-10-21 → 2026-11-10 (+20d) |  |  |  |  |  |
| B3.33 14 19.01.109 | Spindle & Surface Box | 2026-10-19 → 2026-11-08 (+20d) | 2026-10-21 → 2026-11-10 (+20d) |  |  | 86d → 83.32d |  |  |
| Washout Valves | **Washout Valves** | 2026-10-14 → 2026-11-03 (+20d) | 2026-11-07 → 2026-11-26 (+19d) |  |  |  |  |  |
| 4 | **Washout valves on 110-400 mm. (In Chamber)** | 2026-10-14 → 2026-11-03 (+20d) | 2026-11-07 → 2026-11-26 (+19d) |  |  |  |  |  |
| B3.33 05 63.01.011 | Land Adjustment & Compaction | 2026-10-14 → 2026-11-03 (+20d) | 2026-10-17 → 2026-11-05 (+19d) |  |  | 67d → 64.32d |  |  |
| B3.33 05 63.01.012 | Foundations | 2026-10-18 → 2026-11-07 (+20d) | 2026-10-21 → 2026-11-10 (+20d) |  |  | 67d → 64.32d |  |  |
| B3.33 05 63.01.013 | Chambers Walls Conc Cast In Situ | 2026-10-22 → 2026-11-11 (+20d) | 2026-10-26 → 2026-11-15 (+20d) |  |  | 67d → 64.32d |  |  |
| B3.33 05 63.01.014 | Chamber Curing, Finishing & Steel Cover | 2026-10-27 → 2026-11-16 (+20d) | 2026-11-01 → 2026-11-21 (+20d) |  |  | 67d → 64.32d |  |  |
| B3.33 05 63.01.015 | Valve & Fitting Installation | 2026-11-02 → 2026-11-22 (+20d) | 2026-11-07 → 2026-11-26 (+19d) |  |  | 67d → 64.32d |  |  |
| Fire Fighting | **Fire Fighting Network** |  | 2026-10-26 → 2026-11-15 (+20d) |  |  |  |  |  |
| HDPE | **HDPE Pipes** |  | 2026-09-20 → 2026-10-11 (+21d) |  |  |  |  |  |
| ?250mm | **?250mm** |  | 2026-09-20 → 2026-10-11 (+21d) |  |  |  |  |  |
| Depth: 1.51m - 2.5m | **Depth: 1.51m - 2.5m** |  | 2026-09-20 → 2026-10-11 (+21d) |  |  |  |  |  |
| B3.1. 33 14 13.01 1 | Excavation (89.00% Completed) |  | 2026-09-20 → 2026-09-15 A (-5d) | 91.62d → 89.62d | 89% → 100% | 64d → none |  | was named Excavation; resources Labor [31.18 h]; Foreman [15.59 h]; Operator [31.18 h]; Surveyor [15.59 h]; Surveyor Helper [15.59 h]; Excavator (With Bucket) [16 h]; Water Tanker [16 h]; Dump Truck [16 h]; Plate Compactor [16 h]; Depth: 1.51m - 2.5m [8.22] → Labor [27.75 h]; Foreman [13.88 h]; Operator [27.75 h]; Surveyor [13.88 h]; Surveyor Helper [13.88 h]; Excavator (With Bucket) [14.24 h]; Water Tanker [14.24 h]; Dump Truck [14.24 h]; Plate Compactor [14.24 h]; Depth: 1.51m - 2.5m [7.32] |
| B3.1. 33 14 13.01 2 | Sand Bedding (89.00% Completed) |  | 2026-09-20 → 2026-09-15 A (-5d) | 85.62d → 83.62d | 89% → 100% | 64d → none |  | was named Sand Bedding; resources Labor [31.18 h]; Foreman [15.59 h]; Operator [62.37 h]; Surveyor [15.59 h]; Surveyor Helper [15.59 h]; Loader [16 h]; Water Tanker [16 h]; Dump Truck [16 h]; Plate Compactor [16 h]; Depth: 1.51m - 2.5m [2.06] → Labor [27.75 h]; Foreman [13.88 h]; Operator [55.51 h]; Surveyor [13.88 h]; Surveyor Helper [13.88 h]; Loader [14.24 h]; Water Tanker [14.24 h]; Dump Truck [14.24 h]; Plate Compactor [14.24 h]; Depth: 1.51m - 2.5m [1.83] |
| B3.1. 33 14 13.01 3 | Pipe Laying (89.00% Completed) |  | 2026-09-20 → 2026-09-15 A (-5d) | 79.62d → 77.62d | 89% → 100% | 64d → none |  | was named Pipe Laying; resources Labor [31.18 h]; Foreman [15.59 h]; Plumber Helper [15.59 h]; Plumber [15.59 h]; Operator [15.59 h]; Surveyor [15.59 h]; Surveyor Helper [15.59 h]; Mobile Crane [16 h]; Depth: 1.51m - 2.5m [18.5] → Labor [27.75 h]; Foreman [13.88 h]; Plumber Helper [13.88 h]; Plumber [13.88 h]; Operator [13.88 h]; Surveyor [13.88 h]; Surveyor Helper [13.88 h]; Mobile Crane [14.24 h]; Depth: 1.51m - 2.5m [16.46] |
| B3.1. 33 14 13.01 4 | Embedment & Test (89.00% Completed) |  | 2026-09-20 → 2026-09-15 A (-5d) | 77.62d → 75.62d | 89% → 100% | 67d → none |  | was named Embedment & Test; resources Labor [62.37 h]; Foreman [31.18 h]; Plumber Helper [31.18 h]; Plumber [31.18 h]; Operator [62.37 h]; Surveyor [31.18 h]; Surveyor Helper [31.18 h]; Loader [32 h]; Water Tanker [32 h]; Dump Truck [32 h]; Plate Compactor [32 h]; Roller Compactor [32 h]; Depth: 1.51m - 2.5m [8.22] → Labor [55.51 h]; Foreman [27.75 h]; Plumber Helper [27.75 h]; Plumber [27.75 h]; Operator [55.51 h]; Surveyor [27.75 h]; Surveyor Helper [27.75 h]; Loader [28.48 h]; Water Tanker [28.48 h]; Dump Truck [28.48 h]; Plate Compactor [28.48 h]; Roller Compactor [28.48 h]; Depth: 1.51m - 2.5m [7.32] |
| B3.1. 33 14 13.01 5 | Backfilling & Warrning Tape (89.00% Completed) |  | 2026-09-20 → 2026-09-15 A (-5d) | 75.62d → 73.62d | 89% → 100% | 87d → none |  | was named Backfilling & Warrning Tape; resources Labor [77.96 h]; Foreman [38.98 h]; Operator [155.92 h]; Surveyor [38.98 h]; Surveyor Helper [38.98 h]; Loader [40 h]; Water Tanker [40 h]; Dump Truck [40 h]; Plate Compactor [40 h]; Roller Compactor [40 h]; Depth: 1.51m - 2.5m [4.11] → Labor [69.39 h]; Foreman [34.69 h]; Operator [138.77 h]; Surveyor [34.69 h]; Surveyor Helper [34.69 h]; Loader [35.6 h]; Water Tanker [35.6 h]; Dump Truck [35.6 h]; Plate Compactor [35.6 h]; Roller Compactor [35.6 h]; Depth: 1.51m - 2.5m [3.66] |
| Valves & Chambers | **Valves & Chambers** |  | 2026-10-26 → 2026-11-15 (+20d) |  |  |  |  |  |

| ID | Task | Start | Finish | Duration | Complete | Total float | Predecessors | Other |
| --- | --- | --- | --- | --- | --- | --- | --- | --- |
| GV | **Gate Valves** |  | 2026-10-12 → 2026-11-01 (+20d) |  |  |  |  |  |
| 1 | **Gate valves dia (250) mm** |  | 2026-10-12 → 2026-11-01 (+20d) |  |  |  |  |  |
| B3.33 14 19.01.124 | Burried Isolation Valve Installation (86.00% Completed) |  | 2026-09-20 → 2026-09-15 A (-5d) | 79.62d → 77.62d | 86% → 100% | 77d → none |  | was named Burried Isolation Valve Installation; resources Labor [31.18 h]; Plumber Helper [15.59 h]; Plumber [15.59 h]; Operator [31.18 h]; Boom Truck [16 h]; FF Gate V dia 250 mm [1.88] → Labor [26.82 h]; Plumber Helper [13.41 h]; Plumber [13.41 h]; Operator [26.82 h]; Boom Truck [13.76 h]; FF Gate V dia 250 mm [1.61] |
| B3.33 14 19.01.125 | Spindle & Surface Box | 2026-10-08 → 2026-10-28 (+20d) | 2026-10-12 → 2026-11-01 (+20d) |  |  | 63d → 60.32d | B3.33 14 19.01.124, B3.33 14 19.01.123 → B3.33 14 19.01.124_R, B3.33 14 19.01.123 |  |
| Washout Valves | **Washout Valves** | 2026-09-21 → 2026-10-12 (+21d) | 2026-10-26 → 2026-11-15 (+20d) |  |  |  |  |  |
| 4 | **Washout valves on 110-400 mm. (In Chamber)** | 2026-09-21 → 2026-10-12 (+21d) | 2026-10-26 → 2026-11-15 (+20d) |  |  |  |  |  |
| B3.33 05 63.01.42 | Land Adjustment & Compaction | 2026-09-21 → 2026-10-12 (+21d) | 2026-09-26 → 2026-10-15 (+19d) |  |  | 67d → 64.32d | B3.1. 33 14 13.01 4 → B3.1. 33 14 13.01 4_R |  |
| B3.33 05 63.01.40 | Foundations | 2026-09-27 → 2026-10-17 (+20d) | 2026-10-01 → 2026-10-21 (+20d) |  |  | 67d → 64.32d |  |  |
| B3.33 05 63.01.43 | Chambers Walls Conc Cast In Situ | 2026-10-03 → 2026-10-22 (+19d) | 2026-10-07 → 2026-10-27 (+20d) |  |  | 67d → 64.32d |  |  |
| B3.33 05 63.01.41 | Chamber Curing, Finishing & Steel Cover | 2026-10-13 → 2026-11-02 (+20d) | 2026-10-19 → 2026-11-08 (+20d) |  |  | 63d → 60.32d | B3.33 05 63.01.43, B3.1. 33 14 13.26 → B3.33 05 63.01.43, B3.1. 33 14 13.26_R |  |
| B3.33 05 63.01.44 | Valve & Fitting Installation | 2026-10-20 → 2026-11-09 (+20d) | 2026-10-26 → 2026-11-15 (+20d) |  |  | 63d → 60.32d | B3.33 05 63.01.41, B3.1. 33 14 13.01 5, B3.33 05 63.02.54, B3.33 05 63.01.49, B3.1. 33 14 13-01102, B3.1. 33 14 13-01100, B3.33 14 19.01.132 → B3.33 05 63.01.41, B3.1. 33 14 13.01 5_R, B3.33 05 63.02.54, B3.33 05 63.01.49, B3.1. 33 14 13-01102, B3.1. 33 14 13-01100, B3.33 14 19.01.132 |  |
| 3 | **Fire Hydrant** | 2026-09-21 → 2026-10-12 (+21d) | 2026-10-10 → 2026-10-29 (+19d) |  |  |  |  |  |
| B3.33 14 19.01.fh23 | Riser Pipe & Flanged Fittings Installation | 2026-09-21 → 2026-10-12 (+21d) | 2026-09-26 → 2026-10-15 (+19d) |  |  | 64d → 61.32d | B3.1. 33 14 13.01 3 → B3.1. 33 14 13.01 3_R |  |
| B3.33 14 19.01.fh22 | Firehydrant Fixing/Installation | 2026-09-27 → 2026-10-17 (+20d) | 2026-10-01 → 2026-10-21 (+20d) |  |  | 64d → 61.32d |  |  |
| B3.33 14 19.01.fh24 | Backfilling & Compaction | 2026-10-03 → 2026-10-22 (+19d) | 2026-10-10 → 2026-10-29 (+19d) |  |  | 64d → 61.32d |  |  |
| Dry Networks | **Dry Networks** | 2026-09-21 → 2026-10-12 (+21d) | 2026-11-10 → 2026-11-30 (+20d) |  |  |  |  |  |
| MV | **Medium Voltage Network** | 2026-09-27 → 2026-10-28 (+31d) | 2026-10-28 → 2026-11-17 (+20d) |  |  |  |  |  |
| Duct Banks | **Duct Banks** | 2026-09-27 → 2026-10-28 (+31d) | 2026-10-17 → 2026-11-16 (+30d) |  |  |  |  |  |
| 4 Way | **2 Way** | 2026-09-27 → 2026-10-28 (+31d) | 2026-10-17 → 2026-11-16 (+30d) |  |  |  |  |  |
| B2.31 23 00.638 | Excavation | 2026-09-27 → 2026-10-28 (+31d) | 2026-10-01 → 2026-11-01 (+31d) |  |  | 68.91d → 59.32d | B6.33 05 40.01.240, B6.33 05 40.01.800 → B6.33 05 40.01.240_R, B6.33 05 40.01.800 |  |
| B2.33 71 00.284 | Shuttering, Steel Fixing Incl. UPVC Pipe & Conc. Cast | 2026-10-01 → 2026-11-02 (+32d) | 2026-10-10 → 2026-11-09 (+30d) |  |  | 68.91d → 59.32d |  |  |
| B2.33 71 00.285 | Backfilling & Warrning Tape | 2026-10-10 → 2026-11-10 (+31d) | 2026-10-17 → 2026-11-16 (+30d) |  |  | 68.91d → 59.32d |  |  |
| Cables | **Cables** | 2026-10-18 → 2026-11-07 (+20d) | 2026-10-28 → 2026-11-17 (+20d) |  |  |  |  |  |
| 3C,500mm2 | **3C,500mm2** | 2026-10-18 → 2026-11-07 (+20d) | 2026-10-28 → 2026-11-17 (+20d) |  |  |  |  |  |
| B2.33 71 49.23.71 | Cable 13.8 kV Unarmored | 2026-10-18 → 2026-11-07 (+20d) | 2026-10-21 → 2026-11-10 (+20d) |  |  | 71d → 68.32d |  |  |
| B2.33 71 49.23.72 | Straight joints cables | 2026-10-22 → 2026-11-11 (+20d) | 2026-10-25 → 2026-11-14 (+20d) |  |  | 71d → 68.32d |  |  |
| B2.33 71 49.23.73 | Cable Termination | 2026-10-26 → 2026-11-15 (+20d) | 2026-10-28 → 2026-11-17 (+20d) |  |  | 71d → 68.32d |  |  |
| LV Network | **Low Voltage Network** | 2026-10-18 → 2026-11-07 (+20d) | 2026-10-21 → 2026-11-10 (+20d) |  |  |  |  |  |
| Cables | **Cables** | 2026-10-18 → 2026-11-07 (+20d) | 2026-10-21 → 2026-11-10 (+20d) |  |  |  |  |  |
| 4C,10+1C,10mm2 | **4C,10+1C,10mm2** | 2026-10-18 → 2026-11-07 (+20d) | 2026-10-21 → 2026-11-10 (+20d) |  |  |  |  |  |
| B2.33 71 00 01 9 | Cable Pulling | 2026-10-18 → 2026-11-07 (+20d) | 2026-10-21 → 2026-11-10 (+20d) |  |  | 71d → 68.32d |  |  |
| Street Lighting | **Street Lighting** | 2026-09-21 → 2026-10-12 (+21d) | 2026-11-10 → 2026-11-30 (+20d) |  |  |  |  |  |
| Duct Banks | **Duct Banks** | 2026-10-17 → 2026-11-17 (+31d) | 2026-10-27 → 2026-11-26 (+30d) |  |  |  |  |  |
| 2 Way | **2 Way** | 2026-10-17 → 2026-11-17 (+31d) | 2026-10-27 → 2026-11-26 (+30d) |  |  |  |  |  |
| B2.33 71 00 02 58 | Excavation | 2026-10-17 → 2026-11-17 (+31d) | 2026-10-19 → 2026-11-18 (+30d) |  |  | 68.91d → 59.32d |  |  |
| B2.33 71 00 02 59 | Shuttering, Steel Fixing Incl. UPVC Pipe & Conc. Cast | 2026-10-19 → 2026-11-19 (+31d) | 2026-10-24 → 2026-11-23 (+30d) |  |  | 68.91d → 59.32d |  |  |
| B2.33 71 00 02 60 | Backfilling & Warrning Tape | 2026-10-24 → 2026-11-24 (+31d) | 2026-10-27 → 2026-11-26 (+30d) |  |  | 68.91d → 59.32d | B2.33 71 00 02 59, B2.33 71 00 02 87 → B2.33 71 00 02 59, B2.33 71 00 02 87_R |  |
| Drawpits | **Drawpits** | 2026-10-19 → 2026-11-19 (+31d) | 2026-10-26 → 2026-11-25 (+30d) |  |  |  |  |  |
| B2.33 71 00 02 61 | Excavation | 2026-10-19 → 2026-11-19 (+31d) | 2026-10-21 → 2026-11-21 (+31d) |  |  | 69.91d → 60.32d |  |  |
| B2.33 71 00 02 62 | Drawpits Installation | 2026-10-21 → 2026-11-22 (+32d) | 2026-10-24 → 2026-11-23 (+30d) |  |  | 69.91d → 60.32d |  |  |
| B2.33 71 00 02 63 | Backfilling & Warrning Tape | 2026-10-24 → 2026-11-24 (+31d) | 2026-10-26 → 2026-11-25 (+30d) |  |  | 69.91d → 60.32d |  |  |
| Cables | **Cables** | 2026-10-08 → 2026-10-28 (+20d) | 2026-11-10 → 2026-11-30 (+20d) |  |  |  |  |  |
| 4C,10+1C,10mm2 | **4C,10+1C,10mm2** | 2026-10-08 → 2026-10-28 (+20d) | 2026-11-10 → 2026-11-30 (+20d) |  |  |  |  |  |
| B2.33 71 19 102 | Land Adjustment | 2026-10-08 → 2026-10-28 (+20d) | 2026-10-11 → 2026-10-31 (+20d) |  |  | 71d → 68.32d |  |  |
| B2.33 71 49.23.132 | Cable Pulling | 2026-10-12 → 2026-11-01 (+20d) | 2026-10-17 → 2026-11-05 (+19d) |  |  | 71d → 68.32d |  |  |
| B2.33 71 19 112 | Backfilling | 2026-11-08 → 2026-11-28 (+20d) | 2026-11-10 → 2026-11-30 (+20d) |  |  | 64d → 62.32d |  |  |
| SL Poles | **SL Poles** | 2026-09-21 → 2026-10-12 (+21d) | 2026-10-13 → 2026-11-02 (+20d) |  |  |  |  |  |
| Pole (10 M Sngl Arm) | **Pole (10 M Single Arm)** | 2026-09-21 → 2026-10-12 (+21d) | 2026-10-07 → 2026-10-27 (+20d) |  |  |  |  |  |
| B2.33 71 16.43 | Excavation | 2026-09-21 → 2026-10-12 (+21d) | 2026-09-22 → 2026-10-13 (+21d) |  |  | 67d → 64.32d |  |  |
| B2.33 71 16.44 | PC & RC Foundation | 2026-09-24 → 2026-10-14 (+20d) | 2026-09-27 → 2026-10-17 (+20d) |  |  | 71d → 68.32d |  |  |
| B2.33 71 16.45 | Lighting Poles Installation Incl power box, Cables | 2026-09-28 → 2026-10-18 (+20d) | 2026-09-30 → 2026-10-20 (+20d) |  |  | 71d → 68.32d |  |  |
| B2.26.56.19.4 | Lighting Luminares Inst | 2026-10-01 → 2026-10-21 (+20d) | 2026-10-04 → 2026-10-24 (+20d) |  |  | 71d → 68.32d |  |  |
| B2.33 71 16.46 | Backfilling, Grouting & Chamfering | 2026-10-05 → 2026-10-25 (+20d) | 2026-10-07 → 2026-10-27 (+20d) |  |  | 71d → 68.32d |  |  |
| Pole (10 M Dbl Arm) | **Pole (10 M Double Arm)** | 2026-09-24 → 2026-10-14 (+20d) | 2026-10-13 → 2026-11-02 (+20d) |  |  |  |  |  |
| B2.33 71 16.47 | Excavation | 2026-09-24 → 2026-10-14 (+20d) | 2026-09-26 → 2026-10-15 (+19d) |  |  | 67d → 64.32d |  |  |
| B2.33 71 16.48 | PC & RC Foundation | 2026-09-27 → 2026-10-17 (+20d) | 2026-09-30 → 2026-10-20 (+20d) |  |  | 67d → 64.32d |  |  |
| B2.33 71 16.49 | Lighting Poles Installation Incl power box, Cables | 2026-10-01 → 2026-10-21 (+20d) | 2026-10-04 → 2026-10-24 (+20d) |  |  | 67d → 64.32d |  |  |
| B2.26.56.19.5 | Lighting Luminares Inst | 2026-10-05 → 2026-10-25 (+20d) | 2026-10-07 → 2026-10-27 (+20d) |  |  | 67d → 64.32d |  |  |
| B2.33 71 16.50 | Backfilling, Grouting & Chamfering | 2026-10-08 → 2026-10-28 (+20d) | 2026-10-13 → 2026-11-02 (+20d) |  |  | 67d → 64.32d |  |  |
| SL Pillars | **SL Pillars** | 2026-10-05 → 2026-10-25 (+20d) | 2026-10-08 → 2026-10-28 (+20d) |  |  |  |  |  |
| B2.33 71 26 031 | Pillars Installation (Internal Wiring) | 2026-10-05 → 2026-10-25 (+20d) | 2026-10-06 → 2026-10-26 (+20d) |  |  | 92d → 92.32d |  |  |
| B2.33 71 26 042 | KWH meter mounting a frame installation | 2026-10-07 → 2026-10-27 (+20d) | 2026-10-08 → 2026-10-28 (+20d) |  |  | 92d → 92.32d |  |  |
| Telecommunication | **Telecommunication Network** | 2026-10-15 → 2026-11-07 (+23d) | 2026-11-05 → 2026-11-24 (+19d) |  |  |  |  |  |
| Ducts | **Ducts** | 2026-10-15 → 2026-11-07 (+23d) | 2026-11-04 → 2026-11-22 (+18d) |  |  |  |  |  |
| (6*50mm) | **Size (6*50mm) HDPE ducts** | 2026-10-15 → 2026-11-07 (+23d) | 2026-11-01 → 2026-11-17 (+16d) |  |  |  |  |  |
| B2.1.33 81 26.84 | Excavation | 2026-10-15 → 2026-11-07 (+23d) | 2026-10-19 → 2026-11-08 (+20d) | 3d → 2d |  | 31.88d → 30.32d |  |  |
| B2.1.33 81 26.85 | HDPE Pipe, Shuttering, Steel Fixing & Conc. Cast | 2026-10-19 → 2026-11-09 (+21d) | 2026-10-24 → 2026-11-10 (+17d) | 4d → 2d |  | 71.88d → 67.32d |  |  |
| B2.1.33 81 26.86 | Backfilling & Warrning Tape | 2026-10-28 → 2026-11-16 (+19d) | 2026-11-01 → 2026-11-17 (+16d) | 3d → 2d |  | 67.88d → 63.32d |  |  |
| (6*50mm+2*32mm) | **Size (6*50mm+2*32mm) HDPE ducts** | 2026-10-19 → 2026-11-09 (+21d) | 2026-10-28 → 2026-11-15 (+18d) |  |  |  |  |  |
| B2.1.33 81 26.87 | Excavation | 2026-10-19 → 2026-11-09 (+21d) | 2026-10-21 → 2026-11-10 (+20d) |  |  | 31.88d → 30.32d |  |  |

| ID | Task | Start | Finish | Duration | Complete | Total float | Predecessors | Other |
| --- | --- | --- | --- | --- | --- | --- | --- | --- |
| B2.1.33 81 26.88 | HDPE Pipe, Shuttering, Steel Fixing & Conc. Cast | 2026-10-21 → 2026-11-11 (+21d) | 2026-10-25 → 2026-11-12 (+18d) | 3d → 2d |  | 67.88d → 63.32d |  |  |
| B2.1.33 81 26.89 | Backfilling & Warrning Tape | 2026-10-25 → 2026-11-14 (+20d) | 2026-10-28 → 2026-11-15 (+18d) | 3d → 2d |  | 67.88d → 63.32d |  |  |
| (2*32mm) | **Size (2*32mm) HDPE ducts** | 2026-10-19 → 2026-11-09 (+21d) | 2026-10-28 → 2026-11-15 (+18d) |  |  |  |  |  |
| B2.1.33 81 26.93 | Excavation | 2026-10-19 → 2026-11-09 (+21d) | 2026-10-21 → 2026-11-10 (+20d) |  |  | 31.88d → 30.32d |  |  |
| B2.1.33 81 26.94 | HDPE Pipe, Shuttering, Steel Fixing & Conc. Cast | 2026-10-21 → 2026-11-11 (+21d) | 2026-10-24 → 2026-11-12 (+19d) |  |  | 68.88d → 63.32d |  |  |
| B2.1.33 81 26.95 | Backfilling & Warrning Tape | 2026-10-25 → 2026-11-14 (+20d) | 2026-10-28 → 2026-11-15 (+18d) | 3d → 2d |  | 67.88d → 63.32d |  |  |
| (4*32mm) | **Size (4*32mm) HDPE ducts** | 2026-10-21 → 2026-11-11 (+21d) | 2026-11-04 → 2026-11-19 (+15d) |  |  |  |  |  |
| B2.1.33 81 26.96 | Excavation | 2026-10-21 → 2026-11-11 (+21d) | 2026-10-24 → 2026-11-12 (+19d) |  |  | 31.88d → 30.32d |  |  |
| B2.1.33 81 26.97 | HDPE Pipe, Shuttering, Steel Fixing & Conc. Cast | 2026-10-24 → 2026-11-14 (+21d) | 2026-10-26 → 2026-11-15 (+20d) |  |  | 72.88d → 65.32d |  |  |
| B2.1.33 81 26.98 | Backfilling & Warrning Tape | 2026-11-01 → 2026-11-18 (+17d) | 2026-11-04 → 2026-11-19 (+15d) | 3d → 2d |  | 67.88d → 63.32d |  |  |
| (6*50mm+6*32mm) | **Size (6*50mm+6*32mm) HDPE ducts** | 2026-10-24 → 2026-11-14 (+21d) | 2026-11-03 → 2026-11-19 (+16d) |  |  |  |  |  |
| B2.1.33 81 26.99 | Excavation | 2026-10-24 → 2026-11-14 (+21d) | 2026-10-27 → 2026-11-15 (+19d) | 3d → 2d |  | 31.88d → 30.32d |  |  |
| B2.1.33 81 26.100 | HDPE Pipe, Shuttering, Steel Fixing & Conc. Cast | 2026-10-27 → 2026-11-16 (+20d) | 2026-10-31 → 2026-11-17 (+17d) | 3d → 2d |  | 66.88d → 65.32d |  |  |
| B2.1.33 81 26.101 | Backfilling & Warrning Tape | 2026-10-31 → 2026-11-18 (+18d) | 2026-11-03 → 2026-11-19 (+16d) | 3d → 2d |  | 66.88d → 65.32d |  |  |
| (6*32mm) | **Size (6*32mm) HDPE ducts** | 2026-10-27 → 2026-11-16 (+20d) | 2026-11-04 → 2026-11-22 (+18d) |  |  |  |  |  |
| B2.1.33 81 26.102 | Excavation | 2026-10-27 → 2026-11-16 (+20d) | 2026-10-29 → 2026-11-17 (+19d) |  |  | 31.88d → 30.32d |  |  |
| B2.1.33 81 26.103 | HDPE Pipe, Shuttering, Steel Fixing & Conc. Cast | 2026-10-29 → 2026-11-18 (+20d) | 2026-11-01 → 2026-11-19 (+18d) |  |  | 67.88d → 65.32d |  |  |
| B2.1.33 81 26.104 | Backfilling & Warrning Tape | 2026-11-01 → 2026-11-21 (+20d) | 2026-11-04 → 2026-11-22 (+18d) | 3d → 2d |  | 67.88d → 65.32d |  |  |
| Manholes | **Manholes** | 2026-10-27 → 2026-11-16 (+20d) | 2026-11-05 → 2026-11-24 (+19d) |  |  |  |  |  |
| Manhole Type 1 | **Manhole Type 1** | 2026-10-27 → 2026-11-16 (+20d) | 2026-11-03 → 2026-11-22 (+19d) |  |  |  |  |  |
| B2.31 23 00.610 | Excavation | 2026-10-27 → 2026-11-16 (+20d) | 2026-10-29 → 2026-11-17 (+19d) |  |  | 31.88d → 30.32d |  |  |
| B2.33 71 00.228 | Manhole Installation | 2026-10-29 → 2026-11-18 (+20d) | 2026-11-01 → 2026-11-19 (+18d) |  |  | 66.88d → 63.32d |  |  |
| B2.33 71 00.229 | Backfilling & Warrning Tape | 2026-11-01 → 2026-11-21 (+20d) | 2026-11-03 → 2026-11-22 (+19d) |  |  | 66.88d → 63.32d | B2.33 71 00.228 → B2.33 71 00.228, B2.1.33 81 26.98 |  |
| Manhole Type 2 | **Manhole Type 2** | 2026-10-29 → 2026-11-18 (+20d) | 2026-11-05 → 2026-11-24 (+19d) |  |  |  |  |  |
| B2.31 23 00.611 | Excavation | 2026-10-29 → 2026-11-18 (+20d) | 2026-11-01 → 2026-11-19 (+18d) |  |  | 31.88d → 30.32d |  |  |
| B2.33 71 00.230 | Manhole Installation | 2026-11-01 → 2026-11-21 (+20d) | 2026-11-03 → 2026-11-22 (+19d) |  |  | 66.88d → 63.32d |  |  |
| B2.33 71 00.231 | Backfilling & Warrning Tape | 2026-11-03 → 2026-11-23 (+20d) | 2026-11-05 → 2026-11-24 (+19d) |  |  | 66.88d → 63.32d |  |  |
| Crossing Ducts | **Road Crossing Ducts** | 2026-10-29 → 2026-11-19 (+21d) | 2026-11-05 → 2026-11-24 (+19d) |  |  |  |  |  |
| 2 | **Size (2*32mm) HDPE** | 2026-10-29 → 2026-11-19 (+21d) | 2026-11-05 → 2026-11-24 (+19d) |  |  |  |  |  |
| B2.31 23 00.613 | Excavation | 2026-10-29 → 2026-11-19 (+21d) | 2026-11-01 → 2026-11-19 (+18d) | 2d → 1d |  | 31.88d → 30.32d |  |  |
| B2.33 71 00.234 | Shuttering, Steel Fixing Incl. UPVC Pipe & Conc. Cast | 2026-11-01 → 2026-11-21 (+20d) | 2026-11-03 → 2026-11-22 (+19d) |  |  | 31.88d → 30.32d |  |  |
| B2.33 71 00.235 | Backfilling & Warrning Tape | 2026-11-03 → 2026-11-23 (+20d) | 2026-11-05 → 2026-11-24 (+19d) |  |  | 31.88d → 30.32d |  |  |
| Earth & Road Works | **Earth & Road Works** |  | 2026-11-29 → 2026-12-17 (+18d) |  |  |  |  |  |
| Earth Layers | **Earth Layers** |  | 2026-09-17 → 2026-10-08 (+21d) |  |  |  |  |  |
| B1.2.32 11 13.01.5 | Subgrade (65.00% Completed) |  | 2026-09-17 → 2026-09-15 A (-2d) | 161.75d → 159.75d | 65% → 100% | 43d → none |  | was named Subgrade; resources Subgrade [1618.21]; Labor [31.18 h]; Foreman [15.59 h]; Operator [31.18 h]; Surveyor [15.59 h]; Surveyor Helper [15.59 h]; Grader [16 h]; Loader [16 h]; Water Tanker [16 h]; Dump Truck [16 h]; Plate Compactor [16 h]; Roller Compactor [16 h] → Subgrade [1051.84]; Labor [20.27 h]; Foreman [10.14 h]; Operator [20.27 h]; Surveyor [10.14 h]; Surveyor Helper [10.14 h]; Grader [10.4 h]; Loader [10.4 h]; Water Tanker [10.4 h]; Dump Truck [10.4 h]; Plate Compactor [10.4 h]; Roller Compactor [10.4 h] |
| B1.2.32 11 23.01.5 | Aggregate Base Course (55.00% Completed) |  | 2026-09-17 → 2026-09-15 A (-2d) | 92d → 90d | 55% → 100% | 43d → none |  | was named Aggregate Base Course; resources Aggregate base course [1078.81]; Labor [31.18 h]; Foreman [15.59 h]; Operator [31.18 h]; Surveyor [15.59 h]; Surveyor Helper [15.59 h]; Grader [16 h]; Loader [16 h]; Water Tanker [16 h]; Dump Truck [16 h]; Plate Compactor [16 h]; Roller Compactor [16 h] → Aggregate base course [593.34]; Labor [17.15 h]; Foreman [8.58 h]; Operator [17.15 h]; Surveyor [8.58 h]; Surveyor Helper [8.58 h]; Grader [8.8 h]; Loader [8.8 h]; Water Tanker [8.8 h]; Dump Truck [8.8 h]; Plate Compactor [8.8 h]; Roller Compactor [8.8 h] |
| Interlock | **Interlock** | 2026-10-27 → 2026-11-15 (+19d) | 2026-10-31 → 2026-11-18 (+18d) |  |  |  |  |  |
| B1.2.32 14 13.13.5 | 60mm thick - Interlocking Block Pavers | 2026-10-27 → 2026-11-15 (+19d) | 2026-10-31 → 2026-11-18 (+18d) |  |  | 55.76d → 54d |  |  |
| Curbstone | **Curbstone** | 2026-10-22 → 2026-11-10 (+19d) | 2026-11-08 → 2026-11-26 (+18d) |  |  |  |  |  |
| Pre Install | **Pre-Installation** | 2026-10-22 → 2026-11-10 (+19d) | 2026-10-29 → 2026-11-17 (+19d) |  |  |  |  |  |
| B2.31 23 00.121 | Excavation | 2026-10-22 → 2026-11-10 (+19d) | 2026-10-25 → 2026-11-12 (+18d) |  |  | 0.76d → 0d |  |  |
| B1.2.32 14 13.13.25 | PCC | 2026-10-25 → 2026-11-12 (+18d) | 2026-10-27 → 2026-11-15 (+19d) |  |  | 0.76d → 0d |  |  |
| 32 16 13.005 | Haunching | 2026-10-27 → 2026-11-15 (+19d) | 2026-10-29 → 2026-11-17 (+19d) |  |  | 0.76d → 0d |  |  |
| Installation | **Installation** | 2026-10-28 → 2026-11-16 (+19d) | 2026-11-08 → 2026-11-26 (+18d) |  |  |  |  |  |
| B1.2.32 16.13.01.5 | Curb Stone, Type K1 | 2026-10-28 → 2026-11-16 (+19d) | 2026-11-01 → 2026-11-19 (+18d) |  |  | 0.76d → 0d |  |  |
| B1.2.32 16.13.02.4 | Dropped Curb, Type K3 | 2026-10-29 → 2026-11-17 (+19d) | 2026-11-01 → 2026-11-19 (+18d) |  |  | 0.76d → 0d |  |  |
| B1.2.32 16.13.03.5 | Edge Curb, Type K4 | 2026-11-01 → 2026-11-19 (+18d) | 2026-11-03 → 2026-11-22 (+19d) |  |  | 0.76d → 0d |  |  |
| B1.2.32 16.13.045 | Heel Curb, Type K5 | 2026-11-03 → 2026-11-22 (+19d) | 2026-11-05 → 2026-11-24 (+19d) |  |  | 0.76d → 0d |  |  |
| B1.2.32 16.13.05.4 | Transition Curb | 2026-11-05 → 2026-11-24 (+19d) | 2026-11-08 → 2026-11-26 (+18d) |  |  | 0.76d → 0d |  |  |
| Finishing | **Finishing** | 2026-11-05 → 2026-11-24 (+19d) | 2026-11-08 → 2026-11-26 (+18d) |  |  |  |  |  |
| 32 16 13.05 | Finishing, Fareface | 2026-11-05 → 2026-11-24 (+19d) | 2026-11-08 → 2026-11-26 (+18d) |  |  | 0.76d → 0d |  |  |
| Asphalt Layers | **Asphalt Layers** | 2026-09-19 → 2026-10-10 (+21d) | 2026-11-14 → 2026-12-02 (+18d) |  |  |  |  |  |
| B1.2.32 11 26.01.5 | Bituminous Base Course including Prime Coat (MC1) and tack coat (RC2) | 2026-09-19 → 2026-10-10 (+21d) | 2026-09-20 → 2026-10-11 (+21d) |  |  | 43d → 44.32d | B1.2.32 11 23.01.5, B1.1.31 23 23.112 → B1.2.32 11 23.01.5_R, B1.1.31 23 23.112 |  |
| B1.2.32 12 16.01.5 | Bituminous concrete Wearing Course, including tack coat (RC2) | 2026-11-08 → 2026-11-26 (+18d) | 2026-11-14 → 2026-12-02 (+18d) |  |  | 2.76d → 5d |  |  |
| Pavement Marking | **Pavement Marking** | 2026-11-14 → 2026-12-02 (+18d) | 2026-11-16 → 2026-12-05 (+19d) |  |  |  |  |  |
| B1.2.32 17 23.02.5 | Retroreflective Thermoplastic Yellow, Traffic lines | 2026-11-14 → 2026-12-02 (+18d) | 2026-11-15 → 2026-12-03 (+18d) |  |  | 45.76d → 44d |  |  |
| B1.2.32 17 23.01.5 | Retroreflective Thermoplastic White Traffic lines | 2026-11-15 → 2026-12-03 (+18d) | 2026-11-16 → 2026-12-05 (+19d) |  |  | 45.76d → 44d |  |  |
| Traffic Signs | **Traffic Signs** | 2026-11-05 → 2026-11-24 (+19d) | 2026-11-29 → 2026-12-17 (+18d) |  |  |  |  |  |
| Pre Install | **Pre-Installation** | 2026-11-05 → 2026-11-24 (+19d) | 2026-11-10 → 2026-11-29 (+19d) |  |  |  |  |  |
| B2.31 23 00.131 | Excavation | 2026-11-05 → 2026-11-24 (+19d) | 2026-11-08 → 2026-11-26 (+18d) |  |  | 0.76d → 0d |  |  |
| 10 14 53.05 | Foundation | 2026-11-08 → 2026-11-26 (+18d) | 2026-11-10 → 2026-11-29 (+19d) |  |  | 26.76d → 26d |  |  |
| Installation | **Installation** | 2026-11-22 → 2026-12-10 (+18d) | 2026-11-29 → 2026-12-17 (+18d) |  |  |  |  |  |
| B1.2.10 14 53.015 | 1 Sheet Alumenium, Single post | 2026-11-22 → 2026-12-10 (+18d) | 2026-11-24 → 2026-12-13 (+19d) |  |  | 36.76d → 35d |  |  |
| B1.2.10 14 53.035 | 1 Sheet Alumenium, Double post | 2026-11-24 → 2026-12-13 (+19d) | 2026-11-26 → 2026-12-15 (+19d) |  |  | 36.76d → 35d |  |  |
| B1.2.10 14 14.01.5 | Ground mounted, 1 Sheet Alumenium, Single post | 2026-11-26 → 2026-12-15 (+19d) | 2026-11-29 → 2026-12-17 (+18d) |  |  | 36.76d → 35d |  |  |
| B1.2.10 14 14.025 | Ground mounted, 1 Sheet Alumenium, Double post | 2026-11-26 → 2026-12-15 (+19d) | 2026-11-29 → 2026-12-17 (+18d) |  |  | 36.76d → 35d |  |  |
| Landscape | **Landscape** | 2026-11-08 → 2026-11-26 (+18d) | 2026-12-21 → 2027-01-09 (+19d) |  |  |  |  |  |
| Fences | **Fences** | 2026-11-08 → 2026-11-26 (+18d) | 2026-12-10 → 2026-12-29 (+19d) |  |  |  |  |  |
| (MODON)l fence | **Steel fence (MODON)** | 2026-11-08 → 2026-11-26 (+18d) | 2026-12-10 → 2026-12-29 (+19d) |  |  |  |  |  |
| B7.32 93 43.04.16 | Earthwork | 2026-11-08 → 2026-11-26 (+18d) | 2026-11-11 → 2026-11-30 (+19d) |  |  | 0.76d → 0d |  |  |

| ID | Task | Start | Finish | Duration | Complete | Total float | Predecessors | Other |
| --- | --- | --- | --- | --- | --- | --- | --- | --- |
| B7.32 93 43.04.18 | Foundation | 2026-11-30 → 2026-12-19 (+19d) | 2026-12-03 → 2026-12-22 (+19d) |  |  | 0.76d → 0d |  |  |
| B7.32 93 43.04.20 | Fence Installation | 2026-12-03 → 2026-12-22 (+19d) | 2026-12-10 → 2026-12-29 (+19d) |  |  | 6.76d → 6d |  |  |
| Gates | **Gates** | 2026-11-11 → 2026-11-30 (+19d) | 2026-12-21 → 2027-01-09 (+19d) |  |  |  |  |  |
| Size (4.1x 2.7)m | **Size (4.1x 2.7)m** | 2026-11-11 → 2026-11-30 (+19d) | 2026-12-13 → 2026-12-31 (+18d) |  |  |  |  |  |
| B7.32 93 43.04.22 | Earthwork | 2026-11-11 → 2026-11-30 (+19d) | 2026-11-16 → 2026-12-05 (+19d) |  |  | 0.76d → 0d |  |  |
| B7.32 93 43.04.24 | Foundation | 2026-12-03 → 2026-12-22 (+19d) | 2026-12-07 → 2026-12-26 (+19d) |  |  | 0.76d → 0d |  |  |
| B7.32 93 43.04.26 | Gate Installation | 2026-12-07 → 2026-12-26 (+19d) | 2026-12-13 → 2026-12-31 (+18d) |  |  | 1.76d → 1d |  |  |
| Size (3.35x 2.7)m | **Size (3.35x 2.7)m** | 2026-11-16 → 2026-12-05 (+19d) | 2026-12-16 → 2027-01-04 (+19d) |  |  |  |  |  |
| B7.32 93 43.04.28 | Earthwork | 2026-11-16 → 2026-12-05 (+19d) | 2026-11-19 → 2026-12-08 (+19d) |  |  | 0.76d → 0d |  |  |
| B7.32 93 43.04.30 | Foundation | 2026-12-07 → 2026-12-26 (+19d) | 2026-12-10 → 2026-12-29 (+19d) |  |  | 0.76d → 0d |  |  |
| B7.32 93 43.04.32 | Gate Installation | 2026-12-10 → 2026-12-29 (+19d) | 2026-12-16 → 2027-01-04 (+19d) |  |  | 1.76d → 1d |  |  |
| Size (4.35x 2.7)m | **Size (4.35x 2.7)m** | 2026-11-19 → 2026-12-08 (+19d) | 2026-12-17 → 2027-01-05 (+19d) |  |  |  |  |  |
| B7.32 93 43.04.34 | Earthwork | 2026-11-19 → 2026-12-08 (+19d) | 2026-11-23 → 2026-12-12 (+19d) |  |  | 0.76d → 0d |  |  |
| B7.32 93 43.04.36 | Foundation | 2026-12-10 → 2026-12-29 (+19d) | 2026-12-14 → 2027-01-02 (+19d) |  |  | 0.76d → 0d |  |  |
| B7.32 93 43.04.38 | Gate Installation | 2026-12-14 → 2027-01-02 (+19d) | 2026-12-17 → 2027-01-05 (+19d) |  |  | 0.76d → 0d |  |  |
| Size (3.25x 2.7)m | **Size (3.25x 2.7)m** | 2026-11-23 → 2026-12-12 (+19d) | 2026-12-21 → 2027-01-09 (+19d) |  |  |  |  |  |
| B7.32 93 43.04.40 | Earthwork | 2026-11-23 → 2026-12-12 (+19d) | 2026-11-26 → 2026-12-15 (+19d) |  |  | 0.76d → 0d |  |  |
| B7.32 93 43.04.42 | Foundation | 2026-12-14 → 2027-01-02 (+19d) | 2026-12-17 → 2027-01-05 (+19d) |  |  | 0.76d → 0d |  |  |
| B7.32 93 43.04.44 | Gate Installation | 2026-12-17 → 2027-01-05 (+19d) | 2026-12-21 → 2027-01-09 (+19d) |  |  | 0.76d → 0d |  |  |
| Geotextile | **Geotextile** | 2026-11-26 → 2026-12-15 (+19d) | 2026-11-30 → 2026-12-19 (+19d) |  |  |  |  |  |
| B7.31 32 19.23.5 | Geotextile below gravel bed | 2026-11-26 → 2026-12-15 (+19d) | 2026-11-30 → 2026-12-19 (+19d) |  |  | 0.76d → 0d |  |  |
| B7.31 32 19.23.4 | Geotextile to protect trees planting soil | 2026-11-26 → 2026-12-16 (+20d) | 2026-11-29 → 2026-12-19 (+20d) |  |  | 14d → 12.32d |  |  |
| Ornamental Grasses | **Ornamental Grasses** | 2026-12-12 → 2026-12-30 (+18d) | 2026-12-17 → 2027-01-05 (+19d) |  |  |  |  |  |
| B7.32 93 13.01 | Pennisetum setaceum | 2026-12-12 → 2026-12-30 (+18d) | 2026-12-17 → 2027-01-05 (+19d) |  |  | 3.76d → 3d |  |  |
| Large Shrubs | **Large Shrubs** | 2026-12-12 → 2026-12-30 (+18d) | 2026-12-17 → 2027-01-05 (+19d) |  |  |  |  |  |
| B7.32 93 33.03 | Tecomaria Capensis | 2026-12-12 → 2026-12-30 (+18d) | 2026-12-17 → 2027-01-05 (+19d) |  |  | 3.76d → 3d |  |  |
| Miscellaneous | **Miscellaneous** | 2026-11-23 → 2026-12-13 (+20d) | 2026-12-12 → 2026-12-30 (+18d) |  |  |  |  |  |
| B7.32 91 00.01 | Plastic edge | 2026-11-23 → 2026-12-13 (+20d) | 2026-11-25 → 2026-12-15 (+20d) |  |  | 7d → 5.32d |  |  |
| B7.32 91 00.01.01 | 75mm thickness for shrubs and grasses | 2026-11-30 → 2026-12-19 (+19d) | 2026-12-06 → 2026-12-24 (+18d) |  |  | 3.76d → 3d |  |  |
| B7.32 91 00.01.02 | 75mm thickness for trees | 2026-11-30 → 2026-12-19 (+19d) | 2026-12-06 → 2026-12-24 (+18d) |  |  | 3.76d → 3d |  |  |
| B7.32 91 00.02.01 | Grey gravel bed - 30-50 mm diameter (G1) | 2026-11-30 → 2026-12-19 (+19d) | 2026-12-06 → 2026-12-24 (+18d) |  |  | 3.76d → 3d |  |  |
| B7.32 91 00.02.02 | Grey gravel bed - 12-25 mm diameter (G2) | 2026-12-06 → 2026-12-24 (+18d) | 2026-12-12 → 2026-12-30 (+18d) |  |  | 3.76d → 3d |  |  |
| Management Road 01 | **Management Road 01** |  | 2026-11-28 → 2026-12-10 (+12d) |  |  |  |  |  |
| Wet Networks | **Wet Networks** |  | 2026-10-17 → 2026-11-05 (+19d) |  |  |  |  |  |
| Stormwater Network | **Stormwater Network** |  | 2026-09-20 → 2026-10-11 (+21d) |  |  |  |  |  |
| GRP | **GRP** |  | 2026-09-20 → 2026-10-11 (+21d) |  |  |  |  |  |
| B6.33 42 11.01-101 | Excavation |  |  |  |  |  | B6.33 42 11.02 5 SS → B1.2.31 23 16.01.6 |  |
| B6.33 42 11.01-1025 | Backfilling & Warrning Tape |  |  |  |  |  | B6.33 42 11.01-1019, B6.33 42 11.015 SS → B6.33 42 11.01-1019 |  |
| B6.33 42 11.01-1026 | Backfilling & Warrning Tape |  |  |  |  |  | B6.33 42 11.01-1020, B6.33 05 39.01.3417 SS → B6.33 42 11.01-1020 |  |
| B6.33 42 11.01-1027 | Backfilling & Warrning Tape |  |  |  |  |  | B6.33 42 11.01-1021, B6.33 05 39.01.3567 SS → B6.33 42 11.01-1021 |  |
| B6.33 42 11.01-1028 | Backfilling & Warrning Tape |  |  |  |  |  | B6.33 42 11.01-1022, B6.33 42 11.02.5 SS → B6.33 42 11.01-1022 |  |
| ?40011 | **?1100** |  | 2026-09-20 → 2026-10-11 (+21d) |  |  |  |  |  |
| 3 | **Depth From 2.5m to 3.5m** |  | 2026-09-20 → 2026-10-11 (+21d) |  |  |  |  |  |
| B6.33 42 11.01-1017 | Pipe Laying (68.80% Completed) |  | 2026-09-19 → 2026-09-15 A (-4d) | 123.55d → 122.28d | 69% → 100% | 113.72d → none |  | was named Pipe Laying; resources Labor [31.18 h]; Foreman [15.59 h]; Plumber Helper [15.59 h]; Plumber [15.59 h]; Operator [15.59 h]; Surveyor [15.59 h]; Surveyor Helper [15.59 h]; Mobile Crane [16 h]; 2.51m - 3.5m [21.87] → Labor [21.45 h]; Foreman [10.73 h]; Plumber Helper [10.73 h]; Plumber [10.73 h]; Operator [10.73 h]; Surveyor [10.73 h]; Surveyor Helper [10.73 h]; Mobile Crane [11.01 h]; 2.51m - 3.5m [15.05] |
| B6.33 42 11.01-1023 | Embedment & Test (68.80% Completed) |  | 2026-09-19 → 2026-09-15 A (-4d) | 91.11d → 89.28d | 69% → 100% | 113.16d → none |  | was named Embedment & Test; resources Labor [62.37 h]; Foreman [31.18 h]; Plumber Helper [31.18 h]; Plumber [31.18 h]; Operator [62.37 h]; Surveyor [31.18 h]; Surveyor Helper [31.18 h]; Loader [32 h]; Water Tanker [32 h]; Dump Truck [32 h]; Plate Compactor [32 h]; Roller Compactor [32 h]; 2.51m - 3.5m [9.73] → Labor [42.91 h]; Foreman [21.45 h]; Plumber Helper [21.45 h]; Plumber [21.45 h]; Operator [42.91 h]; Surveyor [21.45 h]; Surveyor Helper [21.45 h]; Loader [22.01 h]; Water Tanker [22.01 h]; Dump Truck [22.01 h]; Plate Compactor [22.01 h]; Roller Compactor [22.01 h]; 2.51m - 3.5m [6.69] |
| B6.33 42 11.01-1029 | Backfilling & Warrning Tape (68.80% Completed) |  | 2026-09-20 → 2026-09-15 A (-5d) | 87.4d → 85.28d | 69% → 100% | 112.88d → none |  | was named Backfilling & Warrning Tape; resources Labor [77.96 h]; Foreman [38.98 h]; Operator [155.92 h]; Surveyor [38.98 h]; Surveyor Helper [38.98 h]; Loader [40 h]; Water Tanker [40 h]; Dump Truck [40 h]; Plate Compactor [40 h]; Roller Compactor [40 h]; 2.51m - 3.5m [4.86] → Labor [53.63 h]; Foreman [26.82 h]; Operator [107.27 h]; Surveyor [26.82 h]; Surveyor Helper [26.82 h]; Loader [27.52 h]; Water Tanker [27.52 h]; Dump Truck [27.52 h]; Plate Compactor [27.52 h]; Roller Compactor [27.52 h]; 2.51m - 3.5m [3.34] |
| Strom Manholes | **Manholes** |  | 2026-09-17 → 2026-10-11 (+24d) |  |  |  |  |  |
| 1 | **?1200** |  | 2026-09-17 → 2026-09-24 (+7d) |  |  |  |  |  |
| 3 | **Depth From 1.5m to 2.5m** |  | 2026-09-17 → 2026-09-24 (+7d) |  |  |  |  |  |
| B6.33 05 39.01.2947 | Manhole Installation (91.00% Completed) |  | 2026-09-17 → 2026-09-15 A (-2d) | 92.62d → 91.62d | 91% → 100% | 114d → none |  | was named Manhole Installation; resources Labor [31.18 h]; Operator [31.18 h]; Surveyor [15.59 h]; Surveyor Helper [15.59 h]; Boom Truck [16 h]; Mobile Crane [16 h]; MH depth 1.50 - 2.5m [3.22] → Labor [28.38 h]; Operator [28.38 h]; Surveyor [14.19 h]; Surveyor Helper [14.19 h]; Boom Truck [14.56 h]; Mobile Crane [14.56 h]; MH depth 1.50 - 2.5m [2.93] |
| B6.33 05 39.01.2957 | Test, Internal Finishing, Benching & Cover (91.00% Completed) |  | 2026-09-17 → 2026-09-15 A (-2d) | 90.62d → 89.62d | 91% → 100% | 114d → none |  | was named Test, Internal Finishing, Benching & Cover; resources Labor [62.37 h]; Foreman [31.18 h]; Plumber Helper [31.18 h]; Plumber [31.18 h]; Mason [31.18 h]; MH depth 1.50 - 2.5m [1.07] → Labor [56.76 h]; Foreman [28.38 h]; Plumber Helper [28.38 h]; Plumber [28.38 h]; Mason [28.38 h]; MH depth 1.50 - 2.5m [0.98] |
| B6.33 05 39.01.2967 | Backfilling (91.00% Completed) |  | 2026-09-17 → 2026-09-15 A (-2d) | 86.62d → 85.62d | 91% → 100% | 114d → none |  | was named Backfilling; resources Labor [46.78 h]; Foreman [23.39 h]; Operator [46.78 h]; Surveyor [23.39 h]; Surveyor Helper [23.39 h]; Loader [24 h]; Water Tanker [24 h]; Dump Truck [24 h]; Plate Compactor [24 h]; MH depth 1.50 - 2.5m [2.15] → Labor [42.57 h]; Foreman [21.28 h]; Operator [42.57 h]; Surveyor [21.28 h]; Surveyor Helper [21.28 h]; Loader [21.84 h]; Water Tanker [21.84 h]; Dump Truck [21.84 h]; Plate Compactor [21.84 h]; MH depth 1.50 - 2.5m [1.96] |
| 2 | **?1500** |  | 2026-09-17 → 2026-10-08 (+21d) |  |  |  |  |  |
| 1 | **Depth From 2.5m to 3.5m** |  | 2026-09-17 → 2026-10-08 (+21d) |  |  |  |  |  |
| B6.33 05 39.01.3037 | Blinding Conc, & RC Base (91.00% Completed) |  | 2026-09-17 → 2026-09-15 A (-2d) | 86.62d → 85.62d | 91% → 100% | 114d → none |  | was named Blinding Conc, & RC Base; resources Labor [46.78 h]; Foreman [23.39 h]; Laboratory Officer [23.39 h]; Carpenter [23.39 h]; Steelfixer [23.39 h]; Mason [23.39 h]; MH depth 2.51 - 3.5m [0.17] → Labor [42.57 h]; Foreman [21.28 h]; Laboratory Officer [21.28 h]; Carpenter [21.28 h]; Steelfixer [21.28 h]; Mason [21.28 h]; MH depth 2.51 - 3.5m [0.16] |
| B6.33 05 39.01.3047 | Manhole Installation (91.00% Completed) |  | 2026-09-17 → 2026-09-15 A (-2d) | 81d → 80d | 91% → 100% | 114d → none |  | was named Manhole Installation; resources Labor [31.18 h]; Operator [31.18 h]; Surveyor [15.59 h]; Surveyor Helper [15.59 h]; Boom Truck [16 h]; Mobile Crane [16 h]; MH depth 2.51 - 3.5m [0.8] → Labor [28.38 h]; Operator [28.38 h]; Surveyor [14.19 h]; Surveyor Helper [14.19 h]; Boom Truck [14.56 h]; Mobile Crane [14.56 h]; MH depth 2.51 - 3.5m [0.72] |
| B6.33 05 39.01.3057 | Test, Internal Finishing, Benching & Cover (91.00% Completed) |  | 2026-09-17 → 2026-09-15 A (-2d) | 75d → 74d | 91% → 100% | 114d → none |  | was named Test, Internal Finishing, Benching & Cover; resources Labor [62.37 h]; Foreman [31.18 h]; Plumber Helper [31.18 h]; Plumber [31.18 h]; Mason [31.18 h]; MH depth 2.51 - 3.5m [0.17] → Labor [56.76 h]; Foreman [28.38 h]; Plumber Helper [28.38 h]; Plumber [28.38 h]; Mason [28.38 h]; MH depth 2.51 - 3.5m [0.16] |
| B6.33 05 39.01.3067 | Backfilling (91.00% Completed) |  | 2026-09-17 → 2026-09-15 A (-2d) | 74d → 73d | 91% → 100% | 114d → none |  | was named Backfilling; resources Labor [62.37 h]; Foreman [31.18 h]; Operator [62.37 h]; Surveyor [31.18 h]; Surveyor Helper [31.18 h]; Loader [32 h]; Water Tanker [32 h]; Dump Truck [32 h]; Plate Compactor [32 h]; MH depth 2.51 - 3.5m [0.34] → Labor [56.76 h]; Foreman [28.38 h]; Operator [56.76 h]; Surveyor [28.38 h]; Surveyor Helper [28.38 h]; Loader [29.12 h]; Water Tanker [29.12 h]; Dump Truck [29.12 h]; Plate Compactor [29.12 h]; MH depth 2.51 - 3.5m [0.31] |
| 3 | **?2000** |  | 2026-09-17 → 2026-10-11 (+24d) |  |  |  |  |  |
| 1 | **Depth From 2.5m to 3.5m** |  | 2026-09-17 → 2026-10-11 (+24d) |  |  |  |  |  |
| B6.33 05 39.01.3137 | Blinding Conc, & RC Base (88.33% Completed) |  | 2026-09-17 → 2026-09-15 A (-2d) | 86.62d → 85.62d | 88% → 100% | 114d → none |  | was named Blinding Conc, & RC Base; resources Labor [46.78 h]; Foreman [23.39 h]; Laboratory Officer [23.39 h]; Carpenter [23.39 h]; Steelfixer [23.39 h]; Mason [23.39 h]; Storm MH depth 2.51 - 3.5m [0.42] → Labor [41.32 h]; Foreman [20.66 h]; Laboratory Officer [20.66 h]; Carpenter [20.66 h]; Steelfixer [20.66 h]; Mason [20.66 h]; Storm MH depth 2.51 - 3.5m [0.37] |
| B6.33 05 39.01.3147 | Manhole Installation (88.33% Completed) |  | 2026-09-17 → 2026-09-15 A (-2d) | 75d → 74d | 88% → 100% | 114d → none |  | was named Manhole Installation; resources Labor [31.18 h]; Operator [31.18 h]; Surveyor [15.59 h]; Surveyor Helper [15.59 h]; Boom Truck [16 h]; Mobile Crane [16 h]; Storm MH depth 2.51 - 3.5m [1.97] → Labor [27.55 h]; Operator [27.55 h]; Surveyor [13.77 h]; Surveyor Helper [13.77 h]; Boom Truck [14.13 h]; Mobile Crane [14.13 h]; Storm MH depth 2.51 - 3.5m [1.74] |
| B6.33 05 39.01.3157 | Test, Internal Finishing, Benching & Cover (88.33% Completed) |  | 2026-09-17 → 2026-09-15 A (-2d) | 74d → 73d | 88% → 100% | 114d → none |  | was named Test, Internal Finishing, Benching & Cover; resources Labor [62.37 h]; Foreman [31.18 h]; Plumber Helper [31.18 h]; Plumber [31.18 h]; Mason [31.18 h]; Storm MH depth 2.51 - 3.5m [0.42] → Labor [55.09 h]; Foreman [27.55 h]; Plumber Helper [27.55 h]; Plumber [27.55 h]; Mason [27.55 h]; Storm MH depth 2.51 - 3.5m [0.37] |
| B6.33 05 39.01.3167 | Backfilling (88.33% Completed) |  | 2026-09-17 → 2026-09-15 A (-2d) | 74d → 73d | 88% → 100% | 114d → none |  | was named Backfilling; resources Labor [77.96 h]; Foreman [38.98 h]; Operator [77.96 h]; Surveyor [38.98 h]; Surveyor Helper [38.98 h]; Loader [40 h]; Water Tanker [40 h]; Dump Truck [40 h]; Plate Compactor [40 h]; Storm MH depth 2.51 - 3.5m [0.91] → Labor [68.86 h]; Foreman [34.43 h]; Operator [68.86 h]; Surveyor [34.43 h]; Surveyor Helper [34.43 h]; Loader [35.33 h]; Water Tanker [35.33 h]; Dump Truck [35.33 h]; Plate Compactor [35.33 h]; Storm MH depth 2.51 - 3.5m [0.8] |
| Catch Basins | **Catch Basins** |  | 2026-09-19 → 2026-10-10 (+21d) |  |  |  |  |  |
| Sing | **Single** |  | 2026-09-17 → 2026-10-08 (+21d) |  |  |  |  |  |
| B6.33 05 40.01.250 | Excavation, Compaction & Vapour Barrier (91.00% Completed) |  | 2026-09-17 → 2026-09-15 A (-2d) | 86.62d → 85.62d | 91% → 100% | 114d → none |  | was named Excavation, Compaction & Vapour Barrier; resources Labor [31.18 h]; Foreman [15.59 h]; Operator [31.18 h]; Surveyor [15.59 h]; Surveyor Helper [15.59 h]; Excavator (With Bucket) [16 h]; Water Tanker [16 h]; Dump Truck [16 h]; Roller Compactor [16 h]; Single Catch basin [2.98] → Labor [28.38 h]; Foreman [14.19 h]; Operator [28.38 h]; Surveyor [14.19 h]; Surveyor Helper [14.19 h]; Excavator (With Bucket) [14.56 h]; Water Tanker [14.56 h]; Dump Truck [14.56 h]; Roller Compactor [14.56 h]; Single Catch basin [2.71] |
| B6.33 05 40.01.260 | Blinding Conc. (91.00% Completed) |  | 2026-09-17 → 2026-09-15 A (-2d) | 75d → 74d | 91% → 100% | 114d → none |  | was named Blinding Conc.; resources Labor [31.18 h]; Foreman [15.59 h]; Laboratory Officer [15.59 h]; Carpenter [15.59 h]; Steelfixer [15.59 h]; Mason [15.59 h]; Single Catch basin [1.99] → Labor [28.38 h]; Foreman [14.19 h]; Laboratory Officer [14.19 h]; Carpenter [14.19 h]; Steelfixer [14.19 h]; Mason [14.19 h]; Single Catch basin [1.81] |
| B6.33 05 40.01.270 | Catch Basin Installation (91.00% Completed) |  | 2026-09-17 → 2026-09-15 A (-2d) | 74d → 73d | 91% → 100% | 114d → none |  | was named Catch Basin Installation; resources Labor [46.78 h]; Foreman [23.39 h]; Carpenter [23.39 h]; Steelfixer [23.39 h]; Mason [23.39 h]; Operator [46.78 h]; Surveyor [23.39 h]; Surveyor Helper [23.39 h]; Boom Truck [24 h]; Single Catch basin [8.93] → Labor [42.57 h]; Foreman [21.28 h]; Carpenter [21.28 h]; Steelfixer [21.28 h]; Mason [21.28 h]; Operator [42.57 h]; Surveyor [21.28 h]; Surveyor Helper [21.28 h]; Boom Truck [21.84 h]; Single Catch basin [8.13] |
| B6.33 05 40.01.280 | Backfilling, DI Frame & Grate Cover Fixing (91.00% Completed) |  | 2026-09-17 → 2026-09-15 A (-2d) | 74d → 73d | 91% → 100% | 114d → none |  | was named Backfilling, DI Frame & Grate Cover Fixing; resources Labor [62.37 h]; Foreman [31.18 h]; Operator [62.37 h]; Surveyor [31.18 h]; Surveyor Helper [31.18 h]; Loader [32 h]; Water Tanker [32 h]; Dump Truck [32 h]; Plate Compactor [32 h]; Single Catch basin [5.96] → Labor [56.76 h]; Foreman [28.38 h]; Operator [56.76 h]; Surveyor [28.38 h]; Surveyor Helper [28.38 h]; Loader [29.12 h]; Water Tanker [29.12 h]; Dump Truck [29.12 h]; Plate Compactor [29.12 h]; Single Catch basin [5.42] |

| ID | Task | Start | Finish | Duration | Complete | Total float | Predecessors | Other |
| --- | --- | --- | --- | --- | --- | --- | --- | --- |
| UPVC | **UPVC** |  | 2026-09-19 → 2026-10-10 (+21d) |  |  |  |  |  |
| UPVC300 | **?300 From 0.0 to 1.5m** |  | 2026-09-17 → 2026-10-08 (+21d) |  |  |  |  |  |
| B6.33 42 11.35-131 | Catch Basin Opening Prep. (50.00% Completed) |  | 2026-09-17 → 2026-09-15 A (-2d) | 140d → 139d | 50% → 100% | 114d → none |  | was named Catch Basin Opening Prep.; resources Labor [31.18 h]; Foreman [15.59 h]; Plumber Helper [15.59 h]; Plumber [15.59 h]; less than 1.5 [46.62] → Labor [15.59 h]; Foreman [7.8 h]; Plumber Helper [7.8 h]; Plumber [7.8 h]; less than 1.5 [23.31] |
| B6.33 42 11.35-132 | Fittings & Pipe Installation (50.00% Completed) |  | 2026-09-17 → 2026-09-15 A (-2d) | 138d → 137d | 50% → 100% | 114d → none |  | was named Fittings & Pipe Installation; resources Labor [31.18 h]; Foreman [15.59 h]; Plumber Helper [15.59 h]; Plumber [15.59 h]; Surveyor [15.59 h]; Surveyor Helper [15.59 h]; less than 1.5 [186.46] → Labor [15.59 h]; Foreman [7.8 h]; Plumber Helper [7.8 h]; Plumber [7.8 h]; Surveyor [7.8 h]; Surveyor Helper [7.8 h]; less than 1.5 [93.23] |
| UPVC3001 | **?400 From 0.0 to 1.5m** |  | 2026-09-19 → 2026-10-10 (+21d) |  |  |  |  |  |
| B6.33 42 11.36-121 | Catch Basin Opening Prep. (82.56% Completed) |  | 2026-09-19 → 2026-09-15 A (-4d) | 86.71d → 85.62d | 83% → 100% | 113.91d → none |  | was named Catch Basin Opening Prep.; resources Labor [31.18 h]; Foreman [15.59 h]; Plumber Helper [15.59 h]; Plumber [15.59 h]; less than 1.5 [46.62] → Labor [25.74 h]; Foreman [12.87 h]; Plumber Helper [12.87 h]; Plumber [12.87 h]; less than 1.5 [38.48] |
| B6.33 42 11.36-122 | Fittings & Pipe Installation (67.00% Completed) |  | 2026-09-19 → 2026-09-15 A (-4d) | 75d → 73d | 67% → 100% | 113d → none |  | was named Fittings & Pipe Installation; resources Labor [31.18 h]; Foreman [15.59 h]; Plumber Helper [15.59 h]; Plumber [15.59 h]; Surveyor [15.59 h]; Surveyor Helper [15.59 h]; less than 1.5 [186.46] → Labor [20.89 h]; Foreman [10.45 h]; Plumber Helper [10.45 h]; Plumber [10.45 h]; Surveyor [10.45 h]; Surveyor Helper [10.45 h]; less than 1.5 [124.93] |
| Potable Water | **Potable Water Network** |  | 2026-10-01 → 2026-10-21 (+20d) |  |  |  |  |  |
| HDPE | **HDPE Pipes** |  | 2026-09-19 → 2026-10-10 (+21d) |  |  |  |  |  |
| ?110mm | **?110mm** |  | 2026-09-19 → 2026-10-10 (+21d) |  |  |  |  |  |
| Depth: 1.51m - 2.5m | **Depth: 1.51m - 2.5m** |  | 2026-09-19 → 2026-10-10 (+21d) |  |  |  |  |  |
| B3.33 14 11.01.0110 | Excavation |  |  |  |  |  | DMM2-Proc-Delv-5818, B6.33 42 11.01-1029 SS → DMM2-Proc-Delv-5818 |  |
| B3.33 14 11.01.0118 | Backfilling & Warrning Tape (76.45% Completed) |  | 2026-09-19 → 2026-09-15 A (-4d) | 117.18d → 116d | 76% → 100% | 113.82d → none |  | was named Backfilling & Warrning Tape; resources Labor [77.96 h]; Foreman [38.98 h]; Operator [155.92 h]; Surveyor [38.98 h]; Surveyor Helper [38.98 h]; Loader [40 h]; Water Tanker [40 h]; Dump Truck [40 h]; Plate Compactor [40 h]; Roller Compactor [40 h]; Depth: 1.51m - 2.5m → Labor [59.6 h]; Foreman [29.8 h]; Operator [119.21 h]; Surveyor [29.8 h]; Surveyor Helper [29.8 h]; Loader [30.58 h]; Water Tanker [30.58 h]; Dump Truck [30.58 h]; Plate Compactor [30.58 h]; Roller Compactor [30.58 h]; Depth: 1.51m - 2.5m |
| Crossing | **Plots and Buildings Crossing** | 2026-09-16 → 2026-10-07 (+21d) | 2026-10-01 → 2026-10-21 (+20d) |  |  |  |  |  |
| B3.33 14 13.02.19 | Earthwork | 2026-09-16 → 2026-10-07 (+21d) | 2026-09-21 → 2026-10-12 (+21d) |  |  | 89d → 86.32d |  |  |
| B3.33 14 13.02.20 | Sand Bedding | 2026-09-22 → 2026-10-13 (+21d) | 2026-09-26 → 2026-10-15 (+19d) |  |  | 89d → 86.32d |  |  |
| B3.33 14 13.02.21 | Tee, Pipe (Crossing) Installation & Backfilling | 2026-09-27 → 2026-10-17 (+20d) | 2026-10-01 → 2026-10-21 (+20d) |  |  | 89d → 86.32d |  |  |
| Valves & Chambers | **Valves & Chambers** |  | 2026-09-19 → 2026-10-10 (+21d) |  |  |  |  |  |
| GV | **Gate Valves** |  | 2026-09-19 → 2026-10-10 (+21d) |  |  |  |  |  |
| 1 | **Gate valves dia (110) mm** |  | 2026-09-19 → 2026-10-10 (+21d) |  |  |  |  |  |
| B3.33 14 19.01.111 | Spindle & Surface Box | 2026-09-16 → 2026-10-07 (+21d) | 2026-09-19 → 2026-10-10 (+21d) |  |  | 107d → 104.32d |  |  |
| Fire Fighting | **Fire Fighting Network** |  | 2026-10-01 → 2026-10-21 (+20d) |  |  |  |  |  |
| B3.1. 33 14 13.0114 | Pipe Laying |  |  |  |  |  | B3.1. 33 14 13.0112, B3.1. 33 14 13.05 SS, B3.1. 33 14 13.6 SS → B3.1. 33 14 13.0112 |  |
| Valves & Chambers | **Valves & Chambers** |  | 2026-10-01 → 2026-10-21 (+20d) |  |  |  |  |  |
| GV | **Gate Valves** |  | 2026-09-20 → 2026-10-11 (+21d) |  |  |  |  |  |
| 1 | **Gate valves dia (250) mm** |  | 2026-09-20 → 2026-10-11 (+21d) |  |  |  |  |  |
| B3.33 14 19.01.126 | Burried Isolation Valve Installation | 2026-09-16 → 2026-10-07 (+21d) | 2026-09-20 → 2026-10-11 (+21d) |  |  | 82d → 86.32d |  |  |
| 2 | **Air Valves** |  | 2026-09-27 → 2026-10-17 (+20d) |  |  |  |  |  |
| 4 | **Air valves on less than 315 mm. (In Chamber)** |  | 2026-09-27 → 2026-10-17 (+20d) |  |  |  |  |  |
| B3.33 05 63.02.52 | Land Adjustment & Compaction (75.00% Completed) |  | 2026-09-19 → 2026-09-15 A (-4d) | 8.2d → 7.2d | 75% → 100% | 113d → none |  | was named Land Adjustment & Compaction; resources Labor [31.18 h]; Foreman [15.59 h]; Operator [62.37 h]; Surveyor [15.59 h]; Surveyor Helper [15.59 h]; Excavator (With Bucket) [16 h]; Water Tanker [16 h]; Dump Truck [16 h]; Plate Compactor [16 h]; FF Air valve Dia. 50 mm on pipes with Dia. less than 315 mm [0.18]; FF Air valve chamber; on less than 315 mm Dia. pipeline [0.18] → Labor [23.39 h]; Foreman [11.69 h]; Operator [46.78 h]; Surveyor [11.69 h]; Surveyor Helper [11.69 h]; Excavator (With Bucket) [12 h]; Water Tanker [12 h]; Dump Truck [12 h]; Plate Compactor [12 h]; FF Air valve Dia. 50 mm on pipes with Dia. less than 315 mm [0.14]; FF Air valve chamber; on less than 315 mm Dia. pipeline [0.14] |
| B3.33 05 63.02.50 | Foundations (75.00% Completed) |  | 2026-09-19 → 2026-09-15 A (-4d) | 5.2d → 4.2d | 75% → 100% | 113d → none |  | was named Foundations; resources Labor [46.78 h]; Foreman [23.39 h]; Laboratory Officer [23.39 h]; Carpenter [23.39 h]; Steelfixer [23.39 h]; Mason [23.39 h]; FF Air valve Dia. 50 mm on pipes with Dia. less than 315 mm [0.18]; FF Air valve chamber; on less than 315 mm Dia. pipeline [0.24] → Labor [35.08 h]; Foreman [17.54 h]; Laboratory Officer [17.54 h]; Carpenter [17.54 h]; Steelfixer [17.54 h]; Mason [17.54 h]; FF Air valve Dia. 50 mm on pipes with Dia. less than 315 mm [0.14]; FF Air valve chamber; on less than 315 mm Dia. pipeline [0.18] |
| B3.33 05 63.02.53 | Chambers Walls Conc Cast In Situ (75.00% Completed) |  | 2026-09-19 → 2026-09-15 A (-4d) | 4.2d → 3.2d | 75% → 100% | 113d → none |  | was named Chambers Walls Conc Cast In Situ; resources Labor [46.78 h]; Foreman [23.39 h]; Laboratory Officer [23.39 h]; Carpenter [23.39 h]; Steelfixer [23.39 h]; Mason [23.39 h]; FF Air valve Dia. 50 mm on pipes with Dia. less than 315 mm [0.24]; FF Air valve chamber; on less than 315 mm Dia. pipeline [0.24] → Labor [35.08 h]; Foreman [17.54 h]; Laboratory Officer [17.54 h]; Carpenter [17.54 h]; Steelfixer [17.54 h]; Mason [17.54 h]; FF Air valve Dia. 50 mm on pipes with Dia. less than 315 mm [0.18]; FF Air valve chamber; on less than 315 mm Dia. pipeline [0.18] |
| B3.33 05 63.02.51 | Chamber Curing, Finishing & Steel Cover (75.00% Completed) |  | 2026-09-19 → 2026-09-15 A (-4d) | 2.2d → 1.2d | 75% → 100% | 67d → none |  | was named Chamber Curing, Finishing & Steel Cover; resources Labor [62.37 h]; Mason [31.18 h]; FF Air valve Dia. 50 mm on pipes with Dia. less than 315 mm [0.24]; FF Air valve chamber; on less than 315 mm Dia. pipeline [0.18] → Labor [46.78 h]; Mason [23.39 h]; FF Air valve Dia. 50 mm on pipes with Dia. less than 315 mm [0.18]; FF Air valve chamber; on less than 315 mm Dia. pipeline [0.14] |
| B3.33 05 63.02.54 | Valve & Fitting Installation | 2026-09-20 → 2026-10-11 (+21d) | 2026-09-27 → 2026-10-17 (+20d) |  |  | 67d → 64.32d | B3.33 05 63.02.51, B3.1. 33 14 13.0118, B3.1. 33 14 13-01102, B3.1. 33 14 13-01100 → B3.33 05 63.02.51_R, B3.1. 33 14 13.0118, B3.1. 33 14 13-01102, B3.1. 33 14 13-01100 |  |
| Washout Valves | **Washout Valves** |  | 2026-10-01 → 2026-10-21 (+20d) |  |  |  |  |  |
| 4 | **Washout valves on 110-400 mm. (In Chamber)** |  | 2026-10-01 → 2026-10-21 (+20d) |  |  |  |  |  |
| B3.33 05 63.01.49 | Valve & Fitting Installation | 2026-09-24 → 2026-10-14 (+20d) | 2026-10-01 → 2026-10-21 (+20d) |  |  | 78.05d → 75.37d | B3.33 05 63.01.46, B3.33 14 19.01.fh27, B3.1. 33 14 13-01102, B3.1. 33 14 13-0196 → B3.33 05 63.01.46, B3.33 14 19.01.fh27_R, B3.1. 33 14 13-01102, B3.1. 33 14 13-0196 |  |
| 3 | **Fire Hydrant** |  | 2026-09-24 → 2026-10-14 (+20d) |  |  |  |  |  |
| B3.33 14 19.01.fh25 | Firehydrant Fixing/Installation (1.00% Completed) |  | 2026-09-21 → 2026-09-15 A (-6d) | 78.56d → 75.59d | 1% → 100% | 111.03d → none |  | was named Firehydrant Fixing/Installation; resources Labor [46.78 h]; Foreman [23.39 h]; Plumber Helper [23.39 h]; Plumber [23.39 h]; Operator [46.78 h]; Surveyor [23.39 h]; Surveyor Helper [23.39 h]; JCB [24 h]; 3-outlet fire hydrant (2 x 2.5 inch and 1 x 4.5 inch) in the form of a separate dry vacuum cylinder [4.47] → Labor [0.47 h]; Foreman [0.23 h]; Plumber Helper [0.23 h]; Plumber [0.23 h]; Operator [0.47 h]; Surveyor [0.23 h]; Surveyor Helper [0.23 h]; JCB [0.24 h]; 3-outlet fire hydrant (2 x 2.5 inch and 1 x 4.5 inch) in the form of a separate dry vacuum cylinder [0.04] |
| B3.33 14 19.01.fh27 | Backfilling & Compaction (1.00% Completed) |  | 2026-09-24 → 2026-09-15 A (-9d) | 77.54d → 72.59d | 1% → 100% | 78.05d → none |  | was named Backfilling & Compaction; resources Labor [77.96 h]; Foreman [38.98 h]; Operator [77.96 h]; Surveyor [38.98 h]; Surveyor Helper [38.98 h]; Loader [40 h]; Water Tanker [40 h]; Dump Truck [40 h]; Plate Compactor [40 h]; 3-outlet fire hydrant (2 x 2.5 inch and 1 x 4.5 inch) in the form of a separate dry vacuum cylinder [1.49] → Labor [0.78 h]; Foreman [0.39 h]; Operator [0.78 h]; Surveyor [0.39 h]; Surveyor Helper [0.39 h]; Loader [0.4 h]; Water Tanker [0.4 h]; Dump Truck [0.4 h]; Plate Compactor [0.4 h]; 3-outlet fire hydrant (2 x 2.5 inch and 1 x 4.5 inch) in the form of a separate dry vacuum cylinder [0.01] |
| TSE Network | **TSE Network** |  | 2026-10-17 → 2026-11-05 (+19d) |  |  |  |  |  |
| HDPE | **HDPE Pipes** |  | 2026-09-26 → 2026-10-19 (+23d) |  |  |  |  |  |
| ?125mm | **?125mm** |  | 2026-09-26 → 2026-10-19 (+23d) |  |  |  |  |  |
| Depth: 0.0m - 1.5m | **Depth: 0.0m - 1.5m** |  | 2026-09-26 → 2026-10-19 (+23d) |  |  |  |  |  |
| B4.33 14 13.0110 | Excavation (17.89% Completed) |  | 2026-09-26 → 2026-09-15 A (-11d) | 91.46d → 89d | 18% → 100% | 25d → none | B3.1. 33 14 13.0110, B3.33 05 63.02.89 FF → B3.1. 33 14 13.0110 | was named Excavation; resources Labor [46.78 h]; Foreman [23.39 h]; Operator [46.78 h]; Surveyor [23.39 h]; Surveyor Helper [23.39 h]; Excavator (With Bucket) [24 h]; Water Tanker [24 h]; Dump Truck [24 h]; Plate Compactor [24 h]; Dia. 125mm 0.0m - 1.5m [80.8] → Labor [8.37 h]; Foreman [4.18 h]; Operator [8.37 h]; Surveyor [4.18 h]; Surveyor Helper [4.18 h]; Excavator (With Bucket) [4.29 h]; Water Tanker [4.29 h]; Dump Truck [4.29 h]; Plate Compactor [4.29 h]; Dia. 125mm 0.0m - 1.5m [14.45] |
| B4.33 14 13.0112 | Sand Bedding (17.89% Completed) |  | 2026-09-26 → 2026-09-15 A (-11d) | 88.64d → 87d | 18% → 100% | 25d → none |  | was named Sand Bedding; resources Labor [31.18 h]; Foreman [15.59 h]; Operator [62.37 h]; Surveyor [15.59 h]; Surveyor Helper [15.59 h]; Loader [16 h]; Water Tanker [16 h]; Dump Truck [16 h]; Plate Compactor [16 h]; Dia. 125mm 0.0m - 1.5m [20.2] → Labor [5.58 h]; Foreman [2.79 h]; Operator [11.15 h]; Surveyor [2.79 h]; Surveyor Helper [2.79 h]; Loader [2.86 h]; Water Tanker [2.86 h]; Dump Truck [2.86 h]; Plate Compactor [2.86 h]; Dia. 125mm 0.0m - 1.5m [3.61] |
| B4.33 14 13.0114 | Pipe Laying (17.89% Completed) |  | 2026-09-26 → 2026-09-15 A (-11d) | 86.64d → 85d | 18% → 100% | 25d → none |  | was named Pipe Laying; resources Labor [31.18 h]; Foreman [15.59 h]; Plumber Helper [15.59 h]; Plumber [15.59 h]; Operator [15.59 h]; Surveyor [15.59 h]; Surveyor Helper [15.59 h]; Mobile Crane [16 h]; Dia. 125mm 0.0m - 1.5m [181.8] → Labor [5.58 h]; Foreman [2.79 h]; Plumber Helper [2.79 h]; Plumber [2.79 h]; Operator [2.79 h]; Surveyor [2.79 h]; Surveyor Helper [2.79 h]; Mobile Crane [2.86 h]; Dia. 125mm 0.0m - 1.5m [32.51] |
| B4.33 14 13.0116 | Embedment & Test (17.89% Completed) |  | 2026-09-26 → 2026-09-15 A (-11d) | 84.29d → 81d | 18% → 100% | 108d → none |  | was named Embedment & Test; resources Labor [62.37 h]; Foreman [31.18 h]; Plumber Helper [31.18 h]; Plumber [31.18 h]; Operator [62.37 h]; Surveyor [31.18 h]; Surveyor Helper [31.18 h]; Loader [32 h]; Water Tanker [32 h]; Dump Truck [32 h]; Plate Compactor [32 h]; Roller Compactor [32 h]; Dia. 125mm 0.0m - 1.5m [80.8] → Labor [11.15 h]; Foreman [5.58 h]; Plumber Helper [5.58 h]; Plumber [5.58 h]; Operator [11.15 h]; Surveyor [5.58 h]; Surveyor Helper [5.58 h]; Loader [5.72 h]; Water Tanker [5.72 h]; Dump Truck [5.72 h]; Plate Compactor [5.72 h]; Roller Compactor [5.72 h]; Dia. 125mm 0.0m - 1.5m [14.45] |
| B4.33 14 13.0118 | Backfilling & Warrning Tape (17.89% Completed) |  | 2026-09-22 → 2026-09-15 A (-7d) | 80.11d → 76d | 18% → 100% | 98.89d → none | B4.33 14 13.0116 SS, B3.33 14 19.01.143 FF, B3.33 14 19.01.163 FF → B4.33 14 13.0116 SS | was named Backfilling & Warrning Tape; resources Labor [77.96 h]; Foreman [38.98 h]; Operator [155.92 h]; Surveyor [38.98 h]; Surveyor Helper [38.98 h]; Loader [40 h]; Water Tanker [40 h]; Dump Truck [40 h]; Plate Compactor [40 h]; Roller Compactor [40 h]; Dia. 125mm 0.0m - 1.5m [40.4] → Labor [13.94 h]; Foreman [6.97 h]; Operator [27.89 h]; Surveyor [6.97 h]; Surveyor Helper [6.97 h]; Loader [7.15 h]; Water Tanker [7.15 h]; Dump Truck [7.15 h]; Plate Compactor [7.15 h]; Roller Compactor [7.15 h]; Dia. 125mm 0.0m - 1.5m [7.23] |
| Valves & Chambers | **Valves & Chambers** |  | 2026-10-17 → 2026-11-05 (+19d) |  |  |  |  |  |
| GV | **Gate Valves** |  | 2026-09-21 → 2026-10-19 (+28d) |  |  |  |  |  |
| GV 100 | **Gate valves dia (100) mm** |  | 2026-09-21 → 2026-10-19 (+28d) |  |  |  |  |  |
| B3.33 14 19.01.142 | Burried Isolation Valve Installation (50.00% Completed) |  | 2026-09-17 → 2026-09-15 A (-2d) | 83d → 82d | 50% → 100% | 99d → none |  | was named Burried Isolation Valve Installation; resources Labor [31.18 h]; Plumber Helper [15.59 h]; Plumber [15.59 h]; Operator [31.18 h]; Boom Truck [16 h]; TSE Gate V Dia. 100 mm [5.6] → Labor [15.59 h]; Plumber Helper [7.8 h]; Plumber [7.8 h]; Operator [15.59 h]; Boom Truck [8 h]; TSE Gate V Dia. 100 mm [2.8] |
| B3.33 14 19.01.143 | Spindle & Surface Box | 2026-09-19 → 2026-10-15 (+26d) | 2026-09-21 → 2026-10-19 (+28d) |  |  | 99d → 90.96d | B3.33 14 19.01.142 → B3.33 14 19.01.142_R |  |
| GV 150 | **Gate valves dia (150) mm** |  | 2026-09-21 → 2026-10-19 (+28d) |  |  |  |  |  |
| B3.33 14 19.01.153 | Burried Isolation Valve Installation (50.00% Completed) |  | 2026-09-17 → 2026-09-15 A (-2d) | 82d → 81d | 50% → 100% | 99d → none |  | was named Burried Isolation Valve Installation; resources Labor [31.18 h]; Plumber Helper [15.59 h]; Plumber [15.59 h]; Operator [31.18 h]; Boom Truck [16 h]; TSE Gate V Dia. 150 mm [1.4] → Labor [15.59 h]; Plumber Helper [7.8 h]; Plumber [7.8 h]; Operator [15.59 h]; Boom Truck [8 h]; TSE Gate V Dia. 150 mm [0.7] |
| B3.33 14 19.01.163 | Spindle & Surface Box | 2026-09-19 → 2026-10-15 (+26d) | 2026-09-21 → 2026-10-19 (+28d) |  |  | 99d → 90.96d | B3.33 14 19.01.153 → B3.33 14 19.01.153_R |  |
| Solenoid valves | **Solenoid valves** | 2026-09-27 → 2026-10-17 (+20d) | 2026-10-17 → 2026-11-05 (+19d) |  |  |  |  |  |
| Solenoid valve ?1.0 | **1 Solenoid valve ?1.0 inch with box** | 2026-09-30 → 2026-10-20 (+20d) | 2026-10-10 → 2026-10-29 (+19d) |  |  |  |  |  |
| B4.32 84 13.71 | Cable Laying Two-Wire Decoder (12 AWG) | 2026-09-30 → 2026-10-20 (+20d) | 2026-10-03 → 2026-10-22 (+19d) |  |  | 25d → 22.32d |  |  |
| B4.32 84 13.72 | Solenoid Valve Box Installation | 2026-10-04 → 2026-10-24 (+20d) | 2026-10-06 → 2026-10-26 (+20d) |  |  | 28d → 25.32d |  |  |
| B4.32 84 13.73 | Bubblers Installation | 2026-10-07 → 2026-10-27 (+20d) | 2026-10-10 → 2026-10-29 (+19d) |  |  | 28d → 25.32d |  |  |
| B4.32 84 13.77 | Pull Box Installation | 2026-10-07 → 2026-10-27 (+20d) | 2026-10-10 → 2026-10-29 (+19d) |  |  | 31d → 28.32d |  |  |
| Solenoid valve ?1.5 | **1 Solenoid valve ?1.5 inch with box** | 2026-09-27 → 2026-10-17 (+20d) | 2026-10-17 → 2026-11-05 (+19d) |  |  |  |  |  |
| B4.33 14 13.09 | Extra flexible dripline with 3.0LPH | 2026-09-27 → 2026-10-17 (+20d) | 2026-09-29 → 2026-10-19 (+20d) |  |  | 31d → 28.32d | B4.33 14 13.0114 → B4.33 14 13.0114_R |  |
| B4.32 84 13.04 | Dripper | 2026-09-30 → 2026-10-20 (+20d) | 2026-10-03 → 2026-10-22 (+19d) |  |  | 31d → 28.32d |  |  |
| B4.32 84 13.74 | Cable Laying Two-Wire Decoder (12 AWG) | 2026-10-04 → 2026-10-24 (+20d) | 2026-10-06 → 2026-10-26 (+20d) |  |  | 25d → 22.32d |  |  |
| B4.32 84 13.78 | Pull Box Installation | 2026-10-07 → 2026-10-27 (+20d) | 2026-10-10 → 2026-10-29 (+19d) |  |  | 25d → 22.32d |  |  |
| B4.32 84 13.75 | Solenoid Valve Box Installation | 2026-10-11 → 2026-10-31 (+20d) | 2026-10-13 → 2026-11-02 (+20d) |  |  | 25d → 22.32d |  |  |
| B4.32 84 13.76 | Bubblers Installation | 2026-10-14 → 2026-11-03 (+20d) | 2026-10-17 → 2026-11-05 (+19d) |  |  | 25d → 22.32d |  |  |

| ID | Task | Start | Finish | Duration | Complete | Total float | Predecessors | Other |
| --- | --- | --- | --- | --- | --- | --- | --- | --- |
| Solenoid valve ?2.0 | **1 Solenoid valve ?2.0 inch with box** | 2026-09-27 → 2026-10-17 (+20d) | 2026-10-06 → 2026-10-26 (+20d) |  |  |  |  |  |
| B4.32 84 13.68 | Cable Laying Two-Wire Decoder (12 AWG) | 2026-09-27 → 2026-10-17 (+20d) | 2026-09-29 → 2026-10-19 (+20d) |  |  | 25d → 22.32d | B4.33 14 13.0114 → B4.33 14 13.0114_R |  |
| B4.32 84 13.69 | Solenoid Valve Box Installation | 2026-09-30 → 2026-10-20 (+20d) | 2026-10-03 → 2026-10-22 (+19d) |  |  | 31d → 28.32d |  |  |
| B4.32 84 13.79 | Pull Box Installation | 2026-09-30 → 2026-10-20 (+20d) | 2026-10-03 → 2026-10-22 (+19d) |  |  | 31d → 28.32d |  |  |
| B4.32 84 13.70 | Bubblers Installation | 2026-10-04 → 2026-10-24 (+20d) | 2026-10-06 → 2026-10-26 (+20d) |  |  | 31d → 28.32d |  |  |
| Dry Networks | **Dry Networks** | 2026-09-21 → 2026-10-12 (+21d) | 2026-11-28 → 2026-12-10 (+12d) |  |  |  |  |  |
| MV | **Medium Voltage Network** | 2026-09-21 → 2026-10-12 (+21d) | 2026-11-04 → 2026-11-24 (+20d) |  |  |  |  |  |
| Duct Banks | **Duct Banks** | 2026-09-22 → 2026-10-19 (+27d) | 2026-11-04 → 2026-11-24 (+20d) |  |  |  |  |  |
| 4 Way | **4 Way** | 2026-09-22 → 2026-10-19 (+27d) | 2026-11-04 → 2026-11-24 (+20d) |  |  |  |  |  |
| B2.31 23 00.639 | Excavation | 2026-09-22 → 2026-10-19 (+27d) | 2026-09-28 → 2026-10-24 (+26d) |  |  | 98.89d → 90.86d | B4.33 14 13.0118 → B4.33 14 13.0118_R |  |
| B2.33 71 00.286 | Shuttering, Steel Fixing Incl. UPVC Pipe & Conc. Cast | 2026-09-28 → 2026-10-24 (+26d) | 2026-10-03 → 2026-10-28 (+25d) |  |  | 98.89d → 90.86d |  |  |
| B2.33 71 00.287 | Backfilling & Warrning Tape | 2026-11-01 → 2026-11-21 (+20d) | 2026-11-04 → 2026-11-24 (+20d) |  |  | 74d → 71.32d |  |  |
| Cables | **Cables** | 2026-09-21 → 2026-10-12 (+21d) | 2026-10-13 → 2026-11-03 (+21d) |  |  |  |  |  |
| 3C,500mm2 | **3C,500mm2** | 2026-09-21 → 2026-10-12 (+21d) | 2026-10-13 → 2026-11-03 (+21d) |  |  |  |  |  |
| B2.33 71 49.23.74 | Cable 13.8 kV Unarmored | 2026-09-21 → 2026-10-12 (+21d) | 2026-09-26 → 2026-10-15 (+19d) |  |  | 85d → 82.32d |  |  |
| B2.33 71 49.23.75 | Straight joints cables | 2026-09-27 → 2026-10-17 (+20d) | 2026-09-29 → 2026-10-19 (+20d) |  |  | 85d → 82.32d |  |  |
| B2.33 71 49.23.76 | Cable Termination | 2026-10-10 → 2026-10-31 (+21d) | 2026-10-13 → 2026-11-03 (+21d) |  |  | 76.88d → 73.2d |  |  |
| Street Lighting | **Street Lighting** | 2026-09-21 → 2026-10-12 (+21d) | 2026-10-12 → 2026-11-01 (+20d) |  |  |  |  |  |
| SL Poles | **SL Poles** | 2026-09-21 → 2026-10-12 (+21d) | 2026-10-10 → 2026-10-29 (+19d) |  |  |  |  |  |
| Pole (10 M Sngl Arm) | **Pole (10 M Single Arm)** | 2026-09-21 → 2026-10-12 (+21d) | 2026-10-10 → 2026-10-29 (+19d) |  |  |  |  |  |
| B2.33 71 16.51 | Excavation | 2026-09-21 → 2026-10-12 (+21d) | 2026-09-24 → 2026-10-14 (+20d) |  |  | 83d → 81.32d |  |  |
| B2.33 71 16.52 | PC & RC Foundation | 2026-09-26 → 2026-10-15 (+19d) | 2026-09-28 → 2026-10-18 (+20d) |  |  | 83d → 81.32d |  |  |
| B2.33 71 16.53 | Lighting Poles Installation Incl power box, Cables | 2026-09-29 → 2026-10-19 (+20d) | 2026-10-01 → 2026-10-21 (+20d) |  |  | 83d → 81.32d |  |  |
| B2.26.56.19.6 | Lighting Luminares Inst | 2026-10-03 → 2026-10-22 (+19d) | 2026-10-04 → 2026-10-24 (+20d) |  |  | 84d → 84.32d |  |  |
| B2.33 71 16.54 | Backfilling, Grouting & Chamfering | 2026-10-07 → 2026-10-27 (+20d) | 2026-10-10 → 2026-10-29 (+19d) |  |  | 82d → 82.32d |  |  |
| Earthing | **Earthing** | 2026-10-03 → 2026-10-22 (+19d) | 2026-10-12 → 2026-11-01 (+20d) |  |  |  |  |  |
| B2.33 71 19 26 | Land Adjustment | 2026-10-03 → 2026-10-22 (+19d) | 2026-10-05 → 2026-10-25 (+20d) |  |  | 83d → 81.32d |  |  |
| B2.33 71 19 27 | Earth Rods & Conduits | 2026-10-06 → 2026-10-26 (+20d) | 2026-10-08 → 2026-10-28 (+20d) |  |  | 83d → 81.32d |  |  |
| B2.33 71 19 28 | Backfilling | 2026-10-10 → 2026-10-29 (+19d) | 2026-10-12 → 2026-11-01 (+20d) |  |  | 83d → 81.32d |  |  |
| Telecommunication | **Telecommunication Network** | 2026-11-10 → 2026-11-26 (+16d) | 2026-11-28 → 2026-12-10 (+12d) |  |  |  |  |  |
| Ducts | **Ducts** | 2026-11-10 → 2026-11-26 (+16d) | 2026-11-25 → 2026-12-09 (+14d) |  |  |  |  |  |
| (6*50mm) | **Size (6*50mm) HDPE ducts** | 2026-11-10 → 2026-11-26 (+16d) | 2026-11-18 → 2026-12-02 (+14d) |  |  |  |  |  |
| B2.1.33 81 26.105 | Excavation | 2026-11-10 → 2026-11-26 (+16d) | 2026-11-12 → 2026-11-28 (+16d) |  |  | 54.88d → 57.32d |  |  |
| B2.1.33 81 26.106 | HDPE Pipe, Shuttering, Steel Fixing & Conc. Cast | 2026-11-12 → 2026-11-29 (+17d) | 2026-11-16 → 2026-11-30 (+14d) | 3d → 2d |  | 60.88d → 62.32d |  |  |
| B2.1.33 81 26.107 | Backfilling & Warrning Tape | 2026-11-16 → 2026-12-01 (+15d) | 2026-11-18 → 2026-12-02 (+14d) |  |  | 60.88d → 62.32d | B2.1.33 81 26.106, B2.1.33 81 26.43 → B2.1.33 81 26.106, B2.1.33 81 26.43_R |  |
| (6*50mm+2*32mm) | **Size (6*50mm+2*32mm) HDPE ducts** | 2026-11-12 → 2026-11-29 (+17d) | 2026-11-21 → 2026-12-03 (+12d) |  |  |  |  |  |
| B2.1.33 81 26.108 | Excavation | 2026-11-12 → 2026-11-29 (+17d) | 2026-11-15 → 2026-11-29 (+14d) | 2d → 1d |  | 54.88d → 57.32d |  |  |
| B2.1.33 81 26.109 | HDPE Pipe, Shuttering, Steel Fixing & Conc. Cast | 2026-11-15 → 2026-11-30 (+15d) | 2026-11-18 → 2026-12-01 (+13d) | 3d → 2d |  | 58.88d → 61.32d |  |  |
| B2.1.33 81 26.110 | Backfilling & Warrning Tape | 2026-11-18 → 2026-12-02 (+14d) | 2026-11-21 → 2026-12-03 (+12d) |  |  | 58.88d → 61.32d | B2.1.33 81 26.109 → B2.1.33 81 26.109, B2.33 71 00.223 |  |
| (6*50mm+4*32mm) | **Size (6*50mm+4*32mm) HDPE ducts** | 2026-11-15 → 2026-11-30 (+15d) | 2026-11-23 → 2026-12-06 (+13d) |  |  |  |  |  |
| B2.1.33 81 26.111 | Excavation | 2026-11-15 → 2026-11-30 (+15d) | 2026-11-17 → 2026-12-01 (+14d) |  |  | 54.88d → 57.32d |  |  |
| B2.1.33 81 26.112 | HDPE Pipe, Shuttering, Steel Fixing & Conc. Cast | 2026-11-17 → 2026-12-02 (+15d) | 2026-11-21 → 2026-12-03 (+12d) | 3d → 2d |  | 56.88d → 59.32d |  |  |
| B2.1.33 81 26.113 | Backfilling & Warrning Tape | 2026-11-21 → 2026-12-05 (+14d) | 2026-11-23 → 2026-12-06 (+13d) |  |  | 56.88d → 59.32d |  |  |
| (2*32mm) | **Size (2*32mm) HDPE ducts** | 2026-11-17 → 2026-12-02 (+15d) | 2026-11-25 → 2026-12-07 (+12d) |  |  |  |  |  |
| B2.1.33 81 26.114 | Excavation | 2026-11-17 → 2026-12-02 (+15d) | 2026-11-19 → 2026-12-02 (+13d) | 2d → 1d |  | 54.88d → 57.32d |  |  |
| B2.1.33 81 26.115 | HDPE Pipe, Shuttering, Steel Fixing & Conc. Cast | 2026-11-19 → 2026-12-03 (+14d) | 2026-11-23 → 2026-12-05 (+12d) | 3d → 2d |  | 54.88d → 58.32d |  |  |
| B2.1.33 81 26.116 | Backfilling & Warrning Tape | 2026-11-23 → 2026-12-06 (+13d) | 2026-11-25 → 2026-12-07 (+12d) |  |  | 54.88d → 58.32d |  |  |
| (4*32mm) | **Size (4*32mm) HDPE ducts** | 2026-11-19 → 2026-12-03 (+14d) | 2026-11-25 → 2026-12-09 (+14d) |  |  |  |  |  |
| B2.1.33 81 26.117 | Excavation | 2026-11-19 → 2026-12-03 (+14d) | 2026-11-22 → 2026-12-05 (+13d) |  |  | 54.88d → 57.32d |  |  |
| B2.1.33 81 26.118 | HDPE Pipe, Shuttering, Steel Fixing & Conc. Cast | 2026-11-22 → 2026-12-06 (+14d) | 2026-11-23 → 2026-12-07 (+14d) | 1d → 2d |  | 56.88d → 58.32d |  |  |
| B2.1.33 81 26.119 | Backfilling & Warrning Tape | 2026-11-23 → 2026-12-08 (+15d) | 2026-11-25 → 2026-12-09 (+14d) |  |  | 56.88d → 58.32d |  |  |
| Manholes | **Manholes** | 2026-11-22 → 2026-12-06 (+14d) | 2026-11-28 → 2026-12-10 (+12d) |  |  |  |  |  |
| Manhole Type 1 | **Manhole Type 1** | 2026-11-22 → 2026-12-06 (+14d) | 2026-11-28 → 2026-12-09 (+11d) |  |  |  |  |  |
| B2.31 23 00.617 | Excavation | 2026-11-22 → 2026-12-06 (+14d) | 2026-11-23 → 2026-12-06 (+13d) |  |  | 54.88d → 57.32d |  |  |
| B2.33 71 00.242 | Manhole Installation | 2026-11-23 → 2026-12-07 (+14d) | 2026-11-25 → 2026-12-07 (+12d) | 2d → 1d |  | 54.88d → 58.32d |  |  |
| B2.33 71 00.243 | Backfilling & Warrning Tape | 2026-11-25 → 2026-12-08 (+13d) | 2026-11-28 → 2026-12-09 (+11d) |  |  | 54.88d → 58.32d |  |  |
| Manhole Type 2 | **Manhole Type 2** | 2026-11-23 → 2026-12-07 (+14d) | 2026-11-28 → 2026-12-10 (+12d) |  |  |  |  |  |
| B2.31 23 00.615 | Excavation | 2026-11-23 → 2026-12-07 (+14d) | 2026-11-24 → 2026-12-07 (+13d) |  |  | 54.88d → 57.32d |  |  |
| B2.33 71 00.238 | Manhole Installation | 2026-11-24 → 2026-12-08 (+14d) | 2026-11-25 → 2026-12-08 (+13d) |  |  | 54.88d → 57.32d |  |  |
| B2.33 71 00.239 | Backfilling & Warrning Tape | 2026-11-25 → 2026-12-09 (+14d) | 2026-11-28 → 2026-12-10 (+12d) |  |  | 54.88d → 57.32d |  |  |
| Crossing Ducts | **Road Crossing Ducts** | 2026-11-12 → 2026-11-29 (+17d) | 2026-11-21 → 2026-12-03 (+12d) |  |  |  |  |  |
| 1 | **Size (6*50mm) HDPE** | 2026-11-12 → 2026-11-29 (+17d) | 2026-11-21 → 2026-12-03 (+12d) |  |  |  |  |  |
| B2.31 23 00.616 | Excavation | 2026-11-12 → 2026-11-29 (+17d) | 2026-11-15 → 2026-11-29 (+14d) | 2d → 1d |  | 58.88d → 61.32d |  |  |
| B2.33 71 00.240 | Shuttering, Steel Fixing Incl. UPVC Pipe & Conc. Cast | 2026-11-15 → 2026-11-30 (+15d) | 2026-11-18 → 2026-12-01 (+13d) | 3d → 2d |  | 58.88d → 61.32d |  |  |
| B2.33 71 00.241 | Backfilling & Warrning Tape | 2026-11-18 → 2026-12-02 (+14d) | 2026-11-21 → 2026-12-03 (+12d) |  |  | 58.88d → 61.32d | B2.33 71 00.240, B2.1.33 81 26.53, B2.33 71 00.273 → B2.33 71 00.240, B2.1.33 81 26.53_R, B2.33 71 00.273 |  |
| Earth & Road Works | **Earth & Road Works** |  | 2026-11-18 → 2026-12-08 (+20d) |  |  |  |  |  |
| Earth Layers | **Earth Layers** |  | 2026-09-17 → 2026-10-08 (+21d) |  |  |  |  |  |
| B1.2.32 11 13.01.6 | Subgrade (65.00% Completed) |  | 2026-09-17 → 2026-09-15 A (-2d) | 176d → 174d | 65% → 100% | 48d → none |  | was named Subgrade; resources Subgrade [1337.89]; Labor [31.18 h]; Foreman [15.59 h]; Operator [31.18 h]; Surveyor [15.59 h]; Surveyor Helper [15.59 h]; Grader [16 h]; Loader [16 h]; Water Tanker [16 h]; Dump Truck [16 h]; Plate Compactor [16 h]; Roller Compactor [16 h] → Subgrade [869.63]; Labor [20.27 h]; Foreman [10.14 h]; Operator [20.27 h]; Surveyor [10.14 h]; Surveyor Helper [10.14 h]; Grader [10.4 h]; Loader [10.4 h]; Water Tanker [10.4 h]; Dump Truck [10.4 h]; Plate Compactor [10.4 h]; Roller Compactor [10.4 h] |
| B1.2.32 11 23.01.6 | Aggregate Base Course (14.00% Completed) |  | 2026-09-17 → 2026-09-15 A (-2d) | 8d → 6d | 14% → 100% | 48d → none |  | was named Aggregate Base Course; resources Aggregate base course [891.93]; Labor [31.18 h]; Foreman [15.59 h]; Operator [31.18 h]; Surveyor [15.59 h]; Surveyor Helper [15.59 h]; Grader [16 h]; Loader [16 h]; Water Tanker [16 h]; Dump Truck [16 h]; Plate Compactor [16 h]; Roller Compactor [16 h] → Aggregate base course [124.87]; Labor [4.37 h]; Foreman [2.18 h]; Operator [4.37 h]; Surveyor [2.18 h]; Surveyor Helper [2.18 h]; Grader [2.24 h]; Loader [2.24 h]; Water Tanker [2.24 h]; Dump Truck [2.24 h]; Plate Compactor [2.24 h]; Roller Compactor [2.24 h] |
| Interlock | **Interlock** | 2026-09-30 → 2026-11-15 (+46d) | 2026-10-03 → 2026-11-17 (+45d) |  |  |  |  |  |

| ID | Task | Start | Finish | Duration | Complete | Total float | Predecessors | Other |
| --- | --- | --- | --- | --- | --- | --- | --- | --- |
| B1.2.32 14 13.13.6 | 60mm thick - Interlocking Block Pavers | 2026-09-30 → 2026-11-15 (+46d) | 2026-10-03 → 2026-11-17 (+45d) |  |  | 22d → 1.32d |  |  |
| Curbstone | **Curbstone** | 2026-09-27 → 2026-10-15 (+18d) | 2026-10-18 → 2026-11-05 (+18d) |  |  |  |  |  |
| Pre Install | **Pre-Installation** | 2026-09-27 → 2026-10-15 (+18d) | 2026-10-04 → 2026-10-22 (+18d) |  |  |  |  |  |
| B2.31 23 00.151 | Excavation | 2026-09-27 → 2026-10-15 (+18d) | 2026-09-29 → 2026-10-18 (+19d) |  |  | 12.76d → 15d |  |  |
| B1.2.32 14 13.13.26 | PCC | 2026-09-29 → 2026-10-18 (+19d) | 2026-10-01 → 2026-10-20 (+19d) |  |  | 23.76d → 26d |  |  |
| 32 16 13.006 | Haunching | 2026-10-01 → 2026-10-20 (+19d) | 2026-10-04 → 2026-10-22 (+18d) |  |  | 23.76d → 26d |  |  |
| Installation | **Installation** | 2026-10-04 → 2026-10-22 (+18d) | 2026-10-15 → 2026-11-03 (+19d) |  |  |  |  |  |
| B1.2.32 16.13.01.6 | Curb Stone, Type K1 | 2026-10-04 → 2026-10-22 (+18d) | 2026-10-06 → 2026-10-25 (+19d) |  |  | 23.76d → 26d |  |  |
| B1.2.32 16.13.02.5 | Dropped Curb, Type K3 | 2026-10-06 → 2026-10-25 (+19d) | 2026-10-08 → 2026-10-27 (+19d) |  |  | 23.76d → 26d |  |  |
| B1.2.32 16.13.03.6 | Edge Curb, Type K4 | 2026-10-08 → 2026-10-27 (+19d) | 2026-10-11 → 2026-10-29 (+18d) |  |  | 23.76d → 26d |  |  |
| B1.2.32 16.13.046 | Heel Curb, Type K5 | 2026-10-11 → 2026-10-29 (+18d) | 2026-10-13 → 2026-11-01 (+19d) |  |  | 23.76d → 26d |  |  |
| B1.2.32 16.13.05.5 | Transition Curb | 2026-10-13 → 2026-11-01 (+19d) | 2026-10-15 → 2026-11-03 (+19d) |  |  | 23.76d → 26d |  |  |
| Finishing | **Finishing** | 2026-10-15 → 2026-11-03 (+19d) | 2026-10-18 → 2026-11-05 (+18d) |  |  |  |  |  |
| 32 16 13.06 | Finishing, Fareface | 2026-10-15 → 2026-11-03 (+19d) | 2026-10-18 → 2026-11-05 (+18d) |  |  | 23.76d → 26d |  |  |
| Asphalt Layers | **Asphalt Layers** | 2026-09-19 → 2026-10-10 (+21d) | 2026-11-08 → 2026-11-26 (+18d) |  |  |  |  |  |
| B1.2.32 11 26.01.6 | Bituminous Base Course including Prime Coat (MC1) and tack coat (RC2) | 2026-09-19 → 2026-10-10 (+21d) | 2026-09-20 → 2026-10-11 (+21d) |  |  | 48d → 49.32d | B1.2.32 11 23.01.6 → B1.2.32 11 23.01.6_R |  |
| B1.2.32 12 16.01.6 | Bituminous concrete Wearing Course, including tack coat (RC2) | 2026-11-02 → 2026-11-21 (+19d) | 2026-11-08 → 2026-11-26 (+18d) |  |  | 12.76d → 15d |  |  |
| Pavement Marking | **Pavement Marking** | 2026-11-08 → 2026-11-26 (+18d) | 2026-11-10 → 2026-11-29 (+19d) |  |  |  |  |  |
| B1.2.32 17 23.01.6 | Retroreflective Thermoplastic White Traffic lines | 2026-11-08 → 2026-11-26 (+18d) | 2026-11-10 → 2026-11-29 (+19d) |  |  | 58.76d → 59d |  |  |
| B1.2.32 17 23.02.6 | Retroreflective Thermoplastic Yellow, Traffic lines | 2026-11-08 → 2026-11-26 (+18d) | 2026-11-10 → 2026-11-29 (+19d) |  |  | 58.76d → 59d |  |  |
| Traffic Signs | **Traffic Signs** | 2026-09-27 → 2026-10-15 (+18d) | 2026-11-18 → 2026-12-08 (+20d) |  |  |  |  |  |
| Pre Install | **Pre-Installation** | 2026-09-27 → 2026-10-15 (+18d) | 2026-10-21 → 2026-11-09 (+19d) |  |  |  |  |  |
| B2.31 23 00.161 | Excavation | 2026-09-27 → 2026-10-15 (+18d) | 2026-09-29 → 2026-10-18 (+19d) |  |  | 12.76d → 15d |  |  |
| 10 14 53.06 | Foundation | 2026-10-19 → 2026-11-07 (+19d) | 2026-10-21 → 2026-11-09 (+19d) |  |  | 73.76d → 74d |  |  |
| Installation | **Installation** | 2026-10-21 → 2026-11-09 (+19d) | 2026-11-18 → 2026-12-08 (+20d) |  |  |  |  |  |
| B1.2.10 14 53.016 | 1 Sheet Alumenium, Single post | 2026-10-21 → 2026-11-09 (+19d) | 2026-10-24 → 2026-11-11 (+18d) |  |  | 73.76d → 74d |  |  |
| B1.2.10 14 53.026 | 2 Sheet Alumenium, Single post | 2026-11-10 → 2026-11-29 (+19d) | 2026-11-12 → 2026-12-01 (+19d) |  |  | 58.76d → 59d |  |  |
| B1.2.10 14 14.01.6 | Ground mounted, 1 Sheet Alumenium, Single post | 2026-11-15 → 2026-12-05 (+20d) | 2026-11-16 → 2026-12-06 (+20d) |  |  | 57d → 56.32d |  |  |
| B1.2.10 14 14.026 | Ground mounted, 1 Sheet Alumenium, Double post | 2026-11-17 → 2026-12-07 (+20d) | 2026-11-18 → 2026-12-08 (+20d) |  |  | 57d → 56.32d |  |  |
| Landscape | **Landscape** | 2026-09-29 → 2026-10-18 (+19d) | 2026-11-07 → 2026-11-25 (+18d) |  |  |  |  |  |
| Large Shrubs | **Large Shrubs** | 2026-10-26 → 2026-11-14 (+19d) | 2026-11-07 → 2026-11-25 (+18d) |  |  |  |  |  |
| B7.32 93 33.01 | Dodonaea viscosa | 2026-10-26 → 2026-11-14 (+19d) | 2026-11-01 → 2026-11-19 (+18d) |  |  | 20.76d → 20d |  |  |
| B7.32 93 33.02 | Leucophyllun Frutescens | 2026-11-01 → 2026-11-19 (+18d) | 2026-11-07 → 2026-11-25 (+18d) |  |  | 20.76d → 20d |  |  |
| Fences | **Fences** | 2026-09-29 → 2026-10-18 (+19d) | 2026-11-02 → 2026-11-21 (+19d) |  |  |  |  |  |
| (ZATCA HCIS) | **Steel fence (ZATCA HCIS)** | 2026-09-29 → 2026-10-18 (+19d) | 2026-11-02 → 2026-11-21 (+19d) |  |  |  |  |  |
| B7.32 93 43.04.44.10 | Earthwork | 2026-09-29 → 2026-10-18 (+19d) | 2026-10-05 → 2026-10-24 (+19d) |  |  | 12.76d → 15d |  |  |
| B7.32 93 43.04.44.12 | Foundation | 2026-10-19 → 2026-11-07 (+19d) | 2026-10-26 → 2026-11-14 (+19d) |  |  | 12.76d → 15d |  |  |
| B7.32 93 43.04.44.14 | Fence Installation | 2026-10-26 → 2026-11-14 (+19d) | 2026-11-02 → 2026-11-21 (+19d) |  |  | 12.76d → 15d |  |  |
| Miscellaneous | **Miscellaneous** | 2026-10-05 → 2026-10-24 (+19d) | 2026-11-01 → 2026-11-19 (+18d) |  |  |  |  |  |
| B7.32 91 00.02.2 | Grey gravel bed - 30-50 mm diameter (G1) | 2026-10-05 → 2026-10-24 (+19d) | 2026-10-12 → 2026-10-31 (+19d) |  |  | 12.76d → 15d |  |  |
| B7.32 91 00.1 | Plastic edge | 2026-10-05 → 2026-10-24 (+19d) | 2026-10-11 → 2026-10-29 (+18d) |  |  | 33.76d → 33d |  |  |
| B7.32 91 00.02.12 | Grey gravel bed - 12-25 mm diameter (G2) | 2026-10-12 → 2026-10-31 (+19d) | 2026-10-19 → 2026-11-07 (+19d) |  |  | 12.76d → 15d |  |  |
| B7.32 91 00.01.2 | 75mm thickness for shrubs and grasses | 2026-10-19 → 2026-11-07 (+19d) | 2026-10-26 → 2026-11-14 (+19d) |  |  | 20.76d → 20d |  |  |
| B7.32 91 00.01.12 | 75mm thickness for trees | 2026-10-26 → 2026-11-14 (+19d) | 2026-11-01 → 2026-11-19 (+18d) |  |  | 20.76d → 20d |  |  |
| Commercial Rd 01 | **Commercial Road 01** |  | 2026-12-02 → 2026-12-22 (+20d) |  |  |  |  |  |
| Wet Networks | **Wet Networks** |  | 2026-10-26 → 2026-11-18 (+23d) |  |  |  |  |  |
| Stormwater Network | **Stormwater Network** |  | 2026-09-30 → 2026-10-24 (+24d) |  |  |  |  |  |
| GRP | **GRP** |  | 2026-09-20 → 2026-10-24 (+34d) |  |  |  |  |  |
| ?400 | **?400** |  | 2026-09-20 → 2026-10-24 (+34d) |  |  |  |  |  |
| 3 | **Depth From 0.0m to 1.5m** |  | 2026-09-19 → 2026-10-13 (+24d) |  |  |  |  |  |
| B6.33 42 11.013 | Pipe Laying (71.16% Completed) |  | 2026-09-19 → 2026-09-15 A (-4d) | 127.28d → 126d | 71% → 100% | 113.72d → none |  | was named Pipe Laying; resources Labor [31.18 h]; Foreman [15.59 h]; Plumber Helper [15.59 h]; Plumber [15.59 h]; Operator [15.59 h]; Surveyor [15.59 h]; Surveyor Helper [15.59 h]; Mobile Crane [16 h]; Depth less than 1.5 [596.56] → Labor [22.19 h]; Foreman [11.1 h]; Plumber Helper [11.1 h]; Plumber [11.1 h]; Operator [11.1 h]; Surveyor [11.1 h]; Surveyor Helper [11.1 h]; Mobile Crane [11.39 h]; Depth less than 1.5 [424.5] |
| B6.33 42 11.014 | Embedment & Test (71.16% Completed) |  | 2026-09-19 → 2026-09-15 A (-4d) | 125.56d → 124d | 71% → 100% | 113.44d → none |  | was named Embedment & Test; resources Labor [46.78 h]; Foreman [23.39 h]; Plumber Helper [23.39 h]; Plumber [23.39 h]; Operator [46.78 h]; Surveyor [23.39 h]; Surveyor Helper [23.39 h]; Loader [24 h]; Water Tanker [24 h]; Dump Truck [24 h]; Plate Compactor [24 h]; Roller Compactor [24 h]; Depth less than 1.5 [265.58] → Labor [33.29 h]; Foreman [16.64 h]; Plumber Helper [16.64 h]; Plumber [16.64 h]; Operator [33.29 h]; Surveyor [16.64 h]; Surveyor Helper [16.64 h]; Loader [17.08 h]; Water Tanker [17.08 h]; Dump Truck [17.08 h]; Plate Compactor [17.08 h]; Roller Compactor [17.08 h]; Depth less than 1.5 [188.98] |
| B6.33 42 11.015 | Backfilling & Warrning Tape (71.16% Completed) |  | 2026-09-19 → 2026-09-15 A (-4d) | 123.56d → 122d | 71% → 100% | 113.44d → none |  | was named Backfilling & Warrning Tape; resources Labor [46.78 h]; Foreman [23.39 h]; Operator [93.55 h]; Surveyor [23.39 h]; Surveyor Helper [23.39 h]; Loader [24 h]; Water Tanker [24 h]; Dump Truck [24 h]; Plate Compactor [24 h]; Roller Compactor [24 h]; Depth less than 1.5 [132.79] → Labor [33.29 h]; Foreman [16.64 h]; Operator [66.57 h]; Surveyor [16.64 h]; Surveyor Helper [16.64 h]; Loader [17.08 h]; Water Tanker [17.08 h]; Dump Truck [17.08 h]; Plate Compactor [17.08 h]; Roller Compactor [17.08 h]; Depth less than 1.5 [94.49] |
| 1 | **Depth From 1.5m to 2.5m** |  | 2026-09-20 → 2026-10-24 (+34d) |  |  |  |  |  |
| B6.33 42 11.02.4 | Embedment & Test (69.15% Completed) |  | 2026-09-19 → 2026-09-15 A (-4d) | 124.84d → 123d | 69% → 100% | 113.16d → none |  | was named Embedment & Test; resources Labor [62.37 h]; Foreman [31.18 h]; Plumber Helper [31.18 h]; Plumber [31.18 h]; Operator [62.37 h]; Surveyor [31.18 h]; Surveyor Helper [31.18 h]; Loader [32 h]; Water Tanker [32 h]; Dump Truck [32 h]; Plate Compactor [32 h]; Roller Compactor [32 h]; Depth: 1.51m - 2.5m [3.99] → Labor [43.13 h]; Foreman [21.57 h]; Plumber Helper [21.57 h]; Plumber [21.57 h]; Operator [43.13 h]; Surveyor [21.57 h]; Surveyor Helper [21.57 h]; Loader [22.13 h]; Water Tanker [22.13 h]; Dump Truck [22.13 h]; Plate Compactor [22.13 h]; Roller Compactor [22.13 h]; Depth: 1.51m - 2.5m [2.76] |
| B6.33 42 11.02.5 | Backfilling & Warrning Tape (69.15% Completed) |  | 2026-09-20 → 2026-09-15 A (-5d) | 124.12d → 122d | 69% → 100% | 112.88d → none |  | was named Backfilling & Warrning Tape; resources Labor [77.96 h]; Foreman [38.98 h]; Operator [155.92 h]; Surveyor [38.98 h]; Surveyor Helper [38.98 h]; Loader [40 h]; Water Tanker [40 h]; Dump Truck [40 h]; Plate Compactor [40 h]; Roller Compactor [40 h]; Depth: 1.51m - 2.5m [2] → Labor [53.91 h]; Foreman [26.96 h]; Operator [107.83 h]; Surveyor [26.96 h]; Surveyor Helper [26.96 h]; Loader [27.66 h]; Water Tanker [27.66 h]; Dump Truck [27.66 h]; Plate Compactor [27.66 h]; Roller Compactor [27.66 h]; Depth: 1.51m - 2.5m [1.38] |
| ?500 | **?500** |  | 2026-09-20 → 2026-10-11 (+21d) |  |  |  |  |  |
| 3 | **Depth From 0.0m to 1.5m** |  | 2026-09-20 → 2026-10-11 (+21d) |  |  |  |  |  |
| B6.33 42 11.361060 | Backfilling & Warrning Tape (69.15% Completed) |  | 2026-09-20 → 2026-09-15 A (-5d) | 120.12d → 118d | 69% → 100% | 112.88d → none |  | was named Backfilling & Warrning Tape; resources Labor [77.96 h]; Foreman [38.98 h]; Operator [155.92 h]; Surveyor [38.98 h]; Surveyor Helper [38.98 h]; Loader [40 h]; Water Tanker [40 h]; Dump Truck [40 h]; Plate Compactor [40 h]; Roller Compactor [40 h]; less than 1.5 [114.01] → Labor [53.91 h]; Foreman [26.96 h]; Operator [107.83 h]; Surveyor [26.96 h]; Surveyor Helper [26.96 h]; Loader [27.66 h]; Water Tanker [27.66 h]; Dump Truck [27.66 h]; Plate Compactor [27.66 h]; Roller Compactor [27.66 h]; less than 1.5 [78.84] |
| ?600 | **?600** |  | 2026-09-19 → 2026-10-10 (+21d) |  |  |  |  |  |
| 3 | **Depth From 0.0m to 1.5m** |  | 2026-09-19 → 2026-10-10 (+21d) |  |  |  |  |  |
| B6.33 42 11.361070 | Excavation (70.65% Completed) |  | 2026-09-19 → 2026-09-15 A (-4d) | 136.28d → 135d | 71% → 100% | 113.72d → none |  | was named Excavation; resources Labor [31.18 h]; Foreman [15.59 h]; Operator [31.18 h]; Surveyor [15.59 h]; Surveyor Helper [15.59 h]; Excavator (With Bucket) [16 h]; Water Tanker [16 h]; Dump Truck [16 h]; Plate Compactor [16 h]; less than 1.5 [79.3] → Labor [22.03 h]; Foreman [11.02 h]; Operator [22.03 h]; Surveyor [11.02 h]; Surveyor Helper [11.02 h]; Excavator (With Bucket) [11.3 h]; Water Tanker [11.3 h]; Dump Truck [11.3 h]; Plate Compactor [11.3 h]; less than 1.5 [56.03] |
| B6.33 42 11.361080 | Sand Bedding (70.65% Completed) |  | 2026-09-19 → 2026-09-15 A (-4d) | 130.28d → 129d | 71% → 100% | 113.72d → none |  | was named Sand Bedding; resources Labor [31.18 h]; Foreman [15.59 h]; Operator [62.37 h]; Surveyor [15.59 h]; Surveyor Helper [15.59 h]; Loader [16 h]; Water Tanker [16 h]; Dump Truck [16 h]; Plate Compactor [16 h]; less than 1.5 [20.27] → Labor [22.03 h]; Foreman [11.02 h]; Operator [44.06 h]; Surveyor [11.02 h]; Surveyor Helper [11.02 h]; Loader [11.3 h]; Water Tanker [11.3 h]; Dump Truck [11.3 h]; Plate Compactor [11.3 h]; less than 1.5 [14.32] |
| B6.33 42 11.361090 | Pipe Laying (70.65% Completed) |  | 2026-09-19 → 2026-09-15 A (-4d) | 124.28d → 123d | 71% → 100% | 113.72d → none |  | was named Pipe Laying; resources Labor [31.18 h]; Foreman [15.59 h]; Plumber Helper [15.59 h]; Plumber [15.59 h]; Operator [15.59 h]; Surveyor [15.59 h]; Surveyor Helper [15.59 h]; Mobile Crane [16 h]; less than 1.5 [180.07] → Labor [22.03 h]; Foreman [11.02 h]; Plumber Helper [11.02 h]; Plumber [11.02 h]; Operator [11.02 h]; Surveyor [11.02 h]; Surveyor Helper [11.02 h]; Mobile Crane [11.3 h]; less than 1.5 [127.22] |
| B6.33 42 11.361100 | Embedment & Test (70.65% Completed) |  | 2026-09-19 → 2026-09-15 A (-4d) | 123.56d → 122d | 71% → 100% | 113.44d → none |  | was named Embedment & Test; resources Labor [46.78 h]; Foreman [23.39 h]; Plumber Helper [23.39 h]; Plumber [23.39 h]; Operator [46.78 h]; Surveyor [23.39 h]; Surveyor Helper [23.39 h]; Loader [24 h]; Water Tanker [24 h]; Dump Truck [24 h]; Plate Compactor [24 h]; Roller Compactor [24 h]; less than 1.5 [79.9] → Labor [33.05 h]; Foreman [16.52 h]; Plumber Helper [16.52 h]; Plumber [16.52 h]; Operator [33.05 h]; Surveyor [16.52 h]; Surveyor Helper [16.52 h]; Loader [16.96 h]; Water Tanker [16.96 h]; Dump Truck [16.96 h]; Plate Compactor [16.96 h]; Roller Compactor [16.96 h]; less than 1.5 [56.45] |
| B6.33 42 11.361110 | Backfilling & Warrning Tape (70.65% Completed) |  | 2026-09-19 → 2026-09-15 A (-4d) | 118.56d → 117d | 71% → 100% | 113.44d → none |  | was named Backfilling & Warrning Tape; resources Labor [46.78 h]; Foreman [23.39 h]; Operator [93.55 h]; Surveyor [23.39 h]; Surveyor Helper [23.39 h]; Loader [24 h]; Water Tanker [24 h]; Dump Truck [24 h]; Plate Compactor [24 h]; Roller Compactor [24 h]; less than 1.5 [39.95] → Labor [33.05 h]; Foreman [16.52 h]; Operator [66.09 h]; Surveyor [16.52 h]; Surveyor Helper [16.52 h]; Loader [16.96 h]; Water Tanker [16.96 h]; Dump Truck [16.96 h]; Plate Compactor [16.96 h]; Roller Compactor [16.96 h]; less than 1.5 [28.22] |
| ?700 | **?700** |  | 2026-09-19 → 2026-10-10 (+21d) |  |  |  |  |  |
| 3 | **Depth From 0.0m to 1.5m** |  | 2026-09-19 → 2026-10-10 (+21d) |  |  |  |  |  |
| B6.33 42 11.361120 | Excavation (65.09% Completed) |  | 2026-09-19 → 2026-09-15 A (-4d) | 140.28d → 139d | 65% → 100% | 113.72d → none |  | was named Excavation; resources Labor [31.18 h]; Foreman [15.59 h]; Operator [31.18 h]; Surveyor [15.59 h]; Surveyor Helper [15.59 h]; Excavator (With Bucket) [16 h]; Water Tanker [16 h]; Dump Truck [16 h]; Plate Compactor [16 h]; less than 1.5 [29.95] → Labor [20.3 h]; Foreman [10.15 h]; Operator [20.3 h]; Surveyor [10.15 h]; Surveyor Helper [10.15 h]; Excavator (With Bucket) [10.41 h]; Water Tanker [10.41 h]; Dump Truck [10.41 h]; Plate Compactor [10.41 h]; less than 1.5 [19.5] |
| B6.33 42 11.361130 | Sand Bedding (65.09% Completed) |  | 2026-09-19 → 2026-09-15 A (-4d) | 134.28d → 133d | 65% → 100% | 113.72d → none |  | was named Sand Bedding; resources Labor [31.18 h]; Foreman [15.59 h]; Operator [62.37 h]; Surveyor [15.59 h]; Surveyor Helper [15.59 h]; Loader [16 h]; Water Tanker [16 h]; Dump Truck [16 h]; Plate Compactor [16 h]; less than 1.5 [7.66] → Labor [20.3 h]; Foreman [10.15 h]; Operator [40.6 h]; Surveyor [10.15 h]; Surveyor Helper [10.15 h]; Loader [10.41 h]; Water Tanker [10.41 h]; Dump Truck [10.41 h]; Plate Compactor [10.41 h]; less than 1.5 [4.98] |

| ID | Task | Finish | Duration | Complete | Total float | Predecessors | Other |
| --- | --- | --- | --- | --- | --- | --- | --- |
| B6.33 42 11.361140 | Pipe Laying (65.09% Completed) | 2026-09-19 → 2026-09-15 A (-4d) | 128.28d → 127d | 65% → 100% | 113.72d → none |  | was named Pipe Laying; resources Labor [31.18 h]; Foreman [15.59 h]; Plumber Helper [15.59 h]; Plumber [15.59 h]; Operator [15.59 h]; Surveyor [15.59 h]; Surveyor Helper [15.59 h]; Mobile Crane [16 h]; less than 1.5 [68.01] → Labor [20.3 h]; Foreman [10.15 h]; Plumber Helper [10.15 h]; Plumber [10.15 h]; Operator [10.15 h]; Surveyor [10.15 h]; Surveyor Helper [10.15 h]; Mobile Crane [10.41 h]; less than 1.5 [44.27] |
| B6.33 42 11.361150 | Embedment & Test (65.09% Completed) | 2026-09-19 → 2026-09-15 A (-4d) | 122.56d → 121d | 65% → 100% | 113.44d → none |  | was named Embedment & Test; resources Labor [46.78 h]; Foreman [23.39 h]; Plumber Helper [23.39 h]; Plumber [23.39 h]; Operator [46.78 h]; Surveyor [23.39 h]; Surveyor Helper [23.39 h]; Loader [24 h]; Water Tanker [24 h]; Dump Truck [24 h]; Plate Compactor [24 h]; Roller Compactor [24 h]; less than 1.5 [30.18] → Labor [30.45 h]; Foreman [15.22 h]; Plumber Helper [15.22 h]; Plumber [15.22 h]; Operator [30.45 h]; Surveyor [15.22 h]; Surveyor Helper [15.22 h]; Loader [15.62 h]; Water Tanker [15.62 h]; Dump Truck [15.62 h]; Plate Compactor [15.62 h]; Roller Compactor [15.62 h]; less than 1.5 [19.64] |
| B6.33 42 11.361160 | Backfilling & Warrning Tape (65.09% Completed) | 2026-09-19 → 2026-09-15 A (-4d) | 116.56d → 115d | 65% → 100% | 113.44d → none |  | was named Backfilling & Warrning Tape; resources Labor [46.78 h]; Foreman [23.39 h]; Operator [93.55 h]; Surveyor [23.39 h]; Surveyor Helper [23.39 h]; Loader [24 h]; Water Tanker [24 h]; Dump Truck [24 h]; Plate Compactor [24 h]; Roller Compactor [24 h]; less than 1.5 [15.09] → Labor [30.45 h]; Foreman [15.22 h]; Operator [60.9 h]; Surveyor [15.22 h]; Surveyor Helper [15.22 h]; Loader [15.62 h]; Water Tanker [15.62 h]; Dump Truck [15.62 h]; Plate Compactor [15.62 h]; Roller Compactor [15.62 h]; less than 1.5 [9.82] |
| ?800 | **?800** | 2026-09-20 → 2026-10-13 (+23d) |  |  |  |  |  |
| 3 | **Depth From 0.0m to 1.5m** | 2026-09-19 → 2026-10-13 (+24d) |  |  |  |  |  |
| B6.33 42 11.361170 | Excavation (65.09% Completed) | 2026-09-19 → 2026-09-15 A (-4d) | 141.28d → 140d | 65% → 100% | 113.72d → none |  | was named Excavation; resources Labor [31.18 h]; Foreman [15.59 h]; Operator [31.18 h]; Surveyor [15.59 h]; Surveyor Helper [15.59 h]; Excavator (With Bucket) [16 h]; Water Tanker [16 h]; Dump Truck [16 h]; Plate Compactor [16 h]; less than 1.5 [23.16] → Labor [20.3 h]; Foreman [10.15 h]; Operator [20.3 h]; Surveyor [10.15 h]; Surveyor Helper [10.15 h]; Excavator (With Bucket) [10.41 h]; Water Tanker [10.41 h]; Dump Truck [10.41 h]; Plate Compactor [10.41 h]; less than 1.5 [15.08] |
| B6.33 42 11.361180 | Sand Bedding (65.09% Completed) | 2026-09-19 → 2026-09-15 A (-4d) | 135.28d → 134d | 65% → 100% | 113.72d → none |  | was named Sand Bedding; resources Labor [31.18 h]; Foreman [15.59 h]; Operator [62.37 h]; Surveyor [15.59 h]; Surveyor Helper [15.59 h]; Loader [16 h]; Water Tanker [16 h]; Dump Truck [16 h]; Plate Compactor [16 h]; less than 1.5 [5.92] → Labor [20.3 h]; Foreman [10.15 h]; Operator [40.6 h]; Surveyor [10.15 h]; Surveyor Helper [10.15 h]; Loader [10.41 h]; Water Tanker [10.41 h]; Dump Truck [10.41 h]; Plate Compactor [10.41 h]; less than 1.5 [3.85] |
| B6.33 42 11.361190 | Pipe Laying (65.09% Completed) | 2026-09-19 → 2026-09-15 A (-4d) | 129.28d → 128d | 65% → 100% | 113.72d → none |  | was named Pipe Laying; resources Labor [31.18 h]; Foreman [15.59 h]; Plumber Helper [15.59 h]; Plumber [15.59 h]; Operator [15.59 h]; Surveyor [15.59 h]; Surveyor Helper [15.59 h]; Mobile Crane [16 h]; less than 1.5 [52.6] → Labor [20.3 h]; Foreman [10.15 h]; Plumber Helper [10.15 h]; Plumber [10.15 h]; Operator [10.15 h]; Surveyor [10.15 h]; Surveyor Helper [10.15 h]; Mobile Crane [10.41 h]; less than 1.5 [34.24] |
| B6.33 42 11.361200 | Embedment & Test (65.09% Completed) | 2026-09-19 → 2026-09-15 A (-4d) | 127.56d → 126d | 65% → 100% | 113.44d → none |  | was named Embedment & Test; resources Labor [46.78 h]; Foreman [23.39 h]; Plumber Helper [23.39 h]; Plumber [23.39 h]; Operator [46.78 h]; Surveyor [23.39 h]; Surveyor Helper [23.39 h]; Loader [24 h]; Water Tanker [24 h]; Dump Truck [24 h]; Plate Compactor [24 h]; Roller Compactor [24 h]; less than 1.5 [23.34] → Labor [30.45 h]; Foreman [15.22 h]; Plumber Helper [15.22 h]; Plumber [15.22 h]; Operator [30.45 h]; Surveyor [15.22 h]; Surveyor Helper [15.22 h]; Loader [15.62 h]; Water Tanker [15.62 h]; Dump Truck [15.62 h]; Plate Compactor [15.62 h]; Roller Compactor [15.62 h]; less than 1.5 [15.19] |
| B6.33 42 11.361210 | Backfilling & Warrning Tape (65.09% Completed) | 2026-09-19 → 2026-09-15 A (-4d) | 117.56d → 116d | 65% → 100% | 113.44d → none |  | was named Backfilling & Warrning Tape; resources Labor [46.78 h]; Foreman [23.39 h]; Operator [93.55 h]; Surveyor [23.39 h]; Surveyor Helper [23.39 h]; Loader [24 h]; Water Tanker [24 h]; Dump Truck [24 h]; Plate Compactor [24 h]; Roller Compactor [24 h]; less than 1.5 [11.67] → Labor [30.45 h]; Foreman [15.22 h]; Operator [60.9 h]; Surveyor [15.22 h]; Surveyor Helper [15.22 h]; Loader [15.62 h]; Water Tanker [15.62 h]; Dump Truck [15.62 h]; Plate Compactor [15.62 h]; Roller Compactor [15.62 h]; less than 1.5 [7.6] |
| 4 | **Depth From 1.5m to 2.5m** | 2026-09-20 → 2026-10-06 (+16d) |  |  |  |  |  |
| B6.33 42 11.13.1 | Excavation (70.34% Completed) | 2026-09-19 → 2026-09-15 A (-4d) | 132.28d → 131d | 70% → 100% | 113.72d → none |  | was named Excavation; resources Labor [31.18 h]; Foreman [15.59 h]; Operator [31.18 h]; Surveyor [15.59 h]; Surveyor Helper [15.59 h]; Excavator (With Bucket) [16 h]; Water Tanker [16 h]; Dump Truck [16 h]; Plate Compactor [16 h]; 1.51m - 2.5m [19.28] → Labor [21.94 h]; Foreman [10.97 h]; Operator [21.94 h]; Surveyor [10.97 h]; Surveyor Helper [10.97 h]; Excavator (With Bucket) [11.26 h]; Water Tanker [11.26 h]; Dump Truck [11.26 h]; Plate Compactor [11.26 h]; 1.51m - 2.5m [13.56] |
| B6.33 42 11.13.2 | Sand Bedding (70.34% Completed) | 2026-09-19 → 2026-09-15 A (-4d) | 126.28d → 125d | 70% → 100% | 113.72d → none |  | was named Sand Bedding; resources Labor [31.18 h]; Foreman [15.59 h]; Operator [62.37 h]; Surveyor [15.59 h]; Surveyor Helper [15.59 h]; Loader [16 h]; Water Tanker [16 h]; Dump Truck [16 h]; Plate Compactor [16 h]; 1.51m - 2.5m [4.82] → Labor [21.94 h]; Foreman [10.97 h]; Operator [43.87 h]; Surveyor [10.97 h]; Surveyor Helper [10.97 h]; Loader [11.26 h]; Water Tanker [11.26 h]; Dump Truck [11.26 h]; Plate Compactor [11.26 h]; 1.51m - 2.5m [3.39] |
| B6.33 42 11.13.3 | Pipe Laying (70.34% Completed) | 2026-09-19 → 2026-09-15 A (-4d) | 123.28d → 122d | 70% → 100% | 113.72d → none |  | was named Pipe Laying; resources Labor [31.18 h]; Foreman [15.59 h]; Plumber Helper [15.59 h]; Plumber [15.59 h]; Operator [15.59 h]; Surveyor [15.59 h]; Surveyor Helper [15.59 h]; Mobile Crane [16 h]; 1.51m - 2.5m [43.38] → Labor [21.94 h]; Foreman [10.97 h]; Plumber Helper [10.97 h]; Plumber [10.97 h]; Operator [10.97 h]; Surveyor [10.97 h]; Surveyor Helper [10.97 h]; Mobile Crane [11.26 h]; 1.51m - 2.5m [30.51] |
| B6.33 42 11.13.4 | Embedment & Test (70.34% Completed) | 2026-09-19 → 2026-09-15 A (-4d) | 121.84d → 120d | 70% → 100% | 113.16d → none |  | was named Embedment & Test; resources Labor [62.37 h]; Foreman [31.18 h]; Plumber Helper [31.18 h]; Plumber [31.18 h]; Operator [62.37 h]; Surveyor [31.18 h]; Surveyor Helper [31.18 h]; Loader [32 h]; Water Tanker [32 h]; Dump Truck [32 h]; Plate Compactor [32 h]; Roller Compactor [32 h]; 1.51m - 2.5m [19.28] → Labor [43.87 h]; Foreman [21.94 h]; Plumber Helper [21.94 h]; Plumber [21.94 h]; Operator [43.87 h]; Surveyor [21.94 h]; Surveyor Helper [21.94 h]; Loader [22.51 h]; Water Tanker [22.51 h]; Dump Truck [22.51 h]; Plate Compactor [22.51 h]; Roller Compactor [22.51 h]; 1.51m - 2.5m [13.56] |
| B6.33 42 11.13.5 | Backfilling & Warrning Tape (70.34% Completed) | 2026-09-20 → 2026-09-15 A (-5d) | 119.12d → 117d | 70% → 100% | 112.88d → none |  | was named Backfilling & Warrning Tape; resources Labor [77.96 h]; Foreman [38.98 h]; Operator [155.92 h]; Surveyor [38.98 h]; Surveyor Helper [38.98 h]; Loader [40 h]; Water Tanker [40 h]; Dump Truck [40 h]; Plate Compactor [40 h]; Roller Compactor [40 h]; 1.51m - 2.5m [9.63] → Labor [54.84 h]; Foreman [27.42 h]; Operator [109.68 h]; Surveyor [27.42 h]; Surveyor Helper [27.42 h]; Loader [28.14 h]; Water Tanker [28.14 h]; Dump Truck [28.14 h]; Plate Compactor [28.14 h]; Roller Compactor [28.14 h]; 1.51m - 2.5m [6.78] |
| ?900 | **?900** | 2026-09-20 → 2026-10-19 (+29d) |  |  |  |  |  |
| 3 | **Depth From 0.0m to 1.5m** | 2026-09-19 → 2026-10-15 (+26d) |  |  |  |  |  |
| B6.33 42 11.361320 | Excavation (70.34% Completed) | 2026-09-19 → 2026-09-15 A (-4d) | 137.28d → 136d | 70% → 100% | 113.72d → none |  | was named Excavation; resources Labor [31.18 h]; Foreman [15.59 h]; Operator [31.18 h]; Surveyor [15.59 h]; Surveyor Helper [15.59 h]; Excavator (With Bucket) [16 h]; Water Tanker [16 h]; Dump Truck [16 h]; Plate Compactor [16 h]; less than 1.5 → Labor [21.94 h]; Foreman [10.97 h]; Operator [21.94 h]; Surveyor [10.97 h]; Surveyor Helper [10.97 h]; Excavator (With Bucket) [11.26 h]; Water Tanker [11.26 h]; Dump Truck [11.26 h]; Plate Compactor [11.26 h]; less than 1.5 |
| B6.33 42 11.361330 | Sand Bedding (70.34% Completed) | 2026-09-19 → 2026-09-15 A (-4d) | 126.28d → 125d | 70% → 100% | 113.72d → none |  | was named Sand Bedding; resources Labor [31.18 h]; Foreman [15.59 h]; Operator [62.37 h]; Surveyor [15.59 h]; Surveyor Helper [15.59 h]; Loader [16 h]; Water Tanker [16 h]; Dump Truck [16 h]; Plate Compactor [16 h]; less than 1.5 → Labor [21.94 h]; Foreman [10.97 h]; Operator [43.87 h]; Surveyor [10.97 h]; Surveyor Helper [10.97 h]; Loader [11.26 h]; Water Tanker [11.26 h]; Dump Truck [11.26 h]; Plate Compactor [11.26 h]; less than 1.5 |
| B6.33 42 11.361340 | Pipe Laying (70.34% Completed) | 2026-09-19 → 2026-09-15 A (-4d) | 123.28d → 122d | 70% → 100% | 113.72d → none |  | was named Pipe Laying; resources Labor [31.18 h]; Foreman [15.59 h]; Plumber Helper [15.59 h]; Plumber [15.59 h]; Operator [15.59 h]; Surveyor [15.59 h]; Surveyor Helper [15.59 h]; Mobile Crane [16 h]; less than 1.5 → Labor [21.94 h]; Foreman [10.97 h]; Plumber Helper [10.97 h]; Plumber [10.97 h]; Operator [10.97 h]; Surveyor [10.97 h]; Surveyor Helper [10.97 h]; Mobile Crane [11.26 h]; less than 1.5 |
| B6.33 42 11.361350 | Embedment & Test (70.34% Completed) | 2026-09-19 → 2026-09-15 A (-4d) | 121.56d → 120d | 70% → 100% | 113.44d → none |  | was named Embedment & Test; resources Labor [46.78 h]; Foreman [23.39 h]; Plumber Helper [23.39 h]; Plumber [23.39 h]; Operator [46.78 h]; Surveyor [23.39 h]; Surveyor Helper [23.39 h]; Loader [24 h]; Water Tanker [24 h]; Dump Truck [24 h]; Plate Compactor [24 h]; Roller Compactor [24 h]; less than 1.5 → Labor [32.91 h]; Foreman [16.45 h]; Plumber Helper [16.45 h]; Plumber [16.45 h]; Operator [32.91 h]; Surveyor [16.45 h]; Surveyor Helper [16.45 h]; Loader [16.88 h]; Water Tanker [16.88 h]; Dump Truck [16.88 h]; Plate Compactor [16.88 h]; Roller Compactor [16.88 h]; less than 1.5 |
| B6.33 42 11.361360 | Backfilling & Warrning Tape (70.34% Completed) | 2026-09-19 → 2026-09-15 A (-4d) | 118.56d → 117d | 70% → 100% | 113.44d → none |  | was named Backfilling & Warrning Tape; resources Labor [46.78 h]; Foreman [23.39 h]; Operator [93.55 h]; Surveyor [23.39 h]; Surveyor Helper [23.39 h]; Loader [24 h]; Water Tanker [24 h]; Dump Truck [24 h]; Plate Compactor [24 h]; Roller Compactor [24 h]; less than 1.5 → Labor [32.91 h]; Foreman [16.45 h]; Operator [65.81 h]; Surveyor [16.45 h]; Surveyor Helper [16.45 h]; Loader [16.88 h]; Water Tanker [16.88 h]; Dump Truck [16.88 h]; Plate Compactor [16.88 h]; Roller Compactor [16.88 h]; less than 1.5 |
| 4 | **Depth From 1.5m to 2.5m** | 2026-09-20 → 2026-10-19 (+29d) |  |  |  |  |  |
| B6.33 42 11.13.15 | Excavation |  |  |  |  | B6.33 42 11.361170 SS → B1.2.31 23 23.01.3 |  |
| B6.33 42 11.13.55 | Backfilling & Warrning Tape (70.34% Completed) | 2026-09-20 → 2026-09-15 A (-5d) | 120.12d → 118d | 70% → 100% | 112.88d → none |  | was named Backfilling & Warrning Tape; resources Labor [77.96 h]; Foreman [38.98 h]; Operator [155.92 h]; Surveyor [38.98 h]; Surveyor Helper [38.98 h]; Loader [40 h]; Water Tanker [40 h]; Dump Truck [40 h]; Plate Compactor [40 h]; Roller Compactor [40 h]; 1.51m - 2.5m [9.59] → Labor [54.84 h]; Foreman [27.42 h]; Operator [109.68 h]; Surveyor [27.42 h]; Surveyor Helper [27.42 h]; Loader [28.14 h]; Water Tanker [28.14 h]; Dump Truck [28.14 h]; Plate Compactor [28.14 h]; Roller Compactor [28.14 h]; 1.51m - 2.5m [6.74] |
| ?1000 | **?1000** | 2026-09-19 → 2026-10-18 (+29d) |  |  |  |  |  |
| 3 | **Depth From 0.0m to 1.5m** | 2026-09-19 → 2026-10-18 (+29d) |  |  |  |  |  |
| B6.33 42 11.361370 | Excavation (69.64% Completed) | 2026-09-19 → 2026-09-15 A (-4d) | 136.28d → 135d | 70% → 100% | 113.72d → none |  | was named Excavation; resources Labor [31.18 h]; Foreman [15.59 h]; Operator [31.18 h]; Surveyor [15.59 h]; Surveyor Helper [15.59 h]; Excavator (With Bucket) [16 h]; Water Tanker [16 h]; Dump Truck [16 h]; Plate Compactor [16 h]; less than 1.5 → Labor [21.72 h]; Foreman [10.86 h]; Operator [21.72 h]; Surveyor [10.86 h]; Surveyor Helper [10.86 h]; Excavator (With Bucket) [11.14 h]; Water Tanker [11.14 h]; Dump Truck [11.14 h]; Plate Compactor [11.14 h]; less than 1.5 |
| B6.33 42 11.361380 | Sand Bedding (69.64% Completed) | 2026-09-19 → 2026-09-15 A (-4d) | 129.28d → 128d | 70% → 100% | 113.72d → none |  | was named Sand Bedding; resources Labor [31.18 h]; Foreman [15.59 h]; Operator [62.37 h]; Surveyor [15.59 h]; Surveyor Helper [15.59 h]; Loader [16 h]; Water Tanker [16 h]; Dump Truck [16 h]; Plate Compactor [16 h]; less than 1.5 → Labor [21.72 h]; Foreman [10.86 h]; Operator [43.44 h]; Surveyor [10.86 h]; Surveyor Helper [10.86 h]; Loader [11.14 h]; Water Tanker [11.14 h]; Dump Truck [11.14 h]; Plate Compactor [11.14 h]; less than 1.5 |
| B6.33 42 11.361400 | Embedment & Test (69.64% Completed) | 2026-09-19 → 2026-09-15 A (-4d) | 123.56d → 122d | 70% → 100% | 113.44d → none |  | was named Embedment & Test; resources Labor [46.78 h]; Foreman [23.39 h]; Plumber Helper [23.39 h]; Plumber [23.39 h]; Operator [46.78 h]; Surveyor [23.39 h]; Surveyor Helper [23.39 h]; Loader [24 h]; Water Tanker [24 h]; Dump Truck [24 h]; Plate Compactor [24 h]; Roller Compactor [24 h]; less than 1.5 → Labor [32.58 h]; Foreman [16.29 h]; Plumber Helper [16.29 h]; Plumber [16.29 h]; Operator [32.58 h]; Surveyor [16.29 h]; Surveyor Helper [16.29 h]; Loader [16.71 h]; Water Tanker [16.71 h]; Dump Truck [16.71 h]; Plate Compactor [16.71 h]; Roller Compactor [16.71 h]; less than 1.5 |
| B6.33 42 11.361390 | Pipe Laying (69.64% Completed) | 2026-09-19 → 2026-09-15 A (-4d) | 122.28d → 121d | 70% → 100% | 113.72d → none |  | was named Pipe Laying; resources Labor [31.18 h]; Foreman [15.59 h]; Plumber Helper [15.59 h]; Plumber [15.59 h]; Operator [15.59 h]; Surveyor [15.59 h]; Surveyor Helper [15.59 h]; Mobile Crane [16 h]; less than 1.5 → Labor [21.72 h]; Foreman [10.86 h]; Plumber Helper [10.86 h]; Plumber [10.86 h]; Operator [10.86 h]; Surveyor [10.86 h]; Surveyor Helper [10.86 h]; Mobile Crane [11.14 h]; less than 1.5 |
| B6.33 42 11.361410 | Backfilling & Warrning Tape (69.64% Completed) | 2026-09-19 → 2026-09-15 A (-4d) | 117.56d → 116d | 70% → 100% | 113.44d → none |  | was named Backfilling & Warrning Tape; resources Labor [46.78 h]; Foreman [23.39 h]; Operator [93.55 h]; Surveyor [23.39 h]; Surveyor Helper [23.39 h]; Loader [24 h]; Water Tanker [24 h]; Dump Truck [24 h]; Plate Compactor [24 h]; Roller Compactor [24 h]; less than 1.5 → Labor [32.58 h]; Foreman [16.29 h]; Operator [65.16 h]; Surveyor [16.29 h]; Surveyor Helper [16.29 h]; Loader [16.71 h]; Water Tanker [16.71 h]; Dump Truck [16.71 h]; Plate Compactor [16.71 h]; Roller Compactor [16.71 h]; less than 1.5 |
| ?1100 | **?1100** | 2026-09-20 → 2026-10-19 (+29d) |  |  |  |  |  |
| 3 | **Depth From 0.0m to 1.5m** | 2026-09-19 → 2026-10-15 (+26d) |  |  |  |  |  |
| B6.33 42 11.361220 | Excavation (69.04% Completed) | 2026-09-19 → 2026-09-15 A (-4d) | 139.28d → 138d | 69% → 100% | 113.72d → none |  | was named Excavation; resources Labor [31.18 h]; Foreman [15.59 h]; Operator [31.18 h]; Surveyor [15.59 h]; Surveyor Helper [15.59 h]; Excavator (With Bucket) [16 h]; Water Tanker [16 h]; Dump Truck [16 h]; Plate Compactor [16 h]; less than 1.5 → Labor [21.53 h]; Foreman [10.76 h]; Operator [21.53 h]; Surveyor [10.76 h]; Surveyor Helper [10.76 h]; Excavator (With Bucket) [11.05 h]; Water Tanker [11.05 h]; Dump Truck [11.05 h]; Plate Compactor [11.05 h]; less than 1.5 |
| B6.33 42 11.361230 | Sand Bedding (69.04% Completed) | 2026-09-19 → 2026-09-15 A (-4d) | 134.28d → 133d | 69% → 100% | 113.72d → none |  | was named Sand Bedding; resources Labor [31.18 h]; Foreman [15.59 h]; Operator [62.37 h]; Surveyor [15.59 h]; Surveyor Helper [15.59 h]; Loader [16 h]; Water Tanker [16 h]; Dump Truck [16 h]; Plate Compactor [16 h]; less than 1.5 → Labor [21.53 h]; Foreman [10.76 h]; Operator [43.06 h]; Surveyor [10.76 h]; Surveyor Helper [10.76 h]; Loader [11.05 h]; Water Tanker [11.05 h]; Dump Truck [11.05 h]; Plate Compactor [11.05 h]; less than 1.5 |
| B6.33 42 11.361240 | Pipe Laying (69.04% Completed) | 2026-09-19 → 2026-09-15 A (-4d) | 128.28d → 127d | 69% → 100% | 113.72d → none |  | was named Pipe Laying; resources Labor [31.18 h]; Foreman [15.59 h]; Plumber Helper [15.59 h]; Plumber [15.59 h]; Operator [15.59 h]; Surveyor [15.59 h]; Surveyor Helper [15.59 h]; Mobile Crane [16 h]; less than 1.5 → Labor [21.53 h]; Foreman [10.76 h]; Plumber Helper [10.76 h]; Plumber [10.76 h]; Operator [10.76 h]; Surveyor [10.76 h]; Surveyor Helper [10.76 h]; Mobile Crane [11.05 h]; less than 1.5 |
| B6.33 42 11.361250 | Embedment & Test (69.04% Completed) | 2026-09-19 → 2026-09-15 A (-4d) | 123.56d → 122d | 69% → 100% | 113.44d → none |  | was named Embedment & Test; resources Labor [46.78 h]; Foreman [23.39 h]; Plumber Helper [23.39 h]; Plumber [23.39 h]; Operator [46.78 h]; Surveyor [23.39 h]; Surveyor Helper [23.39 h]; Loader [24 h]; Water Tanker [24 h]; Dump Truck [24 h]; Plate Compactor [24 h]; Roller Compactor [24 h]; less than 1.5 → Labor [32.29 h]; Foreman [16.15 h]; Plumber Helper [16.15 h]; Plumber [16.15 h]; Operator [32.29 h]; Surveyor [16.15 h]; Surveyor Helper [16.15 h]; Loader [16.57 h]; Water Tanker [16.57 h]; Dump Truck [16.57 h]; Plate Compactor [16.57 h]; Roller Compactor [16.57 h]; less than 1.5 |
| B6.33 42 11.361260 | Backfilling & Warrning Tape (69.04% Completed) | 2026-09-19 → 2026-09-15 A (-4d) | 118.56d → 117d | 69% → 100% | 113.44d → none |  | was named Backfilling & Warrning Tape; resources Labor [46.78 h]; Foreman [23.39 h]; Operator [93.55 h]; Surveyor [23.39 h]; Surveyor Helper [23.39 h]; Loader [24 h]; Water Tanker [24 h]; Dump Truck [24 h]; Plate Compactor [24 h]; Roller Compactor [24 h]; less than 1.5 → Labor [32.29 h]; Foreman [16.15 h]; Operator [64.59 h]; Surveyor [16.15 h]; Surveyor Helper [16.15 h]; Loader [16.57 h]; Water Tanker [16.57 h]; Dump Truck [16.57 h]; Plate Compactor [16.57 h]; Roller Compactor [16.57 h]; less than 1.5 |
| 4 | **Depth From 1.5m to 2.5m** | 2026-09-20 → 2026-10-19 (+29d) |  |  |  |  |  |
| B6.33 42 11.13.65 | Excavation |  |  |  |  | B6.33 42 11.361370 SS → B1.2.31 23 23.01.3 |  |
| B6.33 42 11.13.105 | Backfilling & Warrning Tape (69.04% Completed) | 2026-09-20 → 2026-09-15 A (-5d) | 127.12d → 125d | 69% → 100% | 112.88d → none |  | was named Backfilling & Warrning Tape; resources Labor [77.96 h]; Foreman [38.98 h]; Operator [155.92 h]; Surveyor [38.98 h]; Surveyor Helper [38.98 h]; Loader [40 h]; Water Tanker [40 h]; Dump Truck [40 h]; Plate Compactor [40 h]; Roller Compactor [40 h]; 1.51m - 2.5m [37.99] → Labor [53.82 h]; Foreman [26.91 h]; Operator [107.65 h]; Surveyor [26.91 h]; Surveyor Helper [26.91 h]; Loader [27.62 h]; Water Tanker [27.62 h]; Dump Truck [27.62 h]; Plate Compactor [27.62 h]; Roller Compactor [27.62 h]; 1.51m - 2.5m [26.23] |
| ?1200 | **?1200** | 2026-09-20 → 2026-10-15 (+25d) |  |  |  |  |  |
| 3 | **Depth From 0.0m to 1.5m** | 2026-09-19 → 2026-10-10 (+21d) |  |  |  |  |  |
| B6.33 42 11.361270 | Excavation (53.98% Completed) | 2026-09-19 → 2026-09-15 A (-4d) | 141.28d → 140d | 54% → 100% | 113.72d → none |  | was named Excavation; resources Labor [31.18 h]; Foreman [15.59 h]; Operator [31.18 h]; Surveyor [15.59 h]; Surveyor Helper [15.59 h]; Excavator (With Bucket) [16 h]; Water Tanker [16 h]; Dump Truck [16 h]; Plate Compactor [16 h]; less than 1.5 → Labor [16.83 h]; Foreman [8.42 h]; Operator [16.83 h]; Surveyor [8.42 h]; Surveyor Helper [8.42 h]; Excavator (With Bucket) [8.64 h]; Water Tanker [8.64 h]; Dump Truck [8.64 h]; Plate Compactor [8.64 h]; less than 1.5 |
| B6.33 42 11.361280 | Sand Bedding (59.54% Completed) | 2026-09-19 → 2026-09-15 A (-4d) | 135.28d → 134d | 60% → 100% | 113.72d → none |  | was named Sand Bedding; resources Labor [31.18 h]; Foreman [15.59 h]; Operator [62.37 h]; Surveyor [15.59 h]; Surveyor Helper [15.59 h]; Loader [16 h]; Water Tanker [16 h]; Dump Truck [16 h]; Plate Compactor [16 h]; less than 1.5 → Labor [18.57 h]; Foreman [9.28 h]; Operator [37.13 h]; Surveyor [9.28 h]; Surveyor Helper [9.28 h]; Loader [9.53 h]; Water Tanker [9.53 h]; Dump Truck [9.53 h]; Plate Compactor [9.53 h]; less than 1.5 |
| B6.33 42 11.361290 | Pipe Laying (53.87% Completed) | 2026-09-19 → 2026-09-15 A (-4d) | 129.28d → 128d | 54% → 100% | 113.72d → none |  | was named Pipe Laying; resources Labor [31.18 h]; Foreman [15.59 h]; Plumber Helper [15.59 h]; Plumber [15.59 h]; Operator [15.59 h]; Surveyor [15.59 h]; Surveyor Helper [15.59 h]; Mobile Crane [16 h]; less than 1.5 → Labor [16.8 h]; Foreman [8.4 h]; Plumber Helper [8.4 h]; Plumber [8.4 h]; Operator [8.4 h]; Surveyor [8.4 h]; Surveyor Helper [8.4 h]; Mobile Crane [8.62 h]; less than 1.5 |
| B6.33 42 11.361300 | Embedment & Test (53.87% Completed) | 2026-09-19 → 2026-09-15 A (-4d) | 127.56d → 126d | 54% → 100% | 113.44d → none |  | was named Embedment & Test; resources Labor [46.78 h]; Foreman [23.39 h]; Plumber Helper [23.39 h]; Plumber [23.39 h]; Operator [46.78 h]; Surveyor [23.39 h]; Surveyor Helper [23.39 h]; Loader [24 h]; Water Tanker [24 h]; Dump Truck [24 h]; Plate Compactor [24 h]; Roller Compactor [24 h]; less than 1.5 → Labor [25.2 h]; Foreman [12.6 h]; Plumber Helper [12.6 h]; Plumber [12.6 h]; Operator [25.2 h]; Surveyor [12.6 h]; Surveyor Helper [12.6 h]; Loader [12.93 h]; Water Tanker [12.93 h]; Dump Truck [12.93 h]; Plate Compactor [12.93 h]; Roller Compactor [12.93 h]; less than 1.5 |
| B6.33 42 11.361310 | Backfilling & Warrning Tape (53.87% Completed) | 2026-09-19 → 2026-09-15 A (-4d) | 120.84d → 119d | 54% → 100% | 113.16d → none |  | was named Backfilling & Warrning Tape; resources Labor [62.37 h]; Foreman [31.18 h]; Operator [124.74 h]; Surveyor [31.18 h]; Surveyor Helper [31.18 h]; Loader [32 h]; Water Tanker [32 h]; Dump Truck [32 h]; Plate Compactor [32 h]; Roller Compactor [32 h]; less than 1.5 → Labor [33.6 h]; Foreman [16.8 h]; Operator [67.19 h]; Surveyor [16.8 h]; Surveyor Helper [16.8 h]; Loader [17.24 h]; Water Tanker [17.24 h]; Dump Truck [17.24 h]; Plate Compactor [17.24 h]; Roller Compactor [17.24 h]; less than 1.5 |
| 4 | **Depth From 1.5m to 2.5m** | 2026-09-20 → 2026-10-15 (+25d) |  |  |  |  |  |
| B6.33 42 11.13.115 | Excavation (70.34% Completed) | 2026-09-19 → 2026-09-15 A (-4d) | 136.28d → 135d | 70% → 100% | 113.72d → none |  | was named Excavation; resources Labor [31.18 h]; Foreman [15.59 h]; Operator [31.18 h]; Surveyor [15.59 h]; Surveyor Helper [15.59 h]; Excavator (With Bucket) [16 h]; Water Tanker [16 h]; Dump Truck [16 h]; Plate Compactor [16 h]; 1.51m - 2.5m [21.96] → Labor [21.94 h]; Foreman [10.97 h]; Operator [21.94 h]; Surveyor [10.97 h]; Surveyor Helper [10.97 h]; Excavator (With Bucket) [11.26 h]; Water Tanker [11.26 h]; Dump Truck [11.26 h]; Plate Compactor [11.26 h]; 1.51m - 2.5m [15.45] |
| B6.33 42 11.13.125 | Sand Bedding (70.34% Completed) | 2026-09-19 → 2026-09-15 A (-4d) | 129.28d → 128d | 70% → 100% | 113.72d → none |  | was named Sand Bedding; resources Labor [31.18 h]; Foreman [15.59 h]; Operator [62.37 h]; Surveyor [15.59 h]; Surveyor Helper [15.59 h]; Loader [16 h]; Water Tanker [16 h]; Dump Truck [16 h]; Plate Compactor [16 h]; 1.51m - 2.5m [5.49] → Labor [21.94 h]; Foreman [10.97 h]; Operator [43.87 h]; Surveyor [10.97 h]; Surveyor Helper [10.97 h]; Loader [11.26 h]; Water Tanker [11.26 h]; Dump Truck [11.26 h]; Plate Compactor [11.26 h]; 1.51m - 2.5m [3.86] |
| B6.33 42 11.13.135 | Pipe Laying (70.34% Completed) | 2026-09-19 → 2026-09-15 A (-4d) | 127.28d → 126d | 70% → 100% | 113.72d → none |  | was named Pipe Laying; resources Labor [31.18 h]; Foreman [15.59 h]; Plumber Helper [15.59 h]; Plumber [15.59 h]; Operator [15.59 h]; Surveyor [15.59 h]; Surveyor Helper [15.59 h]; Mobile Crane [16 h]; 1.51m - 2.5m [49.32] → Labor [21.94 h]; Foreman [10.97 h]; Plumber Helper [10.97 h]; Plumber [10.97 h]; Operator [10.97 h]; Surveyor [10.97 h]; Surveyor Helper [10.97 h]; Mobile Crane [11.26 h]; 1.51m - 2.5m [34.69] |
| B6.33 42 11.13.145 | Embedment & Test (70.34% Completed) | 2026-09-19 → 2026-09-15 A (-4d) | 123.84d → 122d | 70% → 100% | 113.16d → none |  | was named Embedment & Test; resources Labor [62.37 h]; Foreman [31.18 h]; Plumber Helper [31.18 h]; Plumber [31.18 h]; Operator [62.37 h]; Surveyor [31.18 h]; Surveyor Helper [31.18 h]; Loader [32 h]; Water Tanker [32 h]; Dump Truck [32 h]; Plate Compactor [32 h]; Roller Compactor [32 h]; 1.51m - 2.5m [21.92] → Labor [43.87 h]; Foreman [21.94 h]; Plumber Helper [21.94 h]; Plumber [21.94 h]; Operator [43.87 h]; Surveyor [21.94 h]; Surveyor Helper [21.94 h]; Loader [22.51 h]; Water Tanker [22.51 h]; Dump Truck [22.51 h]; Plate Compactor [22.51 h]; Roller Compactor [22.51 h]; 1.51m - 2.5m [15.42] |
| B6.33 42 11.13.155 | Backfilling & Warrning Tape (70.34% Completed) | 2026-09-20 → 2026-09-15 A (-5d) | 120.12d → 118d | 70% → 100% | 112.88d → none |  | was named Backfilling & Warrning Tape; resources Labor [77.96 h]; Foreman [38.98 h]; Operator [155.92 h]; Surveyor [38.98 h]; Surveyor Helper [38.98 h]; Loader [40 h]; Water Tanker [40 h]; Dump Truck [40 h]; Plate Compactor [40 h]; Roller Compactor [40 h]; 1.51m - 2.5m [10.95] → Labor [54.84 h]; Foreman [27.42 h]; Operator [109.68 h]; Surveyor [27.42 h]; Surveyor Helper [27.42 h]; Loader [28.14 h]; Water Tanker [28.14 h]; Dump Truck [28.14 h]; Plate Compactor [28.14 h]; Roller Compactor [28.14 h]; 1.51m - 2.5m [7.7] |
| ?1300 | **?1300** | 2026-09-20 → 2026-10-17 (+27d) |  |  |  |  |  |
| 3 | **Depth From 0.0m to 1.5m** | 2026-09-19 → 2026-10-10 (+21d) |  |  |  |  |  |
| B6.33 42 11.361420 | Excavation (70.13% Completed) | 2026-09-19 → 2026-09-15 A (-4d) | 136.28d → 135d | 70% → 100% | 113.72d → none |  | was named Excavation; resources Labor [31.18 h]; Foreman [15.59 h]; Operator [31.18 h]; Surveyor [15.59 h]; Surveyor Helper [15.59 h]; Excavator (With Bucket) [16 h]; Water Tanker [16 h]; Dump Truck [16 h]; Plate Compactor [16 h]; less than 1.5 → Labor [21.87 h]; Foreman [10.94 h]; Operator [21.87 h]; Surveyor [10.94 h]; Surveyor Helper [10.94 h]; Excavator (With Bucket) [11.22 h]; Water Tanker [11.22 h]; Dump Truck [11.22 h]; Plate Compactor [11.22 h]; less than 1.5 |
| B6.33 42 11.361430 | Sand Bedding (70.13% Completed) | 2026-09-19 → 2026-09-15 A (-4d) | 133.28d → 132d | 70% → 100% | 113.72d → none |  | was named Sand Bedding; resources Labor [31.18 h]; Foreman [15.59 h]; Operator [62.37 h]; Surveyor [15.59 h]; Surveyor Helper [15.59 h]; Loader [16 h]; Water Tanker [16 h]; Dump Truck [16 h]; Plate Compactor [16 h]; less than 1.5 → Labor [21.87 h]; Foreman [10.94 h]; Operator [43.74 h]; Surveyor [10.94 h]; Surveyor Helper [10.94 h]; Loader [11.22 h]; Water Tanker [11.22 h]; Dump Truck [11.22 h]; Plate Compactor [11.22 h]; less than 1.5 |
| B6.33 42 11.361440 | Pipe Laying (70.13% Completed) | 2026-09-19 → 2026-09-15 A (-4d) | 131.28d → 130d | 70% → 100% | 113.72d → none |  | was named Pipe Laying; resources Labor [31.18 h]; Foreman [15.59 h]; Plumber Helper [15.59 h]; Plumber [15.59 h]; Operator [15.59 h]; Surveyor [15.59 h]; Surveyor Helper [15.59 h]; Mobile Crane [16 h]; less than 1.5 → Labor [21.87 h]; Foreman [10.94 h]; Plumber Helper [10.94 h]; Plumber [10.94 h]; Operator [10.94 h]; Surveyor [10.94 h]; Surveyor Helper [10.94 h]; Mobile Crane [11.22 h]; less than 1.5 |
| B6.33 42 11.361450 | Embedment & Test (70.13% Completed) | 2026-09-19 → 2026-09-15 A (-4d) | 128.56d → 127d | 70% → 100% | 113.44d → none |  | was named Embedment & Test; resources Labor [46.78 h]; Foreman [23.39 h]; Plumber Helper [23.39 h]; Plumber [23.39 h]; Operator [46.78 h]; Surveyor [23.39 h]; Surveyor Helper [23.39 h]; Loader [24 h]; Water Tanker [24 h]; Dump Truck [24 h]; Plate Compactor [24 h]; Roller Compactor [24 h]; less than 1.5 → Labor [32.81 h]; Foreman [16.4 h]; Plumber Helper [16.4 h]; Plumber [16.4 h]; Operator [32.81 h]; Surveyor [16.4 h]; Surveyor Helper [16.4 h]; Loader [16.83 h]; Water Tanker [16.83 h]; Dump Truck [16.83 h]; Plate Compactor [16.83 h]; Roller Compactor [16.83 h]; less than 1.5 |
| B6.33 42 11.361460 | Backfilling & Warrning Tape (70.13% Completed) | 2026-09-19 → 2026-09-15 A (-4d) | 126.84d → 125d | 70% → 100% | 113.16d → none |  | was named Backfilling & Warrning Tape; resources Labor [62.37 h]; Foreman [31.18 h]; Operator [124.74 h]; Surveyor [31.18 h]; Surveyor Helper [31.18 h]; Loader [32 h]; Water Tanker [32 h]; Dump Truck [32 h]; Plate Compactor [32 h]; Roller Compactor [32 h]; less than 1.5 → Labor [43.74 h]; Foreman [21.87 h]; Operator [87.48 h]; Surveyor [21.87 h]; Surveyor Helper [21.87 h]; Loader [22.44 h]; Water Tanker [22.44 h]; Dump Truck [22.44 h]; Plate Compactor [22.44 h]; Roller Compactor [22.44 h]; less than 1.5 |
| 4 | **Depth From 1.5m to 2.5m** | 2026-09-20 → 2026-10-17 (+27d) |  |  |  |  |  |
| B6.33 42 11.13.165 | Excavation |  |  |  |  | B6.33 42 11.361520 SS → B6.33 42 11.361420 SS+1d, B6.33 42 11.361420 FF+1d |  |
| B6.33 42 11.13.185 | Pipe Laying (70.34% Completed) | 2026-09-19 → 2026-09-15 A (-4d) | 125.28d → 124d | 70% → 100% | 113.72d → none |  | was named Pipe Laying; resources Labor [31.18 h]; Foreman [15.59 h]; Plumber Helper [15.59 h]; Plumber [15.59 h]; Operator [15.59 h]; Surveyor [15.59 h]; Surveyor Helper [15.59 h]; Mobile Crane [16 h]; 1.51m - 2.5m [21.66] → Labor [21.94 h]; Foreman [10.97 h]; Plumber Helper [10.97 h]; Plumber [10.97 h]; Operator [10.97 h]; Surveyor [10.97 h]; Surveyor Helper [10.97 h]; Mobile Crane [11.26 h]; 1.51m - 2.5m [15.24] |
| B6.33 42 11.13.195 | Embedment & Test (70.34% Completed) | 2026-09-19 → 2026-09-15 A (-4d) | 120.84d → 119d | 70% → 100% | 113.16d → none |  | was named Embedment & Test; resources Labor [62.37 h]; Foreman [31.18 h]; Plumber Helper [31.18 h]; Plumber [31.18 h]; Operator [62.37 h]; Surveyor [31.18 h]; Surveyor Helper [31.18 h]; Loader [32 h]; Water Tanker [32 h]; Dump Truck [32 h]; Plate Compactor [32 h]; Roller Compactor [32 h]; 1.51m - 2.5m [9.63] → Labor [43.87 h]; Foreman [21.94 h]; Plumber Helper [21.94 h]; Plumber [21.94 h]; Operator [43.87 h]; Surveyor [21.94 h]; Surveyor Helper [21.94 h]; Loader [22.51 h]; Water Tanker [22.51 h]; Dump Truck [22.51 h]; Plate Compactor [22.51 h]; Roller Compactor [22.51 h]; 1.51m - 2.5m [6.77] |
| B6.33 42 11.13.205 | Backfilling & Warrning Tape (70.34% Completed) | 2026-09-20 → 2026-09-15 A (-5d) | 120.12d → 118d | 70% → 100% | 112.88d → none |  | was named Backfilling & Warrning Tape; resources Labor [77.96 h]; Foreman [38.98 h]; Operator [155.92 h]; Surveyor [38.98 h]; Surveyor Helper [38.98 h]; Loader [40 h]; Water Tanker [40 h]; Dump Truck [40 h]; Plate Compactor [40 h]; Roller Compactor [40 h]; 1.51m - 2.5m [4.82] → Labor [54.84 h]; Foreman [27.42 h]; Operator [109.68 h]; Surveyor [27.42 h]; Surveyor Helper [27.42 h]; Loader [28.14 h]; Water Tanker [28.14 h]; Dump Truck [28.14 h]; Plate Compactor [28.14 h]; Roller Compactor [28.14 h]; 1.51m - 2.5m [3.39] |
| ?1400 | **?1400** | 2026-09-20 → 2026-10-15 (+25d) |  |  |  |  |  |
| 3 | **Depth From 0.0m to 1.5m** | 2026-09-19 → 2026-10-10 (+21d) |  |  |  |  |  |

| ID | Task | Start | Finish | Duration | Complete | Total float | Predecessors | Other |
| --- | --- | --- | --- | --- | --- | --- | --- | --- |
| B6.33 42 11.361470 | Excavation (71.44% Completed) |  | 2026-09-19 → 2026-09-15 A (-4d) | 136.28d → 135d | 71% → 100% | 113.72d → none |  | was named Excavation; resources Labor [31.18 h]; Foreman [15.59 h]; Operator [31.18 h]; Surveyor [15.59 h]; Surveyor Helper [15.59 h]; Excavator (With Bucket) [16 h]; Water Tanker [16 h]; Dump Truck [16 h]; Plate Compactor [16 h]; less than 1.5 → Labor [22.28 h]; Foreman [11.14 h]; Operator [22.28 h]; Surveyor [11.14 h]; Surveyor Helper [11.14 h]; Excavator (With Bucket) [11.43 h]; Water Tanker [11.43 h]; Dump Truck [11.43 h]; Plate Compactor [11.43 h]; less than 1.5 |
| B6.33 42 11.361480 | Sand Bedding (71.44% Completed) |  | 2026-09-19 → 2026-09-15 A (-4d) | 133.28d → 132d | 71% → 100% | 113.72d → none |  | was named Sand Bedding; resources Labor [31.18 h]; Foreman [15.59 h]; Operator [62.37 h]; Surveyor [15.59 h]; Surveyor Helper [15.59 h]; Loader [16 h]; Water Tanker [16 h]; Dump Truck [16 h]; Plate Compactor [16 h]; less than 1.5 → Labor [22.28 h]; Foreman [11.14 h]; Operator [44.56 h]; Surveyor [11.14 h]; Surveyor Helper [11.14 h]; Loader [11.43 h]; Water Tanker [11.43 h]; Dump Truck [11.43 h]; Plate Compactor [11.43 h]; less than 1.5 |
| B6.33 42 11.361490 | Pipe Laying (71.44% Completed) |  | 2026-09-19 → 2026-09-15 A (-4d) | 131.28d → 130d | 71% → 100% | 113.72d → none |  | was named Pipe Laying; resources Labor [31.18 h]; Foreman [15.59 h]; Plumber Helper [15.59 h]; Plumber [15.59 h]; Operator [15.59 h]; Surveyor [15.59 h]; Surveyor Helper [15.59 h]; Mobile Crane [16 h]; less than 1.5 → Labor [22.28 h]; Foreman [11.14 h]; Plumber Helper [11.14 h]; Plumber [11.14 h]; Operator [11.14 h]; Surveyor [11.14 h]; Surveyor Helper [11.14 h]; Mobile Crane [11.43 h]; less than 1.5 |
| B6.33 42 11.361500 | Embedment & Test (71.44% Completed) |  | 2026-09-19 → 2026-09-15 A (-4d) | 128.56d → 127d | 71% → 100% | 113.44d → none |  | was named Embedment & Test; resources Labor [46.78 h]; Foreman [23.39 h]; Plumber Helper [23.39 h]; Plumber [23.39 h]; Operator [46.78 h]; Surveyor [23.39 h]; Surveyor Helper [23.39 h]; Loader [24 h]; Water Tanker [24 h]; Dump Truck [24 h]; Plate Compactor [24 h]; Roller Compactor [24 h]; less than 1.5 → Labor [33.42 h]; Foreman [16.71 h]; Plumber Helper [16.71 h]; Plumber [16.71 h]; Operator [33.42 h]; Surveyor [16.71 h]; Surveyor Helper [16.71 h]; Loader [17.15 h]; Water Tanker [17.15 h]; Dump Truck [17.15 h]; Plate Compactor [17.15 h]; Roller Compactor [17.15 h]; less than 1.5 |
| B6.33 42 11.361510 | Backfilling & Warrning Tape (71.44% Completed) |  | 2026-09-19 → 2026-09-15 A (-4d) | 126.84d → 125d | 71% → 100% | 113.16d → none |  | was named Backfilling & Warrning Tape; resources Labor [62.37 h]; Foreman [31.18 h]; Operator [124.74 h]; Surveyor [31.18 h]; Surveyor Helper [31.18 h]; Loader [32 h]; Water Tanker [32 h]; Dump Truck [32 h]; Plate Compactor [32 h]; Roller Compactor [32 h]; less than 1.5 → Labor [44.56 h]; Foreman [22.28 h]; Operator [89.12 h]; Surveyor [22.28 h]; Surveyor Helper [22.28 h]; Loader [22.86 h]; Water Tanker [22.86 h]; Dump Truck [22.86 h]; Plate Compactor [22.86 h]; Roller Compactor [22.86 h]; less than 1.5 |
| 4 | **Depth From 1.5m to 2.5m** |  | 2026-09-20 → 2026-10-15 (+25d) |  |  |  |  |  |
| B6.33 42 11.13.215 | Excavation (70.34% Completed) |  | 2026-09-19 → 2026-09-15 A (-4d) | 127.28d → 126d | 70% → 100% | 63.72d → none |  | was named Excavation; resources Labor [31.18 h]; Foreman [15.59 h]; Operator [31.18 h]; Surveyor [15.59 h]; Surveyor Helper [15.59 h]; Excavator (With Bucket) [16 h]; Water Tanker [16 h]; Dump Truck [16 h]; Plate Compactor [16 h]; 1.51m - 2.5m [84.68] → Labor [21.94 h]; Foreman [10.97 h]; Operator [21.94 h]; Surveyor [10.97 h]; Surveyor Helper [10.97 h]; Excavator (With Bucket) [11.26 h]; Water Tanker [11.26 h]; Dump Truck [11.26 h]; Plate Compactor [11.26 h]; 1.51m - 2.5m [59.57] |
| B6.33 42 11.13.225 | Sand Bedding (70.34% Completed) |  | 2026-09-19 → 2026-09-15 A (-4d) | 122.28d → 121d | 70% → 100% | 63.72d → none |  | was named Sand Bedding; resources Labor [31.18 h]; Foreman [15.59 h]; Operator [62.37 h]; Surveyor [15.59 h]; Surveyor Helper [15.59 h]; Loader [16 h]; Water Tanker [16 h]; Dump Truck [16 h]; Plate Compactor [16 h]; 1.51m - 2.5m [21.35] → Labor [21.94 h]; Foreman [10.97 h]; Operator [43.87 h]; Surveyor [10.97 h]; Surveyor Helper [10.97 h]; Loader [11.26 h]; Water Tanker [11.26 h]; Dump Truck [11.26 h]; Plate Compactor [11.26 h]; 1.51m - 2.5m [15.02] |
| B6.33 42 11.13.235 | Pipe Laying (70.34% Completed) |  | 2026-09-19 → 2026-09-15 A (-4d) | 121.28d → 120d | 70% → 100% | 63.72d → none |  | was named Pipe Laying; resources Labor [31.18 h]; Foreman [15.59 h]; Plumber Helper [15.59 h]; Plumber [15.59 h]; Operator [15.59 h]; Surveyor [15.59 h]; Surveyor Helper [15.59 h]; Mobile Crane [16 h]; 1.51m - 2.5m [190.52] → Labor [21.94 h]; Foreman [10.97 h]; Plumber Helper [10.97 h]; Plumber [10.97 h]; Operator [10.97 h]; Surveyor [10.97 h]; Surveyor Helper [10.97 h]; Mobile Crane [11.26 h]; 1.51m - 2.5m [134.02] |
| B6.33 42 11.13.245 | Embedment & Test (70.34% Completed) |  | 2026-09-19 → 2026-09-15 A (-4d) | 120.84d → 119d | 70% → 100% | 63.16d → none |  | was named Embedment & Test; resources Labor [62.37 h]; Foreman [31.18 h]; Plumber Helper [31.18 h]; Plumber [31.18 h]; Operator [62.37 h]; Surveyor [31.18 h]; Surveyor Helper [31.18 h]; Loader [32 h]; Water Tanker [32 h]; Dump Truck [32 h]; Plate Compactor [32 h]; Roller Compactor [32 h]; 1.51m - 2.5m [84.68] → Labor [43.87 h]; Foreman [21.94 h]; Plumber Helper [21.94 h]; Plumber [21.94 h]; Operator [43.87 h]; Surveyor [21.94 h]; Surveyor Helper [21.94 h]; Loader [22.51 h]; Water Tanker [22.51 h]; Dump Truck [22.51 h]; Plate Compactor [22.51 h]; Roller Compactor [22.51 h]; 1.51m - 2.5m [59.57] |
| B6.33 42 11.13.255 | Backfilling & Warrning Tape (70.34% Completed) |  | 2026-09-20 → 2026-09-15 A (-5d) | 117.12d → 115d | 70% → 100% | 62.88d → none |  | was named Backfilling & Warrning Tape; resources Labor [77.96 h]; Foreman [38.98 h]; Operator [155.92 h]; Surveyor [38.98 h]; Surveyor Helper [38.98 h]; Loader [40 h]; Water Tanker [40 h]; Dump Truck [40 h]; Plate Compactor [40 h]; Roller Compactor [40 h]; 1.51m - 2.5m [42.35] → Labor [54.84 h]; Foreman [27.42 h]; Operator [109.68 h]; Surveyor [27.42 h]; Surveyor Helper [27.42 h]; Loader [28.14 h]; Water Tanker [28.14 h]; Dump Truck [28.14 h]; Plate Compactor [28.14 h]; Roller Compactor [28.14 h]; 1.51m - 2.5m [29.79] |
| ?1500 | **?1500** |  | 2026-09-19 → 2026-10-14 (+25d) |  |  |  |  |  |
| 3 | **Depth From 0.0m to 1.5m** |  | 2026-09-19 → 2026-10-14 (+25d) |  |  |  |  |  |
| B6.33 42 11.361520 | Excavation (59.28% Completed) |  | 2026-09-19 → 2026-09-15 A (-4d) | 136.28d → 135d | 59% → 100% | 113.72d → none |  | was named Excavation; resources Labor [31.18 h]; Foreman [15.59 h]; Operator [31.18 h]; Surveyor [15.59 h]; Surveyor Helper [15.59 h]; Excavator (With Bucket) [16 h]; Water Tanker [16 h]; Dump Truck [16 h]; Plate Compactor [16 h]; less than 1.5 → Labor [18.49 h]; Foreman [9.24 h]; Operator [18.49 h]; Surveyor [9.24 h]; Surveyor Helper [9.24 h]; Excavator (With Bucket) [9.48 h]; Water Tanker [9.48 h]; Dump Truck [9.48 h]; Plate Compactor [9.48 h]; less than 1.5 |
| B6.33 42 11.361530 | Sand Bedding (59.28% Completed) |  | 2026-09-19 → 2026-09-15 A (-4d) | 133.28d → 132d | 59% → 100% | 113.72d → none |  | was named Sand Bedding; resources Labor [31.18 h]; Foreman [15.59 h]; Operator [62.37 h]; Surveyor [15.59 h]; Surveyor Helper [15.59 h]; Loader [16 h]; Water Tanker [16 h]; Dump Truck [16 h]; Plate Compactor [16 h]; less than 1.5 → Labor [18.49 h]; Foreman [9.24 h]; Operator [36.97 h]; Surveyor [9.24 h]; Surveyor Helper [9.24 h]; Loader [9.48 h]; Water Tanker [9.48 h]; Dump Truck [9.48 h]; Plate Compactor [9.48 h]; less than 1.5 |
| B6.33 42 11.361540 | Pipe Laying (59.28% Completed) |  | 2026-09-19 → 2026-09-15 A (-4d) | 131.28d → 130d | 59% → 100% | 113.72d → none |  | was named Pipe Laying; resources Labor [31.18 h]; Foreman [15.59 h]; Plumber Helper [15.59 h]; Plumber [15.59 h]; Operator [15.59 h]; Surveyor [15.59 h]; Surveyor Helper [15.59 h]; Mobile Crane [16 h]; less than 1.5 → Labor [18.49 h]; Foreman [9.24 h]; Plumber Helper [9.24 h]; Plumber [9.24 h]; Operator [9.24 h]; Surveyor [9.24 h]; Surveyor Helper [9.24 h]; Mobile Crane [9.48 h]; less than 1.5 |
| B6.33 42 11.361550 | Embedment & Test (59.28% Completed) |  | 2026-09-19 → 2026-09-15 A (-4d) | 128.56d → 127d | 59% → 100% | 113.44d → none |  | was named Embedment & Test; resources Labor [46.78 h]; Foreman [23.39 h]; Plumber Helper [23.39 h]; Plumber [23.39 h]; Operator [46.78 h]; Surveyor [23.39 h]; Surveyor Helper [23.39 h]; Loader [24 h]; Water Tanker [24 h]; Dump Truck [24 h]; Plate Compactor [24 h]; Roller Compactor [24 h]; less than 1.5 → Labor [27.73 h]; Foreman [13.86 h]; Plumber Helper [13.86 h]; Plumber [13.86 h]; Operator [27.73 h]; Surveyor [13.86 h]; Surveyor Helper [13.86 h]; Loader [14.23 h]; Water Tanker [14.23 h]; Dump Truck [14.23 h]; Plate Compactor [14.23 h]; Roller Compactor [14.23 h]; less than 1.5 |
| B6.33 42 11.361560 | Backfilling & Warrning Tape (59.28% Completed) |  | 2026-09-19 → 2026-09-15 A (-4d) | 126.84d → 125d | 59% → 100% | 113.16d → none |  | was named Backfilling & Warrning Tape; resources Labor [62.37 h]; Foreman [31.18 h]; Operator [124.74 h]; Surveyor [31.18 h]; Surveyor Helper [31.18 h]; Loader [32 h]; Water Tanker [32 h]; Dump Truck [32 h]; Plate Compactor [32 h]; Roller Compactor [32 h]; less than 1.5 → Labor [36.97 h]; Foreman [18.49 h]; Operator [73.95 h]; Surveyor [18.49 h]; Surveyor Helper [18.49 h]; Loader [18.97 h]; Water Tanker [18.97 h]; Dump Truck [18.97 h]; Plate Compactor [18.97 h]; Roller Compactor [18.97 h]; less than 1.5 |
| B6.33 42 11.13.265 | Excavation |  |  |  |  |  | B6.33 42 11.13.215 SS → B1.2.31 23 16.01.6 |  |
| B6.33 42 11.13.305 | Backfilling & Warrning Tape |  |  |  |  |  | B6.33 42 11.13.295, B6.33 05 39.01.3917 SS, B6.33 42 11.13.205 SS → B6.33 42 11.13.295 |  |
| Catch Basins | **Catch Basins** |  | 2026-09-30 → 2026-10-21 (+21d) |  |  |  |  |  |
| Sing | **Single** |  | 2026-09-17 → 2026-10-05 (+18d) |  |  |  |  |  |
| B6.33 05 40.01.130 | Excavation, Compaction & Vapour Barrier (75.00% Completed) |  | 2026-09-17 → 2026-09-15 A (-2d) | 88.84d → 87.84d | 75% → 100% | 104d → none |  | was named Excavation, Compaction & Vapour Barrier; resources Labor [31.18 h]; Foreman [15.59 h]; Operator [31.18 h]; Surveyor [15.59 h]; Surveyor Helper [15.59 h]; Excavator (With Bucket) [16 h]; Water Tanker [16 h]; Dump Truck [16 h]; Roller Compactor [16 h]; Single Catch basin [2.98] → Labor [23.39 h]; Foreman [11.69 h]; Operator [23.39 h]; Surveyor [11.69 h]; Surveyor Helper [11.69 h]; Excavator (With Bucket) [12 h]; Water Tanker [12 h]; Dump Truck [12 h]; Roller Compactor [12 h]; Single Catch basin [2.23] |
| B6.33 05 40.01.140 | Blinding Conc. (75.00% Completed) |  | 2026-09-17 → 2026-09-15 A (-2d) | 87.84d → 86.84d | 75% → 100% | 114d → none |  | was named Blinding Conc.; resources Labor [31.18 h]; Foreman [15.59 h]; Laboratory Officer [15.59 h]; Carpenter [15.59 h]; Steelfixer [15.59 h]; Mason [15.59 h]; Single Catch basin [1.99] → Labor [23.39 h]; Foreman [11.69 h]; Laboratory Officer [11.69 h]; Carpenter [11.69 h]; Steelfixer [11.69 h]; Mason [11.69 h]; Single Catch basin [1.49] |
| B6.33 05 40.01.150 | Catch Basin Installation (75.00% Completed) |  | 2026-09-17 → 2026-09-15 A (-2d) | 84.84d → 83.84d | 75% → 100% | 114d → none |  | was named Catch Basin Installation; resources Labor [46.78 h]; Foreman [23.39 h]; Carpenter [23.39 h]; Steelfixer [23.39 h]; Mason [23.39 h]; Operator [46.78 h]; Surveyor [23.39 h]; Surveyor Helper [23.39 h]; Boom Truck [24 h]; Single Catch basin [8.93] → Labor [35.08 h]; Foreman [17.54 h]; Carpenter [17.54 h]; Steelfixer [17.54 h]; Mason [17.54 h]; Operator [35.08 h]; Surveyor [17.54 h]; Surveyor Helper [17.54 h]; Boom Truck [18 h]; Single Catch basin [6.7] |
| B6.33 05 40.01.160 | Backfilling, DI Frame & Grate Cover Fixing (75.00% Completed) |  | 2026-09-17 → 2026-09-15 A (-2d) | 76.84d → 75.84d | 75% → 100% | 114d → none |  | was named Backfilling, DI Frame & Grate Cover Fixing; resources Labor [62.37 h]; Foreman [31.18 h]; Operator [62.37 h]; Surveyor [31.18 h]; Surveyor Helper [31.18 h]; Loader [32 h]; Water Tanker [32 h]; Dump Truck [32 h]; Plate Compactor [32 h]; Single Catch basin [5.96] → Labor [46.78 h]; Foreman [23.39 h]; Operator [46.78 h]; Surveyor [23.39 h]; Surveyor Helper [23.39 h]; Loader [24 h]; Water Tanker [24 h]; Dump Truck [24 h]; Plate Compactor [24 h]; Single Catch basin [4.47] |
| Dou | **Double** |  | 2026-09-30 → 2026-10-21 (+21d) |  |  |  |  |  |
| B6.33 05 40.01.690 | Excavation, Compaction & Vapour Barrier | 2026-09-19 A | 2026-09-21 A |  | 0% → 100% | 104d → none | B6.33 05 40.01.130 → B6.33 05 40.01.130_R |  |
| B6.33 05 40.01.700 | Blinding Conc. | 2026-09-22 → 2026-10-07 (+15d) | 2026-09-26 → 2026-10-10 (+14d) |  |  | 104d → 100.32d |  |  |
| B6.33 05 40.01.710 | Catch Basin Installation | 2026-09-27 → 2026-10-11 (+14d) | 2026-09-30 → 2026-10-14 (+14d) |  |  | 104d → 100.32d |  |  |
| B6.33 05 40.01.720 | Backfilling, DI Frame & Grate Cover Fixing | 2026-09-19 → 2026-10-15 (+26d) | 2026-09-27 → 2026-10-21 (+24d) |  |  | 57.91d → 100.32d | B6.33 42 11.36-12 → B6.33 42 11.36-12_R |  |
| UPVC | **UPVC** |  | 2026-09-30 → 2026-10-14 (+14d) |  |  |  |  |  |
| UPVC300 | **?300 From 0.0 to 1.5m** |  | 2026-09-19 → 2026-10-10 (+21d) |  |  |  |  |  |
| B6.33 42 11.35-11 | Catch Basin Opening Prep. (68.04% Completed) |  | 2026-09-19 → 2026-09-15 A (-4d) | 87.93d → 86.84d | 68% → 100% | 113.91d → none | B6.33 05 40.01.150 SS → B6.33 05 40.01.150 SS+1d | was named Catch Basin Opening Prep.; resources Labor [31.18 h]; Foreman [15.59 h]; Plumber Helper [15.59 h]; Plumber [15.59 h]; less than 1.5 [46.62] → Labor [21.22 h]; Foreman [10.61 h]; Plumber Helper [10.61 h]; Plumber [10.61 h]; less than 1.5 [31.72] |
| B6.33 42 11.35-12 | Fittings & Pipe Installation (68.04% Completed) |  | 2026-09-19 → 2026-09-15 A (-4d) | 87.93d → 86.84d | 68% → 100% | 113.91d → none |  | was named Fittings & Pipe Installation; resources Labor [31.18 h]; Foreman [15.59 h]; Plumber Helper [15.59 h]; Plumber [15.59 h]; Surveyor [15.59 h]; Surveyor Helper [15.59 h]; less than 1.5 [186.46] → Labor [21.22 h]; Foreman [10.61 h]; Plumber Helper [10.61 h]; Plumber [10.61 h]; Surveyor [10.61 h]; Surveyor Helper [10.61 h]; less than 1.5 [126.87] |
| UPVC3001 | **?400 From 0.0 to 1.5m** |  | 2026-09-30 → 2026-10-14 (+14d) |  |  |  |  |  |
| B6.33 42 11.36-11 | Catch Basin Opening Prep. (68.04% Completed) |  | 2026-09-30 → 2026-09-15 A (-15d) | 87.93d → 86.84d | 68% → 100% | 104d → none | B6.33 05 40.01.710 FF → B6.33 05 40.01.150 FF+1d | was named Catch Basin Opening Prep.; resources Labor [31.18 h]; Foreman [15.59 h]; Plumber Helper [15.59 h]; Plumber [15.59 h]; less than 1.5 [12.6] → Labor [21.22 h]; Foreman [10.61 h]; Plumber Helper [10.61 h]; Plumber [10.61 h]; less than 1.5 [8.57] |
| B6.33 42 11.36-12 | Fittings & Pipe Installation (68.04% Completed) |  | 2026-09-19 → 2026-09-15 A (-4d) | 87.93d → 86.84d | 68% → 100% | 57.91d → none |  | was named Fittings & Pipe Installation; resources Labor [31.18 h]; Foreman [15.59 h]; Plumber Helper [15.59 h]; Plumber [15.59 h]; Surveyor [15.59 h]; Surveyor Helper [15.59 h]; less than 1.5 [50.4] → Labor [21.22 h]; Foreman [10.61 h]; Plumber Helper [10.61 h]; Plumber [10.61 h]; Surveyor [10.61 h]; Surveyor Helper [10.61 h]; less than 1.5 [34.29] |
| Potable Water | **Potable Water Network** |  | 2026-10-18 → 2026-11-07 (+20d) |  |  |  |  |  |
| HDPE | **HDPE Pipes** |  | 2026-09-22 → 2026-10-20 (+28d) |  |  |  |  |  |
| ?110mm | **?110mm** |  | 2026-09-22 → 2026-10-20 (+28d) |  |  |  |  |  |
| Depth: 0.0m - 1.5m | **Depth: 0.0m - 1.5m** |  | 2026-09-19 → 2026-10-10 (+21d) |  |  |  |  |  |
| B3.33 14 13.01.01.2 | Sand Bedding (75.10% Completed) |  | 2026-09-19 → 2026-09-15 A (-4d) | 126d → 124d | 75% → 100% | 113d → none |  | was named Sand Bedding; resources Labor [31.18 h]; Foreman [15.59 h]; Operator [62.37 h]; Surveyor [15.59 h]; Surveyor Helper [15.59 h]; Loader [16 h]; Water Tanker [16 h]; Dump Truck [16 h]; Plate Compactor [16 h]; Depth: 0.0m - 1.5m [38.94] → Labor [23.42 h]; Foreman [11.71 h]; Operator [46.84 h]; Surveyor [11.71 h]; Surveyor Helper [11.71 h]; Loader [12.02 h]; Water Tanker [12.02 h]; Dump Truck [12.02 h]; Plate Compactor [12.02 h]; Depth: 0.0m - 1.5m [29.25] |
| B3.33 14 13.01.01.3 | Pipe Laying (72.50% Completed) |  | 2026-09-19 → 2026-09-15 A (-4d) | 123d → 121d | 72% → 100% | 113d → none |  | was named Pipe Laying; resources Labor [31.18 h]; Foreman [15.59 h]; Plumber Helper [15.59 h]; Plumber [15.59 h]; Operator [15.59 h]; Surveyor [15.59 h]; Surveyor Helper [15.59 h]; Mobile Crane [16 h]; Depth: 0.0m - 1.5m [350.44] → Labor [22.61 h]; Foreman [11.3 h]; Plumber Helper [11.3 h]; Plumber [11.3 h]; Operator [11.3 h]; Surveyor [11.3 h]; Surveyor Helper [11.3 h]; Mobile Crane [11.6 h]; Depth: 0.0m - 1.5m [254.06] |
| B3.33 14 13.01.01.4 | Embedment & Test (72.50% Completed) |  | 2026-09-19 → 2026-09-15 A (-4d) | 121.1d → 120d | 72% → 100% | 113d → none |  | was named Embedment & Test; resources Labor [62.37 h]; Foreman [31.18 h]; Plumber Helper [31.18 h]; Plumber [31.18 h]; Operator [62.37 h]; Surveyor [31.18 h]; Surveyor Helper [31.18 h]; Loader [32 h]; Water Tanker [32 h]; Dump Truck [32 h]; Plate Compactor [32 h]; Roller Compactor [32 h]; Depth: 0.0m - 1.5m [155.75] → Labor [45.22 h]; Foreman [22.61 h]; Plumber Helper [22.61 h]; Plumber [22.61 h]; Operator [45.22 h]; Surveyor [22.61 h]; Surveyor Helper [22.61 h]; Loader [23.2 h]; Water Tanker [23.2 h]; Dump Truck [23.2 h]; Plate Compactor [23.2 h]; Roller Compactor [23.2 h]; Depth: 0.0m - 1.5m [112.91] |
| B3.33 14 13.01.01.5 | Backfilling & Warrning Tape (72.50% Completed) |  | 2026-09-19 → 2026-09-15 A (-4d) | 114.38d → 113d | 72% → 100% | 113d → none |  | was named Backfilling & Warrning Tape; resources Labor [77.96 h]; Foreman [38.98 h]; Operator [155.92 h]; Surveyor [38.98 h]; Surveyor Helper [38.98 h]; Loader [40 h]; Water Tanker [40 h]; Dump Truck [40 h]; Plate Compactor [40 h]; Roller Compactor [40 h]; Depth: 0.0m - 1.5m [77.87] → Labor [56.52 h]; Foreman [28.26 h]; Operator [113.04 h]; Surveyor [28.26 h]; Surveyor Helper [28.26 h]; Loader [29 h]; Water Tanker [29 h]; Dump Truck [29 h]; Plate Compactor [29 h]; Roller Compactor [29 h]; Depth: 0.0m - 1.5m [56.46] |
| B3.33 14 13.01.01.1 | Excavation (72.50% Completed) |  | 2026-09-19 → 2026-09-15 A (-4d) | 102d → 100d | 72% → 100% | 113d → none |  | was named Excavation; resources Labor [31.18 h]; Foreman [15.59 h]; Operator [31.18 h]; Surveyor [15.59 h]; Surveyor Helper [15.59 h]; Excavator (With Bucket) [16 h]; Water Tanker [16 h]; Dump Truck [16 h]; Plate Compactor [16 h]; Depth: 0.0m - 1.5m [155.75] → Labor [22.61 h]; Foreman [11.3 h]; Operator [22.61 h]; Surveyor [11.3 h]; Surveyor Helper [11.3 h]; Excavator (With Bucket) [11.6 h]; Water Tanker [11.6 h]; Dump Truck [11.6 h]; Plate Compactor [11.6 h]; Depth: 0.0m - 1.5m [112.91] |
| Depth: 1.51m - 2.5m | **Depth: 1.51m - 2.5m** |  | 2026-09-22 → 2026-10-20 (+28d) |  |  |  |  |  |
| B3.33 14 13.01.02.4 | Embedment & Test (81.66% Completed) |  | 2026-09-19 → 2026-09-15 A (-4d) | 140d → 138d | 82% → 100% | 105d → none |  | was named Embedment & Test; resources Labor [62.37 h]; Foreman [31.18 h]; Plumber Helper [31.18 h]; Plumber [31.18 h]; Operator [62.37 h]; Surveyor [31.18 h]; Surveyor Helper [31.18 h]; Loader [32 h]; Water Tanker [32 h]; Dump Truck [32 h]; Plate Compactor [32 h]; Roller Compactor [32 h]; Depth: 1.51m - 2.5m → Labor [50.93 h]; Foreman [25.47 h]; Plumber Helper [25.47 h]; Plumber [25.47 h]; Operator [50.93 h]; Surveyor [25.47 h]; Surveyor Helper [25.47 h]; Loader [26.13 h]; Water Tanker [26.13 h]; Dump Truck [26.13 h]; Plate Compactor [26.13 h]; Roller Compactor [26.13 h]; Depth: 1.51m - 2.5m |
| B3.33 14 13.01.02.5 | Backfilling & Warrning Tape (81.66% Completed) |  | 2026-09-22 → 2026-09-15 A (-7d) | 136d → 134d | 82% → 100% | 102d → none | B3.33 14 13.01.02.4 FF, B3.33 14 19.01.107 FF → B3.33 14 13.01.02.4 FF | was named Backfilling & Warrning Tape; resources Labor [77.96 h]; Foreman [38.98 h]; Operator [155.92 h]; Surveyor [38.98 h]; Surveyor Helper [38.98 h]; Loader [40 h]; Water Tanker [40 h]; Dump Truck [40 h]; Plate Compactor [40 h]; Roller Compactor [40 h]; Depth: 1.51m - 2.5m → Labor [63.66 h]; Foreman [31.83 h]; Operator [127.33 h]; Surveyor [31.83 h]; Surveyor Helper [31.83 h]; Loader [32.66 h]; Water Tanker [32.66 h]; Dump Truck [32.66 h]; Plate Compactor [32.66 h]; Roller Compactor [32.66 h]; Depth: 1.51m - 2.5m |
| B3.33 14 13.01.02.1 | Excavation (81.66% Completed) |  | 2026-09-19 → 2026-09-15 A (-4d) | 126d → 124d | 82% → 100% | 67d → none |  | was named Excavation; resources Labor [31.18 h]; Foreman [15.59 h]; Operator [31.18 h]; Surveyor [15.59 h]; Surveyor Helper [15.59 h]; Excavator (With Bucket) [16 h]; Water Tanker [16 h]; Dump Truck [16 h]; Plate Compactor [16 h]; Depth: 1.51m - 2.5m → Labor [25.47 h]; Foreman [12.73 h]; Operator [25.47 h]; Surveyor [12.73 h]; Surveyor Helper [12.73 h]; Excavator (With Bucket) [13.07 h]; Water Tanker [13.07 h]; Dump Truck [13.07 h]; Plate Compactor [13.07 h]; Depth: 1.51m - 2.5m |
| B3.33 14 13.01.02.2 | Sand Bedding (81.66% Completed) |  | 2026-09-19 → 2026-09-15 A (-4d) | 123d → 121d | 82% → 100% | 105d → none |  | was named Sand Bedding; resources Labor [31.18 h]; Foreman [15.59 h]; Operator [62.37 h]; Surveyor [15.59 h]; Surveyor Helper [15.59 h]; Loader [16 h]; Water Tanker [16 h]; Dump Truck [16 h]; Plate Compactor [16 h]; Depth: 1.51m - 2.5m → Labor [25.47 h]; Foreman [12.73 h]; Operator [50.93 h]; Surveyor [12.73 h]; Surveyor Helper [12.73 h]; Loader [13.07 h]; Water Tanker [13.07 h]; Dump Truck [13.07 h]; Plate Compactor [13.07 h]; Depth: 1.51m - 2.5m |
| B3.33 14 13.01.02.3 | Pipe Laying (81.66% Completed) |  | 2026-09-19 → 2026-09-15 A (-4d) | 122d → 120d | 82% → 100% | 105d → none |  | was named Pipe Laying; resources Labor [31.18 h]; Foreman [15.59 h]; Plumber Helper [15.59 h]; Plumber [15.59 h]; Operator [15.59 h]; Surveyor [15.59 h]; Surveyor Helper [15.59 h]; Mobile Crane [16 h]; Depth: 1.51m - 2.5m → Labor [25.47 h]; Foreman [12.73 h]; Plumber Helper [12.73 h]; Plumber [12.73 h]; Operator [12.73 h]; Surveyor [12.73 h]; Surveyor Helper [12.73 h]; Mobile Crane [13.07 h]; Depth: 1.51m - 2.5m |
| Valves & Chambers | **Valves & Chambers** |  | 2026-10-18 → 2026-11-07 (+20d) |  |  |  |  |  |
| GV | **Gate Valves** |  | 2026-09-22 → 2026-10-13 (+21d) |  |  |  |  |  |
| 1 | **Gate valves dia (110) mm** |  | 2026-09-22 → 2026-10-13 (+21d) |  |  |  |  |  |
| B3.33 14 19.01.106 | Burried Isolation Valve Installation (75.00% Completed) |  | 2026-09-19 → 2026-09-15 A (-4d) | 116d → 114d | 75% → 100% | 102d → none |  | was named Burried Isolation Valve Installation; resources Labor [31.18 h]; Plumber Helper [15.59 h]; Plumber [15.59 h]; Operator [31.18 h]; Boom Truck [16 h]; POT Gate V dia 110 mm [1.65] → Labor [23.39 h]; Plumber Helper [11.69 h]; Plumber [11.69 h]; Operator [23.39 h]; Boom Truck [12 h]; POT Gate V dia 110 mm [1.24] |
| B3.33 14 19.01.107 | Spindle & Surface Box | 2026-09-20 → 2026-10-11 (+21d) | 2026-09-22 → 2026-10-13 (+21d) |  |  | 102d → 99.32d | B3.33 14 19.01.106 → B3.33 14 19.01.106_R |  |
| 2 | **Air Valves** | 2026-09-20 → 2026-10-11 (+21d) | 2026-10-14 → 2026-11-03 (+20d) |  |  |  |  |  |
| 4 | **Air valves on less than 315 mm. (In Chamber)** | 2026-09-20 → 2026-10-11 (+21d) | 2026-10-14 → 2026-11-03 (+20d) |  |  |  |  |  |
| B3.33 05 63.02.22 | Land Adjustment & Compaction | 2026-09-20 → 2026-10-11 (+21d) | 2026-09-22 → 2026-10-13 (+21d) |  |  | 67d → 64.32d | B3.33 14 13.01.02.1 → B3.33 14 13.01.02.1_R |  |
| B3.33 05 63.02.20 | Foundations | 2026-09-24 → 2026-10-14 (+20d) | 2026-09-28 → 2026-10-18 (+20d) |  |  | 82d → 79.32d |  |  |
| B3.33 05 63.02.23 | Chambers Walls Conc Cast In Situ | 2026-09-29 → 2026-10-19 (+20d) | 2026-10-03 → 2026-10-22 (+19d) |  |  | 82d → 79.32d |  |  |
| B3.33 05 63.02.21 | Chamber Curing, Finishing & Steel Cover | 2026-10-04 → 2026-10-24 (+20d) | 2026-10-08 → 2026-10-28 (+20d) |  |  | 82d → 79.32d |  |  |
| B3.33 05 63.02.24 | Valve & Fitting Installation | 2026-10-10 → 2026-10-29 (+19d) | 2026-10-14 → 2026-11-03 (+20d) |  |  | 82d → 79.32d |  |  |
| Washout Valves | **Washout Valves** | 2026-09-24 → 2026-10-14 (+20d) | 2026-10-18 → 2026-11-07 (+20d) |  |  |  |  |  |
| 4 | **Washout valves on 110-400 mm. (In Chamber)** | 2026-09-24 → 2026-10-14 (+20d) | 2026-10-18 → 2026-11-07 (+20d) |  |  |  |  |  |
| B3.33 05 63.01.17 | Land Adjustment & Compaction | 2026-09-24 → 2026-10-14 (+20d) | 2026-09-27 → 2026-10-17 (+20d) |  |  | 67d → 64.32d |  |  |
| B3.33 05 63.01.15 | Foundations | 2026-09-28 → 2026-10-18 (+20d) | 2026-10-01 → 2026-10-21 (+20d) |  |  | 86d → 83.32d |  |  |
| B3.33 05 63.01.18 | Chambers Walls Conc Cast In Situ | 2026-10-03 → 2026-10-22 (+19d) | 2026-10-06 → 2026-10-26 (+20d) |  |  | 86d → 83.32d |  |  |

| ID | Task | Start | Finish | Duration | Complete | Total float | Predecessors | Other |
| --- | --- | --- | --- | --- | --- | --- | --- | --- |
| B3.33 05 63.01.16 | Chamber Curing, Finishing & Steel Cover | 2026-10-07 → 2026-10-27 (+20d) | 2026-10-12 → 2026-11-01 (+20d) |  |  | 86d → 83.32d |  |  |
| B3.33 05 63.01.19 | Valve & Fitting Installation | 2026-10-13 → 2026-11-02 (+20d) | 2026-10-18 → 2026-11-07 (+20d) |  |  | 86d → 83.32d | B3.33 05 63.01.16, B3.33 14 13.01.02.5 → B3.33 05 63.01.16, B3.33 14 13.01.02.5_R |  |
| Crossing | **Plots and Buildings Crossing** | 2026-09-28 → 2026-10-18 (+20d) | 2026-10-17 → 2026-11-05 (+19d) |  |  |  |  |  |
| B3.33 14 13.02.16 | Earthwork | 2026-09-28 → 2026-10-18 (+20d) | 2026-10-05 → 2026-10-25 (+20d) |  |  | 67d → 64.32d |  |  |
| B3.33 14 13.02.17 | Sand Bedding | 2026-10-06 → 2026-10-26 (+20d) | 2026-10-08 → 2026-10-28 (+20d) |  |  | 90d → 87.32d |  |  |
| B3.33 14 13.02.18 | Tee, Pipe (Crossing) Installation & Backfilling | 2026-10-10 → 2026-10-29 (+19d) | 2026-10-17 → 2026-11-05 (+19d) |  |  | 90d → 87.32d |  |  |
| Fire Fighting | **Fire Fighting Network** |  | 2026-10-26 → 2026-11-18 (+23d) |  |  |  |  |  |
| HDPE | **HDPE Pipes** |  | 2026-10-12 → 2026-11-01 (+20d) |  |  |  |  |  |
| ?250mm | **?250mm** |  | 2026-10-03 → 2026-10-27 (+24d) |  |  |  |  |  |
| Depth: 0.0m - 1.5m | **Depth: 0.0m - 1.5m** |  | 2026-10-03 → 2026-10-22 (+19d) |  |  |  |  |  |
| B3.1. 33 14 13.01 | Excavation (90.00% Completed) |  | 2026-09-20 → 2026-09-15 A (-5d) | 123d → 121d | 90% → 100% | 69d → none |  | was named Excavation; resources Labor [31.18 h]; Foreman [15.59 h]; Operator [31.18 h]; Surveyor [15.59 h]; Surveyor Helper [15.59 h]; Excavator (With Bucket) [16 h]; Water Tanker [16 h]; Dump Truck [16 h]; Plate Compactor [16 h]; Depth: 0.0m - 1.5m [131.51] → Labor [28.07 h]; Foreman [14.03 h]; Operator [28.07 h]; Surveyor [14.03 h]; Surveyor Helper [14.03 h]; Excavator (With Bucket) [14.4 h]; Water Tanker [14.4 h]; Dump Truck [14.4 h]; Plate Compactor [14.4 h]; Depth: 0.0m - 1.5m [118.36] |
| B3.1. 33 14 13.02 | Sand Bedding (90.00% Completed) |  | 2026-09-20 → 2026-09-15 A (-5d) | 122d → 120d | 90% → 100% | 69d → none |  | was named Sand Bedding; resources Labor [31.18 h]; Foreman [15.59 h]; Operator [62.37 h]; Surveyor [15.59 h]; Surveyor Helper [15.59 h]; Loader [16 h]; Water Tanker [16 h]; Dump Truck [16 h]; Plate Compactor [16 h]; Depth: 0.0m - 1.5m [32.88] → Labor [28.07 h]; Foreman [14.03 h]; Operator [56.13 h]; Surveyor [14.03 h]; Surveyor Helper [14.03 h]; Loader [14.4 h]; Water Tanker [14.4 h]; Dump Truck [14.4 h]; Plate Compactor [14.4 h]; Depth: 0.0m - 1.5m [29.59] |
| B3.1. 33 14 13.03 | Pipe Laying (90.00% Completed) |  | 2026-09-20 → 2026-09-15 A (-5d) | 116d → 114d | 90% → 100% | 69d → none |  | was named Pipe Laying; resources Labor [31.18 h]; Foreman [15.59 h]; Plumber Helper [15.59 h]; Plumber [15.59 h]; Operator [15.59 h]; Surveyor [15.59 h]; Surveyor Helper [15.59 h]; Mobile Crane [16 h]; Depth: 0.0m - 1.5m [295.89] → Labor [28.07 h]; Foreman [14.03 h]; Plumber Helper [14.03 h]; Plumber [14.03 h]; Operator [14.03 h]; Surveyor [14.03 h]; Surveyor Helper [14.03 h]; Mobile Crane [14.4 h]; Depth: 0.0m - 1.5m [266.3] |
| B3.1. 33 14 13.04 | Embedment & Test (84.00% Completed) |  | 2026-10-03 → 2026-09-15 A (-18d) | 109d → 107d | 84% → 100% | 102d → none | B3.1. 33 14 13.03 FF, B3.33 14 19.01.122 FF → B3.1. 33 14 13.03 FF | was named Embedment & Test; resources Labor [77.96 h]; Foreman [38.98 h]; Plumber Helper [38.98 h]; Plumber [38.98 h]; Operator [77.96 h]; Surveyor [38.98 h]; Surveyor Helper [38.98 h]; Loader [40 h]; Water Tanker [40 h]; Dump Truck [40 h]; Plate Compactor [40 h]; Roller Compactor [40 h]; Depth: 0.0m - 1.5m [131.51] → Labor [65.49 h]; Foreman [32.74 h]; Plumber Helper [32.74 h]; Plumber [32.74 h]; Operator [65.49 h]; Surveyor [32.74 h]; Surveyor Helper [32.74 h]; Loader [33.6 h]; Water Tanker [33.6 h]; Dump Truck [33.6 h]; Plate Compactor [33.6 h]; Roller Compactor [33.6 h]; Depth: 0.0m - 1.5m [110.47] |
| B3.1. 33 14 13.05 | Backfilling & Warrning Tape (84.00% Completed) |  | 2026-10-03 → 2026-09-15 A (-18d) | 104d → 102d | 84% → 100% | 102d → none |  | was named Backfilling & Warrning Tape; resources Labor [93.55 h]; Foreman [46.78 h]; Operator [187.11 h]; Surveyor [46.78 h]; Surveyor Helper [46.78 h]; Loader [48 h]; Water Tanker [48 h]; Dump Truck [48 h]; Plate Compactor [48 h]; Roller Compactor [48 h]; Depth: 0.0m - 1.5m [65.75] → Labor [78.59 h]; Foreman [39.29 h]; Operator [157.17 h]; Surveyor [39.29 h]; Surveyor Helper [39.29 h]; Loader [40.32 h]; Water Tanker [40.32 h]; Dump Truck [40.32 h]; Plate Compactor [40.32 h]; Roller Compactor [40.32 h]; Depth: 0.0m - 1.5m [55.23] |
| Depth: 1.51m - 2.5m | **Depth: 1.51m - 2.5m** |  | 2026-10-03 → 2026-10-27 (+24d) |  |  |  |  |  |
| B3.1. 33 14 13.2 | Excavation (90.00% Completed) |  | 2026-09-20 → 2026-09-15 A (-5d) | 122d → 120d | 90% → 100% | 69d → none |  | was named Excavation; resources Labor [31.18 h]; Foreman [15.59 h]; Operator [31.18 h]; Surveyor [15.59 h]; Surveyor Helper [15.59 h]; Excavator (With Bucket) [16 h]; Water Tanker [16 h]; Dump Truck [16 h]; Plate Compactor [16 h]; Depth: 1.51m - 2.5m [8.22] → Labor [28.07 h]; Foreman [14.03 h]; Operator [28.07 h]; Surveyor [14.03 h]; Surveyor Helper [14.03 h]; Excavator (With Bucket) [14.4 h]; Water Tanker [14.4 h]; Dump Truck [14.4 h]; Plate Compactor [14.4 h]; Depth: 1.51m - 2.5m [7.4] |
| B3.1. 33 14 13.3 | Sand Bedding (90.00% Completed) |  | 2026-09-20 → 2026-09-15 A (-5d) | 120d → 118d | 90% → 100% | 69d → none |  | was named Sand Bedding; resources Labor [31.18 h]; Foreman [15.59 h]; Operator [62.37 h]; Surveyor [15.59 h]; Surveyor Helper [15.59 h]; Loader [16 h]; Water Tanker [16 h]; Dump Truck [16 h]; Plate Compactor [16 h]; Depth: 1.51m - 2.5m [2.06] → Labor [28.07 h]; Foreman [14.03 h]; Operator [56.13 h]; Surveyor [14.03 h]; Surveyor Helper [14.03 h]; Loader [14.4 h]; Water Tanker [14.4 h]; Dump Truck [14.4 h]; Plate Compactor [14.4 h]; Depth: 1.51m - 2.5m [1.85] |
| B3.1. 33 14 13.4 | Pipe Laying (84.00% Completed) |  | 2026-09-20 → 2026-09-15 A (-5d) | 115d → 113d | 84% → 100% | 69d → none |  | was named Pipe Laying; resources Labor [46.78 h]; Foreman [23.39 h]; Plumber Helper [23.39 h]; Plumber [23.39 h]; Operator [23.39 h]; Surveyor [23.39 h]; Surveyor Helper [23.39 h]; Mobile Crane [24 h]; Depth: 1.51m - 2.5m [18.5] → Labor [39.29 h]; Foreman [19.65 h]; Plumber Helper [19.65 h]; Plumber [19.65 h]; Operator [19.65 h]; Surveyor [19.65 h]; Surveyor Helper [19.65 h]; Mobile Crane [20.16 h]; Depth: 1.51m - 2.5m [15.54] |
| B3.1. 33 14 13.5 | Embedment & Test (84.00% Completed) |  | 2026-10-03 → 2026-09-15 A (-18d) | 109d → 107d | 84% → 100% | 102d → none | B3.1. 33 14 13.4 FF, B3.33 14 19.01.122 FF → B3.1. 33 14 13.4 FF | was named Embedment & Test; resources Labor [62.37 h]; Foreman [31.18 h]; Plumber Helper [31.18 h]; Plumber [31.18 h]; Operator [62.37 h]; Surveyor [31.18 h]; Surveyor Helper [31.18 h]; Loader [32 h]; Water Tanker [32 h]; Dump Truck [32 h]; Plate Compactor [32 h]; Roller Compactor [32 h]; Depth: 1.51m - 2.5m [8.22] → Labor [52.39 h]; Foreman [26.2 h]; Plumber Helper [26.2 h]; Plumber [26.2 h]; Operator [52.39 h]; Surveyor [26.2 h]; Surveyor Helper [26.2 h]; Loader [26.88 h]; Water Tanker [26.88 h]; Dump Truck [26.88 h]; Plate Compactor [26.88 h]; Roller Compactor [26.88 h]; Depth: 1.51m - 2.5m [6.91] |
| B3.1. 33 14 13.6 | Backfilling & Warrning Tape (84.00% Completed) |  | 2026-10-03 → 2026-09-15 A (-18d) | 103.12d → 102d | 84% → 100% | 102d → none |  | was named Backfilling & Warrning Tape; resources Labor [109.15 h]; Foreman [54.57 h]; Operator [218.29 h]; Surveyor [54.57 h]; Surveyor Helper [54.57 h]; Loader [56 h]; Water Tanker [56 h]; Dump Truck [56 h]; Plate Compactor [56 h]; Roller Compactor [56 h]; Depth: 1.51m - 2.5m [4.11] → Labor [91.68 h]; Foreman [45.84 h]; Operator [183.37 h]; Surveyor [45.84 h]; Surveyor Helper [45.84 h]; Loader [47.04 h]; Water Tanker [47.04 h]; Dump Truck [47.04 h]; Plate Compactor [47.04 h]; Roller Compactor [47.04 h]; Depth: 1.51m - 2.5m [3.45] |
| ?355mm | **?355mm** |  | 2026-10-12 → 2026-11-01 (+20d) |  |  |  |  |  |
| Depth: 1.51m - 2.5m | **Depth: 0.0m - 1.5m** |  | 2026-10-12 → 2026-11-01 (+20d) |  |  |  |  |  |
| B3.1. 33 14 13.22 | Excavation (0.00% Completed) |  | 2026-09-20 → 2026-09-15 A (-5d) | 116d → 114d | 0% → 100% | 69d → none |  | was named Excavation; resources Labor [31.18 h]; Foreman [15.59 h]; Operator [31.18 h]; Surveyor [15.59 h]; Surveyor Helper [15.59 h]; Excavator (With Bucket) [16 h]; Water Tanker [16 h]; Dump Truck [16 h]; Plate Compactor [16 h]; Depth: 0.0m - 1.5m [5.13] → Labor; Foreman; Operator; Surveyor; Surveyor Helper; Excavator (With Bucket); Water Tanker; Dump Truck; Plate Compactor; Depth: 0.0m - 1.5m |
| B3.1. 33 14 13.23 | Sand Bedding (0.00% Completed) |  | 2026-09-20 → 2026-09-15 A (-5d) | 115d → 113d | 0% → 100% | 69d → none |  | was named Sand Bedding; resources Labor [31.18 h]; Foreman [15.59 h]; Operator [62.37 h]; Surveyor [15.59 h]; Surveyor Helper [15.59 h]; Loader [16 h]; Water Tanker [16 h]; Dump Truck [16 h]; Plate Compactor [16 h]; Depth: 0.0m - 1.5m [1.29] → Labor; Foreman; Operator; Surveyor; Surveyor Helper; Loader; Water Tanker; Dump Truck; Plate Compactor; Depth: 0.0m - 1.5m |
| B3.1. 33 14 13.24 | Pipe Laying (0.00% Completed) |  | 2026-09-20 → 2026-09-15 A (-5d) | 112d → 110d | 0% → 100% | 69d → none |  | was named Pipe Laying; resources Labor [31.18 h]; Foreman [15.59 h]; Plumber Helper [15.59 h]; Plumber [15.59 h]; Operator [15.59 h]; Surveyor [15.59 h]; Surveyor Helper [15.59 h]; Mobile Crane [16 h]; Depth: 0.0m - 1.5m [11.56] → Labor; Foreman; Plumber Helper; Plumber; Operator; Surveyor; Surveyor Helper; Mobile Crane; Depth: 0.0m - 1.5m |
| B3.1. 33 14 13.25 | Embedment & Test (0.00% Completed) |  | 2026-10-03 → 2026-09-15 A (-18d) | 111d → 107d | 0% → 100% | 71d → none | B3.1. 33 14 13.24 FF, B3.33 14 19.01.122 FF → B3.1. 33 14 13.24 FF | was named Embedment & Test; resources Labor [62.37 h]; Foreman [31.18 h]; Plumber Helper [31.18 h]; Plumber [31.18 h]; Operator [62.37 h]; Surveyor [31.18 h]; Surveyor Helper [31.18 h]; Loader [32 h]; Water Tanker [32 h]; Dump Truck [32 h]; Plate Compactor [32 h]; Roller Compactor [32 h]; Depth: 0.0m - 1.5m [5.13] → Labor; Foreman; Plumber Helper; Plumber; Operator; Surveyor; Surveyor Helper; Loader; Water Tanker; Dump Truck; Plate Compactor; Roller Compactor; Depth: 0.0m - 1.5m |
| B3.1. 33 14 13.26 | Backfilling & Warrning Tape (0.00% Completed) |  | 2026-10-12 → 2026-09-15 A (-27d) | 107d → 102d | 0% → 100% | 63d → none | B3.1. 33 14 13.25 FF, B3.33 14 19.01.125 FF → B3.1. 33 14 13.25 FF | was named Backfilling & Warrning Tape; resources Labor [77.96 h]; Foreman [38.98 h]; Operator [155.92 h]; Surveyor [38.98 h]; Surveyor Helper [38.98 h]; Loader [40 h]; Water Tanker [40 h]; Dump Truck [40 h]; Plate Compactor [40 h]; Roller Compactor [40 h]; Depth: 0.0m - 1.5m [2.57] → Labor; Foreman; Operator; Surveyor; Surveyor Helper; Loader; Water Tanker; Dump Truck; Plate Compactor; Roller Compactor; Depth: 0.0m - 1.5m |
| Valves & Chambers | **Valves & Chambers** | 2026-09-20 → 2026-10-11 (+21d) | 2026-10-26 → 2026-11-15 (+20d) |  |  |  |  |  |
| GV | **Gate Valves** | 2026-09-29 → 2026-10-19 (+20d) | 2026-10-07 → 2026-10-27 (+20d) |  |  |  |  |  |
| 1 | **Gate valves dia (250) mm** | 2026-09-29 → 2026-10-19 (+20d) | 2026-10-07 → 2026-10-27 (+20d) |  |  |  |  |  |
| B3.33 14 19.01.122 | Burried Isolation Valve Installation | 2026-09-29 → 2026-10-19 (+20d) | 2026-10-03 → 2026-10-22 (+19d) |  |  | 63d → 60.32d | B3.1. 33 14 13.24, B3.1. 33 14 13.4, B3.1. 33 14 13.03, B3.33 05 63.01.34, B3.33 05 63.02.44 → B3.1. 33 14 13.24_R, B3.1. 33 14 13.4_R, B3.1. 33 14 13.03_R, B3.33 05 63.01.34, B3.33 05 63.02.44 |  |
| B3.33 14 19.01.123 | Spindle & Surface Box | 2026-10-04 → 2026-10-24 (+20d) | 2026-10-07 → 2026-10-27 (+20d) |  |  | 63d → 60.32d |  |  |
| 2 | **Air Valves** | 2026-09-20 → 2026-10-11 (+21d) | 2026-10-21 → 2026-11-10 (+20d) |  |  |  |  |  |
| 4 | **Air valves on less than 315 mm. (In Chamber)** | 2026-09-20 → 2026-10-11 (+21d) | 2026-10-21 → 2026-11-10 (+20d) |  |  |  |  |  |
| B3.33 05 63.02.47 | Land Adjustment & Compaction | 2026-09-20 → 2026-10-11 (+21d) | 2026-09-26 → 2026-10-15 (+19d) |  |  | 82.56d → 50.91d |  |  |
| B3.33 05 63.02.45 | Foundations | 2026-09-26 → 2026-10-15 (+19d) | 2026-10-01 → 2026-10-21 (+20d) |  |  | 82.56d → 79.88d |  |  |
| B3.33 05 63.02.48 | Chambers Walls Conc Cast In Situ | 2026-10-01 → 2026-10-21 (+20d) | 2026-10-07 → 2026-10-27 (+20d) |  |  | 82.56d → 79.88d |  |  |
| B3.33 05 63.02.46 | Chamber Curing, Finishing & Steel Cover | 2026-10-07 → 2026-10-27 (+20d) | 2026-10-14 → 2026-11-03 (+20d) |  |  | 82.56d → 79.88d |  |  |
| B3.33 05 63.02.49 | Valve & Fitting Installation | 2026-10-14 → 2026-11-03 (+20d) | 2026-10-21 → 2026-11-10 (+20d) |  |  | 86.56d → 83.88d |  |  |
| Washout Valves | **Washout Valves** | 2026-09-26 → 2026-10-15 (+19d) | 2026-10-26 → 2026-11-15 (+20d) |  |  |  |  |  |
| 4 | **Washout valves on 110-400 mm. (In Chamber)** | 2026-09-26 → 2026-10-15 (+19d) | 2026-10-26 → 2026-11-15 (+20d) |  |  |  |  |  |
| B3.33 05 63.01.37 | Land Adjustment & Compaction | 2026-09-26 → 2026-10-15 (+19d) | 2026-09-30 → 2026-10-20 (+20d) |  |  | 82.56d → 50.91d |  |  |
| B3.33 05 63.01.35 | Foundations | 2026-09-30 → 2026-10-20 (+20d) | 2026-10-06 → 2026-10-26 (+20d) |  |  | 82.56d → 50.91d |  |  |
| B3.33 05 63.01.38 | Chambers Walls Conc Cast In Situ | 2026-10-06 → 2026-10-26 (+20d) | 2026-10-12 → 2026-11-01 (+20d) |  |  | 82.56d → 50.91d |  |  |
| B3.33 05 63.01.36 | Chamber Curing, Finishing & Steel Cover | 2026-10-12 → 2026-11-01 (+20d) | 2026-10-19 → 2026-11-08 (+20d) |  |  | 82.56d → 50.91d |  |  |
| B3.33 05 63.01.39 | Valve & Fitting Installation | 2026-10-19 → 2026-11-08 (+20d) | 2026-10-26 → 2026-11-15 (+20d) |  |  | 82.56d → 50.91d |  |  |
| 3 | **Fire Hydrant** |  | 2026-10-26 → 2026-11-18 (+23d) |  |  |  |  |  |
| B3.33 14 19.01.fh20 | Riser Pipe & Flanged Fittings Installation (1.00% Completed) |  | 2026-10-26 → 2026-09-15 A (-41d) | 87.14d → 85.16d | 1% → 100% | 82.56d → none | B3.33 05 63.01.39 FF → B3.33 14 19.01.fh21 FF+1d, B3.33 14 19.01.fh21 SS+1d | was named Riser Pipe & Flanged Fittings Installation; resources Labor [31.18 h]; Plumber Helper [15.59 h]; Welder [15.59 h]; Plumber [15.59 h]; Surveyor [15.59 h]; Surveyor Helper [15.59 h]; Welding Machine [16 h]; 3-outlet fire hydrant (2 x 2.5 inch and 1 x 4.5 inch) in the form of a separate dry vacuum cylinder [1.49] → Labor [0.31 h]; Plumber Helper [0.16 h]; Welder [0.16 h]; Plumber [0.16 h]; Surveyor [0.16 h]; Surveyor Helper [0.16 h]; Welding Machine [0.16 h]; 3-outlet fire hydrant (2 x 2.5 inch and 1 x 4.5 inch) in the form of a separate dry vacuum cylinder [0.01] |
| B3.33 14 19.01.fh19 | Firehydrant Fixing/Installation (1.00% Completed) |  | 2026-09-21 → 2026-09-15 A (-6d) | 82.13d → 79.16d | 1% → 100% | 111.03d → none | B3.33 14 19.01.fh20 SS → B3.1. 33 14 13.24 | was named Firehydrant Fixing/Installation; resources Labor [46.78 h]; Foreman [23.39 h]; Plumber Helper [23.39 h]; Plumber [23.39 h]; Operator [46.78 h]; Surveyor [23.39 h]; Surveyor Helper [23.39 h]; JCB [24 h]; 3-outlet fire hydrant (2 x 2.5 inch and 1 x 4.5 inch) in the form of a separate dry vacuum cylinder [4.47] → Labor [0.47 h]; Foreman [0.23 h]; Plumber Helper [0.23 h]; Plumber [0.23 h]; Operator [0.47 h]; Surveyor [0.23 h]; Surveyor Helper [0.23 h]; JCB [0.24 h]; 3-outlet fire hydrant (2 x 2.5 inch and 1 x 4.5 inch) in the form of a separate dry vacuum cylinder [0.04] |
| B3.33 14 19.01.fh21 | Backfilling & Compaction (1.00% Completed) | 2026-06-08 A → 2026-06-27 A (+19d) | 2026-10-17 → 2026-09-15 A (-32d) | 90.58d → 85.62d | 1% → 100% | 59d → none | B3.33 14 19.01.fh19 SS, B3.33 05 63.02.59 FF, B3.33 05 63.01.54 FF → B3.33 14 19.01.fh19 SS | was named Backfilling & Compaction; resources Labor [77.96 h]; Foreman [38.98 h]; Operator [77.96 h]; Surveyor [38.98 h]; Surveyor Helper [38.98 h]; Loader [40 h]; Water Tanker [40 h]; Dump Truck [40 h]; Plate Compactor [40 h]; 3-outlet fire hydrant (2 x 2.5 inch and 1 x 4.5 inch) in the form of a separate dry vacuum cylinder [1.49] → Labor [0.78 h]; Foreman [0.39 h]; Operator [0.78 h]; Surveyor [0.39 h]; Surveyor Helper [0.39 h]; Loader [0.4 h]; Water Tanker [0.4 h]; Dump Truck [0.4 h]; Plate Compactor [0.4 h]; 3-outlet fire hydrant (2 x 2.5 inch and 1 x 4.5 inch) in the form of a separate dry vacuum cylinder [0.01] |
| Dry Networks | **Dry Networks** | 2026-09-30 → 2026-10-26 (+26d) | 2026-11-16 → 2026-12-06 (+20d) |  |  |  |  |  |
| MV | **Medium Voltage Network** | 2026-10-13 → 2026-11-02 (+20d) | 2026-10-31 → 2026-12-01 (+31d) |  |  |  |  |  |
| Duct Banks | **Duct Banks** | 2026-10-13 → 2026-11-02 (+20d) | 2026-10-31 → 2026-11-19 (+19d) |  |  |  |  |  |
| 4 Way | **4 Way** | 2026-10-13 → 2026-11-02 (+20d) | 2026-10-31 → 2026-11-19 (+19d) |  |  |  |  |  |
| B2.33 71 00 02 43 | Excavation | 2026-10-13 → 2026-11-02 (+20d) | 2026-10-21 → 2026-11-10 (+20d) |  |  | 74d → 71.32d | B3.1. 33 14 13.26 → B3.1. 33 14 13.26_R |  |
| B2.33 71 00 02 44 | Shuttering, Steel Fixing Incl. UPVC Pipe & Conc. Cast | 2026-10-22 → 2026-11-11 (+20d) | 2026-10-26 → 2026-11-15 (+20d) |  |  | 74d → 71.32d |  |  |
| B2.33 71 00 02 45 | Backfilling & Warrning Tape | 2026-10-27 → 2026-11-16 (+20d) | 2026-10-31 → 2026-11-19 (+19d) |  |  | 74d → 71.32d |  |  |
| Cables | **Cables** | 2026-10-18 → 2026-11-18 (+31d) | 2026-10-29 → 2026-12-01 (+33d) |  |  |  |  |  |
| 3C,500mm2 | **3C,500mm2** | 2026-10-18 → 2026-11-18 (+31d) | 2026-10-29 → 2026-12-01 (+33d) |  |  |  |  |  |
| B2.33 71 49.23.65 | Cable 13.8 kV Unarmored | 2026-10-18 → 2026-11-18 (+31d) | 2026-10-22 → 2026-11-24 (+33d) |  |  | 59d → 50.91d | B3.33 14 19.01.fh21 → B3.33 14 19.01.fh21_R |  |
| B2.33 71 49.23.66 | Straight joints cables | 2026-10-24 → 2026-11-24 (+31d) | 2026-10-26 → 2026-11-28 (+33d) |  |  | 76d → 62.91d |  |  |
| B2.33 71 49.23.67 | Cable Termination | 2026-10-27 → 2026-11-28 (+32d) | 2026-10-29 → 2026-12-01 (+33d) |  |  | 76d → 62.91d |  |  |
| Street Lighting | **Street Lighting** | 2026-10-24 → 2026-11-24 (+31d) | 2026-11-16 → 2026-12-06 (+20d) |  |  |  |  |  |
| SL Poles | **SL Poles** | 2026-10-24 → 2026-11-24 (+31d) | 2026-11-09 → 2026-12-06 (+27d) |  |  |  |  |  |
| Pole (10 M Sngl Arm) | **Pole (10 M Single Arm)** | 2026-10-24 → 2026-11-24 (+31d) | 2026-11-09 → 2026-12-06 (+27d) |  |  |  |  |  |
| B2.33 71 16.35 | Excavation | 2026-10-24 → 2026-11-24 (+31d) | 2026-10-26 → 2026-11-28 (+33d) |  |  | 59d → 50.91d |  |  |
| B2.33 71 16.38 | Backfilling, Grouting & Chamfering | 2026-11-07 → 2026-11-26 (+19d) | 2026-11-09 → 2026-11-29 (+20d) |  |  | 62d → 62.32d |  |  |
| B2.33 71 16.36 | PC & RC Foundation | 2026-10-27 → 2026-11-28 (+32d) | 2026-10-29 → 2026-12-01 (+33d) |  |  | 61d → 50.91d |  |  |
| B2.33 71 16.37 | Lighting Poles Installation Incl power box, Cables | 2026-10-31 → 2026-12-01 (+31d) | 2026-11-02 → 2026-12-03 (+31d) | 3d → 2d |  | 61d → 50.91d |  |  |

| ID | Task | Start | Finish | Duration | Complete | Total float | Predecessors | Other |
| --- | --- | --- | --- | --- | --- | --- | --- | --- |
| B2.26.56.19.2 | Lighting Luminares Inst | 2026-11-03 → 2026-12-03 (+30d) | 2026-11-04 → 2026-12-06 (+32d) |  |  | 61d → 50.91d |  |  |
| Earthing | **Earthing** | 2026-11-07 → 2026-11-26 (+19d) | 2026-11-16 → 2026-12-02 (+16d) |  |  |  |  |  |
| B2.33 71 19 23 | Land Adjustment | 2026-11-07 → 2026-11-26 (+19d) | 2026-11-09 → 2026-11-29 (+20d) |  |  | 62d → 62.32d |  |  |
| B2.33 71 19 24 | Earth Rods & Conduits | 2026-11-10 → 2026-11-30 (+20d) | 2026-11-12 → 2026-11-30 (+18d) | 3d → 1d |  | 62d → 62.32d |  |  |
| B2.33 71 19 25 | Backfilling | 2026-11-14 → 2026-12-01 (+17d) | 2026-11-16 → 2026-12-02 (+16d) | 3d → 2d |  | 62d → 62.32d |  |  |
| Telecommunication | **Telecommunication Network** | 2026-09-30 → 2026-10-26 (+26d) | 2026-11-12 → 2026-11-29 (+17d) |  |  |  |  |  |
| Ducts | **Ducts** | 2026-09-30 → 2026-10-26 (+26d) | 2026-11-12 → 2026-11-29 (+17d) |  |  |  |  |  |
| (6*50mm) | **Size (6*50mm) HDPE ducts** | 2026-09-30 → 2026-10-26 (+26d) | 2026-10-11 → 2026-11-01 (+21d) |  |  |  |  |  |
| B2.1.33 81 26.54 | Excavation | 2026-09-30 → 2026-10-26 (+26d) | 2026-10-04 → 2026-10-27 (+23d) | 3d → 2d |  | 31.88d → 30.32d | B2.1.33 81 26.162 → B2.1.33 81 26.162_R |  |
| B2.1.33 81 26.55 | HDPE Pipe, Shuttering, Steel Fixing & Conc. Cast | 2026-10-04 → 2026-10-28 (+24d) | 2026-10-07 → 2026-10-29 (+22d) | 3d → 2d |  | 45.88d → 42.32d |  |  |
| B2.1.33 81 26.56 | Backfilling & Warrning Tape | 2026-10-07 → 2026-10-31 (+24d) | 2026-10-11 → 2026-11-01 (+21d) | 3d → 2d |  | 45.88d → 42.32d |  |  |
| (6*50mm+2*32mm) | **Size (6*50mm+2*32mm) HDPE ducts** | 2026-09-30 → 2026-10-26 (+26d) | 2026-11-09 → 2026-11-26 (+17d) |  |  |  |  |  |
| B2.1.33 81 26.57 | Excavation | 2026-09-30 → 2026-10-26 (+26d) | 2026-10-04 → 2026-10-27 (+23d) | 3d → 2d |  | 31.88d → 30.32d |  |  |
| B2.1.33 81 26.58 | HDPE Pipe, Shuttering, Steel Fixing & Conc. Cast | 2026-10-04 → 2026-10-28 (+24d) | 2026-10-07 → 2026-10-29 (+22d) | 3d → 2d |  | 91.88d → 85.32d |  |  |
| B2.1.33 81 26.59 | Backfilling & Warrning Tape | 2026-11-05 → 2026-11-25 (+20d) | 2026-11-09 → 2026-11-26 (+17d) | 3d → 2d |  | 66.88d → 63.32d |  |  |
| (6*50mm+4*32mm) | **Size (6*50mm+4*32mm) HDPE ducts** | 2026-09-30 → 2026-10-26 (+26d) | 2026-10-11 → 2026-11-01 (+21d) |  |  |  |  |  |
| B2.1.33 81 26.60 | Excavation | 2026-09-30 → 2026-10-26 (+26d) | 2026-10-04 → 2026-10-27 (+23d) | 3d → 2d |  | 31.88d → 30.32d |  |  |
| B2.1.33 81 26.61 | HDPE Pipe, Shuttering, Steel Fixing & Conc. Cast | 2026-10-04 → 2026-10-28 (+24d) | 2026-10-07 → 2026-10-29 (+22d) | 3d → 2d |  | 91.88d → 86.32d |  |  |
| B2.1.33 81 26.62 | Backfilling & Warrning Tape | 2026-10-07 → 2026-10-31 (+24d) | 2026-10-11 → 2026-11-01 (+21d) | 3d → 2d |  | 91.88d → 86.32d |  |  |
| (2*32mm) | **Size (2*32mm) HDPE ducts** | 2026-09-30 → 2026-10-26 (+26d) | 2026-10-11 → 2026-11-01 (+21d) |  |  |  |  |  |
| B2.1.33 81 26.63 | Excavation | 2026-09-30 → 2026-10-26 (+26d) | 2026-10-04 → 2026-10-27 (+23d) | 3d → 2d |  | 31.88d → 30.32d |  |  |
| B2.1.33 81 26.64 | HDPE Pipe, Shuttering, Steel Fixing & Conc. Cast | 2026-10-04 → 2026-10-28 (+24d) | 2026-10-07 → 2026-10-29 (+22d) | 3d → 2d |  | 32.88d → 32.32d |  |  |
| B2.1.33 81 26.65 | Backfilling & Warrning Tape | 2026-10-07 → 2026-10-31 (+24d) | 2026-10-11 → 2026-11-01 (+21d) | 3d → 2d |  | 32.88d → 32.32d |  |  |
| (4*32mm) | **Size (4*32mm) HDPE ducts** | 2026-10-04 → 2026-10-28 (+24d) | 2026-11-12 → 2026-11-29 (+17d) |  |  |  |  |  |
| B2.1.33 81 26.66 | Excavation | 2026-10-04 → 2026-10-28 (+24d) | 2026-10-06 → 2026-10-29 (+23d) |  |  | 31.88d → 30.32d |  |  |
| B2.1.33 81 26.67 | HDPE Pipe, Shuttering, Steel Fixing & Conc. Cast | 2026-10-06 → 2026-10-31 (+25d) | 2026-10-10 → 2026-11-01 (+22d) | 3d → 2d |  | 92.88d → 85.32d |  |  |
| B2.1.33 81 26.68 | Backfilling & Warrning Tape | 2026-11-09 → 2026-11-28 (+19d) | 2026-11-12 → 2026-11-29 (+17d) | 3d → 2d |  | 66.88d → 63.32d |  |  |
| Manholes | **Manholes** | 2026-10-04 → 2026-10-28 (+24d) | 2026-10-12 → 2026-11-03 (+22d) |  |  |  |  |  |
| Manhole Type 1 | **Manhole Type 1** | 2026-10-04 → 2026-10-28 (+24d) | 2026-10-12 → 2026-11-03 (+22d) |  |  |  |  |  |
| B2.31 23 00.603 | Excavation | 2026-10-04 → 2026-10-28 (+24d) | 2026-10-06 → 2026-10-29 (+23d) |  |  | 31.88d → 30.32d |  |  |
| B2.33 71 00.214 | Manhole Installation | 2026-10-06 → 2026-10-31 (+25d) | 2026-10-08 → 2026-11-01 (+24d) |  |  | 31.88d → 30.32d |  |  |
| B2.33 71 00.215 | Backfilling & Warrning Tape | 2026-10-08 → 2026-11-02 (+25d) | 2026-10-12 → 2026-11-03 (+22d) | 3d → 2d |  | 31.88d → 30.32d |  |  |
| Manhole Type 2 | **Manhole Type 2** | 2026-10-04 → 2026-10-28 (+24d) | 2026-10-12 → 2026-11-03 (+22d) |  |  |  |  |  |
| B2.31 23 00.604 | Excavation | 2026-10-04 → 2026-10-28 (+24d) | 2026-10-06 → 2026-10-29 (+23d) |  |  | 31.88d → 30.32d |  |  |
| B2.33 71 00.216 | Manhole Installation | 2026-10-06 → 2026-10-31 (+25d) | 2026-10-08 → 2026-11-01 (+24d) |  |  | 90.88d → 84.32d |  |  |
| B2.33 71 00.217 | Backfilling & Warrning Tape | 2026-10-08 → 2026-11-02 (+25d) | 2026-10-12 → 2026-11-03 (+22d) | 3d → 2d |  | 90.88d → 84.32d |  |  |
| Crossing Ducts | **Road Crossing Ducts** | 2026-10-06 → 2026-10-31 (+25d) | 2026-10-15 → 2026-11-05 (+21d) |  |  |  |  |  |
| 1 | **Size (6*50mm) HDPE** | 2026-10-06 → 2026-10-31 (+25d) | 2026-10-15 → 2026-11-05 (+21d) |  |  |  |  |  |
| B2.31 23 00.605 | Excavation | 2026-10-06 → 2026-10-31 (+25d) | 2026-10-08 → 2026-11-01 (+24d) |  |  | 31.88d → 30.32d |  |  |
| B2.33 71 00.218 | Shuttering, Steel Fixing Incl. UPVC Pipe & Conc. Cast | 2026-10-08 → 2026-11-02 (+25d) | 2026-10-12 → 2026-11-03 (+22d) | 3d → 2d |  | 31.88d → 30.32d |  |  |
| B2.33 71 00.219 | Backfilling & Warrning Tape | 2026-10-12 → 2026-11-04 (+23d) | 2026-10-15 → 2026-11-05 (+21d) | 3d → 2d |  | 31.88d → 30.32d |  |  |
| Earth & Road Works | **Earth & Road Works** |  | 2026-11-24 → 2026-12-16 (+22d) |  |  |  |  |  |
| Earth Layers | **Earth Layers** |  | 2026-09-17 → 2026-10-08 (+21d) |  |  |  |  |  |
| B1.2.32 11 13.01.3 | Subgrade (71.00% Completed) |  | 2026-09-17 → 2026-09-15 A (-2d) | 117.97d → 115.97d | 71% → 100% | 114d → none |  | was named Subgrade; resources Subgrade [1359.45]; Labor [31.18 h]; Foreman [15.59 h]; Operator [31.18 h]; Surveyor [15.59 h]; Surveyor Helper [15.59 h]; Grader [16 h]; Loader [16 h]; Water Tanker [16 h]; Dump Truck [16 h]; Plate Compactor [16 h]; Roller Compactor [16 h] → Subgrade [965.21]; Labor [22.14 h]; Foreman [11.07 h]; Operator [22.14 h]; Surveyor [11.07 h]; Surveyor Helper [11.07 h]; Grader [11.36 h]; Loader [11.36 h]; Water Tanker [11.36 h]; Dump Truck [11.36 h]; Plate Compactor [11.36 h]; Roller Compactor [11.36 h] |
| B1.2.32 11 23.01.3 | Aggregate Base Course (28.00% Completed) |  | 2026-09-17 → 2026-09-15 A (-2d) | 72.6d → 71.16d | 28% → 100% | 48.56d → none |  | was named Aggregate Base Course; resources Aggregate base course [906.29]; Labor [31.18 h]; Foreman [15.59 h]; Operator [31.18 h]; Surveyor [15.59 h]; Surveyor Helper [15.59 h]; Grader [16 h]; Loader [16 h]; Water Tanker [16 h]; Dump Truck [16 h]; Plate Compactor [16 h]; Roller Compactor [16 h] → Aggregate base course [253.76]; Labor [8.73 h]; Foreman [4.37 h]; Operator [8.73 h]; Surveyor [4.37 h]; Surveyor Helper [4.37 h]; Grader [4.48 h]; Loader [4.48 h]; Water Tanker [4.48 h]; Dump Truck [4.48 h]; Plate Compactor [4.48 h]; Roller Compactor [4.48 h] |
| Interlock | **Interlock** | 2026-11-17 → 2026-12-14 (+27d) | 2026-11-18 → 2026-12-16 (+28d) |  |  |  |  |  |
| B1.2.32 14 13.13.3 | 60mm thick - Interlocking Block Pavers | 2026-11-17 → 2026-12-14 (+27d) | 2026-11-18 → 2026-12-16 (+28d) |  |  | 58d → 50.91d |  |  |
| Curbstone | **Curbstone** | 2026-11-05 → 2026-11-24 (+19d) | 2026-11-17 → 2026-12-06 (+19d) |  |  |  |  |  |
| Pre Install | **Pre-Installation** | 2026-11-05 → 2026-11-24 (+19d) | 2026-11-12 → 2026-12-01 (+19d) |  |  |  |  |  |
| B2.31 23 00.61 | Excavation | 2026-11-05 → 2026-11-24 (+19d) | 2026-11-08 → 2026-11-26 (+18d) |  |  | 18.76d → 18d |  |  |
| B1.2.32 14 13.13.23 | PCC | 2026-11-08 → 2026-11-26 (+18d) | 2026-11-10 → 2026-11-29 (+19d) |  |  | 61.76d → 60d |  |  |
| 32 16 13.003 | Haunching | 2026-11-10 → 2026-11-29 (+19d) | 2026-11-12 → 2026-12-01 (+19d) |  |  | 61.76d → 60d |  |  |
| Installation | **Installation** | 2026-11-12 → 2026-12-01 (+19d) | 2026-11-15 → 2026-12-03 (+18d) |  |  |  |  |  |
| B1.2.32 16.13.01.3 | Curb Stone, Type K1 | 2026-11-12 → 2026-12-01 (+19d) | 2026-11-15 → 2026-12-03 (+18d) |  |  | 61.76d → 60d |  |  |
| B1.2.32 16.13.03.3 | Edge Curb, Type K4 | 2026-11-12 → 2026-12-01 (+19d) | 2026-11-15 → 2026-12-03 (+18d) |  |  | 61.76d → 60d |  |  |
| Finishing | **Finishing** | 2026-11-15 → 2026-12-03 (+18d) | 2026-11-17 → 2026-12-06 (+19d) |  |  |  |  |  |
| 32 16 13.03 | Finishing, Fareface | 2026-11-15 → 2026-12-03 (+18d) | 2026-11-17 → 2026-12-06 (+19d) |  |  | 61.76d → 60d |  |  |
| Asphalt Layers | **Asphalt Layers** | 2026-09-17 → 2026-10-08 (+21d) | 2026-11-19 → 2026-12-08 (+19d) |  |  |  |  |  |
| B1.2.32 11 26.01.3 | Bituminous Base Course including Prime Coat (MC1) and tack coat (RC2) | 2026-09-17 → 2026-10-08 (+21d) | 2026-09-20 → 2026-10-11 (+21d) |  |  | 48.56d → 49.88d | B1.2.32 11 23.01.3 → B1.2.32 11 23.01.3_R |  |
| B1.2.32 12 16.01.3 | Bituminous concrete Wearing Course, including tack coat (RC2) | 2026-11-14 → 2026-12-02 (+18d) | 2026-11-19 → 2026-12-08 (+19d) |  |  | 2.76d → 5d |  |  |
| Pavement Marking | **Pavement Marking** | 2026-11-19 → 2026-12-08 (+19d) | 2026-11-24 → 2026-12-13 (+19d) |  |  |  |  |  |
| B1.2.32 17 23.02.3 | Retroreflective Thermoplastic Yellow, Traffic lines | 2026-11-19 → 2026-12-08 (+19d) | 2026-11-22 → 2026-12-10 (+18d) |  |  | 55.76d → 54d |  |  |
| B1.2.32 17 23.01.3 | Retroreflective Thermoplastic White Traffic lines | 2026-11-22 → 2026-12-10 (+18d) | 2026-11-24 → 2026-12-13 (+19d) |  |  | 55.76d → 54d |  |  |
| Traffic Signs | **Traffic Signs** | 2026-11-05 → 2026-11-24 (+19d) | 2026-11-22 → 2026-12-10 (+18d) |  |  |  |  |  |
| Pre Install | **Pre-Installation** | 2026-11-05 → 2026-11-24 (+19d) | 2026-11-10 → 2026-11-29 (+19d) |  |  |  |  |  |
| B2.31 23 00.71 | Excavation | 2026-11-05 → 2026-11-24 (+19d) | 2026-11-08 → 2026-11-26 (+18d) |  |  | 18.76d → 18d |  |  |
| 10 14 53.03 | Foundation | 2026-11-08 → 2026-11-26 (+18d) | 2026-11-10 → 2026-11-29 (+19d) |  |  | 44.76d → 43d |  |  |
| Installation | **Installation** | 2026-11-19 → 2026-12-08 (+19d) | 2026-11-22 → 2026-12-10 (+18d) |  |  |  |  |  |
| B1.2.10 14 14.01.3 | Ground mounted, 1 Sheet Alumenium, Single post | 2026-11-19 → 2026-12-08 (+19d) | 2026-11-22 → 2026-12-10 (+18d) |  |  | 36.76d → 35d |  |  |
| B1.2.10 14 53.013 | 1 Sheet Alumenium, Single post | 2026-11-19 → 2026-12-08 (+19d) | 2026-11-22 → 2026-12-10 (+18d) |  |  | 36.76d → 35d |  |  |

| ID | Task | Start | Finish | Duration | Complete | Total float | Predecessors | Other |
| --- | --- | --- | --- | --- | --- | --- | --- | --- |
| B1.2.10 14 53.023 | 2 Sheet Alumenium, Single post | 2026-11-19 → 2026-12-08 (+19d) | 2026-11-22 → 2026-12-10 (+18d) |  |  | 36.76d → 35d |  |  |
| Landscape | **Landscape** | 2026-11-08 → 2026-11-26 (+18d) | 2026-12-02 → 2026-12-22 (+20d) |  |  |  |  |  |
| Gates | **Gates** | 2026-11-08 → 2026-11-26 (+18d) | 2026-12-02 → 2026-12-22 (+20d) |  |  |  |  |  |
| Size (6.1x 2.7)m | **Size (6.1x 2.7)m** | 2026-11-08 → 2026-11-26 (+18d) | 2026-12-02 → 2026-12-22 (+20d) |  |  |  |  |  |
| B7.32 93 43.04.63 | Earthwork | 2026-11-08 → 2026-11-26 (+18d) | 2026-11-14 → 2026-12-02 (+18d) |  |  | 18.76d → 18d |  |  |
| B7.32 93 43.04.64 | Foundation | 2026-11-14 → 2026-12-02 (+18d) | 2026-11-17 → 2026-12-06 (+19d) |  |  | 18.76d → 18d |  |  |
| B7.32 93 43.04.65 | Gate Installation | 2026-11-30 → 2026-12-20 (+20d) | 2026-12-02 → 2026-12-22 (+20d) |  |  | 8d → 6.32d |  |  |
| Size (5.5x 2.7)m | **Size (5.5x 2.7)m** | 2026-11-08 → 2026-11-26 (+18d) | 2026-11-21 → 2026-12-09 (+18d) |  |  |  |  |  |
| B7.32 93 43.04.66 | Earthwork | 2026-11-08 → 2026-11-26 (+18d) | 2026-11-14 → 2026-12-02 (+18d) |  |  | 18.76d → 18d |  |  |
| B7.32 93 43.04.67 | Foundation | 2026-11-14 → 2026-12-02 (+18d) | 2026-11-17 → 2026-12-06 (+19d) |  |  | 18.76d → 18d |  |  |
| B7.32 93 43.04.68 | Gate Installation | 2026-11-17 → 2026-12-06 (+19d) | 2026-11-21 → 2026-12-09 (+18d) |  |  | 18.76d → 18d |  |  |
| Size (4.85x 2.7)m | **Size (4.85x 2.7)m** | 2026-11-14 → 2026-12-02 (+18d) | 2026-11-24 → 2026-12-13 (+19d) |  |  |  |  |  |
| B7.32 93 43.04.69 | Earthwork | 2026-11-14 → 2026-12-02 (+18d) | 2026-11-17 → 2026-12-06 (+19d) |  |  | 20.76d → 20d |  |  |
| B7.32 93 43.04.70 | Foundation | 2026-11-17 → 2026-12-06 (+19d) | 2026-11-21 → 2026-12-09 (+18d) |  |  | 20.76d → 20d |  |  |
| B7.32 93 43.04.71 | Gate Installation | 2026-11-21 → 2026-12-09 (+18d) | 2026-11-24 → 2026-12-13 (+19d) |  |  | 20.76d → 20d |  |  |
| Parking Roads | **Parking Roads** |  | 2026-11-24 → 2026-12-16 (+22d) |  |  |  |  |  |
| Wet Networks | **Wet Networks** |  | 2026-10-10 → 2026-10-29 (+19d) |  |  |  |  |  |
| Stormwater Network | **Stormwater Network** |  | 2026-09-26 → 2026-10-17 (+21d) |  |  |  |  |  |
| GRP | **GRP** |  | 2026-09-26 → 2026-10-17 (+21d) |  |  |  |  |  |
| ?4002 | **?500** |  | 2026-09-26 → 2026-10-15 (+19d) |  |  |  |  |  |
| 3 | **Depth From 1.5m to 2.5m** |  | 2026-09-26 → 2026-10-15 (+19d) |  |  |  |  |  |
| B6.33 42 11.03-11 | Excavation (59.54% Completed) |  | 2026-09-19 → 2026-09-15 A (-4d) | 25.28d → 24d | 60% → 100% | 108.72d → none |  | was named Excavation; resources Labor [31.18 h]; Foreman [15.59 h]; Operator [31.18 h]; Surveyor [15.59 h]; Surveyor Helper [15.59 h]; Excavator (With Bucket) [16 h]; Water Tanker [16 h]; Dump Truck [16 h]; Plate Compactor [16 h]; 1.51m - 2.5m [12.84] → Labor [18.57 h]; Foreman [9.28 h]; Operator [18.57 h]; Surveyor [9.28 h]; Surveyor Helper [9.28 h]; Excavator (With Bucket) [9.53 h]; Water Tanker [9.53 h]; Dump Truck [9.53 h]; Plate Compactor [9.53 h]; 1.51m - 2.5m [7.64] |
| B6.33 42 11.03-14 | Sand Bedding (59.54% Completed) |  | 2026-09-19 → 2026-09-15 A (-4d) | 23.28d → 22d | 60% → 100% | 108.72d → none |  | was named Sand Bedding; resources Labor [31.18 h]; Foreman [15.59 h]; Operator [62.37 h]; Surveyor [15.59 h]; Surveyor Helper [15.59 h]; Loader [16 h]; Water Tanker [16 h]; Dump Truck [16 h]; Plate Compactor [16 h]; 1.51m - 2.5m [3.21] → Labor [18.57 h]; Foreman [9.28 h]; Operator [37.13 h]; Surveyor [9.28 h]; Surveyor Helper [9.28 h]; Loader [9.53 h]; Water Tanker [9.53 h]; Dump Truck [9.53 h]; Plate Compactor [9.53 h]; 1.51m - 2.5m [1.91] |
| B6.33 42 11.03-17 | Pipe Laying (59.54% Completed) |  | 2026-09-19 → 2026-09-15 A (-4d) | 21.28d → 20d | 60% → 100% | 108.72d → none |  | was named Pipe Laying; resources Labor [31.18 h]; Foreman [15.59 h]; Plumber Helper [15.59 h]; Plumber [15.59 h]; Operator [15.59 h]; Surveyor [15.59 h]; Surveyor Helper [15.59 h]; Mobile Crane [16 h]; 1.51m - 2.5m [28.88] → Labor [18.57 h]; Foreman [9.28 h]; Plumber Helper [9.28 h]; Plumber [9.28 h]; Operator [9.28 h]; Surveyor [9.28 h]; Surveyor Helper [9.28 h]; Mobile Crane [9.53 h]; 1.51m - 2.5m [17.2] |
| B6.33 42 11.03-113 | Backfilling & Warrning Tape (59.54% Completed) |  | 2026-09-26 → 2026-09-15 A (-11d) | 21.3d → 19d | 60% → 100% | 108.72d → none | B6.33 42 11.05-1.57, B6.33 42 11.03-110 FF → B6.33 42 11.05-1.57 | was named Backfilling & Warrning Tape; resources Labor [77.96 h]; Foreman [38.98 h]; Operator [155.92 h]; Surveyor [38.98 h]; Surveyor Helper [38.98 h]; Loader [40 h]; Water Tanker [40 h]; Dump Truck [40 h]; Plate Compactor [40 h]; Roller Compactor [40 h]; 1.51m - 2.5m [6.42] → Labor [46.41 h]; Foreman [23.21 h]; Operator [92.83 h]; Surveyor [23.21 h]; Surveyor Helper [23.21 h]; Loader [23.81 h]; Water Tanker [23.81 h]; Dump Truck [23.81 h]; Plate Compactor [23.81 h]; Roller Compactor [23.81 h]; 1.51m - 2.5m [3.82] |
| B6.33 42 11.03-110 | Embedment & Test | 2026-09-19 → 2026-10-10 (+21d) | 2026-09-26 → 2026-10-15 (+19d) |  |  | 108.72d → 50.82d | B6.33 42 11.03-17 → B6.33 42 11.03-17_R |  |
| ?4001 | **?600** |  | 2026-09-26 → 2026-10-15 (+19d) |  |  |  |  |  |
| 3 | **Depth From 1.5m to 2.5m** |  | 2026-09-26 → 2026-10-15 (+19d) |  |  |  |  |  |
| B6.33 42 11.03-12 | Excavation (59.54% Completed) |  | 2026-09-19 → 2026-09-15 A (-4d) | 33.28d → 32d | 60% → 100% | 52.72d → none |  | was named Excavation; resources Labor [31.18 h]; Foreman [15.59 h]; Operator [31.18 h]; Surveyor [15.59 h]; Surveyor Helper [15.59 h]; Excavator (With Bucket) [16 h]; Water Tanker [16 h]; Dump Truck [16 h]; Plate Compactor [16 h]; 1.51m - 2.5m [9.52] → Labor [18.57 h]; Foreman [9.28 h]; Operator [18.57 h]; Surveyor [9.28 h]; Surveyor Helper [9.28 h]; Excavator (With Bucket) [9.53 h]; Water Tanker [9.53 h]; Dump Truck [9.53 h]; Plate Compactor [9.53 h]; 1.51m - 2.5m [5.67] |
| B6.33 42 11.03-15 | Sand Bedding (59.54% Completed) |  | 2026-09-19 → 2026-09-15 A (-4d) | 30.28d → 29d | 60% → 100% | 52.72d → none |  | was named Sand Bedding; resources Labor [31.18 h]; Foreman [15.59 h]; Operator [62.37 h]; Surveyor [15.59 h]; Surveyor Helper [15.59 h]; Loader [16 h]; Water Tanker [16 h]; Dump Truck [16 h]; Plate Compactor [16 h]; 1.51m - 2.5m [9.52] → Labor [18.57 h]; Foreman [9.28 h]; Operator [37.13 h]; Surveyor [9.28 h]; Surveyor Helper [9.28 h]; Loader [9.53 h]; Water Tanker [9.53 h]; Dump Truck [9.53 h]; Plate Compactor [9.53 h]; 1.51m - 2.5m [5.67] |
| B6.33 42 11.03-18 | Pipe Laying (59.54% Completed) |  | 2026-09-19 → 2026-09-15 A (-4d) | 29.28d → 28d | 60% → 100% | 52.72d → none |  | was named Pipe Laying; resources Labor [31.18 h]; Foreman [15.59 h]; Plumber Helper [15.59 h]; Plumber [15.59 h]; Operator [15.59 h]; Surveyor [15.59 h]; Surveyor Helper [15.59 h]; Mobile Crane [16 h]; 1.51m - 2.5m [21.65] → Labor [18.57 h]; Foreman [9.28 h]; Plumber Helper [9.28 h]; Plumber [9.28 h]; Operator [9.28 h]; Surveyor [9.28 h]; Surveyor Helper [9.28 h]; Mobile Crane [9.53 h]; 1.51m - 2.5m [12.89] |
| B6.33 42 11.03-114 | Backfilling & Warrning Tape (59.54% Completed) |  | 2026-09-26 → 2026-09-15 A (-11d) | 26.12d → 24d | 60% → 100% | 52.72d → none | B6.33 42 11.03-111 FF, B6.33 42 11.05-1.61 SS → B6.33 42 11.05-1.61 SS | was named Backfilling & Warrning Tape; resources Labor [77.96 h]; Foreman [38.98 h]; Operator [155.92 h]; Surveyor [38.98 h]; Surveyor Helper [38.98 h]; Loader [40 h]; Water Tanker [40 h]; Dump Truck [40 h]; Plate Compactor [40 h]; Roller Compactor [40 h]; 1.51m - 2.5m [4.76] → Labor [46.41 h]; Foreman [23.21 h]; Operator [92.83 h]; Surveyor [23.21 h]; Surveyor Helper [23.21 h]; Loader [23.81 h]; Water Tanker [23.81 h]; Dump Truck [23.81 h]; Plate Compactor [23.81 h]; Roller Compactor [23.81 h]; 1.51m - 2.5m [2.84] |
| B6.33 42 11.03-111 | Embedment & Test | 2026-09-19 → 2026-10-10 (+21d) | 2026-09-26 → 2026-10-15 (+19d) |  |  | 52.72d → 44.64d | B6.33 42 11.03-18 → B6.33 42 11.03-18_R |  |
| ?400 | **?800** |  | 2026-09-26 → 2026-10-17 (+21d) |  |  |  |  |  |
| 3 | **Depth From 1.5m to 2.5m** |  | 2026-09-26 → 2026-10-17 (+21d) |  |  |  |  |  |
| B6.33 42 11.03-13 | Excavation (59.54% Completed) |  | 2026-09-19 → 2026-09-15 A (-4d) | 31.28d → 30d | 60% → 100% | 108.72d → none |  | was named Excavation; resources Labor [31.18 h]; Foreman [15.59 h]; Operator [31.18 h]; Surveyor [15.59 h]; Surveyor Helper [15.59 h]; Excavator (With Bucket) [16 h]; Water Tanker [16 h]; Dump Truck [16 h]; Plate Compactor [16 h]; 1.51m - 2.5m [19.28] → Labor [18.57 h]; Foreman [9.28 h]; Operator [18.57 h]; Surveyor [9.28 h]; Surveyor Helper [9.28 h]; Excavator (With Bucket) [9.53 h]; Water Tanker [9.53 h]; Dump Truck [9.53 h]; Plate Compactor [9.53 h]; 1.51m - 2.5m [11.48] |
| B6.33 42 11.03-16 | Sand Bedding (59.54% Completed) |  | 2026-09-19 → 2026-09-15 A (-4d) | 28.28d → 27d | 60% → 100% | 108.72d → none |  | was named Sand Bedding; resources Labor [31.18 h]; Foreman [15.59 h]; Operator [62.37 h]; Surveyor [15.59 h]; Surveyor Helper [15.59 h]; Loader [16 h]; Water Tanker [16 h]; Dump Truck [16 h]; Plate Compactor [16 h]; 1.51m - 2.5m [4.82] → Labor [18.57 h]; Foreman [9.28 h]; Operator [37.13 h]; Surveyor [9.28 h]; Surveyor Helper [9.28 h]; Loader [9.53 h]; Water Tanker [9.53 h]; Dump Truck [9.53 h]; Plate Compactor [9.53 h]; 1.51m - 2.5m [2.87] |
| B6.33 42 11.03-19 | Pipe Laying (59.54% Completed) |  | 2026-09-19 → 2026-09-15 A (-4d) | 25.28d → 24d | 60% → 100% | 108.72d → none |  | was named Pipe Laying; resources Labor [31.18 h]; Foreman [15.59 h]; Plumber Helper [15.59 h]; Plumber [15.59 h]; Operator [15.59 h]; Surveyor [15.59 h]; Surveyor Helper [15.59 h]; Mobile Crane [16 h]; 1.51m - 2.5m [43.38] → Labor [18.57 h]; Foreman [9.28 h]; Plumber Helper [9.28 h]; Plumber [9.28 h]; Operator [9.28 h]; Surveyor [9.28 h]; Surveyor Helper [9.28 h]; Mobile Crane [9.53 h]; 1.51m - 2.5m [25.82] |
| B6.33 42 11.03-115 | Backfilling & Warrning Tape (59.54% Completed) |  | 2026-09-26 → 2026-09-15 A (-11d) | 23.12d → 21d | 60% → 100% | 108.72d → none | B6.33 42 11.03-112 FF, B6.33 42 11.361360 SS → B6.33 42 11.361360 SS | was named Backfilling & Warrning Tape; resources Labor [77.96 h]; Foreman [38.98 h]; Operator [155.92 h]; Surveyor [38.98 h]; Surveyor Helper [38.98 h]; Loader [40 h]; Water Tanker [40 h]; Dump Truck [40 h]; Plate Compactor [40 h]; Roller Compactor [40 h]; 1.51m - 2.5m [9.63] → Labor [46.41 h]; Foreman [23.21 h]; Operator [92.83 h]; Surveyor [23.21 h]; Surveyor Helper [23.21 h]; Loader [23.81 h]; Water Tanker [23.81 h]; Dump Truck [23.81 h]; Plate Compactor [23.81 h]; Roller Compactor [23.81 h]; 1.51m - 2.5m [5.74] |
| B6.33 42 11.03-112 | Embedment & Test | 2026-09-19 → 2026-10-10 (+21d) | 2026-09-26 → 2026-10-15 (+19d) |  |  | 108.72d → 100.04d | B6.33 42 11.03-19 → B6.33 42 11.03-19_R |  |
| Strom Manholes | **Manholes** |  | 2026-09-24 → 2026-10-17 (+23d) |  |  |  |  |  |
| 1 | **?1200** |  | 2026-09-24 → 2026-10-17 (+23d) |  |  |  |  |  |
| 3 | **Depth From 1.5m to 2.5m** |  | 2026-09-24 → 2026-10-17 (+23d) |  |  |  |  |  |
| B6.33 05 13.04-11 | Excavation & Compaction (50.00% Completed) |  | 2026-09-17 → 2026-09-15 A (-2d) | 29d → 28d | 50% → 100% | 114d → none |  | was named Excavation & Compaction; resources Labor [31.18 h]; Foreman [15.59 h]; Operator [31.18 h]; Surveyor [15.59 h]; Surveyor Helper [15.59 h]; Excavator (With Bucket) [16 h]; Water Tanker [16 h]; Dump Truck [16 h]; Plate Compactor [16 h]; MH depth 1.50 - 2.5m [1.07] → Labor [15.59 h]; Foreman [7.8 h]; Operator [15.59 h]; Surveyor [7.8 h]; Surveyor Helper [7.8 h]; Excavator (With Bucket) [8 h]; Water Tanker [8 h]; Dump Truck [8 h]; Plate Compactor [8 h]; MH depth 1.50 - 2.5m [0.54] |
| B6.33 05 13.04-14 | Blinding Conc, & RC Base (50.00% Completed) |  | 2026-09-17 → 2026-09-15 A (-2d) | 27d → 26d | 50% → 100% | 114d → none |  | was named Blinding Conc, & RC Base; resources Labor [31.18 h]; Foreman [15.59 h]; Laboratory Officer [15.59 h]; Carpenter [15.59 h]; Steelfixer [15.59 h]; Mason [15.59 h]; MH depth 1.50 - 2.5m [1.07] → Labor [15.59 h]; Foreman [7.8 h]; Laboratory Officer [7.8 h]; Carpenter [7.8 h]; Steelfixer [7.8 h]; Mason [7.8 h]; MH depth 1.50 - 2.5m [0.54] |
| B6.33 05 13.04-17 | Manhole Installation (50.00% Completed) |  | 2026-09-17 → 2026-09-15 A (-2d) | 25d → 24d | 50% → 100% | 109d → none |  | was named Manhole Installation; resources Labor [31.18 h]; Operator [31.18 h]; Surveyor [15.59 h]; Surveyor Helper [15.59 h]; Boom Truck [16 h]; Mobile Crane [16 h]; MH depth 1.50 - 2.5m [5.25] → Labor [15.59 h]; Operator [15.59 h]; Surveyor [7.8 h]; Surveyor Helper [7.8 h]; Boom Truck [8 h]; Mobile Crane [8 h]; MH depth 1.50 - 2.5m [2.63] |
| B6.33 05 13.04-113 | Backfilling (50.00% Completed) |  | 2026-09-24 → 2026-09-15 A (-9d) | 22d → 20d | 50% → 100% | 109d → none | B6.33 42 11.05-1.65, B6.33 05 13.04-110 FF → B6.33 42 11.05-1.65 | was named Backfilling; resources Labor [62.37 h]; Foreman [31.18 h]; Operator [62.37 h]; Surveyor [31.18 h]; Surveyor Helper [31.18 h]; Loader [32 h]; Water Tanker [32 h]; Dump Truck [32 h]; Plate Compactor [32 h]; MH depth 1.50 - 2.5m [2.15] → Labor [31.18 h]; Foreman [15.59 h]; Operator [31.18 h]; Surveyor [15.59 h]; Surveyor Helper [15.59 h]; Loader [16 h]; Water Tanker [16 h]; Dump Truck [16 h]; Plate Compactor [16 h]; MH depth 1.50 - 2.5m [1.07] |
| B6.33 05 13.04-110 | Test, Internal Finishing, Benching & Cover | 2026-09-19 → 2026-10-10 (+21d) | 2026-09-24 → 2026-10-14 (+20d) |  |  | 109d → 106.32d | B6.33 05 13.04-17 → B6.33 05 13.04-17_R |  |
| Catch Basins | **Catch Basins** |  | 2026-09-19 → 2026-10-10 (+21d) |  |  |  |  |  |
| Sing | **Single** |  | 2026-09-19 → 2026-10-10 (+21d) |  |  |  |  |  |
| B6.33 05 40.01.290 | Excavation, Compaction & Vapour Barrier (67.00% Completed) |  | 2026-09-17 → 2026-09-15 A (-2d) | 49d → 48d | 67% → 100% | 114d → none |  | was named Excavation, Compaction & Vapour Barrier; resources Labor [31.18 h]; Foreman [15.59 h]; Operator [31.18 h]; Surveyor [15.59 h]; Surveyor Helper [15.59 h]; Excavator (With Bucket) [16 h]; Water Tanker [16 h]; Dump Truck [16 h]; Roller Compactor [16 h]; Single Catch basin [2.99] → Labor [20.89 h]; Foreman [10.45 h]; Operator [20.89 h]; Surveyor [10.45 h]; Surveyor Helper [10.45 h]; Excavator (With Bucket) [10.72 h]; Water Tanker [10.72 h]; Dump Truck [10.72 h]; Roller Compactor [10.72 h]; Single Catch basin [2] |
| B6.33 05 40.01.300 | Blinding Conc. (67.00% Completed) |  | 2026-09-17 → 2026-09-15 A (-2d) | 47d → 46d | 67% → 100% | 114d → none |  | was named Blinding Conc.; resources Labor [31.18 h]; Foreman [15.59 h]; Laboratory Officer [15.59 h]; Carpenter [15.59 h]; Steelfixer [15.59 h]; Mason [15.59 h]; Single Catch basin [1.99] → Labor [20.89 h]; Foreman [10.45 h]; Laboratory Officer [10.45 h]; Carpenter [10.45 h]; Steelfixer [10.45 h]; Mason [10.45 h]; Single Catch basin [1.33] |
| B6.33 05 40.01.310 | Catch Basin Installation (67.00% Completed) |  | 2026-09-17 → 2026-09-15 A (-2d) | 46d → 45d | 67% → 100% | 114d → none |  | was named Catch Basin Installation; resources Labor [46.78 h]; Foreman [23.39 h]; Carpenter [23.39 h]; Steelfixer [23.39 h]; Mason [23.39 h]; Operator [46.78 h]; Surveyor [23.39 h]; Surveyor Helper [23.39 h]; Boom Truck [24 h]; Single Catch basin [8.93] → Labor [31.34 h]; Foreman [15.67 h]; Carpenter [15.67 h]; Steelfixer [15.67 h]; Mason [15.67 h]; Operator [31.34 h]; Surveyor [15.67 h]; Surveyor Helper [15.67 h]; Boom Truck [16.08 h]; Single Catch basin [5.99] |
| B6.33 05 40.01.320 | Backfilling, DI Frame & Grate Cover Fixing (67.00% Completed) |  | 2026-09-19 → 2026-09-15 A (-4d) | 37d → 35d | 67% → 100% | 82d → none |  | was named Backfilling, DI Frame & Grate Cover Fixing; resources Labor [62.37 h]; Foreman [31.18 h]; Operator [62.37 h]; Surveyor [31.18 h]; Surveyor Helper [31.18 h]; Loader [32 h]; Water Tanker [32 h]; Dump Truck [32 h]; Plate Compactor [32 h]; Single Catch basin [5.96] → Labor [41.79 h]; Foreman [20.89 h]; Operator [41.79 h]; Surveyor [20.89 h]; Surveyor Helper [20.89 h]; Loader [21.44 h]; Water Tanker [21.44 h]; Dump Truck [21.44 h]; Plate Compactor [21.44 h]; Single Catch basin [3.99] |
| UPVC | **UPVC** |  | 2026-09-19 → 2026-10-10 (+21d) |  |  |  |  |  |
| UPVC300 | **?300 From 0.0 to 1.5m** |  | 2026-09-19 → 2026-10-10 (+21d) |  |  |  |  |  |
| B6.33 42 11.35-1 1 | Catch Basin Opening Prep. (60.78% Completed) |  | 2026-09-19 → 2026-09-15 A (-4d) | 42.09d → 41d | 61% → 100% | 113.91d → none |  | was named Catch Basin Opening Prep.; resources Labor [31.18 h]; Foreman [15.59 h]; Plumber Helper [15.59 h]; Plumber [15.59 h]; less than 1.5 [46.62] → Labor [18.95 h]; Foreman [9.48 h]; Plumber Helper [9.48 h]; Plumber [9.48 h]; less than 1.5 [28.33] |
| B6.33 42 11.35-1 2 | Fittings & Pipe Installation (60.78% Completed) |  | 2026-09-19 → 2026-09-15 A (-4d) | 41.09d → 40d | 61% → 100% | 113.91d → none |  | was named Fittings & Pipe Installation; resources Labor [31.18 h]; Foreman [15.59 h]; Plumber Helper [15.59 h]; Plumber [15.59 h]; Surveyor [15.59 h]; Surveyor Helper [15.59 h]; less than 1.5 [186.46] → Labor [18.95 h]; Foreman [9.48 h]; Plumber Helper [9.48 h]; Plumber [9.48 h]; Surveyor [9.48 h]; Surveyor Helper [9.48 h]; less than 1.5 [113.34] |
| UPVC3001 | **?400 From 0.0 to 1.5m** |  | 2026-09-19 → 2026-10-10 (+21d) |  |  |  |  |  |
| B6.33 42 11.36-1 1 | Catch Basin Opening Prep. (60.78% Completed) |  | 2026-09-19 → 2026-09-15 A (-4d) | 41.09d → 40d | 61% → 100% | 113.91d → none |  | was named Catch Basin Opening Prep.; resources Labor [31.18 h]; Foreman [15.59 h]; Plumber Helper [15.59 h]; Plumber [15.59 h]; less than 1.5 [46.62] → Labor [18.95 h]; Foreman [9.48 h]; Plumber Helper [9.48 h]; Plumber [9.48 h]; less than 1.5 [28.33] |
| B6.33 42 11.36-1 2 | Fittings & Pipe Installation (60.78% Completed) |  | 2026-09-19 → 2026-09-15 A (-4d) | 39.09d → 38d | 61% → 100% | 113.91d → none |  | was named Fittings & Pipe Installation; resources Labor [31.18 h]; Foreman [15.59 h]; Plumber Helper [15.59 h]; Plumber [15.59 h]; Surveyor [15.59 h]; Surveyor Helper [15.59 h]; less than 1.5 [186.46] → Labor [18.95 h]; Foreman [9.48 h]; Plumber Helper [9.48 h]; Plumber [9.48 h]; Surveyor [9.48 h]; Surveyor Helper [9.48 h]; less than 1.5 [113.34] |
| Fire Fighting | **Fire Fighting Network** |  | 2026-10-10 → 2026-10-29 (+19d) |  |  |  |  |  |
| HDPE | **HDPE Pipes** |  | 2026-09-29 → 2026-10-19 (+20d) |  |  |  |  |  |
| ?250mm | **?250mm** |  | 2026-09-29 → 2026-10-19 (+20d) |  |  |  |  |  |
| Depth: 0.0m - 1.5m | **Depth: 0.0m - 1.5m** |  | 2026-09-29 → 2026-10-19 (+20d) |  |  |  |  |  |
| B3.1. 33 14 13.01.10 | Excavation (94.50% Completed) |  | 2026-09-20 → 2026-09-15 A (-5d) | 24d → 22d | 94% → 100% | 44d → none |  | was named Excavation; resources Labor [31.18 h]; Foreman [15.59 h]; Operator [31.18 h]; Surveyor [15.59 h]; Surveyor Helper [15.59 h]; Excavator (With Bucket) [16 h]; Water Tanker [16 h]; Dump Truck [16 h]; Plate Compactor [16 h]; Depth: 0.0m - 1.5m [131.51] → Labor [29.47 h]; Foreman [14.73 h]; Operator [29.47 h]; Surveyor [14.73 h]; Surveyor Helper [14.73 h]; Excavator (With Bucket) [15.12 h]; Water Tanker [15.12 h]; Dump Truck [15.12 h]; Plate Compactor [15.12 h]; Depth: 0.0m - 1.5m [124.27] |
| B3.1. 33 14 13.01.14 | Sand Bedding (89.00% Completed) |  | 2026-09-20 → 2026-09-15 A (-5d) | 21d → 19d | 89% → 100% | 44d → none |  | was named Sand Bedding; resources Labor [31.18 h]; Foreman [15.59 h]; Operator [62.37 h]; Surveyor [15.59 h]; Surveyor Helper [15.59 h]; Loader [16 h]; Water Tanker [16 h]; Dump Truck [16 h]; Plate Compactor [16 h]; Depth: 0.0m - 1.5m [32.88] → Labor [27.75 h]; Foreman [13.88 h]; Operator [55.51 h]; Surveyor [13.88 h]; Surveyor Helper [13.88 h]; Loader [14.24 h]; Water Tanker [14.24 h]; Dump Truck [14.24 h]; Plate Compactor [14.24 h]; Depth: 0.0m - 1.5m [29.26] |
| B3.1. 33 14 13.01.18 | Pipe Laying (89.00% Completed) |  | 2026-09-20 → 2026-09-15 A (-5d) | 18d → 16d | 89% → 100% | 44d → none |  | was named Pipe Laying; resources Labor [31.18 h]; Foreman [15.59 h]; Plumber Helper [15.59 h]; Plumber [15.59 h]; Operator [15.59 h]; Surveyor [15.59 h]; Surveyor Helper [15.59 h]; Mobile Crane [16 h]; Depth: 0.0m - 1.5m [295.89] → Labor [27.75 h]; Foreman [13.88 h]; Plumber Helper [13.88 h]; Plumber [13.88 h]; Operator [13.88 h]; Surveyor [13.88 h]; Surveyor Helper [13.88 h]; Mobile Crane [14.24 h]; Depth: 0.0m - 1.5m [263.34] |
| B3.1. 33 14 13.01.22 | Embedment & Test (89.00% Completed) |  | 2026-09-20 → 2026-09-15 A (-5d) | 15d → 13d | 89% → 100% | 82d → none |  | was named Embedment & Test; resources Labor [62.37 h]; Foreman [31.18 h]; Plumber Helper [31.18 h]; Plumber [31.18 h]; Operator [62.37 h]; Surveyor [31.18 h]; Surveyor Helper [31.18 h]; Loader [32 h]; Water Tanker [32 h]; Dump Truck [32 h]; Plate Compactor [32 h]; Roller Compactor [32 h]; Depth: 0.0m - 1.5m [131.51] → Labor [55.51 h]; Foreman [27.75 h]; Plumber Helper [27.75 h]; Plumber [27.75 h]; Operator [55.51 h]; Surveyor [27.75 h]; Surveyor Helper [27.75 h]; Loader [28.48 h]; Water Tanker [28.48 h]; Dump Truck [28.48 h]; Plate Compactor [28.48 h]; Roller Compactor [28.48 h]; Depth: 0.0m - 1.5m [117.04] |
| B3.1. 33 14 13.01.26 | Backfilling & Warrning Tape | 2026-09-21 → 2026-10-12 (+21d) | 2026-09-29 → 2026-10-19 (+20d) |  |  | 82d → 86.32d | B3.1. 33 14 13.01.22, B3.33 14 19.01.126 → B3.1. 33 14 13.01.22_R, B3.33 14 19.01.126 |  |

| ID | Task | Start | Finish | Duration | Complete | Total float | Predecessors | Other |
| --- | --- | --- | --- | --- | --- | --- | --- | --- |
| Depth: 1.51m - 2.5m | **Depth: 1.51m - 2.5m** |  | 2026-09-29 → 2026-10-19 (+20d) |  |  |  |  |  |
| B3.1. 33 14 13.01.12 | Excavation (91.00% Completed) |  | 2026-09-20 → 2026-09-15 A (-5d) | 15d → 13d | 91% → 100% | 44d → none |  | was named Excavation; resources Labor [31.18 h]; Foreman [15.59 h]; Operator [31.18 h]; Surveyor [15.59 h]; Surveyor Helper [15.59 h]; Excavator (With Bucket) [16 h]; Water Tanker [16 h]; Dump Truck [16 h]; Plate Compactor [16 h]; Depth: 1.51m - 2.5m [8.22] → Labor [28.38 h]; Foreman [14.19 h]; Operator [28.38 h]; Surveyor [14.19 h]; Surveyor Helper [14.19 h]; Excavator (With Bucket) [14.56 h]; Water Tanker [14.56 h]; Dump Truck [14.56 h]; Plate Compactor [14.56 h]; Depth: 1.51m - 2.5m [7.48] |
| B3.1. 33 14 13.01.16 | Sand Bedding (89.00% Completed) |  | 2026-09-20 → 2026-09-15 A (-5d) | 13d → 11d | 89% → 100% | 44d → none |  | was named Sand Bedding; resources Labor [31.18 h]; Foreman [15.59 h]; Operator [62.37 h]; Surveyor [15.59 h]; Surveyor Helper [15.59 h]; Loader [16 h]; Water Tanker [16 h]; Dump Truck [16 h]; Plate Compactor [16 h]; Depth: 1.51m - 2.5m [2.06] → Labor [27.75 h]; Foreman [13.88 h]; Operator [55.51 h]; Surveyor [13.88 h]; Surveyor Helper [13.88 h]; Loader [14.24 h]; Water Tanker [14.24 h]; Dump Truck [14.24 h]; Plate Compactor [14.24 h]; Depth: 1.51m - 2.5m [1.83] |
| B3.1. 33 14 13.01.20 | Pipe Laying (89.00% Completed) |  | 2026-09-20 → 2026-09-15 A (-5d) | 10d → 8d | 89% → 100% | 44d → none |  | was named Pipe Laying; resources Labor [31.18 h]; Foreman [15.59 h]; Plumber Helper [15.59 h]; Plumber [15.59 h]; Operator [15.59 h]; Surveyor [15.59 h]; Surveyor Helper [15.59 h]; Mobile Crane [16 h]; Depth: 1.51m - 2.5m [18.5] → Labor [27.75 h]; Foreman [13.88 h]; Plumber Helper [13.88 h]; Plumber [13.88 h]; Operator [13.88 h]; Surveyor [13.88 h]; Surveyor Helper [13.88 h]; Mobile Crane [14.24 h]; Depth: 1.51m - 2.5m [16.46] |
| B3.1. 33 14 13.01.24 | Embedment & Test (89.00% Completed) |  | 2026-09-20 → 2026-09-15 A (-5d) | 7d → 5d | 89% → 100% | 82d → none |  | was named Embedment & Test; resources Labor [62.37 h]; Foreman [31.18 h]; Plumber Helper [31.18 h]; Plumber [31.18 h]; Operator [62.37 h]; Surveyor [31.18 h]; Surveyor Helper [31.18 h]; Loader [32 h]; Water Tanker [32 h]; Dump Truck [32 h]; Plate Compactor [32 h]; Roller Compactor [32 h]; Depth: 1.51m - 2.5m [8.22] → Labor [55.51 h]; Foreman [27.75 h]; Plumber Helper [27.75 h]; Plumber [27.75 h]; Operator [55.51 h]; Surveyor [27.75 h]; Surveyor Helper [27.75 h]; Loader [28.48 h]; Water Tanker [28.48 h]; Dump Truck [28.48 h]; Plate Compactor [28.48 h]; Roller Compactor [28.48 h]; Depth: 1.51m - 2.5m [7.32] |
| B3.1. 33 14 13.01.28 | Backfilling & Warrning Tape | 2026-09-21 → 2026-10-12 (+21d) | 2026-09-29 → 2026-10-19 (+20d) |  |  | 82d → 86.32d | B3.1. 33 14 13.01.24 → B3.1. 33 14 13.01.24_R |  |
| 3 | **Fire Hydrant** | 2026-09-21 → 2026-10-12 (+21d) | 2026-10-10 → 2026-10-29 (+19d) |  |  |  |  |  |
| B3.33 14 19.01.fh29 | Riser Pipe & Flanged Fittings Installation | 2026-09-21 → 2026-10-12 (+21d) | 2026-09-26 → 2026-10-15 (+19d) |  |  | 44d → 42.32d | B3.1. 33 14 13.01.20, B3.1. 33 14 13.01.18 → B3.1. 33 14 13.01.20_R, B3.1. 33 14 13.01.18_R |  |
| B3.33 14 19.01.fh28 | Firehydrant Fixing/Installation | 2026-09-27 → 2026-10-17 (+20d) | 2026-10-01 → 2026-10-21 (+20d) |  |  | 44d → 42.32d |  |  |
| B3.33 14 19.01.fh30 | Backfilling & Compaction | 2026-10-03 → 2026-10-22 (+19d) | 2026-10-10 → 2026-10-29 (+19d) |  |  | 44d → 42.32d |  |  |
| Dry Networks | **Dry Networks** | 2026-09-20 → 2026-10-11 (+21d) | 2026-11-23 → 2026-12-16 (+23d) |  |  |  |  |  |
| LV Network | **Low Voltage Network** | 2026-10-11 → 2026-10-31 (+20d) | 2026-10-12 → 2026-11-01 (+20d) |  |  |  |  |  |
| Cables | **Cables** | 2026-10-11 → 2026-10-31 (+20d) | 2026-10-12 → 2026-11-01 (+20d) |  |  |  |  |  |
| 4C,10+1C,10mm2 | **4C,10+1C,10mm2** | 2026-10-11 → 2026-10-31 (+20d) | 2026-10-12 → 2026-11-01 (+20d) |  |  |  |  |  |
| B2.33 71 00 01 10 | Cable Pulling | 2026-10-11 → 2026-10-31 (+20d) | 2026-10-12 → 2026-11-01 (+20d) |  |  | 44d → 42.32d |  |  |
| Street Lighting | **Street Lighting** | 2026-09-20 → 2026-10-11 (+21d) | 2026-11-23 → 2026-12-16 (+23d) |  |  |  |  |  |
| Duct Banks | **Duct Banks** | 2026-09-20 → 2026-10-11 (+21d) | 2026-11-14 → 2026-12-02 (+18d) |  |  |  |  |  |
| 2 Way | **2 Way** | 2026-09-20 → 2026-10-11 (+21d) | 2026-11-14 → 2026-12-02 (+18d) |  |  |  |  |  |
| B2.33 71 00 02 64 | Excavation | 2026-09-20 → 2026-10-11 (+21d) | 2026-09-21 → 2026-10-12 (+21d) |  |  | 82d → 82.32d | B6.33 05 40.01.320 → B6.33 05 40.01.320_R |  |
| B2.33 71 00 02 65 | Shuttering, Steel Fixing Incl. UPVC Pipe & Conc. Cast | 2026-09-22 → 2026-10-13 (+21d) | 2026-09-26 → 2026-10-15 (+19d) |  |  | 103d → 101.32d |  |  |
| B2.33 71 00 02 66 | Backfilling & Warrning Tape | 2026-11-11 → 2026-12-01 (+20d) | 2026-11-14 → 2026-12-02 (+18d) | 3d → 2d |  | 64d → 62.32d |  |  |
| 6 Way | **6 Way** | 2026-09-22 → 2026-10-13 (+21d) | 2026-11-12 → 2026-12-01 (+19d) |  |  |  |  |  |
| B2.33 71 00 02 67 | Excavation | 2026-09-22 → 2026-10-13 (+21d) | 2026-09-24 → 2026-10-14 (+20d) |  |  | 82d → 82.32d |  |  |
| B2.33 71 00 02 68 | Shuttering, Steel Fixing Incl. UPVC Pipe & Conc. Cast | 2026-09-26 → 2026-10-15 (+19d) | 2026-09-28 → 2026-10-18 (+20d) |  |  | 101d → 99.32d |  |  |
| B2.33 71 00 02 69 | Backfilling & Warrning Tape | 2026-11-10 → 2026-11-30 (+20d) | 2026-11-12 → 2026-12-01 (+19d) | 3d → 2d |  | 65d → 63.32d | B2.33 71 00 02 68, B2.33 71 19 34, B2.33 71 19 013, B2.33 71 49.23.112 → B2.33 71 00 02 68, B2.33 71 19 34, B2.33 71 19 013, B2.33 71 49.23.112_R |  |
| Drawpits | **Drawpits** | 2026-09-26 → 2026-10-15 (+19d) | 2026-10-03 → 2026-10-22 (+19d) |  |  |  |  |  |
| B2.33 71 00 02 70 | Excavation | 2026-09-26 → 2026-10-15 (+19d) | 2026-09-27 → 2026-10-17 (+20d) |  |  | 82d → 82.32d |  |  |
| B2.33 71 00 02 71 | Drawpits Installation | 2026-09-28 → 2026-10-18 (+20d) | 2026-09-29 → 2026-10-19 (+20d) |  |  | 82d → 82.32d |  |  |
| B2.33 71 00 02 72 | Backfilling & Warrning Tape | 2026-09-30 → 2026-10-20 (+20d) | 2026-10-03 → 2026-10-22 (+19d) |  |  | 82d → 82.32d |  |  |
| Earthing | **Earthing** | 2026-11-10 → 2026-12-09 (+29d) | 2026-11-23 → 2026-12-16 (+23d) |  |  |  |  |  |
| B2.33 71 19 29 | Land Adjustment | 2026-11-10 → 2026-12-09 (+29d) | 2026-11-12 → 2026-12-12 (+30d) | 3d → 2d |  | 61d → 52.91d |  |  |
| B2.33 71 19 30 | Earth Rods & Conduits | 2026-11-14 → 2026-12-12 (+28d) | 2026-11-16 → 2026-12-14 (+28d) | 3d → 2d |  | 61d → 52.91d |  |  |
| B2.33 71 19 31 | Backfilling | 2026-11-21 → 2026-12-14 (+23d) | 2026-11-23 → 2026-12-16 (+23d) | 3d → 2d |  | 58d → 52.91d |  |  |
| SL Poles | **SL Poles** | 2026-10-27 → 2026-11-28 (+32d) | 2026-11-17 → 2026-12-14 (+27d) |  |  |  |  |  |
| Pole (10 M Sngl Arm) | **Pole (10 M Single Arm)** | 2026-10-27 → 2026-11-28 (+32d) | 2026-11-11 → 2026-12-09 (+28d) |  |  |  |  |  |
| B2.33 71 16.55 | Excavation | 2026-10-27 → 2026-11-28 (+32d) | 2026-10-29 → 2026-12-01 (+33d) |  |  | 59d → 52.91d | B3.1. 33 14 13.01.26, B3.1. 33 14 13.01.28, B2.33 71 16.35, B1.2.32 11 26.01.7 → B3.1. 33 14 13.01.26, B3.1. 33 14 13.01.28, B2.33 71 16.35, B1.2.32 11 26.01.7_R |  |
| B2.33 71 16.56 | PC & RC Foundation | 2026-10-31 → 2026-12-01 (+31d) | 2026-11-02 → 2026-12-03 (+31d) | 3d → 2d |  | 64d → 55.91d |  |  |
| B2.33 71 16.57 | Lighting Poles Installation Incl power box, Cables | 2026-11-03 → 2026-12-03 (+30d) | 2026-11-05 → 2026-12-06 (+31d) | 3d → 2d |  | 64d → 55.91d |  |  |
| B2.26.56.19.7 | Lighting Luminares Inst | 2026-11-07 → 2026-12-06 (+29d) | 2026-11-08 → 2026-12-07 (+29d) | 2d → 1d |  | 64d → 58.91d |  |  |
| B2.33 71 16.58 | Backfilling, Grouting & Chamfering | 2026-11-09 → 2026-12-07 (+28d) | 2026-11-11 → 2026-12-09 (+28d) | 3d → 2d |  | 64d → 58.91d |  |  |
| Pole (10 M Dbl Arm) | **Pole (10 M Double Arm)** | 2026-10-31 → 2026-12-01 (+31d) | 2026-11-17 → 2026-12-14 (+27d) |  |  |  |  |  |
| B2.33 71 16.59 | Excavation | 2026-10-31 → 2026-12-01 (+31d) | 2026-11-02 → 2026-12-03 (+31d) | 3d → 2d |  | 59d → 52.91d |  |  |
| B2.33 71 16.60 | PC & RC Foundation | 2026-11-03 → 2026-12-03 (+30d) | 2026-11-05 → 2026-12-07 (+32d) |  |  | 59d → 52.91d |  |  |
| B2.33 71 16.61 | Lighting Poles Installation Incl power box, Cables | 2026-11-07 → 2026-12-07 (+30d) | 2026-11-09 → 2026-12-09 (+30d) | 3d → 2d |  | 59d → 52.91d |  |  |
| B2.26.56.19.8 | Lighting Luminares Inst | 2026-11-10 → 2026-12-09 (+29d) | 2026-11-14 → 2026-12-12 (+28d) | 4d → 2d |  | 59d → 52.91d |  |  |
| B2.33 71 16.62 | Backfilling, Grouting & Chamfering | 2026-11-15 → 2026-12-12 (+27d) | 2026-11-17 → 2026-12-14 (+27d) | 3d → 2d |  | 59d → 52.91d |  |  |
| Earth & Road Works | **Earth & Road Works** |  | 2026-11-24 → 2026-12-14 (+20d) |  |  |  |  |  |
| Earth Layers | **Earth Layers** |  | 2026-09-21 → 2026-10-12 (+21d) |  |  |  |  |  |
| B1.2.32 11 13.01.7 | Subgrade (65.00% Completed) |  | 2026-09-21 → 2026-09-15 A (-6d) | 157.96d → 152.96d | 65% → 100% | 111d → none |  | was named Subgrade; resources Subgrade [14323.3]; Labor [109.15 h]; Foreman [54.57 h]; Operator [109.15 h]; Surveyor [54.57 h]; Surveyor Helper [54.57 h]; Grader [56 h]; Loader [56 h]; Water Tanker [56 h]; Dump Truck [56 h]; Plate Compactor [56 h]; Roller Compactor [56 h] → Subgrade [9310.14]; Labor [70.95 h]; Foreman [35.47 h]; Operator [70.95 h]; Surveyor [35.47 h]; Surveyor Helper [35.47 h]; Grader [36.4 h]; Loader [36.4 h]; Water Tanker [36.4 h]; Dump Truck [36.4 h]; Plate Compactor [36.4 h]; Roller Compactor [36.4 h] |
| B1.2.32 11 23.01.7 | Aggregate Base Course (60.00% Completed) |  | 2026-09-17 → 2026-09-15 A (-2d) | 110.67d → 108.67d | 60% → 100% | 114d → none |  | was named Aggregate Base Course; resources Aggregate base course [9548.86]; Labor [77.96 h]; Foreman [38.98 h]; Operator [77.96 h]; Surveyor [38.98 h]; Surveyor Helper [38.98 h]; Grader [40 h]; Loader [40 h]; Water Tanker [40 h]; Dump Truck [40 h]; Plate Compactor [40 h]; Roller Compactor [40 h] → Aggregate base course [5729.31]; Labor [46.78 h]; Foreman [23.39 h]; Operator [46.78 h]; Surveyor [23.39 h]; Surveyor Helper [23.39 h]; Grader [24 h]; Loader [24 h]; Water Tanker [24 h]; Dump Truck [24 h]; Plate Compactor [24 h]; Roller Compactor [24 h] |
| Interlock | **Interlock** | 2026-11-15 → 2026-12-12 (+27d) | 2026-11-16 → 2026-12-14 (+28d) |  |  |  |  |  |
| B1.2.32 14 13.13.7 | 60mm thick - Interlocking Block Pavers | 2026-11-15 → 2026-12-12 (+27d) | 2026-11-16 → 2026-12-14 (+28d) |  |  | 58d → 50.91d |  |  |
| Curbstone | **Curbstone** | 2026-10-25 → 2026-11-12 (+18d) | 2026-11-08 → 2026-11-26 (+18d) |  |  |  |  |  |
| Pre Install | **Pre-Installation** | 2026-10-25 → 2026-11-12 (+18d) | 2026-11-01 → 2026-11-19 (+18d) |  |  |  |  |  |
| B2.31 23 00.181 | Excavation | 2026-10-25 → 2026-11-12 (+18d) | 2026-10-27 → 2026-11-15 (+19d) |  |  | 13.76d → 13d |  |  |
| B1.2.32 14 13.13.27 | PCC | 2026-10-27 → 2026-11-15 (+19d) | 2026-10-29 → 2026-11-17 (+19d) |  |  | 65.76d → 66d |  |  |
| 32 16 13.007 | Haunching | 2026-10-29 → 2026-11-17 (+19d) | 2026-11-01 → 2026-11-19 (+18d) |  |  | 65.76d → 66d |  |  |
| Installation | **Installation** | 2026-11-01 → 2026-11-19 (+18d) | 2026-11-07 → 2026-11-25 (+18d) |  |  |  |  |  |
| B1.2.32 16.13.01.7 | Curb Stone, Type K1 | 2026-11-01 → 2026-11-19 (+18d) | 2026-11-03 → 2026-11-22 (+19d) |  |  | 65.76d → 66d |  |  |
| B1.2.32 16.13.02.6 | Dropped Curb, Type K3 | 2026-11-03 → 2026-11-22 (+19d) | 2026-11-04 → 2026-11-23 (+19d) |  |  | 65.76d → 66d |  |  |
| B1.2.32 16.13.03.7 | Edge Curb, Type K4 | 2026-11-04 → 2026-11-23 (+19d) | 2026-11-05 → 2026-11-24 (+19d) |  |  | 65.76d → 66d |  |  |
| B1.2.32 16.13.047 | Heel Curb, Type K5 | 2026-11-04 → 2026-11-23 (+19d) | 2026-11-05 → 2026-11-24 (+19d) |  |  | 65.76d → 66d |  |  |
| B1.2.32 16.13.05.6 | Transition Curb | 2026-11-05 → 2026-11-24 (+19d) | 2026-11-07 → 2026-11-25 (+18d) |  |  | 65.76d → 66d |  |  |
| Finishing | **Finishing** | 2026-11-07 → 2026-11-25 (+18d) | 2026-11-08 → 2026-11-26 (+18d) |  |  |  |  |  |
| 32 16 13.07 | Finishing, Fareface | 2026-11-07 → 2026-11-25 (+18d) | 2026-11-08 → 2026-11-26 (+18d) |  |  | 65.76d → 66d |  |  |
| Asphalt Layers | **Asphalt Layers** |  | 2026-11-16 → 2026-12-05 (+19d) |  |  |  |  |  |
| B1.2.32 11 26.01.7 | Bituminous Base Course including Prime Coat (MC1) and tack coat (RC2) (60.00% Completed) |  | 2026-09-17 → 2026-09-15 A (-2d) | 81.38d → 79.38d | 60% → 100% | 53d → none |  | was named Bituminous Base Course including Prime Coat (MC1) and tack coat (RC2); resources Bituminous base course(Grading I - Class A) [6542.6]; Labor [77.96 h]; Foreman [38.98 h]; Operator [77.96 h]; Surveyor [38.98 h]; Surveyor Helper [38.98 h]; Dump Truck [40 h]; Roller Compactor [40 h]; MC1/RC2 Sprayer [40 h] → Bituminous base course(Grading I - Class A) [3925.56]; Labor [46.78 h]; Foreman [23.39 h]; Operator [46.78 h]; Surveyor [23.39 h]; Surveyor Helper [23.39 h]; Dump Truck [24 h]; Roller Compactor [24 h]; MC1/RC2 Sprayer [24 h] |
| B1.2.32 12 16.01.7 | Bituminous concrete Wearing Course, including tack coat (RC2) | 2026-11-14 → 2026-12-02 (+18d) | 2026-11-16 → 2026-12-05 (+19d) |  |  | 5.76d → 8d | B1.2.32 11 26.01.7, B1.2.32 12 16.01.5 → B1.2.32 11 26.01.7_R, B1.2.32 12 16.01.5 |  |
| Pavement Marking | **Pavement Marking** | 2026-11-16 → 2026-12-05 (+19d) | 2026-11-18 → 2026-12-07 (+19d) |  |  |  |  |  |
| B1.2.32 17 23.01.7 | Retroreflective Thermoplastic White Traffic lines | 2026-11-16 → 2026-12-05 (+19d) | 2026-11-18 → 2026-12-07 (+19d) |  |  | 39.76d → 38d |  |  |

| ID | Task | Start | Finish | Duration | Complete | Total float | Predecessors | Other |
| --- | --- | --- | --- | --- | --- | --- | --- | --- |
| B1.2.32 17 23.02.7 | Retroreflective Thermoplastic Yellow, Traffic lines | 2026-11-16 → 2026-12-05 (+19d) | 2026-11-18 → 2026-12-07 (+19d) |  |  | 39.76d → 38d |  |  |
| Traffic Signs | **Traffic Signs** | 2026-10-27 → 2026-11-15 (+19d) | 2026-11-24 → 2026-12-13 (+19d) |  |  |  |  |  |
| Pre Install | **Pre-Installation** | 2026-10-27 → 2026-11-15 (+19d) | 2026-11-01 → 2026-11-19 (+18d) |  |  |  |  |  |
| B2.31 23 00.191 | Excavation | 2026-10-27 → 2026-11-15 (+19d) | 2026-10-29 → 2026-11-17 (+19d) |  |  | 13.76d → 13d |  |  |
| 10 14 53.07 | Foundation | 2026-10-29 → 2026-11-17 (+19d) | 2026-11-01 → 2026-11-19 (+18d) |  |  | 54.76d → 53d |  |  |
| Installation | **Installation** | 2026-11-22 → 2026-12-10 (+18d) | 2026-11-24 → 2026-12-13 (+19d) |  |  |  |  |  |
| B1.2.10 14 53.017 | 1 Sheet Alumenium, Single post | 2026-11-22 → 2026-12-10 (+18d) | 2026-11-24 → 2026-12-13 (+19d) |  |  | 36.76d → 35d |  |  |
| Road Misc. | **Miscellaneous** | 2026-11-16 → 2026-12-05 (+19d) | 2026-11-18 → 2026-12-07 (+19d) |  |  |  |  |  |
| B1.2.32 12 19.13.6 | Wheels stoppers (precast concrete) | 2026-11-16 → 2026-12-05 (+19d) | 2026-11-18 → 2026-12-07 (+19d) |  |  | 15.76d → 15d |  |  |
| Landscape | **Landscape** | 2026-10-29 → 2026-11-17 (+19d) | 2026-11-22 → 2026-12-10 (+18d) |  |  |  |  |  |
| Fences | **Fences** | 2026-10-29 → 2026-11-17 (+19d) | 2026-11-19 → 2026-12-08 (+19d) |  |  |  |  |  |
| (ZATCA HCIS) | **Steel fence (ZATCA HCIS)** | 2026-10-29 → 2026-11-17 (+19d) | 2026-11-16 → 2026-12-05 (+19d) |  |  |  |  |  |
| B7.32 93 43.02.14 | Earthwork | 2026-10-29 → 2026-11-17 (+19d) | 2026-11-04 → 2026-11-23 (+19d) |  |  | 13.76d → 13d |  |  |
| B7.32 93 43.02.16 | Foundation | 2026-11-04 → 2026-11-23 (+19d) | 2026-11-10 → 2026-11-29 (+19d) |  |  | 16.76d → 16d |  |  |
| B7.32 93 43.02.18 | Fence Installation | 2026-11-10 → 2026-11-29 (+19d) | 2026-11-16 → 2026-12-05 (+19d) |  |  | 16.76d → 16d |  |  |
| (MODON) fence | **Steel fence (MODON)** | 2026-11-04 → 2026-11-23 (+19d) | 2026-11-19 → 2026-12-08 (+19d) |  |  |  |  |  |
| B7.32 93 43.02.20 | Earthwork | 2026-11-04 → 2026-11-23 (+19d) | 2026-11-10 → 2026-11-29 (+19d) |  |  | 13.76d → 13d |  |  |
| B7.32 93 43.02.22 | Foundation | 2026-11-10 → 2026-11-29 (+19d) | 2026-11-16 → 2026-12-05 (+19d) |  |  | 13.76d → 13d |  |  |
| B7.32 93 43.02.24 | Fence Installation | 2026-11-16 → 2026-12-05 (+19d) | 2026-11-19 → 2026-12-08 (+19d) |  |  | 13.76d → 13d |  |  |
| Trees | **Trees** | 2026-11-16 → 2026-12-05 (+19d) | 2026-11-22 → 2026-12-10 (+18d) |  |  |  |  |  |
| B7.32 93 43.02.10 | Ceratonia Siliqua | 2026-11-16 → 2026-12-05 (+19d) | 2026-11-19 → 2026-12-08 (+19d) |  |  | 17.76d → 17d |  |  |
| B7.32 93 43.02.12 | Milettia pinnata/ Pongamia glabra | 2026-11-16 → 2026-12-05 (+19d) | 2026-11-19 → 2026-12-08 (+19d) |  |  | 17.76d → 17d |  |  |
| B7.32 93 43.7 | Azadirachta indica | 2026-11-18 → 2026-12-07 (+19d) | 2026-11-22 → 2026-12-10 (+18d) |  |  | 15.76d → 15d |  |  |
| Arterial Road | **Arterial Road** |  | 2026-10-19 → 2026-11-22 (+34d) |  |  |  |  |  |
| Wet Networks | **Wet Networks** |  | 2026-10-14 → 2026-11-22 (+39d) |  |  |  |  |  |
| Sewerage Network | **Sewerage Network** |  | 2026-10-14 → 2026-11-22 (+39d) |  |  |  |  |  |
| HDPE | **HDPE Pipes** |  | 2026-09-21 → 2026-10-12 (+21d) |  |  |  |  |  |
| 1 | **?160** |  | 2026-09-21 → 2026-10-12 (+21d) |  |  |  |  |  |
| 3 | **Depth From 1.5m to 2.5m** |  | 2026-09-21 → 2026-10-12 (+21d) |  |  |  |  |  |
| B5.33 31 23.021 | Excavation (0.00% Completed) |  | 2026-09-19 → 2026-09-15 A (-4d) | 137d → 134d | 0% → 100% | 93d → none |  | was named Excavation; resources Labor [46.78 h]; Foreman [23.39 h]; Operator [46.78 h]; Surveyor [23.39 h]; Surveyor Helper [23.39 h]; Excavator (With Bucket) [24 h]; Water Tanker [24 h]; Dump Truck [24 h]; Plate Compactor [24 h]; Sew HDPE Dia. 160 mm depth: 1.5 - 2.5m [159.4] → Labor; Foreman; Operator; Surveyor; Surveyor Helper; Excavator (With Bucket); Water Tanker; Dump Truck; Plate Compactor; Sew HDPE Dia. 160 mm depth: 1.5 - 2.5m |
| B5.33 31 23.022 | Sand Bedding (0.00% Completed) |  | 2026-09-19 → 2026-09-15 A (-4d) | 109.05d → 107.05d | 0% → 100% | 93d → none |  | was named Sand Bedding; resources Labor [31.18 h]; Foreman [15.59 h]; Operator [62.37 h]; Surveyor [15.59 h]; Surveyor Helper [15.59 h]; Loader [16 h]; Water Tanker [16 h]; Dump Truck [16 h]; Plate Compactor [16 h]; Sew HDPE Dia. 160 mm depth: 1.5 - 2.5m [39.85] → Labor; Foreman; Operator; Surveyor; Surveyor Helper; Loader; Water Tanker; Dump Truck; Plate Compactor; Sew HDPE Dia. 160 mm depth: 1.5 - 2.5m |
| B5.33 31 23.023 | Pipe Laying (0.00% Completed) |  | 2026-09-19 → 2026-09-15 A (-4d) | 82.05d → 80.05d | 0% → 100% | 93d → none |  | was named Pipe Laying; resources Labor [31.18 h]; Foreman [15.59 h]; Plumber Helper [15.59 h]; Plumber [15.59 h]; Operator [15.59 h]; Surveyor [15.59 h]; Surveyor Helper [15.59 h]; Mobile Crane [16 h]; Sew HDPE Dia. 160 mm depth: 1.5 - 2.5m [358.65]; Pipe encasement dia 160mm [40]; Pipe encasement dia 150mm [10] → Labor; Foreman; Plumber Helper; Plumber; Operator; Surveyor; Surveyor Helper; Mobile Crane; Sew HDPE Dia. 160 mm depth: 1.5 - 2.5m; Pipe encasement dia 160mm; Pipe encasement dia 150mm |
| B5.33 31 23.024 | Embedment & Test (0.00% Completed) |  | 2026-09-20 → 2026-09-15 A (-5d) | 81.23d → 77.23d | 0% → 100% | 92d → none |  | was named Embedment & Test; resources Labor [62.37 h]; Foreman [31.18 h]; Plumber Helper [31.18 h]; Plumber [31.18 h]; Operator [62.37 h]; Surveyor [31.18 h]; Surveyor Helper [31.18 h]; Loader [32 h]; Water Tanker [32 h]; Dump Truck [32 h]; Plate Compactor [32 h]; Roller Compactor [32 h]; Sew HDPE Dia. 160 mm depth: 1.5 - 2.5m [159.4] → Labor; Foreman; Plumber Helper; Plumber; Operator; Surveyor; Surveyor Helper; Loader; Water Tanker; Dump Truck; Plate Compactor; Roller Compactor; Sew HDPE Dia. 160 mm depth: 1.5 - 2.5m |
| B5.33 31 23.025 | Backfilling & Warrning Tape (0.00% Completed) |  | 2026-09-21 → 2026-09-15 A (-6d) | 78.23d → 73.23d | 0% → 100% | 111d → none |  | was named Backfilling & Warrning Tape; resources Labor [77.96 h]; Foreman [38.98 h]; Operator [155.92 h]; Surveyor [38.98 h]; Surveyor Helper [38.98 h]; Loader [40 h]; Water Tanker [40 h]; Dump Truck [40 h]; Plate Compactor [40 h]; Roller Compactor [40 h]; Sew HDPE Dia. 160 mm depth: 1.5 - 2.5m [79.7] → Labor; Foreman; Operator; Surveyor; Surveyor Helper; Loader; Water Tanker; Dump Truck; Plate Compactor; Roller Compactor; Sew HDPE Dia. 160 mm depth: 1.5 - 2.5m |
| 2 | **Valves & Chambers** |  | 2026-10-14 → 2026-11-22 (+39d) |  |  |  |  |  |
| Gate | **Gate Valves** |  | 2026-09-20 → 2026-10-12 (+22d) |  |  |  |  |  |
| B3.33 14 19.01.1 | Burried Isolation Valve Installation (0.00% Completed) |  | 2026-09-17 → 2026-09-15 A (-2d) | 82.05d → 80.05d | 0% → 100% | 108d → none |  | was named Burried Isolation Valve Installation; resources Labor [31.18 h]; Plumber Helper [15.59 h]; Plumber [15.59 h]; Operator [31.18 h]; Boom Truck [16 h]; Gate V dia 150 mm on Dia. 160 mm [0.75] → Labor; Plumber Helper; Plumber; Operator; Boom Truck; Gate V dia 150 mm on Dia. 160 mm |
| B3.33 14 19.01.7 | Spindle & Surface Box | 2026-09-19 → 2026-10-11 (+22d) | 2026-09-20 → 2026-10-12 (+22d) |  |  | 108d → 104.32d | B3.33 14 19.01.1 → B3.33 14 19.01.1_R |  |
| Air V in Ch1 | **Air Valves in Chambers** | 2026-09-21 → 2026-10-12 (+21d) | 2026-10-14 → 2026-11-22 (+39d) |  |  |  |  |  |
| B3.33 14 19.01.26 | Land Adjustment & Compaction | 2026-09-21 → 2026-10-12 (+21d) | 2026-09-26 → 2026-10-15 (+19d) | 4d → 3d |  | 92d → 88.76d | B5.33 31 23.024 → B5.33 31 23.024_R, B5.33 31 00.01.2209_R |  |
| B3.33 14 19.01.28 | Foundations | 2026-09-27 → 2026-10-15 (+18d) | 2026-09-30 → 2026-10-20 (+20d) |  |  | 93d → 90.76d |  |  |
| B3.33 14 19.01.30 | Chambers Walls Conc Cast In Situ | 2026-10-01 → 2026-10-20 (+19d) | 2026-10-04 → 2026-10-24 (+20d) |  |  | 93d → 90.76d |  |  |
| B3.33 14 19.01.32 | Chamber Curing, Finishing & Steel Cover | 2026-10-05 → 2026-10-24 (+19d) | 2026-10-08 → 2026-10-28 (+20d) |  |  | 93d → 90.76d |  |  |
| B3.33 14 19.01.33 | Valve & Fitting Installation | 2026-10-11 → 2026-11-17 (+37d) | 2026-10-14 → 2026-11-22 (+39d) |  |  | 92d → 74.1d |  |  |
| Stormwater Network | **Stormwater Network** |  | 2026-10-14 → 2026-10-31 (+17d) |  |  |  |  |  |
| Box Cul. | **Box Cul.** |  | 2026-10-14 → 2026-10-31 (+17d) |  |  |  |  |  |
| B6. 33 42 13.013 | Box Reinforced Conc. Walls incl. Water Stop (92.00% Completed) |  | 2026-09-19 → 2026-09-15 A (-4d) | 87.56d → 85.56d | 92% → 100% | 113d → none |  | was named Box Reinforced Conc. Walls incl. Water Stop; resources Labor [109.15 h]; Laboratory Officer [54.57 h]; Carpenter [54.57 h]; Steelfixer [54.57 h]; Mason [54.57 h]; Operator [109.15 h]; Surveyor [54.57 h]; Surveyor Helper [54.57 h]; Mobile Crane [56 h]; Concrete for box culvert [223.6]; Steel Reinforcement for box culverts [37.2] → Labor [100.41 h]; Laboratory Officer [50.21 h]; Carpenter [50.21 h]; Steelfixer [50.21 h]; Mason [50.21 h]; Operator [100.41 h]; Surveyor [50.21 h]; Surveyor Helper [50.21 h]; Mobile Crane [51.52 h]; Concrete for box culvert [205.71]; Steel Reinforcement for box culverts [34.22] |
| B6. 33 42 13.014 | Box Reinforced Conc. Slab (92.00% Completed) |  | 2026-09-19 → 2026-09-15 A (-4d) | 84.21d → 82.21d | 92% → 100% | 113d → none |  | was named Box Reinforced Conc. Slab; resources Labor [77.96 h]; Laboratory Officer [38.98 h]; Carpenter [38.98 h]; Steelfixer [38.98 h]; Mason [38.98 h]; Operator [77.96 h]; Surveyor [38.98 h]; Surveyor Helper [38.98 h]; Mobile Crane [40 h]; Concrete for box culvert [223.6]; Steel Reinforcement for box culverts [37.2] → Labor [71.72 h]; Laboratory Officer [35.86 h]; Carpenter [35.86 h]; Steelfixer [35.86 h]; Mason [35.86 h]; Operator [71.72 h]; Surveyor [35.86 h]; Surveyor Helper [35.86 h]; Mobile Crane [36.8 h]; Concrete for box culvert [205.71]; Steel Reinforcement for box culverts [34.22] |
| B6. 33 42 13.015 | Curing & Water Proofing (11.00% Completed) |  | 2026-09-21 → 2026-09-15 A (-6d) | 8.86d → 5.3d | 11% → 100% | 47.44d → none |  | was named Curing & Water Proofing; resources Labor [62.37 h]; Mason [31.18 h]; Concrete for box culvert [111.8] → Labor [6.86 h]; Mason [3.43 h]; Concrete for box culvert [12.3] |
| B6. 33 42 13.016 | Backfilling & Warrning Tape | 2026-10-01 → 2026-10-18 (+17d) | 2026-10-08 → 2026-10-25 (+17d) |  |  | 47.44d → 42.78d | B6. 33 42 13.015, B6.33 05 63.054, B6.33 05 63.064, B6.33 42 11.03-114 → B6. 33 42 13.015_R, B6.33 05 63.054, B6.33 05 63.064, B6.33 42 11.03-114_R |  |
| Conc. Ch | **Concrete Chambers** |  | 2026-10-14 → 2026-10-31 (+17d) |  |  |  |  |  |
| Conc. Ch 2.53.5 | **Size 1.5 x 1.5 m, depth 2.5 to 3.5** |  | 2026-10-14 → 2026-10-31 (+17d) |  |  |  |  |  |
| B6.33 05 63.054 | Waterproofing Tanking Membrane & Protection | 2026-09-21 → 2026-10-08 (+17d) | 2026-09-27 → 2026-10-13 (+16d) |  |  | 47.44d → 42.78d | B6. 33 42 13.015 → B6. 33 42 13.015_R |  |
| B6.33 05 63.053 | Cast Iron Steps Installation, Epoxy Paint & Internal Finishing | 2026-10-08 → 2026-10-25 (+17d) | 2026-10-14 → 2026-10-31 (+17d) |  |  | 47.44d → 42.78d | B6.33 05 63.052, B6.33 05 63.064, B6.33 05 63.054, B6. 33 42 13.015, B6. 33 42 13.016, B6.33 42 11.13.305, B6.33 05 39.01.3967, B6.33 05 40.01.560 → B6.33 05 63.052, B6.33 05 63.064, B6.33 05 63.054, B6. 33 42 13.015_R, B6. 33 42 13.016, B6.33 42 11.13.305, B6.33 05 39.01.3967, B6.33 05 40.01.560_R |  |
| Conc. Ch 3.54.5 | **Size 1.5 x 1.5 m, depth 3.5 to 4.5** |  | 2026-10-14 → 2026-10-31 (+17d) |  |  |  |  |  |
| B6.33 05 63.064 | Waterproofing Tanking Membrane & Protection | 2026-09-27 → 2026-10-13 (+16d) | 2026-10-01 → 2026-10-18 (+17d) |  |  | 47.44d → 42.78d | B6. 33 42 13.015, B6.33 05 63.054 → B6. 33 42 13.015_R, B6.33 05 63.054 |  |
| B6.33 05 63.063 | Cast Iron Steps Installation, Epoxy Paint & Internal Finishing | 2026-10-08 → 2026-10-25 (+17d) | 2026-10-14 → 2026-10-31 (+17d) |  |  | 47.44d → 42.78d | B6.33 05 63.062, B6.33 05 63.054, B6. 33 42 13.015, B6. 33 42 13.016, B6.33 05 40.01.440, B6.33 42 11.13.255, B1.2.31 23 16.01.8 → B6.33 05 63.062, B6.33 05 63.054, B6. 33 42 13.015_R, B6. 33 42 13.016, B6.33 05 40.01.440_R, B6.33 42 11.13.255_R, B1.2.31 23 16.01.8 |  |
| Potable Water | **Potable Water Network** |  | 2026-09-28 → 2026-10-18 (+20d) |  |  |  |  |  |
| HDPE | **HDPE Pipes** |  | 2026-09-24 → 2026-10-17 (+23d) |  |  |  |  |  |
| ?250mm | **?250mm** |  | 2026-09-24 → 2026-10-17 (+23d) |  |  |  |  |  |
| Depth: 0.0m - 1.5m | **Depth: 0.0m - 1.5m** |  | 2026-09-24 → 2026-10-14 (+20d) |  |  |  |  |  |
| B3.33 14 11.01.011 | Excavation (0.00% Completed) |  | 2026-09-19 → 2026-09-15 A (-4d) | 91.92d → 89.92d | 0% → 100% | 113d → none |  | was named Excavation; resources Labor [31.18 h]; Foreman [15.59 h]; Operator [31.18 h]; Surveyor [15.59 h]; Surveyor Helper [15.59 h]; Excavator (With Bucket) [16 h]; Water Tanker [16 h]; Dump Truck [16 h]; Plate Compactor [16 h]; Depth: 0.0m - 1.5m [92.75] → Labor; Foreman; Operator; Surveyor; Surveyor Helper; Excavator (With Bucket); Water Tanker; Dump Truck; Plate Compactor; Depth: 0.0m - 1.5m |
| B3.33 14 11.01.012 | Sand Bedding (0.00% Completed) |  | 2026-09-19 → 2026-09-15 A (-4d) | 85.92d → 83.92d | 0% → 100% | 113d → none |  | was named Sand Bedding; resources Labor [31.18 h]; Foreman [15.59 h]; Operator [62.37 h]; Surveyor [15.59 h]; Surveyor Helper [15.59 h]; Loader [16 h]; Water Tanker [16 h]; Dump Truck [16 h]; Plate Compactor [16 h]; Depth: 0.0m - 1.5m [23.2] → Labor; Foreman; Operator; Surveyor; Surveyor Helper; Loader; Water Tanker; Dump Truck; Plate Compactor; Depth: 0.0m - 1.5m |
| B3.33 14 11.01.013 | Pipe Laying (0.00% Completed) |  | 2026-09-19 → 2026-09-15 A (-4d) | 83.92d → 81.92d | 0% → 100% | 113d → none |  | was named Pipe Laying; resources Labor [31.18 h]; Foreman [15.59 h]; Plumber Helper [15.59 h]; Plumber [15.59 h]; Operator [15.59 h]; Surveyor [15.59 h]; Surveyor Helper [15.59 h]; Mobile Crane [16 h]; Depth: 0.0m - 1.5m [208.92] → Labor; Foreman; Plumber Helper; Plumber; Operator; Surveyor; Surveyor Helper; Mobile Crane; Depth: 0.0m - 1.5m |
| B3.33 14 11.01.014 | Embedment & Test (0.00% Completed) |  | 2026-09-21 → 2026-09-15 A (-6d) | 83.92d → 79.92d | 0% → 100% | 111d → none |  | was named Embedment & Test; resources Labor [62.37 h]; Foreman [31.18 h]; Plumber Helper [31.18 h]; Plumber [31.18 h]; Operator [62.37 h]; Surveyor [31.18 h]; Surveyor Helper [31.18 h]; Loader [32 h]; Water Tanker [32 h]; Dump Truck [32 h]; Plate Compactor [32 h]; Roller Compactor [32 h]; Depth: 0.0m - 1.5m [92.76] → Labor; Foreman; Plumber Helper; Plumber; Operator; Surveyor; Surveyor Helper; Loader; Water Tanker; Dump Truck; Plate Compactor; Roller Compactor; Depth: 0.0m - 1.5m |
| B3.33 14 11.01.015 | Backfilling & Warrning Tape (0.00% Completed) |  | 2026-09-24 → 2026-09-15 A (-9d) | 82d → 77d | 0% → 100% | 109d → none |  | was named Backfilling & Warrning Tape; resources Labor [77.96 h]; Foreman [38.98 h]; Operator [155.92 h]; Surveyor [38.98 h]; Surveyor Helper [38.98 h]; Loader [40 h]; Water Tanker [40 h]; Dump Truck [40 h]; Plate Compactor [40 h]; Roller Compactor [40 h]; Depth: 0.0m - 1.5m [46.38] → Labor; Foreman; Operator; Surveyor; Surveyor Helper; Loader; Water Tanker; Dump Truck; Plate Compactor; Roller Compactor; Depth: 0.0m - 1.5m |
| Depth: 1.51m - 2.5m | **Depth: 1.51m - 2.5m** |  | 2026-09-22 → 2026-10-17 (+25d) |  |  |  |  |  |
| B3.33 14 11.01.021 | Excavation (0.00% Completed) |  | 2026-09-20 → 2026-09-15 A (-5d) | 92.92d → 89.92d | 0% → 100% | 110d → none |  | was named Excavation; resources Labor [46.78 h]; Foreman [23.39 h]; Operator [46.78 h]; Surveyor [23.39 h]; Surveyor Helper [23.39 h]; Excavator (With Bucket) [24 h]; Water Tanker [24 h]; Dump Truck [24 h]; Plate Compactor [24 h]; Depth: 1.51m - 2.5m [104] → Labor; Foreman; Operator; Surveyor; Surveyor Helper; Excavator (With Bucket); Water Tanker; Dump Truck; Plate Compactor; Depth: 1.51m - 2.5m |
| B3.33 14 11.01.022 | Sand Bedding (0.00% Completed) |  | 2026-09-20 → 2026-09-15 A (-5d) | 85.92d → 83.92d | 0% → 100% | 110d → none |  | was named Sand Bedding; resources Labor [31.18 h]; Foreman [15.59 h]; Operator [62.37 h]; Surveyor [15.59 h]; Surveyor Helper [15.59 h]; Loader [16 h]; Water Tanker [16 h]; Dump Truck [16 h]; Plate Compactor [16 h]; Depth: 1.51m - 2.5m [26] → Labor; Foreman; Operator; Surveyor; Surveyor Helper; Loader; Water Tanker; Dump Truck; Plate Compactor; Depth: 1.51m - 2.5m |
| B3.33 14 11.01.023 | Pipe Laying (0.00% Completed) |  | 2026-09-20 → 2026-09-15 A (-5d) | 84.92d → 81.92d | 0% → 100% | 110d → none |  | was named Pipe Laying; resources Labor [46.78 h]; Foreman [23.39 h]; Plumber Helper [23.39 h]; Plumber [23.39 h]; Operator [23.39 h]; Surveyor [23.39 h]; Surveyor Helper [23.39 h]; Mobile Crane [24 h]; Depth: 1.51m - 2.5m [234] → Labor; Foreman; Plumber Helper; Plumber; Operator; Surveyor; Surveyor Helper; Mobile Crane; Depth: 1.51m - 2.5m |

| ID | Task | Start | Finish | Duration | Complete | Total float | Predecessors | Other |
| --- | --- | --- | --- | --- | --- | --- | --- | --- |
| B3.33 14 11.01.024 | Embedment & Test (0.00% Completed) |  | 2026-09-21 → 2026-09-15 A (-6d) | 83.92d → 79.92d | 0% → 100% | 109d → none |  | was named Embedment & Test; resources Labor [62.37 h]; Foreman [31.18 h]; Plumber Helper [31.18 h]; Plumber [31.18 h]; Operator [62.37 h]; Surveyor [31.18 h]; Surveyor Helper [31.18 h]; Loader [32 h]; Water Tanker [32 h]; Dump Truck [32 h]; Plate Compactor [32 h]; Roller Compactor [32 h]; Depth: 1.51m - 2.5m [104] → Labor; Foreman; Plumber Helper; Plumber; Operator; Surveyor; Surveyor Helper; Loader; Water Tanker; Dump Truck; Plate Compactor; Roller Compactor; Depth: 1.51m - 2.5m |
| B3.33 14 11.01.025 | Backfilling & Warrning Tape (0.00% Completed) |  | 2026-09-22 → 2026-09-15 A (-7d) | 82d → 77d | 0% → 100% | 110d → none |  | was named Backfilling & Warrning Tape; resources Labor [77.96 h]; Foreman [38.98 h]; Operator [155.92 h]; Surveyor [38.98 h]; Surveyor Helper [38.98 h]; Loader [40 h]; Water Tanker [40 h]; Dump Truck [40 h]; Plate Compactor [40 h]; Roller Compactor [40 h]; Depth: 1.51m - 2.5m [52] → Labor; Foreman; Operator; Surveyor; Surveyor Helper; Loader; Water Tanker; Dump Truck; Plate Compactor; Roller Compactor; Depth: 1.51m - 2.5m |
| Valves & Chambers | **Valves & Chambers** |  | 2026-09-21 → 2026-10-12 (+21d) |  |  |  |  |  |
| Air Valves | **Air Valves** |  | 2026-09-21 → 2026-10-12 (+21d) |  |  |  |  |  |
| 4 | **Air valves on less than 315 mm. (In Chamber)** |  | 2026-09-21 → 2026-10-12 (+21d) |  |  |  |  |  |
| B3.33 05 63.02.17 | Land Adjustment & Compaction |  |  |  |  |  | B3.33 14 11.01.025 SS → B3.33 14 11.01.011 FF, B6. 33 42 13.011 |  |
| B3.33 05 63.02.18 | Chambers Walls Conc Cast In Situ |  |  |  |  |  | B3.33 05 63.02.15, DMM2-Proc-Delv-5838 SS → B3.33 05 63.02.15 |  |
| B3.33 05 63.02.19 | Valve & Fitting Installation | 2026-09-16 → 2026-10-07 (+21d) | 2026-09-21 → 2026-10-12 (+21d) |  |  | 70d → 67.32d |  |  |
| 3 | **Flow Meter (On Chamber)** | 2026-09-16 → 2026-10-07 (+21d) | 2026-09-28 → 2026-10-18 (+20d) |  |  |  |  |  |
| B3.33 14 19.01.fm16 | RC Conc. Works | 2026-09-16 → 2026-10-07 (+21d) | 2026-09-20 → 2026-10-11 (+21d) |  |  | 61d → 58.32d |  |  |
| B3.33 14 19.01.fm17 | Fixing Flange/Connections | 2026-09-21 → 2026-10-12 (+21d) | 2026-09-24 → 2026-10-14 (+20d) |  |  | 68d → 65.32d |  |  |
| B3.33 14 19.01.fm18 | Flow Meter Installation | 2026-09-26 → 2026-10-15 (+19d) | 2026-09-28 → 2026-10-18 (+20d) |  |  | 68d → 65.32d |  |  |
| Fire Fighting | **Fire Fighting Network** | 2026-09-21 → 2026-10-12 (+21d) | 2026-10-06 → 2026-10-26 (+20d) |  |  |  |  |  |
| 3 | **Flow Meter (On Chamber)** | 2026-09-21 → 2026-10-12 (+21d) | 2026-10-06 → 2026-10-26 (+20d) |  |  |  |  |  |
| B3.33 14 19.01.fm50 | RC Conc. Works | 2026-09-21 → 2026-10-12 (+21d) | 2026-09-27 → 2026-10-17 (+20d) |  |  | 61d → 58.32d |  |  |
| B3.33 14 19.01.fm49 | Fixing Flange/Connections | 2026-09-28 → 2026-10-18 (+20d) | 2026-10-01 → 2026-10-21 (+20d) |  |  | 61d → 58.32d |  |  |
| B3.33 14 19.01.fm51 | Flow Meter Installation | 2026-10-03 → 2026-10-22 (+19d) | 2026-10-06 → 2026-10-26 (+20d) |  |  | 61d → 58.32d |  |  |
| TSE Network | **TSE Network** |  | 2026-09-29 → 2026-10-19 (+20d) |  |  |  |  |  |
| HDPE | **HDPE Pipes** |  | 2026-09-29 → 2026-10-19 (+20d) |  |  |  |  |  |
| ?125mm | **?125mm** |  | 2026-09-29 → 2026-10-19 (+20d) |  |  |  |  |  |
| Depth: 0.0m - 1.5m | **Depth: 0.0m - 1.5m** |  | 2026-09-29 → 2026-10-19 (+20d) |  |  |  |  |  |
| B4.33 14 13.081 | Excavation (21.50% Completed) |  | 2026-09-19 → 2026-09-15 A (-4d) | 7.57d → 6d | 22% → 100% | 34.43d → none |  | was named Excavation; resources Labor [31.18 h]; Foreman [15.59 h]; Operator [31.18 h]; Surveyor [15.59 h]; Surveyor Helper [15.59 h]; Excavator (With Bucket) [16 h]; Water Tanker [16 h]; Dump Truck [16 h]; Plate Compactor [16 h]; Dia. 125mm 0.0m - 1.5m [80.8] → Labor [6.7 h]; Foreman [3.35 h]; Operator [6.7 h]; Surveyor [3.35 h]; Surveyor Helper [3.35 h]; Excavator (With Bucket) [3.44 h]; Water Tanker [3.44 h]; Dump Truck [3.44 h]; Plate Compactor [3.44 h]; Dia. 125mm 0.0m - 1.5m [17.37] |
| B4.33 14 13.082 | Sand Bedding (21.50% Completed) |  | 2026-09-19 → 2026-09-15 A (-4d) | 5.57d → 4d | 22% → 100% | 34.43d → none |  | was named Sand Bedding; resources Labor [31.18 h]; Foreman [15.59 h]; Operator [62.37 h]; Surveyor [15.59 h]; Surveyor Helper [15.59 h]; Loader [16 h]; Water Tanker [16 h]; Dump Truck [16 h]; Plate Compactor [16 h]; Dia. 125mm 0.0m - 1.5m [20.2] → Labor [6.7 h]; Foreman [3.35 h]; Operator [13.41 h]; Surveyor [3.35 h]; Surveyor Helper [3.35 h]; Loader [3.44 h]; Water Tanker [3.44 h]; Dump Truck [3.44 h]; Plate Compactor [3.44 h]; Dia. 125mm 0.0m - 1.5m [4.34] |
| B4.33 14 13.083 | Pipe Laying (21.50% Completed) |  | 2026-09-19 → 2026-09-15 A (-4d) | 3.57d → 2d | 22% → 100% | 34.43d → none |  | was named Pipe Laying; resources Labor [31.18 h]; Foreman [15.59 h]; Plumber Helper [15.59 h]; Plumber [15.59 h]; Operator [15.59 h]; Surveyor [15.59 h]; Surveyor Helper [15.59 h]; Mobile Crane [16 h]; Dia. 125mm 0.0m - 1.5m [181.8] → Labor [6.7 h]; Foreman [3.35 h]; Plumber Helper [3.35 h]; Plumber [3.35 h]; Operator [3.35 h]; Surveyor [3.35 h]; Surveyor Helper [3.35 h]; Mobile Crane [3.44 h]; Dia. 125mm 0.0m - 1.5m [39.09] |
| B4.33 14 13.084 | Embedment & Test (21.50% Completed) |  | 2026-09-21 → 2026-09-15 A (-6d) | 4.14d → 1d | 22% → 100% | 32.86d → none |  | was named Embedment & Test; resources Labor [62.37 h]; Foreman [31.18 h]; Plumber Helper [31.18 h]; Plumber [31.18 h]; Operator [62.37 h]; Surveyor [31.18 h]; Surveyor Helper [31.18 h]; Loader [32 h]; Water Tanker [32 h]; Dump Truck [32 h]; Plate Compactor [32 h]; Roller Compactor [32 h]; Dia. 125mm 0.0m - 1.5m [80.8] → Labor [13.41 h]; Foreman [6.7 h]; Plumber Helper [6.7 h]; Plumber [6.7 h]; Operator [13.41 h]; Surveyor [6.7 h]; Surveyor Helper [6.7 h]; Loader [6.88 h]; Water Tanker [6.88 h]; Dump Truck [6.88 h]; Plate Compactor [6.88 h]; Roller Compactor [6.88 h]; Dia. 125mm 0.0m - 1.5m [17.37] |
| B4.33 14 13.085 | Backfilling & Warrning Tape | 2026-09-21 → 2026-10-12 (+21d) | 2026-09-29 → 2026-10-19 (+20d) |  |  | 32.86d → 31.18d | B4.33 14 13.084, B3.33 14 19.01.141 → B4.33 14 13.084_R, B3.33 14 19.01.141 |  |
| Dry Networks | **Dry Networks** |  | 2026-10-19 → 2026-11-14 (+26d) |  |  |  |  |  |
| MV | **Medium Voltage Network** |  | 2026-10-19 → 2026-11-08 (+20d) |  |  |  |  |  |
| Cables | **Cables** |  | 2026-10-19 → 2026-11-08 (+20d) |  |  |  |  |  |
| 3C,500mm2 | **3C,500mm2** |  | 2026-09-29 → 2026-10-21 (+22d) |  |  |  |  |  |
| B2.33 71 19 16 | Land Adjustment (68.00% Completed) |  | 2026-09-29 → 2026-09-15 A (-14d) | 11d → 9d | 68% → 100% | 32.86d → none | B4.33 14 13.085 FF → B6. 33 42 13.011 | was named Land Adjustment; resources Labor [31.18 h]; Foreman [15.59 h]; Operator [31.18 h]; Surveyor [7.8 h]; Surveyor Helper [7.8 h]; Excavator (With Bucket) [16 h]; Water Tanker [16 h]; Dump Truck [16 h]; Roller Compactor [16 h]; Cable 13.8 kV 3Cx 500 mm² Al XLPE,/LLDPE / Unarmored [2500.05] → Labor [21.21 h]; Foreman [10.6 h]; Operator [21.21 h]; Surveyor [5.3 h]; Surveyor Helper [5.3 h]; Excavator (With Bucket) [10.88 h]; Water Tanker [10.88 h]; Dump Truck [10.88 h]; Roller Compactor [10.88 h]; Cable 13.8 kV 3Cx 500 mm² Al XLPE,/LLDPE / Unarmored [1700.04] |
| B2.33 71 49.23.010 | Cable Pulling (60.00% Completed) |  | 2026-09-19 → 2026-09-15 A (-4d) | 7.6d → 6d | 60% → 100% | 113.4d → none |  | was named Cable Pulling; resources Labor [62.37 h]; Foreman [31.18 h]; Surveyor [31.18 h]; Surveyor Helper [31.18 h]; Electrician [31.18 h]; Cable 13.8 kV 3Cx 500 mm² Al XLPE,/LLDPE / Unarmored [681.79] → Labor [37.42 h]; Foreman [18.71 h]; Surveyor [18.71 h]; Surveyor Helper [18.71 h]; Electrician [18.71 h]; Cable 13.8 kV 3Cx 500 mm² Al XLPE,/LLDPE / Unarmored [409.08] |
| B2.33 71 19 17 | Backfilling (20.00% Completed) |  | 2026-09-21 → 2026-09-15 A (-6d) | 6d → 2d | 20% → 100% | 111d → none |  | was named Backfilling; resources Labor [77.96 h]; Foreman [38.98 h]; Operator [77.96 h]; Surveyor [38.98 h]; Surveyor Helper [38.98 h]; Loader [40 h]; Water Tanker [40 h]; Dump Truck [40 h]; Plate Compactor [40 h]; Cable 13.8 kV 3Cx 500 mm² Al XLPE,/LLDPE / Unarmored [2500.05] → Labor [15.59 h]; Foreman [7.8 h]; Operator [15.59 h]; Surveyor [7.8 h]; Surveyor Helper [7.8 h]; Loader [8 h]; Water Tanker [8 h]; Dump Truck [8 h]; Plate Compactor [8 h]; Cable 13.8 kV 3Cx 500 mm² Al XLPE,/LLDPE / Unarmored [500.01] |
| MV Replacing | **Cable Replacement** | 2026-09-29 → 2026-10-19 (+20d) | 2026-10-19 → 2026-11-08 (+20d) |  |  |  |  |  |
| B2.33 71 49.23.061 | Excavation | 2026-09-29 → 2026-10-19 (+20d) | 2026-10-03 → 2026-10-22 (+19d) |  |  | 32.86d → 31.18d | B2.33 71 19 16 → B2.33 71 19 16_R |  |
| B2.33 71 49.23.062 | Old Cable Grubbing | 2026-10-03 → 2026-10-22 (+19d) | 2026-10-07 → 2026-10-27 (+20d) |  |  | 32.86d → 31.18d |  |  |
| B2.33 71 49.23.063 | New Cable Installation | 2026-10-07 → 2026-10-27 (+20d) | 2026-10-12 → 2026-11-01 (+20d) |  |  | 32.86d → 31.18d |  |  |
| B2.33 71 49.23.064 | Backfilling & Warrning Tape | 2026-10-12 → 2026-11-01 (+20d) | 2026-10-19 → 2026-11-08 (+20d) |  |  | 32.86d → 31.18d |  |  |
| Street Lighting | **Street Lighting** |  | 2026-10-14 → 2026-11-14 (+31d) |  |  |  |  |  |
| Cables | **Cables** |  | 2026-09-22 → 2026-10-21 (+29d) |  |  |  |  |  |
| 4C,10+1C,10mm2 | **4C,10+1C,10mm2** |  | 2026-09-22 → 2026-10-21 (+29d) |  |  |  |  |  |
| B2.33 71 19 18 | Land Adjustment (50.00% Completed) |  | 2026-09-17 → 2026-09-15 A (-2d) | 6.5d → 5d | 50% → 100% | 114.5d → none |  | was named Land Adjustment; resources Labor [46.78 h]; Foreman [23.39 h]; Operator [31.18 h]; Surveyor [7.8 h]; Surveyor Helper [7.8 h]; Excavator (With Bucket) [24 h]; Water Tanker [24 h]; Dump Truck [24 h]; Roller Compactor [24 h]; SL Cable, Copper 4x10mm2/ CU/XLPE/SWA/PVC + 1x10mm2 CU/PVC [416.5] → Labor [23.39 h]; Foreman [11.69 h]; Operator [15.59 h]; Surveyor [3.9 h]; Surveyor Helper [3.9 h]; Excavator (With Bucket) [12 h]; Water Tanker [12 h]; Dump Truck [12 h]; Roller Compactor [12 h]; SL Cable, Copper 4x10mm2/ CU/XLPE/SWA/PVC + 1x10mm2 CU/PVC [208.25] |
| B2.33 71 49.23.64 | Cable Pulling (50.00% Completed) |  | 2026-09-19 → 2026-09-15 A (-4d) | 5.5d → 3d | 50% → 100% | 62.5d → none |  | was named Cable Pulling; resources Labor [77.96 h]; Foreman [38.98 h]; Surveyor [38.98 h]; Surveyor Helper [38.98 h]; Electrician [38.98 h]; SL Cable, Copper 4x10mm2/ CU/XLPE/SWA/PVC + 1x10mm2 CU/PVC [1249.49] → Labor [38.98 h]; Foreman [19.49 h]; Surveyor [19.49 h]; Surveyor Helper [19.49 h]; Electrician [19.49 h]; SL Cable, Copper 4x10mm2/ CU/XLPE/SWA/PVC + 1x10mm2 CU/PVC [624.75] |
| B2.33 71 19 19 | Backfilling | 2026-09-19 → 2026-10-18 (+29d) | 2026-09-22 → 2026-10-21 (+29d) |  |  | 62.5d → 39.68d | B2.33 71 49.23.64 → B2.33 71 49.23.64_R |  |
| SL Poles | **SL Poles** |  | 2026-09-26 → 2026-10-15 (+19d) |  |  |  |  |  |
| Pole (12 M Sngl Arm) | **Pole (12 M Single Arm)** |  | 2026-09-26 → 2026-10-15 (+19d) |  |  |  |  |  |
| B2.33 71 16.031 | Excavation |  |  |  |  |  | B2.33 71 19 17 SS → B6. 33 42 13.011 |  |
| B2.33 71 16.033 | Lighting Poles Installation Incl power box, Cables (84.00% Completed) |  | 2026-09-17 → 2026-09-15 A (-2d) | 9.3d → 7.3d | 84% → 100% | 22d → none |  | was named Lighting Poles Installation Incl power box, Cables; resources Labor [93.55 h]; Operator [93.55 h]; Mobile Crane [48 h]; Electrician [46.78 h]; Lighting poles with 1 arm, height of ( 12 ) meters [10.8] → Labor [78.59 h]; Operator [78.59 h]; Mobile Crane [40.32 h]; Electrician [39.29 h]; Lighting poles with 1 arm, height of ( 12 ) meters [9.07] |
| B2.33 71 16.034 | Lighting Luminares Inst (84.00% Completed) |  | 2026-09-17 → 2026-09-15 A (-2d) | 4.3d → 2.3d | 84% → 100% | 64d → none |  | was named Lighting Luminares Inst; resources Labor [62.37 h]; Operator [62.37 h]; Manlift [32 h]; Street Lighting( LED), Lamp Lumen: 24286, Luminare Lumen:20914, complete with control gear and lamp, (140) WATT. [22] → Labor [52.39 h]; Operator [52.39 h]; Manlift [26.88 h]; Street Lighting( LED), Lamp Lumen: 24286, Luminare Lumen:20914, complete with control gear and lamp, (140) WATT. [18.48] |
| B2.33 71 16.035 | Backfilling, Grouting & Chamfering | 2026-09-19 → 2026-10-10 (+21d) | 2026-09-26 → 2026-10-15 (+19d) |  |  | 64d → 62.32d | B2.33 71 16.034 → B2.33 71 16.034_R |  |
| Earthing | **Earthing** | 2026-09-19 → 2026-10-10 (+21d) | 2026-09-29 → 2026-11-14 (+46d) |  |  |  |  |  |
| B2.33 71 19 20 | Land Adjustment | 2026-09-19 → 2026-10-10 (+21d) | 2026-09-21 → 2026-10-12 (+21d) |  |  | 22d → 23.32d | B2.33 71 16.033 → B2.33 71 16.033_R |  |
| B2.33 71 19 21 | Earth Rods & Conduits | 2026-09-22 → 2026-10-13 (+21d) | 2026-09-26 → 2026-10-15 (+19d) |  |  | 22d → 23.32d |  |  |
| B2.33 71 19 22 | Backfilling | 2026-09-27 → 2026-11-11 (+45d) | 2026-09-29 → 2026-11-14 (+46d) |  |  | 22d → 1.32d |  |  |
| SL Pillars | **SL Pillars** | 2026-10-11 → 2026-10-31 (+20d) | 2026-10-14 → 2026-11-03 (+20d) |  |  |  |  |  |
| B2.33 71 26 03 | Pillars Installation (Internal Wiring) | 2026-10-11 → 2026-10-31 (+20d) | 2026-10-12 → 2026-11-01 (+20d) |  |  | 87d → 87.32d | B2.33 71 16.033, B2.33 71 49.23.64, DMM2-Proc-Delv-6518 → B2.33 71 16.033_R, B2.33 71 49.23.64_R, DMM2-Proc-Delv-6518_R |  |
| B2.33 71 26 041 | KWH meter mounting a frame installation | 2026-10-13 → 2026-11-02 (+20d) | 2026-10-14 → 2026-11-03 (+20d) |  |  | 87d → 87.32d |  |  |
| Earth & Road Works | **Earth & Road Works** |  | 2026-10-10 → 2026-11-19 (+40d) |  |  |  |  |  |
| Earth Layers | **Earth Layers** |  | 2026-09-22 → 2026-10-13 (+21d) |  |  |  |  |  |
| B1.2.32 11 13.01.8 | Subgrade (80.00% Completed) |  | 2026-09-22 → 2026-09-15 A (-7d) | 140d → 134d | 80% → 100% | 110d → none |  | was named Subgrade; resources Subgrade [17447.2]; Labor [93.55 h]; Foreman [46.78 h]; Operator [93.55 h]; Surveyor [46.78 h]; Surveyor Helper [46.78 h]; Grader [48 h]; Loader [48 h]; Water Tanker [48 h]; Dump Truck [48 h]; Plate Compactor [48 h]; Roller Compactor [48 h] → Subgrade [13957.7]; Labor [74.84 h]; Foreman [37.42 h]; Operator [74.84 h]; Surveyor [37.42 h]; Surveyor Helper [37.42 h]; Grader [38.4 h]; Loader [38.4 h]; Water Tanker [38.4 h]; Dump Truck [38.4 h]; Plate Compactor [38.4 h]; Roller Compactor [38.4 h] |
| B1.2.32 11 23.01.8 | Aggregate Base Course (60.58% Completed) |  | 2026-09-17 → 2026-09-15 A (-2d) | 111.47d → 109.52d | 61% → 100% | 114.05d → none |  | was named Aggregate Base Course; resources Aggregate base course [11631.5]; Labor [77.96 h]; Foreman [38.98 h]; Operator [77.96 h]; Surveyor [38.98 h]; Surveyor Helper [38.98 h]; Grader [40 h]; Loader [40 h]; Water Tanker [40 h]; Dump Truck [40 h]; Plate Compactor [40 h]; Roller Compactor [40 h] → Aggregate base course [7045.97]; Labor [47.23 h]; Foreman [23.61 h]; Operator [47.23 h]; Surveyor [23.61 h]; Surveyor Helper [23.61 h]; Grader [24.23 h]; Loader [24.23 h]; Water Tanker [24.23 h]; Dump Truck [24.23 h]; Plate Compactor [24.23 h]; Roller Compactor [24.23 h] |
| Interlock | **Interlock** | 2026-09-30 → 2026-11-15 (+46d) | 2026-10-03 → 2026-11-17 (+45d) |  |  |  |  |  |
| B1.2.32 14 13.13.8 | 60mm thick - Interlocking Block Pavers | 2026-09-30 → 2026-11-15 (+46d) | 2026-10-03 → 2026-11-17 (+45d) |  |  | 22d → 1.32d |  |  |
| Curbstone | **Curbstone** |  | 2026-09-17 → 2026-10-08 (+21d) |  |  |  |  |  |
| Pre Install | **Pre-Installation** |  | 2026-09-17 → 2026-10-08 (+21d) |  |  |  |  |  |
| 32 16 13.031 | Excavation (10.00% Completed) |  | 2026-09-17 → 2026-09-15 A (-2d) | 2d → 4.3d | 10% → 100% | 114d → none |  | was named Excavation; resources Curb Stone, Type K1 [52.26]; Labor [31.18 h]; Foreman [15.59 h]; Operator [31.18 h]; Surveyor [15.59 h]; Surveyor Helper [15.59 h]; JCB [16 h]; Water Tanker [16 h]; Dump Truck [16 h]; Plate Compactor [16 h] → Curb Stone, Type K1 [5.23]; Labor [3.12 h]; Foreman [1.56 h]; Operator [3.12 h]; Surveyor [1.56 h]; Surveyor Helper [1.56 h]; JCB [1.6 h]; Water Tanker [1.6 h]; Dump Truck [1.6 h]; Plate Compactor [1.6 h] |
| 32 16 13.032 | PCC (10.00% Completed) |  | 2026-09-17 → 2026-09-15 A (-2d) | 2d → 3.3d | 10% → 100% | 114d → none |  | was named PCC; resources Curb Stone, Type K1 [52.29]; Labor [31.18 h]; Mason [15.59 h]; Surveyor [15.59 h]; Surveyor Helper [15.59 h] → Curb Stone, Type K1 [5.23]; Labor [3.12 h]; Mason [1.56 h]; Surveyor [1.56 h]; Surveyor Helper [1.56 h] |
| 32 16 13.033 | Haunching (10.00% Completed) |  | 2026-09-17 → 2026-09-15 A (-2d) | 2d → 2.3d | 10% → 100% | 114.2d → none |  | was named Haunching; resources Curb Stone, Type K1 [52.26]; Labor [31.18 h]; Carpenter [15.59 h]; Mason [15.59 h]; Surveyor [15.59 h]; Surveyor Helper [15.59 h] → Curb Stone, Type K1 [5.23]; Labor [3.12 h]; Carpenter [1.56 h]; Mason [1.56 h]; Surveyor [1.56 h]; Surveyor Helper [1.56 h] |
| Installation | **Installation** |  | 2026-09-17 → 2026-10-08 (+21d) |  |  |  |  |  |
| B1.2.32 16.13.01.8 | Curb Stone, Type K1 (10.00% Completed) |  | 2026-09-17 → 2026-09-15 A (-2d) | 3d → 2.3d | 10% → 100% | 114.2d → none |  | was named Curb Stone, Type K1; resources Curb Stone, Type K1 [156.77]; Labor [31.18 h]; Foreman [15.59 h]; Mason [15.59 h]; Operator [31.18 h]; Surveyor [15.59 h]; Surveyor Helper [15.59 h]; JCB [16 h] → Curb Stone, Type K1 [15.68]; Labor [3.12 h]; Foreman [1.56 h]; Mason [1.56 h]; Operator [3.12 h]; Surveyor [1.56 h]; Surveyor Helper [1.56 h]; JCB [1.6 h] |

| ID | Task | Start | Finish | Duration | Complete | Total float | Predecessors | Other |
| --- | --- | --- | --- | --- | --- | --- | --- | --- |
| Finishing | **Finishing** |  | 2026-09-17 → 2026-10-08 (+21d) |  |  |  |  |  |
| 32 16 13.08 | Finishing, Fareface (10.00% Completed) |  | 2026-09-17 → 2026-09-15 A (-2d) | 2.1d → 0.3d | 10% → 100% | 50.2d → none |  | was named Finishing, Fareface; resources Curb Stone, Type K1 [34.84]; Labor [31.18 h]; Mason [15.59 h] → Curb Stone, Type K1 [3.48]; Labor [3.12 h]; Mason [1.56 h] |
| Asphalt Layers | **Asphalt Layers** |  | 2026-10-01 → 2026-10-20 (+19d) |  |  |  |  |  |
| B1.2.32 11 26.01.8 | Bituminous Base Course including Prime Coat (MC1) and tack coat (RC2) (72.00% Completed) |  | 2026-09-19 → 2026-09-15 A (-4d) | 88.32d → 86.08d | 72% → 100% | 0.76d → none |  | was named Bituminous Base Course including Prime Coat (MC1) and tack coat (RC2); resources Bituminous base course(Grading I - Class A) [7969.53]; Labor [124.74 h]; Foreman [62.37 h]; Operator [124.74 h]; Surveyor [62.37 h]; Surveyor Helper [62.37 h]; Dump Truck [64 h]; Roller Compactor [64 h]; MC1/RC2 Sprayer [64 h] → Bituminous base course(Grading I - Class A) [5738.06]; Labor [89.81 h]; Foreman [44.91 h]; Operator [89.81 h]; Surveyor [44.91 h]; Surveyor Helper [44.91 h]; Dump Truck [46.08 h]; Roller Compactor [46.08 h]; MC1/RC2 Sprayer [46.08 h] |
| B1.2.32 12 16.01.8 | Bituminous concrete Wearing Course, including tack coat (RC2) | 2026-09-26 → 2026-10-14 (+18d) | 2026-10-01 → 2026-10-20 (+19d) |  |  | 44.76d → 47d | B1.2.32 11 26.01.8, 10 14 53.08, 32 16 13.08 → B1.2.32 11 26.01.8_R, 10 14 53.08, 32 16 13.08_R |  |
| Pavement Marking | **Pavement Marking** | 2026-10-01 → 2026-10-20 (+19d) | 2026-10-07 → 2026-10-26 (+19d) |  |  |  |  |  |
| B1.2.32 17 23.02.8 | Retroreflective Thermoplastic Yellow, Traffic lines | 2026-10-01 → 2026-10-20 (+19d) | 2026-10-04 → 2026-10-22 (+18d) |  |  | 94.76d → 93d |  |  |
| B1.2.32 17 23.01.8 | Retroreflective Thermoplastic White Traffic lines | 2026-10-04 → 2026-10-22 (+18d) | 2026-10-07 → 2026-10-26 (+19d) |  |  | 94.76d → 93d |  |  |
| Traffic Signs | **Traffic Signs** | 2026-09-19 → 2026-10-08 (+19d) | 2026-10-10 → 2026-11-19 (+40d) |  |  |  |  |  |
| Pre Install | **Pre-Installation** | 2026-09-19 → 2026-10-08 (+19d) | 2026-09-26 → 2026-10-14 (+18d) |  |  |  |  |  |
| B2.31 23 00.221 | Excavation | 2026-09-19 → 2026-10-08 (+19d) | 2026-09-21 → 2026-10-11 (+20d) |  |  | 0.76d → 0d | B1.2.32 11 26.01.8 → B1.2.32 11 26.01.8_R |  |
| 10 14 53.08 | Foundation | 2026-09-21 → 2026-10-11 (+20d) | 2026-09-26 → 2026-10-14 (+18d) |  |  | 22.76d → 22d |  |  |
| Installation | **Installation** | 2026-10-04 → 2026-11-18 (+45d) | 2026-10-10 → 2026-11-19 (+40d) |  |  |  |  |  |
| B1.2.10 14 53.018 | 1 Sheet Alumenium, Single post | 2026-10-04 → 2026-11-18 (+45d) | 2026-10-06 → 2026-11-19 (+44d) |  |  | 97.76d → 73.32d |  |  |
| B1.2.10 14 53.028 | 2 Sheet Alumenium, Single post | 2026-10-07 → 2026-11-18 (+42d) | 2026-10-10 → 2026-11-19 (+40d) |  |  | 94.76d → 73.32d |  |  |
| Guard Rooms | **Guard Rooms** |  | 2026-11-25 → 2026-12-15 (+20d) |  |  |  |  |  |
| Utilities | **Underground Utilities** | 2026-09-16 → 2026-10-07 (+21d) | 2026-10-12 → 2026-11-01 (+20d) |  |  |  |  |  |
| B8.31 23 16.0115 | Gravel | 2026-09-16 → 2026-10-07 (+21d) | 2026-09-17 → 2026-10-08 (+21d) |  |  | 8d → 6.32d |  |  |
| B8.31 23 16.0117 | uPVC pipes ?160mm | 2026-09-19 → 2026-10-10 (+21d) | 2026-09-20 → 2026-10-11 (+21d) |  |  | 8d → 6.32d |  |  |
| B8.31 23 16.0119 | uPVC pipes ?110mm | 2026-09-21 → 2026-10-12 (+21d) | 2026-09-22 → 2026-10-13 (+21d) |  |  | 8d → 6.32d |  |  |
| B8.31 23 16.0121 | uPVC pipes ?75mm | 2026-09-24 → 2026-10-14 (+20d) | 2026-09-26 → 2026-10-15 (+19d) |  |  | 8d → 6.32d |  |  |
| B8.31 23 16.0123 | uPVC pipes ?50mm | 2026-09-27 → 2026-10-17 (+20d) | 2026-09-28 → 2026-10-18 (+20d) |  |  | 8d → 6.32d |  |  |
| B8.31 23 16.0125 | PPR pipes ?32mm | 2026-09-29 → 2026-10-19 (+20d) | 2026-09-30 → 2026-10-20 (+20d) |  |  | 8d → 6.32d |  |  |
| B8.31 23 16.0127 | PPR pipes ?25mm | 2026-10-01 → 2026-10-21 (+20d) | 2026-10-03 → 2026-10-22 (+19d) |  |  | 8d → 6.32d |  |  |
| B8.31 23 16.0129 | PPR pipes ?20mm | 2026-10-01 → 2026-10-21 (+20d) | 2026-10-03 → 2026-10-22 (+19d) |  |  | 8d → 6.32d |  |  |
| B8.31 23 16.0131 | Scupper ?110mm | 2026-10-04 → 2026-10-24 (+20d) | 2026-10-05 → 2026-10-25 (+20d) |  |  | 8d → 6.32d |  |  |
| B8.31 23 16.0133 | Clean out ?110mm | 2026-10-06 → 2026-10-26 (+20d) | 2026-10-07 → 2026-10-27 (+20d) |  |  | 8d → 6.32d |  |  |
| B8.31 23 16.0135 | Floor drain | 2026-10-08 → 2026-10-28 (+20d) | 2026-10-10 → 2026-10-29 (+19d) |  |  | 8d → 6.32d |  |  |
| B8.31 23 16.0137 | Manhole, dimensions 600mmX600mm | 2026-10-11 → 2026-10-31 (+20d) | 2026-10-12 → 2026-11-01 (+20d) |  |  | 8d → 6.32d |  |  |
| Walls & Columns | **Superstructure - Walls & Columns** |  | 2026-10-17 → 2026-11-05 (+19d) |  |  |  |  |  |
| B8.31 23 16.0143 | Concrete masonry unit, 200mm thick wall | 2026-10-13 → 2026-11-02 (+20d) | 2026-10-14 → 2026-11-03 (+20d) |  |  | 8d → 6.32d |  |  |
| B8.31 23 16.0145 | Concrete masonry unit, 150mm thick wall | 2026-10-15 → 2026-11-04 (+20d) | 2026-10-17 → 2026-11-05 (+19d) |  |  | 8d → 6.32d |  |  |
| Roof | **Superstructure - Roof** | 2026-09-21 → 2026-10-12 (+21d) | 2026-11-16 → 2026-12-06 (+20d) |  |  |  |  |  |
| B8.31 23 16.0147 | Roof Slab and beams | 2026-09-21 → 2026-10-12 (+21d) | 2026-09-22 → 2026-10-13 (+21d) |  |  | 43d → 41.32d |  |  |
| B8.31 23 16.0153 | Sloped screed for roof | 2026-09-24 → 2026-10-14 (+20d) | 2026-09-26 → 2026-10-15 (+19d) |  |  | 43d → 41.32d |  |  |
| B8.31 23 16.0187 | Water proofing Membrane for roof | 2026-09-27 → 2026-10-17 (+20d) | 2026-09-28 → 2026-10-18 (+20d) |  |  | 43d → 41.32d |  |  |
| B8.31 23 16.01111 | 50mm Extruded polystyrene insulation for roof | 2026-09-29 → 2026-10-19 (+20d) | 2026-09-30 → 2026-10-20 (+20d) |  |  | 43d → 41.32d |  |  |
| B8.31 23 16.01135 | Water proofing Membrane with protection board | 2026-11-11 → 2026-12-01 (+20d) | 2026-11-11 → 2026-12-01 (+20d) |  |  | 8d → 6.32d |  |  |
| B8.31 23 16.01145 | 50mm foam concrete for roof layers | 2026-11-12 → 2026-12-02 (+20d) | 2026-11-14 → 2026-12-03 (+19d) |  |  | 8d → 6.32d |  |  |
| B8.31 23 16.01149 | Stone coping 30mm thickness | 2026-11-15 → 2026-12-05 (+20d) | 2026-11-16 → 2026-12-06 (+20d) |  |  | 8d → 6.32d |  |  |
| Enclosure | **Enclosure & Weatherproofing** | 2026-10-18 → 2026-11-07 (+20d) | 2026-10-31 → 2026-11-19 (+19d) |  |  |  |  |  |
| B8.31 23 16.0149 | Aluminum window W01 size (1.3m x 1.4m) | 2026-10-18 → 2026-11-07 (+20d) | 2026-10-18 → 2026-11-07 (+20d) |  |  | 18d → 16.32d |  |  |
| B8.31 23 16.0155 | Aluminum window W02 size (0.6m x 0.9m) | 2026-10-19 → 2026-11-08 (+20d) | 2026-10-20 → 2026-11-09 (+20d) |  |  | 18d → 16.32d |  |  |
| B8.31 23 16.0189 | External plastering | 2026-10-21 → 2026-11-10 (+20d) | 2026-10-25 → 2026-11-14 (+20d) |  |  | 18d → 16.32d |  |  |
| B8.31 23 16.01113 | Water proofing Membrane with 50mm screed protection | 2026-10-26 → 2026-11-15 (+20d) | 2026-10-27 → 2026-11-16 (+20d) |  |  | 18d → 16.32d |  |  |
| B8.31 23 16.01137 | External painting | 2026-10-28 → 2026-11-17 (+20d) | 2026-10-31 → 2026-11-19 (+19d) |  |  | 18d → 16.32d |  |  |
| Interior & MEP | **Interior & MEP** | 2026-10-18 → 2026-11-07 (+20d) | 2026-11-25 → 2026-12-15 (+20d) |  |  |  |  |  |
| B8.31 23 16.0151 | Internal plastering | 2026-10-18 → 2026-11-07 (+20d) | 2026-10-19 → 2026-11-08 (+20d) |  |  | 8d → 6.32d |  |  |
| B8.31 23 16.0157 | Cementitious Water proofing for wet areas | 2026-10-20 → 2026-11-09 (+20d) | 2026-10-21 → 2026-11-10 (+20d) |  |  | 8d → 6.32d |  |  |
| Mechanical | **Mechanical** | 2026-10-24 → 2026-11-09 (+16d) | 2026-10-27 → 2026-11-12 (+16d) |  |  |  |  |  |
| B8.31 23 16.0159 | DX wall mounted Split/AC | 2026-10-24 → 2026-11-09 (+16d) | 2026-10-25 → 2026-11-10 (+16d) |  |  | 17d → 18.32d |  |  |
| B8.31 23 16.0191 | EF-01 Exhaust axial fan | 2026-10-26 → 2026-11-11 (+16d) | 2026-10-27 → 2026-11-12 (+16d) |  |  | 17d → 18.32d |  |  |
| Plumb & Elec | **Plumbing & Electrical** | 2026-10-20 → 2026-11-09 (+20d) | 2026-11-25 → 2026-12-15 (+20d) |  |  |  |  |  |
| B8.31 23 16.0177 | 20A DOUBLE POLE SWITCH | 2026-10-20 → 2026-11-09 (+20d) | 2026-10-21 → 2026-11-10 (+20d) |  |  | 13d → 11.32d |  |  |
| B8.31 23 16.0179 | 13A SPUR OUTLET, For guard room 1&2 | 2026-10-22 → 2026-11-11 (+20d) | 2026-10-24 → 2026-11-12 (+19d) |  |  | 13d → 11.32d |  |  |
| B8.31 23 16.0161 | Electrical Water Heater 50L | 2026-10-28 → 2026-11-14 (+17d) | 2026-10-29 → 2026-11-15 (+17d) |  |  | 17d → 18.32d |  |  |
| B8.31 23 16.0163 | DB-MGR Panel | 2026-10-31 → 2026-11-17 (+17d) | 2026-11-01 → 2026-11-18 (+17d) |  |  | 17d → 17.32d |  |  |
| B8.31 23 16.0181 | 13A SINGLE SWITCH SOCKET OUTLET | 2026-10-28 → 2026-11-17 (+20d) | 2026-10-29 → 2026-11-18 (+20d) |  |  | 10d → 8.32d |  |  |
| B8.31 23 16.0165 | Grounding and lightning system | 2026-11-02 → 2026-11-19 (+17d) | 2026-11-03 → 2026-11-21 (+18d) |  |  | 17d → 17.32d |  |  |
| B8.31 23 16.0183 | 13A DOUBLE SWITCH SOCKET OUTLET | 2026-10-31 → 2026-11-19 (+19d) | 2026-11-01 → 2026-11-21 (+20d) |  |  | 10d → 8.32d |  |  |
| B8.31 23 16.0167 | Fire alarm system | 2026-11-04 → 2026-11-22 (+18d) | 2026-11-05 → 2026-11-23 (+18d) |  |  | 17d → 17.32d |  |  |
| B8.31 23 16.0169 | Data/ voice RJ45 outlet include CAT6A cable | 2026-11-17 → 2026-12-07 (+20d) | 2026-11-18 → 2026-12-08 (+20d) |  |  | 8d → 6.32d |  |  |
| B8.31 23 16.0171 | RJ45 connector include CAT6A cable for security cameras | 2026-11-19 → 2026-12-09 (+20d) | 2026-11-21 → 2026-12-10 (+19d) |  |  | 8d → 6.32d |  |  |
| B8.31 23 16.0173 | Switch 20A, 1P, 60Hz Isolator/disconnect switches | 2026-11-22 → 2026-12-12 (+20d) | 2026-11-23 → 2026-12-13 (+20d) |  |  | 8d → 6.32d |  |  |
| B8.31 23 16.0175 | DB-GR Panel | 2026-11-24 → 2026-12-14 (+20d) | 2026-11-25 → 2026-12-15 (+20d) |  |  | 8d → 6.32d |  |  |
| B8.31 23 16.0193 | 4Cx 6mm2 + 1Cx6mm2 Cu/XLPE/PVC FROM KWHM to DB-MGR | 2026-11-24 → 2026-12-14 (+20d) | 2026-11-25 → 2026-12-15 (+20d) |  |  | 8d → 6.32d |  |  |
| Interior Finishes | **Interior Finishes** | 2026-10-22 → 2026-11-11 (+20d) | 2026-11-08 → 2026-11-28 (+20d) |  |  |  |  |  |
| B8.31 23 16.0195 | Porcelain flooring tiles size (600x600) | 2026-10-22 → 2026-11-11 (+20d) | 2026-10-25 → 2026-11-14 (+20d) |  |  | 8d → 6.32d |  |  |
| B8.31 23 16.01117 | Raised floor finish | 2026-10-26 → 2026-11-15 (+20d) | 2026-10-28 → 2026-11-17 (+20d) |  |  | 18d → 16.32d |  |  |
| B8.31 23 16.0197 | Ceramic wall tiles size (300x300) mm | 2026-10-26 → 2026-11-15 (+20d) | 2026-10-28 → 2026-11-17 (+20d) |  |  | 8d → 6.32d |  |  |

| ID | Task | Start | Finish | Duration | Complete | Total float | Predecessors | Other |
| --- | --- | --- | --- | --- | --- | --- | --- | --- |
| B8.31 23 16.01107 | Porcelain flooring tiles size (300x300) | 2026-10-29 → 2026-11-18 (+20d) | 2026-11-01 → 2026-11-21 (+20d) |  |  | 8d → 6.32d |  |  |
| B8.31 23 16.01109 | Porcelain flooring tiles size (500x500) | 2026-11-02 → 2026-11-22 (+20d) | 2026-11-04 → 2026-11-24 (+20d) |  |  | 8d → 6.32d |  |  |
| B8.31 23 16.0185 | Internal painting | 2026-11-02 → 2026-11-22 (+20d) | 2026-11-04 → 2026-11-24 (+20d) |  |  | 10d → 8.32d |  |  |
| B8.31 23 16.01115 | Porcelain skirting 100mm height | 2026-11-05 → 2026-11-25 (+20d) | 2026-11-08 → 2026-11-28 (+20d) |  |  | 9d → 7.32d |  |  |
| B8.31 23 16.0199 | Gypsum board ceiling, including paint | 2026-11-05 → 2026-11-25 (+20d) | 2026-11-07 → 2026-11-26 (+19d) |  |  | 10d → 8.32d |  |  |
| Fixtures, Equipment | **Fixtures, Equipment & Final Connections** | 2026-11-01 → 2026-11-21 (+20d) | 2026-11-19 → 2026-12-09 (+20d) |  |  |  |  |  |
| Doors | **Install Doors** | 2026-11-09 → 2026-11-29 (+20d) | 2026-11-15 → 2026-12-05 (+20d) |  |  |  |  |  |
| B8.31 23 16.01139 | Steel Door SD1 | 2026-11-09 → 2026-11-29 (+20d) | 2026-11-10 → 2026-11-30 (+20d) |  |  | 9d → 7.32d |  |  |
| B8.31 23 16.01141 | Wood Door TD1 | 2026-11-11 → 2026-12-01 (+20d) | 2026-11-12 → 2026-12-02 (+20d) |  |  | 9d → 7.32d |  |  |
| B8.31 23 16.01143 | Wood Door TD2 | 2026-11-14 → 2026-12-03 (+19d) | 2026-11-15 → 2026-12-05 (+20d) |  |  | 9d → 7.32d |  |  |
| Sanitarywares | **Install Sanitarywares** | 2026-11-05 → 2026-11-25 (+20d) | 2026-11-10 → 2026-11-30 (+20d) |  |  |  |  |  |
| B8.31 23 16.01119 | Toilet | 2026-11-05 → 2026-11-25 (+20d) | 2026-11-07 → 2026-11-26 (+19d) |  |  | 8d → 6.32d |  |  |
| B8.31 23 16.01121 | Shower | 2026-11-08 → 2026-11-28 (+20d) | 2026-11-09 → 2026-11-29 (+20d) |  |  | 8d → 6.32d |  |  |
| B8.31 23 16.01123 | Semi pedestal sink | 2026-11-10 → 2026-11-30 (+20d) | 2026-11-10 → 2026-11-30 (+20d) |  |  | 8d → 6.32d |  |  |
| Tech | **Install Final Electrical & Tech Components** | 2026-11-01 → 2026-11-21 (+20d) | 2026-11-19 → 2026-12-09 (+20d) |  |  |  |  |  |
| B8.31 23 16.01147 | WALL MOUNTED BULK HEAD OUTDOOR LED 15 WATTS, IP65 | 2026-11-01 → 2026-11-21 (+20d) | 2026-11-02 → 2026-11-22 (+20d) |  |  | 18d → 16.32d |  |  |
| B8.31 23 16.01131 | Data Cabinet including all devices 12U | 2026-11-05 → 2026-11-25 (+20d) | 2026-11-07 → 2026-11-26 (+19d) |  |  | 10d → 8.32d |  |  |
| B8.31 23 16.01101 | 50-inch screen | 2026-11-08 → 2026-11-28 (+20d) | 2026-11-09 → 2026-11-29 (+20d) |  |  | 10d → 8.32d |  |  |
| B8.31 23 16.01133 | PC workstation | 2026-11-10 → 2026-11-30 (+20d) | 2026-11-11 → 2026-12-01 (+20d) |  |  | 10d → 8.32d |  |  |
| B8.31 23 16.01125 | ROUND RECESSED LED 11.5 WATTS, IP20 | 2026-11-16 → 2026-12-06 (+20d) | 2026-11-17 → 2026-12-07 (+20d) |  |  | 9d → 7.32d |  |  |
| B8.31 23 16.01127 | ROUND RECESSED LED 11.5 WATTS, IP20, with Emergency | 2026-11-18 → 2026-12-08 (+20d) | 2026-11-19 → 2026-12-09 (+20d) |  |  | 9d → 7.32d |  |  |
| B8.31 23 16.01129 | ROUND RECESSED LED 11.5 WATTS, IP44 | 2026-11-18 → 2026-12-08 (+20d) | 2026-11-19 → 2026-12-09 (+20d) |  |  | 9d → 7.32d |  |  |
| Fire | **Install Fire Equipments** | 2026-11-12 → 2026-12-02 (+20d) | 2026-11-16 → 2026-12-06 (+20d) |  |  |  |  |  |
| B8.31 23 16.01103 | CO2 fire extinguishers | 2026-11-12 → 2026-12-02 (+20d) | 2026-11-14 → 2026-12-03 (+19d) |  |  | 10d → 8.32d |  |  |
| B8.31 23 16.01105 | Powder fire extinguishers | 2026-11-15 → 2026-12-05 (+20d) | 2026-11-16 → 2026-12-06 (+20d) |  |  | 10d → 8.32d |  |  |
| Potable Water PumpST | **Potable Water Pump Station** |  | 2026-11-26 → 2026-12-16 (+20d) |  |  |  |  |  |
| B3.2.31 23 16.01 | Excavation |  |  |  |  |  | B3.33 14 11.01.0114, B1.1.31 23 23.102, B3.33 14 11.01.013 SS, B3.33 14 11.01.023 SS → B3.33 14 11.01.0114, B1.1.31 23 23.102 |  |
| Superstructure | **Superstructure** |  | 2026-09-21 → 2026-10-10 (+19d) |  |  |  |  |  |
| B3.2.32 11 23.01.39 | Roof Slab & Beams Construction (75.00% Completed) |  | 2026-09-17 → 2026-09-15 A (-2d) | 37d → 36d | 75% → 100% | 28d → none |  | was named Roof Slab & Beams Construction; resources Labor [62.37 h]; Carpenter [31.18 h]; Steelfixer [31.18 h]; Mason [31.18 h]; Surveyor [31.18 h]; Surveyor Helper [31.18 h]; Roof Slab and beams for Potable water pump station & Potable water tank & chlorination [295] → Labor [46.78 h]; Carpenter [23.39 h]; Steelfixer [23.39 h]; Mason [23.39 h]; Surveyor [23.39 h]; Surveyor Helper [23.39 h]; Roof Slab and beams for Potable water pump station & Potable water tank & chlorination [221.25] |
| B3.2.32 11 23.01.27 | CMU (Concrete Masonry Unit) Walls Construction (75.00% Completed) |  | 2026-09-21 → 2026-09-15 A (-6d) | 18.5d → 17d | 75% → 100% | 35d → none | B3.2.32 11 23.01.19, DMM2-Proc-Delv-7293 FF → B3.2.32 11 23.01.19 | was named CMU (Concrete Masonry Unit) Walls Construction; resources Labor [93.55 h]; Mason [46.78 h]; Operator [93.55 h]; JCB [48 h]; Concrete masonry unit, 200mm thick wall; for Potable water pump station, for Potable water tank, and for chlorination [643] → Labor [70.17 h]; Mason [35.08 h]; Operator [70.17 h]; JCB [36 h]; Concrete masonry unit, 200mm thick wall; for Potable water pump station, for Potable water tank, and for chlorination [482.25] |
| 1 | **Building Envelope & Waterproofing** | 2026-09-16 → 2026-10-07 (+21d) | 2026-11-24 → 2026-12-14 (+20d) |  |  |  |  |  |
| B3.2.32 11 23.01.21 | Sloped Screed for Roof | 2026-09-16 → 2026-10-07 (+21d) | 2026-09-20 → 2026-10-11 (+21d) |  |  | 48d → 46.32d |  |  |
| B3.2.32 11 23.01.43 | External Plastering | 2026-09-16 → 2026-10-07 (+21d) | 2026-09-20 → 2026-10-11 (+21d) |  |  | 30d → 28.32d |  |  |
| B3.2.32 11 23.01.49 | Waterproofing Membrane for Roof | 2026-09-19 → 2026-10-10 (+21d) | 2026-09-20 → 2026-10-11 (+21d) |  |  | 46d → 44.32d | B3.2.32 11 23.01.39 → B3.2.32 11 23.01.39_R |  |
| B3.2.32 11 23.01.29 | Geotextile Membrane for Roof | 2026-09-21 → 2026-10-12 (+21d) | 2026-09-22 → 2026-10-13 (+21d) |  |  | 48d → 46.32d |  |  |
| B3.2.32 11 23.01.65 | Water proofing with 50mm screed protection | 2026-09-21 → 2026-10-12 (+21d) | 2026-09-22 → 2026-10-13 (+21d) |  |  | 44d → 42.32d |  |  |
| B3.2.32 11 23.01.41 | 50mm Foam Concrete for Roof | 2026-09-24 → 2026-10-14 (+20d) | 2026-09-26 → 2026-10-15 (+19d) |  |  | 48d → 46.32d |  |  |
| B3.2.32 11 23.01.79 | Stainless steel at top of tank size of 950x950mm | 2026-09-24 → 2026-10-14 (+20d) | 2026-09-26 → 2026-10-15 (+19d) |  |  | 44d → 42.32d | B3.2.32 11 23.01.49, B3.2.32 11 23.01.65, B3.2.32 11 23.01.39 → B3.2.32 11 23.01.49, B3.2.32 11 23.01.65, B3.2.32 11 23.01.39_R |  |
| B3.2.32 11 23.01.51 | Gravel for Roof | 2026-09-27 → 2026-10-17 (+20d) | 2026-09-28 → 2026-10-18 (+20d) |  |  | 48d → 46.32d |  |  |
| B3.2.32 11 23.01.69 | Stone Copping Installation | 2026-09-29 → 2026-10-19 (+20d) | 2026-09-30 → 2026-10-20 (+20d) |  |  | 48d → 46.32d |  |  |
| B3.2.32 11 23.01.250 | External Painting | 2026-11-23 → 2026-12-13 (+20d) | 2026-11-24 → 2026-12-14 (+20d) |  |  | 5d → 3.32d |  |  |
| 2 | **Interior Finishes & Fixed Installations** | 2026-09-16 → 2026-10-07 (+21d) | 2026-11-04 → 2026-11-24 (+20d) |  |  |  |  |  |
| B3.2.32 11 23.01.31 | Lean Concrete for Equipment Pads | 2026-09-16 → 2026-10-07 (+21d) | 2026-09-19 → 2026-10-10 (+21d) |  |  | 29d → 27.32d |  |  |
| B3.2.32 11 23.01.33 | Stairs Construction | 2026-10-13 → 2026-11-02 (+20d) | 2026-10-15 → 2026-11-04 (+20d) |  |  | 18d → 16.32d |  |  |
| B3.2.32 11 23.01.45 | Internal Plastering | 2026-10-17 → 2026-11-05 (+19d) | 2026-10-19 → 2026-11-08 (+20d) |  |  | 18d → 16.32d |  |  |
| B3.2.32 11 23.01.63 | Water proofing Membrane with protection board | 2026-10-20 → 2026-11-09 (+20d) | 2026-10-22 → 2026-11-11 (+20d) |  |  | 21d → 19.32d |  |  |
| B3.2.32 11 23.01.71 | Internal Painting (Acrylic/Emulsion) | 2026-11-03 → 2026-11-23 (+20d) | 2026-11-04 → 2026-11-24 (+20d) |  |  | 12d → 10.32d |  |  |
| B3.2.32 11 23.01.91 | Epoxy Paint for Floors & Non-Toxic Epoxy for Tank | 2026-11-03 → 2026-11-23 (+20d) | 2026-11-04 → 2026-11-24 (+20d) |  |  | 12d → 10.32d |  |  |
| 3 | **Mechanical & Piping Rough-In** | 2026-09-24 → 2026-10-14 (+20d) | 2026-11-15 → 2026-12-05 (+20d) |  |  |  |  |  |
| B3.2.32 11 23.01.53 | Overhead Crane Installation | 2026-10-01 → 2026-10-21 (+20d) | 2026-10-03 → 2026-10-22 (+19d) |  |  | 18d → 16.32d | B3.2.32 11 23.01.39, DMM2-Proc-Delv-2538 → B3.2.32 11 23.01.39_R, DMM2-Proc-Delv-2538_R |  |
| B3.2.32 11 23.01.73 | Surge Tank | 2026-10-17 → 2026-11-05 (+19d) | 2026-10-18 → 2026-11-07 (+20d) |  |  | 13d → 11.32d |  |  |
| B3.2.32 11 23.01.93 | Control Panel | 2026-10-17 → 2026-11-05 (+19d) | 2026-10-18 → 2026-11-07 (+20d) |  |  | 13d → 11.32d | B3.2.32 11 23.01.53, B3.2.32 11 23.01.73 SS, DMM2-Proc-Delv-3828 → B3.2.32 11 23.01.53, B3.2.32 11 23.01.73 SS, DMM2-Proc-Delv-3828_R |  |
| 1 | **Major Equipment** | 2026-10-04 → 2026-10-24 (+20d) | 2026-10-29 → 2026-11-18 (+20d) |  |  |  |  |  |
| 5 | **Pumps** | 2026-10-04 → 2026-10-24 (+20d) | 2026-10-12 → 2026-11-01 (+20d) |  |  |  |  |  |
| B3.2.32 11 23.01.81 | Water Pump - Vertical multistage cintrifugal pump | 2026-10-04 → 2026-10-24 (+20d) | 2026-10-05 → 2026-10-25 (+20d) |  |  | 22d → 20.32d |  |  |
| B3.2.32 11 23.01.123 | Submersible pump | 2026-10-05 → 2026-10-25 (+20d) | 2026-10-07 → 2026-10-27 (+20d) |  |  | 22d → 20.32d |  |  |
| B3.2.32 11 23.01.111 | Fire Pump - Vertical multistage cintrifugal (jockey) pump | 2026-10-06 → 2026-10-26 (+20d) | 2026-10-07 → 2026-10-27 (+20d) |  |  | 22d → 20.32d | B3.2.32 11 23.01.31, B3.2.32 11 23.01.53, B3.2.32 11 23.01.99 FF, DMM2-Proc-Delv-2518 → B3.2.32 11 23.01.31, B3.2.32 11 23.01.53, B3.2.32 11 23.01.99 FF, DMM2-Proc-Delv-2518_R |  |
| B3.2.32 11 23.01.99 | Fire Pump - split case cintrifugal pump | 2026-10-06 → 2026-10-26 (+20d) | 2026-10-07 → 2026-10-27 (+20d) |  |  | 22d → 20.32d | B3.2.32 11 23.01.31, B3.2.32 11 23.01.53, B3.2.32 11 23.01.81, DMM2-Proc-Delv-2518 → B3.2.32 11 23.01.31, B3.2.32 11 23.01.53, B3.2.32 11 23.01.81, DMM2-Proc-Delv-2518_R |  |
| B3.2.32 11 23.01.139 | Manually Operated Fuel Pump | 2026-10-08 → 2026-10-28 (+20d) | 2026-10-10 → 2026-10-29 (+19d) |  |  | 34d → 32.32d |  |  |
| B3.2.32 11 23.01.149 | Positive Displacement Rotary Type Pump | 2026-10-11 → 2026-10-31 (+20d) | 2026-10-12 → 2026-11-01 (+20d) |  |  | 34d → 32.32d |  |  |
| 1 | **Chlorination System** | 2026-10-20 → 2026-11-09 (+20d) | 2026-10-29 → 2026-11-18 (+20d) |  |  |  |  |  |
| B3.2.32 11 23.01.83 | Chlorine Cylinder racks | 2026-10-20 → 2026-11-09 (+20d) | 2026-10-21 → 2026-11-10 (+20d) |  |  | 4d → 2.32d |  |  |
| B3.2.32 11 23.01.101 | Chlorinators | 2026-10-22 → 2026-11-11 (+20d) | 2026-10-24 → 2026-11-12 (+19d) |  |  | 4d → 2.32d |  |  |
| B3.2.32 11 23.01.113 | Discharge Line Analyzer | 2026-10-22 → 2026-11-11 (+20d) | 2026-10-24 → 2026-11-12 (+19d) |  |  | 4d → 2.32d |  |  |
| B3.2.32 11 23.01.125 | Motive Water Pumps (Injection) | 2026-10-25 → 2026-11-14 (+20d) | 2026-10-26 → 2026-11-15 (+20d) |  |  | 4d → 2.32d |  |  |
| B3.2.32 11 23.01.127 | Motive Water Pumps (Water) | 2026-10-25 → 2026-11-14 (+20d) | 2026-10-26 → 2026-11-15 (+20d) |  |  | 4d → 2.32d |  |  |
| B3.2.32 11 23.01.137 | Control Panel | 2026-10-28 → 2026-11-17 (+20d) | 2026-10-29 → 2026-11-18 (+20d) |  |  | 3d → 1.32d | B3.2.32 11 23.01.31, B3.2.32 11 23.01.53, B3.2.32 11 23.01.83, B3.2.32 11 23.01.101, B3.2.32 11 23.01.113, B3.2.32 11 23.01.125, B3.2.32 11 23.01.127, DMM2-Proc-Delv-3828, B3.2.32 11 23.01.3 → B3.2.32 11 23.01.31, B3.2.32 11 23.01.53, B3.2.32 11 23.01.83, B3.2.32 11 23.01.101, B3.2.32 11 23.01.113, B3.2.32 11 23.01.125, B3.2.32 11 23.01.127, DMM2-Proc-Delv-3828_R, B3.2.32 11 23.01.3 |  |
| 2 | **Internal Piping & Valves Installation** | 2026-10-28 → 2026-11-17 (+20d) | 2026-11-15 → 2026-12-05 (+20d) |  |  |  |  |  |
| 1 | **Pipes** | 2026-10-28 → 2026-11-17 (+20d) | 2026-11-15 → 2026-12-05 (+20d) |  |  |  |  |  |
| 1 | **Double Flanged DI Pipes** | 2026-10-28 → 2026-11-17 (+20d) | 2026-11-03 → 2026-11-23 (+20d) |  |  |  |  |  |

| ID | Task | Start | Finish | Total float | Predecessors |
| --- | --- | --- | --- | --- | --- |
| B3.2.32 11 23.01.147 | Double Flanged DI Pipe ?60 mm | 2026-10-28 → 2026-11-17 (+20d) | 2026-10-29 → 2026-11-18 (+20d) | 9d → 7.32d | B3.2.32 11 23.01.101, B3.2.32 11 23.01.137 SS, B3.2.32 11 23.01.73, B3.2.32 11 23.01.93, B3.2.32 11 23.01.123, DMM2-Proc-Delv-3738 → B3.2.32 11 23.01.101, B3.2.32 11 23.01.137 SS, B3.2.32 11 23.01.73, B3.2.32 11 23.01.93, B3.2.32 11 23.01.123, DMM2-Proc-Delv-3738_R |
| B3.2.32 11 23.01.155 | Double Flanged DI Pipe ?80 mm | 2026-10-31 → 2026-11-19 (+19d) | 2026-11-01 → 2026-11-21 (+20d) | 7d → 5.32d | B3.2.32 11 23.01.101, B3.2.32 11 23.01.137, B3.2.32 11 23.01.73, B3.2.32 11 23.01.93, B3.2.32 11 23.01.123, B3.2.32 11 23.01.147 SS, DMM2-Proc-Delv-3738 → B3.2.32 11 23.01.101, B3.2.32 11 23.01.137, B3.2.32 11 23.01.73, B3.2.32 11 23.01.93, B3.2.32 11 23.01.123, B3.2.32 11 23.01.147 SS, DMM2-Proc-Delv-3738_R |
| B3.2.32 11 23.01.161 | Double Flanged DI Pipe ?100 mm | 2026-10-31 → 2026-11-19 (+19d) | 2026-11-01 → 2026-11-21 (+20d) | 7d → 5.32d | B3.2.32 11 23.01.101, B3.2.32 11 23.01.137, B3.2.32 11 23.01.73, B3.2.32 11 23.01.93, B3.2.32 11 23.01.123, B3.2.32 11 23.01.155 SS, DMM2-Proc-Delv-3738 → B3.2.32 11 23.01.101, B3.2.32 11 23.01.137, B3.2.32 11 23.01.73, B3.2.32 11 23.01.93, B3.2.32 11 23.01.123, B3.2.32 11 23.01.155 SS, DMM2-Proc-Delv-3738_R |
| B3.2.32 11 23.01.169 | Double Flanged DI Pipe ?200 mm | 2026-10-31 → 2026-11-19 (+19d) | 2026-11-01 → 2026-11-21 (+20d) | 7d → 5.32d | B3.2.32 11 23.01.101, B3.2.32 11 23.01.137, B3.2.32 11 23.01.73, B3.2.32 11 23.01.93, B3.2.32 11 23.01.123, B3.2.32 11 23.01.161 SS, DMM2-Proc-Delv-3738 → B3.2.32 11 23.01.101, B3.2.32 11 23.01.137, B3.2.32 11 23.01.73, B3.2.32 11 23.01.93, B3.2.32 11 23.01.123, B3.2.32 11 23.01.161 SS, DMM2-Proc-Delv-3738_R |
| B3.2.32 11 23.01.179 | Double Flanged DI Pipe ?300 mm | 2026-11-02 → 2026-11-22 (+20d) | 2026-11-03 → 2026-11-23 (+20d) | 7d → 5.32d | B3.2.32 11 23.01.101, B3.2.32 11 23.01.137, B3.2.32 11 23.01.73, B3.2.32 11 23.01.93, B3.2.32 11 23.01.123, B3.2.32 11 23.01.169, DMM2-Proc-Delv-3738 → B3.2.32 11 23.01.101, B3.2.32 11 23.01.137, B3.2.32 11 23.01.73, B3.2.32 11 23.01.93, B3.2.32 11 23.01.123, B3.2.32 11 23.01.169, DMM2-Proc-Delv-3738_R |
| B3.2.32 11 23.01.185 | Double Flanged DI Pipe ?350 mm | 2026-11-02 → 2026-11-22 (+20d) | 2026-11-03 → 2026-11-23 (+20d) | 7d → 5.32d | B3.2.32 11 23.01.101, B3.2.32 11 23.01.137, B3.2.32 11 23.01.73, B3.2.32 11 23.01.93, B3.2.32 11 23.01.123, B3.2.32 11 23.01.179 FF, DMM2-Proc-Delv-3738 → B3.2.32 11 23.01.101, B3.2.32 11 23.01.137, B3.2.32 11 23.01.73, B3.2.32 11 23.01.93, B3.2.32 11 23.01.123, B3.2.32 11 23.01.179 FF, DMM2-Proc-Delv-3738_R |
| 2 | **PPR Pipes** | 2026-11-04 → 2026-11-24 (+20d) | 2026-11-15 → 2026-12-05 (+20d) |  |  |
| B3.2.32 11 23.01.199 | PPR Pipes with ?25mm | 2026-11-04 → 2026-11-24 (+20d) | 2026-11-05 → 2026-11-25 (+20d) | 7d → 5.32d |  |
| B3.2.32 11 23.01.203 | PPR Pipes with ?32mm | 2026-11-07 → 2026-11-26 (+19d) | 2026-11-08 → 2026-11-28 (+20d) | 7d → 5.32d |  |
| B3.2.32 11 23.01.209 | PPR Pipes with ?40mm | 2026-11-09 → 2026-11-29 (+20d) | 2026-11-10 → 2026-11-30 (+20d) | 7d → 5.32d |  |
| B3.2.32 11 23.01.213 | Hose Bibb Installation | 2026-11-11 → 2026-12-01 (+20d) | 2026-11-12 → 2026-12-02 (+20d) | 7d → 5.32d |  |
| B3.2.32 11 23.01.217 | Emergency Shower Installation | 2026-11-14 → 2026-12-03 (+19d) | 2026-11-15 → 2026-12-05 (+20d) | 7d → 5.32d |  |
| 2 | **Valves** | 2026-10-28 → 2026-11-17 (+20d) | 2026-11-08 → 2026-11-28 (+20d) |  |  |
| 1 | **Gate Valves** | 2026-10-28 → 2026-11-17 (+20d) | 2026-11-05 → 2026-11-25 (+20d) |  |  |
| B3.2.32 11 23.01.157 | Manually operated Gate Valve DN60 | 2026-10-28 → 2026-11-17 (+20d) | 2026-10-29 → 2026-11-18 (+20d) | 19d → 17.32d |  |
| B3.2.32 11 23.01.163 | Manually operated Gate Valve DN80 | 2026-11-02 → 2026-11-22 (+20d) | 2026-11-03 → 2026-11-23 (+20d) | 13d → 11.32d |  |
| B3.2.32 11 23.01.171 | Manually operated Gate Valve DN100 | 2026-11-02 → 2026-11-22 (+20d) | 2026-11-03 → 2026-11-23 (+20d) | 17d → 15.32d |  |
| B3.2.32 11 23.01.181 | Manually operated Gate Valve DN200 | 2026-11-02 → 2026-11-22 (+20d) | 2026-11-03 → 2026-11-23 (+20d) | 13d → 11.32d |  |
| B3.2.32 11 23.01.193 | Manually operated Gate Valve DN350 | 2026-11-04 → 2026-11-24 (+20d) | 2026-11-05 → 2026-11-25 (+20d) | 15d → 13.32d |  |
| 2 | **Non Return Valves** | 2026-10-31 → 2026-11-19 (+19d) | 2026-11-05 → 2026-11-25 (+20d) |  |  |
| B3.2.32 11 23.01.165 | Non return Valve DN60 | 2026-10-31 → 2026-11-19 (+19d) | 2026-11-01 → 2026-11-21 (+20d) | 19d → 17.32d | B3.2.32 11 23.01.157, B3.2.32 11 23.01.147, DMM2-Proc-Delv-3758 → B3.2.32 11 23.01.157, B3.2.32 11 23.01.147, DMM2-Proc-Delv-3758_R |
| B3.2.32 11 23.01.187 | Non return Valve DN300 | 2026-11-04 → 2026-11-24 (+20d) | 2026-11-05 → 2026-11-25 (+20d) | 15d → 13.32d | B3.2.32 11 23.01.179, DMM2-Proc-Delv-3758 → B3.2.32 11 23.01.179, DMM2-Proc-Delv-3758_R |
| 3 | **Butterfly Valves** | 2026-11-04 → 2026-11-24 (+20d) | 2026-11-08 → 2026-11-28 (+20d) |  |  |
| B3.2.32 11 23.01.189 | Butterfly Valve DN200 | 2026-11-04 → 2026-11-24 (+20d) | 2026-11-05 → 2026-11-25 (+20d) | 13d → 11.32d | B3.2.32 11 23.01.169, B3.2.32 11 23.01.181, DMM2-Proc-Delv-2528 → B3.2.32 11 23.01.169, B3.2.32 11 23.01.181, DMM2-Proc-Delv-2528_R |
| B3.2.32 11 23.01.195 | Butterfly Valve DN300 | 2026-11-07 → 2026-11-26 (+19d) | 2026-11-08 → 2026-11-28 (+20d) | 13d → 11.32d | B3.2.32 11 23.01.179, B3.2.32 11 23.01.189, DMM2-Proc-Delv-2528 → B3.2.32 11 23.01.179, B3.2.32 11 23.01.189, DMM2-Proc-Delv-2528_R |
| 3 | **Flowmeters** | 2026-11-04 → 2026-11-24 (+20d) | 2026-11-08 → 2026-11-28 (+20d) |  |  |
| B3.2.32 11 23.01.173 | Electromagnetic Flowmeter DN80, PN16 | 2026-11-04 → 2026-11-24 (+20d) | 2026-11-05 → 2026-11-25 (+20d) | 13d → 11.32d | B3.2.32 11 23.01.163, B3.2.32 11 23.01.155, DMM2-Proc-Delv-3768 → B3.2.32 11 23.01.163, B3.2.32 11 23.01.155, DMM2-Proc-Delv-3768_R |
| B3.2.32 11 23.01.197 | Electromagnetic Flowmeter DN200, PN16 | 2026-11-07 → 2026-11-26 (+19d) | 2026-11-08 → 2026-11-28 (+20d) | 13d → 11.32d | B3.2.32 11 23.01.169, B3.2.32 11 23.01.181, B3.2.32 11 23.01.189, DMM2-Proc-Delv-3768, B3.2.32 11 23.01.173 → B3.2.32 11 23.01.169, B3.2.32 11 23.01.181, B3.2.32 11 23.01.189, DMM2-Proc-Delv-3768_R, B3.2.32 11 23.01.173 |
| Strainers | **Strainers** | 2026-11-11 → 2026-12-01 (+20d) | 2026-11-12 → 2026-12-02 (+20d) |  |  |
| B3.2. 22 05 23 .11 | Strainer DN80 | 2026-11-11 → 2026-12-01 (+20d) | 2026-11-12 → 2026-12-02 (+20d) | 9d → 7.32d |  |
| B3.2. 22 05 23 .12 | Strainer DN350 | 2026-11-11 → 2026-12-01 (+20d) | 2026-11-12 → 2026-12-02 (+20d) | 9d → 7.32d |  |
| 3 | **HVAC & Fire Suppression Fixture Installation** | 2026-10-01 → 2026-10-21 (+20d) | 2026-11-07 → 2026-11-26 (+19d) |  |  |
| Fans | **Fans** | 2026-10-01 → 2026-10-21 (+20d) | 2026-10-25 → 2026-11-14 (+20d) |  |  |
| B3.2.32 11 23.01.55 | Roof Mounted Fans | 2026-10-01 → 2026-10-21 (+20d) | 2026-10-03 → 2026-10-22 (+19d) | 22d → 20.32d | B3.2.32 11 23.01.39, B3.2.32 11 23.01.43, DMM2-Proc-Delv-7393 → B3.2.32 11 23.01.39_R, B3.2.32 11 23.01.43, DMM2-Proc-Delv-7393 |
| B3.2.32 11 23.01.85 | Exhaust Axial Fan | 2026-10-24 → 2026-11-12 (+19d) | 2026-10-25 → 2026-11-14 (+20d) | 3d → 1.32d | B3.2.32 11 23.01.39, B3.2.32 11 23.01.43, B3.2.32 11 23.01.55 FF, DMM2-Proc-Delv-7307 → B3.2.32 11 23.01.39_R, B3.2.32 11 23.01.43, B3.2.32 11 23.01.55 FF, DMM2-Proc-Delv-7307 |
| AC Units | **AC Units** | 2026-10-24 → 2026-11-12 (+19d) | 2026-10-25 → 2026-11-14 (+20d) |  |  |
| B3.2.32 11 23.01.103 | DX wall mounted Split/AC | 2026-10-24 → 2026-11-12 (+19d) | 2026-10-25 → 2026-11-14 (+20d) | 3d → 1.32d | B3.2.32 11 23.01.39, B3.2.32 11 23.01.43, B3.2.32 11 23.01.85 SS → B3.2.32 11 23.01.39_R, B3.2.32 11 23.01.43, B3.2.32 11 23.01.85 SS |
| FM200 System | **FM200 System** | 2026-10-26 → 2026-11-15 (+20d) | 2026-10-27 → 2026-11-16 (+20d) |  |  |
| B3.2.32 11 23.01.1 | FM200 system for Electrcal Room - Second Fix | 2026-10-26 → 2026-11-15 (+20d) | 2026-10-27 → 2026-11-16 (+20d) | 3d → 1.32d |  |
| B3.2.32 11 23.01.115 | FM200 system for Electrcal Room - First Fix | 2026-10-26 → 2026-11-15 (+20d) | 2026-10-27 → 2026-11-16 (+20d) | 3d → 1.32d | B3.2.32 11 23.01.39, B3.2.32 11 23.01.43, B3.2.32 11 23.01.103, DMM2-Proc-Delv-7305 → B3.2.32 11 23.01.39_R, B3.2.32 11 23.01.43, B3.2.32 11 23.01.103, DMM2-Proc-Delv-7305 |
| B3.2.32 11 23.01.3 | FM200 system for Electrcal Room - Final Fix | 2026-10-26 → 2026-11-15 (+20d) | 2026-10-27 → 2026-11-16 (+20d) | 3d → 1.32d |  |
| Fire Extinguishers | **Fire Extinguishers** | 2026-11-05 → 2026-11-25 (+20d) | 2026-11-07 → 2026-11-26 (+19d) |  |  |
| B3.2.32 11 23.01.270 | CO2 fire extinguishers | 2026-11-05 → 2026-11-25 (+20d) | 2026-11-07 → 2026-11-26 (+19d) | 16d → 14.32d |  |
| B3.2.32 11 23.01.280 | Powder fire extinguishers | 2026-11-05 → 2026-11-25 (+20d) | 2026-11-07 → 2026-11-26 (+19d) | 16d → 14.32d |  |
| 4 | **External & Underground Piping** | 2026-09-24 → 2026-10-14 (+20d) | 2026-10-15 → 2026-11-04 (+20d) |  |  |
| 1 | **Buried Pipes** | 2026-09-24 → 2026-10-14 (+20d) | 2026-10-05 → 2026-10-25 (+20d) |  |  |
| B3.2.32 11 23.01.13 | Buried DI Pipe ?80 mm | 2026-09-24 → 2026-10-14 (+20d) | 2026-09-26 → 2026-10-15 (+19d) | 35d → 33.32d | B3.2.31 23 16.01, B3.2.32 11 23.01.7, DMM2-Proc-Delv-3738 → B3.2.31 23 16.01, B3.2.32 11 23.01.7, DMM2-Proc-Delv-3738_R |
| B3.2.32 11 23.01.17 | Buried DI Pipe ?100 mm | 2026-09-27 → 2026-10-17 (+20d) | 2026-09-28 → 2026-10-18 (+20d) | 35d → 33.32d | B3.2.31 23 16.01, B3.2.32 11 23.01.7, B3.2.32 11 23.01.13, DMM2-Proc-Delv-3738 → B3.2.31 23 16.01, B3.2.32 11 23.01.7, B3.2.32 11 23.01.13, DMM2-Proc-Delv-3738_R |
| B3.2.32 11 23.01.23 | Buried DI Pipe ?200 mm | 2026-09-29 → 2026-10-19 (+20d) | 2026-09-30 → 2026-10-20 (+20d) | 35d → 33.32d | B3.2.31 23 16.01, B3.2.32 11 23.01.7, B3.2.32 11 23.01.17, DMM2-Proc-Delv-3738 → B3.2.31 23 16.01, B3.2.32 11 23.01.7, B3.2.32 11 23.01.17, DMM2-Proc-Delv-3738_R |
| B3.2.32 11 23.01.37 | Buried DI Pipe ?300 mm | 2026-10-01 → 2026-10-21 (+20d) | 2026-10-03 → 2026-10-22 (+19d) | 35d → 33.32d | B3.2.31 23 16.01, B3.2.32 11 23.01.7, B3.2.32 11 23.01.23, DMM2-Proc-Delv-3738 → B3.2.31 23 16.01, B3.2.32 11 23.01.7, B3.2.32 11 23.01.23, DMM2-Proc-Delv-3738_R |
| B3.2.32 11 23.01.57 | Buried DI Pipe ?350 mm | 2026-10-04 → 2026-10-24 (+20d) | 2026-10-05 → 2026-10-25 (+20d) | 35d → 33.32d | B3.2.31 23 16.01, B3.2.32 11 23.01.7, B3.2.32 11 23.01.37, DMM2-Proc-Delv-3738 → B3.2.31 23 16.01, B3.2.32 11 23.01.7, B3.2.32 11 23.01.37, DMM2-Proc-Delv-3738_R |
| 2 | **uPVC** | 2026-10-06 → 2026-10-26 (+20d) | 2026-10-07 → 2026-10-27 (+20d) |  |  |
| B3.2.32 11 23.01.87 | uPVC Pipes ?110mm | 2026-10-06 → 2026-10-26 (+20d) | 2026-10-07 → 2026-10-27 (+20d) | 35d → 33.32d |  |
| 3 | **Drains** | 2026-10-08 → 2026-10-28 (+20d) | 2026-10-15 → 2026-11-04 (+20d) |  |  |
| B3.2.32 11 23.01.105 | Trench drain | 2026-10-08 → 2026-10-28 (+20d) | 2026-10-10 → 2026-10-29 (+19d) | 35d → 33.32d |  |
| B3.2.32 11 23.01.117 | Scupper ?110mm | 2026-10-11 → 2026-10-31 (+20d) | 2026-10-12 → 2026-11-01 (+20d) | 35d → 33.32d |  |
| B3.2.32 11 23.01.129 | Manholes | 2026-10-13 → 2026-11-02 (+20d) | 2026-10-15 → 2026-11-04 (+20d) | 35d → 33.32d |  |
| 4 | **Electrical & Control Systems** | 2026-09-16 → 2026-10-07 (+21d) | 2026-11-26 → 2026-12-16 (+20d) |  |  |
| 5 | **Primary Power Installation** | 2026-09-16 → 2026-10-07 (+21d) | 2026-10-11 → 2026-10-31 (+20d) |  |  |
| 1 | **Generator** | 2026-09-16 → 2026-10-07 (+21d) | 2026-09-21 → 2026-10-12 (+21d) |  |  |
| B3.2.32 11 23.01.35 | Standby Diesel Generator | 2026-09-16 → 2026-10-07 (+21d) | 2026-09-21 → 2026-10-12 (+21d) | 43d → 41.32d |  |
| 2 | **Fuel Tank** | 2026-09-22 → 2026-10-13 (+21d) | 2026-09-24 → 2026-10-14 (+20d) |  |  |
| B3.2.32 11 23.01.47 | Underground Fuel Tank | 2026-09-22 → 2026-10-13 (+21d) | 2026-09-24 → 2026-10-14 (+20d) | 43d → 41.32d |  |
| 3 | **ATS** | 2026-10-10 → 2026-10-29 (+19d) | 2026-10-11 → 2026-10-31 (+20d) |  |  |
| B3.2.32 11 23.01.67 | Automatic Transfer Switch ATS | 2026-10-10 → 2026-10-29 (+19d) | 2026-10-11 → 2026-10-31 (+20d) | 31d → 29.32d |  |
| 4 | **Motor Control Center (MCC)** | 2026-10-10 → 2026-10-29 (+19d) | 2026-10-11 → 2026-10-31 (+20d) |  |  |
| B3.2.32 11 23.01.89 | MCC Installation | 2026-10-10 → 2026-10-29 (+19d) | 2026-10-11 → 2026-10-31 (+20d) | 31d → 29.32d | B3.2.32 11 23.01.19, B3.2.32 11 23.01.67 FF, DMM2-Proc-Delv-3808 → B3.2.32 11 23.01.19, B3.2.32 11 23.01.67 FF, DMM2-Proc-Delv-3808_R |
| Hand Holes | **Hand Holes** | 2026-09-19 → 2026-10-10 (+21d) | 2026-09-26 → 2026-10-15 (+19d) |  |  |
| B3.2. 26 05 43 .02 | Hand Hole (EHH-2) 400mm x 400mm x 600mm | 2026-09-19 → 2026-10-10 (+21d) | 2026-09-21 → 2026-10-12 (+21d) | 32d → 30.32d | B3.2.32 11 23.01.39, B3.2.31 23 16.01 → B3.2.32 11 23.01.39_R, B3.2.31 23 16.01 |
| B3.2. 26 05 43 .01 | Hand Hole (EHH-1) 600mm x 600mm x 800mm | 2026-09-22 → 2026-10-13 (+21d) | 2026-09-26 → 2026-10-15 (+19d) | 32d → 30.32d | B3.2.32 11 23.01.39, B3.2.31 23 16.01, B3.2. 26 05 43 .02 → B3.2.32 11 23.01.39_R, B3.2.31 23 16.01, B3.2. 26 05 43 .02 |

| ID | Task | Start | Finish | Total float | Predecessors |
| --- | --- | --- | --- | --- | --- |
| 2 | **Cable Tray, Conduit Installation & Power Cable Pulling** | 2026-10-31 → 2026-11-19 (+19d) | 2026-11-15 → 2026-12-05 (+20d) |  |  |
| B3.2.32 11 23.01.145 | 4x1Cx 630mm2 Cu/XLPE//PVC | 2026-10-31 → 2026-11-19 (+19d) | 2026-11-01 → 2026-11-21 (+20d) | 3d → 1.32d | B3.2.32 11 23.01.25, B3.2.32 11 23.01.27, B3.2.32 11 23.01.93, B3.2.32 11 23.01.73, B3.2.32 11 23.01.123, B3.2.32 11 23.01.137, B3.2. 26 05 43 .02, B3.2. 26 05 43 .01 → B3.2.32 11 23.01.25, B3.2.32 11 23.01.27_R, B3.2.32 11 23.01.93, B3.2.32 11 23.01.73, B3.2.32 11 23.01.123, B3.2.32 11 23.01.137, B3.2. 26 05 43 .02, B3.2. 26 05 43 .01 |
| B3.2.32 11 23.01.153 | 4Cx 10mm2 Cu/XLPE/SWA/PVC | 2026-11-02 → 2026-11-22 (+20d) | 2026-11-03 → 2026-11-23 (+20d) | 3d → 1.32d | B3.2.32 11 23.01.25, B3.2.32 11 23.01.27, B3.2.32 11 23.01.93, B3.2.32 11 23.01.73, B3.2.32 11 23.01.123, B3.2.32 11 23.01.137, B3.2.32 11 23.01.145, B3.2. 26 05 43 .02, B3.2. 26 05 43 .01 → B3.2.32 11 23.01.25, B3.2.32 11 23.01.27_R, B3.2.32 11 23.01.93, B3.2.32 11 23.01.73, B3.2.32 11 23.01.123, B3.2.32 11 23.01.137, B3.2.32 11 23.01.145, B3.2. 26 05 43 .02, B3.2. 26 05 43 .01 |
| B3.2.32 11 23.01.159 | 4/Cx35mm²+1Cx16mm² | 2026-11-04 → 2026-11-24 (+20d) | 2026-11-05 → 2026-11-25 (+20d) | 3d → 1.32d | B3.2.32 11 23.01.25, B3.2.32 11 23.01.27, B3.2.32 11 23.01.93, B3.2.32 11 23.01.73, B3.2.32 11 23.01.123, B3.2.32 11 23.01.137, B3.2.32 11 23.01.153, B3.2. 26 05 43 .02, B3.2. 26 05 43 .01 → B3.2.32 11 23.01.25, B3.2.32 11 23.01.27_R, B3.2.32 11 23.01.93, B3.2.32 11 23.01.73, B3.2.32 11 23.01.123, B3.2.32 11 23.01.137, B3.2.32 11 23.01.153, B3.2. 26 05 43 .02, B3.2. 26 05 43 .01 |
| B3.2.32 11 23.01.167 | 4/Cx6mm² Cu/XLPE/PVC + 1Cx6mm² Cu/PVC | 2026-11-07 → 2026-11-26 (+19d) | 2026-11-08 → 2026-11-28 (+20d) | 3d → 1.32d | B3.2.32 11 23.01.25, B3.2.32 11 23.01.27, B3.2.32 11 23.01.93, B3.2.32 11 23.01.73, B3.2.32 11 23.01.123, B3.2.32 11 23.01.137, B3.2.32 11 23.01.159, B3.2. 26 05 43 .02, B3.2. 26 05 43 .01 → B3.2.32 11 23.01.25, B3.2.32 11 23.01.27_R, B3.2.32 11 23.01.93, B3.2.32 11 23.01.73, B3.2.32 11 23.01.123, B3.2.32 11 23.01.137, B3.2.32 11 23.01.159, B3.2. 26 05 43 .02, B3.2. 26 05 43 .01 |
| B3.2.32 11 23.01.175 | 4Cx 25mm2 + 1Cx16mm2 Cu/XLPE/PVC | 2026-11-09 → 2026-11-29 (+20d) | 2026-11-10 → 2026-11-30 (+20d) | 3d → 1.32d | B3.2.32 11 23.01.25, B3.2.32 11 23.01.27, B3.2.32 11 23.01.93, B3.2.32 11 23.01.73, B3.2.32 11 23.01.123, B3.2.32 11 23.01.137, B3.2.32 11 23.01.167, B3.2. 26 05 43 .02, B3.2. 26 05 43 .01 → B3.2.32 11 23.01.25, B3.2.32 11 23.01.27_R, B3.2.32 11 23.01.93, B3.2.32 11 23.01.73, B3.2.32 11 23.01.123, B3.2.32 11 23.01.137, B3.2.32 11 23.01.167, B3.2. 26 05 43 .02, B3.2. 26 05 43 .01 |
| B3.2.32 11 23.01.177 | 3Cx 6mm2 Cu/XLPE/PVC | 2026-11-11 → 2026-12-01 (+20d) | 2026-11-12 → 2026-12-02 (+20d) | 3d → 1.32d | B3.2.32 11 23.01.25, B3.2.32 11 23.01.27, B3.2.32 11 23.01.93, B3.2.32 11 23.01.73, B3.2.32 11 23.01.123, B3.2.32 11 23.01.137, B3.2.32 11 23.01.175, B3.2. 26 05 43 .02, B3.2. 26 05 43 .01 → B3.2.32 11 23.01.25, B3.2.32 11 23.01.27_R, B3.2.32 11 23.01.93, B3.2.32 11 23.01.73, B3.2.32 11 23.01.123, B3.2.32 11 23.01.137, B3.2.32 11 23.01.175, B3.2. 26 05 43 .02, B3.2. 26 05 43 .01 |
| B3.2.32 11 23.01.183 | 4Cx 25mm2 + 1Cx11mm2 Cu/XLPE/PVC | 2026-11-14 → 2026-12-03 (+19d) | 2026-11-15 → 2026-12-05 (+20d) | 3d → 1.32d | B3.2.32 11 23.01.25, B3.2.32 11 23.01.27, B3.2.32 11 23.01.93, B3.2.32 11 23.01.73, B3.2.32 11 23.01.123, B3.2.32 11 23.01.137, B3.2.32 11 23.01.177, B3.2. 26 05 43 .02, B3.2. 26 05 43 .01 → B3.2.32 11 23.01.25, B3.2.32 11 23.01.27_R, B3.2.32 11 23.01.93, B3.2.32 11 23.01.73, B3.2.32 11 23.01.123, B3.2.32 11 23.01.137, B3.2.32 11 23.01.177, B3.2. 26 05 43 .02, B3.2. 26 05 43 .01 |
| B3.2.32 11 23.01.191 | 3Cx 6mm2 Cu/XLPE/PVC | 2026-11-14 → 2026-12-03 (+19d) | 2026-11-15 → 2026-12-05 (+20d) | 3d → 1.32d | B3.2.32 11 23.01.25, B3.2.32 11 23.01.27, B3.2.32 11 23.01.93, B3.2.32 11 23.01.73, B3.2.32 11 23.01.123, B3.2.32 11 23.01.137, B3.2.32 11 23.01.183 SS, B3.2. 26 05 43 .02, B3.2. 26 05 43 .01 → B3.2.32 11 23.01.25, B3.2.32 11 23.01.27_R, B3.2.32 11 23.01.93, B3.2.32 11 23.01.73, B3.2.32 11 23.01.123, B3.2.32 11 23.01.137, B3.2.32 11 23.01.183 SS, B3.2. 26 05 43 .02, B3.2. 26 05 43 .01 |
| B3.2.32 11 23.01.201 | 4Cx 10mm2 + 1Cx10mm2 Cu/XLPE/PVC | 2026-11-14 → 2026-12-03 (+19d) | 2026-11-15 → 2026-12-05 (+20d) | 3d → 1.32d | B3.2.32 11 23.01.25, B3.2.32 11 23.01.27, B3.2.32 11 23.01.93, B3.2.32 11 23.01.73, B3.2.32 11 23.01.123, B3.2.32 11 23.01.137, B3.2.32 11 23.01.191 SS, B3.2. 26 05 43 .02, B3.2. 26 05 43 .01 → B3.2.32 11 23.01.25, B3.2.32 11 23.01.27_R, B3.2.32 11 23.01.93, B3.2.32 11 23.01.73, B3.2.32 11 23.01.123, B3.2.32 11 23.01.137, B3.2.32 11 23.01.191 SS, B3.2. 26 05 43 .02, B3.2. 26 05 43 .01 |
| B3.2.32 11 23.01.205 | 4Cx 6mm2 Cu/XLPE/SWA/PVC | 2026-11-14 → 2026-12-03 (+19d) | 2026-11-15 → 2026-12-05 (+20d) | 3d → 1.32d | B3.2.32 11 23.01.25, B3.2.32 11 23.01.27, B3.2.32 11 23.01.93, B3.2.32 11 23.01.73, B3.2.32 11 23.01.123, B3.2.32 11 23.01.137, B3.2.32 11 23.01.201 SS, B3.2. 26 05 43 .02, B3.2. 26 05 43 .01 → B3.2.32 11 23.01.25, B3.2.32 11 23.01.27_R, B3.2.32 11 23.01.93, B3.2.32 11 23.01.73, B3.2.32 11 23.01.123, B3.2.32 11 23.01.137, B3.2.32 11 23.01.201 SS, B3.2. 26 05 43 .02, B3.2. 26 05 43 .01 |
| 1 | **Enclosed Switches and Circuit Breakers** | 2026-10-17 → 2026-11-05 (+19d) | 2026-10-21 → 2026-11-10 (+20d) |  |  |
| B3.2. 26 28 16 .02 | 40A, 3P, 60Hz Isolator/disconnect switches IP65 | 2026-10-17 → 2026-11-05 (+19d) | 2026-10-18 → 2026-11-07 (+20d) | 25d → 23.32d |  |
| B3.2. 26 28 16 .03 | 20A, 1P, 60Hz Isolator/disconnect switches IP65 | 2026-10-17 → 2026-11-05 (+19d) | 2026-10-18 → 2026-11-07 (+20d) | 25d → 23.32d |  |
| B3.2. 26 28 16 .01 | 630A, 3P, 60Hz Isolator/disconnect switches IP65 | 2026-10-20 → 2026-11-09 (+20d) | 2026-10-21 → 2026-11-10 (+20d) | 22d → 20.32d |  |
| Panelboards | **Panelboards** | 2026-10-27 → 2026-11-16 (+20d) | 2026-11-02 → 2026-11-22 (+20d) |  |  |
| B3.2. 26 24 16 .01 | DB-PW Panel: 100 Ampere, 3P, IP66,60Hz | 2026-10-27 → 2026-11-16 (+20d) | 2026-10-28 → 2026-11-17 (+20d) | 12d → 10.32d |  |
| B3.2. 26 24 16 .02 | DB-CL Panel: 100 Ampere, 3P, IP66,60Hz | 2026-10-29 → 2026-11-18 (+20d) | 2026-10-31 → 2026-11-19 (+19d) | 12d → 10.32d |  |
| B3.2. 26 24 16 .03 | ELP Panel: phtocell , timer,40 Ampere, 3P, IP66,60Hz | 2026-11-01 → 2026-11-21 (+20d) | 2026-11-02 → 2026-11-22 (+20d) | 12d → 10.32d |  |
| 3 | **Lighting** | 2026-10-20 → 2026-11-09 (+20d) | 2026-11-24 → 2026-12-14 (+20d) |  |  |
| 1 | **Poles** | 2026-11-16 → 2026-12-06 (+20d) | 2026-11-17 → 2026-12-07 (+20d) |  |  |
| B3.2.32 11 23.01.207 | 7m Single Arm Galvanized Steel Pole | 2026-11-16 → 2026-12-06 (+20d) | 2026-11-17 → 2026-12-07 (+20d) | 3d → 1.32d |  |
| 2 | **Fixtures (LEDs)** | 2026-10-20 → 2026-11-09 (+20d) | 2026-11-22 → 2026-12-12 (+20d) |  |  |
| B3.2.32 11 23.01.290 | Install addressable fire alarm system including smoke detector | 2026-10-20 → 2026-11-09 (+20d) | 2026-10-21 → 2026-11-10 (+20d) | 22d → 20.32d |  |
| B3.2.32 11 23.01.211 | HIGHBAY LED 76 WATTS, IP65, 230V, 60HZ, 12000 LUMENS | 2026-11-18 → 2026-12-08 (+20d) | 2026-11-19 → 2026-12-09 (+20d) | 3d → 1.32d |  |
| B3.2.32 11 23.01.215 | HIGHBAY LED 76 WATTS, IP65, 230V, 60HZ, 12000 LUMENS | 2026-11-18 → 2026-12-08 (+20d) | 2026-11-19 → 2026-12-09 (+20d) | 3d → 1.32d |  |
| B3.2.32 11 23.01.221 | Surfaced Mounted Light, IP65, 230V, 60Hz, 4200 Lumens | 2026-11-21 → 2026-12-10 (+19d) | 2026-11-22 → 2026-12-12 (+20d) | 3d → 1.32d |  |
| B3.2.32 11 23.01.225 | Surfaced Mounted Light, IP65, 230V, 60Hz, 4200 lumens | 2026-11-21 → 2026-12-10 (+19d) | 2026-11-22 → 2026-12-12 (+20d) | 3d → 1.32d |  |
| B3.2.32 11 23.01.229 | WALL MOUNTED LED FLOODLIGHT, IP65, 230V, 60HZ, 4300 LUMENS | 2026-11-21 → 2026-12-10 (+19d) | 2026-11-22 → 2026-12-12 (+20d) | 3d → 1.32d |  |
| B3.2.32 11 23.01.233 | WALL MOUNTED BULK HEAD OUTDOOR LED, IP65,230V 60 HZ | 2026-11-21 → 2026-12-10 (+19d) | 2026-11-22 → 2026-12-12 (+20d) | 3d → 1.32d |  |
| B3.2.32 11 23.01.237 | EMERGENCY EXIT SIGN (CEILING OR WALL MOUNTED) IP65,230V 60 HZ | 2026-11-21 → 2026-12-10 (+19d) | 2026-11-22 → 2026-12-12 (+20d) | 3d → 1.32d |  |
| 3 | **Wiring Devices** | 2026-11-23 → 2026-12-13 (+20d) | 2026-11-24 → 2026-12-14 (+20d) |  |  |
| B3.2.32 11 23.01.239 | 13A SINGLE SWITCH SOCKET OUTLET (WEATHER PROOF) | 2026-11-23 → 2026-12-13 (+20d) | 2026-11-24 → 2026-12-14 (+20d) | 3d → 1.32d |  |
| B3.2.32 11 23.01.241 | 13A DOUBLE SWITCH SOCKET OUTLET | 2026-11-23 → 2026-12-13 (+20d) | 2026-11-24 → 2026-12-14 (+20d) | 3d → 1.32d |  |
| B3.2.32 11 23.01.243 | 13A SINGLE SWITCH SOCKET OUTLET | 2026-11-23 → 2026-12-13 (+20d) | 2026-11-24 → 2026-12-14 (+20d) | 3d → 1.32d |  |
| B3.2.32 11 23.01.245 | 13A SPUR OUTLET | 2026-11-23 → 2026-12-13 (+20d) | 2026-11-24 → 2026-12-14 (+20d) | 3d → 1.32d |  |
| B3.2.32 11 23.01.247 | INDUSTRIAL SOCKET OUTLET, 400V, 3P, 60HZ, WITH GROUNDING | 2026-11-23 → 2026-12-13 (+20d) | 2026-11-24 → 2026-12-14 (+20d) | 3d → 1.32d |  |
| 4 | **Grounding & Lightning System** | 2026-11-25 → 2026-12-15 (+20d) | 2026-11-26 → 2026-12-16 (+20d) |  |  |
| B3.2.32 11 23.01.249 | Install Grounding and Lightning System | 2026-11-25 → 2026-12-15 (+20d) | 2026-11-26 → 2026-12-16 (+20d) | 3d → 1.32d |  |
| 6 | **Control & Instrumentation** | 2026-11-16 → 2026-12-06 (+20d) | 2026-11-19 → 2026-12-09 (+20d) |  |  |
| B3.2.32 11 23.01.219 | PLC Installation | 2026-11-16 → 2026-12-06 (+20d) | 2026-11-18 → 2026-12-08 (+20d) | 7d → 5.32d | B3.2.32 11 23.01.147, B3.2.32 11 23.01.155, B3.2.32 11 23.01.161, B3.2.32 11 23.01.169, B3.2.32 11 23.01.179, B3.2.32 11 23.01.185, B3.2.32 11 23.01.199, B3.2.32 11 23.01.203, B3.2.32 11 23.01.209, B3.2.32 11 23.01.213, B3.2.32 11 23.01.217, B3.2.32 11 23.01.157, B3.2.32 11 23.01.163, B3.2.32 11 23.01.171, B3.2.32 11 23.01.181, B3.2.32 11 23.01.193, B3.2.32 11 23.01.165, B3.2.32 11 23.01.187, B3.2.32 11 23.01.189, B3.2.32 11 23.01.195, B3.2.32 11 23.01.145, B3.2.32 11 23.01.153, B3.2.32 11 23.01.159, B3.2.32 11 23.01.167, B3.2.32 11 23.01.175, B3.2.32 11 23.01.177, B3.2.32 11 23.01.183, B3.2.32 11 23.01.191, B3.2.32 11 23.01.201, B3.2.32 11 23.01.205, B3.2. 22 05 23 .11, DMM2-Proc-Delv-3868, B3.2. 22 05 23 .12, B3.2.32 11 23.01.197 → B3.2.32 11 23.01.147, B3.2.32 11 23.01.155, B3.2.32 11 23.01.161, B3.2.32 11 23.01.169, B3.2.32 11 23.01.179, B3.2.32 11 23.01.185, B3.2.32 11 23.01.199, B3.2.32 11 23.01.203, B3.2.32 11 23.01.209, B3.2.32 11 23.01.213, B3.2.32 11 23.01.217, B3.2.32 11 23.01.157, B3.2.32 11 23.01.163, B3.2.32 11 23.01.171, B3.2.32 11 23.01.181, B3.2.32 11 23.01.193, B3.2.32 11 23.01.165, B3.2.32 11 23.01.187, B3.2.32 11 23.01.189, B3.2.32 11 23.01.195, B3.2.32 11 23.01.145, B3.2.32 11 23.01.153, B3.2.32 11 23.01.159, B3.2.32 11 23.01.167, B3.2.32 11 23.01.175, B3.2.32 11 23.01.177, B3.2.32 11 23.01.183, B3.2.32 11 23.01.191, B3.2.32 11 23.01.201, B3.2.32 11 23.01.205, B3.2. 22 05 23 .11, DMM2-Proc-Delv-3868_R, B3.2. 22 05 23 .12, B3.2.32 11 23.01.197 |
| B3.2.32 11 23.01.223 | Data Cabinet including all devices 12U | 2026-11-16 → 2026-12-06 (+20d) | 2026-11-17 → 2026-12-07 (+20d) | 7d → 5.32d |  |
| B3.2.32 11 23.01.227 | Data/ voice RJ45 outlet include CAT6A cable | 2026-11-16 → 2026-12-06 (+20d) | 2026-11-17 → 2026-12-07 (+20d) | 7d → 5.32d |  |
| B3.2.32 11 23.01.231 | Instrumentation for Process Systems (Field Instruments) | 2026-11-18 → 2026-12-08 (+20d) | 2026-11-19 → 2026-12-09 (+20d) | 7d → 5.32d |  |
| 7 | **Control Cable Pulling & Termination** | 2026-11-21 → 2026-12-10 (+19d) | 2026-11-22 → 2026-12-12 (+20d) |  |  |
| B3.2.32 11 23.01.235 | Process Control Wiring | 2026-11-21 → 2026-12-10 (+19d) | 2026-11-22 → 2026-12-12 (+20d) | 7d → 5.32d |  |
| 6 | **Final Fixtures** | 2026-10-11 → 2026-10-31 (+20d) | 2026-11-07 → 2026-11-26 (+19d) |  |  |
| 1 | **Door & Louver Installation** | 2026-10-17 → 2026-11-05 (+19d) | 2026-10-26 → 2026-11-15 (+20d) |  |  |
| B3.2.32 11 23.01.59 | Steel Door SD1 For chlorination size (2000x2300)mm | 2026-10-17 → 2026-11-05 (+19d) | 2026-10-18 → 2026-11-07 (+20d) | 29d → 27.32d |  |
| B3.2.32 11 23.01.75 | Steel Door SD1 size (2000x2550)mm | 2026-10-19 → 2026-11-08 (+20d) | 2026-10-20 → 2026-11-09 (+20d) | 29d → 27.32d |  |
| B3.2.32 11 23.01.95 | Steel Door SD2 size (900x2200)mm | 2026-10-20 → 2026-11-09 (+20d) | 2026-10-21 → 2026-11-10 (+20d) | 28d → 26.32d |  |
| B3.2.32 11 23.01.107 | 90 mins fire rated Steel Door SD3 size (1000x2200)mm | 2026-10-22 → 2026-11-11 (+20d) | 2026-10-24 → 2026-11-12 (+19d) | 28d → 26.32d |  |
| B3.2.32 11 23.01.119 | Sand trap louver 1500mm x 1500mm | 2026-10-22 → 2026-11-11 (+20d) | 2026-10-24 → 2026-11-12 (+19d) | 28d → 26.32d |  |
| B3.2.32 11 23.01.131 | Louver 3400mm x 2800mm | 2026-10-25 → 2026-11-14 (+20d) | 2026-10-26 → 2026-11-15 (+20d) | 28d → 26.32d |  |
| B3.2.32 11 23.01.143 | Steel shutter Door SD4 size (3200x3000)mm | 2026-10-25 → 2026-11-14 (+20d) | 2026-10-26 → 2026-11-15 (+20d) | 28d → 26.32d |  |
| 7 | **Ladders** | 2026-10-11 → 2026-10-31 (+20d) | 2026-10-21 → 2026-11-10 (+20d) |  |  |
| B3.2.32 11 23.01.61 | 5m External Galvanized Steel Ladder | 2026-10-11 → 2026-10-31 (+20d) | 2026-10-12 → 2026-11-01 (+20d) | 20d → 18.32d |  |
| B3.2.32 11 23.01.77 | 3m External Galvanized Steel Ladder | 2026-10-13 → 2026-11-02 (+20d) | 2026-10-14 → 2026-11-03 (+20d) | 20d → 18.32d |  |
| B3.2.32 11 23.01.97 | 4.3m External Galvanized Steel Ladder - Potable Water Tank | 2026-10-15 → 2026-11-04 (+20d) | 2026-10-17 → 2026-11-05 (+19d) | 20d → 18.32d |  |
| B3.2.32 11 23.01.109 | 4.5m External Stainless Steel A36 Ladder | 2026-10-18 → 2026-11-07 (+20d) | 2026-10-19 → 2026-11-08 (+20d) | 20d → 18.32d |  |
| B3.2.32 11 23.01.121 | 4.3m External Galvanized Steel Ladder - Chlorination | 2026-10-20 → 2026-11-09 (+20d) | 2026-10-21 → 2026-11-10 (+20d) | 20d → 18.32d |  |
| 2 | **Handrails** | 2026-10-22 → 2026-11-11 (+20d) | 2026-10-24 → 2026-11-12 (+19d) |  |  |
| B3.2.32 11 23.01.133 | Handrail with approximate height 1.1m | 2026-10-22 → 2026-11-11 (+20d) | 2026-10-24 → 2026-11-12 (+19d) | 20d → 18.32d |  |
| 6 | **Signage** | 2026-10-25 → 2026-11-14 (+20d) | 2026-11-07 → 2026-11-26 (+19d) |  |  |
| B3.2.32 11 23.01.141 | Aluminum exterior signage size (300x150)mm | 2026-10-25 → 2026-11-14 (+20d) | 2026-10-26 → 2026-11-15 (+20d) | 20d → 18.32d |  |
| B3.2.32 11 23.01.151 | Aluminum interior signage size (300x150)mm | 2026-11-05 → 2026-11-25 (+20d) | 2026-11-07 → 2026-11-26 (+19d) | 12d → 10.32d |  |
| 5 | **Engineering Backfilling** | 2026-10-17 → 2026-11-05 (+19d) | 2026-10-18 → 2026-11-07 (+20d) |  |  |
| B3.2.32 11 23.01.135 | Backfilling around structures | 2026-10-17 → 2026-11-05 (+19d) | 2026-10-18 → 2026-11-07 (+20d) | 35d → 33.32d |  |
| Zone 03 | **Zone 03** |  | 2026-11-29 → 2026-12-16 (+17d) |  |  |
| B1.1.31 23 16.2 | Excavation (all types of soil) |  |  |  | B1.1.31 23 19.2, B1.1.31 23 16.02 SS → B1.1.31 23 19.2 |

| ID | Task | Start | Finish | Duration | Complete | Total float | Predecessors | Other |
| --- | --- | --- | --- | --- | --- | --- | --- | --- |
| B1.1.31 23 23.162 | Engineering Backfiling - Sewerage Lift Station |  |  |  |  |  | B1.1.31 23 23.122 → B1.1.31 23 23.122, B1.1.31 23 23.72 |  |
| Road 02 | **Road 02** |  | 2026-11-19 → 2026-12-06 (+17d) |  |  |  |  |  |
| Wet Networks | **Wet Networks** |  | 2026-11-14 → 2026-12-03 (+19d) |  |  |  |  |  |
| Sewerage Network | **Sewerage Network** |  | 2026-09-22 → 2026-10-12 (+20d) |  |  |  |  |  |
| GRP | **GRP Pipes** |  | 2026-09-22 → 2026-10-12 (+20d) |  |  |  |  |  |
| 200 | **?200** |  | 2026-09-22 → 2026-10-12 (+20d) |  |  |  |  |  |
| 3 | **Depth From 4.5m to 5.5m** |  | 2026-09-22 → 2026-10-12 (+20d) |  |  |  |  |  |
| B5.33 31 00.02.05.1 | Excavation |  |  | 29.84d → 30.84d |  |  |  |  |
| B5.33 31 00.02.05.5 | Backfilling & Warrning Tape (8.86% Completed) |  | 2026-09-22 → 2026-09-15 A (-7d) | 141.41d → 136.85d | 9% → 100% | 110d → none |  | was named Backfilling & Warrning Tape; resources Labor [77.96 h]; Foreman [38.98 h]; Operator [155.92 h]; Surveyor [38.98 h]; Surveyor Helper [38.98 h]; Loader [40 h]; Water Tanker [40 h]; Dump Truck [40 h]; Plate Compactor [40 h]; Roller Compactor [40 h]; Sew Dia. 200mm Depth: 4.51m -5.5m [13.89] → Labor [6.91 h]; Foreman [3.45 h]; Operator [13.81 h]; Surveyor [3.45 h]; Surveyor Helper [3.45 h]; Loader [3.54 h]; Water Tanker [3.54 h]; Dump Truck [3.54 h]; Plate Compactor [3.54 h]; Roller Compactor [3.54 h]; Sew Dia. 200mm Depth: 4.51m -5.5m [1.23] |
| Manholes | **Manholes ?1200** |  | 2026-09-21 → 2026-10-10 (+19d) |  |  |  |  |  |
| 4 | **Depth From 4.5m to 5.5m** |  | 2026-09-20 → 2026-10-08 (+18d) |  |  |  |  |  |
| B6.33 05 39.01.607 | Test, Internal Finishing, Benching & Cover (40.32% Completed) |  | 2026-09-19 → 2026-09-15 A (-4d) | 90.56d → 88d | 40% → 100% | 113.44d → none |  | was named Test, Internal Finishing, Benching & Cover; resources Labor [62.37 h]; Foreman [31.18 h]; Plumber Helper [31.18 h]; Plumber [31.18 h]; Mason [31.18 h]; MH depth 4.51 -5.5m [0.96] → Labor [25.15 h]; Foreman [12.57 h]; Plumber Helper [12.57 h]; Plumber [12.57 h]; Mason [12.57 h]; MH depth 4.51 -5.5m [0.39] |
| B6.33 05 39.01.617 | Backfilling (40.32% Completed) |  | 2026-09-20 → 2026-09-15 A (-5d) | 78.41d → 75.33d | 40% → 100% | 112.92d → none |  | was named Backfilling; resources Labor [77.96 h]; Foreman [38.98 h]; Operator [77.96 h]; Surveyor [38.98 h]; Surveyor Helper [38.98 h]; Loader [40 h]; Water Tanker [40 h]; Dump Truck [40 h]; Plate Compactor [40 h]; MH depth 4.51 -5.5m [1.9] → Labor [31.43 h]; Foreman [15.72 h]; Operator [31.43 h]; Surveyor [15.72 h]; Surveyor Helper [15.72 h]; Loader [16.13 h]; Water Tanker [16.13 h]; Dump Truck [16.13 h]; Plate Compactor [16.13 h]; MH depth 4.51 -5.5m [0.76] |
| 1 | **Depth From 5.5m to 6.5m** |  | 2026-09-21 → 2026-10-10 (+19d) |  |  |  |  |  |
| B6.33 05 39.01.657 | Test, Internal Finishing, Benching & Cover (24.00% Completed) |  | 2026-09-20 → 2026-09-15 A (-5d) | 91.04d → 88d | 24% → 100% | 112.96d → none |  | was named Test, Internal Finishing, Benching & Cover; resources Labor [62.37 h]; Foreman [31.18 h]; Plumber Helper [31.18 h]; Plumber [31.18 h]; Mason [31.18 h]; MH depth 6.0-5.51 m [0.3] → Labor [14.97 h]; Foreman [7.48 h]; Plumber Helper [7.48 h]; Plumber [7.48 h]; Mason [7.48 h]; MH depth 6.0-5.51 m [0.07] |
| B6.33 05 39.01.667 | Backfilling (38.40% Completed) |  | 2026-09-20 → 2026-09-15 A (-5d) | 77.88d → 74.8d | 38% → 100% | 112.92d → none |  | was named Backfilling; resources Labor [77.96 h]; Foreman [38.98 h]; Operator [77.96 h]; Surveyor [38.98 h]; Surveyor Helper [38.98 h]; Loader [40 h]; Water Tanker [40 h]; Dump Truck [40 h]; Plate Compactor [40 h]; MH depth 6.0-5.51 m [0.6] → Labor [29.94 h]; Foreman [14.97 h]; Operator [29.94 h]; Surveyor [14.97 h]; Surveyor Helper [14.97 h]; Loader [15.36 h]; Water Tanker [15.36 h]; Dump Truck [15.36 h]; Plate Compactor [15.36 h]; MH depth 6.0-5.51 m [0.23] |
| 1 | **Depth From 5.5m to 6.5m Backdrop** |  | 2026-09-21 → 2026-10-10 (+19d) |  |  |  |  |  |
| B6.33 05 39.01.687 | Blinding Conc, & RC Base (36.00% Completed) |  | 2026-09-19 → 2026-09-15 A (-4d) | 98.04d → 96d | 36% → 100% | 113.96d → none |  | was named Blinding Conc, & RC Base; resources Labor [46.78 h]; Foreman [23.39 h]; Laboratory Officer [23.39 h]; Carpenter [23.39 h]; Steelfixer [23.39 h]; Mason [23.39 h]; MH depth 6.0- 5.51 m with back drop [0.11] → Labor [16.84 h]; Foreman [8.42 h]; Laboratory Officer [8.42 h]; Carpenter [8.42 h]; Steelfixer [8.42 h]; Mason [8.42 h]; MH depth 6.0- 5.51 m with back drop [0.04] |
| B6.33 05 39.01.697 | Manhole Installation (36.00% Completed) |  | 2026-09-17 → 2026-09-15 A (-2d) | 94.52d → 93d | 36% → 100% | 114d → none |  | was named Manhole Installation; resources Labor [31.18 h]; Operator [31.18 h]; Surveyor [15.59 h]; Surveyor Helper [15.59 h]; Boom Truck [16 h]; Mobile Crane [16 h]; MH depth 6.0- 5.51 m with back drop [0.45] → Labor [11.23 h]; Operator [11.23 h]; Surveyor [5.61 h]; Surveyor Helper [5.61 h]; Boom Truck [5.76 h]; Mobile Crane [5.76 h]; MH depth 6.0- 5.51 m with back drop [0.16] |
| B6.33 05 39.01.707 | Test, Internal Finishing, Benching & Cover (36.00% Completed) |  | 2026-09-20 → 2026-09-15 A (-5d) | 80.36d → 76.84d | 36% → 100% | 112.48d → none |  | was named Test, Internal Finishing, Benching & Cover; resources Labor [62.37 h]; Foreman [31.18 h]; Plumber Helper [31.18 h]; Plumber [31.18 h]; Mason [31.18 h]; MH depth 6.0- 5.51 m with back drop [0.11] → Labor [22.45 h]; Foreman [11.23 h]; Plumber Helper [11.23 h]; Plumber [11.23 h]; Mason [11.23 h]; MH depth 6.0- 5.51 m with back drop [0.04] |
| B6.33 05 39.01.717 | Backfilling (36.00% Completed) |  | 2026-09-21 → 2026-09-15 A (-6d) | 79.84d → 75.8d | 36% → 100% | 111.96d → none |  | was named Backfilling; resources Labor [77.96 h]; Foreman [38.98 h]; Operator [77.96 h]; Surveyor [38.98 h]; Surveyor Helper [38.98 h]; Loader [40 h]; Water Tanker [40 h]; Dump Truck [40 h]; Plate Compactor [40 h]; MH depth 6.0- 5.51 m with back drop [0.2] → Labor [28.07 h]; Foreman [14.03 h]; Operator [28.07 h]; Surveyor [14.03 h]; Surveyor Helper [14.03 h]; Loader [14.4 h]; Water Tanker [14.4 h]; Dump Truck [14.4 h]; Plate Compactor [14.4 h]; MH depth 6.0- 5.51 m with back drop [0.07] |
| Stormwater Network | **Stormwater Network** |  | 2026-10-01 → 2026-10-21 (+20d) |  |  |  |  |  |
| Strom Manholes | **Manholes** |  | 2026-09-19 → 2026-09-24 (+5d) |  |  |  |  |  |
| 3 | **?2000** |  | 2026-09-19 → 2026-09-24 (+5d) |  |  |  |  |  |
| 3 | **Depth From 2.5m to 3.5m** |  | 2026-09-19 → 2026-09-24 (+5d) |  |  |  |  |  |
| B6.33 05 39.01.3547 | Manhole Installation (80.11% Completed) |  | 2026-09-19 → 2026-09-15 A (-4d) | 97d → 95d | 80% → 100% | 113d → none |  | was named Manhole Installation; resources Labor [31.18 h]; Operator [31.18 h]; Surveyor [15.59 h]; Surveyor Helper [15.59 h]; Boom Truck [16 h]; Mobile Crane [16 h]; Storm MH depth 2.51 - 3.5m [1.97] → Labor [24.98 h]; Operator [24.98 h]; Surveyor [12.49 h]; Surveyor Helper [12.49 h]; Boom Truck [12.82 h]; Mobile Crane [12.82 h]; Storm MH depth 2.51 - 3.5m [1.58] |
| B6.33 05 39.01.3557 | Test, Internal Finishing, Benching & Cover (80.00% Completed) |  | 2026-09-19 → 2026-09-15 A (-4d) | 79.6d → 77.6d | 80% → 100% | 113d → none |  | was named Test, Internal Finishing, Benching & Cover; resources Labor [62.37 h]; Foreman [31.18 h]; Plumber Helper [31.18 h]; Plumber [31.18 h]; Mason [31.18 h]; Storm MH depth 2.51 - 3.5m [0.42] → Labor [49.9 h]; Foreman [24.95 h]; Plumber Helper [24.95 h]; Plumber [24.95 h]; Mason [24.95 h]; Storm MH depth 2.51 - 3.5m [0.33] |
| B6.33 05 39.01.3567 | Backfilling (80.11% Completed) |  | 2026-09-19 → 2026-09-15 A (-4d) | 75.6d → 73.6d | 80% → 100% | 113d → none |  | was named Backfilling; resources Labor [77.96 h]; Foreman [38.98 h]; Operator [77.96 h]; Surveyor [38.98 h]; Surveyor Helper [38.98 h]; Loader [40 h]; Water Tanker [40 h]; Dump Truck [40 h]; Plate Compactor [40 h]; Storm MH depth 2.51 - 3.5m [0.91] → Labor [62.45 h]; Foreman [31.23 h]; Operator [62.45 h]; Surveyor [31.23 h]; Surveyor Helper [31.23 h]; Loader [32.04 h]; Water Tanker [32.04 h]; Dump Truck [32.04 h]; Plate Compactor [32.04 h]; Storm MH depth 2.51 - 3.5m [0.73] |
| Catch Basins | **Catch Basins** |  | 2026-10-01 → 2026-10-21 (+20d) |  |  |  |  |  |
| Sing | **Single** |  | 2026-09-19 → 2026-10-10 (+21d) |  |  |  |  |  |
| B6.33 05 40.01.370 | Excavation, Compaction & Vapour Barrier (80.00% Completed) |  | 2026-09-19 → 2026-09-15 A (-4d) | 86d → 84d | 80% → 100% | 103d → none |  | was named Excavation, Compaction & Vapour Barrier; resources Labor [31.18 h]; Foreman [15.59 h]; Operator [31.18 h]; Surveyor [15.59 h]; Surveyor Helper [15.59 h]; Excavator (With Bucket) [16 h]; Water Tanker [16 h]; Dump Truck [16 h]; Roller Compactor [16 h]; Single Catch basin [2.99] → Labor [24.95 h]; Foreman [12.47 h]; Operator [24.95 h]; Surveyor [12.47 h]; Surveyor Helper [12.47 h]; Excavator (With Bucket) [12.8 h]; Water Tanker [12.8 h]; Dump Truck [12.8 h]; Roller Compactor [12.8 h]; Single Catch basin [2.39] |
| B6.33 05 40.01.380 | Blinding Conc. (80.00% Completed) |  | 2026-09-19 → 2026-09-15 A (-4d) | 82d → 80d | 80% → 100% | 113d → none |  | was named Blinding Conc.; resources Labor [31.18 h]; Foreman [15.59 h]; Laboratory Officer [15.59 h]; Carpenter [15.59 h]; Steelfixer [15.59 h]; Mason [15.59 h]; Single Catch basin [1.99] → Labor [24.95 h]; Foreman [12.47 h]; Laboratory Officer [12.47 h]; Carpenter [12.47 h]; Steelfixer [12.47 h]; Mason [12.47 h]; Single Catch basin [1.59] |
| B6.33 05 40.01.390 | Catch Basin Installation (80.00% Completed) |  | 2026-09-19 → 2026-09-15 A (-4d) | 81d → 79d | 80% → 100% | 113d → none |  | was named Catch Basin Installation; resources Labor [46.78 h]; Foreman [23.39 h]; Carpenter [23.39 h]; Steelfixer [23.39 h]; Mason [23.39 h]; Operator [46.78 h]; Surveyor [23.39 h]; Surveyor Helper [23.39 h]; Boom Truck [24 h]; Single Catch basin [8.93] → Labor [37.42 h]; Foreman [18.71 h]; Carpenter [18.71 h]; Steelfixer [18.71 h]; Mason [18.71 h]; Operator [37.42 h]; Surveyor [18.71 h]; Surveyor Helper [18.71 h]; Boom Truck [19.2 h]; Single Catch basin [7.15] |
| B6.33 05 40.01.400 | Backfilling, DI Frame & Grate Cover Fixing (80.00% Completed) |  | 2026-09-17 → 2026-09-15 A (-2d) | 78d → 77d | 80% → 100% | 7d → none |  | was named Backfilling, DI Frame & Grate Cover Fixing; resources Labor [77.96 h]; Foreman [38.98 h]; Operator [77.96 h]; Surveyor [38.98 h]; Surveyor Helper [38.98 h]; Loader [40 h]; Water Tanker [40 h]; Dump Truck [40 h]; Plate Compactor [40 h]; Single Catch basin [5.96] → Labor [62.37 h]; Foreman [31.18 h]; Operator [62.37 h]; Surveyor [31.18 h]; Surveyor Helper [31.18 h]; Loader [32 h]; Water Tanker [32 h]; Dump Truck [32 h]; Plate Compactor [32 h]; Single Catch basin [4.76] |
| Dou | **Double** | 2026-09-16 → 2026-10-07 (+21d) | 2026-10-01 → 2026-10-21 (+20d) |  |  |  |  |  |
| B6.33 05 40.01.880 | Backfilling, DI Frame & Grate Cover Fixing | 2026-09-16 → 2026-10-07 (+21d) | 2026-09-22 → 2026-10-13 (+21d) |  |  | 3d → 1.32d |  |  |
| B6.33 05 40.01.850 | Excavation, Compaction & Vapour Barrier | 2026-09-20 → 2026-10-11 (+21d) | 2026-09-22 → 2026-10-13 (+21d) |  |  | 103d → 100.32d | B6.33 05 40.01.370 → B6.33 05 40.01.370_R |  |
| B6.33 05 40.01.860 | Blinding Conc. | 2026-09-24 → 2026-10-14 (+20d) | 2026-09-27 → 2026-10-17 (+20d) |  |  | 103d → 100.32d |  |  |
| B6.33 05 40.01.870 | Catch Basin Installation | 2026-09-28 → 2026-10-18 (+20d) | 2026-10-01 → 2026-10-21 (+20d) |  |  | 103d → 100.32d |  |  |
| B6.33 42 11.35-1.22 | Fittings & Pipe Installation |  |  |  |  |  | B6.33 42 11.35-1.20 SS → B6.33 05 39.01.3527 |  |
| B6.33 42 11.35-1.20 | Catch Basin Opening Prep. (68.04% Completed) |  | 2026-10-01 → 2026-09-15 A (-16d) | 89d → 87d | 68% → 100% | 103d → none | B6.33 05 40.01.870 FF → B6.33 42 11.35-1.22 | was named Catch Basin Opening Prep.; resources Labor [31.18 h]; Foreman [15.59 h]; Plumber Helper [15.59 h]; Plumber [15.59 h]; less than 1.5 [46.62] → Labor [21.22 h]; Foreman [10.61 h]; Plumber Helper [10.61 h]; Plumber [10.61 h]; less than 1.5 [31.72] |
| UPVC3001 | **?400 From 0.0 to 1.5m** |  | 2026-09-19 → 2026-10-01 (+12d) |  |  |  |  |  |
| B6.33 42 11.36-1.22 | Fittings & Pipe Installation |  |  |  |  |  | B6.33 42 11.35-1.22, B6.33 42 11.36-1.20 SS → B6.33 42 11.35-1.22 |  |
| B6.33 42 11.36-1.20 | Catch Basin Opening Prep. (68.04% Completed) |  | 2026-09-19 → 2026-09-15 A (-4d) | 89d → 87d | 68% → 100% | 113d → none |  | was named Catch Basin Opening Prep.; resources Labor [31.18 h]; Foreman [15.59 h]; Plumber Helper [15.59 h]; Plumber [15.59 h]; less than 1.5 [46.62] → Labor [21.22 h]; Foreman [10.61 h]; Plumber Helper [10.61 h]; Plumber [10.61 h]; less than 1.5 [31.72] |
| Potable Water | **Potable Water Network** |  | 2026-10-27 → 2026-11-12 (+16d) |  |  |  |  |  |
| HDPE | **HDPE Pipes** |  | 2026-09-19 → 2026-10-10 (+21d) |  |  |  |  |  |
| ?110mm | **?110mm** |  | 2026-09-19 → 2026-10-10 (+21d) |  |  |  |  |  |
| Depth: 0.0m - 1.5m | **Depth: 0.0m - 1.5m** |  | 2026-09-19 → 2026-10-10 (+21d) |  |  |  |  |  |
| B3.33 14 13.01.0101 | Excavation |  |  |  |  |  | B1.2.32 11 26.01.10 SS → B1.1.31 23 23.132 |  |
| B3.33 14 13.01.01017 | Backfilling & Warrning Tape (66.86% Completed) |  | 2026-09-19 → 2026-09-15 A (-4d) | 121.11d → 119.45d | 67% → 100% | 95.34d → none |  | was named Backfilling & Warrning Tape; resources Labor [77.96 h]; Foreman [38.98 h]; Operator [155.92 h]; Surveyor [38.98 h]; Surveyor Helper [38.98 h]; Loader [40 h]; Water Tanker [40 h]; Dump Truck [40 h]; Plate Compactor [40 h]; Roller Compactor [40 h]; Depth: 0.0m - 1.5m [77.87] → Labor [52.12 h]; Foreman [26.06 h]; Operator [104.25 h]; Surveyor [26.06 h]; Surveyor Helper [26.06 h]; Loader [26.74 h]; Water Tanker [26.74 h]; Dump Truck [26.74 h]; Plate Compactor [26.74 h]; Roller Compactor [26.74 h]; Depth: 0.0m - 1.5m [52.07] |
| Depth: 1.51m - 2.5m | **Depth: 1.51m - 2.5m** |  | 2026-09-17 → 2026-10-08 (+21d) |  |  |  |  |  |
| B3.33 14 13.01.01011 | Pipe Laying (91.12% Completed) |  | 2026-09-17 → 2026-09-15 A (-2d) | 127.65d → 126.65d | 91% → 100% | 96d → none |  | was named Pipe Laying; resources Labor [31.18 h]; Foreman [15.59 h]; Plumber Helper [15.59 h]; Plumber [15.59 h]; Operator [15.59 h]; Surveyor [15.59 h]; Surveyor Helper [15.59 h]; Mobile Crane [16 h]; Depth: 1.51m - 2.5m → Labor [28.42 h]; Foreman [14.21 h]; Plumber Helper [14.21 h]; Plumber [14.21 h]; Operator [14.21 h]; Surveyor [14.21 h]; Surveyor Helper [14.21 h]; Mobile Crane [14.58 h]; Depth: 1.51m - 2.5m |
| B3.33 14 13.01.01015 | Embedment & Test (91.12% Completed) |  | 2026-09-17 → 2026-09-15 A (-2d) | 126.82d → 125.82d | 91% → 100% | 96d → none |  | was named Embedment & Test; resources Labor [62.37 h]; Foreman [31.18 h]; Plumber Helper [31.18 h]; Plumber [31.18 h]; Operator [62.37 h]; Surveyor [31.18 h]; Surveyor Helper [31.18 h]; Loader [32 h]; Water Tanker [32 h]; Dump Truck [32 h]; Plate Compactor [32 h]; Roller Compactor [32 h]; Depth: 1.51m - 2.5m → Labor [56.83 h]; Foreman [28.42 h]; Plumber Helper [28.42 h]; Plumber [28.42 h]; Operator [56.83 h]; Surveyor [28.42 h]; Surveyor Helper [28.42 h]; Loader [29.16 h]; Water Tanker [29.16 h]; Dump Truck [29.16 h]; Plate Compactor [29.16 h]; Roller Compactor [29.16 h]; Depth: 1.51m - 2.5m |
| B3.33 14 13.01.01019 | Backfilling & Warrning Tape (91.12% Completed) |  | 2026-09-17 → 2026-09-15 A (-2d) | 118d → 117d | 91% → 100% | 96d → none |  | was named Backfilling & Warrning Tape; resources Labor [77.96 h]; Foreman [38.98 h]; Operator [155.92 h]; Surveyor [38.98 h]; Surveyor Helper [38.98 h]; Loader [40 h]; Water Tanker [40 h]; Dump Truck [40 h]; Plate Compactor [40 h]; Roller Compactor [40 h]; Depth: 1.51m - 2.5m → Labor [71.04 h]; Foreman [35.52 h]; Operator [142.08 h]; Surveyor [35.52 h]; Surveyor Helper [35.52 h]; Loader [36.45 h]; Water Tanker [36.45 h]; Dump Truck [36.45 h]; Plate Compactor [36.45 h]; Roller Compactor [36.45 h]; Depth: 1.51m - 2.5m |
| Crossing | **Plots and Buildings Crossing** |  | 2026-10-01 → 2026-10-21 (+20d) |  |  |  |  |  |
| B3.33 14 13.02.23 | Sand Bedding | 2026-09-20 → 2026-10-11 (+21d) | 2026-09-22 → 2026-10-13 (+21d) |  |  | 85d → 82.32d |  |  |
| B3.33 14 13.02.24 | Tee, Pipe (Crossing) Installation & Backfilling | 2026-09-24 → 2026-10-14 (+20d) | 2026-10-01 → 2026-10-21 (+20d) |  |  | 85d → 82.32d |  |  |
| Valves & Chambers | **Valves & Chambers** |  | 2026-10-27 → 2026-11-12 (+16d) |  |  |  |  |  |
| GV | **Gate Valves** |  | 2026-10-08 → 2026-10-28 (+20d) |  |  |  |  |  |
| 1 | **Gate valves dia (110) mm** |  | 2026-10-08 → 2026-10-28 (+20d) |  |  |  |  |  |
| B3.33 14 19.01.112 | Burried Isolation Valve Installation (75.00% Completed) |  | 2026-09-19 → 2026-09-15 A (-4d) | 69.82d → 67.82d | 75% → 100% | 107d → none |  | was named Burried Isolation Valve Installation; resources Labor [31.18 h]; Plumber Helper [15.59 h]; Plumber [15.59 h]; Operator [31.18 h]; Boom Truck [16 h]; POT Gate V dia 110 mm [1.65] → Labor [23.39 h]; Plumber Helper [11.69 h]; Plumber [11.69 h]; Operator [23.39 h]; Boom Truck [12 h]; POT Gate V dia 110 mm [1.24] |
| B3.33 14 19.01.113 | Spindle & Surface Box | 2026-10-06 → 2026-10-26 (+20d) | 2026-10-08 → 2026-10-28 (+20d) |  |  | 94d → 91.32d | B3.33 14 19.01.112, B3.33 05 63.02.39 → B3.33 14 19.01.112_R, B3.33 05 63.02.39 |  |
| 2 | **Air Valves** | 2026-09-16 → 2026-10-07 (+21d) | 2026-10-10 → 2026-10-29 (+19d) |  |  |  |  |  |
| 4 | **Air valves on less than 315 mm. (In Chamber)** | 2026-09-16 → 2026-10-07 (+21d) | 2026-10-10 → 2026-10-29 (+19d) |  |  |  |  |  |
| B3.33 05 63.02.27 | Land Adjustment & Compaction | 2026-09-16 → 2026-10-07 (+21d) | 2026-09-19 → 2026-10-10 (+21d) |  |  | 82d → 79.32d |  |  |
| B3.33 05 63.02.25 | Foundations | 2026-09-20 → 2026-10-11 (+21d) | 2026-09-24 → 2026-10-14 (+20d) |  |  | 82d → 79.32d |  |  |
| B3.33 05 63.02.28 | Chambers Walls Conc Cast In Situ | 2026-09-26 → 2026-10-15 (+19d) | 2026-09-29 → 2026-10-19 (+20d) |  |  | 82d → 79.32d |  |  |
| B3.33 05 63.02.26 | Chamber Curing, Finishing & Steel Cover | 2026-09-30 → 2026-10-20 (+20d) | 2026-10-05 → 2026-10-25 (+20d) |  |  | 82d → 79.32d |  |  |
| B3.33 05 63.02.29 | Valve & Fitting Installation | 2026-10-06 → 2026-10-26 (+20d) | 2026-10-10 → 2026-10-29 (+19d) |  |  | 82d → 79.32d |  |  |
| Washout Valves | **Washout Valves** | 2026-09-16 → 2026-10-07 (+21d) | 2026-10-27 → 2026-11-12 (+16d) |  |  |  |  |  |

| ID | Task | Start | Finish | Duration | Complete | Total float | Predecessors | Other |
| --- | --- | --- | --- | --- | --- | --- | --- | --- |
| 4 | **Washout valves on 110-400 mm. (In Chamber)** | 2026-09-16 → 2026-10-07 (+21d) | 2026-10-27 → 2026-11-12 (+16d) |  |  |  |  |  |
| B3.33 05 63.01.22 | Land Adjustment & Compaction | 2026-09-16 → 2026-10-07 (+21d) | 2026-09-19 → 2026-10-10 (+21d) |  |  | 87d → 84.32d |  |  |
| B3.33 05 63.01.20 | Foundations | 2026-09-20 → 2026-10-11 (+21d) | 2026-09-24 → 2026-10-14 (+20d) |  |  | 87d → 84.32d |  |  |
| B3.33 05 63.01.23 | Chambers Walls Conc Cast In Situ | 2026-09-26 → 2026-10-15 (+19d) | 2026-09-29 → 2026-10-19 (+20d) |  |  | 87d → 84.32d |  |  |
| B3.33 05 63.01.21 | Chamber Curing, Finishing & Steel Cover | 2026-09-30 → 2026-10-20 (+20d) | 2026-10-04 → 2026-10-24 (+20d) |  |  | 87d → 84.32d | B3.33 05 63.01.23, B3.33 14 13.01.01019 → B3.33 05 63.01.23, B3.33 14 13.01.01019_R |  |
| B3.33 05 63.01.24 | Valve & Fitting Installation | 2026-10-24 → 2026-11-09 (+16d) | 2026-10-27 → 2026-11-12 (+16d) |  |  | 71d → 71.32d |  |  |
| Fire Fighting | **Fire Fighting Network** |  | 2026-10-17 → 2026-11-05 (+19d) |  |  |  |  |  |
| Valves & Chambers | **Valves & Chambers** |  | 2026-10-17 → 2026-11-05 (+19d) |  |  |  |  |  |
| GV | **Gate Valves** |  | 2026-09-20 → 2026-10-11 (+21d) |  |  |  |  |  |
| 1 | **Gate valves dia (250) mm** |  | 2026-09-20 → 2026-10-11 (+21d) |  |  |  |  |  |
| B3.33 14 19.01.129 | Spindle & Surface Box | 2026-09-16 → 2026-10-07 (+21d) | 2026-09-20 → 2026-10-11 (+21d) |  |  | 97d → 94.32d |  |  |
| 2 | **Air Valves** | 2026-09-16 → 2026-10-07 (+21d) | 2026-10-17 → 2026-11-05 (+19d) |  |  |  |  |  |
| 4 | **Air valves on less than 315 mm. (In Chamber)** | 2026-09-16 → 2026-10-07 (+21d) | 2026-10-17 → 2026-11-05 (+19d) |  |  |  |  |  |
| B3.33 05 63.02.57 | Land Adjustment & Compaction | 2026-09-16 → 2026-10-07 (+21d) | 2026-09-20 → 2026-10-11 (+21d) |  |  | 59d → 61.32d |  |  |
| B3.33 05 63.02.55 | Foundations | 2026-09-21 → 2026-10-12 (+21d) | 2026-09-27 → 2026-10-17 (+20d) |  |  | 59d → 61.32d |  |  |
| B3.33 05 63.02.58 | Chambers Walls Conc Cast In Situ | 2026-09-28 → 2026-10-18 (+20d) | 2026-10-03 → 2026-10-22 (+19d) |  |  | 59d → 61.32d |  |  |
| B3.33 05 63.02.56 | Chamber Curing, Finishing & Steel Cover | 2026-10-04 → 2026-10-24 (+20d) | 2026-10-10 → 2026-10-29 (+19d) |  |  | 59d → 61.32d |  |  |
| B3.33 05 63.02.59 | Valve & Fitting Installation | 2026-10-11 → 2026-10-31 (+20d) | 2026-10-17 → 2026-11-05 (+19d) |  |  | 59d → 61.32d |  |  |
| Washout Valves | **Washout Valves** | 2026-09-16 → 2026-10-07 (+21d) | 2026-10-17 → 2026-11-05 (+19d) |  |  |  |  |  |
| 4 | **Washout valves on 110-400 mm. (In Chamber)** | 2026-09-16 → 2026-10-07 (+21d) | 2026-10-17 → 2026-11-05 (+19d) |  |  |  |  |  |
| B3.33 05 63.01.52 | Land Adjustment & Compaction | 2026-09-16 → 2026-10-07 (+21d) | 2026-09-20 → 2026-10-11 (+21d) |  |  | 59d → 61.32d |  |  |
| B3.33 05 63.01.50 | Foundations | 2026-09-21 → 2026-10-12 (+21d) | 2026-09-27 → 2026-10-17 (+20d) |  |  | 59d → 61.32d |  |  |
| B3.33 05 63.01.53 | Chambers Walls Conc Cast In Situ | 2026-09-28 → 2026-10-18 (+20d) | 2026-10-03 → 2026-10-22 (+19d) |  |  | 59d → 61.32d |  |  |
| B3.33 05 63.01.51 | Chamber Curing, Finishing & Steel Cover | 2026-10-04 → 2026-10-24 (+20d) | 2026-10-10 → 2026-10-29 (+19d) |  |  | 59d → 61.32d |  |  |
| B3.33 05 63.01.54 | Valve & Fitting Installation | 2026-10-11 → 2026-10-31 (+20d) | 2026-10-17 → 2026-11-05 (+19d) |  |  | 59d → 61.32d |  |  |
| 3 | **Fire Hydrant** | 2026-09-16 → 2026-10-07 (+21d) | 2026-10-03 → 2026-10-22 (+19d) |  |  |  |  |  |
| B3.33 14 19.01.fh32 | Riser Pipe & Flanged Fittings Installation | 2026-09-16 → 2026-10-07 (+21d) | 2026-09-20 → 2026-10-11 (+21d) |  |  | 87d → 84.32d |  |  |
| B3.33 14 19.01.fh31 | Firehydrant Fixing/Installation | 2026-09-21 → 2026-10-12 (+21d) | 2026-09-27 → 2026-10-17 (+20d) |  |  | 87d → 84.32d |  |  |
| B3.33 14 19.01.fh33 | Backfilling & Compaction | 2026-09-28 → 2026-10-18 (+20d) | 2026-10-03 → 2026-10-22 (+19d) |  |  | 87d → 84.32d |  |  |
| TSE Network | **TSE Network** |  | 2026-11-14 → 2026-12-03 (+19d) |  |  |  |  |  |
| HDPE | **HDPE Pipes** |  | 2026-09-26 → 2026-10-15 (+19d) |  |  |  |  |  |
| ?110mm | **?110mm** |  | 2026-09-26 → 2026-10-15 (+19d) |  |  |  |  |  |
| Depth: 0.0m - 1.5m | **Depth: 0.0m - 1.5m** |  | 2026-09-26 → 2026-10-15 (+19d) |  |  |  |  |  |
| B4.33 14 13.01-0196 | Embedment & Test (18.77% Completed) |  | 2026-09-21 → 2026-09-15 A (-6d) | 161.83d → 158.58d | 19% → 100% | 8.75d → none |  | was named Embedment & Test; resources Labor [62.37 h]; Foreman [31.18 h]; Plumber Helper [31.18 h]; Plumber [31.18 h]; Operator [62.37 h]; Surveyor [31.18 h]; Surveyor Helper [31.18 h]; Loader [32 h]; Water Tanker [32 h]; Dump Truck [32 h]; Plate Compactor [32 h]; Roller Compactor [32 h]; Dia. 110mm 0.0m - 1.5m [83.33] → Labor [11.71 h]; Foreman [5.85 h]; Plumber Helper [5.85 h]; Plumber [5.85 h]; Operator [11.71 h]; Surveyor [5.85 h]; Surveyor Helper [5.85 h]; Loader [6.01 h]; Water Tanker [6.01 h]; Dump Truck [6.01 h]; Plate Compactor [6.01 h]; Roller Compactor [6.01 h]; Dia. 110mm 0.0m - 1.5m [15.65] |
| B4.33 14 13.01-0198 | Backfilling & Warrning Tape (18.77% Completed) |  | 2026-09-26 → 2026-09-15 A (-11d) | 160.4d → 156.33d | 19% → 100% | 5d → none | B4.33 14 13.075, B4.33 14 13.01-0196 FF, B3.33 05 63.02.89 FF → B4.33 14 13.075, B4.33 14 13.01-0196 FF | was named Backfilling & Warrning Tape; resources Labor [77.96 h]; Foreman [38.98 h]; Operator [155.92 h]; Surveyor [38.98 h]; Surveyor Helper [38.98 h]; Loader [40 h]; Water Tanker [40 h]; Dump Truck [40 h]; Plate Compactor [40 h]; Roller Compactor [40 h]; Dia. 110mm 0.0m - 1.5m [41.67] → Labor [14.64 h]; Foreman [7.32 h]; Operator [29.27 h]; Surveyor [7.32 h]; Surveyor Helper [7.32 h]; Loader [7.51 h]; Water Tanker [7.51 h]; Dump Truck [7.51 h]; Plate Compactor [7.51 h]; Roller Compactor [7.51 h]; Dia. 110mm 0.0m - 1.5m [7.82] |
| ?25mm | **?25mm** |  | 2026-09-22 → 2026-10-13 (+21d) |  |  |  |  |  |
| Depth: 0.0m - 1.5m | **Depth: 0.0m - 1.5m** |  | 2026-09-22 → 2026-10-13 (+21d) |  |  |  |  |  |
| B4.33 14 13.01-199 | Excavation (0.00% Completed) |  | 2026-09-19 → 2026-09-15 A (-4d) | 174.87d → 172.87d | 0% → 100% | 10d → none |  | was named Excavation; resources Labor [31.18 h]; Foreman [15.59 h]; Operator [31.18 h]; Surveyor [15.59 h]; Surveyor Helper [15.59 h]; Excavator (With Bucket) [16 h]; Water Tanker [16 h]; Dump Truck [16 h]; Plate Compactor [16 h]; Dia. 25mm 0.0m - 1.5m [2406.8] → Labor; Foreman; Operator; Surveyor; Surveyor Helper; Excavator (With Bucket); Water Tanker; Dump Truck; Plate Compactor; Dia. 25mm 0.0m - 1.5m |
| B4.33 14 13.01-209 | Sand Bedding (0.00% Completed) |  | 2026-09-19 → 2026-09-15 A (-4d) | 165.49d → 163.49d | 0% → 100% | 10d → none |  | was named Sand Bedding; resources Labor [31.18 h]; Foreman [15.59 h]; Operator [62.37 h]; Surveyor [15.59 h]; Surveyor Helper [15.59 h]; Loader [16 h]; Water Tanker [16 h]; Dump Truck [16 h]; Plate Compactor [16 h]; Dia. 25mm 0.0m - 1.5m [601.7] → Labor; Foreman; Operator; Surveyor; Surveyor Helper; Loader; Water Tanker; Dump Truck; Plate Compactor; Dia. 25mm 0.0m - 1.5m |
| B4.33 14 13.01-219 | Pipe Laying (0.00% Completed) |  | 2026-09-19 → 2026-09-15 A (-4d) | 163.49d → 161.49d | 0% → 100% | 10d → none |  | was named Pipe Laying; resources Labor [31.18 h]; Foreman [15.59 h]; Plumber Helper [15.59 h]; Plumber [15.59 h]; Operator [15.59 h]; Surveyor [15.59 h]; Surveyor Helper [15.59 h]; Mobile Crane [16 h]; Dia. 25mm 0.0m - 1.5m [5415.29] → Labor; Foreman; Plumber Helper; Plumber; Operator; Surveyor; Surveyor Helper; Mobile Crane; Dia. 25mm 0.0m - 1.5m |
| B4.33 14 13.01-229 | Embedment & Test (0.00% Completed) |  | 2026-09-21 → 2026-09-15 A (-6d) | 154.75d → 150.75d | 0% → 100% | 8d → none |  | was named Embedment & Test; resources Labor [62.37 h]; Foreman [31.18 h]; Plumber Helper [31.18 h]; Plumber [31.18 h]; Operator [62.37 h]; Surveyor [31.18 h]; Surveyor Helper [31.18 h]; Loader [32 h]; Water Tanker [32 h]; Dump Truck [32 h]; Plate Compactor [32 h]; Roller Compactor [32 h]; Dia. 25mm 0.0m - 1.5m [2406.8] → Labor; Foreman; Plumber Helper; Plumber; Operator; Surveyor; Surveyor Helper; Loader; Water Tanker; Dump Truck; Plate Compactor; Roller Compactor; Dia. 25mm 0.0m - 1.5m |
| B4.33 14 13.01-239 | Backfilling & Warrning Tape (0.00% Completed) |  | 2026-09-22 → 2026-09-15 A (-7d) | 152.33d → 147.33d | 0% → 100% | 7d → none |  | was named Backfilling & Warrning Tape; resources Labor [77.96 h]; Foreman [38.98 h]; Operator [155.92 h]; Surveyor [38.98 h]; Surveyor Helper [38.98 h]; Loader [40 h]; Water Tanker [40 h]; Dump Truck [40 h]; Plate Compactor [40 h]; Roller Compactor [40 h]; Dia. 25mm 0.0m - 1.5m [1203.39] → Labor; Foreman; Operator; Surveyor; Surveyor Helper; Loader; Water Tanker; Dump Truck; Plate Compactor; Roller Compactor; Dia. 25mm 0.0m - 1.5m |
| ?32mm | **?32mm** |  | 2026-09-22 → 2026-10-13 (+21d) |  |  |  |  |  |
| Depth: 0.0m - 1.5m | **Depth: 0.0m - 1.5m** |  | 2026-09-22 → 2026-10-13 (+21d) |  |  |  |  |  |
| B4.33 14 13.01-249 | Excavation (0.00% Completed) |  | 2026-09-19 → 2026-09-15 A (-4d) | 174.87d → 172.87d | 0% → 100% | 10d → none |  | was named Excavation; resources Labor [31.18 h]; Foreman [15.59 h]; Operator [31.18 h]; Surveyor [15.59 h]; Surveyor Helper [15.59 h]; Excavator (With Bucket) [16 h]; Water Tanker [16 h]; Dump Truck [16 h]; Plate Compactor [16 h]; Dia. 32mm 0.0m - 1.5m [696.6] → Labor; Foreman; Operator; Surveyor; Surveyor Helper; Excavator (With Bucket); Water Tanker; Dump Truck; Plate Compactor; Dia. 32mm 0.0m - 1.5m |
| B4.33 14 13.01-259 | Sand Bedding (0.00% Completed) |  | 2026-09-19 → 2026-09-15 A (-4d) | 165.31d → 163.31d | 0% → 100% | 10d → none |  | was named Sand Bedding; resources Labor [31.18 h]; Foreman [15.59 h]; Operator [62.37 h]; Surveyor [15.59 h]; Surveyor Helper [15.59 h]; Loader [16 h]; Water Tanker [16 h]; Dump Truck [16 h]; Plate Compactor [16 h]; Dia. 32mm 0.0m - 1.5m [174.15] → Labor; Foreman; Operator; Surveyor; Surveyor Helper; Loader; Water Tanker; Dump Truck; Plate Compactor; Dia. 32mm 0.0m - 1.5m |
| B4.33 14 13.01-269 | Pipe Laying (0.00% Completed) |  | 2026-09-19 → 2026-09-15 A (-4d) | 163.31d → 161.31d | 0% → 100% | 10d → none |  | was named Pipe Laying; resources Labor [31.18 h]; Foreman [15.59 h]; Plumber Helper [15.59 h]; Plumber [15.59 h]; Operator [15.59 h]; Surveyor [15.59 h]; Surveyor Helper [15.59 h]; Mobile Crane [16 h]; Dia. 32mm 0.0m - 1.5m [1567.35] → Labor; Foreman; Plumber Helper; Plumber; Operator; Surveyor; Surveyor Helper; Mobile Crane; Dia. 32mm 0.0m - 1.5m |
| B4.33 14 13.01-279 | Embedment & Test (0.00% Completed) |  | 2026-09-21 → 2026-09-15 A (-6d) | 113.81d → 109.81d | 0% → 100% | 8d → none |  | was named Embedment & Test; resources Labor [62.37 h]; Foreman [31.18 h]; Plumber Helper [31.18 h]; Plumber [31.18 h]; Operator [62.37 h]; Surveyor [31.18 h]; Surveyor Helper [31.18 h]; Loader [32 h]; Water Tanker [32 h]; Dump Truck [32 h]; Plate Compactor [32 h]; Roller Compactor [32 h]; Dia. 32mm 0.0m - 1.5m [696.6] → Labor; Foreman; Plumber Helper; Plumber; Operator; Surveyor; Surveyor Helper; Loader; Water Tanker; Dump Truck; Plate Compactor; Roller Compactor; Dia. 32mm 0.0m - 1.5m |
| B4.33 14 13.01-289 | Backfilling & Warrning Tape (0.00% Completed) |  | 2026-09-22 → 2026-09-15 A (-7d) | 110.81d → 105.81d | 0% → 100% | 7d → none |  | was named Backfilling & Warrning Tape; resources Labor [77.96 h]; Foreman [38.98 h]; Operator [155.92 h]; Surveyor [38.98 h]; Surveyor Helper [38.98 h]; Loader [40 h]; Water Tanker [40 h]; Dump Truck [40 h]; Plate Compactor [40 h]; Roller Compactor [40 h]; Dia. 32mm 0.0m - 1.5m [348.3] → Labor; Foreman; Operator; Surveyor; Surveyor Helper; Loader; Water Tanker; Dump Truck; Plate Compactor; Roller Compactor; Dia. 32mm 0.0m - 1.5m |
| ?50mm | **?50mm** |  | 2026-09-22 → 2026-10-13 (+21d) |  |  |  |  |  |
| Depth: 0.0m - 1.5m | **Depth: 0.0m - 1.5m** |  | 2026-09-22 → 2026-10-13 (+21d) |  |  |  |  |  |
| B4.33 14 13.01-299 | Excavation (0.00% Completed) |  | 2026-09-19 → 2026-09-15 A (-4d) | 149d → 147d | 0% → 100% | 10d → none |  | was named Excavation; resources Labor [31.18 h]; Foreman [15.59 h]; Operator [31.18 h]; Surveyor [15.59 h]; Surveyor Helper [15.59 h]; Excavator (With Bucket) [16 h]; Water Tanker [16 h]; Dump Truck [16 h]; Plate Compactor [16 h]; Dia. 50mm 0.0m - 1.5m [963.61] → Labor; Foreman; Operator; Surveyor; Surveyor Helper; Excavator (With Bucket); Water Tanker; Dump Truck; Plate Compactor; Dia. 50mm 0.0m - 1.5m |
| B4.33 14 13.01-309 | Sand Bedding (0.00% Completed) |  | 2026-09-19 → 2026-09-15 A (-4d) | 148d → 146d | 0% → 100% | 10d → none |  | was named Sand Bedding; resources Labor [31.18 h]; Foreman [15.59 h]; Operator [62.37 h]; Surveyor [15.59 h]; Surveyor Helper [15.59 h]; Loader [16 h]; Water Tanker [16 h]; Dump Truck [16 h]; Plate Compactor [16 h]; Dia. 50mm 0.0m - 1.5m [240.9] → Labor; Foreman; Operator; Surveyor; Surveyor Helper; Loader; Water Tanker; Dump Truck; Plate Compactor; Dia. 50mm 0.0m - 1.5m |
| B4.33 14 13.01-319 | Pipe Laying (0.00% Completed) |  | 2026-09-19 → 2026-09-15 A (-4d) | 144d → 142d | 0% → 100% | 10d → none |  | was named Pipe Laying; resources Labor [31.18 h]; Foreman [15.59 h]; Plumber Helper [15.59 h]; Plumber [15.59 h]; Operator [15.59 h]; Surveyor [15.59 h]; Surveyor Helper [15.59 h]; Mobile Crane [16 h]; Dia. 50mm 0.0m - 1.5m [2168.11] → Labor; Foreman; Plumber Helper; Plumber; Operator; Surveyor; Surveyor Helper; Mobile Crane; Dia. 50mm 0.0m - 1.5m |
| B4.33 14 13.01-329 | Embedment & Test (0.00% Completed) |  | 2026-09-21 → 2026-09-15 A (-6d) | 140d → 136d | 0% → 100% | 8d → none |  | was named Embedment & Test; resources Labor [62.37 h]; Foreman [31.18 h]; Plumber Helper [31.18 h]; Plumber [31.18 h]; Operator [62.37 h]; Surveyor [31.18 h]; Surveyor Helper [31.18 h]; Loader [32 h]; Water Tanker [32 h]; Dump Truck [32 h]; Plate Compactor [32 h]; Roller Compactor [32 h]; Dia. 50mm 0.0m - 1.5m [963.61] → Labor; Foreman; Plumber Helper; Plumber; Operator; Surveyor; Surveyor Helper; Loader; Water Tanker; Dump Truck; Plate Compactor; Roller Compactor; Dia. 50mm 0.0m - 1.5m |
| B4.33 14 13.01-339 | Backfilling & Warrning Tape (0.00% Completed) |  | 2026-09-22 → 2026-09-15 A (-7d) | 136d → 131d | 0% → 100% | 7d → none |  | was named Backfilling & Warrning Tape; resources Labor [77.96 h]; Foreman [38.98 h]; Operator [155.92 h]; Surveyor [38.98 h]; Surveyor Helper [38.98 h]; Loader [40 h]; Water Tanker [40 h]; Dump Truck [40 h]; Plate Compactor [40 h]; Roller Compactor [40 h]; Dia. 50mm 0.0m - 1.5m [481.8] → Labor; Foreman; Operator; Surveyor; Surveyor Helper; Loader; Water Tanker; Dump Truck; Plate Compactor; Roller Compactor; Dia. 50mm 0.0m - 1.5m |
| ?63mm | **?63mm** |  | 2026-09-22 → 2026-10-13 (+21d) |  |  |  |  |  |
| Depth: 0.0m - 1.5m | **Depth: 0.0m - 1.5m** |  | 2026-09-22 → 2026-10-13 (+21d) |  |  |  |  |  |
| B4.33 14 13.01-349 | Excavation (0.00% Completed) |  | 2026-09-19 → 2026-09-15 A (-4d) | 70d → 68d | 0% → 100% | 10d → none |  | was named Excavation; resources Labor [31.18 h]; Foreman [15.59 h]; Operator [31.18 h]; Surveyor [15.59 h]; Surveyor Helper [15.59 h]; Excavator (With Bucket) [16 h]; Water Tanker [16 h]; Dump Truck [16 h]; Plate Compactor [16 h]; Dia. 63mm 0.0m - 1.5m [87.2] → Labor; Foreman; Operator; Surveyor; Surveyor Helper; Excavator (With Bucket); Water Tanker; Dump Truck; Plate Compactor; Dia. 63mm 0.0m - 1.5m |
| B4.33 14 13.01-359 | Sand Bedding (0.00% Completed) |  | 2026-09-19 → 2026-09-15 A (-4d) | 68d → 66d | 0% → 100% | 10d → none |  | was named Sand Bedding; resources Labor [31.18 h]; Foreman [15.59 h]; Operator [62.37 h]; Surveyor [15.59 h]; Surveyor Helper [15.59 h]; Loader [16 h]; Water Tanker [16 h]; Dump Truck [16 h]; Plate Compactor [16 h]; Dia. 63mm 0.0m - 1.5m [21.8] → Labor; Foreman; Operator; Surveyor; Surveyor Helper; Loader; Water Tanker; Dump Truck; Plate Compactor; Dia. 63mm 0.0m - 1.5m |
| B4.33 14 13.01-369 | Pipe Laying (0.00% Completed) |  | 2026-09-19 → 2026-09-15 A (-4d) | 66d → 64d | 0% → 100% | 10d → none |  | was named Pipe Laying; resources Labor [31.18 h]; Foreman [15.59 h]; Plumber Helper [15.59 h]; Plumber [15.59 h]; Operator [15.59 h]; Surveyor [15.59 h]; Surveyor Helper [15.59 h]; Mobile Crane [16 h]; Dia. 63mm 0.0m - 1.5m [196.2] → Labor; Foreman; Plumber Helper; Plumber; Operator; Surveyor; Surveyor Helper; Mobile Crane; Dia. 63mm 0.0m - 1.5m |
| B4.33 14 13.01-379 | Embedment & Test (0.00% Completed) |  | 2026-09-21 → 2026-09-15 A (-6d) | 61d → 57d | 0% → 100% | 8d → none |  | was named Embedment & Test; resources Labor [62.37 h]; Foreman [31.18 h]; Plumber Helper [31.18 h]; Plumber [31.18 h]; Operator [62.37 h]; Surveyor [31.18 h]; Surveyor Helper [31.18 h]; Loader [32 h]; Water Tanker [32 h]; Dump Truck [32 h]; Plate Compactor [32 h]; Roller Compactor [32 h]; Dia. 63mm 0.0m - 1.5m [87.2] → Labor; Foreman; Plumber Helper; Plumber; Operator; Surveyor; Surveyor Helper; Loader; Water Tanker; Dump Truck; Plate Compactor; Roller Compactor; Dia. 63mm 0.0m - 1.5m |
| B4.33 14 13.01-389 | Backfilling & Warrning Tape (0.00% Completed) |  | 2026-09-22 → 2026-09-15 A (-7d) | 57d → 52d | 0% → 100% | 7d → none | B4.33 14 13.01-289 FF, B4.33 14 13.01-379 FF, B3.33 14 19.01.139 FF → B4.33 14 13.01-289 FF, B4.33 14 13.01-379 FF | was named Backfilling & Warrning Tape; resources Labor [77.96 h]; Foreman [38.98 h]; Operator [155.92 h]; Surveyor [38.98 h]; Surveyor Helper [38.98 h]; Loader [40 h]; Water Tanker [40 h]; Dump Truck [40 h]; Plate Compactor [40 h]; Roller Compactor [40 h]; Dia. 63mm 0.0m - 1.5m [43.6] → Labor; Foreman; Operator; Surveyor; Surveyor Helper; Loader; Water Tanker; Dump Truck; Plate Compactor; Roller Compactor; Dia. 63mm 0.0m - 1.5m |
| ?75mm | **?75mm** |  | 2026-09-22 → 2026-10-13 (+21d) |  |  |  |  |  |
| Depth: 0.0m - 1.5m | **Depth: 0.0m - 1.5m** |  | 2026-09-22 → 2026-10-13 (+21d) |  |  |  |  |  |
| B4.33 14 13.01-399 | Excavation (0.00% Completed) |  | 2026-09-19 → 2026-09-15 A (-4d) | 68d → 66d | 0% → 100% | 6d → none |  | was named Excavation; resources Labor [31.18 h]; Foreman [15.59 h]; Operator [31.18 h]; Surveyor [15.59 h]; Surveyor Helper [15.59 h]; Excavator (With Bucket) [16 h]; Water Tanker [16 h]; Dump Truck [16 h]; Plate Compactor [16 h]; Dia. 75mm 0.0m - 1.5m [28.21] → Labor; Foreman; Operator; Surveyor; Surveyor Helper; Excavator (With Bucket); Water Tanker; Dump Truck; Plate Compactor; Dia. 75mm 0.0m - 1.5m |
| B4.33 14 13.01-409 | Sand Bedding (0.00% Completed) |  | 2026-09-19 → 2026-09-15 A (-4d) | 65d → 63d | 0% → 100% | 6d → none |  | was named Sand Bedding; resources Labor [31.18 h]; Foreman [15.59 h]; Operator [62.37 h]; Surveyor [15.59 h]; Surveyor Helper [15.59 h]; Loader [16 h]; Water Tanker [16 h]; Dump Truck [16 h]; Plate Compactor [16 h]; Dia. 75mm 0.0m - 1.5m [7.05] → Labor; Foreman; Operator; Surveyor; Surveyor Helper; Loader; Water Tanker; Dump Truck; Plate Compactor; Dia. 75mm 0.0m - 1.5m |
| B4.33 14 13.01-419 | Pipe Laying (0.00% Completed) |  | 2026-09-19 → 2026-09-15 A (-4d) | 62d → 60d | 0% → 100% | 6d → none |  | was named Pipe Laying; resources Labor [31.18 h]; Foreman [15.59 h]; Plumber Helper [15.59 h]; Plumber [15.59 h]; Operator [15.59 h]; Surveyor [15.59 h]; Surveyor Helper [15.59 h]; Mobile Crane [16 h]; Dia. 75mm 0.0m - 1.5m [63.48] → Labor; Foreman; Plumber Helper; Plumber; Operator; Surveyor; Surveyor Helper; Mobile Crane; Dia. 75mm 0.0m - 1.5m |
| B4.33 14 13.01-429 | Embedment & Test (0.00% Completed) |  | 2026-09-21 → 2026-09-15 A (-6d) | 61d → 57d | 0% → 100% | 4d → none |  | was named Embedment & Test; resources Labor [62.37 h]; Foreman [31.18 h]; Plumber Helper [31.18 h]; Plumber [31.18 h]; Operator [62.37 h]; Surveyor [31.18 h]; Surveyor Helper [31.18 h]; Loader [32 h]; Water Tanker [32 h]; Dump Truck [32 h]; Plate Compactor [32 h]; Roller Compactor [32 h]; Dia. 75mm 0.0m - 1.5m [28.21] → Labor; Foreman; Plumber Helper; Plumber; Operator; Surveyor; Surveyor Helper; Loader; Water Tanker; Dump Truck; Plate Compactor; Roller Compactor; Dia. 75mm 0.0m - 1.5m |
| B4.33 14 13.01-439 | Backfilling & Warrning Tape (0.00% Completed) |  | 2026-09-22 → 2026-09-15 A (-7d) | 57d → 52d | 0% → 100% | 3d → none |  | was named Backfilling & Warrning Tape; resources Labor [77.96 h]; Foreman [38.98 h]; Operator [155.92 h]; Surveyor [38.98 h]; Surveyor Helper [38.98 h]; Loader [40 h]; Water Tanker [40 h]; Dump Truck [40 h]; Plate Compactor [40 h]; Roller Compactor [40 h]; Dia. 75mm 0.0m - 1.5m [14.11] → Labor; Foreman; Operator; Surveyor; Surveyor Helper; Loader; Water Tanker; Dump Truck; Plate Compactor; Roller Compactor; Dia. 75mm 0.0m - 1.5m |

| ID | Task | Start | Finish | Duration | Complete | Total float | Predecessors | Other |
| --- | --- | --- | --- | --- | --- | --- | --- | --- |
| Valves & Chambers | **Valves & Chambers** |  | 2026-11-14 → 2026-12-03 (+19d) |  |  |  |  |  |
| GV | **Gate Valves** |  | 2026-09-21 → 2026-10-12 (+21d) |  |  |  |  |  |
| 1 | **Gate valves dia (250) mm** |  | 2026-09-21 → 2026-10-12 (+21d) |  |  |  |  |  |
| B3.33 14 19.01.138 | Burried Isolation Valve Installation (50.00% Completed) |  | 2026-09-17 → 2026-09-15 A (-2d) | 59d → 58d | 50% → 100% | 8d → none |  | was named Burried Isolation Valve Installation; resources Labor [31.18 h]; Plumber Helper [15.59 h]; Plumber [15.59 h]; Operator [31.18 h]; Boom Truck [16 h]; TSE Gate V Dia. 100 mm [5.6] → Labor [15.59 h]; Plumber Helper [7.8 h]; Plumber [7.8 h]; Operator [15.59 h]; Boom Truck [8 h]; TSE Gate V Dia. 100 mm [2.8] |
| B3.33 14 19.01.139 | Spindle & Surface Box | 2026-09-19 → 2026-10-10 (+21d) | 2026-09-21 → 2026-10-12 (+21d) |  |  | 8d → 9.32d | B3.33 14 19.01.138 → B3.33 14 19.01.138_R |  |
| 2 | **Air Valves** | 2026-10-22 → 2026-11-14 (+23d) | 2026-11-14 → 2026-12-03 (+19d) |  |  |  |  |  |
| 4 | **Air valves on less than 315 mm. (In Chamber)** | 2026-10-22 → 2026-11-14 (+23d) | 2026-11-14 → 2026-12-03 (+19d) |  |  |  |  |  |
| B3.33 05 63.02.92 | Land Adjustment & Compaction | 2026-10-22 → 2026-11-14 (+23d) | 2026-10-25 → 2026-11-16 (+22d) |  |  | 28d → 23.32d |  |  |
| B3.33 05 63.02.90 | Foundations | 2026-10-26 → 2026-11-17 (+22d) | 2026-10-29 → 2026-11-21 (+23d) |  |  | 28d → 23.32d |  |  |
| B3.33 05 63.02.93 | Chambers Walls Conc Cast In Situ | 2026-10-31 → 2026-11-22 (+22d) | 2026-11-03 → 2026-11-25 (+22d) |  |  | 28d → 23.32d |  |  |
| B3.33 05 63.02.91 | Chamber Curing, Finishing & Steel Cover | 2026-11-04 → 2026-11-26 (+22d) | 2026-11-07 → 2026-11-29 (+22d) |  |  | 28d → 23.32d |  |  |
| B3.33 05 63.02.94 | Valve & Fitting Installation | 2026-11-11 → 2026-12-01 (+20d) | 2026-11-14 → 2026-12-03 (+19d) |  |  | 25d → 22.32d |  |  |
| Solenoid valves | **Solenoid valves** | 2026-09-20 → 2026-10-11 (+21d) | 2026-10-07 → 2026-10-27 (+20d) |  |  |  |  |  |
| Solenoid valve ?1.0 | **1 Solenoid valve ?1.0 inch with box** | 2026-09-20 → 2026-10-11 (+21d) | 2026-09-30 → 2026-10-20 (+20d) |  |  |  |  |  |
| B4.32 84 13.065 | Pull Box Installation | 2026-09-20 → 2026-10-11 (+21d) | 2026-09-28 → 2026-10-18 (+20d) |  |  | 38d → 35.32d | B4.33 14 13.01-419 → B4.33 14 13.01-419_R |  |
| B4.32 84 13.23 | Solenoid Valve Box Installation | 2026-09-20 → 2026-10-11 (+21d) | 2026-09-22 → 2026-10-13 (+21d) |  |  | 54d → 51.32d | B4.33 14 13.01-419 → B4.33 14 13.01-419_R |  |
| B4.32 84 13.22 | Cable Laying Two-Wire Decoder (12 AWG) | 2026-09-24 → 2026-10-14 (+20d) | 2026-09-27 → 2026-10-17 (+20d) |  |  | 54d → 51.32d |  |  |
| B4.32 84 13.24 | Bubblers Installation | 2026-09-28 → 2026-10-18 (+20d) | 2026-09-30 → 2026-10-20 (+20d) |  |  | 54d → 51.32d |  |  |
| Solenoid valve ?1.5 | **1 Solenoid valve ?1.5 inch with box** | 2026-09-24 → 2026-10-14 (+20d) | 2026-10-04 → 2026-10-24 (+20d) |  |  |  |  |  |
| B4.32 84 13.26 | Solenoid Valve Box Installation | 2026-09-24 → 2026-10-14 (+20d) | 2026-09-27 → 2026-10-17 (+20d) |  |  | 54d → 51.32d |  |  |
| B4.32 84 13.25 | Cable Laying Two-Wire Decoder (12 AWG) | 2026-09-28 → 2026-10-18 (+20d) | 2026-09-30 → 2026-10-20 (+20d) |  |  | 54d → 51.32d |  |  |
| B4.32 84 13.064 | Pull Box Installation | 2026-09-29 → 2026-10-19 (+20d) | 2026-10-01 → 2026-10-21 (+20d) |  |  | 38d → 35.32d |  |  |
| B4.32 84 13.27 | Bubblers Installation | 2026-10-01 → 2026-10-21 (+20d) | 2026-10-04 → 2026-10-24 (+20d) |  |  | 54d → 51.32d |  |  |
| Solenoid valve ?2.0 | **1 Solenoid valve ?2.0 inch with box** | 2026-09-28 → 2026-10-18 (+20d) | 2026-10-07 → 2026-10-27 (+20d) |  |  |  |  |  |
| B4.32 84 13.20 | Solenoid Valve Box Installation | 2026-09-28 → 2026-10-18 (+20d) | 2026-09-30 → 2026-10-20 (+20d) |  |  | 54d → 51.32d |  |  |
| B4.32 84 13.19 | Cable Laying Two-Wire Decoder (12 AWG) | 2026-10-01 → 2026-10-21 (+20d) | 2026-10-04 → 2026-10-24 (+20d) |  |  | 54d → 51.32d |  |  |
| B4.32 84 13.063 | Pull Box Installation | 2026-10-03 → 2026-10-22 (+19d) | 2026-10-05 → 2026-10-25 (+20d) |  |  | 38d → 35.32d |  |  |
| B4.32 84 13.21 | Bubblers Installation | 2026-10-05 → 2026-10-25 (+20d) | 2026-10-07 → 2026-10-27 (+20d) |  |  | 54d → 51.32d |  |  |
| Dry Networks | **Dry Networks** | 2026-09-24 → 2026-10-14 (+20d) | 2026-11-19 → 2026-12-06 (+17d) |  |  |  |  |  |
| MV | **Medium Voltage Network** | 2026-09-24 → 2026-10-14 (+20d) | 2026-11-08 → 2026-12-05 (+27d) |  |  |  |  |  |
| Cables | **Cables** | 2026-09-24 → 2026-10-14 (+20d) | 2026-10-17 → 2026-11-07 (+21d) |  |  |  |  |  |
| 3C,500mm2 | **3C,500mm2** | 2026-09-24 → 2026-10-14 (+20d) | 2026-10-17 → 2026-11-07 (+21d) |  |  |  |  |  |
| B2.33 71 49.23.77 | Cable 13.8 kV Unarmored | 2026-09-24 → 2026-10-14 (+20d) | 2026-09-28 → 2026-10-18 (+20d) |  |  | 3d → 1.32d | B6.33 05 40.01.400, B6.33 05 40.01.880, B4.33 14 13.01-439 → B6.33 05 40.01.400_R, B6.33 05 40.01.880, B4.33 14 13.01-439_R |  |
| B2.33 71 49.23.78 | Straight joints cables | 2026-09-29 → 2026-10-19 (+20d) | 2026-10-01 → 2026-10-21 (+20d) |  |  | 86d → 83.32d |  |  |
| B2.33 71 49.23.79 | Cable Termination | 2026-10-13 → 2026-11-03 (+21d) | 2026-10-17 → 2026-11-07 (+21d) |  |  | 76.88d → 73.2d |  |  |
| RMU | **RMU** | 2026-09-27 → 2026-10-17 (+20d) | 2026-10-26 → 2026-11-15 (+20d) |  |  |  |  |  |
| B2 33 73 00.02.81 | Land Adjustment | 2026-09-27 → 2026-10-17 (+20d) | 2026-09-29 → 2026-10-19 (+20d) |  |  | 5d → 6.32d | B4.33 14 13.01-439, B4.33 14 13.01-389, B4.33 14 13.01-339, B4.33 14 13.01-289, B4.33 14 13.01-239, B4.33 14 13.01-0198 → B4.33 14 13.01-439_R, B4.33 14 13.01-389_R, B4.33 14 13.01-339_R, B4.33 14 13.01-289_R, B4.33 14 13.01-239_R, B4.33 14 13.01-0198_R |  |
| B2 33 73 00.02.83 | Foundation Works & Curing | 2026-09-30 → 2026-10-20 (+20d) | 2026-10-07 → 2026-10-27 (+20d) |  |  | 28d → 26.32d |  |  |
| B2 33 73 00.02.85 | Installation of Ring Main Unit RMU, 13.8KV | 2026-10-11 → 2026-10-31 (+20d) | 2026-10-18 → 2026-11-07 (+20d) |  |  | 26d → 24.32d | B2 33 73 00.02.83, DMM2-Proc-Delv-6468 → B2 33 73 00.02.83, DMM2-Proc-Delv-6468_R |  |
| B2.33 71 49.23.05 | Normally Open Point 13.8 KV | 2026-10-19 → 2026-11-08 (+20d) | 2026-10-26 → 2026-11-15 (+20d) |  |  | 26d → 24.32d |  |  |
| Units Substation | **Units Substation** | 2026-09-30 → 2026-10-20 (+20d) | 2026-11-08 → 2026-12-05 (+27d) |  |  |  |  |  |
| B2 33 73 00.01.81 | Land Adjustment | 2026-09-30 → 2026-10-20 (+20d) | 2026-10-03 → 2026-10-22 (+19d) |  |  | 5d → 6.32d |  |  |
| B2 33 73 00.01.83 | Foundation Works & Curing | 2026-10-08 → 2026-10-28 (+20d) | 2026-10-15 → 2026-11-04 (+20d) |  |  | 88d → 85.32d |  |  |
| B2 33 73 00.01.85 | Installation of Unit Substation 13.8/0.4 K V | 2026-11-05 → 2026-12-01 (+26d) | 2026-11-08 → 2026-12-05 (+27d) |  |  | 71d → 62.91d | B2 33 73 00.01.83, B2 33 73 00.02.85, DMM2-Proc-Delv-6458, B2.33 71 49.23.67, B2.33 71 49.23.102 → B2 33 73 00.01.83, B2 33 73 00.02.85, DMM2-Proc-Delv-6458_R, B2.33 71 49.23.67, B2.33 71 49.23.102 |  |
| LV Network | **Low Voltage Network** | 2026-09-24 → 2026-10-14 (+20d) | 2026-11-10 → 2026-11-30 (+20d) |  |  |  |  |  |
| Duct Banks | **Duct Banks** | 2026-09-24 → 2026-10-14 (+20d) | 2026-11-10 → 2026-11-30 (+20d) |  |  |  |  |  |
| 2 Way | **2 Way** | 2026-09-24 → 2026-10-14 (+20d) | 2026-11-07 → 2026-11-26 (+19d) |  |  |  |  |  |
| B2.33 71 00 02 103 | Excavation | 2026-09-24 → 2026-10-14 (+20d) | 2026-09-26 → 2026-10-15 (+19d) |  |  | 92d → 89.32d |  |  |
| B2.33 71 00 02 104 | Shuttering, Steel Fixing Incl. UPVC Pipe & Conc. Cast | 2026-09-27 → 2026-10-17 (+20d) | 2026-09-29 → 2026-10-19 (+20d) |  |  | 96d → 93.32d |  |  |
| B2.33 71 00 02 105 | Backfilling & Warrning Tape | 2026-11-04 → 2026-11-24 (+20d) | 2026-11-07 → 2026-11-26 (+19d) |  |  | 66d → 63.32d |  |  |
| 4 Way | **4 Way** | 2026-09-27 → 2026-10-17 (+20d) | 2026-11-10 → 2026-11-30 (+20d) |  |  |  |  |  |
| B2.33 71 00 02 106 | Excavation | 2026-09-27 → 2026-10-17 (+20d) | 2026-09-28 → 2026-10-18 (+20d) |  |  | 92d → 89.32d |  |  |
| B2.33 71 00 02 107 | Shuttering, Steel Fixing Incl. UPVC Pipe & Conc. Cast | 2026-09-29 → 2026-10-19 (+20d) | 2026-10-01 → 2026-10-21 (+20d) |  |  | 97d → 94.32d |  |  |
| B2.33 71 00 02 108 | Backfilling & Warrning Tape | 2026-11-08 → 2026-11-28 (+20d) | 2026-11-10 → 2026-11-30 (+20d) |  |  | 66d → 63.32d |  |  |
| 6 Way | **6 Way** | 2026-09-29 → 2026-10-19 (+20d) | 2026-10-07 → 2026-10-27 (+20d) |  |  |  |  |  |
| B2.33 71 00 02 109 | Excavation | 2026-09-29 → 2026-10-19 (+20d) | 2026-09-30 → 2026-10-20 (+20d) |  |  | 92d → 89.32d |  |  |
| B2.33 71 00 02 110 | Shuttering, Steel Fixing Incl. UPVC Pipe & Conc. Cast | 2026-10-01 → 2026-10-21 (+20d) | 2026-10-04 → 2026-10-24 (+20d) |  |  | 92d → 89.32d |  |  |
| B2.33 71 00 02 111 | Backfilling & Warrning Tape | 2026-10-05 → 2026-10-25 (+20d) | 2026-10-07 → 2026-10-27 (+20d) |  |  | 92d → 89.32d |  |  |
| Cables | **Cables** | 2026-09-29 → 2026-10-19 (+20d) | 2026-09-30 → 2026-10-20 (+20d) |  |  |  |  |  |
| 4C,10+1C,10mm2 | **4C,10+1C,10mm2** | 2026-09-29 → 2026-10-19 (+20d) | 2026-09-30 → 2026-10-20 (+20d) |  |  |  |  |  |
| B2.33 71 00 01 11 | Cable Pulling | 2026-09-29 → 2026-10-19 (+20d) | 2026-09-30 → 2026-10-20 (+20d) |  |  | 5d → 6.32d |  |  |
| LV Panels | **0.6/1 KV Low Voltage Distribution Panels** | 2026-10-04 → 2026-10-24 (+20d) | 2026-10-18 → 2026-11-07 (+20d) |  |  |  |  |  |
| B2.33 71 26 24 | Land Adjustment | 2026-10-04 → 2026-10-24 (+20d) | 2026-10-05 → 2026-10-25 (+20d) |  |  | 5d → 6.32d |  |  |
| B2.33 71 26 25 | Foundation Works & Curing | 2026-10-12 → 2026-11-01 (+20d) | 2026-10-14 → 2026-11-03 (+20d) |  |  | 35d → 33.32d |  |  |
| B2.33 71 26 23 | Installation of 0.6/1 KV Low Voltage Distribution Panels | 2026-10-15 → 2026-11-04 (+20d) | 2026-10-18 → 2026-11-07 (+20d) |  |  | 35d → 33.32d |  |  |
| LV Pillars | **0.6/1 KV Low Voltage Distribution Pillars** | 2026-10-06 → 2026-10-26 (+20d) | 2026-10-14 → 2026-11-03 (+20d) |  |  |  |  |  |
| B2.33 71 26 27 | Land Adjustment | 2026-10-06 → 2026-10-26 (+20d) | 2026-10-07 → 2026-10-27 (+20d) |  |  | 5d → 6.32d |  |  |
| B2.33 71 26 28 | Foundation Works & Curing | 2026-10-08 → 2026-10-28 (+20d) | 2026-10-11 → 2026-10-31 (+20d) |  |  | 35d → 33.32d |  |  |
| B2.33 71 26 26 | Installation of 0.6/1 KV Low Voltage Distribution Pillars | 2026-10-12 → 2026-11-01 (+20d) | 2026-10-14 → 2026-11-03 (+20d) |  |  | 35d → 33.32d |  |  |
| Street Lighting | **Street Lighting** | 2026-10-08 → 2026-10-28 (+20d) | 2026-11-19 → 2026-12-06 (+17d) |  |  |  |  |  |

| ID | Task | Start | Finish | Duration | Complete | Total float | Predecessors | Other |
| --- | --- | --- | --- | --- | --- | --- | --- | --- |
| Cables | **Cables** | 2026-10-08 → 2026-10-28 (+20d) | 2026-11-19 → 2026-12-06 (+17d) |  |  |  |  |  |
| 4C,10+1C,10mm2 | **4C,10+1C,10mm2** | 2026-10-08 → 2026-10-28 (+20d) | 2026-11-19 → 2026-12-06 (+17d) |  |  |  |  |  |
| B2.33 71 19 122 | Land Adjustment | 2026-10-08 → 2026-10-28 (+20d) | 2026-10-11 → 2026-10-31 (+20d) |  |  | 5d → 6.32d |  |  |
| B2.33 71 49.23.142 | Cable Pulling | 2026-10-12 → 2026-11-01 (+20d) | 2026-10-13 → 2026-11-02 (+20d) |  |  | 85d → 82.32d |  |  |
| B2.33 71 19 132 | Backfilling | 2026-11-17 → 2026-12-03 (+16d) | 2026-11-19 → 2026-12-06 (+17d) |  |  | 56d → 56.32d |  |  |
| SL Poles | **SL Poles** | 2026-10-12 → 2026-11-01 (+20d) | 2026-10-28 → 2026-11-17 (+20d) |  |  |  |  |  |
| Pole (10 M Sngl Arm) | **Pole (10 M Single Arm)** | 2026-10-12 → 2026-11-01 (+20d) | 2026-10-28 → 2026-11-17 (+20d) |  |  |  |  |  |
| B2.33 71 16.67 | Excavation | 2026-10-12 → 2026-11-01 (+20d) | 2026-10-14 → 2026-11-03 (+20d) |  |  | 5d → 6.32d | B1.2.32 11 26.01.10, B2.33 71 19 122 → B1.2.32 11 26.01.10_R, B2.33 71 19 122 |  |
| B2.33 71 16.68 | PC & RC Foundation | 2026-10-15 → 2026-11-04 (+20d) | 2026-10-18 → 2026-11-07 (+20d) |  |  | 70d → 64.32d |  |  |
| B2.33 71 16.69 | Lighting Poles Installation Incl power box, Cables | 2026-10-19 → 2026-11-08 (+20d) | 2026-10-21 → 2026-11-10 (+20d) |  |  | 70d → 64.32d |  |  |
| B2.26.56.19.10 | Lighting Luminares Inst | 2026-10-22 → 2026-11-11 (+20d) | 2026-10-25 → 2026-11-14 (+20d) |  |  | 70d → 70.32d | B2.33 71 16.69, DMM2-Proc-Delv-6548 → B2.33 71 16.69, DMM2-Proc-Delv-6548_R |  |
| B2.33 71 16.70 | Backfilling, Grouting & Chamfering | 2026-10-26 → 2026-11-15 (+20d) | 2026-10-28 → 2026-11-17 (+20d) |  |  | 70d → 70.32d |  |  |
| Earthing | **Earthing** | 2026-10-31 → 2026-11-21 (+21d) | 2026-11-08 → 2026-11-29 (+21d) |  |  |  |  |  |
| B2.33 71 19 35 | Land Adjustment | 2026-10-31 → 2026-11-21 (+21d) | 2026-11-02 → 2026-11-23 (+21d) |  |  | 69d → 56.32d |  |  |
| B2.33 71 19 36 | Earth Rods & Conduits | 2026-11-03 → 2026-11-24 (+21d) | 2026-11-05 → 2026-11-26 (+21d) |  |  | 69d → 56.32d |  |  |
| B2.33 71 19 37 | Backfilling | 2026-11-07 → 2026-11-28 (+21d) | 2026-11-08 → 2026-11-29 (+21d) |  |  | 69d → 56.32d |  |  |
| Telecommunication | **Telecommunication Network** | 2026-09-24 → 2026-10-14 (+20d) | 2026-10-27 → 2026-11-18 (+22d) |  |  |  |  |  |
| Ducts | **Ducts** | 2026-09-24 → 2026-10-14 (+20d) | 2026-10-14 → 2026-11-04 (+21d) |  |  |  |  |  |
| (6*50mm+2*32mm) | **Size (6*50mm+2*32mm) HDPE ducts** | 2026-09-24 → 2026-10-14 (+20d) | 2026-10-03 → 2026-10-22 (+19d) |  |  |  |  |  |
| B2.1.33 81 26.123 | Excavation | 2026-09-24 → 2026-10-14 (+20d) | 2026-09-27 → 2026-10-17 (+20d) |  |  | 49d → 47.32d |  |  |
| B2.1.33 81 26.124 | HDPE Pipe, Shuttering, Steel Fixing & Conc. Cast | 2026-09-28 → 2026-10-18 (+20d) | 2026-09-30 → 2026-10-20 (+20d) |  |  | 52d → 50.32d |  |  |
| B2.1.33 81 26.125 | Backfilling & Warrning Tape | 2026-10-01 → 2026-10-21 (+20d) | 2026-10-03 → 2026-10-22 (+19d) |  |  | 52d → 50.32d |  |  |
| (6*50mm) | **Size (6*50mm) HDPE ducts** | 2026-09-24 → 2026-10-14 (+20d) | 2026-10-04 → 2026-10-24 (+20d) |  |  |  |  |  |
| B2.1.33 81 26.120 | Excavation | 2026-09-24 → 2026-10-14 (+20d) | 2026-09-27 → 2026-10-17 (+20d) |  |  | 49d → 47.32d |  |  |
| B2.1.33 81 26.121 | HDPE Pipe, Shuttering, Steel Fixing & Conc. Cast | 2026-09-28 → 2026-10-18 (+20d) | 2026-09-30 → 2026-10-20 (+20d) |  |  | 54d → 52.32d |  |  |
| B2.1.33 81 26.122 | Backfilling & Warrning Tape | 2026-10-01 → 2026-10-21 (+20d) | 2026-10-04 → 2026-10-24 (+20d) |  |  | 54d → 52.32d |  |  |
| (6*50mm+4*32mm) | **Size (6*50mm+4*32mm) HDPE ducts** | 2026-09-24 → 2026-10-14 (+20d) | 2026-10-04 → 2026-10-24 (+20d) |  |  |  |  |  |
| B2.1.33 81 26.126 | Excavation | 2026-09-24 → 2026-10-14 (+20d) | 2026-09-27 → 2026-10-17 (+20d) |  |  | 49d → 47.32d |  |  |
| B2.1.33 81 26.127 | HDPE Pipe, Shuttering, Steel Fixing & Conc. Cast | 2026-09-28 → 2026-10-18 (+20d) | 2026-09-30 → 2026-10-20 (+20d) |  |  | 54d → 52.32d |  |  |
| B2.1.33 81 26.128 | Backfilling & Warrning Tape | 2026-10-01 → 2026-10-21 (+20d) | 2026-10-04 → 2026-10-24 (+20d) |  |  | 54d → 52.32d |  |  |
| (2*32mm) | **Size (2*32mm) HDPE ducts** | 2026-09-28 → 2026-10-18 (+20d) | 2026-10-14 → 2026-11-04 (+21d) |  |  |  |  |  |
| B2.1.33 81 26.129 | Excavation | 2026-09-28 → 2026-10-18 (+20d) | 2026-09-29 → 2026-10-19 (+20d) |  |  | 49d → 47.32d |  |  |
| B2.1.33 81 26.130 | HDPE Pipe, Shuttering, Steel Fixing & Conc. Cast | 2026-09-30 → 2026-10-20 (+20d) | 2026-10-03 → 2026-10-22 (+19d) |  |  | 52d → 50.32d |  |  |
| B2.1.33 81 26.131 | Backfilling & Warrning Tape | 2026-10-11 → 2026-11-02 (+22d) | 2026-10-14 → 2026-11-04 (+21d) |  |  | 45.88d → 42.32d |  |  |
| Manholes | **Manholes** | 2026-10-03 → 2026-10-22 (+19d) | 2026-10-10 → 2026-10-29 (+19d) |  |  |  |  |  |
| Manhole Type 1 | **Manhole Type 1** | 2026-10-03 → 2026-10-22 (+19d) | 2026-10-10 → 2026-10-29 (+19d) |  |  |  |  |  |
| B2.31 23 00.620 | Excavation | 2026-10-03 → 2026-10-22 (+19d) | 2026-10-04 → 2026-10-24 (+20d) |  |  | 49d → 47.32d |  |  |
| B2.33 71 00.248 | Manhole Installation | 2026-10-05 → 2026-10-25 (+20d) | 2026-10-06 → 2026-10-26 (+20d) |  |  | 80d → 75.32d |  |  |
| B2.33 71 00.249 | Backfilling & Warrning Tape | 2026-10-07 → 2026-10-27 (+20d) | 2026-10-10 → 2026-10-29 (+19d) |  |  | 80d → 75.32d |  |  |
| Crossing Ducts | **Road Crossing Ducts** | 2026-09-30 → 2026-10-20 (+20d) | 2026-10-27 → 2026-11-18 (+22d) |  |  |  |  |  |
| 1 | **Size (6X50mm+4X32mm) HDPE** | 2026-09-30 → 2026-10-20 (+20d) | 2026-10-08 → 2026-10-28 (+20d) |  |  |  |  |  |
| B2.31 23 00.619 | Excavation | 2026-09-30 → 2026-10-20 (+20d) | 2026-10-01 → 2026-10-21 (+20d) |  |  | 49d → 47.32d |  |  |
| B2.33 71 00.246 | Shuttering, Steel Fixing Incl. UPVC Pipe & Conc. Cast | 2026-10-03 → 2026-10-22 (+19d) | 2026-10-05 → 2026-10-25 (+20d) |  |  | 50d → 48.32d |  |  |
| B2.33 71 00.247 | Backfilling & Warrning Tape | 2026-10-06 → 2026-10-26 (+20d) | 2026-10-08 → 2026-10-28 (+20d) |  |  | 50d → 48.32d |  |  |
| 2 | **Size (2*32mm) HDPE** | 2026-10-05 → 2026-10-25 (+20d) | 2026-10-27 → 2026-11-18 (+22d) |  |  |  |  |  |
| B2.31 23 00.621 | Excavation | 2026-10-05 → 2026-10-25 (+20d) | 2026-10-06 → 2026-10-26 (+20d) |  |  | 49d → 47.32d |  |  |
| B2.33 71 00.250 | Shuttering, Steel Fixing Incl. UPVC Pipe & Conc. Cast | 2026-10-07 → 2026-10-27 (+20d) | 2026-10-10 → 2026-10-29 (+19d) |  |  | 49d → 47.32d |  |  |
| B2.33 71 00.251 | Backfilling & Warrning Tape | 2026-10-25 → 2026-11-16 (+22d) | 2026-10-27 → 2026-11-18 (+22d) |  |  | 37d → 33.32d | B2.33 71 00.250, B2.33 71 00.265, B2.1.33 81 26.122, B2.1.33 81 26.128, B2.1.33 81 26.131, B2.33 71 00.247 → B2.33 71 00.250, B2.33 71 00.265, B2.1.33 81 26.122, B2.1.33 81 26.128, B2.1.33 81 26.131, B2.33 71 00.247, B2.33 71 00.261 |  |
| Earth & Road Works | **Earth & Road Works** |  | 2026-11-10 → 2026-11-30 (+20d) |  |  |  |  |  |
| Earth Layers | **Earth Layers** |  | 2026-09-19 → 2026-10-10 (+21d) |  |  |  |  |  |
| B1.2.32 11 13.01.10 | Subgrade (65.00% Completed) |  | 2026-09-19 → 2026-09-15 A (-4d) | 192.87d → 190.77d | 65% → 100% | 113.9d → none |  | was named Subgrade; resources Subgrade [1648.14]; Labor [93.55 h]; Foreman [46.78 h]; Operator [93.55 h]; Surveyor [46.78 h]; Surveyor Helper [46.78 h]; Grader [48 h]; Loader [48 h]; Water Tanker [48 h]; Dump Truck [48 h]; Plate Compactor [48 h]; Roller Compactor [48 h] → Subgrade [1071.29]; Labor [60.81 h]; Foreman [30.41 h]; Operator [60.81 h]; Surveyor [30.41 h]; Surveyor Helper [30.41 h]; Grader [31.2 h]; Loader [31.2 h]; Water Tanker [31.2 h]; Dump Truck [31.2 h]; Plate Compactor [31.2 h]; Roller Compactor [31.2 h] |
| B1.2.32 11 23.01.10 | Aggregate Base Course (60.00% Completed) |  | 2026-09-19 → 2026-09-15 A (-4d) | 100.8d → 98d | 60% → 100% | 113.2d → none |  | was named Aggregate Base Course; resources Aggregate base course [1098.76]; Labor [109.15 h]; Foreman [54.57 h]; Operator [109.15 h]; Surveyor [54.57 h]; Surveyor Helper [54.57 h]; Grader [56 h]; Loader [56 h]; Water Tanker [56 h]; Dump Truck [56 h]; Plate Compactor [56 h]; Roller Compactor [56 h] → Aggregate base course [659.26]; Labor [65.49 h]; Foreman [32.74 h]; Operator [65.49 h]; Surveyor [32.74 h]; Surveyor Helper [32.74 h]; Grader [33.6 h]; Loader [33.6 h]; Water Tanker [33.6 h]; Dump Truck [33.6 h]; Plate Compactor [33.6 h]; Roller Compactor [33.6 h] |
| Interlock | **Interlock** | 2026-10-07 → 2026-10-27 (+20d) | 2026-10-10 → 2026-10-29 (+19d) |  |  |  |  |  |
| B1.2.32 14 13.13.10 | 60mm thick - Interlocking Block Pavers | 2026-10-07 → 2026-10-27 (+20d) | 2026-10-10 → 2026-10-29 (+19d) |  |  | 4d → 5.32d |  |  |
| Curbstone | **Curbstone** | 2026-10-11 → 2026-10-31 (+20d) | 2026-10-31 → 2026-11-19 (+19d) |  |  |  |  |  |
| Pre Install | **Pre-Installation** | 2026-10-11 → 2026-10-31 (+20d) | 2026-10-17 → 2026-11-05 (+19d) |  |  |  |  |  |
| B2.31 23 00.271 | Excavation | 2026-10-11 → 2026-10-31 (+20d) | 2026-10-12 → 2026-11-01 (+20d) |  |  | 4d → 5.32d |  |  |
| B1.2.32 14 13.13.210 | PCC | 2026-10-13 → 2026-11-02 (+20d) | 2026-10-14 → 2026-11-03 (+20d) |  |  | 14d → 15.32d |  |  |
| 32 16 13.0010 | Haunching | 2026-10-15 → 2026-11-04 (+20d) | 2026-10-17 → 2026-11-05 (+19d) |  |  | 14d → 15.32d |  |  |
| Installation | **Installation** | 2026-10-18 → 2026-11-07 (+20d) | 2026-10-28 → 2026-11-17 (+20d) |  |  |  |  |  |
| B1.2.32 16.13.01.10 | Curb Stone, Type K1 | 2026-10-18 → 2026-11-07 (+20d) | 2026-10-19 → 2026-11-08 (+20d) |  |  | 14d → 15.32d |  |  |
| B1.2.32 16.13.02.9 | Dropped Curb, Type K3 | 2026-10-20 → 2026-11-09 (+20d) | 2026-10-21 → 2026-11-10 (+20d) |  |  | 14d → 15.32d |  |  |
| B1.2.32 16.13.03.10 | Edge Curb, Type K4 | 2026-10-22 → 2026-11-11 (+20d) | 2026-10-24 → 2026-11-12 (+19d) |  |  | 14d → 15.32d |  |  |
| B1.2.32 16.13.0410 | Heel Curb, Type K5 | 2026-10-25 → 2026-11-14 (+20d) | 2026-10-26 → 2026-11-15 (+20d) |  |  | 14d → 15.32d |  |  |
| B1.2.32 16.13.05.9 | Transition Curb | 2026-10-27 → 2026-11-16 (+20d) | 2026-10-28 → 2026-11-17 (+20d) |  |  | 14d → 15.32d |  |  |
| Finishing | **Finishing** | 2026-10-29 → 2026-11-18 (+20d) | 2026-10-31 → 2026-11-19 (+19d) |  |  |  |  |  |
| 32 16 13.010 | Finishing, Fareface | 2026-10-29 → 2026-11-18 (+20d) | 2026-10-31 → 2026-11-19 (+19d) |  |  | 14d → 15.32d |  |  |
| Asphalt Layers | **Asphalt Layers** |  | 2026-11-05 → 2026-11-25 (+20d) |  |  |  |  |  |
| B1.2.32 11 26.01.10 | Bituminous Base Course including Prime Coat (MC1) and tack coat (RC2) (71.00% Completed) |  | 2026-09-17 → 2026-09-15 A (-2d) | 93d → 91d | 71% → 100% | 24d → none |  | was named Bituminous Base Course including Prime Coat (MC1) and tack coat (RC2); resources Bituminous base course(Grading I - Class A) [752.84]; Labor [31.18 h]; Foreman [15.59 h]; Operator [31.18 h]; Surveyor [15.59 h]; Surveyor Helper [15.59 h]; Dump Truck [16 h]; Roller Compactor [16 h]; MC1/RC2 Sprayer [16 h] → Bituminous base course(Grading I - Class A) [534.52]; Labor [22.14 h]; Foreman [11.07 h]; Operator [22.14 h]; Surveyor [11.07 h]; Surveyor Helper [11.07 h]; Dump Truck [11.36 h]; Roller Compactor [11.36 h]; MC1/RC2 Sprayer [11.36 h] |
| B1.2.32 12 16.01.10 | Bituminous concrete Wearing Course, including tack coat (RC2) | 2026-11-01 → 2026-11-21 (+20d) | 2026-11-05 → 2026-11-25 (+20d) |  |  | 14d → 15.32d | B1.2.32 11 26.01.10 SS, 32 16 13.010 → B1.2.32 11 26.01.10_R SS, 32 16 13.010 |  |

| ID | Task | Start | Finish | Duration | Complete | Total float | Predecessors | Other |
| --- | --- | --- | --- | --- | --- | --- | --- | --- |
| Pavement Marking | **Pavement Marking** | 2026-11-07 → 2026-11-26 (+19d) | 2026-11-08 → 2026-11-28 (+20d) |  |  |  |  |  |
| B1.2.32 17 23.02.10 | Retroreflective Thermoplastic Yellow, Traffic lines | 2026-11-07 → 2026-11-26 (+19d) | 2026-11-07 → 2026-11-26 (+19d) |  |  | 67d → 64.32d |  |  |
| B1.2.32 17 23.01.10 | Retroreflective Thermoplastic White Traffic lines | 2026-11-08 → 2026-11-28 (+20d) | 2026-11-08 → 2026-11-28 (+20d) |  |  | 67d → 64.32d |  |  |
| Traffic Signs | **Traffic Signs** | 2026-10-13 → 2026-11-02 (+20d) | 2026-11-10 → 2026-11-30 (+20d) |  |  |  |  |  |
| Pre Install | **Pre-Installation** | 2026-10-13 → 2026-11-02 (+20d) | 2026-10-17 → 2026-11-05 (+19d) |  |  |  |  |  |
| B2.31 23 00.281 | Excavation | 2026-10-13 → 2026-11-02 (+20d) | 2026-10-14 → 2026-11-03 (+20d) |  |  | 4d → 5.32d |  |  |
| 10 14 53.010 | Foundation | 2026-10-15 → 2026-11-04 (+20d) | 2026-10-17 → 2026-11-05 (+19d) |  |  | 86d → 83.32d |  |  |
| Installation | **Installation** | 2026-11-09 → 2026-11-29 (+20d) | 2026-11-10 → 2026-11-30 (+20d) |  |  |  |  |  |
| B1.2.10 14 53.0110 | 1 Sheet Alumenium, Single post | 2026-11-09 → 2026-11-29 (+20d) | 2026-11-10 → 2026-11-30 (+20d) |  |  | 67d → 64.32d |  |  |
| Guard Rail | **Guard Rail** | 2026-09-22 → 2026-10-13 (+21d) | 2026-10-01 → 2026-10-21 (+20d) |  |  |  |  |  |
| B2.31 23 00.654 | Excavation | 2026-09-22 → 2026-10-13 (+21d) | 2026-09-26 → 2026-10-15 (+19d) |  |  | 44d → 45.32d |  |  |
| 10 14 53.15 | Foundation | 2026-09-26 → 2026-10-15 (+19d) | 2026-09-27 → 2026-10-17 (+20d) |  |  | 44d → 45.32d |  |  |
| B1.2.10 14 53.328 | W-Beam Guard Rail Installation | 2026-09-28 → 2026-10-18 (+20d) | 2026-10-01 → 2026-10-21 (+20d) |  |  | 44d → 45.32d |  |  |
| Landscape | **Landscape** | 2026-10-15 → 2026-11-04 (+20d) | 2026-11-05 → 2026-11-25 (+20d) |  |  |  |  |  |
| Fences | **Fences** | 2026-10-15 → 2026-11-04 (+20d) | 2026-11-05 → 2026-11-25 (+20d) |  |  |  |  |  |
| (ZATCA HCIS) | **Steel fence (ZATCA HCIS)** | 2026-10-15 → 2026-11-04 (+20d) | 2026-11-05 → 2026-11-25 (+20d) |  |  |  |  |  |
| B7.32 31 26.01-4 | Earthwork | 2026-10-15 → 2026-11-04 (+20d) | 2026-10-21 → 2026-11-10 (+20d) |  |  | 4d → 5.32d |  |  |
| B7.32 31 26.01-6 | Foundation | 2026-10-22 → 2026-11-11 (+20d) | 2026-10-28 → 2026-11-17 (+20d) |  |  | 4d → 5.32d |  |  |
| B7.32 31 26.01-8 | Fence Installation | 2026-10-29 → 2026-11-18 (+20d) | 2026-11-05 → 2026-11-25 (+20d) |  |  | 4d → 5.32d |  |  |
| Customs Road 04&RD05 | **Customs Road 04 & Road 05** |  | 2026-11-19 → 2026-12-16 (+27d) |  |  |  |  |  |
| Wet Networks | **Wet Networks** |  | 2026-10-31 → 2026-11-19 (+19d) |  |  |  |  |  |
| Stormwater Network | **Stormwater Network** |  | 2026-09-27 → 2026-10-18 (+21d) |  |  |  |  |  |
| Strom Manholes | **Manholes** |  | 2026-09-26 → 2026-10-13 (+17d) |  |  |  |  |  |
| 3 | **?2000** |  | 2026-09-26 → 2026-10-13 (+17d) |  |  |  |  |  |
| 3 | **Depth From 2.5m to 3.5m** |  | 2026-09-26 → 2026-10-13 (+17d) |  |  |  |  |  |
| B6.33 05 39.01.3687 | Blinding Conc, & RC Base (83.00% Completed) |  | 2026-09-19 → 2026-09-15 A (-4d) | 38d → 36d | 83% → 100% | 113d → none |  | was named Blinding Conc, & RC Base; resources Labor [46.78 h]; Foreman [23.39 h]; Laboratory Officer [23.39 h]; Carpenter [23.39 h]; Steelfixer [23.39 h]; Mason [23.39 h]; Storm MH depth 2.51 - 3.5m [0.42] → Labor [38.82 h]; Foreman [19.41 h]; Laboratory Officer [19.41 h]; Carpenter [19.41 h]; Steelfixer [19.41 h]; Mason [19.41 h]; Storm MH depth 2.51 - 3.5m [0.35] |
| B6.33 05 39.01.3697 | Manhole Installation (83.00% Completed) |  | 2026-09-19 → 2026-09-15 A (-4d) | 35d → 33d | 83% → 100% | 108d → none |  | was named Manhole Installation; resources Labor [31.18 h]; Operator [31.18 h]; Surveyor [15.59 h]; Surveyor Helper [15.59 h]; Boom Truck [16 h]; Mobile Crane [16 h]; Storm MH depth 2.51 - 3.5m [1.97] → Labor [25.88 h]; Operator [25.88 h]; Surveyor [12.94 h]; Surveyor Helper [12.94 h]; Boom Truck [13.28 h]; Mobile Crane [13.28 h]; Storm MH depth 2.51 - 3.5m [1.64] |
| B6.33 05 39.01.3717 | Backfilling (83.00% Completed) |  | 2026-09-26 → 2026-09-15 A (-11d) | 28d → 26d | 83% → 100% | 108d → none | B6.33 05 39.01.3707 FF → B6.33 42 11.34-1.9 | was named Backfilling; resources Labor [77.96 h]; Foreman [38.98 h]; Operator [77.96 h]; Surveyor [38.98 h]; Surveyor Helper [38.98 h]; Loader [40 h]; Water Tanker [40 h]; Dump Truck [40 h]; Plate Compactor [40 h]; Storm MH depth 2.51 - 3.5m [0.91] → Labor [64.71 h]; Foreman [32.35 h]; Operator [64.71 h]; Surveyor [32.35 h]; Surveyor Helper [32.35 h]; Loader [33.2 h]; Water Tanker [33.2 h]; Dump Truck [33.2 h]; Plate Compactor [33.2 h]; Storm MH depth 2.51 - 3.5m [0.75] |
| B6.33 05 39.01.3707 | Test, Internal Finishing, Benching & Cover | 2026-09-20 → 2026-10-07 (+17d) | 2026-09-26 → 2026-10-12 (+16d) |  |  | 108d → 105.32d | B6.33 05 39.01.3697 → B6.33 05 39.01.3697_R |  |
| Catch Basins | **Catch Basins** |  | 2026-09-27 → 2026-10-18 (+21d) |  |  |  |  |  |
| Sing | **Single** |  | 2026-09-27 → 2026-10-18 (+21d) |  |  |  |  |  |
| B6.33 05 40.01.450 | Excavation, Compaction & Vapour Barrier (67.00% Completed) |  | 2026-09-19 → 2026-09-15 A (-4d) | 86d → 84d | 67% → 100% | 113d → none |  | was named Excavation, Compaction & Vapour Barrier; resources Labor [31.18 h]; Foreman [15.59 h]; Operator [31.18 h]; Surveyor [15.59 h]; Surveyor Helper [15.59 h]; Excavator (With Bucket) [16 h]; Water Tanker [16 h]; Dump Truck [16 h]; Roller Compactor [16 h]; Single Catch basin [2.99] → Labor [20.89 h]; Foreman [10.45 h]; Operator [20.89 h]; Surveyor [10.45 h]; Surveyor Helper [10.45 h]; Excavator (With Bucket) [10.72 h]; Water Tanker [10.72 h]; Dump Truck [10.72 h]; Roller Compactor [10.72 h]; Single Catch basin [2] |
| B6.33 05 40.01.460 | Blinding Conc. (67.00% Completed) |  | 2026-09-19 → 2026-09-15 A (-4d) | 84d → 82d | 67% → 100% | 113d → none |  | was named Blinding Conc.; resources Labor [31.18 h]; Foreman [15.59 h]; Laboratory Officer [15.59 h]; Carpenter [15.59 h]; Steelfixer [15.59 h]; Mason [15.59 h]; Single Catch basin [1.99] → Labor [20.89 h]; Foreman [10.45 h]; Laboratory Officer [10.45 h]; Carpenter [10.45 h]; Steelfixer [10.45 h]; Mason [10.45 h]; Single Catch basin [1.33] |
| B6.33 05 40.01.470 | Catch Basin Installation (67.00% Completed) |  | 2026-09-19 → 2026-09-15 A (-4d) | 81.67d → 79.67d | 67% → 100% | 113d → none |  | was named Catch Basin Installation; resources Labor [46.78 h]; Foreman [23.39 h]; Carpenter [23.39 h]; Steelfixer [23.39 h]; Mason [23.39 h]; Operator [46.78 h]; Surveyor [23.39 h]; Surveyor Helper [23.39 h]; Boom Truck [24 h]; Single Catch basin [8.93] → Labor [31.34 h]; Foreman [15.67 h]; Carpenter [15.67 h]; Steelfixer [15.67 h]; Mason [15.67 h]; Operator [31.34 h]; Surveyor [15.67 h]; Surveyor Helper [15.67 h]; Boom Truck [16.08 h]; Single Catch basin [5.99] |
| B6.33 05 40.01.480 | Backfilling, DI Frame & Grate Cover Fixing | 2026-09-20 → 2026-10-15 (+25d) | 2026-09-27 → 2026-10-18 (+21d) | 6d → 3d |  | 0d → 2.32d | B6.33 42 11.36-195, B6.33 05 63.082, B6.33 05 40.01.200 → B6.33 42 11.36-195, B6.33 05 63.082_R, B6.33 05 40.01.200_R, B6.33 05 40.01.470_R |  |
| UPVC | **UPVC** |  | 2026-09-19 → 2026-10-01 (+12d) |  |  |  |  |  |
| UPVC300 | **?300 From 0.0 to 1.5m** |  | 2026-09-19 → 2026-10-01 (+12d) |  |  |  |  |  |
| B6.33 42 11.35-122 | Fittings & Pipe Installation |  |  | 1.25d → 2d |  |  | B6.33 42 11.35-110 SS → B6.33 05 39.01.3677 |  |
| B6.33 42 11.35-110 | Catch Basin Opening Prep. (67.00% Completed) |  | 2026-09-19 → 2026-09-15 A (-4d) | 81.67d → 79.67d | 67% → 100% | 113d → none |  | was named Catch Basin Opening Prep.; resources Labor [31.18 h]; Foreman [15.59 h]; Plumber Helper [15.59 h]; Plumber [15.59 h]; less than 1.5 [46.62] → Labor [20.89 h]; Foreman [10.45 h]; Plumber Helper [10.45 h]; Plumber [10.45 h]; less than 1.5 [31.23] |
| UPVC3001 | **?400 From 0.0 to 1.5m** |  | 2026-09-19 → 2026-09-27 (+8d) |  |  |  |  |  |
| B6.33 42 11.36-195 | Fittings & Pipe Installation |  |  | 1.25d → 2d |  |  | B6.33 42 11.35-122, B6.33 42 11.36-183 SS → B6.33 42 11.35-122 |  |
| B6.33 42 11.36-183 | Catch Basin Opening Prep. (67.00% Completed) |  | 2026-09-19 → 2026-09-15 A (-4d) | 81.67d → 79.67d | 67% → 100% | 113d → none |  | was named Catch Basin Opening Prep.; resources Labor [31.18 h]; Foreman [15.59 h]; Plumber Helper [15.59 h]; Plumber [15.59 h]; less than 1.5 [46.62] → Labor [20.89 h]; Foreman [10.45 h]; Plumber Helper [10.45 h]; Plumber [10.45 h]; less than 1.5 [31.23] |
| TSE Network | **TSE Network** |  | 2026-10-31 → 2026-11-19 (+19d) |  |  |  |  |  |
| HDPE | **HDPE Pipes** |  | 2026-09-21 → 2026-10-12 (+21d) |  |  |  |  |  |
| ?125mm | **?125mm** |  | 2026-09-21 → 2026-10-12 (+21d) |  |  |  |  |  |
| Depth: 0.0m - 1.5m | **Depth: 0.0m - 1.5m** |  | 2026-09-21 → 2026-10-12 (+21d) |  |  |  |  |  |
| B4.33 14 13.01-0191 | Excavation |  |  |  |  |  | B1.2.32 11 26.01.11 SS → B6.33 05 39.01.3677 |  |
| B4.33 14 13.01-0195 | Pipe Laying (20.75% Completed) |  | 2026-09-19 → 2026-09-15 A (-4d) | 132.59d → 131d | 21% → 100% | 42.41d → none |  | was named Pipe Laying; resources Labor [31.18 h]; Foreman [15.59 h]; Plumber Helper [15.59 h]; Plumber [15.59 h]; Operator [15.59 h]; Surveyor [15.59 h]; Surveyor Helper [15.59 h]; Mobile Crane [16 h]; Dia. 125mm 0.0m - 1.5m [181.8] → Labor [6.47 h]; Foreman [3.24 h]; Plumber Helper [3.24 h]; Plumber [3.24 h]; Operator [3.24 h]; Surveyor [3.24 h]; Surveyor Helper [3.24 h]; Mobile Crane [3.32 h]; Dia. 125mm 0.0m - 1.5m [37.72] |
| B4.33 14 13.01-0197 | Embedment & Test (20.75% Completed) |  | 2026-09-21 → 2026-09-15 A (-6d) | 114.17d → 111d | 21% → 100% | 94.83d → none |  | was named Embedment & Test; resources Labor [62.37 h]; Foreman [31.18 h]; Plumber Helper [31.18 h]; Plumber [31.18 h]; Operator [62.37 h]; Surveyor [31.18 h]; Surveyor Helper [31.18 h]; Loader [32 h]; Water Tanker [32 h]; Dump Truck [32 h]; Plate Compactor [32 h]; Roller Compactor [32 h]; Dia. 125mm 0.0m - 1.5m [80.8] → Labor [12.94 h]; Foreman [6.47 h]; Plumber Helper [6.47 h]; Plumber [6.47 h]; Operator [12.94 h]; Surveyor [6.47 h]; Surveyor Helper [6.47 h]; Loader [6.64 h]; Water Tanker [6.64 h]; Dump Truck [6.64 h]; Plate Compactor [6.64 h]; Roller Compactor [6.64 h]; Dia. 125mm 0.0m - 1.5m [16.77] |
| B4.33 14 13.01-0199 | Backfilling & Warrning Tape (20.75% Completed) |  | 2026-09-21 → 2026-09-15 A (-6d) | 111.96d → 108d | 21% → 100% | 94.04d → none |  | was named Backfilling & Warrning Tape; resources Labor [77.96 h]; Foreman [38.98 h]; Operator [155.92 h]; Surveyor [38.98 h]; Surveyor Helper [38.98 h]; Loader [40 h]; Water Tanker [40 h]; Dump Truck [40 h]; Plate Compactor [40 h]; Roller Compactor [40 h]; Dia. 125mm 0.0m - 1.5m [40.4] → Labor [16.18 h]; Foreman [8.09 h]; Operator [32.35 h]; Surveyor [8.09 h]; Surveyor Helper [8.09 h]; Loader [8.3 h]; Water Tanker [8.3 h]; Dump Truck [8.3 h]; Plate Compactor [8.3 h]; Roller Compactor [8.3 h]; Dia. 125mm 0.0m - 1.5m [8.38] |
| Valves | **Valves** | 2026-09-19 → 2026-10-10 (+21d) | 2026-10-31 → 2026-11-19 (+19d) |  |  |  |  |  |
| Solenoid valves | **Solenoid valves** | 2026-09-19 → 2026-10-10 (+21d) | 2026-10-31 → 2026-11-19 (+19d) |  |  |  |  |  |
| Solenoid valve ?1.0 | **1 Solenoid valve ?1.0 inch with box** | 2026-09-19 → 2026-10-10 (+21d) | 2026-10-24 → 2026-11-12 (+19d) |  |  |  |  |  |
| B4.32 84 13.062 | Pull Box Installation | 2026-09-19 → 2026-10-10 (+21d) | 2026-09-22 → 2026-10-13 (+21d) |  |  | 42.41d → 39.74d | B4.33 14 13.01-0195 → B4.33 14 13.01-0195_R |  |
| B4.32 84 13.40 | Cable Laying Two-Wire Decoder (12 AWG) | 2026-09-22 → 2026-10-13 (+21d) | 2026-09-27 → 2026-10-17 (+20d) |  |  | 42.41d → 39.74d | B4.33 14 13.01-0195, B4.32 84 13.062 → B4.33 14 13.01-0195_R, B4.32 84 13.062 |  |
| B4.32 84 13.41 | Solenoid Valve Box Installation | 2026-09-27 → 2026-10-17 (+20d) | 2026-09-30 → 2026-10-20 (+20d) |  |  | 42.41d → 39.74d |  |  |
| B4.32 84 13.42 | Bubblers Installation | 2026-10-21 → 2026-11-10 (+20d) | 2026-10-24 → 2026-11-12 (+19d) |  |  | 25d → 22.32d |  |  |
| Solenoid valve ?1.5 | **1 Solenoid valve ?1.5 inch with box** | 2026-09-22 → 2026-10-13 (+21d) | 2026-10-27 → 2026-11-16 (+20d) |  |  |  |  |  |
| B4.32 84 13.061 | Pull Box Installation | 2026-09-22 → 2026-10-13 (+21d) | 2026-09-27 → 2026-10-17 (+20d) |  |  | 42.41d → 39.74d |  |  |
| B4.32 84 13.43 | Cable Laying Two-Wire Decoder (12 AWG) | 2026-09-27 → 2026-10-17 (+20d) | 2026-09-30 → 2026-10-20 (+20d) |  |  | 42.41d → 39.74d |  |  |
| B4.32 84 13.44 | Solenoid Valve Box Installation | 2026-09-30 → 2026-10-20 (+20d) | 2026-10-04 → 2026-10-24 (+20d) |  |  | 42.41d → 39.74d |  |  |
| B4.32 84 13.45 | Bubblers Installation | 2026-10-25 → 2026-11-14 (+20d) | 2026-10-27 → 2026-11-16 (+20d) |  |  | 25d → 22.32d |  |  |
| Solenoid valve ?2.0 | **1 Solenoid valve ?2.0 inch with box** | 2026-09-30 → 2026-10-20 (+20d) | 2026-10-31 → 2026-11-19 (+19d) |  |  |  |  |  |
| B4.32 84 13.37 | Cable Laying Two-Wire Decoder (12 AWG) | 2026-09-30 → 2026-10-20 (+20d) | 2026-10-04 → 2026-10-24 (+20d) |  |  | 42.41d → 39.74d |  |  |
| B4.32 84 13.38 | Solenoid Valve Box Installation | 2026-10-04 → 2026-10-24 (+20d) | 2026-10-07 → 2026-10-27 (+20d) |  |  | 42.41d → 39.74d |  |  |
| B4.32 84 13.06 | Pull Box Installation | 2026-10-18 → 2026-11-07 (+20d) | 2026-10-20 → 2026-11-09 (+20d) |  |  | 25d → 22.32d |  |  |
| B4.32 84 13.39 | Bubblers Installation | 2026-10-28 → 2026-11-17 (+20d) | 2026-10-31 → 2026-11-19 (+19d) |  |  | 25d → 22.32d |  |  |
| Dry Networks | **Dry Networks** |  | 2026-11-19 → 2026-12-16 (+27d) |  |  |  |  |  |
| MV | **Medium Voltage Network** | 2026-09-28 → 2026-10-19 (+21d) | 2026-11-08 → 2026-12-05 (+27d) |  |  |  |  |  |
| Duct Banks | **Duct Banks** | 2026-09-28 → 2026-10-19 (+21d) | 2026-10-19 → 2026-11-09 (+21d) |  |  |  |  |  |

| ID | Task | Start | Finish | Total float | Predecessors |
| --- | --- | --- | --- | --- | --- |
| 4 Way | **2 Way** | 2026-09-28 → 2026-10-19 (+21d) | 2026-10-19 → 2026-11-09 (+21d) |  |  |
| B2.31 23 00.641 | Excavation | 2026-09-28 → 2026-10-19 (+21d) | 2026-10-01 → 2026-10-22 (+21d) | 0d → 2.32d |  |
| B2.33 71 00.290 | Shuttering, Steel Fixing Incl. UPVC Pipe & Conc. Cast | 2026-10-03 → 2026-10-24 (+21d) | 2026-10-11 → 2026-11-01 (+21d) | 0d → 2.32d |  |
| B2.33 71 00.291 | Backfilling & Warrning Tape | 2026-10-12 → 2026-11-02 (+21d) | 2026-10-19 → 2026-11-09 (+21d) | 0d → 2.32d |  |
| Cables | **Cables** | 2026-09-29 → 2026-10-19 (+20d) | 2026-10-20 → 2026-11-10 (+21d) |  |  |
| 3C,500mm2 | **3C,500mm2** | 2026-09-29 → 2026-10-19 (+20d) | 2026-10-20 → 2026-11-10 (+21d) |  |  |
| B2.33 71 49.23.86 | Cable 13.8 kV Unarmored | 2026-09-29 → 2026-10-19 (+20d) | 2026-10-03 → 2026-10-22 (+19d) | 3d → 4.32d |  |
| B2.33 71 49.23.87 | Straight joints cables | 2026-10-04 → 2026-10-24 (+20d) | 2026-10-06 → 2026-10-26 (+20d) | 85d → 82.32d |  |
| B2.33 71 49.23.88 | Cable Termination | 2026-10-17 → 2026-11-07 (+21d) | 2026-10-20 → 2026-11-10 (+21d) | 76.88d → 73.2d |  |
| RMU | **RMU** | 2026-10-04 → 2026-10-24 (+20d) | 2026-10-14 → 2026-11-03 (+20d) |  |  |
| B2 33 73 00.02.15 | Land Adjustment | 2026-10-04 → 2026-10-24 (+20d) | 2026-10-06 → 2026-10-26 (+20d) | 85d → 84.32d | B4.33 14 13.01-0199, B2.31 23 00.641, B2.33 71 49.23.86 → B4.33 14 13.01-0199_R, B2.31 23 00.641, B2.33 71 49.23.86 |
| B2 33 73 00.02.17 | Foundation Works & Curing | 2026-10-07 → 2026-10-27 (+20d) | 2026-10-11 → 2026-10-31 (+20d) | 88d → 85.32d |  |
| B2 33 73 00.02.19 | Installation of Ring Main Unit RMU, 13.8KV | 2026-10-12 → 2026-11-01 (+20d) | 2026-10-14 → 2026-11-03 (+20d) | 89d → 86.32d |  |
| Units Substation | **Units Substation** | 2026-10-07 → 2026-10-27 (+20d) | 2026-11-08 → 2026-12-05 (+27d) |  |  |
| B2 33 73 00.01.15 | Land Adjustment | 2026-10-07 → 2026-10-27 (+20d) | 2026-10-10 → 2026-10-29 (+19d) | 85d → 84.32d |  |
| B2 33 73 00.01.17 | Foundation Works & Curing | 2026-10-12 → 2026-11-01 (+20d) | 2026-10-15 → 2026-11-04 (+20d) | 88d → 85.32d |  |
| B2 33 73 00.01.19 | Installation of Unit Substation 13.8/0.4 K V | 2026-11-05 → 2026-12-01 (+26d) | 2026-11-08 → 2026-12-05 (+27d) | 71d → 62.91d |  |
| LV Network | **Low Voltage Network** | 2026-10-03 → 2026-10-24 (+21d) | 2026-11-03 → 2026-11-23 (+20d) |  |  |
| Duct Banks | **Duct Banks** | 2026-10-03 → 2026-10-24 (+21d) | 2026-11-03 → 2026-11-23 (+20d) |  |  |
| 4 Way | **4 Way** | 2026-10-03 → 2026-10-24 (+21d) | 2026-11-03 → 2026-11-23 (+20d) |  |  |
| B2.33 71 00 02 127 | Excavation | 2026-10-03 → 2026-10-24 (+21d) | 2026-10-05 → 2026-10-26 (+21d) | 37d → 8.32d |  |
| B2.33 71 00 02 128 | Shuttering, Steel Fixing Incl. UPVC Pipe & Conc. Cast | 2026-10-06 → 2026-10-27 (+21d) | 2026-10-08 → 2026-10-29 (+21d) | 85d → 81.32d |  |
| B2.33 71 00 02 129 | Backfilling & Warrning Tape | 2026-11-01 → 2026-11-21 (+20d) | 2026-11-03 → 2026-11-23 (+20d) | 66d → 63.32d |  |
| Cables | **Cables** | 2026-10-04 → 2026-10-24 (+20d) | 2026-10-05 → 2026-10-25 (+20d) |  |  |
| 4C,10+1C,10mm2 | **4C,10+1C,10mm2** | 2026-10-04 → 2026-10-24 (+20d) | 2026-10-05 → 2026-10-25 (+20d) |  |  |
| B2.33 71 00 01 14 | Cable Pulling | 2026-10-04 → 2026-10-24 (+20d) | 2026-10-05 → 2026-10-25 (+20d) | 3d → 4.32d |  |
| LV Panels | **0.6/1 KV Low Voltage Distribution Panels** | 2026-10-06 → 2026-10-26 (+20d) | 2026-10-22 → 2026-11-11 (+20d) |  |  |
| B2.33 71 26 30 | Land Adjustment | 2026-10-06 → 2026-10-26 (+20d) | 2026-10-07 → 2026-10-27 (+20d) | 3d → 4.32d |  |
| B2.33 71 26 31 | Foundation Works & Curing | 2026-10-14 → 2026-11-03 (+20d) | 2026-10-17 → 2026-11-05 (+19d) | 3d → 4.32d |  |
| B2.33 71 26 29 | Installation of 0.6/1 KV Low Voltage Distribution Panels | 2026-10-21 → 2026-11-10 (+20d) | 2026-10-22 → 2026-11-11 (+20d) | 35d → 33.32d |  |
| LV Pillars | **0.6/1 KV Low Voltage Distribution Pillars** | 2026-10-08 → 2026-10-28 (+20d) | 2026-10-20 → 2026-11-09 (+20d) |  |  |
| B2.33 71 26 33 | Land Adjustment | 2026-10-08 → 2026-10-28 (+20d) | 2026-10-10 → 2026-10-29 (+19d) | 3d → 4.32d |  |
| B2.33 71 26 34 | Foundation Works & Curing | 2026-10-11 → 2026-10-31 (+20d) | 2026-10-13 → 2026-11-02 (+20d) | 3d → 4.32d |  |
| B2.33 71 26 32 | Installation of 0.6/1 KV Low Voltage Distribution Pillars | 2026-10-19 → 2026-11-08 (+20d) | 2026-10-20 → 2026-11-09 (+20d) | 35d → 33.32d |  |
| Street Lighting | **Street Lighting** | 2026-10-06 → 2026-10-27 (+21d) | 2026-11-19 → 2026-12-16 (+27d) |  |  |
| Duct Banks | **Duct Banks** | 2026-10-06 → 2026-10-27 (+21d) | 2026-10-17 → 2026-11-07 (+21d) |  |  |
| 2 Way | **2 Way** | 2026-10-06 → 2026-10-27 (+21d) | 2026-10-17 → 2026-11-07 (+21d) |  |  |
| B2.33 71 00 02 73 | Excavation | 2026-10-06 → 2026-10-27 (+21d) | 2026-10-08 → 2026-10-29 (+21d) | 37d → 8.32d |  |
| B2.33 71 00 02 74 | Shuttering, Steel Fixing Incl. UPVC Pipe & Conc. Cast | 2026-10-10 → 2026-10-31 (+21d) | 2026-10-12 → 2026-11-02 (+21d) | 91d → 9.32d |  |
| B2.33 71 00 02 75 | Backfilling & Warrning Tape | 2026-10-14 → 2026-11-04 (+21d) | 2026-10-17 → 2026-11-07 (+21d) | 90d → 8.32d |  |
| Drawpits | **Drawpits** | 2026-10-06 → 2026-10-27 (+21d) | 2026-10-13 → 2026-11-03 (+21d) |  |  |
| B2.33 71 00 02 76 | Excavation | 2026-10-06 → 2026-10-27 (+21d) | 2026-10-07 → 2026-10-28 (+21d) | 38d → 8.32d |  |
| B2.33 71 00 02 77 | Drawpits Installation | 2026-10-08 → 2026-10-29 (+21d) | 2026-10-10 → 2026-10-31 (+21d) | 90d → 8.32d |  |
| B2.33 71 00 02 78 | Backfilling & Warrning Tape | 2026-10-11 → 2026-11-01 (+21d) | 2026-10-13 → 2026-11-03 (+21d) | 90d → 8.32d |  |
| Cables | **Cables** | 2026-10-27 → 2026-11-17 (+21d) | 2026-11-19 → 2026-12-16 (+27d) |  |  |
| 4C,10+1C,10mm2 | **4C,10+1C,10mm2** | 2026-10-27 → 2026-11-17 (+21d) | 2026-11-19 → 2026-12-16 (+27d) |  |  |
| B2.33 71 19 162 | Land Adjustment | 2026-10-27 → 2026-11-17 (+21d) | 2026-10-28 → 2026-11-18 (+21d) | 71d → 69.32d |  |
| B2.33 71 49.23.162 | Cable Pulling | 2026-10-29 → 2026-11-19 (+21d) | 2026-11-03 → 2026-11-24 (+21d) | 71d → 69.32d |  |
| B2.33 71 19 172 | Backfilling | 2026-11-18 → 2026-12-14 (+26d) | 2026-11-19 → 2026-12-16 (+27d) | 59d → 52.91d |  |
| SL Poles | **SL Poles** | 2026-10-20 → 2026-11-10 (+21d) | 2026-11-01 → 2026-11-22 (+21d) |  |  |
| Pole (10 M Sngl Arm) | **Pole (10 M Single Arm)** | 2026-10-20 → 2026-11-10 (+21d) | 2026-11-01 → 2026-11-22 (+21d) |  |  |
| B2.33 71 16.87 | Excavation | 2026-10-20 → 2026-11-10 (+21d) | 2026-10-22 → 2026-11-12 (+21d) | 0d → 2.32d | B2.33 71 00.291, B2.33 71 16.116 → B2.33 71 00.291, B2.33 71 16.116_R |
| B2.33 71 16.88 | PC & RC Foundation | 2026-10-24 → 2026-11-14 (+21d) | 2026-10-26 → 2026-11-16 (+21d) | 0d → 2.32d |  |
| B2.33 71 16.89 | Lighting Poles Installation Incl power box, Cables | 2026-10-27 → 2026-11-17 (+21d) | 2026-10-29 → 2026-11-19 (+21d) | 0d → 2.32d |  |
| B2.26.56.19.15 | Lighting Luminares Inst | 2026-10-31 → 2026-11-21 (+21d) | 2026-11-01 → 2026-11-22 (+21d) | 0d → 2.32d |  |
| B2.33 71 16.90 | Backfilling, Grouting & Chamfering | 2026-10-31 → 2026-11-21 (+21d) | 2026-11-01 → 2026-11-22 (+21d) | 0d → 2.32d |  |
| Telecommunication | **Telecommunication Network** |  | 2026-10-25 → 2026-11-15 (+21d) |  |  |
| Ducts | **Ducts** |  | 2026-10-21 → 2026-11-11 (+21d) |  |  |
| (6*50mm) | **Size (6*50mm) HDPE ducts** | 2026-10-10 → 2026-10-31 (+21d) | 2026-10-18 → 2026-11-08 (+21d) |  |  |
| B2.1.33 81 26.150 | Excavation | 2026-10-10 → 2026-10-31 (+21d) | 2026-10-11 → 2026-11-01 (+21d) | 37d → 33.32d |  |
| B2.1.33 81 26.151 | HDPE Pipe, Shuttering, Steel Fixing & Conc. Cast | 2026-10-12 → 2026-11-02 (+21d) | 2026-10-14 → 2026-11-04 (+21d) | 40d → 37.32d |  |
| B2.1.33 81 26.152 | Backfilling & Warrning Tape | 2026-10-15 → 2026-11-05 (+21d) | 2026-10-18 → 2026-11-08 (+21d) | 40d → 37.32d |  |
| (6*50mm+2*32mm) | **Size (6*50mm+2*32mm) HDPE ducts** | 2026-10-12 → 2026-11-02 (+21d) | 2026-10-20 → 2026-11-10 (+21d) |  |  |
| B2.1.33 81 26.153 | Excavation | 2026-10-12 → 2026-11-02 (+21d) | 2026-10-13 → 2026-11-03 (+21d) | 37d → 33.32d |  |
| B2.1.33 81 26.154 | HDPE Pipe, Shuttering, Steel Fixing & Conc. Cast | 2026-10-14 → 2026-11-04 (+21d) | 2026-10-17 → 2026-11-07 (+21d) | 81d → 35.32d |  |
| B2.1.33 81 26.155 | Backfilling & Warrning Tape | 2026-10-18 → 2026-11-08 (+21d) | 2026-10-20 → 2026-11-10 (+21d) | 81d → 35.32d |  |
| (6*50mm+4*32mm) | **Size (6*50mm+4*32mm) HDPE ducts** | 2026-10-14 → 2026-11-04 (+21d) | 2026-10-21 → 2026-11-11 (+21d) |  |  |
| B2.1.33 81 26.156 | Excavation | 2026-10-14 → 2026-11-04 (+21d) | 2026-10-15 → 2026-11-05 (+21d) | 37d → 33.32d |  |
| B2.1.33 81 26.157 | HDPE Pipe, Shuttering, Steel Fixing & Conc. Cast | 2026-10-17 → 2026-11-07 (+21d) | 2026-10-18 → 2026-11-08 (+21d) | 37d → 34.32d |  |
| B2.1.33 81 26.158 | Backfilling & Warrning Tape | 2026-10-19 → 2026-11-09 (+21d) | 2026-10-21 → 2026-11-11 (+21d) | 37d → 34.32d |  |

| ID | Task | Start | Finish | Duration | Complete | Total float | Predecessors | Other |
| --- | --- | --- | --- | --- | --- | --- | --- | --- |
| Manholes | **Manholes** | 2026-10-14 → 2026-11-04 (+21d) | 2026-10-24 → 2026-11-14 (+21d) |  |  |  |  |  |
| Manhole Type 1 | **Manhole Type 1** | 2026-10-14 → 2026-11-04 (+21d) | 2026-10-21 → 2026-11-11 (+21d) |  |  |  |  |  |
| B2.31 23 00.627 | Excavation | 2026-10-14 → 2026-11-04 (+21d) | 2026-10-15 → 2026-11-05 (+21d) |  |  | 38d → 33.32d |  |  |
| B2.33 71 00.262 | Manhole Installation | 2026-10-17 → 2026-11-07 (+21d) | 2026-10-18 → 2026-11-08 (+21d) |  |  | 78d → 34.32d |  |  |
| B2.33 71 00.263 | Backfilling & Warrning Tape | 2026-10-19 → 2026-11-09 (+21d) | 2026-10-21 → 2026-11-11 (+21d) |  |  | 78d → 34.32d |  |  |
| Manhole Type 2 | **Manhole Type 2** | 2026-10-17 → 2026-11-07 (+21d) | 2026-10-24 → 2026-11-14 (+21d) |  |  |  |  |  |
| B2.31 23 00.628 | Excavation | 2026-10-17 → 2026-11-07 (+21d) | 2026-10-18 → 2026-11-08 (+21d) |  |  | 38d → 33.32d |  |  |
| B2.33 71 00.264 | Manhole Installation | 2026-10-19 → 2026-11-09 (+21d) | 2026-10-20 → 2026-11-10 (+21d) |  |  | 38d → 35.32d |  |  |
| B2.33 71 00.265 | Backfilling & Warrning Tape | 2026-10-22 → 2026-11-12 (+21d) | 2026-10-24 → 2026-11-14 (+21d) |  |  | 37d → 34.32d |  |  |
| Crossing Ducts | **Road Crossing Ducts** | 2026-10-19 → 2026-11-09 (+21d) | 2026-10-25 → 2026-11-15 (+21d) |  |  |  |  |  |
| 1 | **Size (6X50mm) HDPE** | 2026-10-19 → 2026-11-09 (+21d) | 2026-10-25 → 2026-11-15 (+21d) |  |  |  |  |  |
| B2.31 23 00.626 | Excavation | 2026-10-19 → 2026-11-09 (+21d) | 2026-10-20 → 2026-11-10 (+21d) |  |  | 77d → 33.32d |  |  |
| B2.33 71 00.260 | Shuttering, Steel Fixing Incl. UPVC Pipe & Conc. Cast | 2026-10-21 → 2026-11-11 (+21d) | 2026-10-22 → 2026-11-12 (+21d) |  |  | 77d → 33.32d |  |  |
| B2.33 71 00.261 | Backfilling & Warrning Tape | 2026-10-24 → 2026-11-14 (+21d) | 2026-10-25 → 2026-11-15 (+21d) |  |  | 77d → 33.32d | B2.33 71 00.260, B2.33 71 00.263, B2.33 71 00.255 → B2.33 71 00.260, B2.33 71 00.263, B2.33 71 00.255, B2.1.33 81 26.155 |  |
| Earth & Road Works | **Earth & Road Works** |  | 2026-11-15 → 2026-12-06 (+21d) |  |  |  |  |  |
| Earth Layers | **Earth Layers** |  | 2026-09-17 → 2026-10-08 (+21d) |  |  |  |  |  |
| B1.2.32 11 13.01.11 | Subgrade (65.00% Completed) |  | 2026-09-17 → 2026-09-15 A (-2d) | 166.9d → 164.9d | 65% → 100% | 114d → none |  | was named Subgrade; resources Subgrade [1347.85]; Labor [31.18 h]; Foreman [15.59 h]; Operator [31.18 h]; Surveyor [15.59 h]; Surveyor Helper [15.59 h]; Grader [16 h]; Loader [16 h]; Water Tanker [16 h]; Dump Truck [16 h]; Plate Compactor [16 h]; Roller Compactor [16 h] → Subgrade [876.1]; Labor [20.27 h]; Foreman [10.14 h]; Operator [20.27 h]; Surveyor [10.14 h]; Surveyor Helper [10.14 h]; Grader [10.4 h]; Loader [10.4 h]; Water Tanker [10.4 h]; Dump Truck [10.4 h]; Plate Compactor [10.4 h]; Roller Compactor [10.4 h] |
| B1.2.32 11 23.01.11 | Aggregate Base Course (52.00% Completed) |  | 2026-09-17 → 2026-09-15 A (-2d) | 100d → 98d | 52% → 100% | 114d → none |  | was named Aggregate Base Course; resources Aggregate base course [898.57]; Labor [31.18 h]; Foreman [15.59 h]; Operator [31.18 h]; Surveyor [15.59 h]; Surveyor Helper [15.59 h]; Grader [16 h]; Loader [16 h]; Water Tanker [16 h]; Dump Truck [16 h]; Plate Compactor [16 h]; Roller Compactor [16 h] → Aggregate base course [467.25]; Labor [16.22 h]; Foreman [8.11 h]; Operator [16.22 h]; Surveyor [8.11 h]; Surveyor Helper [8.11 h]; Grader [8.32 h]; Loader [8.32 h]; Water Tanker [8.32 h]; Dump Truck [8.32 h]; Plate Compactor [8.32 h]; Roller Compactor [8.32 h] |
| Interlock | **Interlock** | 2026-10-31 → 2026-11-21 (+21d) | 2026-11-01 → 2026-11-22 (+21d) |  |  |  |  |  |
| B1.2.32 14 13.13.11 | 60mm thick - Interlocking Block Pavers | 2026-10-31 → 2026-11-21 (+21d) | 2026-11-01 → 2026-11-22 (+21d) |  |  | 0d → 2.32d |  |  |
| Curbstone | **Curbstone** | 2026-10-31 → 2026-11-21 (+21d) | 2026-11-15 → 2026-12-06 (+21d) |  |  |  |  |  |
| Pre Install | **Pre-Installation** | 2026-10-31 → 2026-11-21 (+21d) | 2026-11-04 → 2026-11-25 (+21d) |  |  |  |  |  |
| B2.31 23 00.301 | Excavation | 2026-10-31 → 2026-11-21 (+21d) | 2026-11-01 → 2026-11-22 (+21d) |  |  | 0d → 2.32d |  |  |
| B1.2.32 14 13.13.211 | PCC | 2026-11-01 → 2026-11-22 (+21d) | 2026-11-02 → 2026-11-23 (+21d) |  |  | 6d → 6.32d |  |  |
| 32 16 13.0011 | Haunching | 2026-11-03 → 2026-11-24 (+21d) | 2026-11-04 → 2026-11-25 (+21d) |  |  | 6d → 6.32d |  |  |
| Installation | **Installation** | 2026-11-05 → 2026-11-26 (+21d) | 2026-11-12 → 2026-12-03 (+21d) |  |  |  |  |  |
| B1.2.32 16.13.01.11 | Curb Stone, Type K1 | 2026-11-05 → 2026-11-26 (+21d) | 2026-11-08 → 2026-11-29 (+21d) |  |  | 6d → 6.32d |  |  |
| B1.2.32 16.13.02.10 | Dropped Curb, Type K3 | 2026-11-09 → 2026-11-30 (+21d) | 2026-11-09 → 2026-11-30 (+21d) |  |  | 6d → 6.32d |  |  |
| B1.2.32 16.13.03.11 | Edge Curb, Type K4 | 2026-11-10 → 2026-12-01 (+21d) | 2026-11-10 → 2026-12-01 (+21d) |  |  | 6d → 6.32d |  |  |
| B1.2.32 16.13.0411 | Heel Curb, Type K5 | 2026-11-11 → 2026-12-02 (+21d) | 2026-11-11 → 2026-12-02 (+21d) |  |  | 6d → 6.32d |  |  |
| B1.2.32 16.13.05.10 | Transition Curb | 2026-11-12 → 2026-12-03 (+21d) | 2026-11-12 → 2026-12-03 (+21d) |  |  | 6d → 6.32d |  |  |
| Finishing | **Finishing** | 2026-11-14 → 2026-12-05 (+21d) | 2026-11-15 → 2026-12-06 (+21d) |  |  |  |  |  |
| 32 16 13.011 | Finishing, Fareface | 2026-11-14 → 2026-12-05 (+21d) | 2026-11-15 → 2026-12-06 (+21d) |  |  | 6d → 6.32d |  |  |
| Asphalt Layers | **Asphalt Layers** |  | 2026-09-20 → 2026-10-11 (+21d) |  |  |  |  |  |
| B1.2.32 11 26.01.11 | Bituminous Base Course including Prime Coat (MC1) and tack coat (RC2) (69.00% Completed) |  | 2026-09-17 → 2026-09-15 A (-2d) | 98d → 96d | 69% → 100% | 53d → none |  | was named Bituminous Base Course including Prime Coat (MC1) and tack coat (RC2); resources Bituminous base course(Grading I - Class A) [615.67]; Labor [31.18 h]; Foreman [15.59 h]; Operator [31.18 h]; Surveyor [15.59 h]; Surveyor Helper [15.59 h]; Dump Truck [16 h]; Roller Compactor [16 h]; MC1/RC2 Sprayer [16 h] → Bituminous base course(Grading I - Class A) [424.81]; Labor [21.52 h]; Foreman [10.76 h]; Operator [21.52 h]; Surveyor [10.76 h]; Surveyor Helper [10.76 h]; Dump Truck [11.04 h]; Roller Compactor [11.04 h]; MC1/RC2 Sprayer [11.04 h] |
| B1.2.32 12 16.01.11 | Bituminous concrete Wearing Course, including tack coat (RC2) | 2026-09-19 → 2026-10-08 (+19d) | 2026-09-20 → 2026-10-11 (+21d) |  |  | 53d → 54.74d | B1.2.32 11 26.01.11 → B1.2.32 11 26.01.11_R |  |
| Pavement Marking | **Pavement Marking** | 2026-09-21 → 2026-10-11 (+20d) | 2026-10-07 → 2026-10-24 (+17d) |  |  |  |  |  |
| B1.2.32 17 23.02.11 | Retroreflective Thermoplastic Yellow, Traffic lines | 2026-09-21 → 2026-10-11 (+20d) | 2026-09-22 → 2026-10-13 (+21d) |  |  | 106d → 103.74d |  |  |
| B1.2.32 17 23.01.11 | Retroreflective Thermoplastic White Traffic lines | 2026-10-06 → 2026-10-22 (+16d) | 2026-10-07 → 2026-10-24 (+17d) |  |  | 94d → 94.32d |  |  |
| Traffic Signs | **Traffic Signs** | 2026-10-31 → 2026-11-21 (+21d) | 2026-11-05 → 2026-11-26 (+21d) |  |  |  |  |  |
| Pre Install | **Pre-Installation** | 2026-10-31 → 2026-11-21 (+21d) | 2026-11-03 → 2026-11-24 (+21d) |  |  |  |  |  |
| B2.31 23 00.311 | Excavation | 2026-10-31 → 2026-11-21 (+21d) | 2026-11-01 → 2026-11-22 (+21d) |  |  | 0d → 2.32d |  |  |
| 10 14 53.011 | Foundation | 2026-11-02 → 2026-11-23 (+21d) | 2026-11-03 → 2026-11-24 (+21d) |  |  | 71d → 67.32d |  |  |
| Installation | **Installation** | 2026-11-04 → 2026-11-25 (+21d) | 2026-11-05 → 2026-11-26 (+21d) |  |  |  |  |  |
| B1.2.10 14 14.0211 | Ground mounted, 1 Sheet Alumenium, Double post | 2026-11-04 → 2026-11-25 (+21d) | 2026-11-05 → 2026-11-26 (+21d) |  |  | 71d → 67.32d |  |  |
| B1.2.10 14 53.0111 | 1 Sheet Alumenium, Single post | 2026-11-04 → 2026-11-25 (+21d) | 2026-11-05 → 2026-11-26 (+21d) |  |  | 71d → 67.32d |  |  |
| Customs Road 06 | **Customs Road 06** |  | 2026-11-29 → 2026-12-13 (+14d) |  |  |  |  |  |
| Wet Networks | **Wet Networks** |  | 2026-09-22 → 2026-10-11 (+19d) |  |  |  |  |  |
| Stormwater Network | **Stormwater Network** |  | 2026-09-22 → 2026-10-11 (+19d) |  |  |  |  |  |
| Strom Manholes | **Manholes** |  | 2026-09-20 → 2026-10-11 (+21d) |  |  |  |  |  |
| 3 | **?2000** |  | 2026-09-20 → 2026-10-11 (+21d) |  |  |  |  |  |
| 3 | **Depth From 2.5m to 3.5m** |  | 2026-09-20 → 2026-10-11 (+21d) |  |  |  |  |  |
| B6.33 05 39.01.3747 | Manhole Installation (54.00% Completed) |  | 2026-09-19 → 2026-09-15 A (-4d) | 89d → 87d | 54% → 100% | 113d → none |  | was named Manhole Installation; resources Labor [31.18 h]; Operator [31.18 h]; Surveyor [15.59 h]; Surveyor Helper [15.59 h]; Boom Truck [16 h]; Mobile Crane [16 h]; Storm MH depth 2.51 - 3.5m [1.97] → Labor [16.84 h]; Operator [16.84 h]; Surveyor [8.42 h]; Surveyor Helper [8.42 h]; Boom Truck [8.64 h]; Mobile Crane [8.64 h]; Storm MH depth 2.51 - 3.5m [1.06] |
| B6.33 05 39.01.3757 | Test, Internal Finishing, Benching & Cover (33.33% Completed) |  | 2026-09-20 → 2026-09-15 A (-5d) | 88.67d → 86d | 33% → 100% | 112.33d → none |  | was named Test, Internal Finishing, Benching & Cover; resources Labor [62.37 h]; Foreman [31.18 h]; Plumber Helper [31.18 h]; Plumber [31.18 h]; Mason [31.18 h]; Storm MH depth 2.51 - 3.5m [0.42] → Labor [20.79 h]; Foreman [10.39 h]; Plumber Helper [10.39 h]; Plumber [10.39 h]; Mason [10.39 h]; Storm MH depth 2.51 - 3.5m [0.14] |
| B6.33 05 39.01.3767 | Backfilling (83.00% Completed) |  | 2026-09-19 → 2026-09-15 A (-4d) | 36.33d → 34.33d | 83% → 100% | 113d → none |  | was named Backfilling; resources Labor [77.96 h]; Foreman [38.98 h]; Operator [77.96 h]; Surveyor [38.98 h]; Surveyor Helper [38.98 h]; Loader [40 h]; Water Tanker [40 h]; Dump Truck [40 h]; Plate Compactor [40 h]; Storm MH depth 2.51 - 3.5m [0.91] → Labor [64.71 h]; Foreman [32.35 h]; Operator [64.71 h]; Surveyor [32.35 h]; Surveyor Helper [32.35 h]; Loader [33.2 h]; Water Tanker [33.2 h]; Dump Truck [33.2 h]; Plate Compactor [33.2 h]; Storm MH depth 2.51 - 3.5m [0.75] |
| Catch Basins | **Catch Basins** |  | 2026-09-22 → 2026-10-08 (+16d) |  |  |  |  |  |
| Sing | **Single** |  | 2026-09-19 → 2026-10-07 (+18d) |  |  |  |  |  |
| B6.33 05 40.01.490 | Excavation, Compaction & Vapour Barrier (80.00% Completed) |  | 2026-09-19 → 2026-09-15 A (-4d) | 86d → 84d | 80% → 100% | 113d → none |  | was named Excavation, Compaction & Vapour Barrier; resources Labor [31.18 h]; Foreman [15.59 h]; Operator [31.18 h]; Surveyor [15.59 h]; Surveyor Helper [15.59 h]; Excavator (With Bucket) [16 h]; Water Tanker [16 h]; Dump Truck [16 h]; Roller Compactor [16 h]; Single Catch basin [2.99] → Labor [24.95 h]; Foreman [12.47 h]; Operator [24.95 h]; Surveyor [12.47 h]; Surveyor Helper [12.47 h]; Excavator (With Bucket) [12.8 h]; Water Tanker [12.8 h]; Dump Truck [12.8 h]; Roller Compactor [12.8 h]; Single Catch basin [2.39] |
| B6.33 05 40.01.520 | Backfilling, DI Frame & Grate Cover Fixing (80.00% Completed) |  | 2026-09-17 → 2026-09-15 A (-2d) | 85d → 84d | 80% → 100% | 11d → none |  | was named Backfilling, DI Frame & Grate Cover Fixing; resources Labor [77.96 h]; Foreman [38.98 h]; Operator [77.96 h]; Surveyor [38.98 h]; Surveyor Helper [38.98 h]; Loader [40 h]; Water Tanker [40 h]; Dump Truck [40 h]; Plate Compactor [40 h]; Single Catch basin [5.96] → Labor [62.37 h]; Foreman [31.18 h]; Operator [62.37 h]; Surveyor [31.18 h]; Surveyor Helper [31.18 h]; Loader [32 h]; Water Tanker [32 h]; Dump Truck [32 h]; Plate Compactor [32 h]; Single Catch basin [4.76] |
| B6.33 05 40.01.500 | Blinding Conc. (80.00% Completed) |  | 2026-09-19 → 2026-09-15 A (-4d) | 84d → 82d | 80% → 100% | 113d → none |  | was named Blinding Conc.; resources Labor [31.18 h]; Foreman [15.59 h]; Laboratory Officer [15.59 h]; Carpenter [15.59 h]; Steelfixer [15.59 h]; Mason [15.59 h]; Single Catch basin [1.99] → Labor [24.95 h]; Foreman [12.47 h]; Laboratory Officer [12.47 h]; Carpenter [12.47 h]; Steelfixer [12.47 h]; Mason [12.47 h]; Single Catch basin [1.59] |
| B6.33 05 40.01.510 | Catch Basin Installation (80.00% Completed) |  | 2026-09-19 → 2026-09-15 A (-4d) | 82d → 80d | 80% → 100% | 113d → none |  | was named Catch Basin Installation; resources Labor [46.78 h]; Foreman [23.39 h]; Carpenter [23.39 h]; Steelfixer [23.39 h]; Mason [23.39 h]; Operator [46.78 h]; Surveyor [23.39 h]; Surveyor Helper [23.39 h]; Boom Truck [24 h]; Single Catch basin [8.93] → Labor [37.42 h]; Foreman [18.71 h]; Carpenter [18.71 h]; Steelfixer [18.71 h]; Mason [18.71 h]; Operator [37.42 h]; Surveyor [18.71 h]; Surveyor Helper [18.71 h]; Boom Truck [19.2 h]; Single Catch basin [7.15] |
| Dou | **Double** |  | 2026-09-22 → 2026-10-08 (+16d) |  |  |  |  |  |
| B6.33 05 40.01.930 | Excavation, Compaction & Vapour Barrier (44.00% Completed) |  | 2026-09-19 → 2026-09-15 A (-4d) | 6.72d → 5.6d | 44% → 100% | 113.88d → none |  | was named Excavation, Compaction & Vapour Barrier; resources Labor [31.18 h]; Foreman [15.59 h]; Operator [31.18 h]; Surveyor [15.59 h]; Surveyor Helper [15.59 h]; Excavator (With Bucket) [16 h]; Water Tanker [16 h]; Dump Truck [16 h]; Roller Compactor [16 h]; Double Catch basin [0.6] → Labor [13.72 h]; Foreman [6.86 h]; Operator [13.72 h]; Surveyor [6.86 h]; Surveyor Helper [6.86 h]; Excavator (With Bucket) [7.04 h]; Water Tanker [7.04 h]; Dump Truck [7.04 h]; Roller Compactor [7.04 h]; Double Catch basin [0.26] |
| B6.33 05 40.01.940 | Blinding Conc. (44.00% Completed) |  | 2026-09-19 → 2026-09-15 A (-4d) | 4.72d → 3.6d | 44% → 100% | 113.88d → none |  | was named Blinding Conc.; resources Labor [31.18 h]; Foreman [15.59 h]; Laboratory Officer [15.59 h]; Carpenter [15.59 h]; Steelfixer [15.59 h]; Mason [15.59 h]; Double Catch basin [0.39] → Labor [13.72 h]; Foreman [6.86 h]; Laboratory Officer [6.86 h]; Carpenter [6.86 h]; Steelfixer [6.86 h]; Mason [6.86 h]; Double Catch basin [0.17] |
| B6.33 05 40.01.950 | Catch Basin Installation (44.00% Completed) |  | 2026-09-19 → 2026-09-15 A (-4d) | 3.28d → 1.6d | 44% → 100% | 113.32d → none |  | was named Catch Basin Installation; resources Labor [46.78 h]; Foreman [23.39 h]; Carpenter [23.39 h]; Steelfixer [23.39 h]; Mason [23.39 h]; Operator [46.78 h]; Surveyor [23.39 h]; Surveyor Helper [23.39 h]; Boom Truck [24 h]; Double Catch basin [1.82] → Labor [20.58 h]; Foreman [10.29 h]; Carpenter [10.29 h]; Steelfixer [10.29 h]; Mason [10.29 h]; Operator [20.58 h]; Surveyor [10.29 h]; Surveyor Helper [10.29 h]; Boom Truck [10.56 h]; Double Catch basin [0.8] |
| B6.33 05 40.01.960 | Backfilling, DI Frame & Grate Cover Fixing | 2026-09-16 → 2026-09-30 A (+14d) | 2026-09-22 → 2026-10-08 (+16d) |  | 0% → 67% | 7d → 9.32d |  |  |
| UPVC | **UPVC** |  | 2026-09-19 → 2026-09-30 (+11d) |  |  |  |  |  |
| B6.33 42 11.35-124 | Fittings & Pipe Installation |  |  |  |  |  | B6.33 42 11.35-112 → B6.33 42 11.35-112, B6.33 05 39.01.3677 |  |
| B6.33 42 11.35-112 | Catch Basin Opening Prep. |  |  |  |  |  | B6.33 05 40.01.950 SS, B6.33 05 40.01.510 SS → B6.33 05 39.01.3677 |  |
| UPVC3001 | **?400 From 0.0 to 1.5m** |  | 2026-09-19 → 2026-09-30 (+11d) |  |  |  |  |  |

| ID | Task | Start | Finish | Duration | Complete | Total float | Predecessors | Other |
| --- | --- | --- | --- | --- | --- | --- | --- | --- |
| B6.33 42 11.36-197 | Fittings & Pipe Installation |  |  |  |  |  | B6.33 42 11.36-185 SS → B6.33 05 39.01.3677 |  |
| B6.33 42 11.36-185 | Catch Basin Opening Prep. (60.78% Completed) |  | 2026-09-19 → 2026-09-15 A (-4d) | 14d → 12d | 61% → 100% | 113d → none |  | was named Catch Basin Opening Prep.; resources Labor [31.18 h]; Foreman [15.59 h]; Plumber Helper [15.59 h]; Plumber [15.59 h]; less than 1.5 [46.62] → Labor [18.95 h]; Foreman [9.48 h]; Plumber Helper [9.48 h]; Plumber [9.48 h]; less than 1.5 [28.33] |
| Dry Networks | **Dry Networks** | 2026-09-24 → 2026-10-10 (+16d) | 2026-11-22 → 2026-12-09 (+17d) |  |  |  |  |  |
| MV Network | **Medium Voltage Network** | 2026-09-29 → 2026-10-19 (+20d) | 2026-11-04 → 2026-11-24 (+20d) |  |  |  |  |  |
| Cables | **Cables** | 2026-09-29 → 2026-10-19 (+20d) | 2026-11-01 → 2026-11-21 (+20d) |  |  |  |  |  |
| 3C,500mm2 | **3C,500mm2** | 2026-09-29 → 2026-10-19 (+20d) | 2026-10-24 → 2026-11-14 (+21d) |  |  |  |  |  |
| B2.33 71 49.23.92 | Cable 13.8 kV Unarmored | 2026-09-29 → 2026-10-19 (+20d) | 2026-10-03 → 2026-10-22 (+19d) |  |  | 3d → 1.32d | B2.33 71 49.23.77, B6.33 05 40.01.960, B6.33 05 40.01.520 → B2.33 71 49.23.77, B6.33 05 40.01.960, B6.33 05 40.01.520_R |  |
| B2.33 71 49.23.93 | Straight joints cables | 2026-10-04 → 2026-10-24 (+20d) | 2026-10-06 → 2026-10-26 (+20d) |  |  | 88d → 85.32d |  |  |
| B2.33 71 49.23.94 | Cable Termination | 2026-10-20 → 2026-11-10 (+21d) | 2026-10-24 → 2026-11-14 (+21d) |  |  | 76.88d → 73.2d |  |  |
| 3C,50mm2 | **3C,50mm2** | 2026-10-04 → 2026-10-24 (+20d) | 2026-11-01 → 2026-11-21 (+20d) |  |  |  |  |  |
| B2.33 71 49.23.95 | Cable 13.8 kV Unarmored | 2026-10-04 → 2026-10-24 (+20d) | 2026-10-07 → 2026-10-27 (+20d) |  |  | 3d → 1.32d |  |  |
| B2.33 71 49.23.96 | Straight joints cables | 2026-10-08 → 2026-10-28 (+20d) | 2026-10-11 → 2026-10-31 (+20d) |  |  | 86d → 83.32d |  |  |
| B2.33 71 49.23.97 | Cable Termination | 2026-10-29 → 2026-11-18 (+20d) | 2026-11-01 → 2026-11-21 (+20d) |  |  | 71d → 68.32d |  |  |
| RMU | **RMU** | 2026-10-08 → 2026-10-28 (+20d) | 2026-11-04 → 2026-11-24 (+20d) |  |  |  |  |  |
| B2 33 73 00.02.5 | Land Adjustment | 2026-10-08 → 2026-10-28 (+20d) | 2026-10-11 → 2026-10-31 (+20d) |  |  | 30d → 28.32d |  |  |
| B2 33 73 00.02.7 | Foundation Works & Curing | 2026-10-12 → 2026-11-01 (+20d) | 2026-10-15 → 2026-11-04 (+20d) |  |  | 76d → 73.32d |  |  |
| B2 33 73 00.02.9 | Installation of Ring Main Unit RMU, 13.8KV | 2026-10-17 → 2026-11-05 (+19d) | 2026-10-19 → 2026-11-08 (+20d) |  |  | 77d → 74.32d |  |  |
| B2.33 71 49.23.102 | Normally Open Point 13.8 KV | 2026-11-02 → 2026-11-22 (+20d) | 2026-11-04 → 2026-11-24 (+20d) |  |  | 71d → 68.32d |  |  |
| Units Substation | **Units Substation** | 2026-10-12 → 2026-11-01 (+20d) | 2026-10-24 → 2026-11-12 (+19d) |  |  |  |  |  |
| B2 33 73 00.01.5 | Land Adjustment | 2026-10-12 → 2026-11-01 (+20d) | 2026-10-14 → 2026-11-03 (+20d) |  |  | 30d → 28.32d |  |  |
| B2 33 73 00.01.7 | Foundation Works & Curing | 2026-10-17 → 2026-11-05 (+19d) | 2026-10-20 → 2026-11-09 (+20d) |  |  | 76d → 73.32d |  |  |
| B2 33 73 00.01.9 | Installation of Unit Substation 13.8/0.4 K V | 2026-10-21 → 2026-11-10 (+20d) | 2026-10-24 → 2026-11-12 (+19d) |  |  | 76d → 73.32d |  |  |
| LV Network | **Low Voltage Network** | 2026-09-24 → 2026-10-10 (+16d) | 2026-11-11 → 2026-12-01 (+20d) |  |  |  |  |  |
| Duct Banks | **Duct Banks** | 2026-09-24 → 2026-10-10 (+16d) | 2026-11-11 → 2026-12-01 (+20d) |  |  |  |  |  |
| 2 Way | **2 Way** | 2026-09-24 → 2026-10-10 (+16d) | 2026-11-11 → 2026-12-01 (+20d) |  |  |  |  |  |
| B2.33 71 00 02 142 | Excavation | 2026-09-24 → 2026-10-10 (+16d) | 2026-09-26 → 2026-10-11 (+15d) |  |  | 82d → 11.32d | B6.33 05 40.01.520, B6.33 05 40.01.960 → B6.33 05 40.01.520_R, B6.33 05 40.01.960 |  |
| B2.33 71 00 02 143 | Shuttering, Steel Fixing Incl. UPVC Pipe & Conc. Cast | 2026-09-27 → 2026-10-12 (+15d) | 2026-09-29 → 2026-10-14 (+15d) |  |  | 99d → 100.32d |  |  |
| B2.33 71 00 02 144 | Backfilling & Warrning Tape | 2026-11-09 → 2026-11-29 (+20d) | 2026-11-11 → 2026-12-01 (+20d) |  |  | 65d → 62.32d |  |  |
| 6 Way | **6 Way** | 2026-09-27 → 2026-10-12 (+15d) | 2026-10-05 → 2026-10-20 (+15d) |  |  |  |  |  |
| B2.33 71 00 02 130 | Excavation | 2026-09-27 → 2026-10-12 (+15d) | 2026-09-28 → 2026-10-13 (+15d) |  |  | 82d → 11.32d |  |  |
| B2.33 71 00 02 131 | Shuttering, Steel Fixing Incl. UPVC Pipe & Conc. Cast | 2026-09-29 → 2026-10-14 (+15d) | 2026-10-01 → 2026-10-17 (+16d) |  |  | 97d → 98.32d |  |  |
| B2.33 71 00 02 132 | Backfilling & Warrning Tape | 2026-10-03 → 2026-10-18 (+15d) | 2026-10-05 → 2026-10-20 (+15d) |  |  | 97d → 98.32d |  |  |
| 8 Way | **8 Way** | 2026-09-29 → 2026-10-14 (+15d) | 2026-10-07 → 2026-10-22 (+15d) |  |  |  |  |  |
| B2.33 71 00 02 133 | Excavation | 2026-09-29 → 2026-10-14 (+15d) | 2026-09-30 → 2026-10-15 (+15d) |  |  | 82d → 11.32d |  |  |
| B2.33 71 00 02 134 | Shuttering, Steel Fixing Incl. UPVC Pipe & Conc. Cast | 2026-10-01 → 2026-10-17 (+16d) | 2026-10-04 → 2026-10-19 (+15d) |  |  | 95d → 96.32d |  |  |
| B2.33 71 00 02 135 | Backfilling & Warrning Tape | 2026-10-05 → 2026-10-20 (+15d) | 2026-10-07 → 2026-10-22 (+15d) |  |  | 95d → 96.32d |  |  |
| Cables | **Cables** | 2026-10-08 → 2026-10-28 (+20d) | 2026-10-12 → 2026-11-01 (+20d) |  |  |  |  |  |
| 4C,10+1C,10mm2 | **4C,10+1C,10mm2** | 2026-10-08 → 2026-10-28 (+20d) | 2026-10-10 → 2026-10-29 (+19d) |  |  |  |  |  |
| B2.33 71 00 01 17 | Cable Pulling | 2026-10-08 → 2026-10-28 (+20d) | 2026-10-10 → 2026-10-29 (+19d) |  |  | 3d → 1.32d |  |  |
| 4C,50+1C,25mm2 | **4C,50+1C,25mm2** | 2026-10-11 → 2026-10-31 (+20d) | 2026-10-12 → 2026-11-01 (+20d) |  |  |  |  |  |
| B2.33 71 00 01 18 | Cable Pulling | 2026-10-11 → 2026-10-31 (+20d) | 2026-10-12 → 2026-11-01 (+20d) |  |  | 3d → 1.32d |  |  |
| LV Panels | **0.6/1 KV Low Voltage Distribution Panels** | 2026-10-15 → 2026-11-04 (+20d) | 2026-10-28 → 2026-11-17 (+20d) |  |  |  |  |  |
| B2.33 71 26 021 | Land Adjustment | 2026-10-15 → 2026-11-04 (+20d) | 2026-10-17 → 2026-11-05 (+19d) |  |  | 30d → 28.32d |  |  |
| B2.33 71 26 022 | Foundation Works & Curing | 2026-10-24 → 2026-11-12 (+19d) | 2026-10-26 → 2026-11-15 (+20d) |  |  | 30d → 28.32d |  |  |
| B2.33 71 26 023 | Installation of 0.6/1 KV Low Voltage Distribution Panels | 2026-10-27 → 2026-11-16 (+20d) | 2026-10-28 → 2026-11-17 (+20d) |  |  | 30d → 28.32d |  |  |
| LV Pillars | **0.6/1 KV Low Voltage Distribution Pillars** | 2026-10-18 → 2026-11-07 (+20d) | 2026-10-25 → 2026-11-14 (+20d) |  |  |  |  |  |
| B2.33 71 26 011 | Land Adjustment | 2026-10-18 → 2026-11-07 (+20d) | 2026-10-19 → 2026-11-08 (+20d) |  |  | 30d → 28.32d |  |  |
| B2.33 71 26 012 | Foundation Works & Curing | 2026-10-20 → 2026-11-09 (+20d) | 2026-10-22 → 2026-11-11 (+20d) |  |  | 30d → 28.32d |  |  |
| B2.33 71 26 013 | Installation of 0.6/1 KV Low Voltage Distribution Pillars | 2026-10-24 → 2026-11-12 (+19d) | 2026-10-25 → 2026-11-14 (+20d) |  |  | 31d → 29.32d |  |  |
| Street Lighting | **Street Lighting** | 2026-10-01 → 2026-10-17 (+16d) | 2026-11-22 → 2026-12-09 (+17d) |  |  |  |  |  |
| Duct Banks | **Duct Banks** | 2026-10-01 → 2026-10-17 (+16d) | 2026-10-10 → 2026-10-25 (+15d) |  |  |  |  |  |
| 4 Way | **4 Way** | 2026-10-01 → 2026-10-17 (+16d) | 2026-10-10 → 2026-10-25 (+15d) |  |  |  |  |  |
| B2.33 71 00 02 154 | Excavation | 2026-10-01 → 2026-10-17 (+16d) | 2026-10-03 → 2026-10-18 (+15d) |  |  | 82d → 11.32d | B2.33 71 00 02 133, B6.33 05 40.01.960, B6.33 05 40.01.520 → B2.33 71 00 02 133, B6.33 05 40.01.960, B6.33 05 40.01.520_R |  |
| B2.33 71 00 02 155 | Shuttering, Steel Fixing Incl. UPVC Pipe & Conc. Cast | 2026-10-04 → 2026-10-19 (+15d) | 2026-10-06 → 2026-10-21 (+15d) |  |  | 83d → 87.32d |  |  |
| B2.33 71 00 02 156 | Backfilling & Warrning Tape | 2026-10-07 → 2026-10-22 (+15d) | 2026-10-10 → 2026-10-25 (+15d) |  |  | 83d → 87.32d |  |  |
| Drawpits | **Drawpits** | 2026-10-04 → 2026-10-19 (+15d) | 2026-10-31 → 2026-11-30 (+30d) |  |  |  |  |  |
| B2.33 71 00 02 157 | Excavation | 2026-10-04 → 2026-10-19 (+15d) | 2026-10-05 → 2026-10-20 (+15d) |  |  | 84d → 87.32d |  |  |
| B2.33 71 00 02 158 | Drawpits Installation | 2026-10-06 → 2026-10-21 (+15d) | 2026-10-07 → 2026-10-22 (+15d) |  |  | 85d → 89.32d |  |  |
| B2.33 71 00 02 159 | Backfilling & Warrning Tape | 2026-10-27 → 2026-11-28 (+32d) | 2026-10-31 → 2026-11-30 (+30d) |  |  | 68.91d → 59.32d |  |  |
| Cables | **Cables** | 2026-10-13 → 2026-11-02 (+20d) | 2026-11-19 → 2026-12-06 (+17d) |  |  |  |  |  |
| 4C,16+1C,16mm2 | **4C,16+1C,16mm2** | 2026-10-13 → 2026-11-02 (+20d) | 2026-11-19 → 2026-12-06 (+17d) |  |  |  |  |  |
| B2.33 71 19 182 | Land Adjustment | 2026-10-13 → 2026-11-02 (+20d) | 2026-10-15 → 2026-11-04 (+20d) |  |  | 3d → 1.32d |  |  |
| B2.33 71 49.23.172 | Cable Pulling | 2026-10-17 → 2026-11-05 (+19d) | 2026-10-19 → 2026-11-08 (+20d) |  |  | 80d → 77.32d |  |  |
| B2.33 71 19 192 | Backfilling | 2026-11-17 → 2026-12-03 (+16d) | 2026-11-19 → 2026-12-06 (+17d) |  |  | 56d → 56.32d |  |  |
| SL Poles | **SL Poles** | 2026-10-31 → 2026-11-21 (+21d) | 2026-11-11 → 2026-12-09 (+28d) |  |  |  |  |  |
| Pole (16 M Dbl Arm) | **Pole (16 M Double Arm)** | 2026-10-31 → 2026-11-21 (+21d) | 2026-11-11 → 2026-12-09 (+28d) |  |  |  |  |  |
| B2.33 71 16.103 | Excavation | 2026-10-31 → 2026-11-21 (+21d) | 2026-11-02 → 2026-11-23 (+21d) |  |  | 58d → 56.32d |  |  |
| B2.33 71 16.104 | PC & RC Foundation | 2026-11-03 → 2026-11-24 (+21d) | 2026-11-05 → 2026-11-26 (+21d) |  |  | 58d → 56.32d |  |  |
| B2.33 71 16.105 | Lighting Poles Installation Incl power box, Cables | 2026-11-07 → 2026-11-28 (+21d) | 2026-11-08 → 2026-11-29 (+21d) |  |  | 58d → 56.32d |  |  |
| B2.26.56.19.19 | Lighting Luminares Inst | 2026-11-09 → 2026-12-06 (+27d) | 2026-11-10 → 2026-12-08 (+28d) |  |  | 58d → 50.91d |  |  |

| ID | Task | Start | Finish | Duration | Complete | Total float | Predecessors | Other |
| --- | --- | --- | --- | --- | --- | --- | --- | --- |
| B2.33 71 16.106 | Backfilling, Grouting & Chamfering | 2026-11-09 → 2026-12-06 (+27d) | 2026-11-11 → 2026-12-09 (+28d) |  |  | 58d → 50.91d | B2.26.56.19.19 SS → B2.26.56.19.19 SS, B2.33 71 19 37 |  |
| SL Pillars | **SL Pillars** | 2026-11-09 → 2026-11-30 (+21d) | 2026-11-22 → 2026-12-05 (+13d) |  |  |  |  |  |
| B2.33 71 26 033 | Pillars Installation (Internal Wiring) | 2026-11-09 → 2026-11-30 (+21d) | 2026-11-10 → 2026-12-01 (+21d) |  |  | 67d → 64.32d |  |  |
| B2.33 71 26 044 | KWH meter mounting a frame installation | 2026-11-21 → 2026-12-05 (+14d) | 2026-11-22 → 2026-12-05 (+13d) | 2d → 1d |  | 59d → 62.32d |  |  |
| Earth & Road Works | **Earth & Road Works** |  | 2026-11-29 → 2026-12-13 (+14d) |  |  |  |  |  |
| B1.2.31 23 16.01.14 | Roadway Excavation |  |  | 4.61d → 5.61d |  |  |  |  |
| Earth Layers | **Earth Layers** |  | 2026-09-17 → 2026-10-08 (+21d) |  |  |  |  |  |
| B1.2.32 11 13.01.14 | Subgrade (65.00% Completed) |  | 2026-09-17 → 2026-09-15 A (-2d) | 141.05d → 140d | 65% → 100% | 114.95d → none |  | was named Subgrade; resources Subgrade [926]; Labor [46.78 h]; Foreman [23.39 h]; Operator [46.78 h]; Surveyor [23.39 h]; Surveyor Helper [23.39 h]; Grader [24 h]; Loader [24 h]; Water Tanker [24 h]; Dump Truck [24 h]; Plate Compactor [24 h]; Roller Compactor [24 h] → Subgrade [601.9]; Labor [30.41 h]; Foreman [15.2 h]; Operator [30.41 h]; Surveyor [15.2 h]; Surveyor Helper [15.2 h]; Grader [15.6 h]; Loader [15.6 h]; Water Tanker [15.6 h]; Dump Truck [15.6 h]; Plate Compactor [15.6 h]; Roller Compactor [15.6 h] |
| B1.2.32 11 23.01.14 | Aggregate Base Course (49.00% Completed) |  | 2026-09-17 → 2026-09-15 A (-2d) | 98.47d → 96.94d | 49% → 100% | 114.47d → none |  | was named Aggregate Base Course; resources Aggregate base course [617.33]; Labor [46.78 h]; Foreman [23.39 h]; Operator [46.78 h]; Surveyor [23.39 h]; Surveyor Helper [23.39 h]; Grader [24 h]; Loader [24 h]; Water Tanker [24 h]; Dump Truck [24 h]; Plate Compactor [24 h]; Roller Compactor [24 h] → Aggregate base course [302.49]; Labor [22.92 h]; Foreman [11.46 h]; Operator [22.92 h]; Surveyor [11.46 h]; Surveyor Helper [11.46 h]; Grader [11.76 h]; Loader [11.76 h]; Water Tanker [11.76 h]; Dump Truck [11.76 h]; Plate Compactor [11.76 h]; Roller Compactor [11.76 h] |
| Interlock | **Interlock** | 2026-11-12 → 2026-12-09 (+27d) | 2026-11-14 → 2026-12-12 (+28d) |  |  |  |  |  |
| B1.2.32 14 13.13.14 | 60mm thick - Interlocking Block Pavers | 2026-11-12 → 2026-12-09 (+27d) | 2026-11-14 → 2026-12-12 (+28d) |  |  | 58d → 50.91d |  |  |
| Curbstone | **Curbstone** | 2026-10-31 → 2026-11-21 (+21d) | 2026-11-16 → 2026-12-06 (+20d) |  |  |  |  |  |
| Pre Install | **Pre-Installation** | 2026-10-31 → 2026-11-21 (+21d) | 2026-11-07 → 2026-11-26 (+19d) |  |  |  |  |  |
| B2.31 23 00.391 | Excavation | 2026-10-31 → 2026-11-21 (+21d) | 2026-11-01 → 2026-11-22 (+21d) |  |  | 0d → 2.32d |  |  |
| B1.2.32 14 13.13.214 | PCC | 2026-11-02 → 2026-11-23 (+21d) | 2026-11-03 → 2026-11-24 (+21d) |  |  | 0d → 2.32d |  |  |
| 32 16 13.0014 | Haunching | 2026-11-04 → 2026-11-25 (+21d) | 2026-11-07 → 2026-11-26 (+19d) | 3d → 2d |  | 0d → 2.32d |  |  |
| Installation | **Installation** | 2026-11-08 → 2026-11-28 (+20d) | 2026-11-16 → 2026-12-06 (+20d) |  |  |  |  |  |
| B1.2.32 16.13.01.14 | Curb Stone, Type K1 | 2026-11-08 → 2026-11-28 (+20d) | 2026-11-09 → 2026-11-29 (+20d) |  |  | 0d → 2.32d |  |  |
| B1.2.32 16.13.02.13 | Dropped Curb, Type K3 | 2026-11-10 → 2026-11-30 (+20d) | 2026-11-11 → 2026-12-01 (+20d) |  |  | 0d → 2.32d |  |  |
| B1.2.32 16.13.03.14 | Edge Curb, Type K4 | 2026-11-12 → 2026-12-02 (+20d) | 2026-11-14 → 2026-12-03 (+19d) |  |  | 0d → 2.32d |  |  |
| B1.2.32 16.13.0414 | Heel Curb, Type K5 | 2026-11-15 → 2026-12-05 (+20d) | 2026-11-16 → 2026-12-06 (+20d) |  |  | 0d → 2.32d |  |  |
| B1.2.32 16.13.05.13 | Transition Curb | 2026-11-15 → 2026-12-05 (+20d) | 2026-11-16 → 2026-12-06 (+20d) |  |  | 0d → 2.32d |  |  |
| Finishing | **Finishing** | 2026-11-15 → 2026-12-05 (+20d) | 2026-11-16 → 2026-12-06 (+20d) |  |  |  |  |  |
| 32 16 13.014 | Finishing, Fareface | 2026-11-15 → 2026-12-05 (+20d) | 2026-11-16 → 2026-12-06 (+20d) |  |  | 0d → 2.32d |  |  |
| Asphalt Layers | **Asphalt Layers** |  | 2026-11-22 → 2026-12-10 (+18d) |  |  |  |  |  |
| B1.2.32 11 26.01.14 | Bituminous Base Course including Prime Coat (MC1) and tack coat (RC2) (74.00% Completed) |  | 2026-09-17 → 2026-09-15 A (-2d) | 95.94d → 93.94d | 74% → 100% | 50d → none |  | was named Bituminous Base Course including Prime Coat (MC1) and tack coat (RC2); resources Bituminous base course(Grading I - Class A) [422.98]; Labor [31.18 h]; Foreman [15.59 h]; Operator [31.18 h]; Surveyor [15.59 h]; Surveyor Helper [15.59 h]; Dump Truck [16 h]; Roller Compactor [16 h]; MC1/RC2 Sprayer [16 h] → Bituminous base course(Grading I - Class A) [313]; Labor [23.08 h]; Foreman [11.54 h]; Operator [23.08 h]; Surveyor [11.54 h]; Surveyor Helper [11.54 h]; Dump Truck [11.84 h]; Roller Compactor [11.84 h]; MC1/RC2 Sprayer [11.84 h] |
| B1.2.32 12 16.01.14 | Bituminous concrete Wearing Course, including tack coat (RC2) | 2026-11-17 → 2026-12-07 (+20d) | 2026-11-22 → 2026-12-10 (+18d) | 5d → 4d |  | 0d → 2.32d | B1.2.32 11 26.01.14, B7.32 31 26.01-194, 32 16 13.014, DMM2-Proc-Delv-7265 FF → B1.2.32 11 26.01.14_R, B7.32 31 26.01-194, 32 16 13.014, DMM2-Proc-Delv-7265 FF |  |
| Pavement Marking | **Pavement Marking** | 2026-11-23 → 2026-12-12 (+19d) | 2026-11-26 → 2026-12-13 (+17d) |  |  |  |  |  |
| B1.2.32 17 23.01.14 | Retroreflective Thermoplastic White Traffic lines | 2026-11-25 → 2026-12-12 (+17d) | 2026-11-26 → 2026-12-13 (+17d) |  |  | 53d → 55.32d | B1.2.32 12 16.01.14, B1.2.32 17 23.02.14 → B1.2.32 12 16.01.14, B1.2.32 17 23.02.14 FF |  |
| B1.2.32 17 23.02.14 | Retroreflective Thermoplastic Yellow, Traffic lines | 2026-11-23 → 2026-12-12 (+19d) | 2026-11-24 → 2026-12-13 (+19d) |  |  | 53d → 55.32d |  |  |
| Traffic Signs | **Traffic Signs** | 2026-10-31 → 2026-11-21 (+21d) | 2026-11-29 → 2026-12-13 (+14d) |  |  |  |  |  |
| Pre Install | **Pre-Installation** | 2026-10-31 → 2026-11-21 (+21d) | 2026-11-03 → 2026-11-24 (+21d) |  |  |  |  |  |
| B2.31 23 00.401 | Excavation | 2026-10-31 → 2026-11-21 (+21d) | 2026-11-01 → 2026-11-22 (+21d) |  |  | 73d → 69.32d |  |  |
| 10 14 53.014 | Foundation | 2026-11-02 → 2026-11-23 (+21d) | 2026-11-03 → 2026-11-24 (+21d) |  |  | 73d → 69.32d |  |  |
| Installation | **Installation** | 2026-11-28 → 2026-12-12 (+14d) | 2026-11-29 → 2026-12-13 (+14d) |  |  |  |  |  |
| B1.2.10 14 53.0114 | 1 Sheet Alumenium, Single post | 2026-11-28 → 2026-12-12 (+14d) | 2026-11-29 → 2026-12-13 (+14d) |  |  | 53d → 55.32d | 10 14 53.014, B1.2.32 17 23.02.14, B1.2.32 17 23.01.14, B1.2.10 14 53.018, B1.2.10 14 53.028 → 10 14 53.014, B1.2.32 17 23.02.14 FF, B1.2.32 17 23.01.14 FF, B1.2.10 14 53.018, B1.2.10 14 53.028 |  |
| Landscape | **Landscape** | 2026-10-20 → 2026-11-09 (+20d) | 2026-11-10 → 2026-11-30 (+20d) |  |  |  |  |  |
| Fences | **Fences** | 2026-10-20 → 2026-11-09 (+20d) | 2026-11-10 → 2026-11-30 (+20d) |  |  |  |  |  |
| (ZATCA HCIS) | **Steel fence (ZATCA HCIS)** | 2026-10-20 → 2026-11-09 (+20d) | 2026-11-10 → 2026-11-30 (+20d) |  |  |  |  |  |
| B7.32 31 26.01-190 | Earthwork | 2026-10-20 → 2026-11-09 (+20d) | 2026-10-26 → 2026-11-15 (+20d) |  |  | 5d → 7.32d |  |  |
| B7.32 31 26.01-192 | Foundation | 2026-10-27 → 2026-11-16 (+20d) | 2026-11-02 → 2026-11-22 (+20d) |  |  | 5d → 7.32d |  |  |
| B7.32 31 26.01-194 | Fence Installation | 2026-11-03 → 2026-11-23 (+20d) | 2026-11-10 → 2026-11-30 (+20d) |  |  | 5d → 7.32d |  |  |
| Customs Rd 02 | **Customs Road 02** |  | 2026-11-25 → 2026-12-15 (+20d) |  |  |  |  |  |
| Wet Networks | **Wet Networks** |  | 2026-11-25 → 2026-12-15 (+20d) |  |  |  |  |  |
| Sewerage Network | **Sewerage Network** |  | 2026-10-14 → 2026-10-26 (+12d) |  |  |  |  |  |
| GRP | **GRP Pipes** |  | 2026-09-22 → 2026-10-12 (+20d) |  |  |  |  |  |
| 200 | **?150** |  | 2026-09-22 → 2026-10-12 (+20d) |  |  |  |  |  |
| 1 | **Depth From 1.5m to 2.5m** |  | 2026-09-22 → 2026-10-12 (+20d) |  |  |  |  |  |
| B5.33 31 00.01.25 | Embedment & Test (9.95% Completed) |  | 2026-09-21 → 2026-09-15 A (-6d) | 116.67d → 113d | 10% → 100% | 111d → none |  | was named Embedment & Test; resources Labor [62.37 h]; Foreman [31.18 h]; Plumber Helper [31.18 h]; Plumber [31.18 h]; Operator [62.37 h]; Surveyor [31.18 h]; Surveyor Helper [31.18 h]; Loader [32 h]; Water Tanker [32 h]; Dump Truck [32 h]; Plate Compactor [32 h]; Roller Compactor [32 h]; Sew Dia. 150mm Depth: 1.51m - 2.5m [15.67] → Labor [6.21 h]; Foreman [3.1 h]; Plumber Helper [3.1 h]; Plumber [3.1 h]; Operator [6.21 h]; Surveyor [3.1 h]; Surveyor Helper [3.1 h]; Loader [3.19 h]; Water Tanker [3.19 h]; Dump Truck [3.19 h]; Plate Compactor [3.19 h]; Roller Compactor [3.19 h]; Sew Dia. 150mm Depth: 1.51m - 2.5m [1.56] |
| B5.33 31 00.01.33 | Backfilling & Warrning Tape (9.95% Completed) |  | 2026-09-22 → 2026-09-15 A (-7d) | 114.61d → 110.05d | 10% → 100% | 110d → none |  | was named Backfilling & Warrning Tape; resources Labor [77.96 h]; Foreman [38.98 h]; Operator [155.92 h]; Surveyor [38.98 h]; Surveyor Helper [38.98 h]; Loader [40 h]; Water Tanker [40 h]; Dump Truck [40 h]; Plate Compactor [40 h]; Roller Compactor [40 h]; Sew Dia. 150mm Depth: 1.51m - 2.5m [7.84] → Labor [7.76 h]; Foreman [3.88 h]; Operator [15.52 h]; Surveyor [3.88 h]; Surveyor Helper [3.88 h]; Loader [3.98 h]; Water Tanker [3.98 h]; Dump Truck [3.98 h]; Plate Compactor [3.98 h]; Roller Compactor [3.98 h]; Sew Dia. 150mm Depth: 1.51m - 2.5m [0.78] |
| 1 | **?200** |  | 2026-09-21 → 2026-10-12 (+21d) |  |  |  |  |  |
| 4 | **Depth From 2.5m to 3.5m** |  | 2026-09-21 → 2026-10-12 (+21d) |  |  |  |  |  |
| B5.33 31 00.01.27 | Embedment & Test (9.95% Completed) |  | 2026-09-21 → 2026-09-15 A (-6d) | 116.67d → 113d | 10% → 100% | 111d → none |  | was named Embedment & Test; resources Labor [62.37 h]; Foreman [31.18 h]; Plumber Helper [31.18 h]; Plumber [31.18 h]; Operator [62.37 h]; Surveyor [31.18 h]; Surveyor Helper [31.18 h]; Loader [32 h]; Water Tanker [32 h]; Dump Truck [32 h]; Plate Compactor [32 h]; Roller Compactor [32 h]; Sew Dia. 200mm Depth: 2.51m - 3.5m [62.03] → Labor [6.21 h]; Foreman [3.1 h]; Plumber Helper [3.1 h]; Plumber [3.1 h]; Operator [6.21 h]; Surveyor [3.1 h]; Surveyor Helper [3.1 h]; Loader [3.19 h]; Water Tanker [3.19 h]; Dump Truck [3.19 h]; Plate Compactor [3.19 h]; Roller Compactor [3.19 h]; Sew Dia. 200mm Depth: 2.51m - 3.5m [6.17] |
| B5.33 31 00.01.35 | Backfilling & Warrning Tape (9.95% Completed) |  | 2026-09-21 → 2026-09-15 A (-6d) | 110.56d → 106d | 10% → 100% | 111d → none |  | was named Backfilling & Warrning Tape; resources Labor [77.96 h]; Foreman [38.98 h]; Operator [155.92 h]; Surveyor [38.98 h]; Surveyor Helper [38.98 h]; Loader [40 h]; Water Tanker [40 h]; Dump Truck [40 h]; Plate Compactor [40 h]; Roller Compactor [40 h]; Sew Dia. 200mm Depth: 2.51m - 3.5m [31.02] → Labor [7.76 h]; Foreman [3.88 h]; Operator [15.52 h]; Surveyor [3.88 h]; Surveyor Helper [3.88 h]; Loader [3.98 h]; Water Tanker [3.98 h]; Dump Truck [3.98 h]; Plate Compactor [3.98 h]; Roller Compactor [3.98 h]; Sew Dia. 200mm Depth: 2.51m - 3.5m [3.09] |
| 3 | **Depth From 3.5m to 4.5m** |  | 2026-09-21 → 2026-10-11 (+20d) |  |  |  |  |  |
| B5.33 31 00.01.29 | Embedment & Test (9.95% Completed) |  | 2026-09-21 → 2026-09-15 A (-6d) | 115.67d → 112d | 10% → 100% | 111d → none |  | was named Embedment & Test; resources Labor [62.37 h]; Foreman [31.18 h]; Plumber Helper [31.18 h]; Plumber [31.18 h]; Operator [62.37 h]; Surveyor [31.18 h]; Surveyor Helper [31.18 h]; Loader [32 h]; Water Tanker [32 h]; Dump Truck [32 h]; Plate Compactor [32 h]; Roller Compactor [32 h]; Sew Dia. 200mm Depth: 3.51m - 4.5m [83.61] → Labor [6.21 h]; Foreman [3.1 h]; Plumber Helper [3.1 h]; Plumber [3.1 h]; Operator [6.21 h]; Surveyor [3.1 h]; Surveyor Helper [3.1 h]; Loader [3.19 h]; Water Tanker [3.19 h]; Dump Truck [3.19 h]; Plate Compactor [3.19 h]; Roller Compactor [3.19 h]; Sew Dia. 200mm Depth: 3.51m - 4.5m [8.32] |
| B5.33 31 00.01.37 | Backfilling & Warrning Tape |  |  |  |  |  | B6.33 05 39.01.1617, B5.33 31 00.01.29 SS, B6.33 05 39.01.717 SS → B6.33 05 39.01.1617 |  |
| 1 | **Depth From 4.5m to 5.5m** |  | 2026-09-21 → 2026-10-12 (+21d) |  |  |  |  |  |
| B5.33 31 00.01.31 | Embedment & Test (9.95% Completed) |  | 2026-09-20 → 2026-09-15 A (-5d) | 111.67d → 108d | 10% → 100% | 112.33d → none |  | was named Embedment & Test; resources Labor [62.37 h]; Foreman [31.18 h]; Plumber Helper [31.18 h]; Plumber [31.18 h]; Operator [62.37 h]; Surveyor [31.18 h]; Surveyor Helper [31.18 h]; Loader [32 h]; Water Tanker [32 h]; Dump Truck [32 h]; Plate Compactor [32 h]; Roller Compactor [32 h]; Sew Dia. 200mm Depth: 4.51m -5.5m [27.78] → Labor [6.21 h]; Foreman [3.1 h]; Plumber Helper [3.1 h]; Plumber [3.1 h]; Operator [6.21 h]; Surveyor [3.1 h]; Surveyor Helper [3.1 h]; Loader [3.19 h]; Water Tanker [3.19 h]; Dump Truck [3.19 h]; Plate Compactor [3.19 h]; Roller Compactor [3.19 h]; Sew Dia. 200mm Depth: 4.51m -5.5m [2.77] |
| B5.33 31 00.01.39 | Backfilling & Warrning Tape (9.95% Completed) |  | 2026-09-21 → 2026-09-15 A (-6d) | 110.56d → 106d | 10% → 100% | 111d → none |  | was named Backfilling & Warrning Tape; resources Labor [77.96 h]; Foreman [38.98 h]; Operator [155.92 h]; Surveyor [38.98 h]; Surveyor Helper [38.98 h]; Loader [40 h]; Water Tanker [40 h]; Dump Truck [40 h]; Plate Compactor [40 h]; Roller Compactor [40 h]; Sew Dia. 200mm Depth: 4.51m -5.5m [13.89] → Labor [7.76 h]; Foreman [3.88 h]; Operator [15.52 h]; Surveyor [3.88 h]; Surveyor Helper [3.88 h]; Loader [3.98 h]; Water Tanker [3.98 h]; Dump Truck [3.98 h]; Plate Compactor [3.98 h]; Roller Compactor [3.98 h]; Sew Dia. 200mm Depth: 4.51m -5.5m [1.38] |
| Manholes | **Manholes ?1200** |  | 2026-10-14 → 2026-10-13 (-1d) |  |  |  |  |  |
| 2 | **Depth From 0.0m to 1.5m** |  | 2026-09-26 → 2026-10-10 (+14d) |  |  |  |  |  |
| B6.33 05 39.01.837 | Blinding Conc, & RC Base (36.00% Completed) |  | 2026-09-19 → 2026-09-15 A (-4d) | 42.04d → 40d | 36% → 100% | 113.96d → none |  | was named Blinding Conc, & RC Base; resources Labor [46.78 h]; Foreman [23.39 h]; Laboratory Officer [23.39 h]; Carpenter [23.39 h]; Steelfixer [23.39 h]; Mason [23.39 h]; MH depth 0 - 1.5m [0.27] → Labor [16.84 h]; Foreman [8.42 h]; Laboratory Officer [8.42 h]; Carpenter [8.42 h]; Steelfixer [8.42 h]; Mason [8.42 h]; MH depth 0 - 1.5m [0.1] |
| B6.33 05 39.01.847 | Manhole Installation (36.00% Completed) |  | 2026-09-17 → 2026-09-15 A (-2d) | 39.52d → 38d | 36% → 100% | 114.48d → none |  | was named Manhole Installation; resources Labor [31.18 h]; Operator [31.18 h]; Surveyor [15.59 h]; Surveyor Helper [15.59 h]; Boom Truck [16 h]; Mobile Crane [16 h]; MH depth 0 - 1.5m [1.34] → Labor [11.23 h]; Operator [11.23 h]; Surveyor [5.61 h]; Surveyor Helper [5.61 h]; Boom Truck [5.76 h]; Mobile Crane [5.76 h]; MH depth 0 - 1.5m [0.48] |
| B6.33 05 39.01.857 | Test, Internal Finishing, Benching & Cover (36.00% Completed) |  | 2026-09-19 → 2026-09-15 A (-4d) | 39.56d → 37d | 36% → 100% | 98.44d → none |  | was named Test, Internal Finishing, Benching & Cover; resources Labor [62.37 h]; Foreman [31.18 h]; Plumber Helper [31.18 h]; Plumber [31.18 h]; Mason [31.18 h]; MH depth 0 - 1.5m [0.27] → Labor [22.45 h]; Foreman [11.23 h]; Plumber Helper [11.23 h]; Plumber [11.23 h]; Mason [11.23 h]; MH depth 0 - 1.5m [0.1] |
| B6.33 05 39.01.867 | Backfilling | 2026-09-19 A | 2026-09-26 → 2026-10-10 (+14d) |  | 0% → 40% | 98.44d → 110.32d | B6.33 05 39.01.857, B6.33 05 39.01.1417 → B6.33 05 39.01.857_R, B6.33 05 39.01.1417 |  |
| 3 | **Depth From 1.5m to 2.5m** |  | 2026-09-26 → 2026-10-10 (+14d) |  |  |  |  |  |
| B6.33 05 39.01.887 | Blinding Conc, & RC Base (36.00% Completed) |  | 2026-09-19 → 2026-09-15 A (-4d) | 26.04d → 24d | 36% → 100% | 113.96d → none |  | was named Blinding Conc, & RC Base; resources Labor [46.78 h]; Foreman [23.39 h]; Laboratory Officer [23.39 h]; Carpenter [23.39 h]; Steelfixer [23.39 h]; Mason [23.39 h]; MH depth 1.51 - 2.5m [0.45] → Labor [16.84 h]; Foreman [8.42 h]; Laboratory Officer [8.42 h]; Carpenter [8.42 h]; Steelfixer [8.42 h]; Mason [8.42 h]; MH depth 1.51 - 2.5m [0.16] |
| B6.33 05 39.01.897 | Manhole Installation (36.00% Completed) |  | 2026-09-17 → 2026-09-15 A (-2d) | 22.52d → 21d | 36% → 100% | 100.48d → none |  | was named Manhole Installation; resources Labor [31.18 h]; Operator [31.18 h]; Surveyor [15.59 h]; Surveyor Helper [15.59 h]; Boom Truck [16 h]; Mobile Crane [16 h]; MH depth 1.51 - 2.5m [1.99] → Labor [11.23 h]; Operator [11.23 h]; Surveyor [5.61 h]; Surveyor Helper [5.61 h]; Boom Truck [5.76 h]; Mobile Crane [5.76 h]; MH depth 1.51 - 2.5m [0.71] |
| B6.33 05 39.01.917 | Backfilling (36.00% Completed) |  | 2026-09-26 → 2026-09-15 A (-11d) | 23.2d → 20d | 36% → 100% | 98.44d → none | B6.33 05 39.01.907 FF, B6.33 05 39.01.867 FF → B6.33 05 39.01.897 | was named Backfilling; resources Labor [77.96 h]; Foreman [38.98 h]; Operator [77.96 h]; Surveyor [38.98 h]; Surveyor Helper [38.98 h]; Loader [40 h]; Water Tanker [40 h]; Dump Truck [40 h]; Plate Compactor [40 h]; MH depth 1.51 - 2.5m [0.88] → Labor [28.07 h]; Foreman [14.03 h]; Operator [28.07 h]; Surveyor [14.03 h]; Surveyor Helper [14.03 h]; Loader [14.4 h]; Water Tanker [14.4 h]; Dump Truck [14.4 h]; Plate Compactor [14.4 h]; MH depth 1.51 - 2.5m [0.32] |

| ID | Task | Start | Finish | Duration | Complete | Total float | Predecessors | Other |
| --- | --- | --- | --- | --- | --- | --- | --- | --- |
| B6.33 05 39.01.907 | Test, Internal Finishing, Benching & Cover | 2026-09-17 A | 2026-09-22 → 2026-10-10 (+18d) |  | 0% → 40% | 100.48d → 110.92d | B6.33 05 39.01.897 → B6.33 05 39.01.897_R |  |
| 4 | **Depth From 2.5m to 3.5m** |  | 2026-09-22 → 2026-10-10 (+18d) |  |  |  |  |  |
| B6.33 05 39.01.937 | Blinding Conc, & RC Base (36.00% Completed) |  | 2026-09-19 → 2026-09-15 A (-4d) | 26.04d → 24d | 36% → 100% | 113.96d → none |  | was named Blinding Conc, & RC Base; resources Labor [46.78 h]; Foreman [23.39 h]; Laboratory Officer [23.39 h]; Carpenter [23.39 h]; Steelfixer [23.39 h]; Mason [23.39 h]; MH depth 2.51 - 3.5m [0.55] → Labor [16.84 h]; Foreman [8.42 h]; Laboratory Officer [8.42 h]; Carpenter [8.42 h]; Steelfixer [8.42 h]; Mason [8.42 h]; MH depth 2.51 - 3.5m [0.2] |
| B6.33 05 39.01.947 | Manhole Installation (36.00% Completed) |  | 2026-09-17 → 2026-09-15 A (-2d) | 24.52d → 23d | 36% → 100% | 105.48d → none |  | was named Manhole Installation; resources Labor [31.18 h]; Operator [31.18 h]; Surveyor [15.59 h]; Surveyor Helper [15.59 h]; Boom Truck [16 h]; Mobile Crane [16 h]; MH depth 2.51 - 3.5m [2.48] → Labor [11.23 h]; Operator [11.23 h]; Surveyor [5.61 h]; Surveyor Helper [5.61 h]; Boom Truck [5.76 h]; Mobile Crane [5.76 h]; MH depth 2.51 - 3.5m [0.89] |
| B6.33 05 39.01.967 | Backfilling (36.00% Completed) |  | 2026-09-22 → 2026-09-15 A (-7d) | 24.2d → 21d | 36% → 100% | 105.48d → none | B6.33 05 39.01.957 FF → B6.33 05 39.01.947 | was named Backfilling; resources Labor [77.96 h]; Foreman [38.98 h]; Operator [77.96 h]; Surveyor [38.98 h]; Surveyor Helper [38.98 h]; Loader [40 h]; Water Tanker [40 h]; Dump Truck [40 h]; Plate Compactor [40 h]; MH depth 2.51 - 3.5m [1.1] → Labor [28.07 h]; Foreman [14.03 h]; Operator [28.07 h]; Surveyor [14.03 h]; Surveyor Helper [14.03 h]; Loader [14.4 h]; Water Tanker [14.4 h]; Dump Truck [14.4 h]; Plate Compactor [14.4 h]; MH depth 2.51 - 3.5m [0.4] |
| B6.33 05 39.01.957 | Test, Internal Finishing, Benching & Cover | 2026-09-17 A | 2026-09-22 → 2026-10-10 (+18d) |  | 0% → 40% | 105.48d → 110.92d | B6.33 05 39.01.947 → B6.33 05 39.01.947_R |  |
| 1 | **Depth From 4.5m to 5.5m** |  | 2026-10-14 → 2026-10-13 (-1d) |  |  |  |  |  |
| B6.33 05 39.01.987 | Blinding Conc, & RC Base (36.00% Completed) |  | 2026-09-19 → 2026-09-15 A (-4d) | 41.04d → 39d | 36% → 100% | 113.96d → none |  | was named Blinding Conc, & RC Base; resources Labor [46.78 h]; Foreman [23.39 h]; Laboratory Officer [23.39 h]; Carpenter [23.39 h]; Steelfixer [23.39 h]; Mason [23.39 h]; MH depth 4.51 -5.5m [0.96] → Labor [16.84 h]; Foreman [8.42 h]; Laboratory Officer [8.42 h]; Carpenter [8.42 h]; Steelfixer [8.42 h]; Mason [8.42 h]; MH depth 4.51 -5.5m [0.34] |
| B6.33 05 39.01.997 | Manhole Installation (36.00% Completed) |  | 2026-09-17 → 2026-09-15 A (-2d) | 38.52d → 37d | 36% → 100% | 114.48d → none |  | was named Manhole Installation; resources Labor [31.18 h]; Operator [31.18 h]; Surveyor [15.59 h]; Surveyor Helper [15.59 h]; Boom Truck [16 h]; Mobile Crane [16 h]; MH depth 4.51 -5.5m [4.27] → Labor [11.23 h]; Operator [11.23 h]; Surveyor [5.61 h]; Surveyor Helper [5.61 h]; Boom Truck [5.76 h]; Mobile Crane [5.76 h]; MH depth 4.51 -5.5m [1.54] |
| B6.33 05 39.01.1007 | Test, Internal Finishing, Benching & Cover (36.00% Completed) |  | 2026-09-19 → 2026-09-15 A (-4d) | 36.56d → 34d | 36% → 100% | 108.44d → none |  | was named Test, Internal Finishing, Benching & Cover; resources Labor [62.37 h]; Foreman [31.18 h]; Plumber Helper [31.18 h]; Plumber [31.18 h]; Mason [31.18 h]; MH depth 4.51 -5.5m [0.96] → Labor [22.45 h]; Foreman [11.23 h]; Plumber Helper [11.23 h]; Plumber [11.23 h]; Mason [11.23 h]; MH depth 4.51 -5.5m [0.34] |
| B6.33 05 39.01.1017 | Backfilling | 2026-10-10 → 2026-10-05 A (-5d) | 2026-10-14 → 2026-10-10 (-4d) |  | 0% → 40% | 92d → 110.32d | B6.33 05 39.01.1007, B6.33 05 39.01.967, B6.33 05 39.01.1767, DMM2-Proc-Delv-4048, B6.33 05 39.01.4317 → B6.33 05 39.01.1007_R, B6.33 05 39.01.967_R, B6.33 05 39.01.1767, DMM2-Proc-Delv-4048 |  |
| 5 | **Depth From 4.5m to 5.5m with back drop** |  | 2026-10-08 → 2026-10-13 (+5d) |  |  |  |  |  |
| B6.33 05 39.01.4277 | Blinding Conc, & RC Base | 2026-09-20 A | 2026-09-24 → 2026-10-08 (+14d) | 4d → 3d | 0% → 40% | 92d → 111.52d |  |  |
| B6.33 05 39.01.4287 | Manhole Installation | 2026-09-26 → 2026-09-24 A (-2d) | 2026-09-27 → 2026-10-08 (+11d) |  | 0% → 40% | 92d → 112.12d |  |  |
| B6.33 05 39.01.4297 | Test, Internal Finishing, Benching & Cover | 2026-09-28 → 2026-09-27 A (-1d) | 2026-10-03 → 2026-10-10 (+7d) |  | 0% → 40% | 92d → 110.32d | B6.33 05 39.01.4287, B6.33 05 39.01.807 → B6.33 05 39.01.4287 |  |
| B6.33 05 39.01.4317 | Backfilling | 2026-10-04 → 2026-10-03 A (-1d) | 2026-10-08 → 2026-10-13 (+5d) | 5d → 10d | 0% → 40% | 92d → 107.33d | B6.33 05 39.01.4297, B6.33 05 39.01.917 → B6.33 05 39.01.4297, B6.33 05 39.01.917_R |  |
| 2 | **Valves & Chambers** | 2026-09-16 → 2026-10-07 (+21d) | 2026-10-10 → 2026-10-26 (+16d) |  |  |  |  |  |
| Gate | **Gate Valves** | 2026-09-16 → 2026-10-07 (+21d) | 2026-09-20 → 2026-10-11 (+21d) |  |  |  |  |  |
| B3.33 14 19.01.93 | Burried Isolation Valve Installation | 2026-09-16 → 2026-10-07 (+21d) | 2026-09-17 → 2026-10-08 (+21d) |  |  | 112d → 109.32d |  |  |
| B3.33 14 19.01.103 | Spindle & Surface Box | 2026-09-19 → 2026-10-10 (+21d) | 2026-09-20 → 2026-10-11 (+21d) |  |  | 112d → 109.32d |  |  |
| Washout V in Ch | **Washout Valves in Chambers** | 2026-09-16 → 2026-10-07 (+21d) | 2026-10-10 → 2026-10-26 (+16d) |  |  |  |  |  |
| B3.33 14 19.01.43 | Land Adjustment & Compaction | 2026-09-16 → 2026-10-07 (+21d) | 2026-09-19 → 2026-10-10 (+21d) |  |  | 86d → 96.32d |  |  |
| B3.33 14 19.01.53 | Foundations | 2026-09-20 → 2026-10-11 (+21d) | 2026-09-22 → 2026-10-13 (+21d) |  |  | 86d → 96.32d |  |  |
| B3.33 14 19.01.63 | Chambers Walls Conc Cast In Situ | 2026-09-24 → 2026-10-14 (+20d) | 2026-09-28 → 2026-10-17 (+19d) | 4d → 3d |  | 86d → 96.32d |  |  |
| B3.33 14 19.01.73 | Chamber Curing, Finishing & Steel Cover | 2026-09-29 → 2026-10-18 (+19d) | 2026-10-03 → 2026-10-21 (+18d) |  |  | 86d → 96.32d |  |  |
| B3.33 14 19.01.83 | Valve & Fitting Installation | 2026-10-06 → 2026-10-22 (+16d) | 2026-10-10 → 2026-10-26 (+16d) |  |  | 84d → 96.32d | B3.33 14 19.01.73, B5.33 05 63.013 → B3.33 14 19.01.73 |  |
| Stormwater Network | **Stormwater Network** |  | 2026-10-03 → 2026-10-19 (+16d) |  |  |  |  |  |
| GRP | **GRP** |  | 2026-09-20 → 2026-10-11 (+21d) |  |  |  |  |  |
| ?40011 | **?400** |  | 2026-09-20 → 2026-10-11 (+21d) |  |  |  |  |  |
| 3 | **Depth From 1.5m to 2.5m** |  | 2026-09-20 → 2026-10-11 (+21d) |  |  |  |  |  |
| B6.33 42 11.01-1.1 | Excavation |  |  |  |  |  | B5.33 31 00.01.39 SS → B6.33 05 39.01.3677 |  |
| B6.33 42 11.01-1.7 | Embedment & Test (47.25% Completed) |  | 2026-09-20 → 2026-09-15 A (-5d) | 116.56d → 114d | 47% → 100% | 112.44d → none |  | was named Embedment & Test; resources Labor [62.37 h]; Foreman [31.18 h]; Plumber Helper [31.18 h]; Plumber [31.18 h]; Operator [62.37 h]; Surveyor [31.18 h]; Surveyor Helper [31.18 h]; Loader [32 h]; Water Tanker [32 h]; Dump Truck [32 h]; Plate Compactor [32 h]; Roller Compactor [32 h]; Depth: 1.51m - 2.5m [3.99] → Labor [29.47 h]; Foreman [14.73 h]; Plumber Helper [14.73 h]; Plumber [14.73 h]; Operator [29.47 h]; Surveyor [14.73 h]; Surveyor Helper [14.73 h]; Loader [15.12 h]; Water Tanker [15.12 h]; Dump Truck [15.12 h]; Plate Compactor [15.12 h]; Roller Compactor [15.12 h]; Depth: 1.51m - 2.5m [1.89] |
| B6.33 42 11.01-1.9 | Backfilling & Warrning Tape (47.25% Completed) |  | 2026-09-20 → 2026-09-15 A (-5d) | 113.84d → 111d | 47% → 100% | 112.16d → none |  | was named Backfilling & Warrning Tape; resources Labor [77.96 h]; Foreman [38.98 h]; Operator [155.92 h]; Surveyor [38.98 h]; Surveyor Helper [38.98 h]; Loader [40 h]; Water Tanker [40 h]; Dump Truck [40 h]; Plate Compactor [40 h]; Roller Compactor [40 h]; Depth: 1.51m - 2.5m [2] → Labor [36.83 h]; Foreman [18.42 h]; Operator [73.67 h]; Surveyor [18.42 h]; Surveyor Helper [18.42 h]; Loader [18.9 h]; Water Tanker [18.9 h]; Dump Truck [18.9 h]; Plate Compactor [18.9 h]; Roller Compactor [18.9 h]; Depth: 1.51m - 2.5m [0.94] |
| Strom Manholes | **Manholes** |  | 2026-10-03 → 2026-10-19 (+16d) |  |  |  |  |  |
| 1 | **?1200** |  | 2026-10-03 → 2026-10-19 (+16d) |  |  |  |  |  |
| 3 | **Depth From 1.5m to 2.5m** |  | 2026-10-03 → 2026-10-19 (+16d) |  |  |  |  |  |
| B6.33 05 39.01.3587 | Blinding Conc, & RC Base (83.00% Completed) |  | 2026-09-19 → 2026-09-15 A (-4d) | 74d → 72d | 83% → 100% | 113d → none |  | was named Blinding Conc, & RC Base; resources Labor [46.78 h]; Foreman [23.39 h]; Laboratory Officer [23.39 h]; Carpenter [23.39 h]; Steelfixer [23.39 h]; Mason [23.39 h]; MH depth 1.50 - 2.5m [1.07] → Labor [38.82 h]; Foreman [19.41 h]; Laboratory Officer [19.41 h]; Carpenter [19.41 h]; Steelfixer [19.41 h]; Mason [19.41 h]; MH depth 1.50 - 2.5m [0.89] |
| B6.33 05 39.01.3597 | Manhole Installation (83.00% Completed) |  | 2026-09-19 → 2026-09-15 A (-4d) | 71d → 69d | 83% → 100% | 56d → none |  | was named Manhole Installation; resources Labor [31.18 h]; Operator [31.18 h]; Surveyor [15.59 h]; Surveyor Helper [15.59 h]; Boom Truck [16 h]; Mobile Crane [16 h]; MH depth 1.50 - 2.5m [3.62] → Labor [25.88 h]; Operator [25.88 h]; Surveyor [12.94 h]; Surveyor Helper [12.94 h]; Boom Truck [13.28 h]; Mobile Crane [13.28 h]; MH depth 1.50 - 2.5m [3] |
| B6.33 05 39.01.3607 | Test, Internal Finishing, Benching & Cover | 2026-09-20 → 2026-10-07 (+17d) | 2026-09-26 → 2026-10-12 (+16d) |  |  | 56d → 56.32d | B6.33 05 39.01.3597 → B6.33 05 39.01.3597_R |  |
| B6.33 05 39.01.3617 | Backfilling | 2026-09-27 → 2026-10-13 (+16d) | 2026-10-03 → 2026-10-19 (+16d) |  |  | 56d → 56.32d |  |  |
| Catch Basins | **Catch Basins** |  | 2026-09-27 → 2026-10-18 (+21d) |  |  |  |  |  |
| Sing | **Single** |  | 2026-09-19 → 2026-10-10 (+21d) |  |  |  |  |  |
| B6.33 05 40.01.410 | Excavation, Compaction & Vapour Barrier (62.50% Completed) |  | 2026-09-19 → 2026-09-15 A (-4d) | 74d → 72d | 62% → 100% | 113d → none |  | was named Excavation, Compaction & Vapour Barrier; resources Labor [31.18 h]; Foreman [15.59 h]; Operator [31.18 h]; Surveyor [15.59 h]; Surveyor Helper [15.59 h]; Excavator (With Bucket) [16 h]; Water Tanker [16 h]; Dump Truck [16 h]; Roller Compactor [16 h]; Single Catch basin [2.99] → Labor [19.49 h]; Foreman [9.75 h]; Operator [19.49 h]; Surveyor [9.75 h]; Surveyor Helper [9.75 h]; Excavator (With Bucket) [10 h]; Water Tanker [10 h]; Dump Truck [10 h]; Roller Compactor [10 h]; Single Catch basin [1.87] |
| B6.33 05 40.01.420 | Blinding Conc. (62.50% Completed) |  | 2026-09-19 → 2026-09-15 A (-4d) | 72d → 70d | 62% → 100% | 113d → none |  | was named Blinding Conc.; resources Labor [31.18 h]; Foreman [15.59 h]; Laboratory Officer [15.59 h]; Carpenter [15.59 h]; Steelfixer [15.59 h]; Mason [15.59 h]; Single Catch basin [1.99] → Labor [19.49 h]; Foreman [9.75 h]; Laboratory Officer [9.75 h]; Carpenter [9.75 h]; Steelfixer [9.75 h]; Mason [9.75 h]; Single Catch basin [1.24] |
| B6.33 05 40.01.430 | Catch Basin Installation (62.50% Completed) |  | 2026-09-19 → 2026-09-15 A (-4d) | 69.12d → 68d | 62% → 100% | 113.88d → none |  | was named Catch Basin Installation; resources Labor [46.78 h]; Foreman [23.39 h]; Carpenter [23.39 h]; Steelfixer [23.39 h]; Mason [23.39 h]; Operator [46.78 h]; Surveyor [23.39 h]; Surveyor Helper [23.39 h]; Boom Truck [24 h]; Single Catch basin [8.93] → Labor [29.24 h]; Foreman [14.62 h]; Carpenter [14.62 h]; Steelfixer [14.62 h]; Mason [14.62 h]; Operator [29.24 h]; Surveyor [14.62 h]; Surveyor Helper [14.62 h]; Boom Truck [15 h]; Single Catch basin [5.58] |
| B6.33 05 40.01.440 | Backfilling, DI Frame & Grate Cover Fixing (62.50% Completed) |  | 2026-09-19 → 2026-09-15 A (-4d) | 66.88d → 65d | 62% → 100% | 63.12d → none |  | was named Backfilling, DI Frame & Grate Cover Fixing; resources Labor [77.96 h]; Foreman [38.98 h]; Operator [77.96 h]; Surveyor [38.98 h]; Surveyor Helper [38.98 h]; Loader [40 h]; Water Tanker [40 h]; Dump Truck [40 h]; Plate Compactor [40 h]; Single Catch basin [5.96] → Labor [48.73 h]; Foreman [24.36 h]; Operator [48.73 h]; Surveyor [24.36 h]; Surveyor Helper [24.36 h]; Loader [25 h]; Water Tanker [25 h]; Dump Truck [25 h]; Plate Compactor [25 h]; Single Catch basin [3.72] |
| Dou | **Double** |  | 2026-09-27 → 2026-10-18 (+21d) |  |  |  |  |  |
| B6.33 05 40.01.890 | Excavation, Compaction & Vapour Barrier (62.50% Completed) |  | 2026-09-19 → 2026-09-15 A (-4d) | 12.8d → 10.8d | 62% → 100% | 113d → none |  | was named Excavation, Compaction & Vapour Barrier; resources Labor [31.18 h]; Foreman [15.59 h]; Operator [31.18 h]; Surveyor [15.59 h]; Surveyor Helper [15.59 h]; Excavator (With Bucket) [16 h]; Water Tanker [16 h]; Dump Truck [16 h]; Roller Compactor [16 h]; Double Catch basin [0.6] → Labor [19.49 h]; Foreman [9.75 h]; Operator [19.49 h]; Surveyor [9.75 h]; Surveyor Helper [9.75 h]; Excavator (With Bucket) [10 h]; Water Tanker [10 h]; Dump Truck [10 h]; Roller Compactor [10 h]; Double Catch basin [0.37] |
| B6.33 05 40.01.900 | Blinding Conc. (62.50% Completed) |  | 2026-09-19 → 2026-09-15 A (-4d) | 11.8d → 9.8d | 62% → 100% | 113d → none |  | was named Blinding Conc.; resources Labor [31.18 h]; Foreman [15.59 h]; Laboratory Officer [15.59 h]; Carpenter [15.59 h]; Steelfixer [15.59 h]; Mason [15.59 h]; Double Catch basin [0.39] → Labor [19.49 h]; Foreman [9.75 h]; Laboratory Officer [9.75 h]; Carpenter [9.75 h]; Steelfixer [9.75 h]; Mason [9.75 h]; Double Catch basin [0.25] |
| B6.33 05 40.01.910 | Catch Basin Installation (62.50% Completed) |  | 2026-09-19 → 2026-09-15 A (-4d) | 8.93d → 7.8d | 62% → 100% | 39.88d → none |  | was named Catch Basin Installation; resources Labor [46.78 h]; Foreman [23.39 h]; Carpenter [23.39 h]; Steelfixer [23.39 h]; Mason [23.39 h]; Operator [46.78 h]; Surveyor [23.39 h]; Surveyor Helper [23.39 h]; Boom Truck [24 h]; Double Catch basin [1.82] → Labor [29.24 h]; Foreman [14.62 h]; Carpenter [14.62 h]; Steelfixer [14.62 h]; Mason [14.62 h]; Operator [29.24 h]; Surveyor [14.62 h]; Surveyor Helper [14.62 h]; Boom Truck [15 h]; Double Catch basin [1.14] |
| B6.33 05 40.01.920 | Backfilling, DI Frame & Grate Cover Fixing | 2026-09-19 → 2026-10-11 (+22d) | 2026-09-27 → 2026-10-18 (+21d) |  |  | 39.88d → 35.2d | B6.33 42 11.36-193, B6.33 05 40.01.910 → B6.33 42 11.36-193, B6.33 05 40.01.910_R |  |
| UPVC | **UPVC** |  | 2026-09-19 → 2026-09-22 (+3d) |  |  |  |  |  |
| UPVC300 | **?300 From 0.0 to 1.5m** |  | 2026-09-19 → 2026-09-22 (+3d) |  |  |  |  |  |
| B6.33 42 11.35-120 | Fittings & Pipe Installation |  |  |  |  |  | B6.33 42 11.35-18 SS → B6.33 05 39.01.3677 |  |
| B6.33 42 11.35-18 | Catch Basin Opening Prep. (56.70% Completed) |  | 2026-09-19 → 2026-09-15 A (-4d) | 65d → 63d | 57% → 100% | 113d → none |  | was named Catch Basin Opening Prep.; resources Labor [31.18 h]; Foreman [15.59 h]; Plumber Helper [15.59 h]; Plumber [15.59 h]; less than 1.5 [46.62] → Labor [17.68 h]; Foreman [8.84 h]; Plumber Helper [8.84 h]; Plumber [8.84 h]; less than 1.5 [26.43] |
| UPVC3001 | **?400 From 0.0 to 1.5m** |  | 2026-09-19 → 2026-09-22 (+3d) |  |  |  |  |  |
| B6.33 42 11.36-193 | Fittings & Pipe Installation |  |  |  |  |  | B6.33 42 11.36-181 SS → B6.33 05 39.01.3677 |  |
| B6.33 42 11.36-181 | Catch Basin Opening Prep. (56.70% Completed) |  | 2026-09-19 → 2026-09-15 A (-4d) | 63d → 61d | 57% → 100% | 113d → none |  | was named Catch Basin Opening Prep.; resources Labor [31.18 h]; Foreman [15.59 h]; Plumber Helper [15.59 h]; Plumber [15.59 h]; less than 1.5 [46.62] → Labor [17.68 h]; Foreman [8.84 h]; Plumber Helper [8.84 h]; Plumber [8.84 h]; less than 1.5 [26.43] |
| Potable Water | **Potable Water Network** | 2026-10-04 → 2026-10-20 (+16d) | 2026-10-22 → 2026-11-08 (+17d) |  |  |  |  |  |
| HDPE | **HDPE Pipes** | 2026-10-04 → 2026-10-20 (+16d) | 2026-10-22 → 2026-11-08 (+17d) |  |  |  |  |  |
| ?110mm | **?110mm** | 2026-10-04 → 2026-10-20 (+16d) | 2026-10-22 → 2026-11-08 (+17d) |  |  |  |  |  |
| Depth: 1.51m - 2.5m | **Depth: 0.51m - 1.5m** | 2026-10-04 → 2026-10-20 (+16d) | 2026-10-22 → 2026-11-08 (+17d) |  |  |  |  |  |
| B3.33 14 13-191 | Excavation | 2026-10-04 → 2026-10-20 (+16d) | 2026-10-06 → 2026-10-22 (+16d) |  |  | 56d → 56.32d | B3.33 14 13-91, B6.33 05 39.01.3617 → B3.33 14 13-91_R, B6.33 05 39.01.3617 |  |
| B3.33 14 13-193 | Sand Bedding | 2026-10-07 → 2026-10-24 (+17d) | 2026-10-10 → 2026-10-26 (+16d) |  |  | 71d → 71.32d |  |  |
| B3.33 14 13-195 | Pipe Laying | 2026-10-11 → 2026-10-27 (+16d) | 2026-10-13 → 2026-10-29 (+16d) |  |  | 71d → 71.32d |  |  |
| B3.33 14 13-197 | Embedment & Test | 2026-10-14 → 2026-10-31 (+17d) | 2026-10-18 → 2026-11-03 (+16d) |  |  | 71d → 71.32d |  |  |
| B3.33 14 13-199 | Backfilling & Warrning Tape | 2026-10-19 → 2026-11-04 (+16d) | 2026-10-22 → 2026-11-08 (+17d) |  |  | 71d → 71.32d | B3.33 14 13-197, B3.33 14 13.01.01017 → B3.33 14 13-197, B3.33 14 13.01.01017_R |  |
| Fire Fighting | **Fire Fighting Network** | 2026-10-07 → 2026-10-24 (+17d) | 2026-11-25 → 2026-12-15 (+20d) |  |  |  |  |  |
| HDPE | **HDPE Pipes** | 2026-10-07 → 2026-10-24 (+17d) | 2026-11-02 → 2026-11-18 (+16d) |  |  |  |  |  |
| ?250mm | **?250mm** | 2026-10-07 → 2026-10-24 (+17d) | 2026-11-02 → 2026-11-18 (+16d) |  |  |  |  |  |

| ID | Task | Start | Finish | Duration | Total float | Predecessors |
| --- | --- | --- | --- | --- | --- | --- |
| Depth: 1.51m - 2.5m | **Depth: 0.51m - 1.5m** | 2026-10-07 → 2026-10-24 (+17d) | 2026-11-02 → 2026-11-18 (+16d) |  |  |  |
| B3.1. 33 14 13-119 | Excavation | 2026-10-07 → 2026-10-24 (+17d) | 2026-10-11 → 2026-10-27 (+16d) |  | 56d → 56.32d |  |
| B3.1. 33 14 13-1111 | Sand Bedding | 2026-10-12 → 2026-10-28 (+16d) | 2026-10-15 → 2026-11-01 (+17d) |  | 56d → 56.32d |  |
| B3.1. 33 14 13-1113 | Pipe Laying | 2026-10-17 → 2026-11-02 (+16d) | 2026-10-20 → 2026-11-05 (+16d) |  | 56d → 56.32d |  |
| B3.1. 33 14 13-1115 | Embedment & Test | 2026-10-21 → 2026-11-07 (+17d) | 2026-10-27 → 2026-11-12 (+16d) |  | 56d → 56.32d |  |
| B3.1. 33 14 13-1117 | Backfilling & Warrning Tape | 2026-10-28 → 2026-11-14 (+17d) | 2026-11-02 → 2026-11-18 (+16d) |  | 56d → 56.32d |  |
| Valves & Chambers | **Valves & Chambers** | 2026-10-28 → 2026-11-14 (+17d) | 2026-11-21 → 2026-12-07 (+16d) |  |  |  |
| 2 | **Air Valves** | 2026-10-28 → 2026-11-14 (+17d) | 2026-11-21 → 2026-12-07 (+16d) |  |  |  |
| 4 | **Air valves on less than 315 mm. (In Chamber)** | 2026-10-28 → 2026-11-14 (+17d) | 2026-11-21 → 2026-12-07 (+16d) |  |  |  |
| B3.33 05 63.02.67 | Land Adjustment & Compaction | 2026-10-28 → 2026-11-14 (+17d) | 2026-11-01 → 2026-11-17 (+16d) |  | 60d → 60.32d |  |
| B3.33 05 63.02.65 | Foundations | 2026-11-02 → 2026-11-18 (+16d) | 2026-11-05 → 2026-11-22 (+17d) |  | 60d → 60.32d |  |
| B3.33 05 63.02.68 | Chambers Walls Conc Cast In Situ | 2026-11-07 → 2026-11-23 (+16d) | 2026-11-10 → 2026-11-26 (+16d) |  | 60d → 60.32d |  |
| B3.33 05 63.02.66 | Chamber Curing, Finishing & Steel Cover | 2026-11-11 → 2026-11-28 (+17d) | 2026-11-16 → 2026-12-02 (+16d) |  | 60d → 60.32d |  |
| B3.33 05 63.02.69 | Valve & Fitting Installation | 2026-11-17 → 2026-12-03 (+16d) | 2026-11-21 → 2026-12-07 (+16d) |  | 60d → 60.32d |  |
| 3 | **Fire Hydrant** | 2026-10-21 → 2026-11-07 (+17d) | 2026-11-25 → 2026-12-15 (+20d) |  |  |  |
| B3.33 14 19.01.fh38 | Riser Pipe & Flanged Fittings Installation | 2026-10-21 → 2026-11-07 (+17d) | 2026-10-25 → 2026-11-10 (+16d) |  | 73d → 73.32d |  |
| B3.33 14 19.01.fh37 | Firehydrant Fixing/Installation | 2026-10-26 → 2026-11-11 (+16d) | 2026-10-31 → 2026-11-16 (+16d) |  | 73d → 73.32d |  |
| B3.33 14 19.01.fh39 | Backfilling & Compaction | 2026-11-21 → 2026-12-10 (+19d) | 2026-11-25 → 2026-12-15 (+20d) |  | 56d → 53.32d |  |
| Dry Networks | **Dry Networks** | 2026-09-27 → 2026-10-18 (+21d) | 2026-11-25 → 2026-12-12 (+17d) |  |  |  |
| MV | **Medium Voltage Network** | 2026-09-27 → 2026-10-18 (+21d) | 2026-10-10 → 2026-10-31 (+21d) |  |  |  |
| Cables | **Cables** | 2026-09-27 → 2026-10-18 (+21d) | 2026-10-10 → 2026-10-31 (+21d) |  |  |  |
| 3C,500mm2 | **3C,500mm2** | 2026-09-27 → 2026-10-18 (+21d) | 2026-10-10 → 2026-10-31 (+21d) |  |  |  |
| B2.33 71 49.23.83 | Cable 13.8 kV Unarmored | 2026-09-27 → 2026-10-18 (+21d) | 2026-10-01 → 2026-10-22 (+21d) |  | 76.88d → 73.2d |  |
| B2.33 71 49.23.84 | Straight joints cables | 2026-10-01 → 2026-10-22 (+21d) | 2026-10-05 → 2026-10-26 (+21d) |  | 76.88d → 73.2d |  |
| B2.33 71 49.23.85 | Cable Termination | 2026-10-05 → 2026-10-26 (+21d) | 2026-10-10 → 2026-10-31 (+21d) |  | 76.88d → 73.2d |  |
| LV Network | **Low Voltage Network** | 2026-09-27 → 2026-10-18 (+21d) | 2026-11-04 → 2026-11-24 (+20d) |  |  |  |
| Duct Banks | **Duct Banks** | 2026-09-27 → 2026-10-18 (+21d) | 2026-11-04 → 2026-11-24 (+20d) |  |  |  |
| 6 Way | **6 Way** | 2026-09-27 → 2026-10-18 (+21d) | 2026-11-01 → 2026-11-21 (+20d) |  |  |  |
| B2.33 71 00 02 136 | Excavation | 2026-09-27 → 2026-10-18 (+21d) | 2026-09-29 → 2026-10-20 (+21d) |  | 39.88d → 35.2d |  |
| B2.33 71 00 02 137 | Shuttering, Steel Fixing Incl. UPVC Pipe & Conc. Cast | 2026-09-29 → 2026-10-20 (+21d) | 2026-10-03 → 2026-10-24 (+21d) |  | 87.88d → 84.2d |  |
| B2.33 71 00 02 138 | Backfilling & Warrning Tape | 2026-10-29 → 2026-11-18 (+20d) | 2026-11-01 → 2026-11-21 (+20d) |  | 65d → 62.32d |  |
| 8 Way | **8 Way** | 2026-09-29 → 2026-10-20 (+21d) | 2026-11-04 → 2026-11-24 (+20d) |  |  |  |
| B2.33 71 00 02 139 | Excavation | 2026-09-29 → 2026-10-20 (+21d) | 2026-10-01 → 2026-10-22 (+21d) |  | 39.88d → 35.2d |  |
| B2.33 71 00 02 140 | Shuttering, Steel Fixing Incl. UPVC Pipe & Conc. Cast | 2026-10-01 → 2026-10-22 (+21d) | 2026-10-05 → 2026-10-26 (+21d) |  | 88.88d → 85.2d |  |
| B2.33 71 00 02 141 | Backfilling & Warrning Tape | 2026-11-02 → 2026-11-22 (+20d) | 2026-11-04 → 2026-11-24 (+20d) |  | 65d → 62.32d |  |
| Cables | **Cables** | 2026-10-13 → 2026-11-02 (+20d) | 2026-10-17 → 2026-11-05 (+19d) |  |  |  |
| 4C,10+1C,10mm2 | **4C,10+1C,10mm2** | 2026-10-13 → 2026-11-02 (+20d) | 2026-10-14 → 2026-11-03 (+20d) |  |  |  |
| B2.33 71 00 01 15 | Cable Pulling | 2026-10-13 → 2026-11-02 (+20d) | 2026-10-14 → 2026-11-03 (+20d) |  | 3d → 4.32d |  |
| 4C,50+1C,25mm2 | **4C,50+1C,25mm2** | 2026-10-15 → 2026-11-04 (+20d) | 2026-10-17 → 2026-11-05 (+19d) |  |  |  |
| B2.33 71 00 01 16 | Cable Pulling | 2026-10-15 → 2026-11-04 (+20d) | 2026-10-17 → 2026-11-05 (+19d) |  | 3d → 4.32d |  |
| Street Lighting | **Street Lighting** | 2026-11-03 → 2026-11-19 (+16d) | 2026-11-25 → 2026-12-12 (+17d) |  |  |  |
| Cables | **Cables** | 2026-11-17 → 2026-12-03 (+16d) | 2026-11-23 → 2026-12-09 (+16d) |  |  |  |
| 4C,10+1C,10mm2 | **4C,10+1C,10mm2** | 2026-11-17 → 2026-12-03 (+16d) | 2026-11-23 → 2026-12-09 (+16d) |  |  |  |
| B2.33 71 19 142 | Land Adjustment | 2026-11-17 → 2026-12-03 (+16d) | 2026-11-18 → 2026-12-05 (+17d) |  | 56d → 56.32d |  |
| B2.33 71 49.23.152 | Cable Pulling | 2026-11-19 → 2026-12-06 (+17d) | 2026-11-21 → 2026-12-07 (+16d) |  | 56d → 56.32d |  |
| B2.33 71 19 152 | Backfilling | 2026-11-22 → 2026-12-08 (+16d) | 2026-11-23 → 2026-12-09 (+16d) |  | 56d → 56.32d | B2.33 71 49.23.152, B2.33 71 16.58, B2.33 71 19 37 SS, B2.33 71 19 172 SS → B2.33 71 49.23.152 |
| SL Poles | **SL Poles** | 2026-11-03 → 2026-11-19 (+16d) | 2026-11-19 → 2026-12-05 (+16d) |  |  |  |
| Pole (10 M Dbl Arm) | **Pole (10 M Double Arm)** | 2026-11-03 → 2026-11-19 (+16d) | 2026-11-16 → 2026-12-02 (+16d) |  |  |  |
| B2.33 71 16.79 | Excavation | 2026-11-03 → 2026-11-19 (+16d) | 2026-11-04 → 2026-11-21 (+17d) |  | 56d → 56.32d | B3.1. 33 14 13-1117, B2.33 71 16.75 → B3.1. 33 14 13-1117, B2.33 71 16.75_R |
| B2.33 71 16.80 | PC & RC Foundation | 2026-11-05 → 2026-11-22 (+17d) | 2026-11-07 → 2026-11-23 (+16d) |  | 56d → 56.32d |  |
| B2.33 71 16.81 | Lighting Poles Installation Incl power box, Cables | 2026-11-08 → 2026-11-24 (+16d) | 2026-11-10 → 2026-11-26 (+16d) |  | 56d → 56.32d |  |
| B2.26.56.19.13 | Lighting Luminares Inst | 2026-11-11 → 2026-11-28 (+17d) | 2026-11-12 → 2026-11-29 (+17d) |  | 56d → 56.32d |  |
| B2.33 71 16.82 | Backfilling, Grouting & Chamfering | 2026-11-14 → 2026-11-30 (+16d) | 2026-11-16 → 2026-12-02 (+16d) |  | 56d → 56.32d |  |
| Pole (16 M Dbl Arm) | **Pole (16 M Double Arm)** | 2026-11-05 → 2026-11-22 (+17d) | 2026-11-19 → 2026-12-05 (+16d) |  |  |  |
| B2.33 71 16.83 | Excavation | 2026-11-05 → 2026-11-22 (+17d) | 2026-11-07 → 2026-11-23 (+16d) |  | 58d → 60.32d |  |
| B2.33 71 16.84 | PC & RC Foundation | 2026-11-08 → 2026-11-24 (+16d) | 2026-11-10 → 2026-11-26 (+16d) |  | 58d → 60.32d |  |
| B2.33 71 16.85 | Lighting Poles Installation Incl power box, Cables | 2026-11-11 → 2026-11-28 (+17d) | 2026-11-14 → 2026-11-30 (+16d) |  | 58d → 60.32d |  |
| B2.26.56.19.14 | Lighting Luminares Inst | 2026-11-15 → 2026-12-01 (+16d) | 2026-11-16 → 2026-12-02 (+16d) |  | 58d → 60.32d |  |
| B2.33 71 16.86 | Backfilling, Grouting & Chamfering | 2026-11-17 → 2026-12-03 (+16d) | 2026-11-19 → 2026-12-05 (+16d) | 3d → 2d | 58d → 60.32d |  |
| SL Pillars | **SL Pillars** | 2026-11-15 → 2026-12-01 (+16d) | 2026-11-19 → 2026-12-03 (+14d) |  |  |  |
| B2.33 71 26 032 | Pillars Installation (Internal Wiring) | 2026-11-15 → 2026-12-01 (+16d) | 2026-11-16 → 2026-12-02 (+16d) |  | 59d → 62.32d |  |
| B2.33 71 26 043 | KWH meter mounting a frame installation | 2026-11-17 → 2026-12-03 (+16d) | 2026-11-19 → 2026-12-03 (+14d) | 3d → 1d | 59d → 62.32d |  |
| Earthing | **Earthing** | 2026-11-15 → 2026-12-01 (+16d) | 2026-11-25 → 2026-12-12 (+17d) |  |  |  |
| B2.33 71 19 41 | Land Adjustment | 2026-11-15 → 2026-12-01 (+16d) | 2026-11-17 → 2026-12-03 (+16d) |  | 58d → 60.32d |  |
| B2.33 71 19 42 | Earth Rods & Conduits | 2026-11-18 → 2026-12-05 (+17d) | 2026-11-21 → 2026-12-05 (+14d) | 3d → 1d | 58d → 60.32d |  |
| B2.33 71 19 43 | Backfilling | 2026-11-24 → 2026-12-10 (+16d) | 2026-11-25 → 2026-12-12 (+17d) |  | 56d → 56.32d |  |
| Telecommunication | **Telecommunication Network** | 2026-10-01 → 2026-10-22 (+21d) | 2026-10-25 → 2026-11-15 (+21d) |  |  |  |
| Ducts | **Ducts** | 2026-10-01 → 2026-10-22 (+21d) | 2026-10-19 → 2026-11-09 (+21d) |  |  |  |
| (6*50mm) | **Size (6*50mm) HDPE ducts** | 2026-10-01 → 2026-10-22 (+21d) | 2026-10-11 → 2026-11-01 (+21d) |  |  |  |
| B2.1.33 81 26.132 | Excavation | 2026-10-01 → 2026-10-22 (+21d) | 2026-10-04 → 2026-10-25 (+21d) |  | 39.88d → 35.2d |  |

| ID | Task | Start | Finish | Duration | Complete | Total float | Predecessors | Other |
| --- | --- | --- | --- | --- | --- | --- | --- | --- |
| B2.1.33 81 26.133 | HDPE Pipe, Shuttering, Steel Fixing & Conc. Cast | 2026-10-04 → 2026-10-25 (+21d) | 2026-10-08 → 2026-10-29 (+21d) |  |  | 76.88d → 71.2d |  |  |
| B2.1.33 81 26.134 | Backfilling & Warrning Tape | 2026-10-08 → 2026-10-29 (+21d) | 2026-10-11 → 2026-11-01 (+21d) |  |  | 76.88d → 71.2d | B2.1.33 81 26.133, B2.1.33 81 26.13 → B2.1.33 81 26.133, B2.1.33 81 26.13_R |  |
| (6*50mm+2*32mm) | **Size (6*50mm+2*32mm) HDPE ducts** | 2026-10-04 → 2026-10-25 (+21d) | 2026-10-13 → 2026-11-04 (+22d) |  |  |  |  |  |
| B2.1.33 81 26.135 | Excavation | 2026-10-04 → 2026-10-25 (+21d) | 2026-10-06 → 2026-10-27 (+21d) |  |  | 39.88d → 35.2d |  |  |
| B2.1.33 81 26.136 | HDPE Pipe, Shuttering, Steel Fixing & Conc. Cast | 2026-10-06 → 2026-10-27 (+21d) | 2026-10-10 → 2026-10-31 (+21d) |  |  | 89.88d → 86.2d |  |  |
| B2.1.33 81 26.137 | Backfilling & Warrning Tape | 2026-10-10 → 2026-11-02 (+23d) | 2026-10-13 → 2026-11-04 (+22d) |  |  | 89.88d → 84.32d |  |  |
| (6*50mm+4*32mm) | **Size (6*50mm+4*32mm) HDPE ducts** | 2026-10-06 → 2026-10-27 (+21d) | 2026-10-15 → 2026-11-05 (+21d) |  |  |  |  |  |
| B2.1.33 81 26.138 | Excavation | 2026-10-06 → 2026-10-27 (+21d) | 2026-10-08 → 2026-10-29 (+21d) |  |  | 39.88d → 35.2d |  |  |
| B2.1.33 81 26.139 | HDPE Pipe, Shuttering, Steel Fixing & Conc. Cast | 2026-10-08 → 2026-10-29 (+21d) | 2026-10-12 → 2026-11-02 (+21d) |  |  | 87.88d → 84.2d |  |  |
| B2.1.33 81 26.140 | Backfilling & Warrning Tape | 2026-10-12 → 2026-11-02 (+21d) | 2026-10-15 → 2026-11-05 (+21d) |  |  | 87.88d → 84.2d |  |  |
| (2*32mm) | **Size (2*32mm) HDPE ducts** | 2026-10-08 → 2026-10-29 (+21d) | 2026-10-17 → 2026-11-07 (+21d) |  |  |  |  |  |
| B2.1.33 81 26.141 | Excavation | 2026-10-08 → 2026-10-29 (+21d) | 2026-10-11 → 2026-11-01 (+21d) |  |  | 39.88d → 35.2d |  |  |
| B2.1.33 81 26.142 | HDPE Pipe, Shuttering, Steel Fixing & Conc. Cast | 2026-10-11 → 2026-11-01 (+21d) | 2026-10-13 → 2026-11-03 (+21d) |  |  | 79.88d → 36.2d |  |  |
| B2.1.33 81 26.143 | Backfilling & Warrning Tape | 2026-10-13 → 2026-11-03 (+21d) | 2026-10-17 → 2026-11-07 (+21d) |  |  | 79.88d → 36.2d |  |  |
| (4*32mm) | **Size (4*32mm) HDPE ducts** | 2026-10-08 → 2026-10-29 (+21d) | 2026-10-17 → 2026-11-07 (+21d) |  |  |  |  |  |
| B2.1.33 81 26.144 | Excavation | 2026-10-08 → 2026-10-29 (+21d) | 2026-10-11 → 2026-11-01 (+21d) |  |  | 39.88d → 35.2d |  |  |
| B2.1.33 81 26.145 | HDPE Pipe, Shuttering, Steel Fixing & Conc. Cast | 2026-10-11 → 2026-11-01 (+21d) | 2026-10-13 → 2026-11-03 (+21d) |  |  | 88.88d → 85.2d |  |  |
| B2.1.33 81 26.146 | Backfilling & Warrning Tape | 2026-10-13 → 2026-11-03 (+21d) | 2026-10-17 → 2026-11-07 (+21d) |  |  | 88.88d → 85.2d | B2.1.33 81 26.145, B2.1.33 81 26.23 → B2.1.33 81 26.145, B2.1.33 81 26.23_R |  |
| (6*50mm+6*32mm) | **Size (6*50mm+6*32mm) HDPE ducts** | 2026-10-11 → 2026-11-01 (+21d) | 2026-10-19 → 2026-11-09 (+21d) |  |  |  |  |  |
| B2.1.33 81 26.147 | Excavation | 2026-10-11 → 2026-11-01 (+21d) | 2026-10-13 → 2026-11-03 (+21d) |  |  | 39.88d → 35.2d |  |  |
| B2.1.33 81 26.148 | HDPE Pipe, Shuttering, Steel Fixing & Conc. Cast | 2026-10-13 → 2026-11-03 (+21d) | 2026-10-15 → 2026-11-05 (+21d) |  |  | 72.88d → 67.2d |  |  |
| B2.1.33 81 26.149 | Backfilling & Warrning Tape | 2026-10-15 → 2026-11-05 (+21d) | 2026-10-19 → 2026-11-09 (+21d) |  |  | 72.88d → 67.2d |  |  |
| Manholes | **Manholes** | 2026-10-13 → 2026-11-03 (+21d) | 2026-10-25 → 2026-11-15 (+21d) |  |  |  |  |  |
| Manhole Type 1 | **Manhole Type 1** | 2026-10-13 → 2026-11-03 (+21d) | 2026-10-21 → 2026-11-11 (+21d) |  |  |  |  |  |
| B2.31 23 00.623 | Excavation | 2026-10-13 → 2026-11-03 (+21d) | 2026-10-15 → 2026-11-05 (+21d) |  |  | 39.88d → 35.2d |  |  |
| B2.33 71 00.254 | Manhole Installation | 2026-10-15 → 2026-11-05 (+21d) | 2026-10-18 → 2026-11-08 (+21d) |  |  | 78.88d → 35.2d |  |  |
| B2.33 71 00.255 | Backfilling & Warrning Tape | 2026-10-18 → 2026-11-08 (+21d) | 2026-10-21 → 2026-11-11 (+21d) |  |  | 78.88d → 35.2d | B2.33 71 00.254, B2.1.02 41 00.015, B2.1.33 81 26.143 → B2.33 71 00.254, B2.1.02 41 00.015_R, B2.1.33 81 26.143 |  |
| Manhole Type 2 | **Manhole Type 2** | 2026-10-15 → 2026-11-05 (+21d) | 2026-10-25 → 2026-11-15 (+21d) |  |  |  |  |  |
| B2.31 23 00.625 | Excavation | 2026-10-15 → 2026-11-05 (+21d) | 2026-10-18 → 2026-11-08 (+21d) |  |  | 39.88d → 37.2d |  |  |
| B2.33 71 00.258 | Manhole Installation | 2026-10-18 → 2026-11-08 (+21d) | 2026-10-21 → 2026-11-11 (+21d) |  |  | 39.88d → 37.2d |  |  |
| B2.33 71 00.259 | Backfilling & Warrning Tape | 2026-10-21 → 2026-11-11 (+21d) | 2026-10-25 → 2026-11-15 (+21d) |  |  | 39.88d → 37.2d |  |  |
| Crossing Ducts | **Road Crossing Ducts** | 2026-10-13 → 2026-11-03 (+21d) | 2026-10-21 → 2026-11-11 (+21d) |  |  |  |  |  |
| 1 | **Size (6X50mm) HDPE** | 2026-10-13 → 2026-11-03 (+21d) | 2026-10-21 → 2026-11-11 (+21d) |  |  |  |  |  |
| B2.31 23 00.622 | Excavation | 2026-10-13 → 2026-11-03 (+21d) | 2026-10-15 → 2026-11-05 (+21d) |  |  | 73.88d → 67.2d |  |  |
| B2.33 71 00.252 | Shuttering, Steel Fixing Incl. UPVC Pipe & Conc. Cast | 2026-10-15 → 2026-11-05 (+21d) | 2026-10-18 → 2026-11-08 (+21d) |  |  | 73.88d → 67.2d |  |  |
| B2.33 71 00.253 | Backfilling & Warrning Tape | 2026-10-18 → 2026-11-08 (+21d) | 2026-10-21 → 2026-11-11 (+21d) |  |  | 73.88d → 67.2d |  |  |
| Earth & Road Works | **Earth & Road Works** |  | 2026-11-14 → 2026-12-03 (+19d) |  |  |  |  |  |
| Earth Layers | **Earth Layers** |  | 2026-09-17 → 2026-10-11 (+24d) |  |  |  |  |  |
| B1.2.32 11 13.01.13 | Subgrade (82.00% Completed) |  | 2026-09-17 → 2026-09-15 A (-2d) | 125.97d → 123.97d | 82% → 100% | 114d → none |  | was named Subgrade; resources Subgrade [930.69]; Labor [31.18 h]; Foreman [15.59 h]; Operator [31.18 h]; Surveyor [15.59 h]; Surveyor Helper [15.59 h]; Grader [16 h]; Loader [16 h]; Water Tanker [16 h]; Dump Truck [16 h]; Plate Compactor [16 h]; Roller Compactor [16 h] → Subgrade [763.17]; Labor [25.57 h]; Foreman [12.79 h]; Operator [25.57 h]; Surveyor [12.79 h]; Surveyor Helper [12.79 h]; Grader [13.12 h]; Loader [13.12 h]; Water Tanker [13.12 h]; Dump Truck [13.12 h]; Plate Compactor [13.12 h]; Roller Compactor [13.12 h] |
| B1.2.32 11 23.01.13 | Aggregate Base Course (48.00% Completed) |  | 2026-09-17 → 2026-09-15 A (-2d) | 89.88d → 88.84d | 48% → 100% | 114.96d → none |  | was named Aggregate Base Course; resources Aggregate base course [620.46]; Labor [31.18 h]; Foreman [15.59 h]; Operator [31.18 h]; Surveyor [15.59 h]; Surveyor Helper [15.59 h]; Grader [16 h]; Loader [16 h]; Water Tanker [16 h]; Dump Truck [16 h]; Plate Compactor [16 h]; Roller Compactor [16 h] → Aggregate base course [297.82]; Labor [14.97 h]; Foreman [7.48 h]; Operator [14.97 h]; Surveyor [7.48 h]; Surveyor Helper [7.48 h]; Grader [7.68 h]; Loader [7.68 h]; Water Tanker [7.68 h]; Dump Truck [7.68 h]; Plate Compactor [7.68 h]; Roller Compactor [7.68 h] |
| Interlock | **Interlock** | 2026-10-05 → 2026-10-25 (+20d) | 2026-10-07 → 2026-10-27 (+20d) |  |  |  |  |  |
| B1.2.32 14 13.13.13 | 60mm thick - Interlocking Block Pavers | 2026-10-05 → 2026-10-25 (+20d) | 2026-10-07 → 2026-10-27 (+20d) |  |  | 5d → 7.32d |  |  |
| Curbstone | **Curbstone** | 2026-10-08 → 2026-10-28 (+20d) | 2026-10-24 → 2026-11-12 (+19d) |  |  |  |  |  |
| Pre Install | **Pre-Installation** | 2026-10-08 → 2026-10-28 (+20d) | 2026-10-18 → 2026-11-07 (+20d) |  |  |  |  |  |
| B2.31 23 00.361 | Excavation | 2026-10-08 → 2026-10-28 (+20d) | 2026-10-10 → 2026-10-29 (+19d) |  |  | 5d → 7.32d |  |  |
| B1.2.32 14 13.13.213 | PCC | 2026-10-11 → 2026-10-31 (+20d) | 2026-10-13 → 2026-11-02 (+20d) |  |  | 20d → 21.32d |  |  |
| 32 16 13.0013 | Haunching | 2026-10-14 → 2026-11-03 (+20d) | 2026-10-18 → 2026-11-07 (+20d) |  |  | 20d → 21.32d |  |  |
| Installation | **Installation** | 2026-10-19 → 2026-11-08 (+20d) | 2026-10-21 → 2026-11-10 (+20d) |  |  |  |  |  |
| B1.2.32 16.13.01.13 | Curb Stone, Type K1 | 2026-10-19 → 2026-11-08 (+20d) | 2026-10-21 → 2026-11-10 (+20d) |  |  | 20d → 21.32d |  |  |
| B1.2.32 16.13.02.12 | Dropped Curb, Type K3 | 2026-10-20 → 2026-11-09 (+20d) | 2026-10-21 → 2026-11-10 (+20d) |  |  | 20d → 21.32d |  |  |
| B1.2.32 16.13.03.13 | Edge Curb, Type K4 | 2026-10-20 → 2026-11-09 (+20d) | 2026-10-21 → 2026-11-10 (+20d) |  |  | 20d → 21.32d |  |  |
| B1.2.32 16.13.0413 | Heel Curb, Type K5 | 2026-10-20 → 2026-11-09 (+20d) | 2026-10-21 → 2026-11-10 (+20d) |  |  | 20d → 21.32d |  |  |
| B1.2.32 16.13.05.12 | Transition Curb | 2026-10-20 → 2026-11-09 (+20d) | 2026-10-21 → 2026-11-10 (+20d) |  |  | 20d → 21.32d |  |  |
| Finishing | **Finishing** | 2026-10-22 → 2026-11-11 (+20d) | 2026-10-24 → 2026-11-12 (+19d) |  |  |  |  |  |
| 32 16 13.013 | Finishing, Fareface | 2026-10-22 → 2026-11-11 (+20d) | 2026-10-24 → 2026-11-12 (+19d) |  |  | 20d → 21.32d |  |  |
| Asphalt Layers | **Asphalt Layers** |  | 2026-11-09 → 2026-11-29 (+20d) |  |  |  |  |  |
| B1.2.32 11 26.01.13 | Bituminous Base Course including Prime Coat (MC1) and tack coat (RC2) (43.00% Completed) |  | 2026-09-17 → 2026-09-15 A (-2d) | 63.22d → 62.08d | 43% → 100% | 50.86d → none |  | was named Bituminous Base Course including Prime Coat (MC1) and tack coat (RC2); resources Bituminous base course(Grading I - Class A) [425.12]; Labor [31.18 h]; Foreman [15.59 h]; Operator [31.18 h]; Surveyor [15.59 h]; Surveyor Helper [15.59 h]; Dump Truck [16 h]; Roller Compactor [16 h]; MC1/RC2 Sprayer [16 h] → Bituminous base course(Grading I - Class A) [182.8]; Labor [13.41 h]; Foreman [6.7 h]; Operator [13.41 h]; Surveyor [6.7 h]; Surveyor Helper [6.7 h]; Dump Truck [6.88 h]; Roller Compactor [6.88 h]; MC1/RC2 Sprayer [6.88 h] |
| B1.2.32 12 16.01.13 | Bituminous concrete Wearing Course, including tack coat (RC2) | 2026-11-04 → 2026-11-24 (+20d) | 2026-11-09 → 2026-11-29 (+20d) |  |  | 11d → 12.32d | B1.2.32 11 26.01.13, B7.32 31 26.01-113, 32 16 13.013 → B1.2.32 11 26.01.13_R, B7.32 31 26.01-113, 32 16 13.013 |  |
| Pavement Marking | **Pavement Marking** | 2026-11-10 → 2026-11-30 (+20d) | 2026-11-11 → 2026-12-01 (+20d) |  |  |  |  |  |
| B1.2.32 17 23.01.13 | Retroreflective Thermoplastic White Traffic lines | 2026-11-10 → 2026-11-30 (+20d) | 2026-11-11 → 2026-12-01 (+20d) |  |  | 57d → 56.32d |  |  |
| B1.2.32 17 23.02.13 | Retroreflective Thermoplastic Yellow, Traffic lines | 2026-11-10 → 2026-11-30 (+20d) | 2026-11-11 → 2026-12-01 (+20d) |  |  | 57d → 56.32d |  |  |
| Traffic Signs | **Traffic Signs** | 2026-10-11 → 2026-10-31 (+20d) | 2026-11-14 → 2026-12-03 (+19d) |  |  |  |  |  |
| Pre Install | **Pre-Installation** | 2026-10-11 → 2026-10-31 (+20d) | 2026-10-14 → 2026-11-03 (+20d) |  |  |  |  |  |
| B2.31 23 00.371 | Excavation | 2026-10-11 → 2026-10-31 (+20d) | 2026-10-12 → 2026-11-01 (+20d) |  |  | 5d → 7.32d |  |  |
| 10 14 53.013 | Foundation | 2026-10-13 → 2026-11-02 (+20d) | 2026-10-14 → 2026-11-03 (+20d) |  |  | 81d → 80.32d |  |  |
| Installation | **Installation** | 2026-11-12 → 2026-12-02 (+20d) | 2026-11-14 → 2026-12-03 (+19d) |  |  |  |  |  |
| B1.2.10 14 14.01.13 | Ground mounted, 1 Sheet Alumenium, Single post | 2026-11-12 → 2026-12-02 (+20d) | 2026-11-14 → 2026-12-03 (+19d) |  |  | 57d → 56.32d |  |  |
| B1.2.10 14 53.0113 | 1 Sheet Alumenium, Single post | 2026-11-12 → 2026-12-02 (+20d) | 2026-11-14 → 2026-12-03 (+19d) |  |  | 57d → 56.32d |  |  |
| Landscape | **Landscape** | 2026-10-13 → 2026-11-02 (+20d) | 2026-11-03 → 2026-11-23 (+20d) |  |  |  |  |  |
| Fences | **Fences** | 2026-10-13 → 2026-11-02 (+20d) | 2026-11-03 → 2026-11-23 (+20d) |  |  |  |  |  |

| ID | Task | Start | Finish | Duration | Complete | Total float | Predecessors | Other |
| --- | --- | --- | --- | --- | --- | --- | --- | --- |
| (ZATCA HCIS) | **Steel fence (ZATCA HCIS)** | 2026-10-13 → 2026-11-02 (+20d) | 2026-11-03 → 2026-11-23 (+20d) |  |  |  |  |  |
| B7.32 31 26.01-19 | Earthwork | 2026-10-13 → 2026-11-02 (+20d) | 2026-10-19 → 2026-11-08 (+20d) |  |  | 5d → 7.32d |  |  |
| B7.32 31 26.01-111 | Foundation | 2026-10-20 → 2026-11-09 (+20d) | 2026-10-27 → 2026-11-16 (+20d) |  |  | 6d → 7.32d |  |  |
| B7.32 31 26.01-113 | Fence Installation | 2026-10-28 → 2026-11-17 (+20d) | 2026-11-03 → 2026-11-23 (+20d) |  |  | 6d → 7.32d |  |  |
| Customs Rd 01 | **Customs Road 01** |  | 2026-11-24 → 2026-12-16 (+22d) |  |  |  |  |  |
| Wet Networks | **Wet Networks** |  | 2026-11-19 → 2026-12-09 (+20d) |  |  |  |  |  |
| Sewerage Network | **Sewerage Network** |  | 2026-10-18 → 2026-11-08 (+21d) |  |  |  |  |  |
| GRP | **GRP Pipes** |  | 2026-10-04 → 2026-10-17 (+13d) |  |  |  |  |  |
| 200 | **?150** |  | 2026-10-04 → 2026-10-17 (+13d) |  |  |  |  |  |
| 1 | **Depth From 1.5m to 2.5m** |  | 2026-09-22 → 2026-10-12 (+20d) |  |  |  |  |  |
| B5.33 31 00.01.02.28 | Pipe Laying (10.51% Completed) |  | 2026-09-19 → 2026-09-15 A (-4d) | 141.69d → 139d | 11% → 100% | 113.31d → none |  | was named Pipe Laying; resources Labor [46.78 h]; Foreman [23.39 h]; Plumber Helper [23.39 h]; Plumber [23.39 h]; Operator [23.39 h]; Surveyor [23.39 h]; Surveyor Helper [23.39 h]; Mobile Crane [24 h]; Sew Dia. 150mm Depth: 1.51m - 2.5m [35.26] → Labor [4.91 h]; Foreman [2.46 h]; Plumber Helper [2.46 h]; Plumber [2.46 h]; Operator [2.46 h]; Surveyor [2.46 h]; Surveyor Helper [2.46 h]; Mobile Crane [2.52 h]; Sew Dia. 150mm Depth: 1.51m - 2.5m [3.7] |
| B5.33 31 00.01.02.32 | Embedment & Test (10.42% Completed) |  | 2026-09-21 → 2026-09-15 A (-6d) | 139.67d → 136d | 10% → 100% | 111d → none |  | was named Embedment & Test; resources Labor [62.37 h]; Foreman [31.18 h]; Plumber Helper [31.18 h]; Plumber [31.18 h]; Operator [62.37 h]; Surveyor [31.18 h]; Surveyor Helper [31.18 h]; Loader [32 h]; Water Tanker [32 h]; Dump Truck [32 h]; Plate Compactor [32 h]; Roller Compactor [32 h]; Sew Dia. 150mm Depth: 1.51m - 2.5m [15.67] → Labor [6.5 h]; Foreman [3.25 h]; Plumber Helper [3.25 h]; Plumber [3.25 h]; Operator [6.5 h]; Surveyor [3.25 h]; Surveyor Helper [3.25 h]; Loader [3.33 h]; Water Tanker [3.33 h]; Dump Truck [3.33 h]; Plate Compactor [3.33 h]; Roller Compactor [3.33 h]; Sew Dia. 150mm Depth: 1.51m - 2.5m [1.63] |
| B5.33 31 00.01.02.36 | Backfilling & Warrning Tape (10.42% Completed) |  | 2026-09-22 → 2026-09-15 A (-7d) | 136.56d → 132d | 10% → 100% | 110d → none |  | was named Backfilling & Warrning Tape; resources Labor [77.96 h]; Foreman [38.98 h]; Operator [155.92 h]; Surveyor [38.98 h]; Surveyor Helper [38.98 h]; Loader [40 h]; Water Tanker [40 h]; Dump Truck [40 h]; Plate Compactor [40 h]; Roller Compactor [40 h]; Sew Dia. 150mm Depth: 1.51m - 2.5m [7.84] → Labor [8.12 h]; Foreman [4.06 h]; Operator [16.25 h]; Surveyor [4.06 h]; Surveyor Helper [4.06 h]; Loader [4.17 h]; Water Tanker [4.17 h]; Dump Truck [4.17 h]; Plate Compactor [4.17 h]; Roller Compactor [4.17 h]; Sew Dia. 150mm Depth: 1.51m - 2.5m [0.82] |
| 4 | **Depth From 2.5m to 3.5m** |  | 2026-10-04 → 2026-10-17 (+13d) |  |  |  |  |  |
| B5.33 31 00.01.02.34 | Embedment & Test (10.42% Completed) |  | 2026-09-21 → 2026-09-15 A (-6d) | 111.67d → 108d | 10% → 100% | 85d → none |  | was named Embedment & Test; resources Labor [62.37 h]; Foreman [31.18 h]; Plumber Helper [31.18 h]; Plumber [31.18 h]; Operator [62.37 h]; Surveyor [31.18 h]; Surveyor Helper [31.18 h]; Loader [32 h]; Water Tanker [32 h]; Dump Truck [32 h]; Plate Compactor [32 h]; Roller Compactor [32 h]; Sew Dia. 150mm Depth: 2.51m - 3.5m [2.82] → Labor [6.5 h]; Foreman [3.25 h]; Plumber Helper [3.25 h]; Plumber [3.25 h]; Operator [6.5 h]; Surveyor [3.25 h]; Surveyor Helper [3.25 h]; Loader [3.33 h]; Water Tanker [3.33 h]; Dump Truck [3.33 h]; Plate Compactor [3.33 h]; Roller Compactor [3.33 h]; Sew Dia. 150mm Depth: 2.51m - 3.5m [0.29] |
| B5.33 31 00.01.02.38 | Backfilling & Warrning Tape (10.42% Completed) |  | 2026-10-04 → 2026-09-15 A (-19d) | 110.56d → 106d | 10% → 100% | 75d → none | B5.33 31 00.01.02.34 FF, B5.33 31 00.01.02.36 SS, DMM2-Proc-Delv-4058 FF → B5.33 31 00.01.02.34 FF, B5.33 31 00.01.02.36 SS | was named Backfilling & Warrning Tape; resources Labor [77.96 h]; Foreman [38.98 h]; Operator [155.92 h]; Surveyor [38.98 h]; Surveyor Helper [38.98 h]; Loader [40 h]; Water Tanker [40 h]; Dump Truck [40 h]; Plate Compactor [40 h]; Roller Compactor [40 h]; Sew Dia. 150mm Depth: 2.51m - 3.5m [1.41] → Labor [8.12 h]; Foreman [4.06 h]; Operator [16.25 h]; Surveyor [4.06 h]; Surveyor Helper [4.06 h]; Loader [4.17 h]; Water Tanker [4.17 h]; Dump Truck [4.17 h]; Plate Compactor [4.17 h]; Roller Compactor [4.17 h]; Sew Dia. 150mm Depth: 2.51m - 3.5m [0.15] |
| Manholes | **Manholes ?1200** |  | 2026-09-28 → 2026-11-08 (+41d) |  |  |  |  |  |
| 3 | **Depth From 1.5m to 2.5m** |  | 2026-09-28 → 2026-11-08 (+41d) |  |  |  |  |  |
| B6.33 05 39.01.747 | Manhole Installation (45.23% Completed) |  | 2026-09-17 → 2026-09-15 A (-2d) | 108.52d → 107d | 45% → 100% | 114d → none |  | was named Manhole Installation; resources Labor [31.18 h]; Operator [31.18 h]; Surveyor [15.59 h]; Surveyor Helper [15.59 h]; Boom Truck [16 h]; Mobile Crane [16 h]; MH depth 1.51 - 2.5m [1.99] → Labor [14.1 h]; Operator [14.1 h]; Surveyor [7.05 h]; Surveyor Helper [7.05 h]; Boom Truck [7.24 h]; Mobile Crane [7.24 h]; MH depth 1.51 - 2.5m [0.9] |
| B6.33 05 39.01.757 | Test, Internal Finishing, Benching & Cover (45.23% Completed) |  | 2026-09-19 → 2026-09-15 A (-4d) | 88.44d → 85.88d | 45% → 100% | 113.44d → none |  | was named Test, Internal Finishing, Benching & Cover; resources Labor [62.37 h]; Foreman [31.18 h]; Plumber Helper [31.18 h]; Plumber [31.18 h]; Mason [31.18 h]; MH depth 1.51 - 2.5m [0.55] → Labor [28.21 h]; Foreman [14.1 h]; Plumber Helper [14.1 h]; Plumber [14.1 h]; Mason [14.1 h]; MH depth 1.51 - 2.5m [0.25] |
| B6.33 05 39.01.767 | Backfilling (45.23% Completed) |  | 2026-09-28 → 2026-09-15 A (-13d) | 87.64d → 83d | 45% → 100% | 101d → none | B6.33 05 39.01.757 SS → B6.33 05 39.01.757 SS, B5.33 31 00.01.02.38 | was named Backfilling; resources Labor [124.74 h]; Foreman [62.37 h]; Operator [124.74 h]; Surveyor [62.37 h]; Surveyor Helper [62.37 h]; Loader [64 h]; Water Tanker [64 h]; Dump Truck [64 h]; Plate Compactor [64 h]; MH depth 1.51 - 2.5m [0.88] → Labor [56.42 h]; Foreman [28.21 h]; Operator [56.42 h]; Surveyor [28.21 h]; Surveyor Helper [28.21 h]; Loader [28.95 h]; Water Tanker [28.95 h]; Dump Truck [28.95 h]; Plate Compactor [28.95 h]; MH depth 1.51 - 2.5m [0.4] |
| 4 | **Depth From 2.5m to 3.5m** |  | 2026-09-28 → 2026-11-08 (+41d) |  |  |  |  |  |
| B6.33 05 39.01.797 | Manhole Installation (45.23% Completed) |  | 2026-09-17 → 2026-09-15 A (-2d) | 108.52d → 107d | 45% → 100% | 114d → none |  | was named Manhole Installation; resources Labor [31.18 h]; Operator [31.18 h]; Surveyor [15.59 h]; Surveyor Helper [15.59 h]; Boom Truck [16 h]; Mobile Crane [16 h]; MH depth 2.51 - 3.5m [2.48] → Labor [14.1 h]; Operator [14.1 h]; Surveyor [7.05 h]; Surveyor Helper [7.05 h]; Boom Truck [7.24 h]; Mobile Crane [7.24 h]; MH depth 2.51 - 3.5m [1.12] |
| B6.33 05 39.01.807 | Test, Internal Finishing, Benching & Cover (45.23% Completed) |  | 2026-09-19 → 2026-09-15 A (-4d) | 83.44d → 80.88d | 45% → 100% | 98.44d → none |  | was named Test, Internal Finishing, Benching & Cover; resources Labor [62.37 h]; Foreman [31.18 h]; Plumber Helper [31.18 h]; Plumber [31.18 h]; Mason [31.18 h]; MH depth 2.51 - 3.5m [0.55] → Labor [28.21 h]; Foreman [14.1 h]; Plumber Helper [14.1 h]; Plumber [14.1 h]; Mason [14.1 h]; MH depth 2.51 - 3.5m [0.25] |
| B6.33 05 39.01.817 | Backfilling (45.23% Completed) |  | 2026-09-28 → 2026-09-15 A (-13d) | 80.6d → 77d | 45% → 100% | 65d → none | B6.33 05 39.01.767 SS → B6.33 05 39.01.807 SS, B6.33 05 39.01.767 FF | was named Backfilling; resources Labor [93.55 h]; Foreman [46.78 h]; Operator [93.55 h]; Surveyor [46.78 h]; Surveyor Helper [46.78 h]; Loader [48 h]; Water Tanker [48 h]; Dump Truck [48 h]; Plate Compactor [48 h]; MH depth 2.51 - 3.5m [1.1] → Labor [42.31 h]; Foreman [21.16 h]; Operator [42.31 h]; Surveyor [21.16 h]; Surveyor Helper [21.16 h]; Loader [21.71 h]; Water Tanker [21.71 h]; Dump Truck [21.71 h]; Plate Compactor [21.71 h]; MH depth 2.51 - 3.5m [0.5] |
| GRP1 | **HDPE Pipes** | 2026-09-16 → 2026-10-07 (+21d) | 2026-10-18 → 2026-11-08 (+21d) |  |  |  |  |  |
| 200 | **?160** | 2026-09-16 → 2026-10-07 (+21d) | 2026-10-18 → 2026-11-08 (+21d) |  |  |  |  |  |
| 1 | **Depth From 0.0m to 1.5m** | 2026-09-16 → 2026-10-07 (+21d) | 2026-10-18 → 2026-11-08 (+21d) |  |  |  |  |  |
| B5.33 31 23.01-1.20 | Excavation | 2026-09-16 → 2026-10-07 (+21d) | 2026-09-19 → 2026-10-18 (+29d) | 3d → 10d |  | 90d → 85.32d |  |  |
| B5.33 31 23.01-1.22 | Sand Bedding | 2026-09-20 → 2026-10-19 (+29d) | 2026-09-22 → 2026-10-21 (+29d) |  |  | 90d → 85.32d |  |  |
| B5.33 31 23.01-1.24 | Pipe Laying | 2026-09-24 → 2026-10-22 (+28d) | 2026-09-27 → 2026-10-25 (+28d) |  |  | 90d → 85.32d |  |  |
| B5.33 31 23.01-1.26 | Embedment & Test | 2026-09-28 → 2026-10-26 (+28d) | 2026-10-03 → 2026-10-31 (+28d) |  |  | 90d → 85.32d |  |  |
| B5.33 31 23.01-1.28 | Backfilling & Warrning Tape | 2026-10-11 → 2026-11-01 (+21d) | 2026-10-18 → 2026-11-08 (+21d) |  |  | 84d → 85.32d | B5.33 31 23.01-1.26, B3.33 14 19.01.83 → B5.33 31 23.01-1.26 |  |
| Stormwater Network | **Stormwater Network** |  | 2026-10-17 → 2026-11-03 (+17d) |  |  |  |  |  |
| Box Cul. | **Box Cul.** |  | 2026-10-17 → 2026-11-03 (+17d) |  |  |  |  |  |
| B6. 33 42 13.46 | Box Reinforced Conc. Slab (92.00% Completed) |  | 2026-09-19 → 2026-09-15 A (-4d) | 42.5d → 40.5d | 92% → 100% | 58d → none |  | was named Box Reinforced Conc. Slab; resources Labor [155.92 h]; Laboratory Officer [77.96 h]; Carpenter [77.96 h]; Steelfixer [77.96 h]; Mason [77.96 h]; Operator [155.92 h]; Surveyor [77.96 h]; Surveyor Helper [77.96 h]; Mobile Crane [80 h]; Concrete for box culvert [223.6]; Steel Reinforcement for box culverts [37.2] → Labor [143.45 h]; Laboratory Officer [71.72 h]; Carpenter [71.72 h]; Steelfixer [71.72 h]; Mason [71.72 h]; Operator [143.45 h]; Surveyor [71.72 h]; Surveyor Helper [71.72 h]; Mobile Crane [73.6 h]; Concrete for box culvert [205.71]; Steel Reinforcement for box culverts [34.22] |
| B6. 33 42 13.56 | Curing & Water Proofing (75.00% Completed) |  | 2026-09-19 → 2026-09-15 A (-4d) | 37.5d → 36d | 75% → 100% | 51.5d → none |  | was named Curing & Water Proofing; resources Labor [93.55 h]; Mason [46.78 h]; Concrete for box culvert [111.8]; Steel Reinforcement for box culverts [37.2] → Labor [70.17 h]; Mason [35.08 h]; Concrete for box culvert [83.85]; Steel Reinforcement for box culverts [27.9] |
| B6. 33 42 13.66 | Backfilling & Warrning Tape | 2026-09-19 → 2026-10-07 (+18d) | 2026-09-27 → 2026-10-14 (+17d) |  |  | 56.5d → 50.3d | B6. 33 42 13.56 → B6. 33 42 13.56_R |  |
| Conc. Ch | **Concrete Chambers** |  | 2026-10-17 → 2026-11-03 (+17d) |  |  |  |  |  |
| Conc. Ch 2.53.51 | **Size 3.0 x 3.0 m, depth 1.5 to 2.5** |  | 2026-10-03 → 2026-10-20 (+17d) |  |  |  |  |  |
| B6.33 05 63.012 | Cocrete Cast for Chamber & Curing (75.00% Completed) |  | 2026-09-19 → 2026-09-15 A (-4d) | 14d → 12d | 75% → 100% | 51d → none |  | was named Cocrete Cast for Chamber & Curing; resources Labor [46.78 h]; Mason [23.39 h]; Operator [46.78 h]; Size 3.0 x 3.0 m, depth 1.51-2.5 m [0.56] → Labor [35.08 h]; Mason [17.54 h]; Operator [35.08 h]; Size 3.0 x 3.0 m, depth 1.51-2.5 m [0.42] |
| B6.33 05 63.013 | Cast Iron Steps Installation, Epoxy Paint & Internal Finishing | 2026-09-20 → 2026-10-07 (+17d) | 2026-09-28 → 2026-10-15 (+17d) |  |  | 51d → 45.3d | B6.33 05 63.012, B6. 33 42 13.56 → B6.33 05 63.012_R, B6. 33 42 13.56_R |  |
| B6.33 05 63.014 | Waterproofing Tanking Membrane & Protection | 2026-09-29 → 2026-10-15 (+16d) | 2026-10-03 → 2026-10-20 (+17d) |  |  | 51d → 45.3d | B6.33 05 63.013, B6. 33 42 13.46, B6.33 05 63.043 → B6.33 05 63.013, B6. 33 42 13.46_R, B6.33 05 63.043 |  |
| Conc. Ch 3.54.5 | **Size 3.0 x 1.5 m, depth 1.5 to 2.5** |  | 2026-10-07 → 2026-10-25 (+18d) |  |  |  |  |  |
| B6.33 05 63.021 | Shuttering, Steel Fixing, CJ & Water Stop (75.00% Completed) |  | 2026-09-19 → 2026-09-15 A (-4d) | 11.5d → 10d | 75% → 100% | 113.5d → none |  | was named Shuttering, Steel Fixing, CJ & Water Stop; resources Labor [93.55 h]; Carpenter [46.78 h]; Steelfixer [46.78 h]; Operator [93.55 h]; Boom Truck [48 h]; Mobile Crane [48 h]; Size 3.0 x 1.5 m, depth 1.51-2.5 m [0.15] → Labor [70.17 h]; Carpenter [35.08 h]; Steelfixer [35.08 h]; Operator [70.17 h]; Boom Truck [36 h]; Mobile Crane [36 h]; Size 3.0 x 1.5 m, depth 1.51-2.5 m [0.11] |
| B6.33 05 63.022 | Cocrete Cast for Chamber & Curing (75.00% Completed) |  | 2026-09-19 → 2026-09-15 A (-4d) | 8.5d → 7d | 75% → 100% | 57.5d → none |  | was named Cocrete Cast for Chamber & Curing; resources Labor [93.55 h]; Mason [46.78 h]; Operator [93.55 h]; Size 3.0 x 1.5 m, depth 1.51-2.5 m [0.56] → Labor [70.17 h]; Mason [35.08 h]; Operator [70.17 h]; Size 3.0 x 1.5 m, depth 1.51-2.5 m [0.42] |
| B6.33 05 63.023 | Cast Iron Steps Installation, Epoxy Paint & Internal Finishing | 2026-09-19 → 2026-10-07 (+18d) | 2026-09-26 → 2026-10-13 (+17d) |  |  | 57.5d → 51.3d | B6.33 05 63.022, B6. 33 42 13.56 → B6.33 05 63.022_R, B6. 33 42 13.56_R |  |
| B6.33 05 63.024 | Waterproofing Tanking Membrane & Protection | 2026-10-04 → 2026-10-20 (+16d) | 2026-10-07 → 2026-10-25 (+18d) |  |  | 51d → 45.3d | B6.33 05 63.023, B6.33 05 63.014, B6. 33 42 13.66 → B6.33 05 63.023, B6.33 05 63.014, B6. 33 42 13.66, B6.33 42 11.36-1.20_R, B6.33 42 11.36-185_R |  |
| Conc. Ch 3.54.51 | **Size 2.5 x 1.5 m, depth 1.5 to 2.5** |  | 2026-10-12 → 2026-10-29 (+17d) |  |  |  |  |  |
| B6.33 05 63.031 | Shuttering, Steel Fixing, CJ & Water Stop (75.00% Completed) |  | 2026-09-19 → 2026-09-15 A (-4d) | 9.5d → 8d | 75% → 100% | 113.5d → none |  | was named Shuttering, Steel Fixing, CJ & Water Stop; resources Labor [93.55 h]; Carpenter [46.78 h]; Steelfixer [46.78 h]; Operator [93.55 h]; Boom Truck [48 h]; Mobile Crane [48 h]; Size 2.5 x 1.5 m, depth 1.51-2.5 m [0.15] → Labor [70.17 h]; Carpenter [35.08 h]; Steelfixer [35.08 h]; Operator [70.17 h]; Boom Truck [36 h]; Mobile Crane [36 h]; Size 2.5 x 1.5 m, depth 1.51-2.5 m [0.11] |
| B6.33 05 63.032 | Cocrete Cast for Chamber & Curing (75.00% Completed) |  | 2026-09-17 → 2026-09-15 A (-2d) | 5d → 4d | 75% → 100% | 63d → none |  | was named Cocrete Cast for Chamber & Curing; resources Labor [93.55 h]; Mason [46.78 h]; Operator [93.55 h]; Size 2.5 x 1.5 m, depth 1.51-2.5 m [0.56] → Labor [70.17 h]; Mason [35.08 h]; Operator [70.17 h]; Size 2.5 x 1.5 m, depth 1.51-2.5 m [0.42] |
| B6.33 05 63.033 | Cast Iron Steps Installation, Epoxy Paint & Internal Finishing | 2026-09-19 → 2026-10-07 (+18d) | 2026-09-24 → 2026-10-12 (+18d) |  |  | 62.5d → 56.3d | B6.33 05 63.032, B6. 33 42 13.56 → B6.33 05 63.032_R, B6. 33 42 13.56_R |  |
| B6.33 05 63.034 | Waterproofing Tanking Membrane & Protection | 2026-10-08 → 2026-10-25 (+17d) | 2026-10-12 → 2026-10-29 (+17d) |  |  | 51d → 45.3d |  |  |
| Conc. Ch 2.53.5 | **Size 2.0 x 1.5 m, depth 2.5 to 3.5** |  | 2026-10-17 → 2026-11-03 (+17d) |  |  |  |  |  |
| B6.33 05 63.042 | Cocrete Cast for Chamber & Curing (75.00% Completed) |  | 2026-09-17 → 2026-09-15 A (-2d) | 6d → 5d | 75% → 100% | 55d → none |  | was named Cocrete Cast for Chamber & Curing; resources Labor [93.55 h]; Mason [46.78 h]; Operator [93.55 h]; Size 2.0 x 1.5 m, depth 2.51-3.5 m [1.66] → Labor [70.17 h]; Mason [35.08 h]; Operator [70.17 h]; Size 2.0 x 1.5 m, depth 2.51-3.5 m [1.24] |
| B6.33 05 63.043 | Cast Iron Steps Installation, Epoxy Paint & Internal Finishing | 2026-09-19 → 2026-10-07 (+18d) | 2026-09-24 → 2026-10-12 (+18d) |  |  | 54.5d → 48.3d | B6.33 05 63.042, B6. 33 42 13.56, B6. 33 42 13.36, B6.33 05 63.011 → B6.33 05 63.042_R, B6. 33 42 13.56_R, B6. 33 42 13.36, B6.33 05 63.011 |  |
| B6.33 05 63.044 | Waterproofing Tanking Membrane & Protection | 2026-10-13 → 2026-10-29 (+16d) | 2026-10-17 → 2026-11-03 (+17d) |  |  | 51d → 45.3d |  |  |
| Potable Water | **Potable Water Network** |  | 2026-09-19 → 2026-10-11 (+22d) |  |  |  |  |  |
| HDPE | **HDPE Pipes** |  | 2026-09-19 → 2026-10-11 (+22d) |  |  |  |  |  |
| ?110mm | **?110mm** |  | 2026-09-19 → 2026-10-11 (+22d) |  |  |  |  |  |
| Depth: 0.0m - 1.5m | **Depth: 0.0m - 1.5m** |  | 2026-09-19 → 2026-10-10 (+21d) |  |  |  |  |  |
| B3.33 14 13-91 | Excavation (72.00% Completed) |  | 2026-09-19 → 2026-09-15 A (-4d) | 80d → 78d | 72% → 100% | 56d → none |  | was named Excavation; resources Labor [31.18 h]; Foreman [15.59 h]; Operator [31.18 h]; Surveyor [15.59 h]; Surveyor Helper [15.59 h]; Excavator (With Bucket) [16 h]; Water Tanker [16 h]; Dump Truck [16 h]; Plate Compactor [16 h]; Depth: 0.0m - 1.5m [155.75] → Labor [22.45 h]; Foreman [11.23 h]; Operator [22.45 h]; Surveyor [11.23 h]; Surveyor Helper [11.23 h]; Excavator (With Bucket) [11.52 h]; Water Tanker [11.52 h]; Dump Truck [11.52 h]; Plate Compactor [11.52 h]; Depth: 0.0m - 1.5m [112.14] |
| B3.33 14 13-95 | Sand Bedding (72.00% Completed) |  | 2026-09-19 → 2026-09-15 A (-4d) | 78d → 76d | 72% → 100% | 113d → none |  | was named Sand Bedding; resources Labor [31.18 h]; Foreman [15.59 h]; Operator [62.37 h]; Surveyor [15.59 h]; Surveyor Helper [15.59 h]; Loader [16 h]; Water Tanker [16 h]; Dump Truck [16 h]; Plate Compactor [16 h]; Depth: 0.0m - 1.5m [38.94] → Labor [22.45 h]; Foreman [11.23 h]; Operator [44.91 h]; Surveyor [11.23 h]; Surveyor Helper [11.23 h]; Loader [11.52 h]; Water Tanker [11.52 h]; Dump Truck [11.52 h]; Plate Compactor [11.52 h]; Depth: 0.0m - 1.5m [28.04] |
| B3.33 14 13-99 | Pipe Laying (72.00% Completed) |  | 2026-09-19 → 2026-09-15 A (-4d) | 76d → 74d | 72% → 100% | 113d → none |  | was named Pipe Laying; resources Labor [31.18 h]; Foreman [15.59 h]; Plumber Helper [15.59 h]; Plumber [15.59 h]; Operator [15.59 h]; Surveyor [15.59 h]; Surveyor Helper [15.59 h]; Mobile Crane [16 h]; Depth: 0.0m - 1.5m [350.44] → Labor [22.45 h]; Foreman [11.23 h]; Plumber Helper [11.23 h]; Plumber [11.23 h]; Operator [11.23 h]; Surveyor [11.23 h]; Surveyor Helper [11.23 h]; Mobile Crane [11.52 h]; Depth: 0.0m - 1.5m [252.32] |
| B3.33 14 13-103 | Embedment & Test (72.00% Completed) |  | 2026-09-19 → 2026-09-15 A (-4d) | 72.12d → 71d | 72% → 100% | 113d → none |  | was named Embedment & Test; resources Labor [62.37 h]; Foreman [31.18 h]; Plumber Helper [31.18 h]; Plumber [31.18 h]; Operator [62.37 h]; Surveyor [31.18 h]; Surveyor Helper [31.18 h]; Loader [32 h]; Water Tanker [32 h]; Dump Truck [32 h]; Plate Compactor [32 h]; Roller Compactor [32 h]; Depth: 0.0m - 1.5m [155.75] → Labor [44.91 h]; Foreman [22.45 h]; Plumber Helper [22.45 h]; Plumber [22.45 h]; Operator [44.91 h]; Surveyor [22.45 h]; Surveyor Helper [22.45 h]; Loader [23.04 h]; Water Tanker [23.04 h]; Dump Truck [23.04 h]; Plate Compactor [23.04 h]; Roller Compactor [23.04 h]; Depth: 0.0m - 1.5m [112.14] |
| B3.33 14 13-107 | Backfilling & Warrning Tape (72.00% Completed) |  | 2026-09-19 → 2026-09-15 A (-4d) | 69.4d → 68d | 72% → 100% | 113d → none |  | was named Backfilling & Warrning Tape; resources Labor [77.96 h]; Foreman [38.98 h]; Operator [155.92 h]; Surveyor [38.98 h]; Surveyor Helper [38.98 h]; Loader [40 h]; Water Tanker [40 h]; Dump Truck [40 h]; Plate Compactor [40 h]; Roller Compactor [40 h]; Depth: 0.0m - 1.5m [77.87] → Labor [56.13 h]; Foreman [28.07 h]; Operator [112.27 h]; Surveyor [28.07 h]; Surveyor Helper [28.07 h]; Loader [28.8 h]; Water Tanker [28.8 h]; Dump Truck [28.8 h]; Plate Compactor [28.8 h]; Roller Compactor [28.8 h]; Depth: 0.0m - 1.5m [56.07] |
| Depth: 1.51m - 2.5m | **Depth: 1.51m - 2.5m** |  | 2026-09-19 → 2026-10-11 (+22d) |  |  |  |  |  |
| B3.33 14 13-93 | Excavation (72.00% Completed) |  | 2026-09-19 → 2026-09-15 A (-4d) | 86d → 84d | 72% → 100% | 56d → none |  | was named Excavation; resources Labor [31.18 h]; Foreman [15.59 h]; Operator [31.18 h]; Surveyor [15.59 h]; Surveyor Helper [15.59 h]; Excavator (With Bucket) [16 h]; Water Tanker [16 h]; Dump Truck [16 h]; Plate Compactor [16 h]; Depth: 1.51m - 2.5m → Labor [22.45 h]; Foreman [11.23 h]; Operator [22.45 h]; Surveyor [11.23 h]; Surveyor Helper [11.23 h]; Excavator (With Bucket) [11.52 h]; Water Tanker [11.52 h]; Dump Truck [11.52 h]; Plate Compactor [11.52 h]; Depth: 1.51m - 2.5m |
| B3.33 14 13-97 | Sand Bedding (72.00% Completed) |  | 2026-09-19 → 2026-09-15 A (-4d) | 84d → 82d | 72% → 100% | 113d → none |  | was named Sand Bedding; resources Labor [31.18 h]; Foreman [15.59 h]; Operator [62.37 h]; Surveyor [15.59 h]; Surveyor Helper [15.59 h]; Loader [16 h]; Water Tanker [16 h]; Dump Truck [16 h]; Plate Compactor [16 h]; Depth: 1.51m - 2.5m → Labor [22.45 h]; Foreman [11.23 h]; Operator [44.91 h]; Surveyor [11.23 h]; Surveyor Helper [11.23 h]; Loader [11.52 h]; Water Tanker [11.52 h]; Dump Truck [11.52 h]; Plate Compactor [11.52 h]; Depth: 1.51m - 2.5m |
| B3.33 14 13-101 | Pipe Laying (72.00% Completed) |  | 2026-09-19 → 2026-09-15 A (-4d) | 81d → 79d | 72% → 100% | 113d → none |  | was named Pipe Laying; resources Labor [31.18 h]; Foreman [15.59 h]; Plumber Helper [15.59 h]; Plumber [15.59 h]; Operator [15.59 h]; Surveyor [15.59 h]; Surveyor Helper [15.59 h]; Mobile Crane [16 h]; Depth: 1.51m - 2.5m → Labor [22.45 h]; Foreman [11.23 h]; Plumber Helper [11.23 h]; Plumber [11.23 h]; Operator [11.23 h]; Surveyor [11.23 h]; Surveyor Helper [11.23 h]; Mobile Crane [11.52 h]; Depth: 1.51m - 2.5m |

| ID | Task | Start | Finish | Duration | Complete | Total float | Predecessors | Other |
| --- | --- | --- | --- | --- | --- | --- | --- | --- |
| B3.33 14 13-105 | Embedment & Test (72.00% Completed) |  | 2026-09-19 → 2026-09-15 A (-4d) | 78.12d → 77d | 72% → 100% | 113d → none |  | was named Embedment & Test; resources Labor [62.37 h]; Foreman [31.18 h]; Plumber Helper [31.18 h]; Plumber [31.18 h]; Operator [62.37 h]; Surveyor [31.18 h]; Surveyor Helper [31.18 h]; Loader [32 h]; Water Tanker [32 h]; Dump Truck [32 h]; Plate Compactor [32 h]; Roller Compactor [32 h]; Depth: 1.51m - 2.5m → Labor [44.91 h]; Foreman [22.45 h]; Plumber Helper [22.45 h]; Plumber [22.45 h]; Operator [44.91 h]; Surveyor [22.45 h]; Surveyor Helper [22.45 h]; Loader [23.04 h]; Water Tanker [23.04 h]; Dump Truck [23.04 h]; Plate Compactor [23.04 h]; Roller Compactor [23.04 h]; Depth: 1.51m - 2.5m |
| B3.33 14 13-109 | Backfilling & Warrning Tape (72.00% Completed) |  | 2026-09-19 → 2026-09-15 A (-4d) | 75.4d → 74d | 72% → 100% | 113.6d → none |  | was named Backfilling & Warrning Tape; resources Labor [77.96 h]; Foreman [38.98 h]; Operator [155.92 h]; Surveyor [38.98 h]; Surveyor Helper [38.98 h]; Loader [40 h]; Water Tanker [40 h]; Dump Truck [40 h]; Plate Compactor [40 h]; Roller Compactor [40 h]; Depth: 1.51m - 2.5m → Labor [56.13 h]; Foreman [28.07 h]; Operator [112.27 h]; Surveyor [28.07 h]; Surveyor Helper [28.07 h]; Loader [28.8 h]; Water Tanker [28.8 h]; Dump Truck [28.8 h]; Plate Compactor [28.8 h]; Roller Compactor [28.8 h]; Depth: 1.51m - 2.5m |
| Fire Fighting | **Fire Fighting Network** |  | 2026-11-19 → 2026-12-09 (+20d) |  |  |  |  |  |
| HDPE | **HDPE Pipes** |  | 2026-11-14 → 2026-12-03 (+19d) |  |  |  |  |  |
| ?250mm | **?250mm** |  | 2026-11-14 → 2026-12-03 (+19d) |  |  |  |  |  |
| Depth: 0.0m - 1.5m | **Depth: 0.0m - 1.5m** |  | 2026-11-14 → 2026-12-03 (+19d) |  |  |  |  |  |
| B3.1. 33 14 13-1191 | Excavation | 2026-09-20 A | 2026-09-24 A |  | 0% → 100% | 56d → none | B3.33 14 13-91, B3.33 14 13-93 → B3.33 14 13-91_R, B3.33 14 13-93_R |  |
| B3.1. 33 14 13-1195 | Sand Bedding | 2026-09-26 A | 2026-09-29 A |  | 0% → 100% | 56d → none |  |  |
| B3.1. 33 14 13-1199 | Pipe Laying | 2026-09-30 A | 2026-10-04 A |  | 0% → 100% | 56d → none |  |  |
| B3.1. 33 14 13-11103 | Embedment & Test | 2026-10-05 → 2026-10-03 A (-2d) | 2026-10-11 → 2026-10-05 A (-6d) |  | 0% → 100% | 56d → none |  |  |
| B3.1. 33 14 13-11107 | Backfilling & Warrning Tape | 2026-11-09 → 2026-11-29 (+20d) | 2026-11-14 → 2026-12-03 (+19d) |  |  | 56d → 53.32d | B3.1. 33 14 13-11103, B3.33 14 19.01.fh33, B3.33 05 63.02.79, B3.33 14 19.01.fh48, B3.33 05 63.02.64 → B3.1. 33 14 13-11103, B3.33 14 19.01.fh33, B3.33 05 63.02.79, B3.33 14 19.01.fh48_R, B3.33 05 63.02.64 |  |
| Depth: 1.51m - 2.5m | **Depth: 1.51m - 2.5m** | 2026-09-20 → 2026-10-11 (+21d) | 2026-11-08 → 2026-11-24 (+16d) |  |  |  |  |  |
| B3.1. 33 14 13-1193 | Excavation | 2026-09-20 → 2026-10-11 (+21d) | 2026-09-24 → 2026-10-14 (+20d) |  |  | 56d → 53.32d | B3.33 14 13-91, B3.33 14 13-93 → B3.33 14 13-91_R, B3.33 14 13-93_R |  |
| B3.1. 33 14 13-1197 | Sand Bedding | 2026-09-26 → 2026-10-15 (+19d) | 2026-09-29 → 2026-10-19 (+20d) |  |  | 56d → 53.32d |  |  |
| B3.1. 33 14 13-11101 | Pipe Laying | 2026-09-30 → 2026-10-20 (+20d) | 2026-10-04 → 2026-10-24 (+20d) |  |  | 56d → 53.32d |  |  |
| B3.1. 33 14 13-11105 | Embedment & Test | 2026-10-05 → 2026-10-25 (+20d) | 2026-10-11 → 2026-10-31 (+20d) |  |  | 56d → 53.32d |  |  |
| B3.1. 33 14 13-11109 | Backfilling & Warrning Tape | 2026-11-03 → 2026-11-19 (+16d) | 2026-11-08 → 2026-11-24 (+16d) |  |  | 66d → 66.32d |  |  |
| Valves & Chambers | **Valves & Chambers** | 2026-10-12 → 2026-11-01 (+20d) | 2026-11-08 → 2026-11-28 (+20d) |  |  |  |  |  |
| 2 | **Air Valves** | 2026-10-12 → 2026-11-01 (+20d) | 2026-11-08 → 2026-11-28 (+20d) |  |  |  |  |  |
| 4 | **Air valves on less than 315 mm. (In Chamber)** | 2026-10-12 → 2026-11-01 (+20d) | 2026-11-08 → 2026-11-28 (+20d) |  |  |  |  |  |
| B3.33 05 63.02.62 | Land Adjustment & Compaction | 2026-10-12 → 2026-11-01 (+20d) | 2026-10-15 → 2026-11-04 (+20d) |  |  | 56d → 53.32d |  |  |
| B3.33 05 63.02.60 | Foundations | 2026-10-17 → 2026-11-05 (+19d) | 2026-10-21 → 2026-11-10 (+20d) |  |  | 56d → 53.32d |  |  |
| B3.33 05 63.02.63 | Chambers Walls Conc Cast In Situ | 2026-10-22 → 2026-11-11 (+20d) | 2026-10-27 → 2026-11-16 (+20d) |  |  | 56d → 53.32d |  |  |
| B3.33 05 63.02.61 | Chamber Curing, Finishing & Steel Cover | 2026-10-28 → 2026-11-17 (+20d) | 2026-11-03 → 2026-11-23 (+20d) |  |  | 56d → 53.32d |  |  |
| B3.33 05 63.02.64 | Valve & Fitting Installation | 2026-11-04 → 2026-11-24 (+20d) | 2026-11-08 → 2026-11-28 (+20d) |  |  | 56d → 53.32d |  |  |
| 3 | **Fire Hydrant** | 2026-10-05 → 2026-10-25 (+20d) | 2026-11-19 → 2026-12-09 (+20d) |  |  |  |  |  |
| B3.33 14 19.01.fh35 | Riser Pipe & Flanged Fittings Installation | 2026-10-05 → 2026-10-25 (+20d) | 2026-10-08 → 2026-10-28 (+20d) |  |  | 82d → 79.32d |  |  |
| B3.33 14 19.01.fh34 | Firehydrant Fixing/Installation | 2026-10-10 → 2026-10-29 (+19d) | 2026-10-14 → 2026-11-03 (+20d) |  |  | 82d → 79.32d |  |  |
| B3.33 14 19.01.fh36 | Backfilling & Compaction | 2026-11-15 → 2026-12-05 (+20d) | 2026-11-19 → 2026-12-09 (+20d) |  |  | 56d → 53.32d | B3.33 14 19.01.fh34, B3.1. 33 14 13-11107, B3.33 05 63.01.64, B3.33 05 63.02.84, DMM2-Proc-Delv-5908 → B3.33 14 19.01.fh34, B3.1. 33 14 13-11107, B3.33 05 63.01.64, B3.33 05 63.02.84, DMM2-Proc-Delv-5908_R |  |
| Dry Networks | **Dry Networks** |  | 2026-11-15 → 2026-12-05 (+20d) |  |  |  |  |  |
| MV | **Medium Voltage Network** | 2026-10-05 → 2026-10-17 (+12d) | 2026-10-20 → 2026-11-02 (+13d) |  |  |  |  |  |
| Duct Banks | **Duct Banks** | 2026-10-05 → 2026-10-17 (+12d) | 2026-10-20 → 2026-11-02 (+13d) |  |  |  |  |  |
| 2 Way | **2 Way** | 2026-10-05 → 2026-10-17 (+12d) | 2026-10-20 → 2026-11-02 (+13d) |  |  |  |  |  |
| B2.31 23 00.640 | Excavation | 2026-10-05 → 2026-10-17 (+12d) | 2026-10-08 → 2026-10-21 (+13d) |  |  | 75d → 78.52d | B5.33 31 00.01.02.38 → B5.33 31 00.01.02.38_R |  |
| B2.33 71 00.288 | Shuttering, Steel Fixing Incl. UPVC Pipe & Conc. Cast | 2026-10-10 → 2026-10-21 (+11d) | 2026-10-17 → 2026-10-29 (+12d) |  |  | 83d → 86.52d |  |  |
| B2.33 71 00.289 | Backfilling & Warrning Tape | 2026-10-18 → 2026-10-29 (+11d) | 2026-10-20 → 2026-11-02 (+13d) |  |  | 83d → 86.52d |  |  |
| LV Network | **Low Voltage Network** | 2026-09-19 → 2026-10-10 (+21d) | 2026-11-15 → 2026-12-05 (+20d) |  |  |  |  |  |
| Duct Banks | **Duct Banks** | 2026-10-10 → 2026-10-21 (+11d) | 2026-11-15 → 2026-12-05 (+20d) |  |  |  |  |  |
| 2 Way | **2 Way** | 2026-10-10 → 2026-10-21 (+11d) | 2026-11-15 → 2026-12-05 (+20d) |  |  |  |  |  |
| B2.33 71 00 02 112 | Excavation | 2026-10-10 → 2026-10-21 (+11d) | 2026-10-11 → 2026-10-24 (+13d) |  |  | 75d → 78.52d |  |  |
| B2.33 71 00 02 113 | Shuttering, Steel Fixing Incl. UPVC Pipe & Conc. Cast | 2026-10-12 → 2026-10-24 (+12d) | 2026-10-14 → 2026-10-27 (+13d) |  |  | 89d → 92.52d |  |  |
| B2.33 71 00 02 114 | Backfilling & Warrning Tape | 2026-11-12 → 2026-12-02 (+20d) | 2026-11-15 → 2026-12-05 (+20d) |  |  | 65d → 62.32d |  |  |
| 4 Way | **4 Way** | 2026-10-12 → 2026-10-24 (+12d) | 2026-10-20 → 2026-11-02 (+13d) |  |  |  |  |  |
| B2.33 71 00 02 115 | Excavation | 2026-10-12 → 2026-10-24 (+12d) | 2026-10-13 → 2026-10-26 (+13d) |  |  | 75d → 78.52d |  |  |
| B2.33 71 00 02 116 | Shuttering, Steel Fixing Incl. UPVC Pipe & Conc. Cast | 2026-10-14 → 2026-10-26 (+12d) | 2026-10-17 → 2026-10-29 (+12d) |  |  | 84d → 87.52d |  |  |
| B2.33 71 00 02 117 | Backfilling & Warrning Tape | 2026-10-18 → 2026-10-29 (+11d) | 2026-10-20 → 2026-11-02 (+13d) |  |  | 84d → 87.52d |  |  |
| 6 Way | **6 Way** | 2026-10-14 → 2026-10-26 (+12d) | 2026-10-22 → 2026-11-04 (+13d) |  |  |  |  |  |
| B2.33 71 00 02 118 | Excavation | 2026-10-14 → 2026-10-26 (+12d) | 2026-10-15 → 2026-10-28 (+13d) |  |  | 75d → 78.52d |  |  |
| B2.33 71 00 02 119 | Shuttering, Steel Fixing Incl. UPVC Pipe & Conc. Cast | 2026-10-17 → 2026-10-28 (+11d) | 2026-10-19 → 2026-11-01 (+13d) |  |  | 77d → 80.52d |  |  |
| B2.33 71 00 02 120 | Backfilling & Warrning Tape | 2026-10-20 → 2026-11-01 (+12d) | 2026-10-22 → 2026-11-04 (+13d) |  |  | 82d → 85.52d |  |  |
| 8 Way | **8 Way** | 2026-10-17 → 2026-10-28 (+11d) | 2026-10-25 → 2026-11-07 (+13d) |  |  |  |  |  |
| B2.33 71 00 02 121 | Excavation | 2026-10-17 → 2026-10-28 (+11d) | 2026-10-18 → 2026-10-31 (+13d) |  |  | 75d → 78.52d |  |  |
| B2.33 71 00 02 122 | Shuttering, Steel Fixing Incl. UPVC Pipe & Conc. Cast | 2026-10-19 → 2026-10-31 (+12d) | 2026-10-21 → 2026-11-03 (+13d) |  |  | 75d → 78.52d |  |  |
| B2.33 71 00 02 123 | Backfilling & Warrning Tape | 2026-10-22 → 2026-11-03 (+12d) | 2026-10-25 → 2026-11-07 (+13d) |  |  | 80d → 83.52d |  |  |
| Cables | **Cables** | 2026-09-19 → 2026-10-10 (+21d) | 2026-10-24 → 2026-11-05 (+12d) |  |  |  |  |  |
| 4C,10+1C,10mm2 | **4C,10+1C,10mm2** | 2026-09-19 → 2026-10-10 (+21d) | 2026-09-20 → 2026-10-11 (+21d) |  |  |  |  |  |
| B2.33 71 00 01 12 | Cable Pulling | 2026-09-19 → 2026-10-10 (+21d) | 2026-09-20 → 2026-10-11 (+21d) |  |  | 101d → 98.32d | B1.2.32 11 26.01.12 → B1.2.32 11 26.01.12_R |  |
| 4C,50+1C,25mm2 | **4C,50+1C,25mm2** | 2026-10-22 → 2026-11-03 (+12d) | 2026-10-24 → 2026-11-05 (+12d) |  |  |  |  |  |
| B2.33 71 00 01 13 | Cable Pulling | 2026-10-22 → 2026-11-03 (+12d) | 2026-10-24 → 2026-11-05 (+12d) |  |  | 75d → 78.52d |  |  |
| Street Lighting | **Street Lighting** |  | 2026-10-22 → 2026-11-12 (+21d) |  |  |  |  |  |
| SL Poles | **SL Poles** |  | 2026-10-15 → 2026-11-10 (+26d) |  |  |  |  |  |
| Pole (10 M Sngl Arm) | **Pole (10 M Single Arm)** |  | 2026-09-24 → 2026-10-15 (+21d) |  |  |  |  |  |
| B2.33 71 16.71 | Excavation (74.36% Completed) |  | 2026-09-17 → 2026-09-15 A (-2d) | 13.2d → 11.2d | 74% → 100% | 114d → none |  | was named Excavation; resources Labor [31.18 h]; Foreman [15.59 h]; Operator [31.18 h]; Surveyor [15.59 h]; Surveyor Helper [15.59 h]; Excavator (With Bucket) [16 h]; Dump Truck [16 h]; Lighting poles with 1 arm, height of ( 10) meters [6.6] → Labor [23.19 h]; Foreman [11.59 h]; Operator [23.19 h]; Surveyor [11.59 h]; Surveyor Helper [11.59 h]; Excavator (With Bucket) [11.9 h]; Dump Truck [11.9 h]; Lighting poles with 1 arm, height of ( 10) meters [4.91] |
| B2.33 71 16.72 | PC & RC Foundation (74.36% Completed) |  | 2026-09-17 → 2026-09-15 A (-2d) | 12.2d → 10.2d | 74% → 100% | 114d → none |  | was named PC & RC Foundation; resources Labor [62.37 h]; Foreman [31.18 h]; Laboratory Officer [31.18 h]; Carpenter [31.18 h]; Steelfixer [31.18 h]; Mason [31.18 h]; Lighting poles with 1 arm, height of ( 10) meters [6.6] → Labor [46.38 h]; Foreman [23.19 h]; Laboratory Officer [23.19 h]; Carpenter [23.19 h]; Steelfixer [23.19 h]; Mason [23.19 h]; Lighting poles with 1 arm, height of ( 10) meters [4.91] |
| B2.33 71 16.73 | Lighting Poles Installation Incl power box, Cables (74.36% Completed) |  | 2026-09-17 → 2026-09-15 A (-2d) | 11.2d → 9.2d | 74% → 100% | 18d → none |  | was named Lighting Poles Installation Incl power box, Cables; resources Labor [77.96 h]; Operator [77.96 h]; Mobile Crane [40 h]; Electrician [38.98 h]; Lighting poles with 1 arm, height of ( 10) meters [13.2] → Labor [57.97 h]; Operator [57.97 h]; Mobile Crane [29.74 h]; Electrician [28.99 h]; Lighting poles with 1 arm, height of ( 10) meters [9.82] |
| B2.26.56.19.11 | Lighting Luminares Inst | 2026-09-19 → 2026-10-10 (+21d) | 2026-09-20 → 2026-10-12 (+22d) |  |  | 18d → 15.44d | B2.33 71 16.73 → B2.33 71 16.73_R |  |
| B2.33 71 16.74 | Backfilling, Grouting & Chamfering | 2026-09-21 → 2026-10-12 (+21d) | 2026-09-24 → 2026-10-15 (+21d) |  |  | 18d → 15.44d |  |  |
| Pole (10 M Dbl Arm) | **Pole (10 M Double Arm)** |  | 2026-10-03 → 2026-10-24 (+21d) |  |  |  |  |  |
| B2.33 71 16.75 | Excavation (74.36% Completed) |  | 2026-10-03 → 2026-09-15 A (-18d) | 11.2d → 9.2d | 74% → 100% | 82d → none | B2.33 71 16.71 SS, B2.33 71 00 02 154 FF → B2.33 71 16.71 SS | was named Excavation; resources Labor [31.18 h]; Foreman [15.59 h]; Operator [31.18 h]; Surveyor [15.59 h]; Surveyor Helper [15.59 h]; Excavator (With Bucket) [16 h]; Dump Truck [16 h]; Lighting poles with 2 arms, height of ( 10) meters [2.01] → Labor [23.19 h]; Foreman [11.59 h]; Operator [23.19 h]; Surveyor [11.59 h]; Surveyor Helper [11.59 h]; Excavator (With Bucket) [11.9 h]; Dump Truck [11.9 h]; Lighting poles with 2 arms, height of ( 10) meters [1.49] |
| B2.33 71 16.76 | PC & RC Foundation (74.36% Completed) |  | 2026-09-17 → 2026-09-15 A (-2d) | 10.2d → 8.2d | 74% → 100% | 114d → none |  | was named PC & RC Foundation; resources Labor [62.37 h]; Foreman [31.18 h]; Laboratory Officer [31.18 h]; Carpenter [31.18 h]; Steelfixer [31.18 h]; Mason [31.18 h]; Lighting poles with 2 arms, height of ( 10) meters [2.01] → Labor [46.38 h]; Foreman [23.19 h]; Laboratory Officer [23.19 h]; Carpenter [23.19 h]; Steelfixer [23.19 h]; Mason [23.19 h]; Lighting poles with 2 arms, height of ( 10) meters [1.49] |

| ID | Task | Start | Finish | Duration | Complete | Total float | Predecessors | Other |
| --- | --- | --- | --- | --- | --- | --- | --- | --- |
| B2.33 71 16.77 | Lighting Poles Installation Incl power box, Cables (74.36% Completed) |  | 2026-09-17 → 2026-09-15 A (-2d) | 8.2d → 6.2d | 74% → 100% | 21d → none |  | was named Lighting Poles Installation Incl power box, Cables; resources Labor [77.96 h]; Operator [77.96 h]; Mobile Crane [40 h]; Electrician [38.98 h]; Lighting poles with 2 arms, height of ( 10) meters [4.01] → Labor [57.97 h]; Operator [57.97 h]; Mobile Crane [29.74 h]; Electrician [28.99 h]; Lighting poles with 2 arms, height of ( 10) meters [2.98] |
| B2.26.56.19.12 | Lighting Luminares Inst | 2026-09-19 → 2026-10-19 (+30d) | 2026-09-20 → 2026-10-20 (+30d) |  |  | 21d → 11.32d | B2.33 71 16.77 → B2.33 71 16.77_R |  |
| B2.33 71 16.78 | Backfilling, Grouting & Chamfering | 2026-09-26 → 2026-10-21 (+25d) | 2026-09-28 → 2026-10-24 (+26d) |  |  | 18d → 11.32d |  |  |
| Pole (12 M Sngl Arm) | **Pole (12 M Single Arm)** |  | 2026-10-15 → 2026-11-10 (+26d) |  |  |  |  |  |
| B2.33 71 16.116 | Excavation (74.36% Completed) |  | 2026-10-15 → 2026-09-15 A (-30d) | 12.2d → 10.2d | 74% → 100% | 3d → none | B2.33 71 16.75 SS, B2.33 71 19 182 FF, B2.33 71 16.78 FF → B2.33 71 16.75 SS | was named Excavation; resources Labor [46.78 h]; Foreman [23.39 h]; Operator [46.78 h]; Surveyor [23.39 h]; Surveyor Helper [23.39 h]; Excavator (With Bucket) [24 h]; Dump Truck [24 h]; Lighting poles with 1 arm, height of ( 12 ) meters [5.4] → Labor [34.78 h]; Foreman [17.39 h]; Operator [34.78 h]; Surveyor [17.39 h]; Surveyor Helper [17.39 h]; Excavator (With Bucket) [17.85 h]; Dump Truck [17.85 h]; Lighting poles with 1 arm, height of ( 12 ) meters [4.02] |
| B2.33 71 16.126 | PC & RC Foundation (74.36% Completed) |  | 2026-09-17 → 2026-09-15 A (-2d) | 11.2d → 9.2d | 74% → 100% | 114d → none |  | was named PC & RC Foundation; resources Labor [77.96 h]; Foreman [38.98 h]; Laboratory Officer [38.98 h]; Carpenter [38.98 h]; Steelfixer [38.98 h]; Mason [38.98 h]; Lighting poles with 1 arm, height of ( 12 ) meters [5.4] → Labor [57.97 h]; Foreman [28.99 h]; Laboratory Officer [28.99 h]; Carpenter [28.99 h]; Steelfixer [28.99 h]; Mason [28.99 h]; Lighting poles with 1 arm, height of ( 12 ) meters [4.02] |
| B2.33 71 16.136 | Lighting Poles Installation Incl power box, Cables (74.36% Completed) |  | 2026-09-17 → 2026-09-15 A (-2d) | 8.2d → 6.2d | 74% → 100% | 23d → none |  | was named Lighting Poles Installation Incl power box, Cables; resources Labor [93.55 h]; Operator [93.55 h]; Mobile Crane [48 h]; Electrician [46.78 h]; Lighting poles with 1 arm, height of ( 12 ) meters [10.8] → Labor [69.57 h]; Operator [69.57 h]; Mobile Crane [35.69 h]; Electrician [34.78 h]; Lighting poles with 1 arm, height of ( 12 ) meters [8.03] |
| B2.26.56.19.29 | Lighting Luminares Inst | 2026-09-19 → 2026-11-05 (+47d) | 2026-09-20 → 2026-11-07 (+48d) |  |  | 23d → 1.32d | B2.33 71 16.136 → B2.33 71 16.136_R |  |
| B2.33 71 16.146 | Backfilling, Grouting & Chamfering | 2026-09-21 → 2026-11-08 (+48d) | 2026-09-24 → 2026-11-10 (+47d) |  |  | 23d → 1.32d |  |  |
| Earthing | **Earthing** | 2026-10-15 → 2026-11-05 (+21d) | 2026-10-22 → 2026-11-12 (+21d) |  |  |  |  |  |
| B2.33 71 19 38 | Land Adjustment | 2026-10-15 → 2026-11-05 (+21d) | 2026-10-17 → 2026-11-07 (+21d) |  |  | 5d → 5.32d | B2.33 71 16.136, B2.33 71 16.67 → B2.33 71 16.136_R, B2.33 71 16.67 |  |
| B2.33 71 19 39 | Earth Rods & Conduits | 2026-10-18 → 2026-11-08 (+21d) | 2026-10-20 → 2026-11-10 (+21d) |  |  | 5d → 5.32d |  |  |
| B2.33 71 19 40 | Backfilling | 2026-10-21 → 2026-11-11 (+21d) | 2026-10-22 → 2026-11-12 (+21d) |  |  | 5d → 5.32d | B2.33 71 19 39 → B2.33 71 19 39, B2.33 71 00 02 75 |  |
| Earth & Road Works | **Earth & Road Works** |  | 2026-11-24 → 2026-12-16 (+22d) |  |  |  |  |  |
| Earth Layers | **Earth Layers** |  | 2026-09-17 → 2026-10-08 (+21d) |  |  |  |  |  |
| B1.2.32 11 13.01.12 | Subgrade (65.00% Completed) |  | 2026-09-17 → 2026-09-15 A (-2d) | 151.97d → 149.97d | 65% → 100% | 114d → none |  | was named Subgrade; resources Subgrade [954.05]; Labor [31.18 h]; Foreman [15.59 h]; Operator [31.18 h]; Surveyor [15.59 h]; Surveyor Helper [15.59 h]; Grader [16 h]; Loader [16 h]; Water Tanker [16 h]; Dump Truck [16 h]; Plate Compactor [16 h]; Roller Compactor [16 h] → Subgrade [620.13]; Labor [20.27 h]; Foreman [10.14 h]; Operator [20.27 h]; Surveyor [10.14 h]; Surveyor Helper [10.14 h]; Grader [10.4 h]; Loader [10.4 h]; Water Tanker [10.4 h]; Dump Truck [10.4 h]; Plate Compactor [10.4 h]; Roller Compactor [10.4 h] |
| B1.2.32 11 23.01.12 | Aggregate Base Course |  |  |  |  |  | B1.2.32 11 13.01.12 SS → B1.2.32 11 13.01.12 SS+5d, B1.2.32 11 13.01.12 FF+2d |  |
| Interlock | **Interlock** | 2026-10-24 → 2026-11-18 (+25d) | 2026-10-26 → 2026-11-21 (+26d) |  |  |  |  |  |
| B1.2.32 14 13.13.12 | 60mm thick - Interlocking Block Pavers | 2026-10-24 → 2026-11-18 (+25d) | 2026-10-26 → 2026-11-21 (+26d) |  |  | 5d → 1.32d |  |  |
| Curbstone | **Curbstone** | 2026-10-27 → 2026-11-22 (+26d) | 2026-11-14 → 2026-12-09 (+25d) |  |  |  |  |  |
| Pre Install | **Pre-Installation** | 2026-10-27 → 2026-11-22 (+26d) | 2026-11-02 → 2026-11-28 (+26d) |  |  |  |  |  |
| B2.31 23 00.331 | Excavation | 2026-10-27 → 2026-11-22 (+26d) | 2026-10-28 → 2026-11-23 (+26d) |  |  | 5d → 1.32d |  |  |
| B1.2.32 14 13.13.212 | PCC | 2026-10-29 → 2026-11-24 (+26d) | 2026-10-31 → 2026-11-25 (+25d) |  |  | 5d → 1.32d |  |  |
| 32 16 13.0012 | Haunching | 2026-11-01 → 2026-11-26 (+25d) | 2026-11-02 → 2026-11-28 (+26d) |  |  | 5d → 1.32d |  |  |
| Installation | **Installation** | 2026-11-03 → 2026-11-29 (+26d) | 2026-11-11 → 2026-12-07 (+26d) |  |  |  |  |  |
| B1.2.32 16.13.01.12 | Curb Stone, Type K1 | 2026-11-03 → 2026-11-29 (+26d) | 2026-11-04 → 2026-11-30 (+26d) |  |  | 5d → 1.32d |  |  |
| B1.2.32 16.13.02.11 | Dropped Curb, Type K3 | 2026-11-05 → 2026-12-01 (+26d) | 2026-11-05 → 2026-12-01 (+26d) |  |  | 5d → 1.32d |  |  |
| B1.2.32 16.13.03.12 | Edge Curb, Type K4 | 2026-11-07 → 2026-12-02 (+25d) | 2026-11-08 → 2026-12-03 (+25d) |  |  | 5d → 1.32d |  |  |
| B1.2.32 16.13.0412 | Heel Curb, Type K5 | 2026-11-09 → 2026-12-05 (+26d) | 2026-11-10 → 2026-12-06 (+26d) |  |  | 5d → 1.32d |  |  |
| B1.2.32 16.13.05.11 | Transition Curb | 2026-11-11 → 2026-12-07 (+26d) | 2026-11-11 → 2026-12-07 (+26d) |  |  | 5d → 1.32d |  |  |
| Finishing | **Finishing** | 2026-11-12 → 2026-12-08 (+26d) | 2026-11-14 → 2026-12-09 (+25d) |  |  |  |  |  |
| 32 16 13.012 | Finishing, Fareface | 2026-11-12 → 2026-12-08 (+26d) | 2026-11-14 → 2026-12-09 (+25d) |  |  | 5d → 1.32d |  |  |
| Asphalt Layers | **Asphalt Layers** |  | 2026-11-17 → 2026-12-12 (+25d) |  |  |  |  |  |
| B1.2.32 11 26.01.12 | Bituminous Base Course including Prime Coat (MC1) and tack coat (RC2) (74.00% Completed) |  | 2026-09-17 → 2026-09-15 A (-2d) | 96.47d → 94.47d | 74% → 100% | 53d → none |  | was named Bituminous Base Course including Prime Coat (MC1) and tack coat (RC2); resources Bituminous base course(Grading I - Class A) [435.8]; Labor [31.18 h]; Foreman [15.59 h]; Operator [31.18 h]; Surveyor [15.59 h]; Surveyor Helper [15.59 h]; Dump Truck [16 h]; Roller Compactor [16 h]; MC1/RC2 Sprayer [16 h] → Bituminous base course(Grading I - Class A) [322.49]; Labor [23.08 h]; Foreman [11.54 h]; Operator [23.08 h]; Surveyor [11.54 h]; Surveyor Helper [11.54 h]; Dump Truck [11.84 h]; Roller Compactor [11.84 h]; MC1/RC2 Sprayer [11.84 h] |
| B1.2.32 12 16.01.12 | Bituminous concrete Wearing Course, including tack coat (RC2) | 2026-11-16 → 2026-12-10 (+24d) | 2026-11-17 → 2026-12-12 (+25d) |  |  | 4d → 1.32d | B1.2.32 11 26.01.12, B7.32 31 26.01-5, 32 16 13.012, 10 14 53.012 → B1.2.32 11 26.01.12_R, B7.32 31 26.01-5, 32 16 13.012, 10 14 53.012 |  |
| Pavement Marking | **Pavement Marking** | 2026-11-18 → 2026-12-13 (+25d) | 2026-11-22 → 2026-12-16 (+24d) |  |  |  |  |  |
| B1.2.32 17 23.02.12 | Retroreflective Thermoplastic Yellow, Traffic lines | 2026-11-18 → 2026-12-13 (+25d) | 2026-11-19 → 2026-12-14 (+25d) |  |  | 55d → 52.32d |  |  |
| B1.2.32 17 23.01.12 | Retroreflective Thermoplastic White Traffic lines | 2026-11-21 → 2026-12-15 (+24d) | 2026-11-22 → 2026-12-16 (+24d) |  |  | 55d → 52.32d |  |  |
| Traffic Signs | **Traffic Signs** | 2026-10-29 → 2026-11-24 (+26d) | 2026-11-24 → 2026-12-16 (+22d) |  |  |  |  |  |
| Pre Install | **Pre-Installation** | 2026-10-29 → 2026-11-24 (+26d) | 2026-10-31 → 2026-11-25 (+25d) |  |  |  |  |  |
| 10 14 53.012 | Foundation | 2026-10-29 → 2026-11-24 (+26d) | 2026-10-31 → 2026-11-25 (+25d) |  |  | 17d → 13.32d |  |  |
| B2.31 23 00.341 | Excavation | 2026-10-29 → 2026-11-24 (+26d) | 2026-10-29 → 2026-11-24 (+26d) |  |  | 17d → 5.32d |  |  |
| Installation | **Installation** | 2026-11-23 → 2026-12-15 (+22d) | 2026-11-24 → 2026-12-16 (+22d) |  |  |  |  |  |
| B1.2.10 14 53.0112 | 1 Sheet Alumenium, Single post | 2026-11-23 → 2026-12-15 (+22d) | 2026-11-24 → 2026-12-16 (+22d) |  |  | 55d → 52.32d | B1.2.32 17 23.02.12, B1.2.32 17 23.01.12, B1.2.10 14 53.014, B1.2.10 14 14.01.4 → B1.2.32 17 23.02.12, B1.2.32 17 23.01.12 FF, B1.2.10 14 53.014, B1.2.10 14 14.01.4 |  |
| Landscape | **Landscape** |  | 2026-11-15 → 2026-12-05 (+20d) |  |  |  |  |  |
| Fences | **Fences** |  | 2026-11-15 → 2026-12-05 (+20d) |  |  |  |  |  |
| (ZATCA HCIS) | **Steel fence (ZATCA HCIS)** |  | 2026-11-15 → 2026-12-05 (+20d) |  |  |  |  |  |
| B7.32 31 26.01-1 | Earthwork (0.00% Completed) |  | 2026-10-29 → 2026-09-15 A (-44d) | 34d → 28d | 0% → 100% | 79d → none | B2.31 23 00.341 FF → B1.2.32 11 23.01.18 | was named Earthwork; resources Labor [46.78 h]; Foreman [23.39 h]; Operator [46.78 h]; Surveyor [23.39 h]; Surveyor Helper [23.39 h]; Excavator (With Bucket) [24 h]; Water Tanker [24 h]; Dump Truck [24 h]; Plate Compactor [24 h]; Steel fence (ZATCA HCIS) [116.81] → Labor; Foreman; Operator; Surveyor; Surveyor Helper; Excavator (With Bucket); Water Tanker; Dump Truck; Plate Compactor; Steel fence (ZATCA HCIS) |
| B7.32 31 26.01-3 | Foundation (0.00% Completed) |  | 2026-09-22 → 2026-09-15 A (-7d) | 33.1d → 25.1d | 0% → 100% | 41d → none |  | was named Foundation; resources Labor [62.37 h]; Laboratory Officer [31.18 h]; Carpenter [31.18 h]; Steelfixer [31.18 h]; Mason [31.18 h]; Surveyor [31.18 h]; Surveyor Helper [31.18 h]; Steel fence (ZATCA HCIS) [116.81] → Labor; Laboratory Officer; Carpenter; Steelfixer; Mason; Surveyor; Surveyor Helper; Steel fence (ZATCA HCIS) |
| B7.32 31 26.01-5 | Fence Installation | 2026-11-07 → 2026-11-26 (+19d) | 2026-11-15 → 2026-12-05 (+20d) |  |  | 4d → 5.32d | B7.32 31 26.01-113, B7.32 31 26.01-3, B7.32 31 26.01-8 → B7.32 31 26.01-113, B7.32 31 26.01-3_R, B7.32 31 26.01-8 |  |
| Sewerage Lift ST | **Sewerage Lift Station** |  | 2026-11-22 → 2026-12-12 (+20d) |  |  |  |  |  |
| 11 | **Underground Concrete Structures & Waterproofing** | 2026-09-20 → 2026-10-11 (+21d) | 2026-10-03 → 2026-10-22 (+19d) |  |  |  |  |  |
| B5.1.31 23 16.01.13 | Reinforced Concrete Walls | 2026-09-20 → 2026-10-11 (+21d) | 2026-09-24 → 2026-10-14 (+20d) |  |  | 17d → 15.32d | B5.1.31 23 16.01.9 → B5.1.31 23 16.01.9_R |  |
| B5.1.31 23 16.01.15 | Water proofing Membrane with protection board | 2026-09-29 → 2026-10-19 (+20d) | 2026-09-30 → 2026-10-20 (+20d) |  |  | 14d → 12.32d |  |  |
| B5.1.31 23 16.01.21 | Backfilling around underground chambers | 2026-10-01 → 2026-10-21 (+20d) | 2026-10-03 → 2026-10-22 (+19d) |  |  | 14d → 12.32d |  |  |
| 2 | **Sub-Structure & Foundations** |  | 2026-09-21 → 2026-10-12 (+21d) |  |  |  |  |  |
| B5.1.31 23 16.01.9 | Footings for wet well & Chambers (30.00% Completed) |  | 2026-09-19 → 2026-09-15 A (-4d) | 70d → 66d | 30% → 100% | 14d → none |  | was named Footings for wet well & Chambers; resources Labor [93.55 h]; Laboratory Officer [46.78 h]; Carpenter [46.78 h]; Steelfixer [46.78 h]; Mason [46.78 h]; Footings for wet well & valve chamber & screening chamber & control room [27.18] → Labor [28.07 h]; Laboratory Officer [14.03 h]; Carpenter [14.03 h]; Steelfixer [14.03 h]; Mason [14.03 h]; Footings for wet well & valve chamber & screening chamber & control room [8.15] |
| B5.1.31 23 16.01.11 | Slab on grade and ground beams | 2026-09-20 → 2026-10-11 (+21d) | 2026-09-21 → 2026-10-12 (+21d) |  |  | 14d → 12.32d | B5.1.31 23 16.01.9 → B5.1.31 23 16.01.9_R |  |
| 10 | **Superstructure - Control Room & Roof Slabs** | 2026-09-22 → 2026-10-13 (+21d) | 2026-10-04 → 2026-10-24 (+20d) |  |  |  |  |  |
| B5.1.31 23 16.01.17 | Reinforced Concrete Columns | 2026-09-22 → 2026-10-13 (+21d) | 2026-09-26 → 2026-10-15 (+19d) |  |  | 14d → 12.32d |  |  |
| B5.1.31 23 16.01.23 | Concrete masonry unit (200mm) walls | 2026-09-27 → 2026-10-17 (+20d) | 2026-09-29 → 2026-10-19 (+20d) |  |  | 17d → 15.32d |  |  |
| B5.1.31 23 16.01.27 | Roof Slab for wet well & Chambers | 2026-09-30 → 2026-10-20 (+20d) | 2026-10-04 → 2026-10-24 (+20d) |  |  | 17d → 15.32d |  |  |
| 12 | **Waterproofing, Roofing & External Enclosure** | 2026-09-30 → 2026-10-20 (+20d) | 2026-10-25 → 2026-11-14 (+20d) |  |  |  |  |  |
| B5.1.31 23 16.01.29 | External plastering | 2026-09-30 → 2026-10-20 (+20d) | 2026-10-04 → 2026-10-24 (+20d) |  |  | 32d → 30.32d |  |  |
| B5.1.31 23 16.01.39 | Water proofing Membrane for roof | 2026-10-05 → 2026-10-25 (+20d) | 2026-10-07 → 2026-10-27 (+20d) |  |  | 17d → 15.32d |  |  |
| B5.1.31 23 16.01.55 | Vapor retarders for roof | 2026-10-08 → 2026-10-28 (+20d) | 2026-10-11 → 2026-10-31 (+20d) |  |  | 17d → 15.32d |  |  |
| B5.1.31 23 16.01.71 | Geotextile membrane | 2026-10-12 → 2026-11-01 (+20d) | 2026-10-14 → 2026-11-03 (+20d) |  |  | 17d → 15.32d | B5.1.31 23 16.01.55, DMM2-Proc-Delv-7439 → B5.1.31 23 16.01.55, DMM2-Proc-Delv-7439_R |  |
| B5.1.31 23 16.01.89 | Gravel for Control Room Roof | 2026-10-15 → 2026-11-04 (+20d) | 2026-10-18 → 2026-11-07 (+20d) |  |  | 17d → 15.32d |  |  |
| B5.1.31 23 16.01.99 | 50mm slab on grade | 2026-10-19 → 2026-11-08 (+20d) | 2026-10-21 → 2026-11-10 (+20d) |  |  | 17d → 15.32d |  |  |
| B5.1.31 23 16.01.107 | Stone copping 30mm thickness | 2026-10-22 → 2026-11-11 (+20d) | 2026-10-25 → 2026-11-14 (+20d) |  |  | 17d → 15.32d |  |  |

| ID | Task | Start | Finish | Total float | Predecessors |
| --- | --- | --- | --- | --- | --- |
| 13 | **Internal Chamber Works (Wet Well, Valve, Screening)** | 2026-10-04 → 2026-10-24 (+20d) | 2026-10-29 → 2026-11-18 (+20d) |  |  |
| B5.1.31 23 16.01.31 | Sloped screed for internal floors for wet well and valve chamber | 2026-10-04 → 2026-10-24 (+20d) | 2026-10-05 → 2026-10-25 (+20d) | 14d → 12.32d |  |
| B5.1.31 23 16.01.41 | Sloped screed for internal floors for Screening chamber | 2026-10-06 → 2026-10-26 (+20d) | 2026-10-08 → 2026-10-28 (+20d) | 19d → 17.32d |  |
| B5.1.31 23 16.01.43 | Epoxy paint for internal side and floors for wet well and valve chamber | 2026-10-06 → 2026-10-26 (+20d) | 2026-10-07 → 2026-10-27 (+20d) | 14d → 12.32d |  |
| B5.1.31 23 16.01.57 | Epoxy paint for internal side and floors for Screening chamber | 2026-10-10 → 2026-10-29 (+19d) | 2026-10-12 → 2026-11-01 (+20d) | 19d → 17.32d |  |
| B5.1.31 23 16.01.73 | Stainless steel A36 ladders for screening chamber for screening chamber, wet well & valve chamber | 2026-10-13 → 2026-11-02 (+20d) | 2026-10-15 → 2026-11-04 (+20d) | 21d → 19.32d |  |
| B5.1.31 23 16.01.91 | Stainless steel A36 covers | 2026-10-17 → 2026-11-05 (+19d) | 2026-10-18 → 2026-11-07 (+20d) | 21d → 19.32d |  |
| B5.1.31 23 16.01.101 | Medium duty lockable D.I. cover | 2026-10-28 → 2026-11-17 (+20d) | 2026-10-29 → 2026-11-18 (+20d) | 13d → 11.32d |  |
| 3 | **Control Room Internal Finishes** | 2026-09-27 → 2026-10-17 (+20d) | 2026-11-01 → 2026-11-21 (+20d) |  |  |
| B5.1.31 23 16.01.19 | Vapor retarders below slab on grade | 2026-09-27 → 2026-10-17 (+20d) | 2026-09-28 → 2026-10-18 (+20d) | 14d → 12.32d |  |
| B5.1.31 23 16.01.25 | Water proofing Paint below slab on grade | 2026-09-29 → 2026-10-19 (+20d) | 2026-10-01 → 2026-10-21 (+20d) | 31d → 29.32d |  |
| B5.1.31 23 16.01.45 | Internal plastering | 2026-10-08 → 2026-10-28 (+20d) | 2026-10-11 → 2026-10-31 (+20d) | 14d → 12.32d |  |
| B5.1.31 23 16.01.59 | Internal painting (Acrylic) | 2026-10-12 → 2026-11-01 (+20d) | 2026-10-14 → 2026-11-03 (+20d) | 14d → 12.32d |  |
| B5.1.31 23 16.01.61 | External painting | 2026-10-22 → 2026-11-11 (+20d) | 2026-10-25 → 2026-11-14 (+20d) | 17d → 15.32d |  |
| B5.1.31 23 16.01.75 | Steel Door SD1 | 2026-10-22 → 2026-11-11 (+20d) | 2026-10-24 → 2026-11-12 (+19d) | 18d → 16.32d |  |
| B5.1.31 23 16.01.97 | Aluminum signage | 2026-10-31 → 2026-11-19 (+19d) | 2026-11-01 → 2026-11-21 (+20d) | 13d → 11.32d |  |
| 4 | **Mechanical & Process Equipment Installation** | 2026-10-05 → 2026-10-25 (+20d) | 2026-11-05 → 2026-11-25 (+20d) |  |  |
| B5.1.31 23 16.01.47 | JIB Crane installation | 2026-10-05 → 2026-10-25 (+20d) | 2026-10-07 → 2026-10-27 (+20d) | 20d → 18.32d | B5.1.31 23 16.01.27, DMM2-Proc-Delv-4518 → B5.1.31 23 16.01.27, DMM2-Proc-Delv-4518_R |
| B5.1.31 23 16.01.33 | Buried ductile iron pipes installation | 2026-10-13 → 2026-11-02 (+20d) | 2026-10-15 → 2026-11-04 (+20d) | 13d → 11.32d |  |
| B5.1.31 23 16.01.49 | Double flanged ductile iron pipe installation | 2026-10-17 → 2026-11-05 (+19d) | 2026-10-18 → 2026-11-07 (+20d) | 13d → 11.32d | B5.1.31 23 16.01.21, B5.1.31 23 16.01.33, DMM2-Proc-Delv-4448 → B5.1.31 23 16.01.21, B5.1.31 23 16.01.33, DMM2-Proc-Delv-4448_R |
| B5.1.31 23 16.01.63 | Submersible - wet installed pump installation | 2026-10-19 → 2026-11-08 (+20d) | 2026-10-21 → 2026-11-10 (+20d) | 11d → 9.32d |  |
| B5.1.31 23 16.01.65 | Manually operated Gate Valve DN150 installation | 2026-10-19 → 2026-11-08 (+20d) | 2026-10-20 → 2026-11-09 (+20d) | 13d → 11.32d |  |
| B5.1.31 23 16.01.77 | Non-return Valve DN150 installation | 2026-10-21 → 2026-11-10 (+20d) | 2026-10-22 → 2026-11-11 (+20d) | 13d → 11.32d | B5.1.31 23 16.01.33, B5.1.31 23 16.01.49, B5.1.31 23 16.01.65, DMM2-Proc-Delv-4478, B5.1.31 23 16.01.65 FF → B5.1.31 23 16.01.33, B5.1.31 23 16.01.49, B5.1.31 23 16.01.65, DMM2-Proc-Delv-4478_R, B5.1.31 23 16.01.65 FF |
| B5.1.31 23 16.01.111 | Scupper installation | 2026-10-22 → 2026-11-11 (+20d) | 2026-10-25 → 2026-11-14 (+20d) | 19d → 17.32d |  |
| B5.1.31 23 16.01.79 | Basket screens | 2026-10-22 → 2026-11-11 (+20d) | 2026-10-25 → 2026-11-14 (+20d) | 11d → 9.32d |  |
| B5.1.31 23 16.01.93 | Odor Control Unit | 2026-10-26 → 2026-11-15 (+20d) | 2026-10-27 → 2026-11-16 (+20d) | 11d → 9.32d |  |
| B5.1.31 23 16.01.95 | Screening container | 2026-10-26 → 2026-11-15 (+20d) | 2026-10-27 → 2026-11-16 (+20d) | 13d → 11.32d |  |
| B5.1.31 23 16.01.103 | Surge Tank | 2026-10-28 → 2026-11-17 (+20d) | 2026-10-29 → 2026-11-18 (+20d) | 11d → 9.32d |  |
| B5.1.31 23 16.01.109 | Electrically operated penstock installation | 2026-10-31 → 2026-11-19 (+19d) | 2026-11-01 → 2026-11-21 (+20d) | 11d → 9.32d |  |
| B5.1.31 23 16.01.115 | DX wall mounted Split/AC installation | 2026-11-02 → 2026-11-22 (+20d) | 2026-11-03 → 2026-11-23 (+20d) | 11d → 9.32d |  |
| B5.1.31 23 16.01.119 | Fire extinguishers (CO2, Powder) placement | 2026-11-04 → 2026-11-24 (+20d) | 2026-11-05 → 2026-11-25 (+20d) | 11d → 9.32d |  |
| 5 | **Electrical & Control Systems** | 2026-09-16 → 2026-10-07 (+21d) | 2026-11-22 → 2026-12-12 (+20d) |  |  |
| B5.1.31 23 16.01.5 | Grounding and lightning system | 2026-09-16 → 2026-10-07 (+21d) | 2026-09-19 → 2026-10-10 (+21d) | 38d → 36.32d |  |
| B5.1.31 23 16.01.35 | 4Cx 95mm2 Cable from SEC/Generator to ATS and MCC-SPS | 2026-10-04 → 2026-10-24 (+20d) | 2026-10-06 → 2026-10-26 (+20d) | 27d → 25.32d |  |
| B5.1. 26 32 12 .05 | Positive displacement rotary type pump installation | 2026-10-15 → 2026-11-04 (+20d) | 2026-10-18 → 2026-11-07 (+20d) | 11d → 9.32d | B5.1.31 23 16.01.13, B5.1.31 23 16.01.27, DMM2-Proc-Delv-4628 → B5.1.31 23 16.01.13, B5.1.31 23 16.01.27, DMM2-Proc-Delv-4628_R |
| B5.1.31 23 16.01.81 | MCC - 160AT/250AF, 400V, 3PH, 60HZ | 2026-10-15 → 2026-11-04 (+20d) | 2026-10-17 → 2026-11-05 (+19d) | 14d → 12.32d |  |
| B5.1. 26 32 12 .03 | ATS | 2026-10-18 → 2026-11-07 (+20d) | 2026-10-19 → 2026-11-08 (+20d) | 14d → 12.32d | B5.1.31 23 16.01.59, B5.1.31 23 16.01.81, DMM2-Proc-Delv-4608 → B5.1.31 23 16.01.59, B5.1.31 23 16.01.81, DMM2-Proc-Delv-4608_R |
| B5.1.31 23 16.01.105 | DB-SPS Panel | 2026-10-20 → 2026-11-09 (+20d) | 2026-10-21 → 2026-11-10 (+20d) | 14d → 12.32d |  |
| B5.1. 26 29 00 .02 | Local Control Panel, IP 65 | 2026-10-22 → 2026-11-11 (+20d) | 2026-10-24 → 2026-11-12 (+19d) | 14d → 12.32d |  |
| B5.1.31 23 16.01.51 | Standby Diesel Generator Set installation | 2026-10-22 → 2026-11-11 (+20d) | 2026-10-25 → 2026-11-14 (+20d) | 14d → 12.32d |  |
| B5.1.31 23 16.01.113 | ELP Panels | 2026-10-25 → 2026-11-14 (+20d) | 2026-10-26 → 2026-11-15 (+20d) | 14d → 12.32d |  |
| B5.1.31 23 16.01.67 | 2.084m3 capacity underground fuel tank installation | 2026-10-26 → 2026-11-15 (+20d) | 2026-10-27 → 2026-11-16 (+20d) | 14d → 12.32d |  |
| B5.1.31 23 16.01.117 | Isolator/disconnect switches installation | 2026-10-27 → 2026-11-16 (+20d) | 2026-10-28 → 2026-11-17 (+20d) | 14d → 12.32d |  |
| B5.1.31 23 16.01.83 | Manually operated fuel pump installation | 2026-10-28 → 2026-11-17 (+20d) | 2026-10-29 → 2026-11-18 (+20d) | 14d → 12.32d | B5.1.31 23 16.01.67, B5.1.31 23 16.01.21, B5.1.31 23 16.01.11, DMM2-Proc-Delv-4598 → B5.1.31 23 16.01.67, B5.1.31 23 16.01.21, B5.1.31 23 16.01.11, DMM2-Proc-Delv-4598_R |
| B5.1.31 23 16.01.137 | Surfaced Mounted Light | 2026-11-04 → 2026-11-24 (+20d) | 2026-11-04 → 2026-11-24 (+20d) | 11d → 9.32d |  |
| B5.1.31 23 16.01.139 | 7-meter single arm light pole | 2026-11-05 → 2026-11-25 (+20d) | 2026-11-07 → 2026-11-26 (+19d) | 11d → 9.32d |  |
| B5.1.31 23 16.01.141 | Socket Outlets installation | 2026-11-08 → 2026-11-28 (+20d) | 2026-11-09 → 2026-11-29 (+20d) | 11d → 9.32d |  |
| B5.1.31 23 16.01.143 | Fire Alarm System | 2026-11-10 → 2026-11-30 (+20d) | 2026-11-11 → 2026-12-01 (+20d) | 11d → 9.32d |  |
| B5.1.31 23 16.01.145 | PLC system | 2026-11-12 → 2026-12-02 (+20d) | 2026-11-15 → 2026-12-05 (+20d) | 11d → 9.32d | B5.1.31 23 16.01.59, B5.1.31 23 16.01.121, B5.1.31 23 16.01.123, B5.1.31 23 16.01.125, B5.1.31 23 16.01.127, B5.1.31 23 16.01.129, B5.1.31 23 16.01.131, B5.1.31 23 16.01.133, B5.1.31 23 16.01.135, B5.1.31 23 16.01.63, B5.1.31 23 16.01.79, B5.1.31 23 16.01.93, B5.1.31 23 16.01.103, B5.1.31 23 16.01.109, B5.1.31 23 16.01.143, DMM2-Proc-Delv-4668 → B5.1.31 23 16.01.59, B5.1.31 23 16.01.121, B5.1.31 23 16.01.123, B5.1.31 23 16.01.125, B5.1.31 23 16.01.127, B5.1.31 23 16.01.129, B5.1.31 23 16.01.131, B5.1.31 23 16.01.133, B5.1.31 23 16.01.135, B5.1.31 23 16.01.63, B5.1.31 23 16.01.79, B5.1.31 23 16.01.93, B5.1.31 23 16.01.103, B5.1.31 23 16.01.109, B5.1.31 23 16.01.143, DMM2-Proc-Delv-4668_R |
| B5.1.31 23 16.01.147 | Process Control Wiring | 2026-11-16 → 2026-12-06 (+20d) | 2026-11-18 → 2026-12-08 (+20d) | 11d → 9.32d |  |
| B5.1.31 23 16.01.149 | Instrumentation for Process Systems | 2026-11-19 → 2026-12-09 (+20d) | 2026-11-22 → 2026-12-12 (+20d) | 11d → 9.32d |  |
| LV Cables | **LV Cables** | 2026-11-02 → 2026-11-22 (+20d) | 2026-11-03 → 2026-11-23 (+20d) |  |  |
| B5.1.31 23 16.01.121 | 4Cx 10mm2 Cu/XLPE/SWA/PVC from MCC-SPS to ELP | 2026-11-02 → 2026-11-22 (+20d) | 2026-11-02 → 2026-11-22 (+20d) | 11d → 9.32d | B5.1.31 23 16.01.63, B5.1.31 23 16.01.79, B5.1.31 23 16.01.93, B5.1.31 23 16.01.103, B5.1.31 23 16.01.109, B5.1.31 23 16.01.81, B5.1. 26 32 12 .03, B5.1.31 23 16.01.105, B5.1.31 23 16.01.113, B5.1.31 23 16.01.117, DMM2-Proc-Delv-4578 → B5.1.31 23 16.01.63, B5.1.31 23 16.01.79, B5.1.31 23 16.01.93, B5.1.31 23 16.01.103, B5.1.31 23 16.01.109, B5.1.31 23 16.01.81, B5.1. 26 32 12 .03, B5.1.31 23 16.01.105, B5.1.31 23 16.01.113, B5.1.31 23 16.01.117, DMM2-Proc-Delv-4578_R |
| B5.1.31 23 16.01.123 | 4Cx 35mm2 + 1Cx16mm2 SUBMERGED RUBBER | 2026-11-02 → 2026-11-22 (+20d) | 2026-11-02 → 2026-11-22 (+20d) | 11d → 9.32d | B5.1.31 23 16.01.63, B5.1.31 23 16.01.79, B5.1.31 23 16.01.93, B5.1.31 23 16.01.103, B5.1.31 23 16.01.109, B5.1.31 23 16.01.81, B5.1. 26 32 12 .03, B5.1.31 23 16.01.105, B5.1.31 23 16.01.113, B5.1.31 23 16.01.117, B5.1.31 23 16.01.121 FF, DMM2-Proc-Delv-4578 → B5.1.31 23 16.01.63, B5.1.31 23 16.01.79, B5.1.31 23 16.01.93, B5.1.31 23 16.01.103, B5.1.31 23 16.01.109, B5.1.31 23 16.01.81, B5.1. 26 32 12 .03, B5.1.31 23 16.01.105, B5.1.31 23 16.01.113, B5.1.31 23 16.01.117, B5.1.31 23 16.01.121 FF, DMM2-Proc-Delv-4578_R |
| B5.1.31 23 16.01.125 | 4Cx 10mm2 + 1Cx10mm2 Cu/XLPE/PVC FROM MCC-SPS to DB-SPS | 2026-11-02 → 2026-11-22 (+20d) | 2026-11-02 → 2026-11-22 (+20d) | 11d → 9.32d | B5.1.31 23 16.01.63, B5.1.31 23 16.01.79, B5.1.31 23 16.01.93, B5.1.31 23 16.01.103, B5.1.31 23 16.01.109, B5.1.31 23 16.01.81, B5.1. 26 32 12 .03, B5.1.31 23 16.01.105, B5.1.31 23 16.01.113, B5.1.31 23 16.01.117, B5.1.31 23 16.01.123 FF, DMM2-Proc-Delv-4578 → B5.1.31 23 16.01.63, B5.1.31 23 16.01.79, B5.1.31 23 16.01.93, B5.1.31 23 16.01.103, B5.1.31 23 16.01.109, B5.1.31 23 16.01.81, B5.1. 26 32 12 .03, B5.1.31 23 16.01.105, B5.1.31 23 16.01.113, B5.1.31 23 16.01.117, B5.1.31 23 16.01.123 FF, DMM2-Proc-Delv-4578_R |
| B5.1.31 23 16.01.127 | 4Cx 10mm2 + 1Cx10mm2 Cu/XLPE/PVC FROM MCC-SPS to Penstok | 2026-11-02 → 2026-11-22 (+20d) | 2026-11-02 → 2026-11-22 (+20d) | 11d → 9.32d | B5.1.31 23 16.01.63, B5.1.31 23 16.01.79, B5.1.31 23 16.01.93, B5.1.31 23 16.01.103, B5.1.31 23 16.01.109, B5.1.31 23 16.01.81, B5.1. 26 32 12 .03, B5.1.31 23 16.01.105, B5.1.31 23 16.01.113, B5.1.31 23 16.01.117, B5.1.31 23 16.01.125 FF, DMM2-Proc-Delv-4578 → B5.1.31 23 16.01.63, B5.1.31 23 16.01.79, B5.1.31 23 16.01.93, B5.1.31 23 16.01.103, B5.1.31 23 16.01.109, B5.1.31 23 16.01.81, B5.1. 26 32 12 .03, B5.1.31 23 16.01.105, B5.1.31 23 16.01.113, B5.1.31 23 16.01.117, B5.1.31 23 16.01.125 FF, DMM2-Proc-Delv-4578_R |
| B5.1.31 23 16.01.129 | 4Cx 10mm2 + 1Cx10mm2 Cu/XLPE/PVC FROM MCC-SPS to Odor Control Unit | 2026-11-03 → 2026-11-23 (+20d) | 2026-11-03 → 2026-11-23 (+20d) | 11d → 9.32d | B5.1.31 23 16.01.63, B5.1.31 23 16.01.79, B5.1.31 23 16.01.93, B5.1.31 23 16.01.103, B5.1.31 23 16.01.109, B5.1.31 23 16.01.81, B5.1. 26 32 12 .03, B5.1.31 23 16.01.105, B5.1.31 23 16.01.113, B5.1.31 23 16.01.117, B5.1.31 23 16.01.127, DMM2-Proc-Delv-4578 → B5.1.31 23 16.01.63, B5.1.31 23 16.01.79, B5.1.31 23 16.01.93, B5.1.31 23 16.01.103, B5.1.31 23 16.01.109, B5.1.31 23 16.01.81, B5.1. 26 32 12 .03, B5.1.31 23 16.01.105, B5.1.31 23 16.01.113, B5.1.31 23 16.01.117, B5.1.31 23 16.01.127, DMM2-Proc-Delv-4578_R |
| B5.1.31 23 16.01.131 | 4Cx 6mm2 + 1Cx6mm2 Cu/XLPE/PVC FROM MCC-SPS to the mechanical bar screen | 2026-11-03 → 2026-11-23 (+20d) | 2026-11-03 → 2026-11-23 (+20d) | 11d → 9.32d | B5.1.31 23 16.01.63, B5.1.31 23 16.01.79, B5.1.31 23 16.01.93, B5.1.31 23 16.01.103, B5.1.31 23 16.01.109, B5.1.31 23 16.01.81, B5.1. 26 32 12 .03, B5.1.31 23 16.01.105, B5.1.31 23 16.01.113, B5.1.31 23 16.01.117, B5.1.31 23 16.01.129 FF, DMM2-Proc-Delv-4578 → B5.1.31 23 16.01.63, B5.1.31 23 16.01.79, B5.1.31 23 16.01.93, B5.1.31 23 16.01.103, B5.1.31 23 16.01.109, B5.1.31 23 16.01.81, B5.1. 26 32 12 .03, B5.1.31 23 16.01.105, B5.1.31 23 16.01.113, B5.1.31 23 16.01.117, B5.1.31 23 16.01.129 FF, DMM2-Proc-Delv-4578_R |
| B5.1.31 23 16.01.133 | 3Cx 6mm2 Cu/XLPE/PVC FROM MCC-SPS to the two fuel pumps. | 2026-11-03 → 2026-11-23 (+20d) | 2026-11-03 → 2026-11-23 (+20d) | 11d → 9.32d | B5.1.31 23 16.01.63, B5.1.31 23 16.01.79, B5.1.31 23 16.01.93, B5.1.31 23 16.01.103, B5.1.31 23 16.01.109, B5.1.31 23 16.01.81, B5.1. 26 32 12 .03, B5.1.31 23 16.01.105, B5.1.31 23 16.01.113, B5.1.31 23 16.01.117, B5.1.31 23 16.01.83, B5.1.31 23 16.01.131 FF, DMM2-Proc-Delv-4578 → B5.1.31 23 16.01.63, B5.1.31 23 16.01.79, B5.1.31 23 16.01.93, B5.1.31 23 16.01.103, B5.1.31 23 16.01.109, B5.1.31 23 16.01.81, B5.1. 26 32 12 .03, B5.1.31 23 16.01.105, B5.1.31 23 16.01.113, B5.1.31 23 16.01.117, B5.1.31 23 16.01.83, B5.1.31 23 16.01.131 FF, DMM2-Proc-Delv-4578_R |
| B5.1.31 23 16.01.135 | 4Cx 6mm2 + 1Cx6mm2 Cu/XLPE/PVC FROM MCC-SPS to the mechanical crane | 2026-11-03 → 2026-11-23 (+20d) | 2026-11-03 → 2026-11-23 (+20d) | 11d → 9.32d | B5.1.31 23 16.01.63, B5.1.31 23 16.01.79, B5.1.31 23 16.01.93, B5.1.31 23 16.01.103, B5.1.31 23 16.01.109, B5.1.31 23 16.01.81, B5.1. 26 32 12 .03, B5.1.31 23 16.01.105, B5.1.31 23 16.01.113, B5.1.31 23 16.01.117, B5.1.31 23 16.01.133 FF, DMM2-Proc-Delv-4578 → B5.1.31 23 16.01.63, B5.1.31 23 16.01.79, B5.1.31 23 16.01.93, B5.1.31 23 16.01.103, B5.1.31 23 16.01.109, B5.1.31 23 16.01.81, B5.1. 26 32 12 .03, B5.1.31 23 16.01.105, B5.1.31 23 16.01.113, B5.1.31 23 16.01.117, B5.1.31 23 16.01.133 FF, DMM2-Proc-Delv-4578_R |
| 6 | **External Works & Site Finishing** | 2026-10-04 → 2026-10-24 (+20d) | 2026-10-17 → 2026-11-05 (+19d) |  |  |
| B5.1.31 23 16.01.37 | Precast Concrete curbstone - Type K1 | 2026-10-04 → 2026-10-24 (+20d) | 2026-10-06 → 2026-10-26 (+20d) | 26d → 24.32d |  |
| B5.1.31 23 16.01.53 | Electrical Hand Hole (EHH-1) 600mm x 600mm x 800mm | 2026-10-07 → 2026-10-27 (+20d) | 2026-10-10 → 2026-10-29 (+19d) | 26d → 24.32d |  |
| B5.1.31 23 16.01.69 | Precast Concrete curbstone - Type K4 | 2026-10-11 → 2026-10-31 (+20d) | 2026-10-12 → 2026-11-01 (+20d) | 26d → 24.32d |  |
| B5.1.31 23 16.01.87 | Electrical Hand Hole (EHH-2) 400mm x 400mm x 600mm | 2026-10-13 → 2026-11-02 (+20d) | 2026-10-14 → 2026-11-03 (+20d) | 26d → 24.32d |  |
| B5.1.31 23 16.01.85 | Steel fence (ZATCA HCIS) including Steel gate size (7*2.7)m | 2026-10-15 → 2026-11-04 (+20d) | 2026-10-17 → 2026-11-05 (+19d) | 26d → 24.32d |  |
| Zone 04 | **Zone 04** |  | 2026-12-17 → 2027-01-05 (+19d) |  |  |
| Road 02 | **Road 02** |  | 2026-12-12 → 2026-12-30 (+18d) |  |  |
| Wet Networks | **Wet Networks** |  | 2026-11-17 → 2026-12-09 (+22d) |  |  |
| Sewerage Network | **Sewerage Network** |  | 2026-09-19 → 2026-10-08 (+19d) |  |  |

| ID | Task | Finish | Duration | Complete | Total float | Predecessors | Other |
| --- | --- | --- | --- | --- | --- | --- | --- |
| B5.33 31 00.01.02.25 | Pipe Laying |  | 35.34d → 36.34d |  |  |  |  |
| B5.33 31 00.01.02.49 | Backfilling & Warrning Tape |  |  |  |  | B5.33 31 00.01.02.37, B5.33 31 00.01.2209 SS → B5.33 31 00.01.02.37 |  |
| B5.33 31 00.01.02.29 | Pipe Laying |  | 10.37d → 11.37d |  |  |  |  |
| Manholes | **Manholes ?1200** | 2026-09-19 → 2026-10-08 (+19d) |  |  |  |  |  |
| 2 | **Depth From 0.0m to 1.5m** | 2026-09-19 → 2026-10-08 (+19d) |  |  |  |  |  |
| B6.33 05 39.01.1407 | Test, Internal Finishing, Benching & Cover (45.60% Completed) | 2026-09-19 → 2026-09-15 A (-4d) | 80.18d → 78d | 46% → 100% | 113.82d → none |  | was named Test, Internal Finishing, Benching & Cover; resources Labor [62.37 h]; Foreman [31.18 h]; Plumber Helper [31.18 h]; Plumber [31.18 h]; Mason [31.18 h]; MH depth 0 - 1.5m [0.27] → Labor [28.44 h]; Foreman [14.22 h]; Plumber Helper [14.22 h]; Plumber [14.22 h]; Mason [14.22 h]; MH depth 0 - 1.5m [0.12] |
| B6.33 05 39.01.1417 | Backfilling |  |  |  |  | B6.33 05 39.01.1407 SS → B5.33 31 00.01.02.59 |  |
| 3 | **Depth From 1.5m to 2.5m** | 2026-09-19 → 2026-10-08 (+19d) |  |  |  |  |  |
| B6.33 05 39.01.1447 | Manhole Installation (43.20% Completed) | 2026-09-17 → 2026-09-15 A (-2d) | 96.14d → 95d | 43% → 100% | 114d → none |  | was named Manhole Installation; resources Labor [31.18 h]; Operator [31.18 h]; Surveyor [15.59 h]; Surveyor Helper [15.59 h]; Boom Truck [16 h]; Mobile Crane [16 h]; MH depth 1.51 - 2.5m [1.99] → Labor [13.47 h]; Operator [13.47 h]; Surveyor [6.74 h]; Surveyor Helper [6.74 h]; Boom Truck [6.91 h]; Mobile Crane [6.91 h]; MH depth 1.51 - 2.5m [0.86] |
| B6.33 05 39.01.1457 | Test, Internal Finishing, Benching & Cover (45.60% Completed) | 2026-09-19 → 2026-09-15 A (-4d) | 78.98d → 76.8d | 46% → 100% | 113.82d → none |  | was named Test, Internal Finishing, Benching & Cover; resources Labor [62.37 h]; Foreman [31.18 h]; Plumber Helper [31.18 h]; Plumber [31.18 h]; Mason [31.18 h]; MH depth 1.51 - 2.5m [0.55] → Labor [28.44 h]; Foreman [14.22 h]; Plumber Helper [14.22 h]; Plumber [14.22 h]; Mason [14.22 h]; MH depth 1.51 - 2.5m [0.25] |
| B6.33 05 39.01.1467 | Backfilling |  |  |  |  | B6.33 05 39.01.1457 SS → B5.33 31 00.01.02.59 |  |
| 4 | **Depth From 2.5m to 3.5m** | 2026-09-19 → 2026-10-08 (+19d) |  |  |  |  |  |
| B6.33 05 39.01.1497 | Manhole Installation (43.20% Completed) | 2026-09-17 → 2026-09-15 A (-2d) | 99.14d → 98d | 43% → 100% | 114d → none |  | was named Manhole Installation; resources Labor [31.18 h]; Operator [31.18 h]; Surveyor [15.59 h]; Surveyor Helper [15.59 h]; Boom Truck [16 h]; Mobile Crane [16 h]; MH depth 2.51 - 3.5m [2.46] → Labor [13.47 h]; Operator [13.47 h]; Surveyor [6.74 h]; Surveyor Helper [6.74 h]; Boom Truck [6.91 h]; Mobile Crane [6.91 h]; MH depth 2.51 - 3.5m [1.06] |
| B6.33 05 39.01.1507 | Test, Internal Finishing, Benching & Cover (45.60% Completed) | 2026-09-19 → 2026-09-15 A (-4d) | 79.18d → 77d | 46% → 100% | 113.82d → none |  | was named Test, Internal Finishing, Benching & Cover; resources Labor [62.37 h]; Foreman [31.18 h]; Plumber Helper [31.18 h]; Plumber [31.18 h]; Mason [31.18 h]; MH depth 2.51 - 3.5m [0.55] → Labor [28.44 h]; Foreman [14.22 h]; Plumber Helper [14.22 h]; Plumber [14.22 h]; Mason [14.22 h]; MH depth 2.51 - 3.5m [0.25] |
| B6.33 05 39.01.1517 | Backfilling |  |  |  |  | B6.33 05 39.01.1507 SS → B5.33 31 00.01.02.59 |  |
| 1 | **Depth From 3.5m to 4.5m** | 2026-09-19 → 2026-10-08 (+19d) |  |  |  |  |  |
| B6.33 05 39.01.1547 | Manhole Installation (43.20% Completed) | 2026-09-17 → 2026-09-15 A (-2d) | 96.14d → 95d | 43% → 100% | 114d → none |  | was named Manhole Installation; resources Labor [31.18 h]; Operator [31.18 h]; Surveyor [15.59 h]; Surveyor Helper [15.59 h]; Boom Truck [16 h]; Mobile Crane [16 h]; MH depth 3.51 -4.5m [4.66] → Labor [13.47 h]; Operator [13.47 h]; Surveyor [6.74 h]; Surveyor Helper [6.74 h]; Boom Truck [6.91 h]; Mobile Crane [6.91 h]; MH depth 3.51 -4.5m [2.01] |
| B6.33 05 39.01.1557 | Test, Internal Finishing, Benching & Cover (45.60% Completed) | 2026-09-19 → 2026-09-15 A (-4d) | 79.5d → 77.32d | 46% → 100% | 113.82d → none |  | was named Test, Internal Finishing, Benching & Cover; resources Labor [62.37 h]; Foreman [31.18 h]; Plumber Helper [31.18 h]; Plumber [31.18 h]; Mason [31.18 h]; MH depth 3.51 -4.5m [1.03] → Labor [28.44 h]; Foreman [14.22 h]; Plumber Helper [14.22 h]; Plumber [14.22 h]; Mason [14.22 h]; MH depth 3.51 -4.5m [0.47] |
| B6.33 05 39.01.1567 | Backfilling |  |  |  |  | B6.33 05 39.01.1517, B6.33 05 39.01.1467, B6.33 05 39.01.1417, B6.33 05 39.01.1557 SS → B6.33 05 39.01.1517, B6.33 05 39.01.1467, B6.33 05 39.01.1417 |  |
| 1 | **Depth From 3.5m to 4.5m Backdrop** | 2026-09-19 → 2026-10-08 (+19d) |  |  |  |  |  |
| B6.33 05 39.01.1597 | Manhole Installation (43.20% Completed) | 2026-09-17 → 2026-09-15 A (-2d) | 79.14d → 78d | 43% → 100% | 114.86d → none |  | was named Manhole Installation; resources Labor [31.18 h]; Operator [31.18 h]; Surveyor [15.59 h]; Surveyor Helper [15.59 h]; Boom Truck [16 h]; Mobile Crane [16 h]; MH depth 3.51- 4.5 m with back drop [0.9] → Labor [13.47 h]; Operator [13.47 h]; Surveyor [6.74 h]; Surveyor Helper [6.74 h]; Boom Truck [6.91 h]; Mobile Crane [6.91 h]; MH depth 3.51- 4.5 m with back drop [0.39] |
| B6.33 05 39.01.1607 | Test, Internal Finishing, Benching & Cover (45.60% Completed) | 2026-09-19 → 2026-09-15 A (-4d) | 78.18d → 76d | 46% → 100% | 113.82d → none |  | was named Test, Internal Finishing, Benching & Cover; resources Labor [62.37 h]; Foreman [31.18 h]; Plumber Helper [31.18 h]; Plumber [31.18 h]; Mason [31.18 h]; MH depth 3.51- 4.5 m with back drop [0.2] → Labor [28.44 h]; Foreman [14.22 h]; Plumber Helper [14.22 h]; Plumber [14.22 h]; Mason [14.22 h]; MH depth 3.51- 4.5 m with back drop [0.09] |
| B6.33 05 39.01.1617 | Backfilling |  |  |  |  | B6.33 05 39.01.1567, B6.33 05 39.01.1607 SS → B6.33 05 39.01.1567 |  |
| Stormwater Network | **Stormwater Network** | 2026-09-27 → 2026-10-07 (+10d) |  |  |  |  |  |
| GRP | **GRP** | 2026-09-19 → 2026-10-07 (+18d) |  |  |  |  |  |
| B6.33 42 11.05-1.57 | Backfilling & Warrning Tape |  |  |  |  | B6.33 42 11.05-1.43, B6.33 42 11.361210 SS → B6.33 42 11.05-1.43 |  |
| B6.33 42 11.05-1.59 | Backfilling & Warrning Tape |  |  |  |  | B6.33 42 11.05-1.45, B6.33 42 11.01-1026, B6.33 42 11.361110 SS, B6.33 42 11.01-1.48 SS, B6.33 05 39.01.3767 SS → B6.33 42 11.05-1.45, B6.33 42 11.01-1026 |  |
| ?4002 | **?600** | 2026-09-19 → 2026-10-07 (+18d) |  |  |  |  |  |
| 4 | **Depth From 1.5m to 2.5m** | 2026-09-19 → 2026-10-07 (+18d) |  |  |  |  |  |
| B6.33 42 11.05-1.5 | Excavation (69.55% Completed) | 2026-09-19 → 2026-09-15 A (-4d) | 202.31d → 200.31d | 70% → 100% | 113d → none |  | was named Excavation; resources Labor [31.18 h]; Foreman [15.59 h]; Operator [31.18 h]; Surveyor [15.59 h]; Surveyor Helper [15.59 h]; Excavator (With Bucket) [16 h]; Water Tanker [16 h]; Dump Truck [16 h]; Plate Compactor [16 h]; 1.51m - 2.5m [9.52] → Labor [21.69 h]; Foreman [10.84 h]; Operator [21.69 h]; Surveyor [10.84 h]; Surveyor Helper [10.84 h]; Excavator (With Bucket) [11.13 h]; Water Tanker [11.13 h]; Dump Truck [11.13 h]; Plate Compactor [11.13 h]; 1.51m - 2.5m [6.62] |
| B6.33 42 11.05-1.19 | Sand Bedding (69.55% Completed) | 2026-09-19 → 2026-09-15 A (-4d) | 200.81d → 198.81d | 70% → 100% | 113d → none |  | was named Sand Bedding; resources Labor [31.18 h]; Foreman [15.59 h]; Operator [62.37 h]; Surveyor [15.59 h]; Surveyor Helper [15.59 h]; Loader [16 h]; Water Tanker [16 h]; Dump Truck [16 h]; Plate Compactor [16 h]; 1.51m - 2.5m [9.52] → Labor [21.69 h]; Foreman [10.84 h]; Operator [43.38 h]; Surveyor [10.84 h]; Surveyor Helper [10.84 h]; Loader [11.13 h]; Water Tanker [11.13 h]; Dump Truck [11.13 h]; Plate Compactor [11.13 h]; 1.51m - 2.5m [6.62] |
| B6.33 42 11.05-1.33 | Pipe Laying (69.55% Completed) | 2026-09-19 → 2026-09-15 A (-4d) | 198.06d → 196.06d | 70% → 100% | 113d → none |  | was named Pipe Laying; resources Labor [31.18 h]; Foreman [15.59 h]; Plumber Helper [15.59 h]; Plumber [15.59 h]; Operator [15.59 h]; Surveyor [15.59 h]; Surveyor Helper [15.59 h]; Mobile Crane [16 h]; 1.51m - 2.5m [21.65] → Labor [21.69 h]; Foreman [10.84 h]; Plumber Helper [10.84 h]; Plumber [10.84 h]; Operator [10.84 h]; Surveyor [10.84 h]; Surveyor Helper [10.84 h]; Mobile Crane [11.13 h]; 1.51m - 2.5m [15.06] |
| B6.33 42 11.05-1.47 | Embedment & Test (69.55% Completed) | 2026-09-19 → 2026-09-15 A (-4d) | 194.35d → 193d | 70% → 100% | 113d → none |  | was named Embedment & Test; resources Labor [62.37 h]; Foreman [31.18 h]; Plumber Helper [31.18 h]; Plumber [31.18 h]; Operator [62.37 h]; Surveyor [31.18 h]; Surveyor Helper [31.18 h]; Loader [32 h]; Water Tanker [32 h]; Dump Truck [32 h]; Plate Compactor [32 h]; Roller Compactor [32 h]; 1.51m - 2.5m [2.6] → Labor [43.38 h]; Foreman [21.69 h]; Plumber Helper [21.69 h]; Plumber [21.69 h]; Operator [43.38 h]; Surveyor [21.69 h]; Surveyor Helper [21.69 h]; Loader [22.26 h]; Water Tanker [22.26 h]; Dump Truck [22.26 h]; Plate Compactor [22.26 h]; Roller Compactor [22.26 h]; 1.51m - 2.5m [1.81] |
| B6.33 42 11.05-1.61 | Backfilling & Warrning Tape (69.55% Completed) | 2026-09-19 → 2026-09-15 A (-4d) | 81.23d → 79.54d | 70% → 100% | 113.31d → none |  | was named Backfilling & Warrning Tape; resources Labor [77.96 h]; Foreman [38.98 h]; Operator [155.92 h]; Surveyor [38.98 h]; Surveyor Helper [38.98 h]; Loader [40 h]; Water Tanker [40 h]; Dump Truck [40 h]; Plate Compactor [40 h]; Roller Compactor [40 h]; 1.51m - 2.5m [4.76] → Labor [54.22 h]; Foreman [27.11 h]; Operator [108.45 h]; Surveyor [27.11 h]; Surveyor Helper [27.11 h]; Loader [27.82 h]; Water Tanker [27.82 h]; Dump Truck [27.82 h]; Plate Compactor [27.82 h]; Roller Compactor [27.82 h]; 1.51m - 2.5m [3.31] |
| ?40021 | **?700** | 2026-09-19 → 2026-10-07 (+18d) |  |  |  |  |  |
| 4 | **Depth From 1.5m to 2.5m** | 2026-09-19 → 2026-10-07 (+18d) |  |  |  |  |  |
| B6.33 42 11.05-1.7 | Excavation (69.55% Completed) | 2026-09-19 → 2026-09-15 A (-4d) | 180.81d → 178.81d | 70% → 100% | 113d → none |  | was named Excavation; resources Labor [31.18 h]; Foreman [15.59 h]; Operator [31.18 h]; Surveyor [15.59 h]; Surveyor Helper [15.59 h]; Excavator (With Bucket) [16 h]; Water Tanker [16 h]; Dump Truck [16 h]; Plate Compactor [16 h]; 1.51m - 2.5m [13.17] → Labor [21.69 h]; Foreman [10.84 h]; Operator [21.69 h]; Surveyor [10.84 h]; Surveyor Helper [10.84 h]; Excavator (With Bucket) [11.13 h]; Water Tanker [11.13 h]; Dump Truck [11.13 h]; Plate Compactor [11.13 h]; 1.51m - 2.5m [9.16] |
| B6.33 42 11.05-1.21 | Sand Bedding (69.55% Completed) | 2026-09-19 → 2026-09-15 A (-4d) | 178.06d → 176.06d | 70% → 100% | 113d → none |  | was named Sand Bedding; resources Labor [31.18 h]; Foreman [15.59 h]; Operator [62.37 h]; Surveyor [15.59 h]; Surveyor Helper [15.59 h]; Loader [16 h]; Water Tanker [16 h]; Dump Truck [16 h]; Plate Compactor [16 h]; 1.51m - 2.5m [3.29] → Labor [21.69 h]; Foreman [10.84 h]; Operator [43.38 h]; Surveyor [10.84 h]; Surveyor Helper [10.84 h]; Loader [11.13 h]; Water Tanker [11.13 h]; Dump Truck [11.13 h]; Plate Compactor [11.13 h]; 1.51m - 2.5m [2.29] |
| B6.33 42 11.05-1.35 | Pipe Laying (69.55% Completed) | 2026-09-19 → 2026-09-15 A (-4d) | 176.31d → 174.31d | 70% → 100% | 113d → none |  | was named Pipe Laying; resources Labor [31.18 h]; Foreman [15.59 h]; Plumber Helper [15.59 h]; Plumber [15.59 h]; Operator [15.59 h]; Surveyor [15.59 h]; Surveyor Helper [15.59 h]; Mobile Crane [16 h]; 1.51m - 2.5m [29.63] → Labor [21.69 h]; Foreman [10.84 h]; Plumber Helper [10.84 h]; Plumber [10.84 h]; Operator [10.84 h]; Surveyor [10.84 h]; Surveyor Helper [10.84 h]; Mobile Crane [11.13 h]; 1.51m - 2.5m [20.61] |
| B6.33 42 11.05-1.49 | Embedment & Test (69.55% Completed) | 2026-09-19 → 2026-09-15 A (-4d) | 175.16d → 173.81d | 70% → 100% | 113d → none |  | was named Embedment & Test; resources Labor [62.37 h]; Foreman [31.18 h]; Plumber Helper [31.18 h]; Plumber [31.18 h]; Operator [62.37 h]; Surveyor [31.18 h]; Surveyor Helper [31.18 h]; Loader [32 h]; Water Tanker [32 h]; Dump Truck [32 h]; Plate Compactor [32 h]; Roller Compactor [32 h]; 1.51m - 2.5m [13.17] → Labor [43.38 h]; Foreman [21.69 h]; Plumber Helper [21.69 h]; Plumber [21.69 h]; Operator [43.38 h]; Surveyor [21.69 h]; Surveyor Helper [21.69 h]; Loader [22.26 h]; Water Tanker [22.26 h]; Dump Truck [22.26 h]; Plate Compactor [22.26 h]; Roller Compactor [22.26 h]; 1.51m - 2.5m [9.16] |
| B6.33 42 11.05-1.63 | Backfilling & Warrning Tape (69.55% Completed) | 2026-09-19 → 2026-09-15 A (-4d) | 79.12d → 77.43d | 70% → 100% | 113.31d → none |  | was named Backfilling & Warrning Tape; resources Labor [77.96 h]; Foreman [38.98 h]; Operator [155.92 h]; Surveyor [38.98 h]; Surveyor Helper [38.98 h]; Loader [40 h]; Water Tanker [40 h]; Dump Truck [40 h]; Plate Compactor [40 h]; Roller Compactor [40 h]; 1.51m - 2.5m [6.59] → Labor [54.22 h]; Foreman [27.11 h]; Operator [108.45 h]; Surveyor [27.11 h]; Surveyor Helper [27.11 h]; Loader [27.82 h]; Water Tanker [27.82 h]; Dump Truck [27.82 h]; Plate Compactor [27.82 h]; Roller Compactor [27.82 h]; 1.51m - 2.5m [4.58] |
| B6.33 42 11.05-1.9 | Excavation |  |  |  |  | B6.33 42 11.05-1.7 SS → B1.2.31 23 16.01.15 |  |
| B6.33 42 11.05-1.67 | Backfilling & Warrning Tape |  |  |  |  | B6.33 42 11.05-1.53, B6.33 42 11.05-1.63 SS → B6.33 42 11.05-1.53 |  |
| ?400111 | **?1300** | 2026-09-19 → 2026-10-07 (+18d) |  |  |  |  |  |
| 3 | **Depth From 2.5m to 3.5m** | 2026-09-19 → 2026-10-07 (+18d) |  |  |  |  |  |
| B6.33 42 11.05-1.27 | Sand Bedding (69.55% Completed) | 2026-09-19 → 2026-09-15 A (-4d) | 88d → 86d | 70% → 100% | 113d → none |  | was named Sand Bedding; resources Labor [31.18 h]; Foreman [15.59 h]; Operator [62.37 h]; Surveyor [15.59 h]; Surveyor Helper [15.59 h]; Loader [16 h]; Water Tanker [16 h]; Dump Truck [16 h]; Plate Compactor [16 h]; 2.51m - 3.5m [10.21] → Labor [21.69 h]; Foreman [10.84 h]; Operator [43.38 h]; Surveyor [10.84 h]; Surveyor Helper [10.84 h]; Loader [11.13 h]; Water Tanker [11.13 h]; Dump Truck [11.13 h]; Plate Compactor [11.13 h]; 2.51m - 3.5m [7.1] |
| B6.33 42 11.05-1.41 | Pipe Laying (69.55% Completed) | 2026-09-19 → 2026-09-15 A (-4d) | 78d → 76d | 70% → 100% | 113d → none |  | was named Pipe Laying; resources Labor [31.18 h]; Foreman [15.59 h]; Plumber Helper [15.59 h]; Plumber [15.59 h]; Operator [15.59 h]; Surveyor [15.59 h]; Surveyor Helper [15.59 h]; Mobile Crane [16 h]; 2.51m - 3.5m [90.7] → Labor [21.69 h]; Foreman [10.84 h]; Plumber Helper [10.84 h]; Plumber [10.84 h]; Operator [10.84 h]; Surveyor [10.84 h]; Surveyor Helper [10.84 h]; Mobile Crane [11.13 h]; 2.51m - 3.5m [63.08] |
| B6.33 42 11.05-1.55 | Embedment & Test (69.55% Completed) | 2026-09-19 → 2026-09-15 A (-4d) | 76.35d → 75d | 70% → 100% | 113d → none |  | was named Embedment & Test; resources Labor [62.37 h]; Foreman [31.18 h]; Plumber Helper [31.18 h]; Plumber [31.18 h]; Operator [62.37 h]; Surveyor [31.18 h]; Surveyor Helper [31.18 h]; Loader [32 h]; Water Tanker [32 h]; Dump Truck [32 h]; Plate Compactor [32 h]; Roller Compactor [32 h]; 2.51m - 3.5m [40.25] → Labor [43.38 h]; Foreman [21.69 h]; Plumber Helper [21.69 h]; Plumber [21.69 h]; Operator [43.38 h]; Surveyor [21.69 h]; Surveyor Helper [21.69 h]; Loader [22.26 h]; Water Tanker [22.26 h]; Dump Truck [22.26 h]; Plate Compactor [22.26 h]; Roller Compactor [22.26 h]; 2.51m - 3.5m [27.99] |
| B6.33 42 11.05-1.69 | Backfilling & Warrning Tape (69.55% Completed) | 2026-09-19 → 2026-09-15 A (-4d) | 74.69d → 73d | 70% → 100% | 113d → none |  | was named Backfilling & Warrning Tape; resources Labor [77.96 h]; Foreman [38.98 h]; Operator [155.92 h]; Surveyor [38.98 h]; Surveyor Helper [38.98 h]; Loader [40 h]; Water Tanker [40 h]; Dump Truck [40 h]; Plate Compactor [40 h]; Roller Compactor [40 h]; 2.51m - 3.5m [19.82] → Labor [54.22 h]; Foreman [27.11 h]; Operator [108.45 h]; Surveyor [27.11 h]; Surveyor Helper [27.11 h]; Loader [27.82 h]; Water Tanker [27.82 h]; Dump Truck [27.82 h]; Plate Compactor [27.82 h]; Roller Compactor [27.82 h]; 2.51m - 3.5m [13.79] |
| Strom Manholes | **Manholes** | 2026-09-19 → 2026-09-28 (+9d) |  |  |  |  |  |
| 1 | **?1200** | 2026-09-19 → 2026-09-28 (+9d) |  |  |  |  |  |
| 4 | **Depth From 1.5m to 2.5m** | 2026-09-19 → 2026-09-28 (+9d) |  |  |  |  |  |
| B6.33 05 39.01.3777 | Excavation & Compaction |  |  |  |  | B6.33 42 11.05-1.13, B6.33 42 11.05-1.67, B6.33 42 11.05-1.57, B6.33 42 11.05-1.61 SS, B6.33 42 11.05-1.69 SS → B6.33 42 11.05-1.13, B6.33 42 11.05-1.67, B6.33 42 11.05-1.57 |  |
| B6.33 05 39.01.3807 | Test, Internal Finishing, Benching & Cover (97.00% Completed) | 2026-09-19 → 2026-09-15 A (-4d) | 75d → 73d | 97% → 100% | 113d → none |  | was named Test, Internal Finishing, Benching & Cover; resources Labor [62.37 h]; Foreman [31.18 h]; Plumber Helper [31.18 h]; Plumber [31.18 h]; Mason [31.18 h]; MH depth 1.50 - 2.5m [1.07] → Labor [60.5 h]; Foreman [30.25 h]; Plumber Helper [30.25 h]; Plumber [30.25 h]; Mason [30.25 h]; MH depth 1.50 - 2.5m [1.04] |
| B6.33 05 39.01.3817 | Backfilling |  |  |  |  | B6.33 05 39.01.3807 SS, B6.33 05 39.01.3167 SS, B6.33 42 11.05-1.69 SS → B6.33 42 11.05-1.13 |  |
| 3 | **?2000** | 2026-09-19 → 2026-09-27 (+8d) |  |  |  |  |  |
| 4 | **Depth From 1.5m to 2.5m** | 2026-09-19 → 2026-09-27 (+8d) |  |  |  |  |  |
| B6.33 05 39.01.3917 | Backfilling (97.00% Completed) | 2026-09-19 → 2026-09-15 A (-4d) | 87.62d → 85.62d | 97% → 100% | 92d → none |  | was named Backfilling; resources Labor [77.96 h]; Foreman [38.98 h]; Operator [77.96 h]; Surveyor [38.98 h]; Surveyor Helper [38.98 h]; Loader [40 h]; Water Tanker [40 h]; Dump Truck [40 h]; Plate Compactor [40 h]; Storm MH depth 1.50 - 2.5m [0.19] → Labor [75.62 h]; Foreman [37.81 h]; Operator [75.62 h]; Surveyor [37.81 h]; Surveyor Helper [37.81 h]; Loader [38.8 h]; Water Tanker [38.8 h]; Dump Truck [38.8 h]; Plate Compactor [38.8 h]; Storm MH depth 1.50 - 2.5m [0.18] |
| B6.33 05 39.01.3897 | Manhole Installation (97.00% Completed) | 2026-09-19 → 2026-09-15 A (-4d) | 80d → 78d | 97% → 100% | 113d → none |  | was named Manhole Installation; resources Labor [31.18 h]; Operator [31.18 h]; Surveyor [15.59 h]; Surveyor Helper [15.59 h]; Boom Truck [16 h]; Mobile Crane [16 h]; Storm MH depth 1.50 - 2.5m [0.44] → Labor [30.25 h]; Operator [30.25 h]; Surveyor [15.12 h]; Surveyor Helper [15.12 h]; Boom Truck [15.52 h]; Mobile Crane [15.52 h]; Storm MH depth 1.50 - 2.5m [0.42] |
| B6.33 05 39.01.3907 | Test, Internal Finishing, Benching & Cover (97.00% Completed) | 2026-09-19 → 2026-09-15 A (-4d) | 78d → 76d | 97% → 100% | 113d → none |  | was named Test, Internal Finishing, Benching & Cover; resources Labor [62.37 h]; Foreman [31.18 h]; Plumber Helper [31.18 h]; Plumber [31.18 h]; Mason [31.18 h]; Storm MH depth 1.50 - 2.5m [0.1] → Labor [60.5 h]; Foreman [30.25 h]; Plumber Helper [30.25 h]; Plumber [30.25 h]; Mason [30.25 h]; Storm MH depth 1.50 - 2.5m [0.1] |
| 3 | **Depth From 2.5m to 3.5m** | 2026-09-19 → 2026-09-22 (+3d) |  |  |  |  |  |
| B6.33 05 39.01.3957 | Test, Internal Finishing, Benching & Cover (97.00% Completed) | 2026-09-19 → 2026-09-15 A (-4d) | 84d → 82d | 97% → 100% | 113d → none |  | was named Test, Internal Finishing, Benching & Cover; resources Labor [62.37 h]; Foreman [31.18 h]; Plumber Helper [31.18 h]; Plumber [31.18 h]; Mason [31.18 h]; Storm MH depth 2.51 - 3.5m [0.42] → Labor [60.5 h]; Foreman [30.25 h]; Plumber Helper [30.25 h]; Plumber [30.25 h]; Mason [30.25 h]; Storm MH depth 2.51 - 3.5m [0.4] |
| B6.33 05 39.01.3967 | Backfilling |  |  |  |  | B6.33 05 39.01.3957 SS, B6.33 42 11.361510 SS, B6.33 42 11.13.105 SS → B6.33 42 11.05-1.67 |  |
| Catch Basins | **Catch Basins** | 2026-09-27 → 2026-10-01 (+4d) |  |  |  |  |  |
| Sing | **Single** | 2026-09-27 → 2026-09-30 (+3d) |  |  |  |  |  |
| B6.33 05 40.01.560 | Backfilling, DI Frame & Grate Cover Fixing (79.00% Completed) | 2026-09-27 → 2026-09-15 A (-12d) | 86.67d → 85.62d | 79% → 100% | 57.91d → none | B6.33 42 11.35-126, B6.33 05 39.01.3817, B6.33 05 40.01.550 SS, B6.33 05 40.01.160 SS, B6.33 05 40.01.720 FF → B6.33 42 11.35-126, B6.33 05 39.01.3817, B6.33 05 40.01.550 SS, B6.33 05 40.01.160 SS | was named Backfilling, DI Frame & Grate Cover Fixing; resources Labor [77.96 h]; Foreman [38.98 h]; Operator [77.96 h]; Surveyor [38.98 h]; Surveyor Helper [38.98 h]; Loader [40 h]; Water Tanker [40 h]; Dump Truck [40 h]; Plate Compactor [40 h]; Single Catch basin [5.96] → Labor [61.59 h]; Foreman [30.79 h]; Operator [61.59 h]; Surveyor [30.79 h]; Surveyor Helper [30.79 h]; Loader [31.6 h]; Water Tanker [31.6 h]; Dump Truck [31.6 h]; Plate Compactor [31.6 h]; Single Catch basin [4.71] |
| B6.33 05 40.01.530 | Excavation, Compaction & Vapour Barrier (79.00% Completed) | 2026-09-19 → 2026-09-15 A (-4d) | 80d → 78d | 79% → 100% | 113d → none |  | was named Excavation, Compaction & Vapour Barrier; resources Labor [31.18 h]; Foreman [15.59 h]; Operator [31.18 h]; Surveyor [15.59 h]; Surveyor Helper [15.59 h]; Excavator (With Bucket) [16 h]; Water Tanker [16 h]; Dump Truck [16 h]; Roller Compactor [16 h]; Single Catch basin [2.99] → Labor [24.64 h]; Foreman [12.32 h]; Operator [24.64 h]; Surveyor [12.32 h]; Surveyor Helper [12.32 h]; Excavator (With Bucket) [12.64 h]; Water Tanker [12.64 h]; Dump Truck [12.64 h]; Roller Compactor [12.64 h]; Single Catch basin [2.36] |
| B6.33 05 40.01.540 | Blinding Conc. (79.00% Completed) | 2026-09-19 → 2026-09-15 A (-4d) | 78d → 76d | 79% → 100% | 113d → none |  | was named Blinding Conc.; resources Labor [31.18 h]; Foreman [15.59 h]; Laboratory Officer [15.59 h]; Carpenter [15.59 h]; Steelfixer [15.59 h]; Mason [15.59 h]; Single Catch basin [1.99] → Labor [24.64 h]; Foreman [12.32 h]; Laboratory Officer [12.32 h]; Carpenter [12.32 h]; Steelfixer [12.32 h]; Mason [12.32 h]; Single Catch basin [1.57] |
| B6.33 05 40.01.550 | Catch Basin Installation (79.00% Completed) | 2026-09-19 → 2026-09-15 A (-4d) | 76d → 74d | 79% → 100% | 113d → none |  | was named Catch Basin Installation; resources Labor [46.78 h]; Foreman [23.39 h]; Carpenter [23.39 h]; Steelfixer [23.39 h]; Mason [23.39 h]; Operator [46.78 h]; Surveyor [23.39 h]; Surveyor Helper [23.39 h]; Boom Truck [24 h]; Single Catch basin [8.93] → Labor [36.95 h]; Foreman [18.48 h]; Carpenter [18.48 h]; Steelfixer [18.48 h]; Mason [18.48 h]; Operator [36.95 h]; Surveyor [18.48 h]; Surveyor Helper [18.48 h]; Boom Truck [18.96 h]; Single Catch basin [7.06] |
| Dou | **Double** | 2026-09-27 → 2026-10-01 (+4d) |  |  |  |  |  |

| ID | Task | Start | Finish | Duration | Complete | Total float | Predecessors | Other |
| --- | --- | --- | --- | --- | --- | --- | --- | --- |
| B6.33 05 40.01.970 | Excavation, Compaction & Vapour Barrier (62.50% Completed) |  | 2026-09-19 → 2026-09-15 A (-4d) | 22.5d → 20.5d | 62% → 100% | 113d → none |  | was named Excavation, Compaction & Vapour Barrier; resources Labor [31.18 h]; Foreman [15.59 h]; Operator [31.18 h]; Surveyor [15.59 h]; Surveyor Helper [15.59 h]; Excavator (With Bucket) [16 h]; Water Tanker [16 h]; Dump Truck [16 h]; Roller Compactor [16 h]; Double Catch basin [0.6] → Labor [19.49 h]; Foreman [9.75 h]; Operator [19.49 h]; Surveyor [9.75 h]; Surveyor Helper [9.75 h]; Excavator (With Bucket) [10 h]; Water Tanker [10 h]; Dump Truck [10 h]; Roller Compactor [10 h]; Double Catch basin [0.37] |
| B6.33 05 40.01.980 | Blinding Conc. (62.50% Completed) |  | 2026-09-19 → 2026-09-15 A (-4d) | 20.5d → 18.5d | 62% → 100% | 113d → none |  | was named Blinding Conc.; resources Labor [31.18 h]; Foreman [15.59 h]; Laboratory Officer [15.59 h]; Carpenter [15.59 h]; Steelfixer [15.59 h]; Mason [15.59 h]; Double Catch basin [0.39] → Labor [19.49 h]; Foreman [9.75 h]; Laboratory Officer [9.75 h]; Carpenter [9.75 h]; Steelfixer [9.75 h]; Mason [9.75 h]; Double Catch basin [0.25] |
| B6.33 05 40.01.990 | Catch Basin Installation (62.50% Completed) |  | 2026-09-19 → 2026-09-15 A (-4d) | 18.62d → 17.5d | 62% → 100% | 68.88d → none |  | was named Catch Basin Installation; resources Labor [46.78 h]; Foreman [23.39 h]; Carpenter [23.39 h]; Steelfixer [23.39 h]; Mason [23.39 h]; Operator [46.78 h]; Surveyor [23.39 h]; Surveyor Helper [23.39 h]; Boom Truck [24 h]; Double Catch basin [1.82] → Labor [29.24 h]; Foreman [14.62 h]; Carpenter [14.62 h]; Steelfixer [14.62 h]; Mason [14.62 h]; Operator [29.24 h]; Surveyor [14.62 h]; Surveyor Helper [14.62 h]; Boom Truck [15 h]; Double Catch basin [1.14] |
| B6.33 05 40.01.1000 | Backfilling, DI Frame & Grate Cover Fixing | 2026-09-19 → 2026-09-24 A (+5d) | 2026-09-27 → 2026-10-01 A (+4d) |  | 0% → 100% | 68.88d → none | B6.33 05 40.01.990, B6.33 42 11.36-199 → B6.33 05 40.01.990_R, B6.33 42 11.36-199, B6.33 42 11.05-1.63_R, B6.33 42 11.01-1.48_R |  |
| UPVC | **UPVC** |  | 2026-09-19 → 2026-09-22 (+3d) |  |  |  |  |  |
| UPVC300 | **?300 From 0.0 to 1.5m** |  | 2026-09-19 → 2026-09-22 (+3d) |  |  |  |  |  |
| B6.33 42 11.35-126 | Fittings & Pipe Installation |  |  |  |  |  | B6.33 42 11.35-114 SS → B6.33 05 39.01.3777 |  |
| B6.33 42 11.35-114 | Catch Basin Opening Prep. (81.65% Completed) |  | 2026-09-19 → 2026-09-15 A (-4d) | 87.62d → 85.62d | 82% → 100% | 113d → none |  | was named Catch Basin Opening Prep.; resources Labor [31.18 h]; Foreman [15.59 h]; Plumber Helper [15.59 h]; Plumber [15.59 h]; less than 1.5 [46.62] → Labor [25.46 h]; Foreman [12.73 h]; Plumber Helper [12.73 h]; Plumber [12.73 h]; less than 1.5 [38.06] |
| UPVC3001 | **?400 From 0.0 to 1.5m** |  | 2026-09-19 → 2026-09-22 (+3d) |  |  |  |  |  |
| B6.33 42 11.36-199 | Fittings & Pipe Installation |  |  |  |  |  | B6.33 42 11.36-187 SS → B6.33 42 11.35-126 SS, B6.33 42 11.35-126 FF |  |
| B6.33 42 11.36-187 | Catch Basin Opening Prep. (81.65% Completed) |  | 2026-09-19 → 2026-09-15 A (-4d) | 87.62d → 85.62d | 82% → 100% | 113d → none |  | was named Catch Basin Opening Prep.; resources Labor [31.18 h]; Foreman [15.59 h]; Plumber Helper [15.59 h]; Plumber [15.59 h]; less than 1.5 [46.62] → Labor [25.46 h]; Foreman [12.73 h]; Plumber Helper [12.73 h]; Plumber [12.73 h]; less than 1.5 [38.06] |
| Potable Water | **Potable Water Network** |  | 2026-11-12 → 2026-12-02 (+20d) |  |  |  |  |  |
| HDPE | **HDPE Pipes** |  | 2026-10-17 → 2026-10-10 (-7d) |  |  |  |  |  |
| ?110mm | **?110mm** |  | 2026-10-17 → 2026-10-10 (-7d) |  |  |  |  |  |
| Depth: 0.0m - 1.5m | **Depth: 0.0m - 1.5m** |  | 2026-10-17 → 2026-09-30 (-17d) |  |  |  |  |  |
| B3.33 14 13-10103 | Embedment & Test (71.25% Completed) |  | 2026-09-19 → 2026-09-15 A (-4d) | 98.49d → 97.34d | 71% → 100% | 113.85d → none |  | was named Embedment & Test; resources Labor [62.37 h]; Foreman [31.18 h]; Plumber Helper [31.18 h]; Plumber [31.18 h]; Operator [62.37 h]; Surveyor [31.18 h]; Surveyor Helper [31.18 h]; Loader [32 h]; Water Tanker [32 h]; Dump Truck [32 h]; Plate Compactor [32 h]; Roller Compactor [32 h]; Depth: 0.0m - 1.5m [155.75] → Labor [44.44 h]; Foreman [22.22 h]; Plumber Helper [22.22 h]; Plumber [22.22 h]; Operator [44.44 h]; Surveyor [22.22 h]; Surveyor Helper [22.22 h]; Loader [22.8 h]; Water Tanker [22.8 h]; Dump Truck [22.8 h]; Plate Compactor [22.8 h]; Roller Compactor [22.8 h]; Depth: 0.0m - 1.5m [110.97] |
| B3.33 14 13-10107 | Backfilling & Warrning Tape (71.25% Completed) |  | 2026-10-17 → 2026-09-15 A (-32d) | 87.07d → 85.63d | 71% → 100% | 90d → none | B3.33 14 13-10103 SS, B3.33 14 13.02.18 FF → B3.33 14 13-10103 SS | was named Backfilling & Warrning Tape; resources Labor [77.96 h]; Foreman [38.98 h]; Operator [155.92 h]; Surveyor [38.98 h]; Surveyor Helper [38.98 h]; Loader [40 h]; Water Tanker [40 h]; Dump Truck [40 h]; Plate Compactor [40 h]; Roller Compactor [40 h]; Depth: 0.0m - 1.5m [77.87] → Labor [55.55 h]; Foreman [27.77 h]; Operator [111.1 h]; Surveyor [27.77 h]; Surveyor Helper [27.77 h]; Loader [28.5 h]; Water Tanker [28.5 h]; Dump Truck [28.5 h]; Plate Compactor [28.5 h]; Roller Compactor [28.5 h]; Depth: 0.0m - 1.5m [55.48] |
| Depth: 1.51m - 2.5m | **Depth: 1.51m - 2.5m** |  | 2026-09-19 → 2026-10-10 (+21d) |  |  |  |  |  |
| B3.33 14 13-1093 | Excavation (84.11% Completed) |  | 2026-09-19 → 2026-09-15 A (-4d) | 178d → 176d | 84% → 100% | 20d → none |  | was named Excavation; resources Labor [31.18 h]; Foreman [15.59 h]; Operator [31.18 h]; Surveyor [15.59 h]; Surveyor Helper [15.59 h]; Excavator (With Bucket) [16 h]; Water Tanker [16 h]; Dump Truck [16 h]; Plate Compactor [16 h]; Depth: 1.51m - 2.5m → Labor [26.23 h]; Foreman [13.12 h]; Operator [26.23 h]; Surveyor [13.12 h]; Surveyor Helper [13.12 h]; Excavator (With Bucket) [13.46 h]; Water Tanker [13.46 h]; Dump Truck [13.46 h]; Plate Compactor [13.46 h]; Depth: 1.51m - 2.5m |
| B3.33 14 13-1097 | Sand Bedding (84.11% Completed) |  | 2026-09-19 → 2026-09-15 A (-4d) | 177d → 175d | 84% → 100% | 96d → none |  | was named Sand Bedding; resources Labor [31.18 h]; Foreman [15.59 h]; Operator [62.37 h]; Surveyor [15.59 h]; Surveyor Helper [15.59 h]; Loader [16 h]; Water Tanker [16 h]; Dump Truck [16 h]; Plate Compactor [16 h]; Depth: 1.51m - 2.5m → Labor [26.23 h]; Foreman [13.12 h]; Operator [52.46 h]; Surveyor [13.12 h]; Surveyor Helper [13.12 h]; Loader [13.46 h]; Water Tanker [13.46 h]; Dump Truck [13.46 h]; Plate Compactor [13.46 h]; Depth: 1.51m - 2.5m |
| B3.33 14 13-10101 | Pipe Laying (84.11% Completed) |  | 2026-09-19 → 2026-09-15 A (-4d) | 140.53d → 138.53d | 84% → 100% | 96d → none |  | was named Pipe Laying; resources Labor [31.18 h]; Foreman [15.59 h]; Plumber Helper [15.59 h]; Plumber [15.59 h]; Operator [15.59 h]; Surveyor [15.59 h]; Surveyor Helper [15.59 h]; Mobile Crane [16 h]; Depth: 1.51m - 2.5m → Labor [26.23 h]; Foreman [13.12 h]; Plumber Helper [13.12 h]; Plumber [13.12 h]; Operator [13.12 h]; Surveyor [13.12 h]; Surveyor Helper [13.12 h]; Mobile Crane [13.46 h]; Depth: 1.51m - 2.5m |
| B3.33 14 13-10105 | Embedment & Test (84.11% Completed) |  | 2026-09-19 → 2026-09-15 A (-4d) | 79.68d → 77.68d | 84% → 100% | 96d → none |  | was named Embedment & Test; resources Labor [62.37 h]; Foreman [31.18 h]; Plumber Helper [31.18 h]; Plumber [31.18 h]; Operator [62.37 h]; Surveyor [31.18 h]; Surveyor Helper [31.18 h]; Loader [32 h]; Water Tanker [32 h]; Dump Truck [32 h]; Plate Compactor [32 h]; Roller Compactor [32 h]; Depth: 1.51m - 2.5m → Labor [52.46 h]; Foreman [26.23 h]; Plumber Helper [26.23 h]; Plumber [26.23 h]; Operator [52.46 h]; Surveyor [26.23 h]; Surveyor Helper [26.23 h]; Loader [26.92 h]; Water Tanker [26.92 h]; Dump Truck [26.92 h]; Plate Compactor [26.92 h]; Roller Compactor [26.92 h]; Depth: 1.51m - 2.5m |
| B3.33 14 13-10109 | Backfilling & Warrning Tape (84.11% Completed) |  | 2026-09-19 → 2026-09-15 A (-4d) | 75.68d → 73.68d | 84% → 100% | 96d → none |  | was named Backfilling & Warrning Tape; resources Labor [77.96 h]; Foreman [38.98 h]; Operator [155.92 h]; Surveyor [38.98 h]; Surveyor Helper [38.98 h]; Loader [40 h]; Water Tanker [40 h]; Dump Truck [40 h]; Plate Compactor [40 h]; Roller Compactor [40 h]; Depth: 1.51m - 2.5m → Labor [65.58 h]; Foreman [32.79 h]; Operator [131.15 h]; Surveyor [32.79 h]; Surveyor Helper [32.79 h]; Loader [33.64 h]; Water Tanker [33.64 h]; Dump Truck [33.64 h]; Plate Compactor [33.64 h]; Roller Compactor [33.64 h]; Depth: 1.51m - 2.5m |
| Crossing | **Plots and Buildings Crossing** | 2026-09-20 → 2026-10-11 (+21d) | 2026-10-12 → 2026-11-01 (+20d) |  |  |  |  |  |
| B3.33 14 13.02.25 | Earthwork | 2026-09-20 → 2026-10-11 (+21d) | 2026-09-28 → 2026-10-18 (+20d) |  |  | 20d → 62.32d | B3.33 14 13-1093 → B3.33 14 13-1093_R |  |
| B3.33 14 13.02.26 | Sand Bedding | 2026-09-29 → 2026-10-19 (+20d) | 2026-10-04 → 2026-10-24 (+20d) |  |  | 87d → 84.32d |  |  |
| B3.33 14 13.02.27 | Tee, Pipe (Crossing) Installation & Backfilling | 2026-10-05 → 2026-10-25 (+20d) | 2026-10-12 → 2026-11-01 (+20d) |  |  | 87d → 84.32d |  |  |
| Valves & Chambers | **Valves & Chambers** | 2026-09-20 → 2026-10-11 (+21d) | 2026-11-12 → 2026-12-02 (+20d) |  |  |  |  |  |
| GV | **Gate Valves** | 2026-09-20 → 2026-10-11 (+21d) | 2026-09-27 → 2026-10-17 (+20d) |  |  |  |  |  |
| 1 | **Gate valves dia (110) mm** | 2026-09-20 → 2026-10-11 (+21d) | 2026-09-27 → 2026-10-17 (+20d) |  |  |  |  |  |
| B3.33 14 19.01.114 | Burried Isolation Valve Installation | 2026-09-20 → 2026-10-11 (+21d) | 2026-09-22 → 2026-10-13 (+21d) |  |  | 104d → 101.32d | B3.33 14 13-10101, DMM2-Proc-Delv-5828 → B3.33 14 13-10101_R, DMM2-Proc-Delv-5828 |  |
| B3.33 14 19.01.115 | Spindle & Surface Box | 2026-09-24 → 2026-10-14 (+20d) | 2026-09-27 → 2026-10-17 (+20d) |  |  | 104d → 101.32d |  |  |
| 2 | **Air Valves** | 2026-10-13 → 2026-10-27 (+14d) | 2026-11-12 → 2026-12-02 (+20d) |  |  |  |  |  |
| 4 | **Air valves on less than 315 mm. (In Chamber)** | 2026-10-13 → 2026-10-27 (+14d) | 2026-11-12 → 2026-12-02 (+20d) |  |  |  |  |  |
| B3.33 05 63.02.32 | Land Adjustment & Compaction | 2026-10-13 → 2026-10-27 (+14d) | 2026-10-17 → 2026-10-31 (+14d) |  |  | 72.5d → 75.07d | B1.2.32 11 26.01.15, B6.33 42 11.36-199, B6.33 05 40.01.1000, B6.33 05 40.01.560, B6.33 05 39.01.3967, B6.33 05 39.01.3917 → B1.2.32 11 26.01.15, B6.33 42 11.36-199, B6.33 05 40.01.1000, B6.33 05 40.01.560_R, B6.33 05 39.01.3967, B6.33 05 39.01.3917_R |  |
| B3.33 05 63.02.30 | Foundations | 2026-10-17 → 2026-10-31 (+14d) | 2026-10-21 → 2026-11-04 (+14d) |  |  | 72.5d → 75.07d |  |  |
| B3.33 05 63.02.33 | Chambers Walls Conc Cast In Situ | 2026-10-21 → 2026-11-04 (+14d) | 2026-10-26 → 2026-11-09 (+14d) |  |  | 72.5d → 75.07d |  |  |
| B3.33 05 63.02.31 | Chamber Curing, Finishing & Steel Cover | 2026-10-26 → 2026-11-09 (+14d) | 2026-11-01 → 2026-11-15 (+14d) |  |  | 72.5d → 75.07d |  |  |
| B3.33 05 63.02.34 | Valve & Fitting Installation | 2026-11-08 → 2026-11-28 (+20d) | 2026-11-12 → 2026-12-02 (+20d) |  |  | 67d → 64.32d |  |  |
| Fire Fighting | **Fire Fighting Network** |  | 2026-10-20 → 2026-11-09 (+20d) |  |  |  |  |  |
| B3.1. 33 14 13-09 | Excavation |  |  | 29d → 30d |  |  |  |  |
| Valves & Chambers | **Valves & Chambers** |  | 2026-10-20 → 2026-11-09 (+20d) |  |  |  |  |  |
| GV | **Gate Valves** |  | 2026-09-20 → 2026-10-11 (+21d) |  |  |  |  |  |
| 1 | **Gate valves dia (250) mm** |  | 2026-09-20 → 2026-10-11 (+21d) |  |  |  |  |  |
| B3.33 14 19.01.131 | Spindle & Surface Box | 2026-09-16 → 2026-10-07 (+21d) | 2026-09-20 → 2026-10-11 (+21d) |  |  | 72d → 69.32d |  |  |
| 2 | **Air Valves** | 2026-09-20 → 2026-10-10 (+20d) | 2026-10-20 → 2026-11-09 (+20d) |  |  |  |  |  |
| 4 | **Air valves on less than 315 mm. (In Chamber)** | 2026-09-20 → 2026-10-10 (+20d) | 2026-10-20 → 2026-11-09 (+20d) |  |  |  |  |  |
| B3.33 05 63.02.72 | Land Adjustment & Compaction | 2026-09-20 → 2026-10-10 (+20d) | 2026-09-24 → 2026-10-14 (+20d) |  |  | 87d → 85.31d | B3.1. 33 14 13-017, DMM2-Proc-Delv-5908 → B3.1. 33 14 13-017, DMM2-Proc-Delv-5908_R |  |
| B3.33 05 63.02.70 | Foundations | 2026-09-26 → 2026-10-14 (+18d) | 2026-09-30 → 2026-10-20 (+20d) |  |  | 87d → 85.31d |  |  |
| B3.33 05 63.02.73 | Chambers Walls Conc Cast In Situ | 2026-10-01 → 2026-10-20 (+19d) | 2026-10-06 → 2026-10-26 (+20d) |  |  | 87d → 85.31d |  |  |
| B3.33 05 63.02.71 | Chamber Curing, Finishing & Steel Cover | 2026-10-07 → 2026-10-26 (+19d) | 2026-10-13 → 2026-11-02 (+20d) |  |  | 87d → 85.31d |  |  |
| B3.33 05 63.02.74 | Valve & Fitting Installation | 2026-10-14 → 2026-11-02 (+19d) | 2026-10-20 → 2026-11-09 (+20d) |  |  | 87d → 85.31d |  |  |
| Washout Valves | **Washout Valves** |  | 2026-10-20 → 2026-11-09 (+20d) |  |  |  |  |  |
| 4 | **Washout valves on 110-400 mm. (In Chamber)** |  | 2026-10-20 → 2026-11-09 (+20d) |  |  |  |  |  |
| B3.33 05 63.01.57 | Land Adjustment & Compaction |  |  |  |  |  | B3.1. 33 14 13-023, B3.1. 33 14 13-021, DMM2-Proc-Delv-5908 SS → B3.1. 33 14 13-023, B3.1. 33 14 13-021 |  |
| B3.33 05 63.01.55 | Foundations (50.00% Completed) |  | 2026-09-20 → 2026-09-15 A (-5d) | 69.5d → 68d | 50% → 100% | 112.5d → none |  | was named Foundations; resources Labor [46.78 h]; Foreman [23.39 h]; Laboratory Officer [23.39 h]; Carpenter [23.39 h]; Steelfixer [23.39 h]; Mason [23.39 h]; FF Wash out valve Dia. 100 mm on pipes with Dia. 110-400 mm [0.19]; FF Wash out valve chamber; on 110-400 mm Dia. pipeline [0.26] → Labor [23.39 h]; Foreman [11.69 h]; Laboratory Officer [11.69 h]; Carpenter [11.69 h]; Steelfixer [11.69 h]; Mason [11.69 h]; FF Wash out valve Dia. 100 mm on pipes with Dia. 110-400 mm [0.1]; FF Wash out valve chamber; on 110-400 mm Dia. pipeline [0.13] |
| B3.33 05 63.01.58 | Chambers Walls Conc Cast In Situ (50.00% Completed) |  | 2026-09-20 → 2026-09-15 A (-5d) | 66.5d → 65d | 50% → 100% | 112.5d → none |  | was named Chambers Walls Conc Cast In Situ; resources Labor [46.78 h]; Foreman [23.39 h]; Laboratory Officer [23.39 h]; Carpenter [23.39 h]; Steelfixer [23.39 h]; Mason [23.39 h]; FF Wash out valve Dia. 100 mm on pipes with Dia. 110-400 mm [0.25]; FF Wash out valve chamber; on 110-400 mm Dia. pipeline [0.26] → Labor [23.39 h]; Foreman [11.69 h]; Laboratory Officer [11.69 h]; Carpenter [11.69 h]; Steelfixer [11.69 h]; Mason [11.69 h]; FF Wash out valve Dia. 100 mm on pipes with Dia. 110-400 mm [0.13]; FF Wash out valve chamber; on 110-400 mm Dia. pipeline [0.13] |
| B3.33 05 63.01.56 | Chamber Curing, Finishing & Steel Cover (50.00% Completed) |  | 2026-09-20 → 2026-09-15 A (-5d) | 64d → 62d | 50% → 100% | 112d → none |  | was named Chamber Curing, Finishing & Steel Cover; resources Labor [62.37 h]; Mason [31.18 h]; FF Wash out valve Dia. 100 mm on pipes with Dia. 110-400 mm [0.25]; FF Wash out valve chamber; on 110-400 mm Dia. pipeline [0.19] → Labor [31.18 h]; Mason [15.59 h]; FF Wash out valve Dia. 100 mm on pipes with Dia. 110-400 mm [0.13]; FF Wash out valve chamber; on 110-400 mm Dia. pipeline [0.1] |
| B3.33 05 63.01.59 | Valve & Fitting Installation (50.00% Completed) |  | 2026-10-20 → 2026-09-15 A (-35d) | 61d → 59d | 50% → 100% | 87d → none | B3.33 05 63.01.56 SS, B3.33 05 63.02.74 FF → B3.33 05 63.01.56 SS | was named Valve & Fitting Installation; resources Labor [62.37 h]; Plumber Helper [31.18 h]; Plumber [31.18 h]; Operator [62.37 h]; Boom Truck [32 h]; FF Wash out valve Dia. 100 mm on pipes with Dia. 110-400 mm [0.39]; FF Wash out valve chamber; on 110-400 mm Dia. pipeline [0.39] → Labor [31.18 h]; Plumber Helper [15.59 h]; Plumber [15.59 h]; Operator [31.18 h]; Boom Truck [16 h]; FF Wash out valve Dia. 100 mm on pipes with Dia. 110-400 mm [0.19]; FF Wash out valve chamber; on 110-400 mm Dia. pipeline [0.19] |
| 3 | **Fire Hydrant** |  | 2026-09-24 → 2026-10-14 (+20d) |  |  |  |  |  |
| B3.33 14 19.01.fh41 | Riser Pipe & Flanged Fittings Installation (1.00% Completed) |  | 2026-09-20 → 2026-09-15 A (-5d) | 79.82d → 77.84d | 1% → 100% | 112.02d → none |  | was named Riser Pipe & Flanged Fittings Installation; resources Labor [31.18 h]; Plumber Helper [15.59 h]; Welder [15.59 h]; Plumber [15.59 h]; Surveyor [15.59 h]; Surveyor Helper [15.59 h]; Welding Machine [16 h]; 3-outlet fire hydrant (2 x 2.5 inch and 1 x 4.5 inch) in the form of a separate dry vacuum cylinder [1.49] → Labor [0.31 h]; Plumber Helper [0.16 h]; Welder [0.16 h]; Plumber [0.16 h]; Surveyor [0.16 h]; Surveyor Helper [0.16 h]; Welding Machine [0.16 h]; 3-outlet fire hydrant (2 x 2.5 inch and 1 x 4.5 inch) in the form of a separate dry vacuum cylinder [0.01] |
| B3.33 14 19.01.fh40 | Firehydrant Fixing/Installation (1.00% Completed) |  | 2026-09-21 → 2026-09-15 A (-6d) | 78.81d → 75.84d | 1% → 100% | 111.03d → none |  | was named Firehydrant Fixing/Installation; resources Labor [46.78 h]; Foreman [23.39 h]; Plumber Helper [23.39 h]; Plumber [23.39 h]; Operator [46.78 h]; Surveyor [23.39 h]; Surveyor Helper [23.39 h]; JCB [24 h]; 3-outlet fire hydrant (2 x 2.5 inch and 1 x 4.5 inch) in the form of a separate dry vacuum cylinder [4.47] → Labor [0.47 h]; Foreman [0.23 h]; Plumber Helper [0.23 h]; Plumber [0.23 h]; Operator [0.47 h]; Surveyor [0.23 h]; Surveyor Helper [0.23 h]; JCB [0.24 h]; 3-outlet fire hydrant (2 x 2.5 inch and 1 x 4.5 inch) in the form of a separate dry vacuum cylinder [0.04] |
| B3.33 14 19.01.fh42 | Backfilling & Compaction (1.00% Completed) |  | 2026-09-24 → 2026-09-15 A (-9d) | 77.79d → 72.84d | 1% → 100% | 109.05d → none |  | was named Backfilling & Compaction; resources Labor [77.96 h]; Foreman [38.98 h]; Operator [77.96 h]; Surveyor [38.98 h]; Surveyor Helper [38.98 h]; Loader [40 h]; Water Tanker [40 h]; Dump Truck [40 h]; Plate Compactor [40 h]; 3-outlet fire hydrant (2 x 2.5 inch and 1 x 4.5 inch) in the form of a separate dry vacuum cylinder [1.49] → Labor [0.78 h]; Foreman [0.39 h]; Operator [0.78 h]; Surveyor [0.39 h]; Surveyor Helper [0.39 h]; Loader [0.4 h]; Water Tanker [0.4 h]; Dump Truck [0.4 h]; Plate Compactor [0.4 h]; 3-outlet fire hydrant (2 x 2.5 inch and 1 x 4.5 inch) in the form of a separate dry vacuum cylinder [0.01] |
| TSE Network | **TSE Network** |  | 2026-11-17 → 2026-12-09 (+22d) |  |  |  |  |  |
| HDPE | **HDPE Pipes** |  | 2026-10-05 → 2026-10-25 (+20d) |  |  |  |  |  |
| ?110mm | **?110mm** |  | 2026-10-05 → 2026-10-25 (+20d) |  |  |  |  |  |
| Depth: 0.0m - 1.5m | **Depth: 0.0m - 1.5m** |  | 2026-10-05 → 2026-10-25 (+20d) |  |  |  |  |  |
| B4.33 14 13.01-018 | Excavation |  |  |  |  |  | B3.33 14 19.01.fh42 SS, B4.33 14 13.01-389 SS → B1.1.31 23 16.12 |  |
| B4.33 14 13.01-0120 | Embedment & Test (20.03% Completed) |  | 2026-09-21 → 2026-09-15 A (-6d) | 118.8d → 115.6d | 20% → 100% | 49.8d → none |  | was named Embedment & Test; resources Labor [62.37 h]; Foreman [31.18 h]; Plumber Helper [31.18 h]; Plumber [31.18 h]; Operator [62.37 h]; Surveyor [31.18 h]; Surveyor Helper [31.18 h]; Loader [32 h]; Water Tanker [32 h]; Dump Truck [32 h]; Plate Compactor [32 h]; Roller Compactor [32 h]; Dia. 110mm 0.0m - 1.5m [83.33] → Labor [12.49 h]; Foreman [6.25 h]; Plumber Helper [6.25 h]; Plumber [6.25 h]; Operator [12.49 h]; Surveyor [6.25 h]; Surveyor Helper [6.25 h]; Loader [6.41 h]; Water Tanker [6.41 h]; Dump Truck [6.41 h]; Plate Compactor [6.41 h]; Roller Compactor [6.41 h]; Dia. 110mm 0.0m - 1.5m [16.69] |
| B4.33 14 13.01-0124 | Backfilling & Warrning Tape (20.03% Completed) |  | 2026-10-05 → 2026-09-15 A (-20d) | 117d → 113d | 20% → 100% | 38d → none | B4.33 14 13.01-0120 FF, B4.32 84 13.063 FF → B4.33 14 13.01-0120 FF | was named Backfilling & Warrning Tape; resources Labor [77.96 h]; Foreman [38.98 h]; Operator [155.92 h]; Surveyor [38.98 h]; Surveyor Helper [38.98 h]; Loader [40 h]; Water Tanker [40 h]; Dump Truck [40 h]; Plate Compactor [40 h]; Roller Compactor [40 h]; Dia. 110mm 0.0m - 1.5m [41.67] → Labor [15.61 h]; Foreman [7.81 h]; Operator [31.23 h]; Surveyor [7.81 h]; Surveyor Helper [7.81 h]; Loader [8.01 h]; Water Tanker [8.01 h]; Dump Truck [8.01 h]; Plate Compactor [8.01 h]; Roller Compactor [8.01 h]; Dia. 110mm 0.0m - 1.5m [8.34] |

| ID | Task | Start | Finish | Total float | Predecessors |
| --- | --- | --- | --- | --- | --- |
| Valves & Chambers | **Valves & Chambers** |  | 2026-11-17 → 2026-12-09 (+22d) |  |  |
| GV | **Gate Valves** |  | 2026-09-19 → 2026-10-10 (+21d) |  |  |
| 1 | **Gate valves dia (250) mm** |  | 2026-09-19 → 2026-10-10 (+21d) |  |  |
| B3.33 14 19.01.140 | Burried Isolation Valve Installation |  |  |  | B4.33 14 13.01-0118, DMM2-Proc-Delv-5878 SS → B4.33 14 13.01-0118 |
| B3.33 14 19.01.141 | Spindle & Surface Box | 2026-09-16 → 2026-10-07 (+21d) | 2026-09-19 → 2026-10-10 (+21d) | 34d → 32.32d |  |
| 2 | **Air Valves** | 2026-10-06 → 2026-10-26 (+20d) | 2026-11-17 → 2026-12-09 (+22d) |  |  |
| 4 | **Air valves on less than 315 mm. (In Chamber)** | 2026-10-06 → 2026-10-26 (+20d) | 2026-11-17 → 2026-12-09 (+22d) |  |  |
| B3.33 05 63.02.97 | Land Adjustment & Compaction | 2026-10-06 → 2026-10-26 (+20d) | 2026-10-08 → 2026-10-28 (+20d) | 38d → 35.32d | B4.33 14 13.01-0124 → B4.33 14 13.01-0124_R |
| B3.33 05 63.02.95 | Foundations | 2026-10-10 → 2026-10-29 (+19d) | 2026-10-13 → 2026-11-02 (+20d) | 43d → 40.32d |  |
| B3.33 05 63.02.98 | Chambers Walls Conc Cast In Situ | 2026-10-14 → 2026-11-03 (+20d) | 2026-10-18 → 2026-11-07 (+20d) | 43d → 40.32d |  |
| B3.33 05 63.02.96 | Chamber Curing, Finishing & Steel Cover | 2026-10-19 → 2026-11-08 (+20d) | 2026-10-24 → 2026-11-12 (+19d) | 43d → 40.32d |  |
| B3.33 05 63.02.99 | Valve & Fitting Installation | 2026-11-15 → 2026-12-07 (+22d) | 2026-11-17 → 2026-12-09 (+22d) | 25d → 20.32d |  |
| Washout Valves | **Washout Valves** | 2026-10-10 → 2026-10-29 (+19d) | 2026-11-02 → 2026-11-22 (+20d) |  |  |
| 4 | **Washout valves on 110-400 mm. (In Chamber)** | 2026-10-10 → 2026-10-29 (+19d) | 2026-11-02 → 2026-11-22 (+20d) |  |  |
| B3.33 05 63.01.72 | Land Adjustment & Compaction | 2026-10-10 → 2026-10-29 (+19d) | 2026-10-12 → 2026-11-01 (+20d) | 38d → 35.32d |  |
| B3.33 05 63.01.70 | Foundations | 2026-10-13 → 2026-11-02 (+20d) | 2026-10-17 → 2026-11-05 (+19d) | 38d → 35.32d |  |
| B3.33 05 63.01.73 | Chambers Walls Conc Cast In Situ | 2026-10-18 → 2026-11-07 (+20d) | 2026-10-21 → 2026-11-10 (+20d) | 38d → 35.32d |  |
| B3.33 05 63.01.71 | Chamber Curing, Finishing & Steel Cover | 2026-10-22 → 2026-11-11 (+20d) | 2026-10-27 → 2026-11-16 (+20d) | 38d → 35.32d |  |
| B3.33 05 63.01.74 | Valve & Fitting Installation | 2026-10-28 → 2026-11-17 (+20d) | 2026-11-02 → 2026-11-22 (+20d) | 38d → 35.32d |  |
| Solenoid valves | **Solenoid valves** | 2026-11-01 → 2026-11-23 (+22d) | 2026-11-14 → 2026-12-06 (+22d) |  |  |
| Solenoid valve ?1.0 | **1 Solenoid valve ?1.0 inch with box** | 2026-11-01 → 2026-11-23 (+22d) | 2026-11-09 → 2026-12-01 (+22d) |  |  |
| B4.32 84 13.13 | Cable Laying Two-Wire Decoder (12 AWG) | 2026-11-01 → 2026-11-23 (+22d) | 2026-11-03 → 2026-11-25 (+22d) | 25d → 20.32d |  |
| B4.32 84 13.14 | Solenoid Valve Box Installation | 2026-11-03 → 2026-11-25 (+22d) | 2026-11-05 → 2026-11-28 (+23d) | 29d → 24.32d |  |
| B4.32 84 13.49 | Pull Box Installation | 2026-11-05 → 2026-11-28 (+23d) | 2026-11-08 → 2026-11-30 (+22d) | 27d → 22.32d |  |
| B4.32 84 13.15 | Bubblers Installation | 2026-11-07 → 2026-11-29 (+22d) | 2026-11-09 → 2026-12-01 (+22d) | 29d → 24.32d |  |
| Solenoid valve ?1.5 | **1 Solenoid valve ?1.5 inch with box** | 2026-11-04 → 2026-11-26 (+22d) | 2026-11-14 → 2026-12-06 (+22d) |  |  |
| B4.32 84 13.16 | Cable Laying Two-Wire Decoder (12 AWG) | 2026-11-04 → 2026-11-26 (+22d) | 2026-11-07 → 2026-11-29 (+22d) | 25d → 20.32d |  |
| B4.32 84 13.50 | Pull Box Installation | 2026-11-05 → 2026-11-28 (+23d) | 2026-11-08 → 2026-11-30 (+22d) | 27d → 22.32d |  |
| B4.32 84 13.17 | Solenoid Valve Box Installation | 2026-11-08 → 2026-11-30 (+22d) | 2026-11-10 → 2026-12-02 (+22d) | 25d → 20.32d |  |
| B4.32 84 13.18 | Bubblers Installation | 2026-11-11 → 2026-12-03 (+22d) | 2026-11-14 → 2026-12-06 (+22d) | 25d → 20.32d |  |
| Solenoid valve ?2.0 | **1 Solenoid valve ?2.0 inch with box** | 2026-11-08 → 2026-11-30 (+22d) | 2026-11-14 → 2026-12-06 (+22d) |  |  |
| B4.32 84 13.03 | Solenoid Valve Box Installation | 2026-11-08 → 2026-11-30 (+22d) | 2026-11-10 → 2026-12-02 (+22d) | 25d → 20.32d |  |
| B4.32 84 13.10 | Cable Laying Two-Wire Decoder (12 AWG) | 2026-11-08 → 2026-11-30 (+22d) | 2026-11-10 → 2026-12-02 (+22d) | 25d → 20.32d |  |
| B4.32 84 13.51 | Pull Box Installation | 2026-11-09 → 2026-12-01 (+22d) | 2026-11-11 → 2026-12-03 (+22d) | 27d → 22.32d |  |
| B4.32 84 13.12 | Bubblers Installation | 2026-11-11 → 2026-12-03 (+22d) | 2026-11-14 → 2026-12-06 (+22d) | 25d → 20.32d |  |
| Dry Networks | **Dry Networks** |  | 2026-11-09 → 2026-11-21 (+12d) |  |  |
| MV Network | **Medium Voltage Network** | 2026-09-16 → 2026-10-07 (+21d) | 2026-10-19 → 2026-11-08 (+20d) |  |  |
| Duct Banks | **Duct Banks** | 2026-09-29 → 2026-10-19 (+20d) | 2026-10-19 → 2026-11-08 (+20d) |  |  |
| 4 Way | **2 Way** | 2026-09-29 → 2026-10-19 (+20d) | 2026-10-19 → 2026-11-08 (+20d) |  |  |
| B2.31 23 00.642 | Excavation | 2026-09-29 → 2026-10-19 (+20d) | 2026-10-03 → 2026-10-22 (+19d) | 20d → 62.32d |  |
| B2.33 71 00.292 | Shuttering, Steel Fixing Incl. UPVC Pipe & Conc. Cast | 2026-10-04 → 2026-10-24 (+20d) | 2026-10-11 → 2026-10-31 (+20d) | 20d → 62.32d |  |
| B2.33 71 00.293 | Backfilling & Warrning Tape | 2026-10-12 → 2026-11-01 (+20d) | 2026-10-19 → 2026-11-08 (+20d) | 20d → 62.32d |  |
| Cables | **Cables** | 2026-09-16 → 2026-10-07 (+21d) | 2026-09-28 → 2026-10-18 (+20d) |  |  |
| 3C,500mm2 | **3C,500mm2** | 2026-09-16 → 2026-10-07 (+21d) | 2026-09-28 → 2026-10-18 (+20d) |  |  |
| B2.33 71 49.23.89 | Cable 13.8 kV Unarmored | 2026-09-16 → 2026-10-07 (+21d) | 2026-09-20 → 2026-10-11 (+21d) | 78d → 75.32d |  |
| B2.33 71 49.23.90 | Straight joints cables | 2026-09-21 → 2026-10-12 (+21d) | 2026-09-24 → 2026-10-14 (+20d) | 78d → 75.32d |  |
| B2.33 71 49.23.91 | Cable Termination | 2026-09-26 → 2026-10-15 (+19d) | 2026-09-28 → 2026-10-18 (+20d) | 78d → 75.32d |  |
| LV Network | **Low Voltage Network** | 2026-10-18 → 2026-11-07 (+20d) | 2026-11-01 → 2026-11-21 (+20d) |  |  |
| Duct Banks | **Duct Banks** | 2026-10-20 → 2026-11-09 (+20d) | 2026-11-01 → 2026-11-21 (+20d) |  |  |
| 2 Way | **2 Way** | 2026-10-20 → 2026-11-09 (+20d) | 2026-10-28 → 2026-11-17 (+20d) |  |  |
| B2.33 71 00 02 145 | Excavation | 2026-10-20 → 2026-11-09 (+20d) | 2026-10-21 → 2026-11-10 (+20d) | 65d → 62.32d |  |
| B2.33 71 00 02 146 | Shuttering, Steel Fixing Incl. UPVC Pipe & Conc. Cast | 2026-10-22 → 2026-11-11 (+20d) | 2026-10-25 → 2026-11-14 (+20d) | 65d → 62.32d |  |
| B2.33 71 00 02 147 | Backfilling & Warrning Tape | 2026-10-26 → 2026-11-15 (+20d) | 2026-10-28 → 2026-11-17 (+20d) | 65d → 62.32d |  |
| 4 Way | **4 Way** | 2026-10-22 → 2026-11-11 (+20d) | 2026-10-31 → 2026-11-19 (+19d) |  |  |
| B2.33 71 00 02 151 | Excavation | 2026-10-22 → 2026-11-11 (+20d) | 2026-10-25 → 2026-11-14 (+20d) | 68d → 65.32d |  |
| B2.33 71 00 02 152 | Shuttering, Steel Fixing Incl. UPVC Pipe & Conc. Cast | 2026-10-26 → 2026-11-15 (+20d) | 2026-10-27 → 2026-11-16 (+20d) | 69d → 66.32d |  |
| B2.33 71 00 02 153 | Backfilling & Warrning Tape | 2026-10-28 → 2026-11-17 (+20d) | 2026-10-31 → 2026-11-19 (+19d) | 69d → 66.32d |  |
| 6 Way | **6 Way** | 2026-10-22 → 2026-11-11 (+20d) | 2026-11-01 → 2026-11-21 (+20d) |  |  |
| B2.33 71 00 02 148 | Excavation | 2026-10-22 → 2026-11-11 (+20d) | 2026-10-25 → 2026-11-14 (+20d) | 68d → 65.32d |  |
| B2.33 71 00 02 149 | Shuttering, Steel Fixing Incl. UPVC Pipe & Conc. Cast | 2026-10-26 → 2026-11-15 (+20d) | 2026-10-28 → 2026-11-17 (+20d) | 68d → 65.32d |  |
| B2.33 71 00 02 150 | Backfilling & Warrning Tape | 2026-10-29 → 2026-11-18 (+20d) | 2026-11-01 → 2026-11-21 (+20d) | 68d → 65.32d |  |
| Cables | **Cables** | 2026-10-18 → 2026-11-07 (+20d) | 2026-10-19 → 2026-11-08 (+20d) |  |  |
| 4C,10+1C,10mm2 | **4C,10+1C,10mm2** | 2026-10-18 → 2026-11-07 (+20d) | 2026-10-19 → 2026-11-08 (+20d) |  |  |
| B2.33 71 00 01 19 | Cable Pulling | 2026-10-18 → 2026-11-07 (+20d) | 2026-10-19 → 2026-11-08 (+20d) | 3d → 4.32d |  |
| 4C,50+1C,25mm2 | **4C,50+1C,25mm2** | 2026-10-18 → 2026-11-07 (+20d) | 2026-10-19 → 2026-11-08 (+20d) |  |  |
| B2.33 71 00 01 20 | Cable Pulling | 2026-10-18 → 2026-11-07 (+20d) | 2026-10-19 → 2026-11-08 (+20d) | 3d → 4.32d |  |
| Street Lighting | **Street Lighting** |  | 2026-11-09 → 2026-11-14 (+5d) |  |  |
| Duct Banks | **Duct Banks** | 2026-09-20 → 2026-10-15 (+25d) | 2026-09-30 → 2026-10-21 (+21d) |  |  |
| 4 Way | **4 Way** | 2026-09-20 → 2026-10-15 (+25d) | 2026-09-30 → 2026-10-21 (+21d) |  |  |
| B2.33 71 00 02 79 | Excavation | 2026-09-20 → 2026-10-15 (+25d) | 2026-09-22 → 2026-10-17 (+25d) | 31.88d → 30.32d |  |

| ID | Task | Start | Finish | Duration | Complete | Total float | Predecessors | Other |
| --- | --- | --- | --- | --- | --- | --- | --- | --- |
| B2.33 71 00 02 80 | Shuttering, Steel Fixing Incl. UPVC Pipe & Conc. Cast | 2026-09-22 → 2026-10-18 (+26d) | 2026-09-27 → 2026-10-19 (+22d) | 3d → 2d |  | 31.88d → 32.32d |  |  |
| B2.33 71 00 02 81 | Backfilling & Warrning Tape | 2026-09-27 → 2026-10-20 (+23d) | 2026-09-30 → 2026-10-21 (+21d) | 3d → 2d |  | 31.88d → 32.32d |  |  |
| Drawpits | **Drawpits** | 2026-09-22 → 2026-10-18 (+26d) | 2026-09-30 → 2026-10-24 (+24d) |  |  |  |  |  |
| B2.33 71 00 02 82 | Excavation | 2026-09-22 → 2026-10-18 (+26d) | 2026-09-26 → 2026-10-19 (+23d) |  |  | 31.88d → 30.32d |  |  |
| B2.33 71 00 02 83 | Drawpits Installation | 2026-09-26 → 2026-10-20 (+24d) | 2026-09-28 → 2026-10-21 (+23d) |  |  | 31.88d → 30.32d |  |  |
| B2.33 71 00 02 84 | Backfilling & Warrning Tape | 2026-09-28 → 2026-10-22 (+24d) | 2026-09-30 → 2026-10-24 (+24d) |  |  | 31.88d → 30.32d |  |  |
| Cables | **Cables** | 2026-11-01 → 2026-11-04 (+3d) | 2026-11-07 → 2026-11-11 (+4d) |  |  |  |  |  |
| 4C,10+1C,10mm2 | **4C,10+1C,10mm2** | 2026-11-01 → 2026-11-04 (+3d) | 2026-11-07 → 2026-11-11 (+4d) |  |  |  |  |  |
| B2.33 71 19 202 | Land Adjustment | 2026-11-01 → 2026-11-04 (+3d) | 2026-11-02 → 2026-11-07 (+5d) |  |  | 28d → 39.68d |  |  |
| B2.33 71 49.23.182 | Cable Pulling | 2026-11-03 → 2026-11-07 (+4d) | 2026-11-04 → 2026-11-09 (+5d) |  |  | 28d → 39.68d |  |  |
| B2.33 71 19 212 | Backfilling | 2026-11-05 → 2026-11-09 (+4d) | 2026-11-07 → 2026-11-11 (+4d) |  |  | 30d → 41.68d | B2.33 71 49.23.182, B2.33 71 16.035, B2.33 71 19 49, B2.33 71 19 52 → B2.33 71 49.23.182, B2.33 71 16.035, B2.33 71 19 49, B2.33 71 19 52, B2.33 71 16.102 |  |
| SL Poles | **SL Poles** |  | 2026-10-21 → 2026-10-15 (-6d) |  |  |  |  |  |
| Pole (10 M Sngl Arm) | **Pole (10 M Single Arm)** |  | 2026-10-21 → 2026-10-15 (-6d) |  |  |  |  |  |
| B2.33 71 16.91 | Excavation (50.00% Completed) |  | 2026-10-19 → 2026-09-15 A (-34d) | 2d → 4.68d | 50% → 100% | 20d → none | B2.33 71 00.293 FF → B3.1. 33 14 13-027 | was named Excavation; resources Labor [46.78 h]; Foreman [23.39 h]; Operator [46.78 h]; Surveyor [23.39 h]; Surveyor Helper [23.39 h]; Excavator (With Bucket) [24 h]; Dump Truck [24 h]; Lighting poles with 1 arm, height of ( 10) meters [6.6] → Labor [23.39 h]; Foreman [11.69 h]; Operator [23.39 h]; Surveyor [11.69 h]; Surveyor Helper [11.69 h]; Excavator (With Bucket) [12 h]; Dump Truck [12 h]; Lighting poles with 1 arm, height of ( 10) meters [3.3] |
| B2.33 71 16.92 | PC & RC Foundation (50.00% Completed) |  | 2026-10-19 → 2026-09-15 A (-34d) | 1d → 3.68d | 50% → 100% | 20d → none |  | was named PC & RC Foundation; resources Labor [77.96 h]; Foreman [38.98 h]; Laboratory Officer [38.98 h]; Carpenter [38.98 h]; Steelfixer [38.98 h]; Mason [38.98 h]; Lighting poles with 1 arm, height of ( 10) meters [6.6] → Labor [38.98 h]; Foreman [19.49 h]; Laboratory Officer [19.49 h]; Carpenter [19.49 h]; Steelfixer [19.49 h]; Mason [19.49 h]; Lighting poles with 1 arm, height of ( 10) meters [3.3] |
| B2.33 71 16.93 | Lighting Poles Installation Incl power box, Cables (50.00% Completed) |  | 2026-10-19 → 2026-09-15 A (-34d) | 1d → 2.68d | 50% → 100% | 20d → none |  | was named Lighting Poles Installation Incl power box, Cables; resources Labor [93.55 h]; Operator [93.55 h]; Mobile Crane [48 h]; Electrician [46.78 h]; Lighting poles with 1 arm, height of ( 10) meters [13.2] → Labor [46.78 h]; Operator [46.78 h]; Mobile Crane [24 h]; Electrician [23.39 h]; Lighting poles with 1 arm, height of ( 10) meters [6.6] |
| B2.26.56.19.16 | Lighting Luminares Inst (50.00% Completed) |  | 2026-10-19 → 2026-09-15 A (-34d) | 1d → 1.68d | 50% → 100% | 40d → none |  | was named Lighting Luminares Inst; resources Labor [62.37 h]; Operator [62.37 h]; Manlift [32 h]; Street Lighting( LED), Lamp Lumen: 14560, Luminare Lumen:12700 , complete with control gear and lamp, (80) WATT. [36] → Labor [31.18 h]; Operator [31.18 h]; Manlift [16 h]; Street Lighting( LED), Lamp Lumen: 14560, Luminare Lumen:12700 , complete with control gear and lamp, (80) WATT. [18] |
| B2.33 71 16.94 | Backfilling, Grouting & Chamfering | 2026-10-20 → 2026-10-14 (-6d) | 2026-10-21 → 2026-10-15 (-6d) |  |  | 40d → 58.32d | B2.26.56.19.16 → B2.26.56.19.16_R |  |
| SL Pillars | **SL Pillars** | 2026-11-05 → 2026-11-09 (+4d) | 2026-11-09 → 2026-11-14 (+5d) |  |  |  |  |  |
| B2.33 71 26 034 | Pillars Installation (Internal Wiring) | 2026-11-05 → 2026-11-09 (+4d) | 2026-11-07 → 2026-11-11 (+4d) |  |  | 28d → 39.68d | B2.33 71 16.93, B2.33 71 49.23.182 → B2.33 71 16.93_R, B2.33 71 49.23.182 |  |
| B2.33 71 26 045 | KWH meter mounting a frame installation | 2026-11-08 → 2026-11-11 (+3d) | 2026-11-09 → 2026-11-14 (+5d) |  |  | 28d → 39.68d |  |  |
| Earthing | **Earthing** | 2026-10-20 → 2026-10-15 (-5d) | 2026-10-26 → 2026-10-24 (-2d) |  |  |  |  |  |
| B2.33 71 19 44 | Land Adjustment | 2026-10-20 → 2026-10-15 (-5d) | 2026-10-21 → 2026-10-17 (-4d) |  |  | 20d → 41.32d | B2.33 71 16.93, B2.33 71 00 02 88 → B2.33 71 16.93_R, B2.33 71 00 02 88 |  |
| B2.33 71 19 45 | Earth Rods & Conduits | 2026-10-22 → 2026-10-18 (-4d) | 2026-10-24 → 2026-10-19 (-5d) |  |  | 36d → 41.32d |  |  |
| B2.33 71 19 46 | Backfilling | 2026-10-25 → 2026-10-21 (-4d) | 2026-10-26 → 2026-10-24 (-2d) |  |  | 36d → 39.68d | B2.33 71 19 45, B2.33 71 19 19 → B2.33 71 19 45, B2.33 71 19 19, B2.33 71 00 02 90 |  |
| Telecommunication | **Telecommunication Network** |  | 2026-09-30 → 2026-10-26 (+26d) |  |  |  |  |  |
| Ducts | **Ducts** |  | 2026-09-30 → 2026-10-25 (+25d) |  |  |  |  |  |
| (6*50mm) | **Size (6*50mm) HDPE ducts** |  | 2026-09-30 → 2026-10-25 (+25d) |  |  |  |  |  |
| B2.1.33 81 26.162 | Excavation (45.00% Completed) |  | 2026-09-30 → 2026-09-15 A (-15d) | 4.1d → 3d | 45% → 100% | 31.88d → none | B2.33 71 00 02 84 FF, B2.33 71 00 02 81 FF → B2.33 71 16.91 | was named Excavation; resources Labor [31.18 h]; Foreman [15.59 h]; Operator [31.18 h]; Surveyor [15.59 h]; Surveyor Helper [15.59 h]; Excavator (With Bucket) [16 h]; Water Tanker [16 h]; Dump Truck [16 h]; Plate Compactor [16 h]; (6*50mm) HDPE ducts [125.82] → Labor [14.03 h]; Foreman [7.02 h]; Operator [14.03 h]; Surveyor [7.02 h]; Surveyor Helper [7.02 h]; Excavator (With Bucket) [7.2 h]; Water Tanker [7.2 h]; Dump Truck [7.2 h]; Plate Compactor [7.2 h]; (6*50mm) HDPE ducts [56.62] |
| B2.1.33 81 26.164 | Backfilling & Warrning Tape (45.00% Completed) |  | 2026-09-30 → 2026-09-15 A (-15d) | 1.1d → 2d | 45% → 100% | 58.88d → none |  | was named Backfilling & Warrning Tape; resources Labor [93.55 h]; Foreman [46.78 h]; Operator [187.11 h]; Surveyor [46.78 h]; Surveyor Helper [46.78 h]; Loader [48 h]; Water Tanker [48 h]; Dump Truck [48 h]; Plate Compactor [48 h]; Roller Compactor [48 h]; (6*50mm) HDPE ducts [125.82] → Labor [42.1 h]; Foreman [21.05 h]; Operator [84.2 h]; Surveyor [21.05 h]; Surveyor Helper [21.05 h]; Loader [21.6 h]; Water Tanker [21.6 h]; Dump Truck [21.6 h]; Plate Compactor [21.6 h]; Roller Compactor [21.6 h]; (6*50mm) HDPE ducts [56.62] |
| B2.1.33 81 26.163 | HDPE Pipe, Shuttering, Steel Fixing & Conc. Cast (45.00% Completed) |  | 2026-09-30 → 2026-09-15 A (-15d) | 2.1d → 1d | 45% → 100% | 58.88d → none |  | was named HDPE Pipe, Shuttering, Steel Fixing & Conc. Cast; resources Labor [109.15 h]; Laboratory Officer [54.57 h]; Carpenter [54.57 h]; Steelfixer [54.57 h]; Mason [54.57 h]; Surveyor [54.57 h]; Surveyor Helper [54.57 h]; (6*50mm) HDPE ducts [377.45] → Labor [49.12 h]; Laboratory Officer [24.56 h]; Carpenter [24.56 h]; Steelfixer [24.56 h]; Mason [24.56 h]; Surveyor [24.56 h]; Surveyor Helper [24.56 h]; (6*50mm) HDPE ducts [169.85] |
| (6*50mm+2*32mm) | **Size (6*50mm+2*32mm) HDPE ducts** |  | 2026-09-30 → 2026-10-25 (+25d) |  |  |  |  |  |
| B2.1.33 81 26.166 | HDPE Pipe, Shuttering, Steel Fixing & Conc. Cast (45.00% Completed) |  | 2026-09-30 → 2026-09-15 A (-15d) | 1.1d → 3d | 45% → 100% | 58.88d → none |  | was named HDPE Pipe, Shuttering, Steel Fixing & Conc. Cast; resources Labor [46.78 h]; Laboratory Officer [23.39 h]; Carpenter [23.39 h]; Steelfixer [23.39 h]; Mason [23.39 h]; Surveyor [23.39 h]; Surveyor Helper [23.39 h]; (6*50mm+2*32mm) HDPE ducts [145.49] → Labor [21.05 h]; Laboratory Officer [10.52 h]; Carpenter [10.52 h]; Steelfixer [10.52 h]; Mason [10.52 h]; Surveyor [10.52 h]; Surveyor Helper [10.52 h]; (6*50mm+2*32mm) HDPE ducts [65.47] |
| B2.1.33 81 26.167 | Backfilling & Warrning Tape (45.00% Completed) |  | 2026-09-30 → 2026-09-15 A (-15d) | 1.1d → 2d | 45% → 100% | 58.88d → none |  | was named Backfilling & Warrning Tape; resources Labor [46.78 h]; Foreman [23.39 h]; Operator [93.55 h]; Surveyor [23.39 h]; Surveyor Helper [23.39 h]; Loader [24 h]; Water Tanker [24 h]; Dump Truck [24 h]; Plate Compactor [24 h]; Roller Compactor [24 h]; (6*50mm+2*32mm) HDPE ducts [48.51] → Labor [21.05 h]; Foreman [10.52 h]; Operator [42.1 h]; Surveyor [10.52 h]; Surveyor Helper [10.52 h]; Loader [10.8 h]; Water Tanker [10.8 h]; Dump Truck [10.8 h]; Plate Compactor [10.8 h]; Roller Compactor [10.8 h]; (6*50mm+2*32mm) HDPE ducts [21.83] |
| B2.1.33 81 26.165 | Excavation (45.00% Completed) |  | 2026-09-30 → 2026-09-15 A (-15d) | 2.1d → 1d | 45% → 100% | 58.88d → none |  | was named Excavation; resources Labor [31.18 h]; Foreman [15.59 h]; Operator [31.18 h]; Surveyor [15.59 h]; Surveyor Helper [15.59 h]; Excavator (With Bucket) [16 h]; Water Tanker [16 h]; Dump Truck [16 h]; Plate Compactor [16 h]; (6*50mm+2*32mm) HDPE ducts [48.51] → Labor [14.03 h]; Foreman [7.02 h]; Operator [14.03 h]; Surveyor [7.02 h]; Surveyor Helper [7.02 h]; Excavator (With Bucket) [7.2 h]; Water Tanker [7.2 h]; Dump Truck [7.2 h]; Plate Compactor [7.2 h]; (6*50mm+2*32mm) HDPE ducts [21.83] |
| (6*50mm+4*32mm) | **Size (6*50mm+4*32mm) HDPE ducts** |  | 2026-09-17 → 2026-10-25 (+38d) |  |  |  |  |  |
| B2.1.33 81 26.168 | Excavation (45.00% Completed) |  | 2026-09-17 → 2026-09-15 A (-2d) | 1.1d → 5d | 45% → 100% | 60.9d → none |  | was named Excavation; resources Labor [31.18 h]; Foreman [15.59 h]; Operator [31.18 h]; Surveyor [15.59 h]; Surveyor Helper [15.59 h]; Excavator (With Bucket) [16 h]; Water Tanker [16 h]; Dump Truck [16 h]; Plate Compactor [16 h]; (6*50mm+4*32mm) HDPE ducts [15] → Labor [14.03 h]; Foreman [7.02 h]; Operator [14.03 h]; Surveyor [7.02 h]; Surveyor Helper [7.02 h]; Excavator (With Bucket) [7.2 h]; Water Tanker [7.2 h]; Dump Truck [7.2 h]; Plate Compactor [7.2 h]; (6*50mm+4*32mm) HDPE ducts [6.75] |
| B2.1.33 81 26.169 | HDPE Pipe, Shuttering, Steel Fixing & Conc. Cast (45.00% Completed) |  | 2026-09-17 → 2026-09-15 A (-2d) | 1.1d → 4d | 45% → 100% | 68.9d → none |  | was named HDPE Pipe, Shuttering, Steel Fixing & Conc. Cast; resources Labor [46.78 h]; Laboratory Officer [23.39 h]; Carpenter [23.39 h]; Steelfixer [23.39 h]; Mason [23.39 h]; Surveyor [23.39 h]; Surveyor Helper [23.39 h]; (6*50mm+4*32mm) HDPE ducts [45] → Labor [21.05 h]; Laboratory Officer [10.52 h]; Carpenter [10.52 h]; Steelfixer [10.52 h]; Mason [10.52 h]; Surveyor [10.52 h]; Surveyor Helper [10.52 h]; (6*50mm+4*32mm) HDPE ducts [20.25] |
| B2.1.33 81 26.170 | Backfilling & Warrning Tape (45.00% Completed) |  | 2026-09-17 → 2026-09-15 A (-2d) | 1.1d → 3d | 45% → 100% | 68.9d → none |  | was named Backfilling & Warrning Tape; resources Labor [46.78 h]; Foreman [23.39 h]; Operator [93.55 h]; Surveyor [23.39 h]; Surveyor Helper [23.39 h]; Loader [24 h]; Water Tanker [24 h]; Dump Truck [24 h]; Plate Compactor [24 h]; Roller Compactor [24 h]; (6*50mm+4*32mm) HDPE ducts [15] → Labor [21.05 h]; Foreman [10.52 h]; Operator [42.1 h]; Surveyor [10.52 h]; Surveyor Helper [10.52 h]; Loader [10.8 h]; Water Tanker [10.8 h]; Dump Truck [10.8 h]; Plate Compactor [10.8 h]; Roller Compactor [10.8 h]; (6*50mm+4*32mm) HDPE ducts [6.75] |
| (2*32mm) | **Size (2*32mm) HDPE ducts** |  | 2026-09-30 → 2026-10-25 (+25d) |  |  |  |  |  |
| B2.1.33 81 26.171 | Excavation (45.00% Completed) |  | 2026-09-17 → 2026-09-15 A (-2d) | 1.1d → 4d | 45% → 100% | 62.9d → none |  | was named Excavation; resources Labor [31.18 h]; Foreman [15.59 h]; Operator [31.18 h]; Surveyor [15.59 h]; Surveyor Helper [15.59 h]; Excavator (With Bucket) [16 h]; Water Tanker [16 h]; Dump Truck [16 h]; Plate Compactor [16 h]; (2*32mm) HDPE ducts [8.6] → Labor [14.03 h]; Foreman [7.02 h]; Operator [14.03 h]; Surveyor [7.02 h]; Surveyor Helper [7.02 h]; Excavator (With Bucket) [7.2 h]; Water Tanker [7.2 h]; Dump Truck [7.2 h]; Plate Compactor [7.2 h]; (2*32mm) HDPE ducts [3.87] |
| B2.1.33 81 26.172 | HDPE Pipe, Shuttering, Steel Fixing & Conc. Cast (45.00% Completed) |  | 2026-09-17 → 2026-09-15 A (-2d) | 1.1d → 3d | 45% → 100% | 68.9d → none |  | was named HDPE Pipe, Shuttering, Steel Fixing & Conc. Cast; resources Labor [46.78 h]; Laboratory Officer [23.39 h]; Carpenter [23.39 h]; Steelfixer [23.39 h]; Mason [23.39 h]; Surveyor [23.39 h]; Surveyor Helper [23.39 h]; (2*32mm) HDPE ducts [25.8] → Labor [21.05 h]; Laboratory Officer [10.52 h]; Carpenter [10.52 h]; Steelfixer [10.52 h]; Mason [10.52 h]; Surveyor [10.52 h]; Surveyor Helper [10.52 h]; (2*32mm) HDPE ducts [11.61] |
| B2.1.33 81 26.173 | Backfilling & Warrning Tape (45.00% Completed) |  | 2026-09-30 → 2026-09-15 A (-15d) | 1.1d → 2d | 45% → 100% | 58.88d → none |  | was named Backfilling & Warrning Tape; resources Labor [46.78 h]; Foreman [23.39 h]; Operator [93.55 h]; Surveyor [23.39 h]; Surveyor Helper [23.39 h]; Loader [24 h]; Water Tanker [24 h]; Dump Truck [24 h]; Plate Compactor [24 h]; Roller Compactor [24 h]; (2*32mm) HDPE ducts [8.6] → Labor [21.05 h]; Foreman [10.52 h]; Operator [42.1 h]; Surveyor [10.52 h]; Surveyor Helper [10.52 h]; Loader [10.8 h]; Water Tanker [10.8 h]; Dump Truck [10.8 h]; Plate Compactor [10.8 h]; Roller Compactor [10.8 h]; (2*32mm) HDPE ducts [3.87] |
| Manholes | **Manholes** |  | 2026-09-30 → 2026-10-26 (+26d) |  |  |  |  |  |
| Manhole Type 1 | **Manhole Type 1** |  | 2026-09-30 → 2026-10-26 (+26d) |  |  |  |  |  |
| B2.31 23 00.630 | Excavation (67.00% Completed) |  | 2026-09-17 → 2026-09-15 A (-2d) | 2d → 6d | 67% → 100% | 64d → none |  | was named Excavation; resources Labor [31.18 h]; Foreman [15.59 h]; Operator [31.18 h]; Surveyor [15.59 h]; Surveyor Helper [15.59 h]; Excavator (With Bucket) [16 h]; Water Tanker [16 h]; Dump Truck [16 h]; Plate Compactor [16 h]; Manhole Type 1 [1.24] → Labor [20.89 h]; Foreman [10.45 h]; Operator [20.89 h]; Surveyor [10.45 h]; Surveyor Helper [10.45 h]; Excavator (With Bucket) [10.72 h]; Water Tanker [10.72 h]; Dump Truck [10.72 h]; Plate Compactor [10.72 h]; Manhole Type 1 [0.83] |
| B2.33 71 00.268 | Manhole Installation (67.00% Completed) |  | 2026-09-17 → 2026-09-15 A (-2d) | 5d → 3d | 67% → 100% | 68d → none |  | was named Manhole Installation; resources Labor [31.18 h]; Laboratory Officer [15.59 h]; Carpenter [15.59 h]; Steelfixer [15.59 h]; Mason [15.59 h]; Surveyor [15.59 h]; Surveyor Helper [15.59 h]; Manhole Type 1 [3.72] → Labor [20.89 h]; Laboratory Officer [10.45 h]; Carpenter [10.45 h]; Steelfixer [10.45 h]; Mason [10.45 h]; Surveyor [10.45 h]; Surveyor Helper [10.45 h]; Manhole Type 1 [2.49] |
| B2.33 71 00.269 | Backfilling & Warrning Tape (67.00% Completed) |  | 2026-09-30 → 2026-09-15 A (-15d) | 4d → 2d | 67% → 100% | 58.88d → none |  | was named Backfilling & Warrning Tape; resources Labor [93.55 h]; Foreman [46.78 h]; Operator [187.11 h]; Surveyor [46.78 h]; Surveyor Helper [46.78 h]; Loader [48 h]; Water Tanker [48 h]; Dump Truck [48 h]; Plate Compactor [48 h]; Roller Compactor [48 h]; Manhole Type 1 [1.24] → Labor [62.68 h]; Foreman [31.34 h]; Operator [125.36 h]; Surveyor [31.34 h]; Surveyor Helper [31.34 h]; Loader [32.16 h]; Water Tanker [32.16 h]; Dump Truck [32.16 h]; Plate Compactor [32.16 h]; Roller Compactor [32.16 h]; Manhole Type 1 [0.83] |
| Manhole Type 2 | **Manhole Type 2** |  | 2026-09-17 → 2026-10-26 (+39d) |  |  |  |  |  |
| B2.31 23 00.631 | Excavation (67.00% Completed) |  | 2026-09-17 → 2026-09-15 A (-2d) | 10d → 8d | 67% → 100% | 66d → none |  | was named Excavation; resources Labor [31.18 h]; Foreman [15.59 h]; Operator [31.18 h]; Surveyor [15.59 h]; Surveyor Helper [15.59 h]; Excavator (With Bucket) [16 h]; Water Tanker [16 h]; Dump Truck [16 h]; Plate Compactor [16 h]; Manhole Type 2 [0.52] → Labor [20.89 h]; Foreman [10.45 h]; Operator [20.89 h]; Surveyor [10.45 h]; Surveyor Helper [10.45 h]; Excavator (With Bucket) [10.72 h]; Water Tanker [10.72 h]; Dump Truck [10.72 h]; Plate Compactor [10.72 h]; Manhole Type 2 [0.35] |
| B2.33 71 00.270 | Manhole Installation (67.00% Completed) |  | 2026-09-17 → 2026-09-15 A (-2d) | 8d → 6d | 67% → 100% | 68d → none |  | was named Manhole Installation; resources Labor [31.18 h]; Laboratory Officer [15.59 h]; Carpenter [15.59 h]; Steelfixer [15.59 h]; Mason [15.59 h]; Surveyor [15.59 h]; Surveyor Helper [15.59 h]; Manhole Type 2 [1.56] → Labor [20.89 h]; Laboratory Officer [10.45 h]; Carpenter [10.45 h]; Steelfixer [10.45 h]; Mason [10.45 h]; Surveyor [10.45 h]; Surveyor Helper [10.45 h]; Manhole Type 2 [1.05] |
| B2.33 71 00.271 | Backfilling & Warrning Tape (67.00% Completed) |  | 2026-09-17 → 2026-09-15 A (-2d) | 5d → 3d | 67% → 100% | 68d → none |  | was named Backfilling & Warrning Tape; resources Labor [77.96 h]; Foreman [38.98 h]; Operator [155.92 h]; Surveyor [38.98 h]; Surveyor Helper [38.98 h]; Loader [40 h]; Water Tanker [40 h]; Dump Truck [40 h]; Plate Compactor [40 h]; Roller Compactor [40 h]; Manhole Type 2 [0.52] → Labor [52.23 h]; Foreman [26.12 h]; Operator [104.47 h]; Surveyor [26.12 h]; Surveyor Helper [26.12 h]; Loader [26.8 h]; Water Tanker [26.8 h]; Dump Truck [26.8 h]; Plate Compactor [26.8 h]; Roller Compactor [26.8 h]; Manhole Type 2 [0.35] |
| Crossing Ducts | **Road Crossing Ducts** |  | 2026-09-17 → 2026-10-26 (+39d) |  |  |  |  |  |
| 1 | **Size (6X50mm) HDPE** |  | 2026-09-17 → 2026-10-26 (+39d) |  |  |  |  |  |
| B2.31 23 00.629 | Excavation (45.00% Completed) |  | 2026-09-17 → 2026-09-15 A (-2d) | 1.1d → 4d | 45% → 100% | 72d → none |  | was named Excavation; resources Labor [31.18 h]; Foreman [15.59 h]; Operator [31.18 h]; Surveyor [15.59 h]; Surveyor Helper [15.59 h]; Excavator (With Bucket) [16 h]; Water Tanker [16 h]; Dump Truck [16 h]; Plate Compactor [16 h]; Road crossing ducts, (6*50mm) HDPE [7.13] → Labor [14.03 h]; Foreman [7.02 h]; Operator [14.03 h]; Surveyor [7.02 h]; Surveyor Helper [7.02 h]; Excavator (With Bucket) [7.2 h]; Water Tanker [7.2 h]; Dump Truck [7.2 h]; Plate Compactor [7.2 h]; Road crossing ducts, (6*50mm) HDPE [3.21] |
| B2.33 71 00.266 | Shuttering, Steel Fixing Incl. UPVC Pipe & Conc. Cast (45.00% Completed) |  | 2026-09-17 → 2026-09-15 A (-2d) | 1.1d → 3d | 45% → 100% | 72d → none |  | was named Shuttering, Steel Fixing Incl. UPVC Pipe & Conc. Cast; resources Labor [46.78 h]; Laboratory Officer [23.39 h]; Carpenter [23.39 h]; Steelfixer [23.39 h]; Mason [23.39 h]; Surveyor [23.39 h]; Surveyor Helper [23.39 h]; Road crossing ducts, (6*50mm) HDPE [21.37] → Labor [21.05 h]; Laboratory Officer [10.52 h]; Carpenter [10.52 h]; Steelfixer [10.52 h]; Mason [10.52 h]; Surveyor [10.52 h]; Surveyor Helper [10.52 h]; Road crossing ducts, (6*50mm) HDPE [9.62] |
| B2.33 71 00.267 | Backfilling & Warrning Tape (45.00% Completed) |  | 2026-09-17 → 2026-09-15 A (-2d) | 1.1d → 2d | 45% → 100% | 72d → none |  | was named Backfilling & Warrning Tape; resources Labor [46.78 h]; Foreman [23.39 h]; Operator [93.55 h]; Surveyor [23.39 h]; Surveyor Helper [23.39 h]; Loader [24 h]; Water Tanker [24 h]; Dump Truck [24 h]; Plate Compactor [24 h]; Roller Compactor [24 h]; Road crossing ducts, (6*50mm) HDPE [7.13] → Labor [21.05 h]; Foreman [10.52 h]; Operator [42.1 h]; Surveyor [10.52 h]; Surveyor Helper [10.52 h]; Loader [10.8 h]; Water Tanker [10.8 h]; Dump Truck [10.8 h]; Plate Compactor [10.8 h]; Roller Compactor [10.8 h]; Road crossing ducts, (6*50mm) HDPE [3.21] |
| Earth & Road Works | **Earth & Road Works** |  | 2026-11-22 → 2026-12-12 (+20d) |  |  |  |  |  |
| Earth Layers | **Earth Layers** |  | 2026-09-20 → 2026-10-11 (+21d) |  |  |  |  |  |
| B1.2.32 11 13.01.15 | Subgrade (65.00% Completed) |  | 2026-09-19 → 2026-09-15 A (-4d) | 204.63d → 201.83d | 65% → 100% | 42.2d → none |  | was named Subgrade; resources Subgrade [18001.9]; Labor [124.74 h]; Foreman [62.37 h]; Operator [124.74 h]; Surveyor [62.37 h]; Surveyor Helper [62.37 h]; Grader [64 h]; Loader [64 h]; Water Tanker [64 h]; Dump Truck [64 h]; Plate Compactor [64 h]; Roller Compactor [64 h] → Subgrade [11701.2]; Labor [81.08 h]; Foreman [40.54 h]; Operator [81.08 h]; Surveyor [40.54 h]; Surveyor Helper [40.54 h]; Grader [41.6 h]; Loader [41.6 h]; Water Tanker [41.6 h]; Dump Truck [41.6 h]; Plate Compactor [41.6 h]; Roller Compactor [41.6 h] |
| B1.2.32 11 23.01.15 | Aggregate Base Course (50.00% Completed) |  | 2026-09-20 → 2026-09-15 A (-5d) | 95.26d → 91.76d | 50% → 100% | 41.5d → none |  | was named Aggregate Base Course; resources Aggregate base course [12001.4]; Labor [109.15 h]; Foreman [54.57 h]; Operator [109.15 h]; Surveyor [54.57 h]; Surveyor Helper [54.57 h]; Grader [56 h]; Loader [56 h]; Water Tanker [56 h]; Dump Truck [56 h]; Plate Compactor [56 h]; Roller Compactor [56 h] → Aggregate base course [6000.71]; Labor [54.57 h]; Foreman [27.29 h]; Operator [54.57 h]; Surveyor [27.29 h]; Surveyor Helper [27.29 h]; Grader [28 h]; Loader [28 h]; Water Tanker [28 h]; Dump Truck [28 h]; Plate Compactor [28 h]; Roller Compactor [28 h] |
| Interlock | **Interlock** | 2026-10-18 → 2026-11-07 (+20d) | 2026-10-20 → 2026-11-09 (+20d) |  |  |  |  |  |
| B1.2.32 14 13.13.15 | 60mm thick - Interlocking Block Pavers | 2026-10-18 → 2026-11-07 (+20d) | 2026-10-20 → 2026-11-09 (+20d) |  |  | 3d → 4.32d |  |  |
| Curbstone | **Curbstone** | 2026-10-21 → 2026-11-10 (+20d) | 2026-11-10 → 2026-11-30 (+20d) |  |  |  |  |  |
| Pre Install | **Pre-Installation** | 2026-10-21 → 2026-11-10 (+20d) | 2026-10-27 → 2026-11-16 (+20d) |  |  |  |  |  |
| B2.31 23 00.421 | Excavation | 2026-10-21 → 2026-11-10 (+20d) | 2026-10-22 → 2026-11-11 (+20d) |  |  | 3d → 4.32d |  |  |
| B1.2.32 14 13.13.215 | PCC | 2026-10-24 → 2026-11-12 (+19d) | 2026-10-25 → 2026-11-14 (+20d) |  |  | 3d → 4.32d |  |  |
| 32 16 13.0015 | Haunching | 2026-10-26 → 2026-11-15 (+20d) | 2026-10-27 → 2026-11-16 (+20d) |  |  | 3d → 4.32d |  |  |
| Installation | **Installation** | 2026-10-28 → 2026-11-17 (+20d) | 2026-11-08 → 2026-11-28 (+20d) |  |  |  |  |  |
| B1.2.32 16.13.01.15 | Curb Stone, Type K1 | 2026-10-28 → 2026-11-17 (+20d) | 2026-10-29 → 2026-11-18 (+20d) |  |  | 3d → 4.32d |  |  |

| ID | Task | Start | Finish | Duration | Complete | Total float | Predecessors | Other |
| --- | --- | --- | --- | --- | --- | --- | --- | --- |
| B1.2.32 16.13.02.14 | Dropped Curb, Type K3 | 2026-10-31 → 2026-11-19 (+19d) | 2026-11-01 → 2026-11-21 (+20d) |  |  | 3d → 4.32d |  |  |
| B1.2.32 16.13.03.15 | Edge Curb, Type K4 | 2026-11-02 → 2026-11-22 (+20d) | 2026-11-03 → 2026-11-23 (+20d) |  |  | 3d → 4.32d |  |  |
| B1.2.32 16.13.0415 | Heel Curb, Type K5 | 2026-11-04 → 2026-11-24 (+20d) | 2026-11-05 → 2026-11-25 (+20d) |  |  | 3d → 4.32d |  |  |
| B1.2.32 16.13.05.14 | Transition Curb | 2026-11-07 → 2026-11-26 (+19d) | 2026-11-08 → 2026-11-28 (+20d) |  |  | 3d → 4.32d |  |  |
| Finishing | **Finishing** | 2026-11-09 → 2026-11-29 (+20d) | 2026-11-10 → 2026-11-30 (+20d) |  |  |  |  |  |
| 32 16 13.015 | Finishing, Fareface | 2026-11-09 → 2026-11-29 (+20d) | 2026-11-10 → 2026-11-30 (+20d) |  |  | 3d → 4.32d |  |  |
| Asphalt Layers | **Asphalt Layers** | 2026-10-07 → 2026-10-21 (+14d) | 2026-11-12 → 2026-12-02 (+20d) |  |  |  |  |  |
| B1.2.32 11 26.01.15 | Bituminous Base Course including Prime Coat (MC1) and tack coat (RC2) | 2026-10-07 → 2026-10-21 (+14d) | 2026-10-13 → 2026-10-27 (+14d) |  |  | 27.5d → 34.07d | B1.2.32 11 23.01.15, DMM2-Proc-Delv-7499 → B1.2.32 11 23.01.15_R, DMM2-Proc-Delv-7499 |  |
| B1.2.32 12 16.01.15 | Bituminous concrete Wearing Course, including tack coat (RC2) | 2026-11-11 → 2026-12-01 (+20d) | 2026-11-12 → 2026-12-02 (+20d) |  |  | 3d → 4.32d |  |  |
| Pavement Marking | **Pavement Marking** | 2026-11-16 → 2026-12-06 (+20d) | 2026-11-19 → 2026-12-09 (+20d) |  |  |  |  |  |
| B1.2.32 17 23.02.15 | Retroreflective Thermoplastic Yellow, Traffic lines | 2026-11-16 → 2026-12-06 (+20d) | 2026-11-17 → 2026-12-07 (+20d) |  |  | 25d → 23.32d |  |  |
| B1.2.32 17 23.01.15 | Retroreflective Thermoplastic White Traffic lines | 2026-11-18 → 2026-12-08 (+20d) | 2026-11-19 → 2026-12-09 (+20d) |  |  | 25d → 23.32d |  |  |
| Traffic Signs | **Traffic Signs** | 2026-10-24 → 2026-11-12 (+19d) | 2026-11-22 → 2026-12-12 (+20d) |  |  |  |  |  |
| Pre Install | **Pre-Installation** | 2026-10-24 → 2026-11-12 (+19d) | 2026-10-27 → 2026-11-16 (+20d) |  |  |  |  |  |
| B2.31 23 00.431 | Excavation | 2026-10-24 → 2026-11-12 (+19d) | 2026-10-25 → 2026-11-14 (+20d) |  |  | 5d → 6.32d |  |  |
| 10 14 53.015 | Foundation | 2026-10-26 → 2026-11-15 (+20d) | 2026-10-27 → 2026-11-16 (+20d) |  |  | 15d → 16.32d |  |  |
| Installation | **Installation** | 2026-11-18 → 2026-12-08 (+20d) | 2026-11-22 → 2026-12-12 (+20d) |  |  |  |  |  |
| B1.2.10 14 53.0115 | 1 Sheet Alumenium, Single post | 2026-11-18 → 2026-12-08 (+20d) | 2026-11-19 → 2026-12-09 (+20d) |  |  | 27d → 25.32d |  |  |
| B1.2.10 14 53.0215 | 2 Sheet Alumenium, Single post | 2026-11-21 → 2026-12-10 (+19d) | 2026-11-22 → 2026-12-12 (+20d) |  |  | 25d → 23.32d |  |  |
| B1.2.10 14 53.0315 | 1 Sheet Alumenium, Double post | 2026-11-21 → 2026-12-10 (+19d) | 2026-11-22 → 2026-12-12 (+20d) |  |  | 25d → 23.32d |  |  |
| Guard Rail | **Guard Rail** | 2026-09-16 → 2026-10-07 (+21d) | 2026-09-29 → 2026-10-19 (+20d) |  |  |  |  |  |
| B2.31 23 00.664 | Excavation | 2026-09-16 → 2026-10-07 (+21d) | 2026-09-19 → 2026-10-10 (+21d) |  |  | 44d → 45.32d |  |  |
| 10 14 53.25 | Foundation | 2026-09-22 → 2026-10-13 (+21d) | 2026-09-24 → 2026-10-14 (+20d) |  |  | 46d → 47.32d |  |  |
| B1.2.10 14 53.338 | W-Beam Guard Rail Installation | 2026-09-26 → 2026-10-15 (+19d) | 2026-09-29 → 2026-10-19 (+20d) |  |  | 46d → 47.32d |  |  |
| Road Misc. | **Miscellaneous** | 2026-11-14 → 2026-12-03 (+19d) | 2026-11-15 → 2026-12-05 (+20d) |  |  |  |  |  |
| B1.2.32 12 19.13.015 | Speed Tables | 2026-11-14 → 2026-12-03 (+19d) | 2026-11-15 → 2026-12-05 (+20d) |  |  | 25d → 23.32d |  |  |
| Landscape | **Landscape** | 2026-10-26 → 2026-11-15 (+20d) | 2026-12-12 → 2026-12-30 (+18d) |  |  |  |  |  |
| Fences | **Fences** | 2026-10-26 → 2026-11-15 (+20d) | 2026-11-14 → 2026-12-03 (+19d) |  |  |  |  |  |
| (ZATCA HCIS) | **Steel fence (ZATCA HCIS)** | 2026-10-26 → 2026-11-15 (+20d) | 2026-11-14 → 2026-12-03 (+19d) |  |  |  |  |  |
| B7.32 31 26.01-191 | Earthwork | 2026-10-26 → 2026-11-15 (+20d) | 2026-11-01 → 2026-11-21 (+20d) |  |  | 5d → 6.32d |  |  |
| B7.32 31 26.01-193 | Foundation | 2026-11-02 → 2026-11-22 (+20d) | 2026-11-08 → 2026-11-28 (+20d) |  |  | 5d → 6.32d |  |  |
| B7.32 31 26.01-195 | Fence Installation | 2026-11-09 → 2026-11-29 (+20d) | 2026-11-14 → 2026-12-03 (+19d) |  |  | 5d → 6.32d |  |  |
| Geotextile | **Geotextile** | 2026-11-10 → 2026-11-30 (+20d) | 2026-11-15 → 2026-12-05 (+20d) |  |  |  |  |  |
| B7.31 32 19.23.6 | Geotextile to protect trees planting soil | 2026-11-10 → 2026-11-30 (+20d) | 2026-11-15 → 2026-12-05 (+20d) |  |  | 21d → 19.32d |  |  |
| B7.31 32 19.23.7 | Geotextile below gravel bed | 2026-11-10 → 2026-11-30 (+20d) | 2026-11-15 → 2026-12-05 (+20d) |  |  | 21d → 19.32d |  |  |
| Trees | **Trees** | 2026-12-06 → 2026-12-24 (+18d) | 2026-12-12 → 2026-12-30 (+18d) |  |  |  |  |  |
| B7.32 93 43.07 | Tamarindus indica | 2026-12-06 → 2026-12-24 (+18d) | 2026-12-12 → 2026-12-30 (+18d) |  |  | 3.76d → 3d |  |  |
| Road 03 | **Road 03** |  | 2026-12-12 → 2026-12-30 (+18d) |  |  |  |  |  |
| Wet Networks | **Wet Networks** |  | 2026-10-18 → 2026-11-07 (+20d) |  |  |  |  |  |
| Sewerage Network | **Sewerage Network** |  | 2026-09-19 → 2026-10-08 (+19d) |  |  |  |  |  |
| Manholes | **Manholes ?1200** |  | 2026-09-19 → 2026-10-08 (+19d) |  |  |  |  |  |
| 3 | **Depth From 1.5m to 2.5m** |  | 2026-09-19 → 2026-10-08 (+19d) |  |  |  |  |  |
| B6.33 05 39.01.1657 | Test, Internal Finishing, Benching & Cover (45.60% Completed) |  | 2026-09-19 → 2026-09-15 A (-4d) | 61.63d → 59.45d | 46% → 100% | 113.82d → none |  | was named Test, Internal Finishing, Benching & Cover; resources Labor [62.37 h]; Foreman [31.18 h]; Plumber Helper [31.18 h]; Plumber [31.18 h]; Mason [31.18 h]; MH depth 1.51 - 2.5m [0.55] → Labor [28.44 h]; Foreman [14.22 h]; Plumber Helper [14.22 h]; Plumber [14.22 h]; Mason [14.22 h]; MH depth 1.51 - 2.5m [0.25] |
| B6.33 05 39.01.1667 | Backfilling |  |  |  |  |  | B6.33 05 39.01.1657 SS → B5.33 31 00.01.02117 |  |
| 4 | **Depth From 2.5m to 3.5m** |  | 2026-09-19 → 2026-10-08 (+19d) |  |  |  |  |  |
| B6.33 05 39.01.1697 | Manhole Installation (43.20% Completed) |  | 2026-09-17 → 2026-09-15 A (-2d) | 96.14d → 95d | 43% → 100% | 114d → none |  | was named Manhole Installation; resources Labor [31.18 h]; Operator [31.18 h]; Surveyor [15.59 h]; Surveyor Helper [15.59 h]; Boom Truck [16 h]; Mobile Crane [16 h]; MH depth 2.51 - 3.5m [2.46] → Labor [13.47 h]; Operator [13.47 h]; Surveyor [6.74 h]; Surveyor Helper [6.74 h]; Boom Truck [6.91 h]; Mobile Crane [6.91 h]; MH depth 2.51 - 3.5m [1.06] |
| B6.33 05 39.01.1707 | Test, Internal Finishing, Benching & Cover (45.60% Completed) |  | 2026-09-19 → 2026-09-15 A (-4d) | 61.18d → 59d | 46% → 100% | 113.82d → none |  | was named Test, Internal Finishing, Benching & Cover; resources Labor [62.37 h]; Foreman [31.18 h]; Plumber Helper [31.18 h]; Plumber [31.18 h]; Mason [31.18 h]; MH depth 2.51 - 3.5m [0.55] → Labor [28.44 h]; Foreman [14.22 h]; Plumber Helper [14.22 h]; Plumber [14.22 h]; Mason [14.22 h]; MH depth 2.51 - 3.5m [0.25] |
| B6.33 05 39.01.1717 | Backfilling |  |  |  |  |  | B6.33 05 39.01.1707 SS → B5.33 31 00.01.02117 |  |
| Stormwater Network | **Stormwater Network** |  | 2026-09-20 → 2026-10-07 (+17d) |  |  |  |  |  |
| GRP | **GRP** |  | 2026-09-20 → 2026-10-07 (+17d) |  |  |  |  |  |
| ?4001 | **?400** |  | 2026-09-20 → 2026-10-07 (+17d) |  |  |  |  |  |
| 3 | **Depth From 1.5m to 2.5m** |  | 2026-09-20 → 2026-10-07 (+17d) |  |  |  |  |  |
| B6.33 42 11.01-134 | Backfilling & Warrning Tape (67.02% Completed) |  | 2026-09-20 → 2026-09-15 A (-5d) | 109.28d → 106.53d | 67% → 100% | 112.25d → none |  | was named Backfilling & Warrning Tape; resources Labor [109.15 h]; Foreman [54.57 h]; Operator [218.29 h]; Surveyor [54.57 h]; Surveyor Helper [54.57 h]; Loader [56 h]; Water Tanker [56 h]; Dump Truck [56 h]; Plate Compactor [56 h]; Roller Compactor [56 h]; Depth: 1.51m - 2.5m [2] → Labor [73.15 h]; Foreman [36.58 h]; Operator [146.31 h]; Surveyor [36.58 h]; Surveyor Helper [36.58 h]; Loader [37.53 h]; Water Tanker [37.53 h]; Dump Truck [37.53 h]; Plate Compactor [37.53 h]; Roller Compactor [37.53 h]; Depth: 1.51m - 2.5m [1.34] |
| ?4002 | **?600** |  | 2026-09-19 → 2026-10-07 (+18d) |  |  |  |  |  |
| 4 | **Depth From 1.5m to 2.5m** |  | 2026-09-19 → 2026-10-07 (+18d) |  |  |  |  |  |
| B6.33 42 11.01-118 | Sand Bedding (67.02% Completed) |  | 2026-09-19 → 2026-09-15 A (-4d) | 128d → 126d | 67% → 100% | 113d → none |  | was named Sand Bedding; resources Labor [31.18 h]; Foreman [15.59 h]; Operator [62.37 h]; Surveyor [15.59 h]; Surveyor Helper [15.59 h]; Loader [16 h]; Water Tanker [16 h]; Dump Truck [16 h]; Plate Compactor [16 h]; 1.51m - 2.5m [9.52] → Labor [20.9 h]; Foreman [10.45 h]; Operator [41.8 h]; Surveyor [10.45 h]; Surveyor Helper [10.45 h]; Loader [10.72 h]; Water Tanker [10.72 h]; Dump Truck [10.72 h]; Plate Compactor [10.72 h]; 1.51m - 2.5m [6.38] |
| B6.33 42 11.01-124 | Pipe Laying (67.02% Completed) |  | 2026-09-19 → 2026-09-15 A (-4d) | 126d → 124d | 67% → 100% | 113d → none |  | was named Pipe Laying; resources Labor [31.18 h]; Foreman [15.59 h]; Plumber Helper [15.59 h]; Plumber [15.59 h]; Operator [15.59 h]; Surveyor [15.59 h]; Surveyor Helper [15.59 h]; Mobile Crane [16 h]; 1.51m - 2.5m [21.65] → Labor [20.9 h]; Foreman [10.45 h]; Plumber Helper [10.45 h]; Plumber [10.45 h]; Operator [10.45 h]; Surveyor [10.45 h]; Surveyor Helper [10.45 h]; Mobile Crane [10.72 h]; 1.51m - 2.5m [14.51] |
| B6.33 42 11.01-130 | Embedment & Test (67.02% Completed) |  | 2026-09-19 → 2026-09-15 A (-4d) | 111.26d → 109.69d | 67% → 100% | 113d → none |  | was named Embedment & Test; resources Labor [62.37 h]; Foreman [31.18 h]; Plumber Helper [31.18 h]; Plumber [31.18 h]; Operator [62.37 h]; Surveyor [31.18 h]; Surveyor Helper [31.18 h]; Loader [32 h]; Water Tanker [32 h]; Dump Truck [32 h]; Plate Compactor [32 h]; Roller Compactor [32 h]; 1.51m - 2.5m [2.6] → Labor [41.8 h]; Foreman [20.9 h]; Plumber Helper [20.9 h]; Plumber [20.9 h]; Operator [41.8 h]; Surveyor [20.9 h]; Surveyor Helper [20.9 h]; Loader [21.45 h]; Water Tanker [21.45 h]; Dump Truck [21.45 h]; Plate Compactor [21.45 h]; Roller Compactor [21.45 h]; 1.51m - 2.5m [1.74] |
| B6.33 42 11.01-136 | Backfilling & Warrning Tape (67.02% Completed) |  | 2026-09-19 → 2026-09-15 A (-4d) | 107.65d → 105.69d | 67% → 100% | 113d → none |  | was named Backfilling & Warrning Tape; resources Labor [77.96 h]; Foreman [38.98 h]; Operator [155.92 h]; Surveyor [38.98 h]; Surveyor Helper [38.98 h]; Loader [40 h]; Water Tanker [40 h]; Dump Truck [40 h]; Plate Compactor [40 h]; Roller Compactor [40 h]; 1.51m - 2.5m [4.76] → Labor [52.25 h]; Foreman [26.13 h]; Operator [104.5 h]; Surveyor [26.13 h]; Surveyor Helper [26.13 h]; Loader [26.81 h]; Water Tanker [26.81 h]; Dump Truck [26.81 h]; Plate Compactor [26.81 h]; Roller Compactor [26.81 h]; 1.51m - 2.5m [3.19] |
| ?40021 | **?700** |  | 2026-09-20 → 2026-10-07 (+17d) |  |  |  |  |  |
| 4 | **Depth From 1.5m to 2.5m** |  | 2026-09-20 → 2026-10-07 (+17d) |  |  |  |  |  |
| B6.33 42 11.01-132 | Embedment & Test (34.18% Completed) |  | 2026-09-20 → 2026-09-15 A (-5d) | 37.62d → 34.86d | 34% → 100% | 112.24d → none |  | was named Embedment & Test; resources Labor [62.37 h]; Foreman [31.18 h]; Plumber Helper [31.18 h]; Plumber [31.18 h]; Operator [62.37 h]; Surveyor [31.18 h]; Surveyor Helper [31.18 h]; Loader [32 h]; Water Tanker [32 h]; Dump Truck [32 h]; Plate Compactor [32 h]; Roller Compactor [32 h]; 1.51m - 2.5m [13.17] → Labor [21.32 h]; Foreman [10.66 h]; Plumber Helper [10.66 h]; Plumber [10.66 h]; Operator [21.32 h]; Surveyor [10.66 h]; Surveyor Helper [10.66 h]; Loader [10.94 h]; Water Tanker [10.94 h]; Dump Truck [10.94 h]; Plate Compactor [10.94 h]; Roller Compactor [10.94 h]; 1.51m - 2.5m [4.5] |
| B6.33 42 11.01-138 | Backfilling & Warrning Tape |  |  |  |  |  | B6.33 42 11.01-132 SS → B6.33 42 11.01-126 FF |  |
| Strom Manholes | **Manholes** |  | 2026-09-19 → 2026-10-07 (+18d) |  |  |  |  |  |
| 1 | **?1200** |  | 2026-09-19 → 2026-10-07 (+18d) |  |  |  |  |  |
| 4 | **Depth From 1.5m to 2.5m** |  | 2026-09-19 → 2026-10-07 (+18d) |  |  |  |  |  |
| B6.33 05 39.01.3977 | Excavation & Compaction (97.00% Completed) |  | 2026-09-19 → 2026-09-15 A (-4d) | 127d → 125d | 97% → 100% | 113d → none |  | was named Excavation & Compaction; resources Labor [31.18 h]; Foreman [15.59 h]; Operator [31.18 h]; Surveyor [15.59 h]; Surveyor Helper [15.59 h]; Excavator (With Bucket) [16 h]; Water Tanker [16 h]; Dump Truck [16 h]; Plate Compactor [16 h]; MH depth 1.50 - 2.5m [1.07] → Labor [30.25 h]; Foreman [15.12 h]; Operator [30.25 h]; Surveyor [15.12 h]; Surveyor Helper [15.12 h]; Excavator (With Bucket) [15.52 h]; Water Tanker [15.52 h]; Dump Truck [15.52 h]; Plate Compactor [15.52 h]; MH depth 1.50 - 2.5m [1.04] |
| B6.33 05 39.01.3987 | Blinding Conc, & RC Base (97.00% Completed) |  | 2026-09-19 → 2026-09-15 A (-4d) | 63.6d → 61.6d | 97% → 100% | 113d → none |  | was named Blinding Conc, & RC Base; resources Labor [46.78 h]; Foreman [23.39 h]; Laboratory Officer [23.39 h]; Carpenter [23.39 h]; Steelfixer [23.39 h]; Mason [23.39 h]; MH depth 1.50 - 2.5m [1.07] → Labor [45.37 h]; Foreman [22.69 h]; Laboratory Officer [22.69 h]; Carpenter [22.69 h]; Steelfixer [22.69 h]; Mason [22.69 h]; MH depth 1.50 - 2.5m [1.04] |
| B6.33 05 39.01.3997 | Manhole Installation (97.00% Completed) |  | 2026-09-19 → 2026-09-15 A (-4d) | 61.6d → 59.6d | 97% → 100% | 113d → none |  | was named Manhole Installation; resources Labor [31.18 h]; Operator [31.18 h]; Surveyor [15.59 h]; Surveyor Helper [15.59 h]; Boom Truck [16 h]; Mobile Crane [16 h]; MH depth 1.50 - 2.5m [3.5] → Labor [30.25 h]; Operator [30.25 h]; Surveyor [15.12 h]; Surveyor Helper [15.12 h]; Boom Truck [15.52 h]; Mobile Crane [15.52 h]; MH depth 1.50 - 2.5m [3.4] |
| B6.33 05 39.01.4007 | Test, Internal Finishing, Benching & Cover (97.00% Completed) |  | 2026-09-19 → 2026-09-15 A (-4d) | 60.6d → 58.6d | 97% → 100% | 113d → none |  | was named Test, Internal Finishing, Benching & Cover; resources Labor [62.37 h]; Foreman [31.18 h]; Plumber Helper [31.18 h]; Plumber [31.18 h]; Mason [31.18 h]; MH depth 1.50 - 2.5m [1.07] → Labor [60.5 h]; Foreman [30.25 h]; Plumber Helper [30.25 h]; Plumber [30.25 h]; Mason [30.25 h]; MH depth 1.50 - 2.5m [1.04] |

| ID | Task | Start | Finish | Duration | Complete | Total float | Predecessors | Other |
| --- | --- | --- | --- | --- | --- | --- | --- | --- |
| B6.33 05 39.01.4017 | Backfilling (97.00% Completed) |  | 2026-09-19 → 2026-09-15 A (-4d) | 59.6d → 57.6d | 97% → 100% | 113d → none |  | was named Backfilling; resources Labor [77.96 h]; Foreman [38.98 h]; Operator [77.96 h]; Surveyor [38.98 h]; Surveyor Helper [38.98 h]; Loader [40 h]; Water Tanker [40 h]; Dump Truck [40 h]; Plate Compactor [40 h]; MH depth 1.50 - 2.5m [2.15] → Labor [75.62 h]; Foreman [37.81 h]; Operator [75.62 h]; Surveyor [37.81 h]; Surveyor Helper [37.81 h]; Loader [38.8 h]; Water Tanker [38.8 h]; Dump Truck [38.8 h]; Plate Compactor [38.8 h]; MH depth 1.50 - 2.5m [2.08] |
| Catch Basins | **Catch Basins** |  | 2026-09-19 → 2026-10-06 (+17d) |  |  |  |  |  |
| Sing | **Single** |  | 2026-09-19 → 2026-10-06 (+17d) |  |  |  |  |  |
| B6.33 05 40.01.570 | Excavation, Compaction & Vapour Barrier (92.60% Completed) |  | 2026-09-19 → 2026-09-15 A (-4d) | 85.6d → 83.6d | 93% → 100% | 113d → none |  | was named Excavation, Compaction & Vapour Barrier; resources Labor [31.18 h]; Foreman [15.59 h]; Operator [31.18 h]; Surveyor [15.59 h]; Surveyor Helper [15.59 h]; Excavator (With Bucket) [16 h]; Water Tanker [16 h]; Dump Truck [16 h]; Roller Compactor [16 h]; Single Catch basin [2.99] → Labor [28.88 h]; Foreman [14.44 h]; Operator [28.88 h]; Surveyor [14.44 h]; Surveyor Helper [14.44 h]; Excavator (With Bucket) [14.82 h]; Water Tanker [14.82 h]; Dump Truck [14.82 h]; Roller Compactor [14.82 h]; Single Catch basin [2.77] |
| B6.33 05 40.01.580 | Blinding Conc. (92.60% Completed) |  | 2026-09-19 → 2026-09-15 A (-4d) | 83.6d → 81.6d | 93% → 100% | 113d → none |  | was named Blinding Conc.; resources Labor [31.18 h]; Foreman [15.59 h]; Laboratory Officer [15.59 h]; Carpenter [15.59 h]; Steelfixer [15.59 h]; Mason [15.59 h]; Single Catch basin [1.99] → Labor [28.88 h]; Foreman [14.44 h]; Laboratory Officer [14.44 h]; Carpenter [14.44 h]; Steelfixer [14.44 h]; Mason [14.44 h]; Single Catch basin [1.84] |
| B6.33 05 40.01.590 | Catch Basin Installation (92.60% Completed) |  | 2026-09-19 → 2026-09-15 A (-4d) | 82.6d → 80.6d | 93% → 100% | 113d → none |  | was named Catch Basin Installation; resources Labor [46.78 h]; Foreman [23.39 h]; Carpenter [23.39 h]; Steelfixer [23.39 h]; Mason [23.39 h]; Operator [46.78 h]; Surveyor [23.39 h]; Surveyor Helper [23.39 h]; Boom Truck [24 h]; Single Catch basin [8.93] → Labor [43.32 h]; Foreman [21.66 h]; Carpenter [21.66 h]; Steelfixer [21.66 h]; Mason [21.66 h]; Operator [43.32 h]; Surveyor [21.66 h]; Surveyor Helper [21.66 h]; Boom Truck [22.22 h]; Single Catch basin [8.27] |
| B6.33 05 40.01.600 | Backfilling, DI Frame & Grate Cover Fixing (92.60% Completed) |  | 2026-09-19 → 2026-09-15 A (-4d) | 81d → 79d | 93% → 100% | 113d → none |  | was named Backfilling, DI Frame & Grate Cover Fixing; resources Labor [77.96 h]; Foreman [38.98 h]; Operator [77.96 h]; Surveyor [38.98 h]; Surveyor Helper [38.98 h]; Loader [40 h]; Water Tanker [40 h]; Dump Truck [40 h]; Plate Compactor [40 h]; Single Catch basin [5.96] → Labor [72.19 h]; Foreman [36.1 h]; Operator [72.19 h]; Surveyor [36.1 h]; Surveyor Helper [36.1 h]; Loader [37.04 h]; Water Tanker [37.04 h]; Dump Truck [37.04 h]; Plate Compactor [37.04 h]; Single Catch basin [5.52] |
| UPVC | **UPVC** |  | 2026-09-19 → 2026-09-24 (+5d) |  |  |  |  |  |
| UPVC300 | **?300 From 0.0 to 1.5m** |  | 2026-09-19 → 2026-09-24 (+5d) |  |  |  |  |  |
| B6.33 42 11.35-128 | Fittings & Pipe Installation |  |  |  |  |  | B6.33 42 11.35-116 SS → B1.2.31 23 23.01.16 |  |
| B6.33 42 11.35-116 | Catch Basin Opening Prep. (87.09% Completed) |  | 2026-09-19 → 2026-09-15 A (-4d) | 82.6d → 80.6d | 87% → 100% | 113d → none |  | was named Catch Basin Opening Prep.; resources Labor [31.18 h]; Foreman [15.59 h]; Plumber Helper [15.59 h]; Plumber [15.59 h]; less than 1.5 [46.62] → Labor [27.16 h]; Foreman [13.58 h]; Plumber Helper [13.58 h]; Plumber [13.58 h]; less than 1.5 [40.6] |
| UPVC3001 | **?400 From 0.0 to 1.5m** |  | 2026-09-19 → 2026-09-22 (+3d) |  |  |  |  |  |
| B6.33 42 11.36-1101 | Fittings & Pipe Installation |  |  |  |  |  | B6.33 42 11.36-189 SS → B1.2.31 23 23.01.16 |  |
| B6.33 42 11.36-189 | Catch Basin Opening Prep. (87.09% Completed) |  | 2026-09-19 → 2026-09-15 A (-4d) | 82.6d → 80.6d | 87% → 100% | 113d → none |  | was named Catch Basin Opening Prep.; resources Labor [31.18 h]; Foreman [15.59 h]; Plumber Helper [15.59 h]; Plumber [15.59 h]; less than 1.5 [46.62] → Labor [27.16 h]; Foreman [13.58 h]; Plumber Helper [13.58 h]; Plumber [13.58 h]; less than 1.5 [40.6] |
| Potable Water | **Potable Water Network** |  | 2026-10-05 → 2026-10-25 (+20d) |  |  |  |  |  |
| HDPE | **HDPE Pipes** |  | 2026-09-20 → 2026-10-10 (+20d) |  |  |  |  |  |
| ?110mm | **?110mm** |  | 2026-09-20 → 2026-10-10 (+20d) |  |  |  |  |  |
| B3.33 14 13-1191 | Excavation (79.00% Completed) |  | 2026-09-20 → 2026-09-15 A (-5d) | 133.98d → 131.98d | 79% → 100% | 112.5d → none | B1.2.32 11 26.01.16 FF → B6.33 42 11.36-1101 | was named Excavation; resources Labor [31.18 h]; Foreman [15.59 h]; Operator [31.18 h]; Surveyor [15.59 h]; Surveyor Helper [15.59 h]; Excavator (With Bucket) [16 h]; Water Tanker [16 h]; Dump Truck [16 h]; Plate Compactor [16 h]; Depth: 0.0m - 1.5m [155.75] → Labor [24.64 h]; Foreman [12.32 h]; Operator [24.64 h]; Surveyor [12.32 h]; Surveyor Helper [12.32 h]; Excavator (With Bucket) [12.64 h]; Water Tanker [12.64 h]; Dump Truck [12.64 h]; Plate Compactor [12.64 h]; Depth: 0.0m - 1.5m [123.04] |
| B3.33 14 13-1195 | Sand Bedding (79.00% Completed) |  | 2026-09-20 → 2026-09-15 A (-5d) | 131.98d → 129.98d | 79% → 100% | 112.5d → none |  | was named Sand Bedding; resources Labor [31.18 h]; Foreman [15.59 h]; Operator [62.37 h]; Surveyor [15.59 h]; Surveyor Helper [15.59 h]; Loader [16 h]; Water Tanker [16 h]; Dump Truck [16 h]; Plate Compactor [16 h]; Depth: 0.0m - 1.5m [38.94] → Labor [24.64 h]; Foreman [12.32 h]; Operator [49.27 h]; Surveyor [12.32 h]; Surveyor Helper [12.32 h]; Loader [12.64 h]; Water Tanker [12.64 h]; Dump Truck [12.64 h]; Plate Compactor [12.64 h]; Depth: 0.0m - 1.5m [30.77] |
| B3.33 14 13-1199 | Pipe Laying (79.00% Completed) |  | 2026-09-20 → 2026-09-15 A (-5d) | 128.98d → 126.98d | 79% → 100% | 112.5d → none |  | was named Pipe Laying; resources Labor [31.18 h]; Foreman [15.59 h]; Plumber Helper [15.59 h]; Plumber [15.59 h]; Operator [15.59 h]; Surveyor [15.59 h]; Surveyor Helper [15.59 h]; Mobile Crane [16 h]; Depth: 0.0m - 1.5m [350.44] → Labor [24.64 h]; Foreman [12.32 h]; Plumber Helper [12.32 h]; Plumber [12.32 h]; Operator [12.32 h]; Surveyor [12.32 h]; Surveyor Helper [12.32 h]; Mobile Crane [12.64 h]; Depth: 0.0m - 1.5m [276.85] |
| B3.33 14 13-11103 | Embedment & Test (79.00% Completed) |  | 2026-09-20 → 2026-09-15 A (-5d) | 122.98d → 120.98d | 79% → 100% | 112.5d → none |  | was named Embedment & Test; resources Labor [62.37 h]; Foreman [31.18 h]; Plumber Helper [31.18 h]; Plumber [31.18 h]; Operator [62.37 h]; Surveyor [31.18 h]; Surveyor Helper [31.18 h]; Loader [32 h]; Water Tanker [32 h]; Dump Truck [32 h]; Plate Compactor [32 h]; Roller Compactor [32 h]; Depth: 0.0m - 1.5m [155.75] → Labor [49.27 h]; Foreman [24.64 h]; Plumber Helper [24.64 h]; Plumber [24.64 h]; Operator [49.27 h]; Surveyor [24.64 h]; Surveyor Helper [24.64 h]; Loader [25.28 h]; Water Tanker [25.28 h]; Dump Truck [25.28 h]; Plate Compactor [25.28 h]; Roller Compactor [25.28 h]; Depth: 0.0m - 1.5m [123.04] |
| B3.33 14 13-11107 | Backfilling & Warrning Tape (79.00% Completed) |  | 2026-09-19 → 2026-09-15 A (-4d) | 106.5d → 105.45d | 79% → 100% | 113.95d → none |  | was named Backfilling & Warrning Tape; resources Labor [77.96 h]; Foreman [38.98 h]; Operator [155.92 h]; Surveyor [38.98 h]; Surveyor Helper [38.98 h]; Loader [40 h]; Water Tanker [40 h]; Dump Truck [40 h]; Plate Compactor [40 h]; Roller Compactor [40 h]; Depth: 0.0m - 1.5m [77.87] → Labor [61.59 h]; Foreman [30.79 h]; Operator [123.18 h]; Surveyor [30.79 h]; Surveyor Helper [30.79 h]; Loader [31.6 h]; Water Tanker [31.6 h]; Dump Truck [31.6 h]; Plate Compactor [31.6 h]; Roller Compactor [31.6 h]; Depth: 0.0m - 1.5m [61.52] |
| Depth: 1.51m - 2.5m | **Depth: 1.51m - 2.5m** |  | 2026-09-20 → 2026-10-10 (+20d) |  |  |  |  |  |
| B3.33 14 13-1193 | Excavation (79.00% Completed) |  | 2026-09-19 → 2026-09-15 A (-4d) | 131.98d → 129.98d | 79% → 100% | 113d → none |  | was named Excavation; resources Labor [31.18 h]; Foreman [15.59 h]; Operator [31.18 h]; Surveyor [15.59 h]; Surveyor Helper [15.59 h]; Excavator (With Bucket) [16 h]; Water Tanker [16 h]; Dump Truck [16 h]; Plate Compactor [16 h]; Depth: 1.51m - 2.5m → Labor [24.64 h]; Foreman [12.32 h]; Operator [24.64 h]; Surveyor [12.32 h]; Surveyor Helper [12.32 h]; Excavator (With Bucket) [12.64 h]; Water Tanker [12.64 h]; Dump Truck [12.64 h]; Plate Compactor [12.64 h]; Depth: 1.51m - 2.5m |
| B3.33 14 13-1197 | Sand Bedding (79.00% Completed) |  | 2026-09-19 → 2026-09-15 A (-4d) | 128.98d → 126.98d | 79% → 100% | 113d → none |  | was named Sand Bedding; resources Labor [31.18 h]; Foreman [15.59 h]; Operator [62.37 h]; Surveyor [15.59 h]; Surveyor Helper [15.59 h]; Loader [16 h]; Water Tanker [16 h]; Dump Truck [16 h]; Plate Compactor [16 h]; Depth: 1.51m - 2.5m → Labor [24.64 h]; Foreman [12.32 h]; Operator [49.27 h]; Surveyor [12.32 h]; Surveyor Helper [12.32 h]; Loader [12.64 h]; Water Tanker [12.64 h]; Dump Truck [12.64 h]; Plate Compactor [12.64 h]; Depth: 1.51m - 2.5m |
| B3.33 14 13-11101 | Pipe Laying (79.00% Completed) |  | 2026-09-19 → 2026-09-15 A (-4d) | 127.98d → 125.98d | 79% → 100% | 113d → none |  | was named Pipe Laying; resources Labor [31.18 h]; Foreman [15.59 h]; Plumber Helper [15.59 h]; Plumber [15.59 h]; Operator [15.59 h]; Surveyor [15.59 h]; Surveyor Helper [15.59 h]; Mobile Crane [16 h]; Depth: 1.51m - 2.5m → Labor [24.64 h]; Foreman [12.32 h]; Plumber Helper [12.32 h]; Plumber [12.32 h]; Operator [12.32 h]; Surveyor [12.32 h]; Surveyor Helper [12.32 h]; Mobile Crane [12.64 h]; Depth: 1.51m - 2.5m |
| B3.33 14 13-11105 | Embedment & Test (79.00% Completed) |  | 2026-09-20 → 2026-09-15 A (-5d) | 122.98d → 120.98d | 79% → 100% | 112.5d → none |  | was named Embedment & Test; resources Labor [62.37 h]; Foreman [31.18 h]; Plumber Helper [31.18 h]; Plumber [31.18 h]; Operator [62.37 h]; Surveyor [31.18 h]; Surveyor Helper [31.18 h]; Loader [32 h]; Water Tanker [32 h]; Dump Truck [32 h]; Plate Compactor [32 h]; Roller Compactor [32 h]; Depth: 1.51m - 2.5m → Labor [49.27 h]; Foreman [24.64 h]; Plumber Helper [24.64 h]; Plumber [24.64 h]; Operator [49.27 h]; Surveyor [24.64 h]; Surveyor Helper [24.64 h]; Loader [25.28 h]; Water Tanker [25.28 h]; Dump Truck [25.28 h]; Plate Compactor [25.28 h]; Roller Compactor [25.28 h]; Depth: 1.51m - 2.5m |
| B3.33 14 13-11109 | Backfilling & Warrning Tape (79.00% Completed) |  | 2026-09-20 → 2026-09-15 A (-5d) | 107.5d → 106.45d | 79% → 100% | 112.5d → none | B3.33 14 13-11105 FF, B3.33 14 19.01.117 FF → B3.33 14 13-11105 FF | was named Backfilling & Warrning Tape; resources Labor [77.96 h]; Foreman [38.98 h]; Operator [155.92 h]; Surveyor [38.98 h]; Surveyor Helper [38.98 h]; Loader [40 h]; Water Tanker [40 h]; Dump Truck [40 h]; Plate Compactor [40 h]; Roller Compactor [40 h]; Depth: 1.51m - 2.5m → Labor [61.59 h]; Foreman [30.79 h]; Operator [123.18 h]; Surveyor [30.79 h]; Surveyor Helper [30.79 h]; Loader [31.6 h]; Water Tanker [31.6 h]; Dump Truck [31.6 h]; Plate Compactor [31.6 h]; Roller Compactor [31.6 h]; Depth: 1.51m - 2.5m |
| Crossing | **Plots and Buildings Crossing** | 2026-09-19 → 2026-10-10 (+21d) | 2026-09-29 → 2026-10-19 (+20d) |  |  |  |  |  |
| B3.33 14 13.02.28 | Earthwork | 2026-09-19 → 2026-10-10 (+21d) | 2026-09-21 → 2026-10-12 (+21d) |  |  | 91d → 88.32d | B3.33 05 63.02.37 → B3.33 05 63.02.37_R |  |
| B3.33 14 13.02.29 | Sand Bedding | 2026-09-22 → 2026-10-13 (+21d) | 2026-09-26 → 2026-10-15 (+19d) |  |  | 91d → 88.32d |  |  |
| B3.33 14 13.02.30 | Tee, Pipe (Crossing) Installation & Backfilling | 2026-09-27 → 2026-10-17 (+20d) | 2026-09-29 → 2026-10-19 (+20d) |  |  | 91d → 88.32d | B3.33 14 13.02.29, B3.33 14 13-10109 → B3.33 14 13.02.29, B3.33 14 13-10109_R |  |
| Valves & Chambers | **Valves & Chambers** |  | 2026-10-05 → 2026-10-25 (+20d) |  |  |  |  |  |
| GV | **Gate Valves** |  | 2026-09-19 → 2026-10-10 (+21d) |  |  |  |  |  |
| 1 | **Gate valves dia (110) mm** |  | 2026-09-19 → 2026-10-10 (+21d) |  |  |  |  |  |
| B3.33 14 19.01.116 | Burried Isolation Valve Installation |  |  |  |  |  | B3.33 14 13-11101 SS → B3.33 14 13-11101 SS, B3.33 14 13-11101 FF |  |
| B3.33 14 19.01.117 | Spindle & Surface Box | 2026-09-16 → 2026-10-07 (+21d) | 2026-09-19 → 2026-10-10 (+21d) |  |  | 113d → 110.32d |  |  |
| 2 | **Air Valves** |  | 2026-10-05 → 2026-10-25 (+20d) |  |  |  |  |  |
| 4 | **Air valves on less than 315 mm. (In Chamber)** |  | 2026-10-05 → 2026-10-25 (+20d) |  |  |  |  |  |
| B3.33 05 63.02.37 | Land Adjustment & Compaction (50.00% Completed) |  | 2026-09-17 → 2026-09-15 A (-2d) | 12.46d → 11.46d | 50% → 100% | 91d → none |  | was named Land Adjustment & Compaction; resources Labor [31.18 h]; Foreman [15.59 h]; Operator [62.37 h]; Surveyor [15.59 h]; Surveyor Helper [15.59 h]; Excavator (With Bucket) [16 h]; Water Tanker [16 h]; Dump Truck [16 h]; Plate Compactor [16 h]; POT Air valve Dia. 50 mm on pipes with Dia. less than 315 mm [0.24]; Air valve chamber; on less than 315 mm Dia. pipeline [0.18] → Labor [15.59 h]; Foreman [7.8 h]; Operator [31.18 h]; Surveyor [7.8 h]; Surveyor Helper [7.8 h]; Excavator (With Bucket) [8 h]; Water Tanker [8 h]; Dump Truck [8 h]; Plate Compactor [8 h]; POT Air valve Dia. 50 mm on pipes with Dia. less than 315 mm [0.12]; Air valve chamber; on less than 315 mm Dia. pipeline [0.09] |
| B3.33 05 63.02.35 | Foundations (50.00% Completed) |  | 2026-09-19 → 2026-09-15 A (-4d) | 11.96d → 10.46d | 50% → 100% | 113.5d → none |  | was named Foundations; resources Labor [46.78 h]; Foreman [23.39 h]; Laboratory Officer [23.39 h]; Carpenter [23.39 h]; Steelfixer [23.39 h]; Mason [23.39 h]; POT Air valve Dia. 50 mm on pipes with Dia. less than 315 mm [0.06]; Air valve chamber; on less than 315 mm Dia. pipeline [0.24] → Labor [23.39 h]; Foreman [11.69 h]; Laboratory Officer [11.69 h]; Carpenter [11.69 h]; Steelfixer [11.69 h]; Mason [11.69 h]; POT Air valve Dia. 50 mm on pipes with Dia. less than 315 mm [0.03]; Air valve chamber; on less than 315 mm Dia. pipeline [0.12] |
| B3.33 05 63.02.36 | Chamber Curing, Finishing & Steel Cover (50.00% Completed) |  | 2026-09-19 → 2026-09-15 A (-4d) | 11.46d → 9.46d | 50% → 100% | 102d → none |  | was named Chamber Curing, Finishing & Steel Cover; resources Labor [62.37 h]; Mason [31.18 h]; POT Air valve Dia. 50 mm on pipes with Dia. less than 315 mm [0.24]; Air valve chamber; on less than 315 mm Dia. pipeline [0.18] → Labor [31.18 h]; Mason [15.59 h]; POT Air valve Dia. 50 mm on pipes with Dia. less than 315 mm [0.12]; Air valve chamber; on less than 315 mm Dia. pipeline [0.09] |
| B3.33 05 63.02.38 | Chambers Walls Conc Cast In Situ (50.00% Completed) |  | 2026-09-19 → 2026-09-15 A (-4d) | 10.96d → 9.46d | 50% → 100% | 113.5d → none |  | was named Chambers Walls Conc Cast In Situ; resources Labor [46.78 h]; Foreman [23.39 h]; Laboratory Officer [23.39 h]; Carpenter [23.39 h]; Steelfixer [23.39 h]; Mason [23.39 h]; POT Air valve Dia. 50 mm on pipes with Dia. less than 315 mm [0.52]; Air valve chamber; on less than 315 mm Dia. pipeline [0.24] → Labor [23.39 h]; Foreman [11.69 h]; Laboratory Officer [11.69 h]; Carpenter [11.69 h]; Steelfixer [11.69 h]; Mason [11.69 h]; POT Air valve Dia. 50 mm on pipes with Dia. less than 315 mm [0.26]; Air valve chamber; on less than 315 mm Dia. pipeline [0.12] |
| B3.33 05 63.02.39 | Valve & Fitting Installation | 2026-09-30 → 2026-10-20 (+20d) | 2026-10-05 → 2026-10-25 (+20d) |  |  | 94d → 91.32d | B3.33 05 63.02.36, B3.33 14 19.01.119 → B3.33 05 63.02.36_R, B3.33 14 19.01.119 |  |
| Fire Fighting | **Fire Fighting Network** |  | 2026-10-18 → 2026-11-07 (+20d) |  |  |  |  |  |
| B3.1. 33 14 13-0190 | Excavation |  |  |  |  |  | B3.33 14 13-1191 SS, B3.33 14 13-1193 SS → B3.33 14 13-1193 SS+2d, B3.33 14 13-1193 FF+2d |  |
| Valves & Chambers | **Valves & Chambers** |  | 2026-10-01 → 2026-10-21 (+20d) |  |  |  |  |  |
| GV | **Gate Valves** |  | 2026-10-01 → 2026-10-21 (+20d) |  |  |  |  |  |
| 1 | **Gate valves dia (250) mm** |  | 2026-10-01 → 2026-10-21 (+20d) |  |  |  |  |  |
| B3.33 14 19.01.133 | Spindle & Surface Box | 2026-09-28 → 2026-10-18 (+20d) | 2026-10-01 → 2026-10-21 (+20d) |  |  | 67d → 64.32d |  |  |
| 2 | **Air Valves** |  | 2026-09-22 → 2026-10-13 (+21d) |  |  |  |  |  |
| 4 | **Air valves on less than 315 mm. (In Chamber)** |  | 2026-09-22 → 2026-10-13 (+21d) |  |  |  |  |  |
| B3.33 05 63.02.79 | Valve & Fitting Installation | 2026-09-16 → 2026-10-07 (+21d) | 2026-09-22 → 2026-10-13 (+21d) |  |  | 95d → 92.32d |  |  |
| 3 | **Fire Hydrant** |  | 2026-10-18 → 2026-11-07 (+20d) |  |  |  |  |  |
| B3.33 14 19.01.fh44 | Riser Pipe & Flanged Fittings Installation (50.00% Completed) |  | 2026-09-19 → 2026-09-15 A (-4d) | 7d → 6d | 50% → 100% | 81d → none |  | was named Riser Pipe & Flanged Fittings Installation; resources Labor [31.18 h]; Plumber Helper [15.59 h]; Welder [15.59 h]; Plumber [15.59 h]; Surveyor [15.59 h]; Surveyor Helper [15.59 h]; Welding Machine [16 h]; 3-outlet fire hydrant (2 x 2.5 inch and 1 x 4.5 inch) in the form of a separate dry vacuum cylinder [1.49] → Labor [15.59 h]; Plumber Helper [7.8 h]; Welder [7.8 h]; Plumber [7.8 h]; Surveyor [7.8 h]; Surveyor Helper [7.8 h]; Welding Machine [8 h]; 3-outlet fire hydrant (2 x 2.5 inch and 1 x 4.5 inch) in the form of a separate dry vacuum cylinder [0.75] |
| B3.33 14 19.01.fh43 | Firehydrant Fixing/Installation (50.00% Completed) |  | 2026-09-20 → 2026-09-15 A (-5d) | 5.5d → 4d | 50% → 100% | 80.5d → none |  | was named Firehydrant Fixing/Installation; resources Labor [46.78 h]; Foreman [23.39 h]; Plumber Helper [23.39 h]; Plumber [23.39 h]; Operator [46.78 h]; Surveyor [23.39 h]; Surveyor Helper [23.39 h]; JCB [24 h]; 3-outlet fire hydrant (2 x 2.5 inch and 1 x 4.5 inch) in the form of a separate dry vacuum cylinder [4.47] → Labor [23.39 h]; Foreman [11.69 h]; Plumber Helper [11.69 h]; Plumber [11.69 h]; Operator [23.39 h]; Surveyor [11.69 h]; Surveyor Helper [11.69 h]; JCB [12 h]; 3-outlet fire hydrant (2 x 2.5 inch and 1 x 4.5 inch) in the form of a separate dry vacuum cylinder [2.24] |
| B3.33 14 19.01.fh45 | Backfilling & Compaction | 2026-10-11 → 2026-10-31 (+20d) | 2026-10-18 → 2026-11-07 (+20d) |  |  | 64d → 61.32d | B3.33 14 19.01.fh43, B3.33 14 19.01.fh24, B3.33 14 19.01.121, B3.33 14 19.01.fh3 → B3.33 14 19.01.fh43_R, B3.33 14 19.01.fh24, B3.33 14 19.01.121, B3.33 14 19.01.fh3, B3.33 14 19.01.fh42_R |  |
| Dry Networks | **Dry Networks** |  | 2026-11-17 → 2026-11-07 (-10d) |  |  |  |  |  |
| MV Network | **Medium Voltage Network** |  | 2026-09-24 → 2026-10-14 (+20d) |  |  |  |  |  |
| Duct Banks | **Duct Banks** |  | 2026-09-24 → 2026-10-14 (+20d) |  |  |  |  |  |
| 4 Way | **2 Way** |  | 2026-09-24 → 2026-10-14 (+20d) |  |  |  |  |  |
| B2.31 23 00.643 | Excavation (75.00% Completed) |  | 2026-09-19 → 2026-09-15 A (-4d) | 6.95d → 4.95d | 75% → 100% | 55d → none |  | was named Excavation; resources Labor [31.18 h]; Foreman [15.59 h]; Operator [31.18 h]; Surveyor [15.59 h]; Surveyor Helper [15.59 h]; Excavator (With Bucket) [16 h]; Water Tanker [16 h]; Dump Truck [16 h]; Plate Compactor [16 h]; Excavation for Trench size 40cm wide and 80cm deep (for 1 cable) [100]; Duct bank for MV cables UPVC (2xDia. 150mm) [17.08] → Labor [23.39 h]; Foreman [11.69 h]; Operator [23.39 h]; Surveyor [11.69 h]; Surveyor Helper [11.69 h]; Excavator (With Bucket) [12 h]; Water Tanker [12 h]; Dump Truck [12 h]; Plate Compactor [12 h]; Excavation for Trench size 40cm wide and 80cm deep (for 1 cable) [75]; Duct bank for MV cables UPVC (2xDia. 150mm) [12.81] |
| B2.33 71 00.294 | Shuttering, Steel Fixing Incl. UPVC Pipe & Conc. Cast (75.00% Completed) |  | 2026-09-19 → 2026-09-15 A (-4d) | 4.95d → 2.95d | 75% → 100% | 109d → none |  | was named Shuttering, Steel Fixing Incl. UPVC Pipe & Conc. Cast; resources Labor [46.78 h]; Laboratory Officer [23.39 h]; Carpenter [23.39 h]; Steelfixer [23.39 h]; Mason [23.39 h]; Surveyor [23.39 h]; Surveyor Helper [23.39 h]; Excavation for Trench size 40cm wide and 80cm deep (for 1 cable) [300]; Duct bank for MV cables UPVC (2xDia. 150mm) [68.77] → Labor [35.08 h]; Laboratory Officer [17.54 h]; Carpenter [17.54 h]; Steelfixer [17.54 h]; Mason [17.54 h]; Surveyor [17.54 h]; Surveyor Helper [17.54 h]; Excavation for Trench size 40cm wide and 80cm deep (for 1 cable) [225]; Duct bank for MV cables UPVC (2xDia. 150mm) [51.58] |
| B2.33 71 00.295 | Backfilling & Warrning Tape | 2026-09-20 → 2026-10-11 (+21d) | 2026-09-24 → 2026-10-14 (+20d) |  |  | 109d → 106.32d | B2.33 71 00.294 → B2.33 71 00.294_R |  |
| Street Lighting | **Street Lighting** |  | 2026-10-28 → 2026-11-07 (+10d) |  |  |  |  |  |
| Duct Banks | **Duct Banks** |  | 2026-09-20 → 2026-10-17 (+27d) |  |  |  |  |  |
| 4 Way | **4 Way** |  | 2026-09-20 → 2026-10-17 (+27d) |  |  |  |  |  |
| B2.33 71 00 02 85 | Excavation (44.00% Completed) |  | 2026-09-17 → 2026-09-15 A (-2d) | 7.32d → 6.2d | 44% → 100% | 31.88d → none |  | was named Excavation; resources Labor [31.18 h]; Foreman [15.59 h]; Operator [31.18 h]; Surveyor [15.59 h]; Surveyor Helper [15.59 h]; Excavator (With Bucket) [16 h]; Water Tanker [16 h]; Dump Truck [16 h]; Plate Compactor [16 h]; SL Excavation for Trench size 60cm wide and 65cm deep ( for 2 cables); Road Crossing Duct for Street Lighting cables UPVC (4xDia. 110mm) [8.92] → Labor [13.72 h]; Foreman [6.86 h]; Operator [13.72 h]; Surveyor [6.86 h]; Surveyor Helper [6.86 h]; Excavator (With Bucket) [7.04 h]; Water Tanker [7.04 h]; Dump Truck [7.04 h]; Plate Compactor [7.04 h]; SL Excavation for Trench size 60cm wide and 65cm deep ( for 2 cables); Road Crossing Duct for Street Lighting cables UPVC (4xDia. 110mm) [3.92] |
| B2.33 71 00 02 86 | Shuttering, Steel Fixing Incl. UPVC Pipe & Conc. Cast (44.00% Completed) |  | 2026-09-20 → 2026-09-15 A (-5d) | 6.56d → 3.2d | 44% → 100% | 96.64d → none |  | was named Shuttering, Steel Fixing Incl. UPVC Pipe & Conc. Cast; resources Labor [93.55 h]; Laboratory Officer [46.78 h]; Carpenter [46.78 h]; Steelfixer [46.78 h]; Mason [46.78 h]; Surveyor [46.78 h]; Surveyor Helper [46.78 h]; SL Excavation for Trench size 60cm wide and 65cm deep ( for 2 cables); Road Crossing Duct for Street Lighting cables UPVC (4xDia. 110mm) [26.76] → Labor [41.16 h]; Laboratory Officer [20.58 h]; Carpenter [20.58 h]; Steelfixer [20.58 h]; Mason [20.58 h]; Surveyor [20.58 h]; Surveyor Helper [20.58 h]; SL Excavation for Trench size 60cm wide and 65cm deep ( for 2 cables); Road Crossing Duct for Street Lighting cables UPVC (4xDia. 110mm) [11.77] |
| B2.33 71 00 02 87 | Backfilling & Warrning Tape (44.00% Completed) |  | 2026-09-20 → 2026-09-15 A (-5d) | 3d → 0.2d | 44% → 100% | 96.64d → none |  | was named Backfilling & Warrning Tape; resources Labor [77.96 h]; Foreman [38.98 h]; Operator [155.92 h]; Surveyor [38.98 h]; Surveyor Helper [38.98 h]; Loader [40 h]; Water Tanker [40 h]; Dump Truck [40 h]; Plate Compactor [40 h]; Roller Compactor [40 h]; SL Excavation for Trench size 60cm wide and 65cm deep ( for 2 cables); Road Crossing Duct for Street Lighting cables UPVC (4xDia. 110mm) [8.92] → Labor [34.3 h]; Foreman [17.15 h]; Operator [68.61 h]; Surveyor [17.15 h]; Surveyor Helper [17.15 h]; Loader [17.6 h]; Water Tanker [17.6 h]; Dump Truck [17.6 h]; Plate Compactor [17.6 h]; Roller Compactor [17.6 h]; SL Excavation for Trench size 60cm wide and 65cm deep ( for 2 cables); Road Crossing Duct for Street Lighting cables UPVC (4xDia. 110mm) [3.92] |

| ID | Task | Start | Finish | Duration | Complete | Total float | Predecessors | Other |
| --- | --- | --- | --- | --- | --- | --- | --- | --- |
| Drawpits | **Drawpits** | 2026-09-17 → 2026-10-13 (+26d) | 2026-10-17 → 2026-10-19 (+2d) |  |  |  |  |  |
| B2.33 71 00 02 88 | Excavation | 2026-09-17 → 2026-10-13 (+26d) | 2026-09-20 → 2026-10-14 (+24d) |  |  | 31.88d → 30.32d | B2.33 71 00 02 85 → B2.33 71 00 02 85_R |  |
| B2.33 71 00 02 89 | Drawpits Installation | 2026-09-20 → 2026-10-15 (+25d) | 2026-09-22 → 2026-10-17 (+25d) |  |  | 107.88d → 41.32d |  |  |
| B2.33 71 00 02 90 | Backfilling & Warrning Tape | 2026-10-14 → 2026-10-18 (+4d) | 2026-10-17 → 2026-10-19 (+2d) | 3d → 2d |  | 90d → 41.32d | B2.33 71 00 02 89, B2.33 71 00 02 75 FF → B2.33 71 00 02 89 |  |
| Cables | **Cables** |  | 2026-10-26 → 2026-11-02 (+7d) |  |  |  |  |  |
| 4C,10+1C,10mm2 | **4C,10+1C,10mm2** |  | 2026-10-26 → 2026-11-02 (+7d) |  |  |  |  |  |
| B2.33 71 19 222 | Land Adjustment (44.00% Completed) |  | 2026-10-24 → 2026-09-15 A (-39d) | 6.32d → 5.2d | 44% → 100% | 84d → none | B2.33 71 00 02 88 FF, B2.33 71 16.99 FF → B2.33 71 00 02 85 | was named Land Adjustment; resources Labor [46.78 h]; Foreman [23.39 h]; Operator [31.18 h]; Surveyor [7.8 h]; Surveyor Helper [7.8 h]; Excavator (With Bucket) [24 h]; Water Tanker [24 h]; Dump Truck [24 h]; Roller Compactor [24 h]; SL Cable, Copper 4x10mm2/ CU/XLPE/SWA/PVC + 1x10mm2 CU/PVC [416.5] → Labor [20.58 h]; Foreman [10.29 h]; Operator [13.72 h]; Surveyor [3.43 h]; Surveyor Helper [3.43 h]; Excavator (With Bucket) [10.56 h]; Water Tanker [10.56 h]; Dump Truck [10.56 h]; Roller Compactor [10.56 h]; SL Cable, Copper 4x10mm2/ CU/XLPE/SWA/PVC + 1x10mm2 CU/PVC [183.26] |
| B2.33 71 49.23.192 | Cable Pulling (44.00% Completed) |  | 2026-09-17 → 2026-09-15 A (-2d) | 5.32d → 4.2d | 44% → 100% | 60.88d → none |  | was named Cable Pulling; resources Labor [77.96 h]; Foreman [38.98 h]; Surveyor [38.98 h]; Surveyor Helper [38.98 h]; Electrician [38.98 h]; SL Cable, Copper 4x10mm2/ CU/XLPE/SWA/PVC + 1x10mm2 CU/PVC [1249.49] → Labor [34.3 h]; Foreman [17.15 h]; Surveyor [17.15 h]; Surveyor Helper [17.15 h]; Electrician [17.15 h]; SL Cable, Copper 4x10mm2/ CU/XLPE/SWA/PVC + 1x10mm2 CU/PVC [549.78] |
| B2.33 71 19 232 | Backfilling (44.00% Completed) |  | 2026-10-26 → 2026-09-15 A (-41d) | 3d → 2.2d | 44% → 100% | 36d → none | B2.33 71 49.23.192 FF, B2.33 71 16.94 FF, B2.33 71 19 46 FF, B2.33 71 16.98 FF → B2.33 71 49.23.192 FF | was named Backfilling; resources Labor [93.55 h]; Foreman [46.78 h]; Operator [93.55 h]; Surveyor [46.78 h]; Surveyor Helper [46.78 h]; Loader [48 h]; Water Tanker [48 h]; Dump Truck [48 h]; Plate Compactor [48 h]; SL Cable, Copper 4x10mm2/ CU/XLPE/SWA/PVC + 1x10mm2 CU/PVC [416.5] → Labor [41.16 h]; Foreman [20.58 h]; Operator [41.16 h]; Surveyor [20.58 h]; Surveyor Helper [20.58 h]; Loader [21.12 h]; Water Tanker [21.12 h]; Dump Truck [21.12 h]; Plate Compactor [21.12 h]; SL Cable, Copper 4x10mm2/ CU/XLPE/SWA/PVC + 1x10mm2 CU/PVC [183.26] |
| SL Poles | **SL Poles** |  | 2026-09-24 → 2026-10-13 (+19d) |  |  |  |  |  |
| Pole (10 M Sngl Arm) | **Pole (10 M Single Arm)** |  | 2026-09-24 → 2026-10-13 (+19d) |  |  |  |  |  |
| B2.33 71 16.95 | Excavation (92.63% Completed) |  | 2026-09-17 → 2026-09-15 A (-2d) | 7d → 5d | 93% → 100% | 114d → none |  | was named Excavation; resources Labor [46.78 h]; Foreman [23.39 h]; Operator [46.78 h]; Surveyor [23.39 h]; Surveyor Helper [23.39 h]; Excavator (With Bucket) [24 h]; Dump Truck [24 h]; Lighting poles with 1 arm, height of ( 10) meters [6.6] → Labor [43.33 h]; Foreman [21.66 h]; Operator [43.33 h]; Surveyor [21.66 h]; Surveyor Helper [21.66 h]; Excavator (With Bucket) [22.23 h]; Dump Truck [22.23 h]; Lighting poles with 1 arm, height of ( 10) meters [6.11] |
| B2.33 71 16.96 | PC & RC Foundation (92.63% Completed) |  | 2026-09-17 → 2026-09-15 A (-2d) | 6d → 4d | 93% → 100% | 114d → none |  | was named PC & RC Foundation; resources Labor [77.96 h]; Foreman [38.98 h]; Laboratory Officer [38.98 h]; Carpenter [38.98 h]; Steelfixer [38.98 h]; Mason [38.98 h]; Lighting poles with 1 arm, height of ( 10) meters [6.6] → Labor [72.21 h]; Foreman [36.11 h]; Laboratory Officer [36.11 h]; Carpenter [36.11 h]; Steelfixer [36.11 h]; Mason [36.11 h]; Lighting poles with 1 arm, height of ( 10) meters [6.11] |
| B2.33 71 16.97 | Lighting Poles Installation Incl power box, Cables (92.63% Completed) |  | 2026-09-17 → 2026-09-15 A (-2d) | 3d → 2d | 93% → 100% | 60d → none |  | was named Lighting Poles Installation Incl power box, Cables; resources Labor [93.55 h]; Operator [93.55 h]; Mobile Crane [48 h]; Electrician [46.78 h]; Lighting poles with 1 arm, height of ( 10) meters [13.2] → Labor [86.65 h]; Operator [86.65 h]; Mobile Crane [44.46 h]; Electrician [43.33 h]; Lighting poles with 1 arm, height of ( 10) meters [12.23] |
| B2.26.56.19.17 | Lighting Luminares Inst | 2026-09-19 → 2026-10-10 (+21d) | 2026-09-20 → 2026-10-11 (+21d) |  |  | 63d → 60.32d | B2.33 71 16.97 → B2.33 71 16.97_R |  |
| B2.33 71 16.98 | Backfilling, Grouting & Chamfering | 2026-09-21 → 2026-10-12 (+21d) | 2026-09-24 → 2026-10-13 (+19d) | 3d → 2d |  | 63d → 60.32d |  |  |
| Earthing | **Earthing** | 2026-09-26 → 2026-10-31 (+35d) | 2026-10-28 → 2026-11-07 (+10d) |  |  |  |  |  |
| B2.33 71 19 47 | Land Adjustment | 2026-09-26 → 2026-10-31 (+35d) | 2026-09-28 → 2026-11-02 (+35d) |  |  | 54.88d → 39.68d | B2.33 71 16.97, B2.33 71 49.23.192, B2.33 71 00 02 82 → B2.33 71 16.97_R, B2.33 71 49.23.192_R, B2.33 71 00 02 82 |  |
| B2.33 71 19 48 | Earth Rods & Conduits | 2026-09-28 → 2026-11-02 (+35d) | 2026-09-30 → 2026-11-04 (+35d) |  |  | 58.88d → 43.68d |  |  |
| B2.33 71 19 49 | Backfilling | 2026-10-27 → 2026-11-04 (+8d) | 2026-10-28 → 2026-11-07 (+10d) |  |  | 36d → 43.68d | B2.33 71 19 48, B2.33 71 19 232 → B2.33 71 19 48, B2.33 71 19 232_R |  |
| Telecommunication | **Telecommunication Network** |  | 2026-11-17 → 2026-10-20 (-28d) |  |  |  |  |  |
| Ducts | **Ducts** |  | 2026-11-07 → 2026-10-11 (-27d) |  |  |  |  |  |
| (6*50mm) | **Size (6*50mm) HDPE ducts** |  | 2026-11-07 → 2026-10-11 (-27d) |  |  |  |  |  |
| B2.1.33 81 26.174 | Excavation (70.00% Completed) |  | 2026-10-17 → 2026-09-15 A (-32d) | 12d → 10d | 70% → 100% | 90d → none | B2.33 71 00 02 90 FF → B3.1. 33 14 13-01108 | was named Excavation; resources Labor [31.18 h]; Foreman [15.59 h]; Operator [31.18 h]; Surveyor [15.59 h]; Surveyor Helper [15.59 h]; Excavator (With Bucket) [16 h]; Water Tanker [16 h]; Dump Truck [16 h]; Plate Compactor [16 h]; (6*50mm) HDPE ducts [125.82] → Labor [21.83 h]; Foreman [10.91 h]; Operator [21.83 h]; Surveyor [10.91 h]; Surveyor Helper [10.91 h]; Excavator (With Bucket) [11.2 h]; Water Tanker [11.2 h]; Dump Truck [11.2 h]; Plate Compactor [11.2 h]; (6*50mm) HDPE ducts [88.07] |
| B2.1.33 81 26.175 | HDPE Pipe, Shuttering, Steel Fixing & Conc. Cast (70.00% Completed) |  | 2026-09-17 → 2026-09-15 A (-2d) | 10d → 8d | 70% → 100% | 107d → none |  | was named HDPE Pipe, Shuttering, Steel Fixing & Conc. Cast; resources Labor [93.55 h]; Laboratory Officer [46.78 h]; Carpenter [46.78 h]; Steelfixer [46.78 h]; Mason [46.78 h]; Surveyor [46.78 h]; Surveyor Helper [46.78 h]; (6*50mm) HDPE ducts [377.45] → Labor [65.49 h]; Laboratory Officer [32.74 h]; Carpenter [32.74 h]; Steelfixer [32.74 h]; Mason [32.74 h]; Surveyor [32.74 h]; Surveyor Helper [32.74 h]; (6*50mm) HDPE ducts [264.22] |
| B2.1.33 81 26.176 | Backfilling & Warrning Tape | 2026-11-04 → 2026-10-10 (-25d) | 2026-11-07 → 2026-10-11 (-27d) |  |  | 67.88d → 105.32d | B2.1.33 81 26.175, B2.1.33 81 26.98 → B2.1.33 81 26.175_R |  |
| (6*50mm+2*32mm) | **Size (6*50mm+2*32mm) HDPE ducts** |  | 2026-09-20 → 2026-10-11 (+21d) |  |  |  |  |  |
| B2.1.33 81 26.177 | Excavation (70.00% Completed) |  | 2026-09-17 → 2026-09-15 A (-2d) | 12d → 10d | 70% → 100% | 51d → none |  | was named Excavation; resources Labor [31.18 h]; Foreman [15.59 h]; Operator [31.18 h]; Surveyor [15.59 h]; Surveyor Helper [15.59 h]; Excavator (With Bucket) [16 h]; Water Tanker [16 h]; Dump Truck [16 h]; Plate Compactor [16 h]; (6*50mm+2*32mm) HDPE ducts [48.51] → Labor [21.83 h]; Foreman [10.91 h]; Operator [21.83 h]; Surveyor [10.91 h]; Surveyor Helper [10.91 h]; Excavator (With Bucket) [11.2 h]; Water Tanker [11.2 h]; Dump Truck [11.2 h]; Plate Compactor [11.2 h]; (6*50mm+2*32mm) HDPE ducts [33.95] |
| B2.1.33 81 26.178 | HDPE Pipe, Shuttering, Steel Fixing & Conc. Cast (70.00% Completed) |  | 2026-09-17 → 2026-09-15 A (-2d) | 9d → 7d | 70% → 100% | 103d → none |  | was named HDPE Pipe, Shuttering, Steel Fixing & Conc. Cast; resources Labor [93.55 h]; Laboratory Officer [46.78 h]; Carpenter [46.78 h]; Steelfixer [46.78 h]; Mason [46.78 h]; Surveyor [46.78 h]; Surveyor Helper [46.78 h]; (6*50mm+2*32mm) HDPE ducts [145.49] → Labor [65.49 h]; Laboratory Officer [32.74 h]; Carpenter [32.74 h]; Steelfixer [32.74 h]; Mason [32.74 h]; Surveyor [32.74 h]; Surveyor Helper [32.74 h]; (6*50mm+2*32mm) HDPE ducts [101.84] |
| B2.1.33 81 26.179 | Backfilling & Warrning Tape | 2026-09-19 → 2026-10-10 (+21d) | 2026-09-20 → 2026-10-11 (+21d) |  |  | 103d → 99.32d | B2.1.33 81 26.178 → B2.1.33 81 26.178_R |  |
| (6*50mm+4*32mm) | **Size (6*50mm+4*32mm) HDPE ducts** |  | 2026-09-20 → 2026-10-11 (+21d) |  |  |  |  |  |
| B2.1.33 81 26.180 | Excavation (70.00% Completed) |  | 2026-09-17 → 2026-09-15 A (-2d) | 12d → 10d | 70% → 100% | 51d → none |  | was named Excavation; resources Labor [31.18 h]; Foreman [15.59 h]; Operator [31.18 h]; Surveyor [15.59 h]; Surveyor Helper [15.59 h]; Excavator (With Bucket) [16 h]; Water Tanker [16 h]; Dump Truck [16 h]; Plate Compactor [16 h]; (6*50mm+4*32mm) HDPE ducts [15] → Labor [21.83 h]; Foreman [10.91 h]; Operator [21.83 h]; Surveyor [10.91 h]; Surveyor Helper [10.91 h]; Excavator (With Bucket) [11.2 h]; Water Tanker [11.2 h]; Dump Truck [11.2 h]; Plate Compactor [11.2 h]; (6*50mm+4*32mm) HDPE ducts [10.5] |
| B2.1.33 81 26.181 | HDPE Pipe, Shuttering, Steel Fixing & Conc. Cast (70.00% Completed) |  | 2026-09-17 → 2026-09-15 A (-2d) | 8d → 6d | 70% → 100% | 105d → none |  | was named HDPE Pipe, Shuttering, Steel Fixing & Conc. Cast; resources Labor [93.55 h]; Laboratory Officer [46.78 h]; Carpenter [46.78 h]; Steelfixer [46.78 h]; Mason [46.78 h]; Surveyor [46.78 h]; Surveyor Helper [46.78 h]; (6*50mm+4*32mm) HDPE ducts [45] → Labor [65.49 h]; Laboratory Officer [32.74 h]; Carpenter [32.74 h]; Steelfixer [32.74 h]; Mason [32.74 h]; Surveyor [32.74 h]; Surveyor Helper [32.74 h]; (6*50mm+4*32mm) HDPE ducts [31.5] |
| B2.1.33 81 26.182 | Backfilling & Warrning Tape | 2026-09-19 → 2026-10-10 (+21d) | 2026-09-20 → 2026-10-11 (+21d) |  |  | 105d → 101.32d | B2.1.33 81 26.181 → B2.1.33 81 26.181_R |  |
| Manholes | **Manholes** | 2026-09-19 → 2026-10-10 (+21d) | 2026-09-30 → 2026-10-20 (+20d) |  |  |  |  |  |
| Manhole Type 1 | **Manhole Type 1** | 2026-09-19 → 2026-10-10 (+21d) | 2026-09-26 → 2026-10-15 (+19d) |  |  |  |  |  |
| B2.31 23 00.633 | Excavation | 2026-09-19 → 2026-10-10 (+21d) | 2026-09-20 → 2026-10-11 (+21d) |  |  | 51d → 93.32d | B2.1.33 81 26.180 → B2.1.33 81 26.180_R |  |
| B2.33 71 00.274 | Manhole Installation | 2026-09-21 → 2026-10-12 (+21d) | 2026-09-22 → 2026-10-13 (+21d) |  |  | 99d → 95.32d |  |  |
| B2.33 71 00.275 | Backfilling & Warrning Tape | 2026-09-24 → 2026-10-14 (+20d) | 2026-09-26 → 2026-10-15 (+19d) |  |  | 99d → 95.32d |  |  |
| Manhole Type 2 | **Manhole Type 2** | 2026-09-21 → 2026-10-12 (+21d) | 2026-09-30 → 2026-10-20 (+20d) |  |  |  |  |  |
| B2.31 23 00.634 | Excavation | 2026-09-21 → 2026-10-12 (+21d) | 2026-09-24 → 2026-10-14 (+20d) |  |  | 51d → 93.32d |  |  |
| B2.33 71 00.276 | Manhole Installation | 2026-09-26 → 2026-10-15 (+19d) | 2026-09-27 → 2026-10-17 (+20d) |  |  | 97d → 93.32d |  |  |
| B2.33 71 00.277 | Backfilling & Warrning Tape | 2026-09-28 → 2026-10-18 (+20d) | 2026-09-30 → 2026-10-20 (+20d) |  |  | 97d → 93.32d |  |  |
| Crossing Ducts | **Road Crossing Ducts** | 2026-09-20 → 2026-10-11 (+21d) | 2026-11-17 → 2026-10-17 (-31d) |  |  |  |  |  |
| 1 | **Size (6X50mm) HDPE** | 2026-09-20 → 2026-10-11 (+21d) | 2026-11-17 → 2026-10-17 (-31d) |  |  |  |  |  |
| B2.31 23 00.632 | Excavation | 2026-09-20 → 2026-10-11 (+21d) | 2026-09-21 → 2026-10-12 (+21d) |  |  | 55d → 53.32d | B2.31 23 00.643 → B2.31 23 00.643_R |  |
| B2.33 71 00.272 | Shuttering, Steel Fixing Incl. UPVC Pipe & Conc. Cast | 2026-09-22 → 2026-10-13 (+21d) | 2026-09-24 → 2026-10-14 (+20d) |  |  | 103d → 100.32d |  |  |
| B2.33 71 00.273 | Backfilling & Warrning Tape | 2026-11-15 → 2026-10-15 (-31d) | 2026-11-17 → 2026-10-17 (-31d) |  |  | 59.88d → 100.32d | B2.33 71 00.272, B2.1.33 81 26.71, B2.1.33 81 26.80, B2.1.33 81 26.155, B2.1.33 81 26.83, B2.33 71 00.223, B2.33 71 00.261 → B2.33 71 00.272 |  |
| Earth & Road Works | **Earth & Road Works** |  | 2026-11-29 → 2026-12-19 (+20d) |  |  |  |  |  |
| Earth Layers | **Earth Layers** |  | 2026-09-21 → 2026-10-08 (+17d) |  |  |  |  |  |
| B1.2.32 11 13.01.16 | Subgrade (65.00% Completed) |  | 2026-09-21 → 2026-09-15 A (-6d) | 192.4d → 187.4d | 65% → 100% | 111d → none |  | was named Subgrade; resources Subgrade [1071.99]; Labor [31.18 h]; Foreman [15.59 h]; Operator [31.18 h]; Surveyor [15.59 h]; Surveyor Helper [15.59 h]; Grader [16 h]; Loader [16 h]; Water Tanker [16 h]; Dump Truck [16 h]; Plate Compactor [16 h]; Roller Compactor [16 h] → Subgrade [696.79]; Labor [20.27 h]; Foreman [10.14 h]; Operator [20.27 h]; Surveyor [10.14 h]; Surveyor Helper [10.14 h]; Grader [10.4 h]; Loader [10.4 h]; Water Tanker [10.4 h]; Dump Truck [10.4 h]; Plate Compactor [10.4 h]; Roller Compactor [10.4 h] |
| B1.2.32 11 23.01.16 | Aggregate Base Course (25.00% Completed) |  | 2026-09-17 → 2026-09-15 A (-2d) | 99.48d → 97.98d | 25% → 100% | 30.5d → none |  | was named Aggregate Base Course; resources Aggregate base course [714.65]; Labor [31.18 h]; Foreman [15.59 h]; Operator [31.18 h]; Surveyor [15.59 h]; Surveyor Helper [15.59 h]; Grader [16 h]; Loader [16 h]; Water Tanker [16 h]; Dump Truck [16 h]; Plate Compactor [16 h]; Roller Compactor [16 h] → Aggregate base course [178.66]; Labor [7.8 h]; Foreman [3.9 h]; Operator [7.8 h]; Surveyor [3.9 h]; Surveyor Helper [3.9 h]; Grader [4 h]; Loader [4 h]; Water Tanker [4 h]; Dump Truck [4 h]; Plate Compactor [4 h]; Roller Compactor [4 h] |
| Interlock | **Interlock** | 2026-09-17 → 2026-10-08 (+21d) | 2026-09-21 → 2026-10-12 (+21d) |  |  |  |  |  |
| B1.2.32 14 13.13.16 | 60mm thick - Interlocking Block Pavers | 2026-09-17 → 2026-10-08 (+21d) | 2026-09-21 → 2026-10-12 (+21d) |  |  | 30.5d → 31.82d | B1.2.32 11 23.01.16 → B1.2.32 11 23.01.16_R |  |
| Curbstone | **Curbstone** | 2026-09-21 → 2026-10-12 (+21d) | 2026-10-12 → 2026-11-01 (+20d) |  |  |  |  |  |
| Pre Install | **Pre-Installation** | 2026-09-21 → 2026-10-12 (+21d) | 2026-09-29 → 2026-10-19 (+20d) |  |  |  |  |  |
| B2.31 23 00.451 | Excavation | 2026-09-21 → 2026-10-12 (+21d) | 2026-09-24 → 2026-10-14 (+20d) |  |  | 30.5d → 31.82d |  |  |
| B1.2.32 14 13.13.216 | PCC | 2026-09-24 → 2026-10-14 (+20d) | 2026-09-27 → 2026-10-17 (+20d) |  |  | 30.5d → 31.82d |  |  |
| 32 16 13.0016 | Haunching | 2026-09-27 → 2026-10-17 (+20d) | 2026-09-29 → 2026-10-19 (+20d) |  |  | 30.5d → 31.82d |  |  |
| Installation | **Installation** | 2026-09-29 → 2026-10-19 (+20d) | 2026-10-10 → 2026-10-29 (+19d) |  |  |  |  |  |
| B1.2.32 16.13.01.16 | Curb Stone, Type K1 | 2026-09-29 → 2026-10-19 (+20d) | 2026-10-03 → 2026-10-22 (+19d) |  |  | 30.5d → 31.82d |  |  |
| B1.2.32 16.13.02.15 | Dropped Curb, Type K3 | 2026-10-03 → 2026-10-22 (+19d) | 2026-10-04 → 2026-10-24 (+20d) |  |  | 30.5d → 31.82d |  |  |
| B1.2.32 16.13.03.16 | Edge Curb, Type K4 | 2026-10-04 → 2026-10-24 (+20d) | 2026-10-05 → 2026-10-25 (+20d) |  |  | 30.5d → 31.82d |  |  |
| B1.2.32 16.13.0416 | Heel Curb, Type K5 | 2026-10-05 → 2026-10-25 (+20d) | 2026-10-07 → 2026-10-27 (+20d) |  |  | 30.5d → 31.82d |  |  |
| B1.2.32 16.13.05.15 | Transition Curb | 2026-10-07 → 2026-10-27 (+20d) | 2026-10-10 → 2026-10-29 (+19d) |  |  | 30.5d → 31.82d |  |  |
| Finishing | **Finishing** | 2026-10-10 → 2026-10-29 (+19d) | 2026-10-12 → 2026-11-01 (+20d) |  |  |  |  |  |
| 32 16 13.016 | Finishing, Fareface | 2026-10-10 → 2026-10-29 (+19d) | 2026-10-12 → 2026-11-01 (+20d) |  |  | 30.5d → 31.82d |  |  |
| Asphalt Layers | **Asphalt Layers** | 2026-09-17 → 2026-10-08 (+21d) | 2026-11-18 → 2026-12-08 (+20d) |  |  |  |  |  |
| B1.2.32 11 26.01.16 | Bituminous Base Course including Prime Coat (MC1) and tack coat (RC2) | 2026-09-17 → 2026-10-08 (+21d) | 2026-09-20 → 2026-10-11 (+21d) |  |  | 48.5d → 49.82d | B1.2.32 11 23.01.16 → B1.2.32 11 23.01.16_R |  |
| B1.2.32 12 16.01.16 | Bituminous concrete Wearing Course, including tack coat (RC2) | 2026-11-14 → 2026-12-03 (+19d) | 2026-11-18 → 2026-12-08 (+20d) |  |  | 3d → 4.32d |  |  |

| ID | Task | Start | Finish | Duration | Complete | Total float | Predecessors | Other |
| --- | --- | --- | --- | --- | --- | --- | --- | --- |
| Pavement Marking | **Pavement Marking** | 2026-11-22 → 2026-12-14 (+22d) | 2026-11-29 → 2026-12-19 (+20d) |  |  |  |  |  |
| B1.2.32 17 23.02.16 | Retroreflective Thermoplastic Yellow, Traffic lines | 2026-11-22 → 2026-12-14 (+22d) | 2026-11-23 → 2026-12-16 (+23d) |  |  | 56d → 50.91d | B1.2.32 12 16.01.16, B1.2.32 12 19.13.016, B1.2.32 12 19.13.15 SS → B1.2.32 12 16.01.16, B1.2.32 12 19.13.016 FF, B1.2.32 12 19.13.15 SS |  |
| B1.2.32 17 23.01.16 | Retroreflective Thermoplastic White Traffic lines | 2026-11-28 → 2026-12-16 (+18d) | 2026-11-29 → 2026-12-19 (+20d) |  |  | 53d → 50.91d | B1.2.32 12 16.01.16, B1.2.32 12 19.13.016, B1.2.10 14 14.0211, B1.2.10 14 53.0114 SS, B1.2.10 14 53.0110, 32 16 13.03, B1.2.32 17 23.01.3, B1.2.10 14 53.0112, B1.2.32 17 23.02.16 → B1.2.32 12 16.01.16, B1.2.32 12 19.13.016, B1.2.10 14 14.0211, B1.2.10 14 53.0114 SS, B1.2.10 14 53.0110, 32 16 13.03, B1.2.32 17 23.01.3, B1.2.10 14 53.0112 FF, B1.2.32 17 23.02.16 |  |
| Road Misc. | **Miscellaneous** | 2026-11-19 → 2026-12-09 (+20d) | 2026-11-21 → 2026-12-16 (+25d) |  |  |  |  |  |
| B1.2.32 12 19.13.15 | Wheels stoppers (precast concrete) | 2026-11-19 → 2026-12-09 (+20d) | 2026-11-21 → 2026-12-10 (+19d) |  |  | 58d → 55.32d |  |  |
| B1.2.32 12 19.13.016 | Speed Tables | 2026-11-19 → 2026-12-14 (+25d) | 2026-11-21 → 2026-12-16 (+25d) |  |  | 56d → 50.91d |  |  |
| Landscape | **Landscape** | 2026-12-06 → 2026-12-24 (+18d) | 2026-12-12 → 2026-12-30 (+18d) |  |  |  |  |  |
| Trees | **Trees** | 2026-12-06 → 2026-12-24 (+18d) | 2026-12-12 → 2026-12-30 (+18d) |  |  |  |  |  |
| B7.32 93 43.02-191 | Tamarindus indica | 2026-12-06 → 2026-12-24 (+18d) | 2026-12-12 → 2026-12-30 (+18d) |  |  | 3.76d → 3d |  |  |
| Road 04 | **Road 04** |  | 2026-12-17 → 2027-01-05 (+19d) |  |  |  |  |  |
| Wet Networks | **Wet Networks** |  | 2026-10-31 → 2026-11-19 (+19d) |  |  |  |  |  |
| Stormwater Network | **Stormwater Network** |  | 2026-09-20 → 2026-10-07 (+17d) |  |  |  |  |  |
| GRP | **GRP** |  | 2026-09-20 → 2026-10-07 (+17d) |  |  |  |  |  |
| B6.33 42 11.01-1.10 | Excavation |  |  |  |  |  | B6.33 05 39.01.3977 SS → B1.2.31 23 23.01.17 |  |
| B6.33 42 11.01-1.42 | Backfilling & Warrning Tape |  |  |  |  |  | B6.33 42 11.01-1.34, B6.33 42 11.01-136 SS, B6.33 42 11.31-1 10 SS → B6.33 42 11.01-1.34 |  |
| ?40021 | **?700** |  | 2026-09-19 → 2026-10-07 (+18d) |  |  |  |  |  |
| 4 | **Depth From 1.5m to 2.5m** |  | 2026-09-19 → 2026-10-07 (+18d) |  |  |  |  |  |
| B6.33 42 11.01-1.30 | Pipe Laying (71.06% Completed) |  | 2026-09-19 → 2026-09-15 A (-4d) | 95d → 93d | 71% → 100% | 113d → none |  | was named Pipe Laying; resources Labor [31.18 h]; Foreman [15.59 h]; Plumber Helper [15.59 h]; Plumber [15.59 h]; Operator [15.59 h]; Surveyor [15.59 h]; Surveyor Helper [15.59 h]; Mobile Crane [16 h]; 1.51m - 2.5m [29.63] → Labor [22.16 h]; Foreman [11.08 h]; Plumber Helper [11.08 h]; Plumber [11.08 h]; Operator [11.08 h]; Surveyor [11.08 h]; Surveyor Helper [11.08 h]; Mobile Crane [11.37 h]; 1.51m - 2.5m [21.06] |
| B6.33 42 11.01-1.38 | Embedment & Test (67.47% Completed) |  | 2026-09-19 → 2026-09-15 A (-4d) | 93.15d → 91.6d | 67% → 100% | 113d → none |  | was named Embedment & Test; resources Labor [62.37 h]; Foreman [31.18 h]; Plumber Helper [31.18 h]; Plumber [31.18 h]; Operator [62.37 h]; Surveyor [31.18 h]; Surveyor Helper [31.18 h]; Loader [32 h]; Water Tanker [32 h]; Dump Truck [32 h]; Plate Compactor [32 h]; Roller Compactor [32 h]; 1.51m - 2.5m [13.17] → Labor [42.08 h]; Foreman [21.04 h]; Plumber Helper [21.04 h]; Plumber [21.04 h]; Operator [42.08 h]; Surveyor [21.04 h]; Surveyor Helper [21.04 h]; Loader [21.59 h]; Water Tanker [21.59 h]; Dump Truck [21.59 h]; Plate Compactor [21.59 h]; Roller Compactor [21.59 h]; 1.51m - 2.5m [8.88] |
| B6.33 42 11.01-1.46 | Backfilling & Warrning Tape (6.35% Completed) |  | 2026-09-19 → 2026-09-15 A (-4d) | 92.54d → 90.6d | 6% → 100% | 113.06d → none |  | was named Backfilling & Warrning Tape; resources Labor [77.96 h]; Foreman [38.98 h]; Operator [155.92 h]; Surveyor [38.98 h]; Surveyor Helper [38.98 h]; Loader [40 h]; Water Tanker [40 h]; Dump Truck [40 h]; Plate Compactor [40 h]; Roller Compactor [40 h]; 1.51m - 2.5m [6.59] → Labor [4.95 h]; Foreman [2.48 h]; Operator [9.9 h]; Surveyor [2.48 h]; Surveyor Helper [2.48 h]; Loader [2.54 h]; Water Tanker [2.54 h]; Dump Truck [2.54 h]; Plate Compactor [2.54 h]; Roller Compactor [2.54 h]; 1.51m - 2.5m [0.42] |
| ?400211 | **?800** |  | 2026-09-20 → 2026-10-07 (+17d) |  |  |  |  |  |
| 4 | **Depth From 1.5m to 2.5m** |  | 2026-09-20 → 2026-10-07 (+17d) |  |  |  |  |  |
| B6.33 42 11.01-1.32 | Pipe Laying (69.06% Completed) |  | 2026-09-19 → 2026-09-15 A (-4d) | 89.6d → 87.6d | 69% → 100% | 113d → none |  | was named Pipe Laying; resources Labor [31.18 h]; Foreman [15.59 h]; Plumber Helper [15.59 h]; Plumber [15.59 h]; Operator [15.59 h]; Surveyor [15.59 h]; Surveyor Helper [15.59 h]; Mobile Crane [16 h]; 1.51m - 2.5m [43.38] → Labor [21.54 h]; Foreman [10.77 h]; Plumber Helper [10.77 h]; Plumber [10.77 h]; Operator [10.77 h]; Surveyor [10.77 h]; Surveyor Helper [10.77 h]; Mobile Crane [11.05 h]; 1.51m - 2.5m [29.96] |
| B6.33 42 11.01-1.40 | Embedment & Test (59.61% Completed) |  | 2026-09-19 → 2026-09-15 A (-4d) | 87.44d → 85.6d | 60% → 100% | 113d → none |  | was named Embedment & Test; resources Labor [62.37 h]; Foreman [31.18 h]; Plumber Helper [31.18 h]; Plumber [31.18 h]; Operator [62.37 h]; Surveyor [31.18 h]; Surveyor Helper [31.18 h]; Loader [32 h]; Water Tanker [32 h]; Dump Truck [32 h]; Plate Compactor [32 h]; Roller Compactor [32 h]; 1.51m - 2.5m [19.28] → Labor [37.18 h]; Foreman [18.59 h]; Plumber Helper [18.59 h]; Plumber [18.59 h]; Operator [37.18 h]; Surveyor [18.59 h]; Surveyor Helper [18.59 h]; Loader [19.08 h]; Water Tanker [19.08 h]; Dump Truck [19.08 h]; Plate Compactor [19.08 h]; Roller Compactor [19.08 h]; 1.51m - 2.5m [11.49] |
| B6.33 42 11.01-1.48 | Backfilling & Warrning Tape (59.61% Completed) |  | 2026-09-20 → 2026-09-15 A (-5d) | 83.9d → 81.6d | 60% → 100% | 112.7d → none |  | was named Backfilling & Warrning Tape; resources Labor [77.96 h]; Foreman [38.98 h]; Operator [155.92 h]; Surveyor [38.98 h]; Surveyor Helper [38.98 h]; Loader [40 h]; Water Tanker [40 h]; Dump Truck [40 h]; Plate Compactor [40 h]; Roller Compactor [40 h]; 1.51m - 2.5m [9.63] → Labor [46.48 h]; Foreman [23.24 h]; Operator [92.95 h]; Surveyor [23.24 h]; Surveyor Helper [23.24 h]; Loader [23.85 h]; Water Tanker [23.85 h]; Dump Truck [23.85 h]; Plate Compactor [23.85 h]; Roller Compactor [23.85 h]; 1.51m - 2.5m [5.74] |
| Strom Manholes | **Manholes** |  | 2026-09-19 → 2026-10-04 (+15d) |  |  |  |  |  |
| 3 | **?2000** |  | 2026-09-19 → 2026-10-04 (+15d) |  |  |  |  |  |
| 1 | **Depth From 2.5m to 3.5m** |  | 2026-09-19 → 2026-10-04 (+15d) |  |  |  |  |  |
| B6.33 05 39.01.4257 | Test, Internal Finishing, Benching & Cover (97.00% Completed) |  | 2026-09-19 → 2026-09-15 A (-4d) | 72.89d → 70.89d | 97% → 100% | 113d → none |  | was named Test, Internal Finishing, Benching & Cover; resources Labor [62.37 h]; Foreman [31.18 h]; Plumber Helper [31.18 h]; Plumber [31.18 h]; Mason [31.18 h]; Storm MH depth 2.51 - 3.5m [0.42] → Labor [60.5 h]; Foreman [30.25 h]; Plumber Helper [30.25 h]; Plumber [30.25 h]; Mason [30.25 h]; Storm MH depth 2.51 - 3.5m [0.4] |
| B6.33 05 39.01.4267 | Backfilling (97.00% Completed) |  | 2026-09-19 → 2026-09-15 A (-4d) | 71d → 69d | 97% → 100% | 113d → none |  | was named Backfilling; resources Labor [77.96 h]; Foreman [38.98 h]; Operator [77.96 h]; Surveyor [38.98 h]; Surveyor Helper [38.98 h]; Loader [40 h]; Water Tanker [40 h]; Dump Truck [40 h]; Plate Compactor [40 h]; Storm MH depth 2.51 - 3.5m [0.91] → Labor [75.62 h]; Foreman [37.81 h]; Operator [75.62 h]; Surveyor [37.81 h]; Surveyor Helper [37.81 h]; Loader [38.8 h]; Water Tanker [38.8 h]; Dump Truck [38.8 h]; Plate Compactor [38.8 h]; Storm MH depth 2.51 - 3.5m [0.88] |
| Catch Basins | **Catch Basins** |  | 2026-09-19 → 2026-10-03 (+14d) |  |  |  |  |  |
| Sing | **Single** |  | 2026-09-19 → 2026-10-03 (+14d) |  |  |  |  |  |
| B6.33 05 40.01.630 | Catch Basin Installation (91.00% Completed) |  | 2026-09-19 → 2026-09-15 A (-4d) | 82d → 80d | 91% → 100% | 113d → none |  | was named Catch Basin Installation; resources Labor [46.78 h]; Foreman [23.39 h]; Carpenter [23.39 h]; Steelfixer [23.39 h]; Mason [23.39 h]; Operator [46.78 h]; Surveyor [23.39 h]; Surveyor Helper [23.39 h]; Boom Truck [24 h]; Single Catch basin [8.93] → Labor [42.57 h]; Foreman [21.28 h]; Carpenter [21.28 h]; Steelfixer [21.28 h]; Mason [21.28 h]; Operator [42.57 h]; Surveyor [21.28 h]; Surveyor Helper [21.28 h]; Boom Truck [21.84 h]; Single Catch basin [8.13] |
| B6.33 05 40.01.640 | Backfilling, DI Frame & Grate Cover Fixing (91.00% Completed) |  | 2026-09-19 → 2026-09-15 A (-4d) | 80.33d → 78.33d | 91% → 100% | 30d → none |  | was named Backfilling, DI Frame & Grate Cover Fixing; resources Labor [77.96 h]; Foreman [38.98 h]; Operator [77.96 h]; Surveyor [38.98 h]; Surveyor Helper [38.98 h]; Loader [40 h]; Water Tanker [40 h]; Dump Truck [40 h]; Plate Compactor [40 h]; Single Catch basin [5.96] → Labor [70.95 h]; Foreman [35.47 h]; Operator [70.95 h]; Surveyor [35.47 h]; Surveyor Helper [35.47 h]; Loader [36.4 h]; Water Tanker [36.4 h]; Dump Truck [36.4 h]; Plate Compactor [36.4 h]; Single Catch basin [5.42] |
| UPVC | **UPVC** |  | 2026-09-19 → 2026-09-30 (+11d) |  |  |  |  |  |
| UPVC300 | **?300 From 0.0 to 1.5m** |  | 2026-09-19 → 2026-09-30 (+11d) |  |  |  |  |  |
| B6.33 42 11.35-118 | Catch Basin Opening Prep. (67.00% Completed) |  | 2026-09-19 → 2026-09-15 A (-4d) | 82d → 80d | 67% → 100% | 113d → none |  | was named Catch Basin Opening Prep.; resources Labor [31.18 h]; Foreman [15.59 h]; Plumber Helper [15.59 h]; Plumber [15.59 h]; less than 1.5 [46.62] → Labor [20.89 h]; Foreman [10.45 h]; Plumber Helper [10.45 h]; Plumber [10.45 h]; less than 1.5 [31.23] |
| B6.33 42 11.35-130 | Fittings & Pipe Installation (67.00% Completed) |  | 2026-09-19 → 2026-09-15 A (-4d) | 82d → 80d | 67% → 100% | 113d → none |  | was named Fittings & Pipe Installation; resources Labor [31.18 h]; Foreman [15.59 h]; Plumber Helper [15.59 h]; Plumber [15.59 h]; Surveyor [15.59 h]; Surveyor Helper [15.59 h]; less than 1.5 [186.46] → Labor [20.89 h]; Foreman [10.45 h]; Plumber Helper [10.45 h]; Plumber [10.45 h]; Surveyor [10.45 h]; Surveyor Helper [10.45 h]; less than 1.5 [124.93] |
| UPVC3001 | **?400 From 0.0 to 1.5m** |  | 2026-09-19 → 2026-09-26 (+7d) |  |  |  |  |  |
| B6.33 42 11.36-1103 | Fittings & Pipe Installation (67.00% Completed) |  | 2026-09-19 → 2026-09-15 A (-4d) | 82d → 80d | 67% → 100% | 113d → none |  | was named Fittings & Pipe Installation; resources Labor [31.18 h]; Foreman [15.59 h]; Plumber Helper [15.59 h]; Plumber [15.59 h]; Surveyor [15.59 h]; Surveyor Helper [15.59 h]; less than 1.5 [186.46] → Labor [20.89 h]; Foreman [10.45 h]; Plumber Helper [10.45 h]; Plumber [10.45 h]; Surveyor [10.45 h]; Surveyor Helper [10.45 h]; less than 1.5 [124.93] |
| B6.33 42 11.36-191 | Catch Basin Opening Prep. (67.00% Completed) |  | 2026-09-19 → 2026-09-15 A (-4d) | 82d → 80d | 67% → 100% | 113d → none |  | was named Catch Basin Opening Prep.; resources Labor [31.18 h]; Foreman [15.59 h]; Plumber Helper [15.59 h]; Plumber [15.59 h]; less than 1.5 [46.62] → Labor [20.89 h]; Foreman [10.45 h]; Plumber Helper [10.45 h]; Plumber [10.45 h]; less than 1.5 [31.23] |
| Sewerage Network | **Sewerage Network** |  | 2026-09-20 → 2026-10-11 (+21d) |  |  |  |  |  |
| GRP | **GRP Pipes** |  | 2026-09-20 → 2026-10-11 (+21d) |  |  |  |  |  |
| 200 | **?200** |  | 2026-09-20 → 2026-10-11 (+21d) |  |  |  |  |  |
| 2 | **Depth From 2.5m to 3.5m** |  | 2026-09-20 → 2026-10-11 (+21d) |  |  |  |  |  |
| B5.33 31 00.01.0238 | Embedment & Test (4.61% Completed) |  | 2026-09-20 → 2026-09-15 A (-5d) | 69.15d → 65.34d | 5% → 100% | 112.19d → none |  | was named Embedment & Test; resources Labor [62.37 h]; Foreman [31.18 h]; Plumber Helper [31.18 h]; Plumber [31.18 h]; Operator [62.37 h]; Surveyor [31.18 h]; Surveyor Helper [31.18 h]; Loader [32 h]; Water Tanker [32 h]; Dump Truck [32 h]; Plate Compactor [32 h]; Roller Compactor [32 h]; Sew Dia. 200mm Depth: 2.51m - 3.5m [62.03] → Labor [2.87 h]; Foreman [1.44 h]; Plumber Helper [1.44 h]; Plumber [1.44 h]; Operator [2.87 h]; Surveyor [1.44 h]; Surveyor Helper [1.44 h]; Loader [1.47 h]; Water Tanker [1.47 h]; Dump Truck [1.47 h]; Plate Compactor [1.47 h]; Roller Compactor [1.47 h]; Sew Dia. 200mm Depth: 2.51m - 3.5m [2.86] |
| B5.33 31 00.01.0246 | Backfilling & Warrning Tape |  |  |  |  |  | B5.33 31 00.01.0244, B5.33 31 00.01.0238 SS → B5.33 31 00.01.0244 |  |
| 1 | **Depth From 3.5m to 4.5m** |  | 2026-09-20 → 2026-10-11 (+21d) |  |  |  |  |  |
| B5.33 31 00.01.0240 | Embedment & Test (4.42% Completed) |  | 2026-09-20 → 2026-09-15 A (-5d) | 68.82d → 65d | 4% → 100% | 112d → none | B5.33 31 00.01.0232, B3.33 14 19.01.103 FF → B5.33 31 00.01.0232 | was named Embedment & Test; resources Labor [62.37 h]; Foreman [31.18 h]; Plumber Helper [31.18 h]; Plumber [31.18 h]; Operator [62.37 h]; Surveyor [31.18 h]; Surveyor Helper [31.18 h]; Loader [32 h]; Water Tanker [32 h]; Dump Truck [32 h]; Plate Compactor [32 h]; Roller Compactor [32 h]; Sew Dia. 200mm Depth: 3.51m - 4.5m [83.61] → Labor [2.76 h]; Foreman [1.38 h]; Plumber Helper [1.38 h]; Plumber [1.38 h]; Operator [2.76 h]; Surveyor [1.38 h]; Surveyor Helper [1.38 h]; Loader [1.42 h]; Water Tanker [1.42 h]; Dump Truck [1.42 h]; Plate Compactor [1.42 h]; Roller Compactor [1.42 h]; Sew Dia. 200mm Depth: 3.51m - 4.5m [3.7] |
| B5.33 31 00.01.0248 | Backfilling & Warrning Tape |  |  |  |  |  | B5.33 31 00.01.0246, B5.33 31 00.01.0240 SS → B5.33 31 00.01.0246 |  |
| Manholes | **Manholes ?1200** |  | 2026-09-19 → 2026-10-08 (+19d) |  |  |  |  |  |
| 3 | **Depth From 1.5m to 2.5m** |  | 2026-09-19 → 2026-10-08 (+19d) |  |  |  |  |  |
| B6.33 05 39.01.1757 | Test, Internal Finishing, Benching & Cover (45.60% Completed) |  | 2026-09-19 → 2026-09-15 A (-4d) | 85.52d → 83.34d | 46% → 100% | 113.82d → none |  | was named Test, Internal Finishing, Benching & Cover; resources Labor [62.37 h]; Foreman [31.18 h]; Plumber Helper [31.18 h]; Plumber [31.18 h]; Mason [31.18 h]; MH depth 1.51 - 2.5m [0.55] → Labor [28.44 h]; Foreman [14.22 h]; Plumber Helper [14.22 h]; Plumber [14.22 h]; Mason [14.22 h]; MH depth 1.51 - 2.5m [0.25] |
| B6.33 05 39.01.1767 | Backfilling |  |  |  |  |  | B6.33 05 39.01.1757 SS, DMM2-Proc-PO-017 → DMM2-Proc-PO-017 |  |
| 1 | **Depth From 3.5m to 4.5m** |  | 2026-09-19 → 2026-10-08 (+19d) |  |  |  |  |  |
| B6.33 05 39.01.1857 | Test, Internal Finishing, Benching & Cover (45.60% Completed) |  | 2026-09-19 → 2026-09-15 A (-4d) | 70.52d → 68.34d | 46% → 100% | 113.82d → none |  | was named Test, Internal Finishing, Benching & Cover; resources Labor [62.37 h]; Foreman [31.18 h]; Plumber Helper [31.18 h]; Plumber [31.18 h]; Mason [31.18 h]; MH depth 3.51 -4.5m [1.03] → Labor [28.44 h]; Foreman [14.22 h]; Plumber Helper [14.22 h]; Plumber [14.22 h]; Mason [14.22 h]; MH depth 3.51 -4.5m [0.47] |
| B6.33 05 39.01.1867 | Backfilling |  |  |  |  |  | B6.33 05 39.01.1817, B6.33 05 39.01.1857 SS → B6.33 05 39.01.1817 |  |
| Potable Water | **Potable Water Network** |  | 2026-10-07 → 2026-10-27 (+20d) |  |  |  |  |  |
| HDPE | **HDPE Pipes** |  | 2026-09-19 → 2026-10-10 (+21d) |  |  |  |  |  |
| ?110mm | **?110mm** |  | 2026-09-19 → 2026-10-10 (+21d) |  |  |  |  |  |
| Depth: 0.0m - 1.5m | **Depth: 0.0m - 1.5m** |  | 2026-09-19 → 2026-09-26 (+7d) |  |  |  |  |  |
| B3.33 14 13.01.0191 | Excavation |  |  |  |  |  | B3.33 14 13-1193 SS → B6.33 05 39.01.1727 |  |
| B3.33 14 13.01.0199 | Pipe Laying (80.00% Completed) |  | 2026-09-19 → 2026-09-15 A (-4d) | 95.46d → 93.46d | 80% → 100% | 113d → none |  | was named Pipe Laying; resources Labor [31.18 h]; Foreman [15.59 h]; Plumber Helper [15.59 h]; Plumber [15.59 h]; Operator [15.59 h]; Surveyor [15.59 h]; Surveyor Helper [15.59 h]; Mobile Crane [16 h]; Depth: 0.0m - 1.5m [350.44] → Labor [24.95 h]; Foreman [12.47 h]; Plumber Helper [12.47 h]; Plumber [12.47 h]; Operator [12.47 h]; Surveyor [12.47 h]; Surveyor Helper [12.47 h]; Mobile Crane [12.8 h]; Depth: 0.0m - 1.5m [280.35] |
| B3.33 14 13.01.01103 | Embedment & Test (80.00% Completed) |  | 2026-09-19 → 2026-09-15 A (-4d) | 89.46d → 87.46d | 80% → 100% | 113d → none |  | was named Embedment & Test; resources Labor [62.37 h]; Foreman [31.18 h]; Plumber Helper [31.18 h]; Plumber [31.18 h]; Operator [62.37 h]; Surveyor [31.18 h]; Surveyor Helper [31.18 h]; Loader [32 h]; Water Tanker [32 h]; Dump Truck [32 h]; Plate Compactor [32 h]; Roller Compactor [32 h]; Depth: 0.0m - 1.5m [155.75] → Labor [49.9 h]; Foreman [24.95 h]; Plumber Helper [24.95 h]; Plumber [24.95 h]; Operator [49.9 h]; Surveyor [24.95 h]; Surveyor Helper [24.95 h]; Loader [25.6 h]; Water Tanker [25.6 h]; Dump Truck [25.6 h]; Plate Compactor [25.6 h]; Roller Compactor [25.6 h]; Depth: 0.0m - 1.5m [124.6] |
| B3.33 14 13.01.01107 | Backfilling & Warrning Tape (80.00% Completed) |  | 2026-09-17 → 2026-09-15 A (-2d) | 84.46d → 83.46d | 80% → 100% | 71d → none |  | was named Backfilling & Warrning Tape; resources Labor [77.96 h]; Foreman [38.98 h]; Operator [155.92 h]; Surveyor [38.98 h]; Surveyor Helper [38.98 h]; Loader [40 h]; Water Tanker [40 h]; Dump Truck [40 h]; Plate Compactor [40 h]; Roller Compactor [40 h]; Depth: 0.0m - 1.5m [77.87] → Labor [62.37 h]; Foreman [31.18 h]; Operator [124.74 h]; Surveyor [31.18 h]; Surveyor Helper [31.18 h]; Loader [32 h]; Water Tanker [32 h]; Dump Truck [32 h]; Plate Compactor [32 h]; Roller Compactor [32 h]; Depth: 0.0m - 1.5m [62.3] |
| Depth: 1.51m - 2.5m | **Depth: 1.51m - 2.5m** |  | 2026-09-19 → 2026-10-10 (+21d) |  |  |  |  |  |
| B3.33 14 13.01.01101 | Pipe Laying (80.00% Completed) |  | 2026-09-19 → 2026-09-15 A (-4d) | 93.46d → 91.46d | 80% → 100% | 113d → none |  | was named Pipe Laying; resources Labor [31.18 h]; Foreman [15.59 h]; Plumber Helper [15.59 h]; Plumber [15.59 h]; Operator [15.59 h]; Surveyor [15.59 h]; Surveyor Helper [15.59 h]; Mobile Crane [16 h]; Depth: 1.51m - 2.5m → Labor [24.95 h]; Foreman [12.47 h]; Plumber Helper [12.47 h]; Plumber [12.47 h]; Operator [12.47 h]; Surveyor [12.47 h]; Surveyor Helper [12.47 h]; Mobile Crane [12.8 h]; Depth: 1.51m - 2.5m |
| B3.33 14 13.01.01105 | Embedment & Test (80.00% Completed) |  | 2026-09-19 → 2026-09-15 A (-4d) | 89.46d → 87.46d | 80% → 100% | 113d → none |  | was named Embedment & Test; resources Labor [62.37 h]; Foreman [31.18 h]; Plumber Helper [31.18 h]; Plumber [31.18 h]; Operator [62.37 h]; Surveyor [31.18 h]; Surveyor Helper [31.18 h]; Loader [32 h]; Water Tanker [32 h]; Dump Truck [32 h]; Plate Compactor [32 h]; Roller Compactor [32 h]; Depth: 1.51m - 2.5m → Labor [49.9 h]; Foreman [24.95 h]; Plumber Helper [24.95 h]; Plumber [24.95 h]; Operator [49.9 h]; Surveyor [24.95 h]; Surveyor Helper [24.95 h]; Loader [25.6 h]; Water Tanker [25.6 h]; Dump Truck [25.6 h]; Plate Compactor [25.6 h]; Roller Compactor [25.6 h]; Depth: 1.51m - 2.5m |
| B3.33 14 13.01.01109 | Backfilling & Warrning Tape (80.00% Completed) |  | 2026-09-17 → 2026-09-15 A (-2d) | 84.46d → 83.46d | 80% → 100% | 71d → none |  | was named Backfilling & Warrning Tape; resources Labor [77.96 h]; Foreman [38.98 h]; Operator [155.92 h]; Surveyor [38.98 h]; Surveyor Helper [38.98 h]; Loader [40 h]; Water Tanker [40 h]; Dump Truck [40 h]; Plate Compactor [40 h]; Roller Compactor [40 h]; Depth: 1.51m - 2.5m → Labor [62.37 h]; Foreman [31.18 h]; Operator [124.74 h]; Surveyor [31.18 h]; Surveyor Helper [31.18 h]; Loader [32 h]; Water Tanker [32 h]; Dump Truck [32 h]; Plate Compactor [32 h]; Roller Compactor [32 h]; Depth: 1.51m - 2.5m |
| Crossing | **Plots and Buildings Crossing** | 2026-09-16 → 2026-10-07 (+21d) | 2026-10-07 → 2026-10-27 (+20d) |  |  |  |  |  |

| ID | Task | Start | Finish | Duration | Complete | Total float | Predecessors | Other |
| --- | --- | --- | --- | --- | --- | --- | --- | --- |
| B3.33 14 13.02.31 | Earthwork | 2026-09-16 → 2026-10-07 (+21d) | 2026-09-24 → 2026-10-14 (+20d) |  |  | 92d → 63.82d |  |  |
| B3.33 14 13.02.32 | Sand Bedding | 2026-09-26 → 2026-10-15 (+19d) | 2026-09-28 → 2026-10-18 (+20d) |  |  | 92d → 89.32d |  |  |
| B3.33 14 13.02.33 | Tee, Pipe (Crossing) Installation & Backfilling | 2026-09-30 → 2026-10-20 (+20d) | 2026-10-07 → 2026-10-27 (+20d) |  |  | 91d → 88.32d |  |  |
| Valves & Chambers | **Valves & Chambers** |  | 2026-09-29 → 2026-10-20 (+21d) |  |  |  |  |  |
| GV | **Gate Valves** |  | 2026-09-29 → 2026-10-19 (+20d) |  |  |  |  |  |
| 1 | **Gate valves dia (110) mm** |  | 2026-09-29 → 2026-10-19 (+20d) |  |  |  |  |  |
| B3.33 14 19.01.118 | Burried Isolation Valve Installation |  |  |  |  |  | B3.33 14 13.01.01101 SS → B1.2.31 23 23.01.17 |  |
| B3.33 14 19.01.119 | Spindle & Surface Box | 2026-09-27 → 2026-10-17 (+20d) | 2026-09-29 → 2026-10-19 (+20d) |  |  | 94d → 91.32d |  |  |
| Washout Valves | **Washout Valves** |  | 2026-09-26 → 2026-10-20 (+24d) |  |  |  |  |  |
| 4 | **Washout valves on 110-400 mm. (In Chamber)** |  | 2026-09-26 → 2026-10-20 (+24d) |  |  |  |  |  |
| B3.33 05 63.01.27 | Land Adjustment & Compaction (62.50% Completed) |  | 2026-09-24 → 2026-09-15 A (-9d) | 64d → 62d | 62% → 100% | 109d → none | B3.33 14 13.02.31 FF → B3.33 14 13.01.0191 | was named Land Adjustment & Compaction; resources Labor [31.18 h]; Foreman [15.59 h]; Operator [62.37 h]; Surveyor [15.59 h]; Surveyor Helper [15.59 h]; Excavator (With Bucket) [16 h]; Water Tanker [16 h]; Dump Truck [16 h]; Plate Compactor [16 h]; POT Wash out valve Dia. 100 mm on pipes with Dia. 110-400 mm [0.26]; Wash out valve chamber; on 110-400 mm Dia. pipeline [0.26] → Labor [19.49 h]; Foreman [9.75 h]; Operator [38.98 h]; Surveyor [9.75 h]; Surveyor Helper [9.75 h]; Excavator (With Bucket) [10 h]; Water Tanker [10 h]; Dump Truck [10 h]; Plate Compactor [10 h]; POT Wash out valve Dia. 100 mm on pipes with Dia. 110-400 mm [0.16]; Wash out valve chamber; on 110-400 mm Dia. pipeline [0.16] |
| B3.33 05 63.01.25 | Foundations (62.50% Completed) |  | 2026-09-19 → 2026-09-15 A (-4d) | 12.12d → 11d | 62% → 100% | 113.88d → none |  | was named Foundations; resources Labor [46.78 h]; Foreman [23.39 h]; Laboratory Officer [23.39 h]; Carpenter [23.39 h]; Steelfixer [23.39 h]; Mason [23.39 h]; POT Wash out valve Dia. 100 mm on pipes with Dia. 110-400 mm [0.35]; Wash out valve chamber; on 110-400 mm Dia. pipeline [0.35] → Labor [29.24 h]; Foreman [14.62 h]; Laboratory Officer [14.62 h]; Carpenter [14.62 h]; Steelfixer [14.62 h]; Mason [14.62 h]; POT Wash out valve Dia. 100 mm on pipes with Dia. 110-400 mm [0.22]; Wash out valve chamber; on 110-400 mm Dia. pipeline [0.22] |
| B3.33 05 63.01.28 | Chambers Walls Conc Cast In Situ (62.50% Completed) |  | 2026-09-19 → 2026-09-15 A (-4d) | 9.12d → 8d | 62% → 100% | 113.88d → none |  | was named Chambers Walls Conc Cast In Situ; resources Labor [46.78 h]; Foreman [23.39 h]; Laboratory Officer [23.39 h]; Carpenter [23.39 h]; Steelfixer [23.39 h]; Mason [23.39 h]; POT Wash out valve Dia. 100 mm on pipes with Dia. 110-400 mm [0.35]; Wash out valve chamber; on 110-400 mm Dia. pipeline [0.35] → Labor [29.24 h]; Foreman [14.62 h]; Laboratory Officer [14.62 h]; Carpenter [14.62 h]; Steelfixer [14.62 h]; Mason [14.62 h]; POT Wash out valve Dia. 100 mm on pipes with Dia. 110-400 mm [0.22]; Wash out valve chamber; on 110-400 mm Dia. pipeline [0.22] |
| B3.33 05 63.01.26 | Chamber Curing, Finishing & Steel Cover (62.50% Completed) |  | 2026-09-19 → 2026-09-15 A (-4d) | 8.5d → 7d | 62% → 100% | 70.5d → none |  | was named Chamber Curing, Finishing & Steel Cover; resources Labor [62.37 h]; Mason [31.18 h]; POT Wash out valve Dia. 100 mm on pipes with Dia. 110-400 mm [0.26]; Wash out valve chamber; on 110-400 mm Dia. pipeline [0.26] → Labor [38.98 h]; Mason [19.49 h]; POT Wash out valve Dia. 100 mm on pipes with Dia. 110-400 mm [0.16]; Wash out valve chamber; on 110-400 mm Dia. pipeline [0.16] |
| B3.33 05 63.01.29 | Valve & Fitting Installation | 2026-09-19 → 2026-10-14 (+25d) | 2026-09-26 → 2026-10-20 (+24d) |  |  | 70.5d → 63.82d | B3.33 05 63.01.26 → B3.33 05 63.01.26_R |  |
| Fire Fighting | **Fire Fighting Network** |  | 2026-10-31 → 2026-11-19 (+19d) |  |  |  |  |  |
| B3.1. 33 14 13..13 | Embedment & Test |  |  |  |  |  | B3.1. 33 14 13..9, B3.33 14 19.01.134 SS → B3.1. 33 14 13..9 |  |
| B3.1. 33 14 13..17 | Backfilling & Warrning Tape |  |  |  |  |  | B3.1. 33 14 13..13, B3.1. 33 14 13.015 SS → B3.1. 33 14 13..13 |  |
| B3.1. 33 14 13..15 | Embedment & Test |  |  |  |  |  | B3.1. 33 14 13..11, B3.33 14 19.01.134 SS → B3.1. 33 14 13..11 |  |
| B3.1. 33 14 13..19 | Backfilling & Warrning Tape |  |  |  |  |  | B3.1. 33 14 13..15, B3.1. 33 14 13.025 SS → B3.1. 33 14 13..15 |  |
| Valves & Chambers | **Valves & Chambers** |  | 2026-10-31 → 2026-11-19 (+19d) |  |  |  |  |  |
| GV | **Gate Valves** |  | 2026-10-31 → 2026-11-19 (+19d) |  |  |  |  |  |
| 1 | **Gate valves dia (250) mm** |  | 2026-10-31 → 2026-11-19 (+19d) |  |  |  |  |  |
| B3.33 14 19.01.134 | Burried Isolation Valve Installation (62.50% Completed) |  | 2026-10-26 → 2026-09-15 A (-41d) | 54d → 52d | 62% → 100% | 63d → none | B3.1. 33 14 13..9, B3.1. 33 14 13..11, B3.33 05 63.01.44 FF → B3.1. 33 14 13..9, B3.1. 33 14 13..11 | was named Burried Isolation Valve Installation; resources Labor [31.18 h]; Plumber Helper [15.59 h]; Plumber [15.59 h]; Operator [31.18 h]; Boom Truck [16 h]; FF Gate V dia 250 mm [1.88] → Labor [19.49 h]; Plumber Helper [9.75 h]; Plumber [9.75 h]; Operator [19.49 h]; Boom Truck [10 h]; FF Gate V dia 250 mm [1.17] |
| B3.33 14 19.01.135 | Spindle & Surface Box | 2026-10-27 → 2026-11-16 (+20d) | 2026-10-31 → 2026-11-19 (+19d) |  |  | 63d → 60.32d | B3.33 14 19.01.134 → B3.33 14 19.01.134_R |  |
| 2 | **Air Valves** |  | 2026-09-28 → 2026-10-18 (+20d) |  |  |  |  |  |
| 4 | **Air valves on less than 315 mm. (In Chamber)** |  | 2026-09-28 → 2026-10-18 (+20d) |  |  |  |  |  |
| B3.33 05 63.02.82 | Land Adjustment & Compaction (50.00% Completed) |  | 2026-09-19 → 2026-09-15 A (-4d) | 65.36d → 64.36d | 50% → 100% | 113d → none |  | was named Land Adjustment & Compaction; resources Labor [31.18 h]; Foreman [15.59 h]; Operator [62.37 h]; Surveyor [15.59 h]; Surveyor Helper [15.59 h]; Excavator (With Bucket) [16 h]; Water Tanker [16 h]; Dump Truck [16 h]; Plate Compactor [16 h]; FF Air valve Dia. 50 mm on pipes with Dia. less than 315 mm [0.18]; FF Air valve chamber; on less than 315 mm Dia. pipeline [0.18] → Labor [15.59 h]; Foreman [7.8 h]; Operator [31.18 h]; Surveyor [7.8 h]; Surveyor Helper [7.8 h]; Excavator (With Bucket) [8 h]; Water Tanker [8 h]; Dump Truck [8 h]; Plate Compactor [8 h]; FF Air valve Dia. 50 mm on pipes with Dia. less than 315 mm [0.09]; FF Air valve chamber; on less than 315 mm Dia. pipeline [0.09] |
| B3.33 05 63.02.80 | Foundations (50.00% Completed) |  | 2026-09-20 → 2026-09-15 A (-5d) | 13.5d → 12d | 50% → 100% | 112.5d → none |  | was named Foundations; resources Labor [46.78 h]; Foreman [23.39 h]; Laboratory Officer [23.39 h]; Carpenter [23.39 h]; Steelfixer [23.39 h]; Mason [23.39 h]; FF Air valve Dia. 50 mm on pipes with Dia. less than 315 mm [0.18]; FF Air valve chamber; on less than 315 mm Dia. pipeline [0.24] → Labor [23.39 h]; Foreman [11.69 h]; Laboratory Officer [11.69 h]; Carpenter [11.69 h]; Steelfixer [11.69 h]; Mason [11.69 h]; FF Air valve Dia. 50 mm on pipes with Dia. less than 315 mm [0.09]; FF Air valve chamber; on less than 315 mm Dia. pipeline [0.12] |
| B3.33 05 63.02.81 | Chamber Curing, Finishing & Steel Cover (50.00% Completed) |  | 2026-09-20 → 2026-09-15 A (-5d) | 13d → 11d | 50% → 100% | 68d → none |  | was named Chamber Curing, Finishing & Steel Cover; resources Labor [62.37 h]; Mason [31.18 h]; FF Air valve Dia. 50 mm on pipes with Dia. less than 315 mm [0.24]; FF Air valve chamber; on less than 315 mm Dia. pipeline [0.18] → Labor [31.18 h]; Mason [15.59 h]; FF Air valve Dia. 50 mm on pipes with Dia. less than 315 mm [0.12]; FF Air valve chamber; on less than 315 mm Dia. pipeline [0.09] |
| B3.33 05 63.02.83 | Chambers Walls Conc Cast In Situ (50.00% Completed) |  | 2026-09-20 → 2026-09-15 A (-5d) | 12.5d → 11d | 50% → 100% | 112.5d → none |  | was named Chambers Walls Conc Cast In Situ; resources Labor [46.78 h]; Foreman [23.39 h]; Laboratory Officer [23.39 h]; Carpenter [23.39 h]; Steelfixer [23.39 h]; Mason [23.39 h]; FF Air valve Dia. 50 mm on pipes with Dia. less than 315 mm [0.24]; FF Air valve chamber; on less than 315 mm Dia. pipeline [0.24] → Labor [23.39 h]; Foreman [11.69 h]; Laboratory Officer [11.69 h]; Carpenter [11.69 h]; Steelfixer [11.69 h]; Mason [11.69 h]; FF Air valve Dia. 50 mm on pipes with Dia. less than 315 mm [0.12]; FF Air valve chamber; on less than 315 mm Dia. pipeline [0.12] |
| B3.33 05 63.02.84 | Valve & Fitting Installation | 2026-09-21 → 2026-10-12 (+21d) | 2026-09-28 → 2026-10-18 (+20d) |  |  | 68d → 65.32d | B3.33 05 63.02.81 → B3.33 05 63.02.81_R |  |
| Washout Valves | **Washout Valves** |  | 2026-09-28 → 2026-10-18 (+20d) |  |  |  |  |  |
| 4 | **Washout valves on 110-400 mm. (In Chamber)** |  | 2026-09-28 → 2026-10-18 (+20d) |  |  |  |  |  |
| B3.33 05 63.01.62 | Land Adjustment & Compaction (50.00% Completed) |  | 2026-09-19 → 2026-09-15 A (-4d) | 64.36d → 63.36d | 50% → 100% | 113d → none |  | was named Land Adjustment & Compaction; resources Labor [31.18 h]; Foreman [15.59 h]; Operator [62.37 h]; Surveyor [15.59 h]; Surveyor Helper [15.59 h]; Excavator (With Bucket) [16 h]; Water Tanker [16 h]; Dump Truck [16 h]; Plate Compactor [16 h]; FF Wash out valve Dia. 100 mm on pipes with Dia. 110-400 mm [0.19]; FF Wash out valve chamber; on 110-400 mm Dia. pipeline [0.21] → Labor [15.59 h]; Foreman [7.8 h]; Operator [31.18 h]; Surveyor [7.8 h]; Surveyor Helper [7.8 h]; Excavator (With Bucket) [8 h]; Water Tanker [8 h]; Dump Truck [8 h]; Plate Compactor [8 h]; FF Wash out valve Dia. 100 mm on pipes with Dia. 110-400 mm [0.1]; FF Wash out valve chamber; on 110-400 mm Dia. pipeline [0.1] |
| B3.33 05 63.01.60 | Foundations (50.00% Completed) |  | 2026-09-20 → 2026-09-15 A (-5d) | 12.5d → 11d | 50% → 100% | 112.5d → none |  | was named Foundations; resources Labor [46.78 h]; Foreman [23.39 h]; Laboratory Officer [23.39 h]; Carpenter [23.39 h]; Steelfixer [23.39 h]; Mason [23.39 h]; FF Wash out valve Dia. 100 mm on pipes with Dia. 110-400 mm [0.19]; FF Wash out valve chamber; on 110-400 mm Dia. pipeline [0.26] → Labor [23.39 h]; Foreman [11.69 h]; Laboratory Officer [11.69 h]; Carpenter [11.69 h]; Steelfixer [11.69 h]; Mason [11.69 h]; FF Wash out valve Dia. 100 mm on pipes with Dia. 110-400 mm [0.1]; FF Wash out valve chamber; on 110-400 mm Dia. pipeline [0.13] |
| B3.33 05 63.01.63 | Chambers Walls Conc Cast In Situ (50.00% Completed) |  | 2026-09-20 → 2026-09-15 A (-5d) | 11.5d → 10d | 50% → 100% | 112.5d → none |  | was named Chambers Walls Conc Cast In Situ; resources Labor [46.78 h]; Foreman [23.39 h]; Laboratory Officer [23.39 h]; Carpenter [23.39 h]; Steelfixer [23.39 h]; Mason [23.39 h]; FF Wash out valve Dia. 100 mm on pipes with Dia. 110-400 mm [0.25]; FF Wash out valve chamber; on 110-400 mm Dia. pipeline [0.26] → Labor [23.39 h]; Foreman [11.69 h]; Laboratory Officer [11.69 h]; Carpenter [11.69 h]; Steelfixer [11.69 h]; Mason [11.69 h]; FF Wash out valve Dia. 100 mm on pipes with Dia. 110-400 mm [0.13]; FF Wash out valve chamber; on 110-400 mm Dia. pipeline [0.13] |
| B3.33 05 63.01.61 | Chamber Curing, Finishing & Steel Cover (50.00% Completed) |  | 2026-09-20 → 2026-09-15 A (-5d) | 11d → 9d | 50% → 100% | 68d → none |  | was named Chamber Curing, Finishing & Steel Cover; resources Labor [62.37 h]; Mason [31.18 h]; FF Wash out valve Dia. 100 mm on pipes with Dia. 110-400 mm [0.25]; FF Wash out valve chamber; on 110-400 mm Dia. pipeline [0.19] → Labor [31.18 h]; Mason [15.59 h]; FF Wash out valve Dia. 100 mm on pipes with Dia. 110-400 mm [0.13]; FF Wash out valve chamber; on 110-400 mm Dia. pipeline [0.1] |
| B3.33 05 63.01.64 | Valve & Fitting Installation | 2026-09-21 → 2026-10-12 (+21d) | 2026-09-28 → 2026-10-18 (+20d) |  |  | 68d → 65.32d | B3.33 05 63.01.61 → B3.33 05 63.01.61_R |  |
| 3 | **Fire Hydrant** |  | 2026-10-31 → 2026-11-19 (+19d) |  |  |  |  |  |
| B3.33 14 19.01.fh47 | Riser Pipe & Flanged Fittings Installation (1.00% Completed) |  | 2026-09-20 → 2026-09-15 A (-5d) | 69.98d → 68d | 1% → 100% | 112.02d → none |  | was named Riser Pipe & Flanged Fittings Installation; resources Labor [31.18 h]; Plumber Helper [15.59 h]; Welder [15.59 h]; Plumber [15.59 h]; Surveyor [15.59 h]; Surveyor Helper [15.59 h]; Welding Machine [16 h]; 3-outlet fire hydrant (2 x 2.5 inch and 1 x 4.5 inch) in the form of a separate dry vacuum cylinder [1.49] → Labor [0.31 h]; Plumber Helper [0.16 h]; Welder [0.16 h]; Plumber [0.16 h]; Surveyor [0.16 h]; Surveyor Helper [0.16 h]; Welding Machine [0.16 h]; 3-outlet fire hydrant (2 x 2.5 inch and 1 x 4.5 inch) in the form of a separate dry vacuum cylinder [0.01] |
| B3.33 14 19.01.fh46 | Firehydrant Fixing/Installation (1.00% Completed) |  | 2026-09-21 → 2026-09-15 A (-6d) | 68.97d → 66d | 1% → 100% | 111.03d → none |  | was named Firehydrant Fixing/Installation; resources Labor [46.78 h]; Foreman [23.39 h]; Plumber Helper [23.39 h]; Plumber [23.39 h]; Operator [46.78 h]; Surveyor [23.39 h]; Surveyor Helper [23.39 h]; JCB [24 h]; 3-outlet fire hydrant (2 x 2.5 inch and 1 x 4.5 inch) in the form of a separate dry vacuum cylinder [4.47] → Labor [0.47 h]; Foreman [0.23 h]; Plumber Helper [0.23 h]; Plumber [0.23 h]; Operator [0.47 h]; Surveyor [0.23 h]; Surveyor Helper [0.23 h]; JCB [0.24 h]; 3-outlet fire hydrant (2 x 2.5 inch and 1 x 4.5 inch) in the form of a separate dry vacuum cylinder [0.04] |
| B3.33 14 19.01.fh48 | Backfilling & Compaction (1.00% Completed) |  | 2026-10-31 → 2026-09-15 A (-46d) | 54.95d → 50d | 1% → 100% | 63d → none | B3.33 14 19.01.fh5, B3.33 14 19.01.fh46 SS, B3.33 14 19.01.135 FF, B3.33 14 19.01.129 FF → B3.33 14 19.01.fh5, B3.33 14 19.01.fh46 SS | was named Backfilling & Compaction; resources Labor [77.96 h]; Foreman [38.98 h]; Operator [77.96 h]; Surveyor [38.98 h]; Surveyor Helper [38.98 h]; Loader [40 h]; Water Tanker [40 h]; Dump Truck [40 h]; Plate Compactor [40 h]; 3-outlet fire hydrant (2 x 2.5 inch and 1 x 4.5 inch) in the form of a separate dry vacuum cylinder [1.49] → Labor [0.78 h]; Foreman [0.39 h]; Operator [0.78 h]; Surveyor [0.39 h]; Surveyor Helper [0.39 h]; Loader [0.4 h]; Water Tanker [0.4 h]; Dump Truck [0.4 h]; Plate Compactor [0.4 h]; 3-outlet fire hydrant (2 x 2.5 inch and 1 x 4.5 inch) in the form of a separate dry vacuum cylinder [0.01] |
| Dry Networks | **Dry Networks** | 2026-09-20 → 2026-10-07 (+17d) | 2026-11-18 → 2026-11-21 (+3d) |  |  |  |  |  |
| MV Network | **Medium Voltage Network** | 2026-09-20 → 2026-10-07 (+17d) | 2026-10-10 → 2026-10-26 (+16d) |  |  |  |  |  |
| Duct Banks | **Duct Banks** | 2026-09-20 → 2026-10-07 (+17d) | 2026-10-10 → 2026-10-26 (+16d) |  |  |  |  |  |
| 4 Way | **2 Way** | 2026-09-20 → 2026-10-07 (+17d) | 2026-10-10 → 2026-10-26 (+16d) |  |  |  |  |  |
| B2.31 23 00.644 | Excavation | 2026-09-20 → 2026-10-07 (+17d) | 2026-09-24 → 2026-10-11 (+17d) |  |  | 30d → 41.32d | B6.33 05 40.01.640, B6.33 05 39.01.1867 → B6.33 05 40.01.640_R, B6.33 05 39.01.1867 |  |
| B2.33 71 00.296 | Shuttering, Steel Fixing Incl. UPVC Pipe & Conc. Cast | 2026-09-26 → 2026-10-12 (+16d) | 2026-10-03 → 2026-10-19 (+16d) |  |  | 30d → 41.32d |  |  |
| B2.33 71 00.297 | Backfilling & Warrning Tape | 2026-10-04 → 2026-10-20 (+16d) | 2026-10-10 → 2026-10-26 (+16d) |  |  | 30d → 41.32d |  |  |
| Street Lighting | **Street Lighting** | 2026-10-22 → 2026-10-24 (+2d) | 2026-11-04 → 2026-11-09 (+5d) |  |  |  |  |  |
| SL Poles | **SL Poles** | 2026-10-22 → 2026-10-24 (+2d) | 2026-11-02 → 2026-11-04 (+2d) |  |  |  |  |  |
| Pole (10 M Sngl Arm) | **Pole (10 M Single Arm)** | 2026-10-22 → 2026-10-24 (+2d) | 2026-11-02 → 2026-11-04 (+2d) |  |  |  |  |  |
| B2.33 71 16.99 | Excavation | 2026-10-22 → 2026-10-24 (+2d) | 2026-10-24 → 2026-10-26 (+2d) |  |  | 20d → 39.68d | B2.33 71 00.297, B2.33 71 19 44 → B2.33 71 19 46 |  |
| B2.33 71 16.100 | PC & RC Foundation | 2026-10-25 → 2026-10-26 (+1d) | 2026-10-26 → 2026-10-28 (+2d) |  |  | 20d → 41.68d |  |  |
| B2.33 71 16.101 | Lighting Poles Installation Incl power box, Cables | 2026-10-27 → 2026-10-28 (+1d) | 2026-10-28 → 2026-10-31 (+3d) |  |  | 20d → 41.68d |  |  |
| B2.26.56.19.18 | Lighting Luminares Inst | 2026-10-29 → 2026-10-31 (+2d) | 2026-10-31 → 2026-11-02 (+2d) |  |  | 20d → 45.68d |  |  |
| B2.33 71 16.102 | Backfilling, Grouting & Chamfering | 2026-11-01 → 2026-11-02 (+1d) | 2026-11-02 → 2026-11-04 (+2d) |  |  | 20d → 45.68d |  |  |
| Earthing | **Earthing** | 2026-10-29 → 2026-11-02 (+4d) | 2026-11-04 → 2026-11-09 (+5d) |  |  |  |  |  |
| B2.33 71 19 50 | Land Adjustment | 2026-10-29 → 2026-11-02 (+4d) | 2026-10-31 → 2026-11-04 (+4d) |  |  | 28d → 39.68d |  |  |
| B2.33 71 19 51 | Earth Rods & Conduits | 2026-11-01 → 2026-11-04 (+3d) | 2026-11-02 → 2026-11-07 (+5d) |  |  | 30d → 41.68d |  |  |
| B2.33 71 19 52 | Backfilling | 2026-11-03 → 2026-11-07 (+4d) | 2026-11-04 → 2026-11-09 (+5d) |  |  | 30d → 41.68d |  |  |
| Telecommunication | **Telecommunication Network** | 2026-11-01 → 2026-10-27 (-5d) | 2026-11-18 → 2026-11-21 (+3d) |  |  |  |  |  |
| Ducts | **Ducts** | 2026-11-01 → 2026-10-27 (-5d) | 2026-11-14 → 2026-11-17 (+3d) |  |  |  |  |  |
| (6*50mm) | **Size (6*50mm) HDPE ducts** | 2026-11-01 → 2026-10-27 (-5d) | 2026-11-04 → 2026-10-31 (-4d) |  |  |  |  |  |
| B2.1.33 81 26.183 | Excavation | 2026-11-01 → 2026-10-27 (-5d) | 2026-11-02 → 2026-10-28 (-5d) |  |  | 20d → 39.32d | B2.33 71 16.102 SS, B2.33 71 00.297, B2.31 23 00.634 → B2.33 71 00.267_R |  |
| B2.1.33 81 26.184 | HDPE Pipe, Shuttering, Steel Fixing & Conc. Cast | 2026-11-03 → 2026-10-29 (-5d) | 2026-11-04 → 2026-10-31 (-4d) |  |  | 30d → 49.32d |  |  |
| B2.1.33 81 26.185 | Backfilling & Warrning Tape | 2026-11-03 → 2026-10-29 (-5d) | 2026-11-04 → 2026-10-31 (-4d) |  |  | 30d → 49.32d | B2.1.33 81 26.184 SS, B2.33 71 00.269, B2.33 71 00.271 → B2.1.33 81 26.184 SS, B2.33 71 00.269_R, B2.33 71 00.271_R |  |
| (6*50mm+2*32mm) | **Size (6*50mm+2*32mm) HDPE ducts** | 2026-11-03 → 2026-10-29 (-5d) | 2026-11-09 → 2026-11-04 (-5d) |  |  |  |  |  |
| B2.1.33 81 26.186 | Excavation | 2026-11-03 → 2026-10-29 (-5d) | 2026-11-04 → 2026-10-31 (-4d) |  |  | 20d → 39.32d |  |  |

| ID | Task | Start | Finish | Duration | Complete | Total float | Predecessors | Other |
| --- | --- | --- | --- | --- | --- | --- | --- | --- |
| B2.1.33 81 26.187 | HDPE Pipe, Shuttering, Steel Fixing & Conc. Cast | 2026-11-05 → 2026-11-01 (-4d) | 2026-11-07 → 2026-11-02 (-5d) |  |  | 26d → 45.32d |  |  |
| B2.1.33 81 26.188 | Backfilling & Warrning Tape | 2026-11-08 → 2026-11-03 (-5d) | 2026-11-09 → 2026-11-04 (-5d) |  |  | 26d → 45.32d |  |  |
| (6*50mm+4*32mm) | **Size (6*50mm+4*32mm) HDPE ducts** | 2026-11-05 → 2026-11-01 (-4d) | 2026-11-11 → 2026-11-17 (+6d) |  |  |  |  |  |
| B2.1.33 81 26.189 | Excavation | 2026-11-05 → 2026-11-01 (-4d) | 2026-11-07 → 2026-11-02 (-5d) |  |  | 20d → 39.32d | B2.1.33 81 26.186, B2.1.33 81 26.168 → B2.1.33 81 26.186, B2.1.33 81 26.168_R |  |
| B2.1.33 81 26.190 | HDPE Pipe, Shuttering, Steel Fixing & Conc. Cast | 2026-11-08 → 2026-11-03 (-5d) | 2026-11-09 → 2026-11-04 (-5d) |  |  | 26d → 45.32d |  |  |
| B2.1.33 81 26.191 | Backfilling & Warrning Tape | 2026-11-10 → 2026-11-15 (+5d) | 2026-11-11 → 2026-11-17 (+6d) |  |  | 26d → 37.2d |  |  |
| (2*32mm) | **Size (2*32mm) HDPE ducts** | 2026-11-08 → 2026-11-03 (-5d) | 2026-11-14 → 2026-11-09 (-5d) |  |  |  |  |  |
| B2.1.33 81 26.192 | Excavation | 2026-11-08 → 2026-11-03 (-5d) | 2026-11-09 → 2026-11-04 (-5d) |  |  | 20d → 39.32d | B2.1.33 81 26.189, B2.1.33 81 26.171 → B2.1.33 81 26.189, B2.1.33 81 26.171_R |  |
| B2.1.33 81 26.193 | HDPE Pipe, Shuttering, Steel Fixing & Conc. Cast | 2026-11-10 → 2026-11-05 (-5d) | 2026-11-11 → 2026-11-07 (-4d) |  |  | 24d → 43.32d |  |  |
| B2.1.33 81 26.194 | Backfilling & Warrning Tape | 2026-11-12 → 2026-11-08 (-4d) | 2026-11-14 → 2026-11-09 (-5d) |  |  | 24d → 43.32d |  |  |
| Manholes | **Manholes** | 2026-11-10 → 2026-11-05 (-5d) | 2026-11-18 → 2026-11-21 (+3d) |  |  |  |  |  |
| Manhole Type 1 | **Manhole Type 1** | 2026-11-10 → 2026-11-05 (-5d) | 2026-11-16 → 2026-11-21 (+5d) |  |  |  |  |  |
| B2.31 23 00.636 | Excavation | 2026-11-10 → 2026-11-05 (-5d) | 2026-11-11 → 2026-11-07 (-4d) |  |  | 20d → 39.32d | B2.1.33 81 26.192, B2.31 23 00.630 → B2.1.33 81 26.192, B2.31 23 00.630_R |  |
| B2.33 71 00.280 | Manhole Installation | 2026-11-12 → 2026-11-08 (-4d) | 2026-11-14 → 2026-11-09 (-5d) |  |  | 22d → 41.32d |  |  |
| B2.33 71 00.281 | Backfilling & Warrning Tape | 2026-11-15 → 2026-11-19 (+4d) | 2026-11-16 → 2026-11-21 (+5d) |  |  | 22d → 33.32d |  |  |
| Manhole Type 2 | **Manhole Type 2** | 2026-11-12 → 2026-11-08 (-4d) | 2026-11-18 → 2026-11-14 (-4d) |  |  |  |  |  |
| B2.31 23 00.637 | Excavation | 2026-11-12 → 2026-11-08 (-4d) | 2026-11-14 → 2026-11-09 (-5d) |  |  | 20d → 39.32d | B2.31 23 00.636, B2.31 23 00.631 → B2.31 23 00.636, B2.31 23 00.631_R |  |
| B2.33 71 00.282 | Manhole Installation | 2026-11-15 → 2026-11-10 (-5d) | 2026-11-16 → 2026-11-11 (-5d) |  |  | 20d → 39.32d |  |  |
| B2.33 71 00.283 | Backfilling & Warrning Tape | 2026-11-17 → 2026-11-12 (-5d) | 2026-11-18 → 2026-11-14 (-4d) |  |  | 20d → 39.32d |  |  |
| Earth & Road Works | **Earth & Road Works** |  | 2026-10-19 → 2026-11-08 (+20d) |  |  |  |  |  |
| Earth Layers | **Earth Layers** |  | 2026-09-17 → 2026-10-08 (+21d) |  |  |  |  |  |
| B1.2.32 11 13.01.17 | Subgrade (65.00% Completed) |  | 2026-09-17 → 2026-09-15 A (-2d) | 187.46d → 186.41d | 65% → 100% | 114.95d → none |  | was named Subgrade; resources Subgrade [1170.98]; Labor [46.78 h]; Foreman [23.39 h]; Operator [46.78 h]; Surveyor [23.39 h]; Surveyor Helper [23.39 h]; Grader [24 h]; Loader [24 h]; Water Tanker [24 h]; Dump Truck [24 h]; Plate Compactor [24 h]; Roller Compactor [24 h] → Subgrade [761.14]; Labor [30.41 h]; Foreman [15.2 h]; Operator [30.41 h]; Surveyor [15.2 h]; Surveyor Helper [15.2 h]; Grader [15.6 h]; Loader [15.6 h]; Water Tanker [15.6 h]; Dump Truck [15.6 h]; Plate Compactor [15.6 h]; Roller Compactor [15.6 h] |
| B1.2.32 11 23.01.17 | Aggregate Base Course (35.00% Completed) |  | 2026-09-17 → 2026-09-15 A (-2d) | 99.27d → 97.97d | 35% → 100% | 17.7d → none |  | was named Aggregate Base Course; resources Aggregate base course [780.66]; Labor [31.18 h]; Foreman [15.59 h]; Operator [31.18 h]; Surveyor [15.59 h]; Surveyor Helper [15.59 h]; Grader [16 h]; Loader [16 h]; Water Tanker [16 h]; Dump Truck [16 h]; Plate Compactor [16 h]; Roller Compactor [16 h] → Aggregate base course [273.23]; Labor [10.91 h]; Foreman [5.46 h]; Operator [10.91 h]; Surveyor [5.46 h]; Surveyor Helper [5.46 h]; Grader [5.6 h]; Loader [5.6 h]; Water Tanker [5.6 h]; Dump Truck [5.6 h]; Plate Compactor [5.6 h]; Roller Compactor [5.6 h] |
| Interlock | **Interlock** | 2026-09-17 → 2026-10-08 (+21d) | 2026-09-21 → 2026-10-12 (+21d) |  |  |  |  |  |
| B1.2.32 14 13.13.17 | 60mm thick - Interlocking Block Pavers | 2026-09-17 → 2026-10-08 (+21d) | 2026-09-21 → 2026-10-12 (+21d) |  |  | 17.7d → 16.02d | B1.2.32 11 23.01.17 → B1.2.32 11 23.01.17_R |  |
| Curbstone | **Curbstone** | 2026-09-21 → 2026-10-12 (+21d) | 2026-10-12 → 2026-11-01 (+20d) |  |  |  |  |  |
| Pre Install | **Pre-Installation** | 2026-09-21 → 2026-10-12 (+21d) | 2026-09-30 → 2026-10-20 (+20d) |  |  |  |  |  |
| B2.31 23 00.481 | Excavation | 2026-09-21 → 2026-10-12 (+21d) | 2026-09-24 → 2026-10-14 (+20d) |  |  | 17.7d → 16.02d |  |  |
| B1.2.32 14 13.13.217 | PCC | 2026-09-24 → 2026-10-14 (+20d) | 2026-09-27 → 2026-10-17 (+20d) |  |  | 17.7d → 16.02d |  |  |
| 32 16 13.0017 | Haunching | 2026-09-27 → 2026-10-17 (+20d) | 2026-09-30 → 2026-10-20 (+20d) |  |  | 17.7d → 16.02d |  |  |
| Installation | **Installation** | 2026-09-30 → 2026-10-20 (+20d) | 2026-10-10 → 2026-10-29 (+19d) |  |  |  |  |  |
| B1.2.32 16.13.01.17 | Curb Stone, Type K1 | 2026-09-30 → 2026-10-20 (+20d) | 2026-10-04 → 2026-10-24 (+20d) |  |  | 17.7d → 16.02d |  |  |
| B1.2.32 16.13.02.16 | Dropped Curb, Type K3 | 2026-10-04 → 2026-10-24 (+20d) | 2026-10-05 → 2026-10-25 (+20d) |  |  | 17.7d → 16.02d |  |  |
| B1.2.32 16.13.03.17 | Edge Curb, Type K4 | 2026-10-05 → 2026-10-25 (+20d) | 2026-10-07 → 2026-10-27 (+20d) |  |  | 17.7d → 16.02d |  |  |
| B1.2.32 16.13.0417 | Heel Curb, Type K5 | 2026-10-05 → 2026-10-25 (+20d) | 2026-10-07 → 2026-10-27 (+20d) |  |  | 17.7d → 16.02d |  |  |
| B1.2.32 16.13.05.16 | Transition Curb | 2026-10-07 → 2026-10-27 (+20d) | 2026-10-10 → 2026-10-29 (+19d) |  |  | 17.7d → 16.02d |  |  |
| Finishing | **Finishing** | 2026-10-10 → 2026-10-29 (+19d) | 2026-10-12 → 2026-11-01 (+20d) |  |  |  |  |  |
| 32 16 13.017 | Finishing, Fareface | 2026-10-10 → 2026-10-29 (+19d) | 2026-10-12 → 2026-11-01 (+20d) |  |  | 17.7d → 16.02d |  |  |
| Asphalt Layers | **Asphalt Layers** | 2026-09-17 → 2026-10-08 (+21d) | 2026-10-14 → 2026-11-03 (+20d) |  |  |  |  |  |
| B1.2.32 11 26.01.17 | Bituminous Base Course including Prime Coat (MC1) and tack coat (RC2) | 2026-09-17 → 2026-10-08 (+21d) | 2026-09-20 → 2026-10-11 (+21d) |  |  | 35.7d → 34.02d | B1.2.32 11 23.01.17 → B1.2.32 11 23.01.17_R |  |
| B1.2.32 12 16.01.17 | Bituminous concrete Wearing Course, including tack coat (RC2) | 2026-10-12 → 2026-11-01 (+20d) | 2026-10-14 → 2026-11-03 (+20d) |  |  | 17.7d → 16.02d |  |  |
| Pavement Marking | **Pavement Marking** | 2026-10-17 → 2026-11-05 (+19d) | 2026-10-19 → 2026-11-08 (+20d) |  |  |  |  |  |
| B1.2.32 17 23.01.17 | Retroreflective Thermoplastic White Traffic lines | 2026-10-17 → 2026-11-05 (+19d) | 2026-10-19 → 2026-11-08 (+20d) |  |  | 88.7d → 86.02d |  |  |
| B1.2.32 17 23.02.17 | Retroreflective Thermoplastic Yellow, Traffic lines | 2026-10-17 → 2026-11-05 (+19d) | 2026-10-19 → 2026-11-08 (+20d) |  |  | 88.7d → 86.02d |  |  |
| Road Misc. | **Miscellaneous** | 2026-10-14 → 2026-11-03 (+20d) | 2026-10-17 → 2026-11-05 (+19d) |  |  |  |  |  |
| B1.2.32 12 19.13.017 | Speed Tables | 2026-10-14 → 2026-11-03 (+20d) | 2026-10-17 → 2026-11-05 (+19d) |  |  | 88.7d → 86.02d |  |  |
| B1.2.32 12 19.13.16 | Wheels stoppers (precast concrete) | 2026-10-14 → 2026-11-03 (+20d) | 2026-10-17 → 2026-11-05 (+19d) |  |  | 17.7d → 16.02d |  |  |
| Landscape | **Landscape** | 2026-12-12 → 2026-12-30 (+18d) | 2026-12-17 → 2027-01-05 (+19d) |  |  |  |  |  |
| Trees | **Trees** | 2026-12-12 → 2026-12-30 (+18d) | 2026-12-17 → 2027-01-05 (+19d) |  |  |  |  |  |
| B7.32 93 43.03 | Tamarindus indica | 2026-12-12 → 2026-12-30 (+18d) | 2026-12-17 → 2027-01-05 (+19d) |  |  | 3.76d → 3d |  |  |
| Prov. Sum | **Provisional Sum** | 2026-11-23 → 2026-12-14 (+21d) | 2026-12-21 → 2026-12-29 (+8d) |  |  |  |  |  |
| Prov.Sum 01 | Additional Works | 2026-11-23 → 2026-12-14 (+21d) | 2026-12-21 → 2026-12-29 (+8d) | 21d → 12d |  | 0d → 8d |  |  |
| T&C | **Testing & Commissioning** | 2026-11-16 → 2026-09-08 (-69d) | 2026-12-23 → 2027-01-03 (+11d) |  |  |  |  |  |
| Zone 01 | **Zone 01** | 2026-11-16 → 2026-09-08 (-69d) | 2026-12-07 → 2026-12-27 (+20d) |  |  |  |  |  |
| Wet | **Wet Networks & Stations** | 2026-11-16 → 2026-09-08 (-69d) | 2026-12-01 → 2026-12-12 (+11d) |  |  |  |  |  |
| Sewer | **Sewerage Network** | 2026-11-16 → 2026-09-08 (-69d) | 2026-11-22 → 2026-12-12 (+20d) |  |  |  |  |  |
| T&C-Sew-01 | Testing & Commissioning for Sewerage Network | 2026-11-16 → 2026-09-08 A (-69d) | 2026-11-22 → 2026-12-12 (+20d) |  | 0% → 90% | 14d → 23.32d | B6.33 05 39.01.1867, B6.33 05 39.01.817 SS, DMM-Mil-48 FF, DMM-Mil-13 FF → B6.33 05 39.01.1867, B6.33 05 39.01.817_R SS, DMM-Mil-48 FF, DMM-Mil-13 FF |  |
| Storm | **Storm Network** | 2026-11-24 → 2026-09-12 (-73d) | 2026-11-30 → 2026-12-12 (+12d) |  |  |  |  |  |
| T&C-Strm-01 | Testing & Commissioning for Storm Network | 2026-11-24 → 2026-09-12 A (-73d) | 2026-11-30 → 2026-12-12 (+12d) |  | 0% → 90% | 13d → 11.92d |  |  |
| Potable | **Potable Network** | 2026-11-24 → 2026-12-05 (+11d) | 2026-12-01 → 2026-12-12 (+11d) |  |  |  |  |  |
| T&C-Pot-01 | Testing & Commissioning for Potable Network | 2026-11-24 → 2026-12-05 (+11d) | 2026-12-01 → 2026-12-12 (+11d) |  |  | 13d → 18.32d | T&C-Strm-01 FF, B3.33 05 63.01.29 FF, B3.33 14 13.01.01109 SS, B3.33 14 19.01.fm18 FF, DMM-Mil-48 FF, T&C-Strm-01 SS → T&C-Strm-01 FF, B3.33 05 63.01.29 FF, B3.33 14 13.01.01109_R SS, B3.33 14 19.01.fm18 FF, DMM-Mil-48 FF, T&C-Strm-01 SS |  |
| Fire Fighting | **Fire Fighting Network** | 2026-11-25 → 2026-12-06 (+11d) | 2026-12-01 → 2026-12-12 (+11d) |  |  |  |  |  |
| T&C-FF-01 | Testing & Commissioning for Fire Fighting Network | 2026-11-25 → 2026-12-06 (+11d) | 2026-12-01 → 2026-12-12 (+11d) |  |  | 13d → 18.32d |  |  |
| TSE | **TSE Network** | 2026-11-25 → 2026-12-06 (+11d) | 2026-12-01 → 2026-12-12 (+11d) |  |  |  |  |  |
| T&C-TSE-01 | Testing & Commissioning for TSE Network | 2026-11-25 → 2026-12-06 (+11d) | 2026-12-01 → 2026-12-12 (+11d) |  |  | 13d → 18.32d |  |  |
| Dry | **Dry Networks** | 2026-11-23 → 2026-12-13 (+20d) | 2026-12-07 → 2026-12-27 (+20d) |  |  |  |  |  |
| MV | **Medium Voltage Network** | 2026-11-23 → 2026-12-13 (+20d) | 2026-11-26 → 2026-12-16 (+20d) |  |  |  |  |  |
| T&C-MV-01 | Testing & Commissioning for Medium Voltage Network | 2026-11-23 → 2026-12-13 (+20d) | 2026-11-26 → 2026-12-16 (+20d) |  |  | 3d → 1.32d | B2.33 71 00.021, B2.33 71 00.213, B2.33 71 49.23.05, B2.33 71 00.297, B2.33 71 49.23.064, DMM-Mil-48, B1.2.31 23 16.01.17, B2.33 71 16.031 → B2.33 71 00.021_R, B2.33 71 00.213, B2.33 71 49.23.05, B2.33 71 00.297, B2.33 71 49.23.064, DMM-Mil-48, B1.2.31 23 16.01.17, B2.33 71 16.031 |  |
| LV | **Low Voltage Network** | 2026-11-28 → 2026-12-17 (+19d) | 2026-11-30 → 2026-12-20 (+20d) |  |  |  |  |  |
| T&C-LV-01 | Testing & Commissioning for Low Voltage Network | 2026-11-28 → 2026-12-17 (+19d) | 2026-11-30 → 2026-12-20 (+20d) |  |  | 5d → 3.32d |  |  |

| ID | Task | Start | Finish | Complete | Total float | Predecessors |
| --- | --- | --- | --- | --- | --- | --- |
| Telecom | **Telecommunication Network** | 2026-12-01 → 2026-12-21 (+20d) | 2026-12-07 → 2026-12-27 (+20d) |  |  |  |
| T&C-Telecom-01 | Testing & Commissioning for Telecommunication Network | 2026-12-01 → 2026-12-21 (+20d) | 2026-12-07 → 2026-12-27 (+20d) |  | 10d → 8.32d | B2.33 71 00.267, B2.33 71 00.235, B2.1.33 81 26.191, B2.33 71 00.281, B2.1.33 81 26.194, B2.33 71 00.283, DMM-Mil-48, T&C-LV-01, B1.2.31 23 16.01.5 → B2.33 71 00.267_R, B2.33 71 00.235, B2.1.33 81 26.191, B2.33 71 00.281, B2.1.33 81 26.194, B2.33 71 00.283, DMM-Mil-48, T&C-LV-01, B1.2.31 23 16.01.5 |
| SL | **Street Lighting** | 2026-11-23 → 2026-12-13 (+20d) | 2026-11-29 → 2026-12-19 (+20d) |  |  |  |
| T&C-SL-01 | Testing & Commissioning for Street Lighting Network | 2026-11-23 → 2026-12-13 (+20d) | 2026-11-29 → 2026-12-19 (+20d) |  | 17d → 15.32d |  |
| Zone 02 | **Zone 02** | 2026-11-23 → 2026-12-06 (+13d) | 2026-12-10 → 2026-12-30 (+20d) |  |  |  |
| Wet | **Wet Networks & Stations** | 2026-11-23 → 2026-12-06 (+13d) | 2026-12-08 → 2026-12-21 (+13d) |  |  |  |
| Sewer | **Sewerage Network** | 2026-11-23 → 2026-12-13 (+20d) | 2026-11-29 → 2026-12-19 (+20d) |  |  |  |
| T&C-Sew-1 | Testing & Commissioning for Sewerage Network | 2026-11-23 → 2026-12-13 (+20d) | 2026-11-29 → 2026-12-19 (+20d) |  | 14d → 23.32d |  |
| Storm | **Storm Network** | 2026-12-01 → 2026-12-13 (+12d) | 2026-12-08 → 2026-12-20 (+12d) |  |  |  |
| T&C-Strm-1 | Testing & Commissioning for Storm Network | 2026-12-01 → 2026-12-13 (+12d) | 2026-12-08 → 2026-12-20 (+12d) |  | 20d → 24.32d |  |
| Potable | **Potable Network** | 2026-12-02 → 2026-12-13 (+11d) | 2026-12-08 → 2026-12-19 (+11d) |  |  |  |
| T&C-Pot-1 | Testing & Commissioning for Potable Network | 2026-12-02 → 2026-12-13 (+11d) | 2026-12-08 → 2026-12-19 (+11d) |  | 22d → 27.32d |  |
| Fire Fighting | **Fire Fighting Network** | 2026-11-25 → 2026-12-06 (+11d) | 2026-12-01 → 2026-12-12 (+11d) |  |  |  |
| T&C-FF-1 | Testing & Commissioning for Fire Fighting Network | 2026-11-25 → 2026-12-06 (+11d) | 2026-12-01 → 2026-12-12 (+11d) |  | 25d → 30.32d |  |
| TSE | **TSE Network** | 2026-12-02 → 2026-12-13 (+11d) | 2026-12-08 → 2026-12-19 (+11d) |  |  |  |
| T&C-TSE-1 | Testing & Commissioning for TSE Network | 2026-12-02 → 2026-12-13 (+11d) | 2026-12-08 → 2026-12-19 (+11d) |  | 13d → 18.32d |  |
| Pot Pump St. | **Potable Water Pump Station** | 2026-11-28 → 2026-12-17 (+19d) | 2026-12-01 → 2026-12-21 (+20d) |  |  |  |
| T&C-PumpS-13 | Testing & Commissioning for Process Control Wiring | 2026-11-28 → 2026-12-17 (+19d) | 2026-12-01 → 2026-12-21 (+20d) |  | 3d → 1.32d |  |
| T&C-PumpS-23 | Testing & Commissioning for Instrumentation for Process Systems | 2026-11-28 → 2026-12-17 (+19d) | 2026-12-01 → 2026-12-21 (+20d) |  | 3d → 1.32d |  |
| T&C-PumpS-3 | Testing & Commissioning for PLC System | 2026-11-28 → 2026-12-17 (+19d) | 2026-12-01 → 2026-12-21 (+20d) |  | 3d → 1.32d |  |
| Dry | **Dry Networks** | 2026-11-23 → 2026-12-13 (+20d) | 2026-12-10 → 2026-12-30 (+20d) |  |  |  |
| MV | **Medium Voltage Network** | 2026-11-28 → 2026-12-17 (+19d) | 2026-12-01 → 2026-12-21 (+20d) |  |  |  |
| T&C-MV-1 | Testing & Commissioning for Medium Voltage Network | 2026-11-28 → 2026-12-17 (+19d) | 2026-12-01 → 2026-12-21 (+20d) |  | 3d → 1.32d |  |
| LV | **Low Voltage Network** | 2026-12-01 → 2026-12-21 (+20d) | 2026-12-03 → 2026-12-23 (+20d) |  |  |  |
| T&C-LV-1 | Testing & Commissioning for Low Voltage Network | 2026-12-01 → 2026-12-21 (+20d) | 2026-12-03 → 2026-12-23 (+20d) |  | 5d → 3.32d |  |
| Telecom | **Telecommunication Network** | 2026-12-05 → 2026-12-24 (+19d) | 2026-12-10 → 2026-12-30 (+20d) |  |  |  |
| T&C-Telecom-1 | Testing & Commissioning for Telecommunication Network | 2026-12-05 → 2026-12-24 (+19d) | 2026-12-10 → 2026-12-30 (+20d) |  | 7d → 5.32d |  |
| SL | **Street Lighting** | 2026-11-23 → 2026-12-13 (+20d) | 2026-11-29 → 2026-12-19 (+20d) |  |  |  |
| T&C-SL-1 | Testing & Commissioning for Street Lighting Network | 2026-11-23 → 2026-12-13 (+20d) | 2026-11-29 → 2026-12-19 (+20d) |  | 17d → 15.32d |  |
| Zone 03 | **Zone 03** | 2026-11-26 → 2026-09-12 (-75d) | 2026-12-16 → 2026-12-30 (+14d) |  |  |  |
| Wet | **Wet Networks & Stations** | 2026-11-30 → 2026-09-12 (-79d) | 2026-12-16 → 2026-12-28 (+12d) |  |  |  |
| Sewer | **Sewerage Network** | 2026-11-30 → 2026-09-13 (-78d) | 2026-12-06 → 2026-10-07 (-60d) |  |  |  |
| T&C-Sew-11 | Testing & Commissioning for Sewerage Network | 2026-11-30 → 2026-09-13 A (-78d) | 2026-12-06 → 2026-10-07 (-60d) | 0% → 90% | 14d → 85.72d |  |
| Storm | **Storm Network** | 2026-12-02 → 2026-09-12 (-81d) | 2026-12-08 → 2026-12-20 (+12d) |  |  |  |
| T&C-Strm-11 | Testing & Commissioning for Storm Network | 2026-12-02 → 2026-09-12 A (-81d) | 2026-12-08 → 2026-12-20 (+12d) | 0% → 90% | 20d → 24.32d |  |
| Potable | **Potable Network** | 2026-12-02 → 2026-12-13 (+11d) | 2026-12-08 → 2026-12-19 (+11d) |  |  |  |
| T&C-Pot-11 | Testing & Commissioning for Potable Network | 2026-12-02 → 2026-12-13 (+11d) | 2026-12-08 → 2026-12-19 (+11d) |  | 22d → 27.32d |  |
| Fire Fighting | **Fire Fighting Network** | 2026-12-02 → 2026-12-13 (+11d) | 2026-12-05 → 2026-12-15 (+10d) |  |  |  |
| T&C-FF-11 | Testing & Commissioning for Fire Fighting Network | 2026-12-02 → 2026-12-13 (+11d) | 2026-12-05 → 2026-12-15 (+10d) |  | 25d → 30.32d |  |
| TSE | **TSE Network** | 2026-12-09 → 2026-12-20 (+11d) | 2026-12-16 → 2026-12-27 (+11d) |  |  |  |
| T&C-TSE-11 | Testing & Commissioning for TSE Network | 2026-12-09 → 2026-12-20 (+11d) | 2026-12-16 → 2026-12-27 (+11d) |  | 13d → 18.32d |  |
| Sewer Lift St. | **Sewer Lift Station** | 2026-12-02 → 2026-12-22 (+20d) | 2026-12-08 → 2026-12-28 (+20d) |  |  |  |
| T&C-LiftS-33 | Testing & Commissioning for PLC System | 2026-12-02 → 2026-12-22 (+20d) | 2026-12-08 → 2026-12-28 (+20d) |  | 3d → 1.32d |  |
| T&C-LiftS-43 | Testing & Commissioning for Process Control Wiring | 2026-12-02 → 2026-12-22 (+20d) | 2026-12-08 → 2026-12-28 (+20d) |  | 3d → 1.32d |  |
| T&C-LiftS-53 | Testing & Commissioning for Instrumentation for Process Systems | 2026-12-02 → 2026-12-22 (+20d) | 2026-12-08 → 2026-12-28 (+20d) |  | 3d → 1.32d |  |
| Dry | **Dry Networks** | 2026-11-26 → 2026-12-16 (+20d) | 2026-12-10 → 2026-12-30 (+20d) |  |  |  |
| MV | **Medium Voltage Network** | 2026-12-02 → 2026-12-22 (+20d) | 2026-12-06 → 2026-12-26 (+20d) |  |  |  |
| T&C-MV-11 | Testing & Commissioning for Medium Voltage Network | 2026-12-02 → 2026-12-22 (+20d) | 2026-12-06 → 2026-12-26 (+20d) |  | 3d → 1.32d |  |
| LV | **Low Voltage Network** | 2026-12-05 → 2026-12-24 (+19d) | 2026-12-07 → 2026-12-27 (+20d) |  |  |  |
| T&C-LV-11 | Testing & Commissioning for Low Voltage Network | 2026-12-05 → 2026-12-24 (+19d) | 2026-12-07 → 2026-12-27 (+20d) |  | 5d → 3.32d |  |
| Telecom | **Telecommunication Network** | 2026-12-05 → 2026-12-24 (+19d) | 2026-12-10 → 2026-12-30 (+20d) |  |  |  |
| T&C-Telecom-11 | Testing & Commissioning for Telecommunication Network | 2026-12-05 → 2026-12-24 (+19d) | 2026-12-10 → 2026-12-30 (+20d) |  | 7d → 5.32d |  |
| SL | **Street Lighting** | 2026-11-26 → 2026-12-16 (+20d) | 2026-11-29 → 2026-12-19 (+20d) |  |  |  |
| T&C-SL-11 | Testing & Commissioning for Street Lighting Network | 2026-11-26 → 2026-12-16 (+20d) | 2026-11-29 → 2026-12-19 (+20d) |  | 17d → 15.32d |  |
| Zone 04 | **Zone 04** | 2026-11-23 → 2026-09-10 (-74d) | 2026-12-23 → 2027-01-03 (+11d) |  |  |  |
| Wet | **Wet Networks & Stations** | 2026-11-28 → 2026-09-10 (-79d) | 2026-12-23 → 2027-01-03 (+11d) |  |  |  |
| Sewer | **Sewerage Network** | 2026-12-07 → 2026-09-10 (-88d) | 2026-12-13 → 2026-12-12 (-1d) |  |  |  |
| T&C-Sew-21 | Testing & Commissioning for Sewerage Network | 2026-12-07 → 2026-09-10 A (-88d) | 2026-12-13 → 2026-12-12 (-1d) | 0% → 90% | 14d → 29.32d |  |
| Storm | **Storm Network** | 2026-12-02 → 2026-09-28 (-65d) | 2026-12-08 → 2026-10-07 (-62d) |  |  |  |
| T&C-Strm-21 | Testing & Commissioning for Storm Network | 2026-12-02 → 2026-09-28 A (-65d) | 2026-12-08 → 2026-10-07 (-62d) | 0% → 90% | 20d → 87.72d |  |
| Potable | **Potable Network** | 2026-12-02 → 2026-12-13 (+11d) | 2026-12-08 → 2026-12-19 (+11d) |  |  |  |
| T&C-Pot-21 | Testing & Commissioning for Potable Network | 2026-12-02 → 2026-12-13 (+11d) | 2026-12-08 → 2026-12-19 (+11d) |  | 22d → 27.32d |  |
| Fire Fighting | **Fire Fighting Network** | 2026-11-28 → 2026-12-08 (+10d) | 2026-12-05 → 2026-12-15 (+10d) |  |  |  |
| T&C-FF-21 | Testing & Commissioning for Fire Fighting Network | 2026-11-28 → 2026-12-08 (+10d) | 2026-12-05 → 2026-12-15 (+10d) |  | 25d → 30.32d |  |
| TSE | **TSE Network** | 2026-12-17 → 2026-12-28 (+11d) | 2026-12-23 → 2027-01-03 (+11d) |  |  |  |
| T&C-TSE-21 | Testing & Commissioning for TSE Network | 2026-12-17 → 2026-12-28 (+11d) | 2026-12-23 → 2027-01-03 (+11d) |  | 13d → 18.32d |  |
| Dry | **Dry Networks** | 2026-11-23 → 2026-12-13 (+20d) | 2026-12-10 → 2026-12-30 (+20d) |  |  |  |
| MV | **Medium Voltage Network** | 2026-12-07 → 2026-12-27 (+20d) | 2026-12-10 → 2026-12-30 (+20d) |  |  |  |
| T&C-MV-21 | Testing & Commissioning for Medium Voltage Network | 2026-12-07 → 2026-12-27 (+20d) | 2026-12-10 → 2026-12-30 (+20d) |  | 3d → 1.32d |  |
| LV | **Low Voltage Network** | 2026-12-08 → 2026-12-28 (+20d) | 2026-12-10 → 2026-12-30 (+20d) |  |  |  |

| ID | Task | Start | Finish | Total float |
| --- | --- | --- | --- | --- |
| T&C-LV-21 | Testing & Commissioning for Low Voltage Network | 2026-12-08 → 2026-12-28 (+20d) | 2026-12-10 → 2026-12-30 (+20d) | 5d → 3.32d |
| Telecom | **Telecommunication Network** | 2026-12-05 → 2026-12-24 (+19d) | 2026-12-10 → 2026-12-30 (+20d) |  |
| T&C-Telecom-21 | Testing & Commissioning for Telecommunication Network | 2026-12-05 → 2026-12-24 (+19d) | 2026-12-10 → 2026-12-30 (+20d) | 7d → 5.32d |
| SL | **Street Lighting** | 2026-11-23 → 2026-12-13 (+20d) | 2026-11-30 → 2026-12-20 (+20d) |  |
| T&C-SL-21 | Testing & Commissioning for Street Lighting Network | 2026-11-23 → 2026-12-13 (+20d) | 2026-11-30 → 2026-12-20 (+20d) | 16d → 14.32d |
| Closeout | **Project Closeout** | 2026-12-01 → 2026-12-16 (+15d) | 2027-01-29 → 2027-02-15 (+17d) |  |
| Engineering | **Engineering** | 2026-12-01 → 2026-12-16 (+15d) | 2026-12-30 → 2027-01-11 (+12d) |  |
| AS-Built | **AS-Built** | 2026-12-01 → 2026-12-16 (+15d) | 2026-12-30 → 2027-01-11 (+12d) |  |
| SDS | **Wet Networks & Stations** | 2026-12-02 → 2026-12-16 (+14d) | 2026-12-30 → 2027-01-10 (+11d) |  |
| Sewer | **Sewerage Network** | 2026-12-14 → 2026-12-20 (+6d) | 2026-12-17 → 2026-12-23 (+6d) |  |
| Close.Asblt.01-1 | AS-Built Drawings Submittal - Sewerage Network | 2026-12-14 → 2026-12-20 (+6d) | 2026-12-17 → 2026-12-23 (+6d) | 16d → 25.32d |
| Storm | **Storm Network** | 2026-12-19 → 2026-12-24 (+5d) | 2026-12-22 → 2026-12-28 (+6d) |  |
| Close.Asblt.01-2 | AS-Built Drawings Submittal - Storm Network | 2026-12-19 → 2026-12-24 (+5d) | 2026-12-22 → 2026-12-28 (+6d) | 16d → 25.32d |
| Potable | **Potable Network** | 2026-12-23 → 2027-01-05 (+13d) | 2026-12-27 → 2027-01-09 (+13d) |  |
| Close.Asblt.01-3 | AS-Built Drawings Submittal - Potable Network | 2026-12-23 → 2027-01-05 (+13d) | 2026-12-27 → 2027-01-09 (+13d) | 16d → 19.32d |
| Fire Fighting | **Fire Fighting Network** | 2026-12-06 → 2026-12-16 (+10d) | 2026-12-09 → 2026-12-20 (+11d) |  |
| Close.Asblt.01-5 | AS-Built Drawings Submittal - Fire Fighting Network | 2026-12-06 → 2026-12-16 (+10d) | 2026-12-09 → 2026-12-20 (+11d) | 25d → 30.32d |
| TSE | **TSE Network** | 2026-12-27 → 2027-01-06 (+10d) | 2026-12-30 → 2027-01-10 (+11d) |  |
| Close.Asblt.01-4 | AS-Built Drawings Submittal - TSE Network | 2026-12-27 → 2027-01-06 (+10d) | 2026-12-30 → 2027-01-10 (+11d) | 13d → 18.32d |
| Pot Pump St. | **Potable Water Pump Station** | 2026-12-02 → 2026-12-22 (+20d) | 2026-12-06 → 2026-12-26 (+20d) |  |
| Close.Asblt.01-21 | AS-Built Drawings Submittal - Potable Water Pump Station - Mech | 2026-12-02 → 2026-12-22 (+20d) | 2026-12-06 → 2026-12-26 (+20d) | 34d → 31.32d |
| Close.Asblt.01-31 | AS-Built Drawings Submittal - Potable Water Pump Station - Elec. | 2026-12-02 → 2026-12-22 (+20d) | 2026-12-06 → 2026-12-26 (+20d) | 34d → 31.32d |
| Close.Asblt.01-6 | AS-Built Drawings Submittal - Potable Water Pump Station - Civil & Arch | 2026-12-02 → 2026-12-22 (+20d) | 2026-12-06 → 2026-12-26 (+20d) | 22d → 19.32d |
| Sewer Lift St. | **Sewer Lift Station** | 2026-12-09 → 2026-12-29 (+20d) | 2026-12-13 → 2027-01-02 (+20d) |  |
| Close.Asblt.01-41 | AS-Built Drawings Submittal - Sewer Lift Station - Civil & Arch | 2026-12-09 → 2026-12-29 (+20d) | 2026-12-13 → 2027-01-02 (+20d) | 20d → 17.32d |
| Close.Asblt.01-51 | AS-Built Drawings Submittal - Sewer Lift Station - Mech | 2026-12-09 → 2026-12-29 (+20d) | 2026-12-13 → 2027-01-02 (+20d) | 20d → 17.32d |
| Close.Asblt.01-61 | AS-Built Drawings Submittal - Sewer Lift Station - Elec. | 2026-12-09 → 2026-12-29 (+20d) | 2026-12-13 → 2027-01-02 (+20d) | 20d → 17.32d |
| 1 | **Dry Networks** | 2026-12-01 → 2026-12-21 (+20d) | 2026-12-22 → 2027-01-11 (+20d) |  |
| MV | **Medium Voltage Network** | 2026-12-14 → 2027-01-03 (+20d) | 2026-12-17 → 2027-01-06 (+20d) |  |
| Close.MV.Asblt.01-8 | AS-Built Drawings Submittal - Medium Voltage Network | 2026-12-14 → 2027-01-03 (+20d) | 2026-12-17 → 2027-01-06 (+20d) | 20d → 17.32d |
| LV | **Low Voltage Network** | 2026-12-19 → 2027-01-07 (+19d) | 2026-12-22 → 2027-01-11 (+20d) |  |
| Close.LV.Asblt.01-9 | AS-Built Drawings Submittal - Low Voltage Network | 2026-12-19 → 2027-01-07 (+19d) | 2026-12-22 → 2027-01-11 (+20d) | 20d → 17.32d |
| Telecom | **Telecommunication Network** | 2026-12-12 → 2026-12-31 (+19d) | 2026-12-15 → 2027-01-04 (+20d) |  |
| Close.Tele.Asblt.01 | AS-Built Drawings Submittal - Telecommunication Network | 2026-12-12 → 2026-12-31 (+19d) | 2026-12-15 → 2027-01-04 (+20d) | 26d → 23.32d |
| SL | **Street Lighting** | 2026-12-01 → 2026-12-21 (+20d) | 2026-12-05 → 2026-12-24 (+19d) |  |
| Close.SL.Asblt.01-11 | AS-Built Drawings Submittal - Street Lighting | 2026-12-01 → 2026-12-21 (+20d) | 2026-12-05 → 2026-12-24 (+19d) | 29d → 26.32d |
| O & M Manuals | **O & M Manuals** | 2026-12-02 → 2026-12-20 (+18d) | 2026-12-26 → 2027-01-06 (+11d) |  |
| SDS | **Wet Networks & Stations** | 2026-12-02 → 2026-12-20 (+18d) | 2026-12-26 → 2027-01-05 (+10d) |  |
| Sewer | **Sewerage Network** | 2026-12-14 → 2026-12-20 (+6d) | 2026-12-15 → 2026-12-21 (+6d) |  |
| Clsout.13.2.1.131 | O & M Manuals Submittals | 2026-12-14 → 2026-12-20 (+6d) | 2026-12-15 → 2026-12-21 (+6d) | 14d → 23.32d |
| Storm | **Storm Network** | 2026-12-16 → 2026-12-22 (+6d) | 2026-12-17 → 2026-12-23 (+6d) |  |
| Clsout.13.2.1.141 | O & M Manuals Submittals | 2026-12-16 → 2026-12-22 (+6d) | 2026-12-17 → 2026-12-23 (+6d) | 14d → 23.32d |
| Potable | **Potable Network** | 2026-12-19 → 2026-12-24 (+5d) | 2026-12-20 → 2026-12-26 (+6d) |  |
| Clsout.13.2.1.151 | O & M Manuals Submittals | 2026-12-19 → 2026-12-24 (+5d) | 2026-12-20 → 2026-12-26 (+6d) | 14d → 23.32d |
| Fire Fighting | **Fire Fighting Network** | 2026-12-21 → 2026-12-27 (+6d) | 2026-12-22 → 2026-12-28 (+6d) |  |
| Clsout.13.2.1.171 | O & M Manuals Submittals | 2026-12-21 → 2026-12-27 (+6d) | 2026-12-22 → 2026-12-28 (+6d) | 14d → 23.32d |
| TSE | **TSE Network** | 2026-12-24 → 2027-01-04 (+11d) | 2026-12-26 → 2027-01-05 (+10d) |  |
| Clsout.13.2.1.161 | O & M Manuals Submittals | 2026-12-24 → 2027-01-04 (+11d) | 2026-12-26 → 2027-01-05 (+10d) | 13d → 18.32d |
| Pot Pump St. | **Potable Water Pump Station** | 2026-12-02 → 2026-12-22 (+20d) | 2026-12-03 → 2026-12-23 (+20d) |  |
| Clsout.13.2.1.181 | O & M Manuals Submittals | 2026-12-02 → 2026-12-22 (+20d) | 2026-12-03 → 2026-12-23 (+20d) | 15d → 13.32d |
| Sewer Lift St. | **Sewer Lift Station** | 2026-12-09 → 2026-12-29 (+20d) | 2026-12-10 → 2026-12-30 (+20d) |  |
| Clsout.13.2.1.191 | O & M Manuals Submittals | 2026-12-09 → 2026-12-29 (+20d) | 2026-12-10 → 2026-12-30 (+20d) | 9d → 7.32d |
| 1 | **Dry Networks** | 2026-12-12 → 2026-12-31 (+19d) | 2026-12-17 → 2027-01-06 (+20d) |  |
| MV | **Medium Voltage Network** | 2026-12-12 → 2026-12-31 (+19d) | 2026-12-13 → 2027-01-02 (+20d) |  |
| Clsout.13.2.1.201 | O & M Manuals Submittals | 2026-12-12 → 2026-12-31 (+19d) | 2026-12-13 → 2027-01-02 (+20d) | 3d → 1.32d |
| LV | **Low Voltage Network** | 2026-12-14 → 2027-01-03 (+20d) | 2026-12-15 → 2027-01-04 (+20d) |  |
| Clsout.13.2.1.211 | O & M Manuals Submittals | 2026-12-14 → 2027-01-03 (+20d) | 2026-12-15 → 2027-01-04 (+20d) | 3d → 1.32d |
| Telecom | **Telecommunication Network** | 2026-12-16 → 2027-01-05 (+20d) | 2026-12-17 → 2027-01-06 (+20d) |  |
| Clsout.13.2.1.221 | O & M Manuals Submittals | 2026-12-16 → 2027-01-05 (+20d) | 2026-12-17 → 2027-01-06 (+20d) | 3d → 1.32d |
| SL | **Street Lighting** | 2026-12-16 → 2027-01-05 (+20d) | 2026-12-17 → 2027-01-06 (+20d) |  |
| Clsout.13.2.1.231 | O & M Manuals Submittals | 2026-12-16 → 2027-01-05 (+20d) | 2026-12-17 → 2027-01-06 (+20d) | 3d → 1.32d |
| Spare Parts | **Operational Spare Parts & Guarantee Certificates/Docs.** | 2026-12-02 → 2026-12-20 (+18d) | 2026-12-26 → 2027-01-06 (+11d) |  |
| SDS | **Wet Networks & Stations** | 2026-12-02 → 2026-12-20 (+18d) | 2026-12-26 → 2027-01-05 (+10d) |  |
| Sewer | **Sewerage Network** | 2026-12-14 → 2026-12-20 (+6d) | 2026-12-15 → 2026-12-21 (+6d) |  |
| Clsout.13.2.1.241 | Operational Spare Parts & Guarantee Certificates/Docs. | 2026-12-14 → 2026-12-20 (+6d) | 2026-12-15 → 2026-12-21 (+6d) | 14d → 23.32d |
| Storm | **Storm Network** | 2026-12-16 → 2026-12-22 (+6d) | 2026-12-17 → 2026-12-23 (+6d) |  |
| Clsout.13.2.1.251 | Operational Spare Parts & Guarantee Certificates/Docs. | 2026-12-16 → 2026-12-22 (+6d) | 2026-12-17 → 2026-12-23 (+6d) | 14d → 23.32d |
| Potable | **Potable Network** | 2026-12-19 → 2026-12-24 (+5d) | 2026-12-20 → 2026-12-26 (+6d) |  |
| Clsout.13.2.1.261 | Operational Spare Parts & Guarantee Certificates/Docs. | 2026-12-19 → 2026-12-24 (+5d) | 2026-12-20 → 2026-12-26 (+6d) | 14d → 23.32d |
| Fire Fighting | **Fire Fighting Network** | 2026-12-21 → 2026-12-27 (+6d) | 2026-12-22 → 2026-12-28 (+6d) |  |

| ID | Task | Start | Finish | Duration | Total float |
| --- | --- | --- | --- | --- | --- |
| Clsout.13.2.1.281 | Operational Spare Parts & Guarantee Certificates/Docs. | 2026-12-21 → 2026-12-27 (+6d) | 2026-12-22 → 2026-12-28 (+6d) |  | 14d → 23.32d |
| TSE | **TSE Network** | 2026-12-24 → 2027-01-04 (+11d) | 2026-12-26 → 2027-01-05 (+10d) |  |  |
| Clsout.13.2.1.271 | Operational Spare Parts & Guarantee Certificates/Docs. | 2026-12-24 → 2027-01-04 (+11d) | 2026-12-26 → 2027-01-05 (+10d) |  | 13d → 18.32d |
| Pot Pump St. | **Potable Water Pump Station** | 2026-12-02 → 2026-12-22 (+20d) | 2026-12-03 → 2026-12-23 (+20d) |  |  |
| Clsout.13.2.1.291 | Operational Spare Parts & Guarantee Certificates/Docs. | 2026-12-02 → 2026-12-22 (+20d) | 2026-12-03 → 2026-12-23 (+20d) |  | 7d → 5.32d |
| Sewer Lift St. | **Sewer Lift Station** | 2026-12-09 → 2026-12-29 (+20d) | 2026-12-10 → 2026-12-30 (+20d) |  |  |
| Clsout.13.2.1.301 | Operational Spare Parts & Guarantee Certificates/Docs. | 2026-12-09 → 2026-12-29 (+20d) | 2026-12-10 → 2026-12-30 (+20d) |  | 3d → 1.32d |
| 1 | **Dry Networks** | 2026-12-10 → 2026-12-21 (+11d) | 2026-12-17 → 2027-01-06 (+20d) |  |  |
| MV | **Medium Voltage Network** | 2026-12-12 → 2026-12-31 (+19d) | 2026-12-13 → 2027-01-02 (+20d) |  |  |
| Clsout.13.2.1.351 | Operational Spare Parts & Guarantee Certificates/Docs. | 2026-12-12 → 2026-12-31 (+19d) | 2026-12-13 → 2027-01-02 (+20d) |  | 3d → 1.32d |
| LV | **Low Voltage Network** | 2026-12-14 → 2027-01-03 (+20d) | 2026-12-15 → 2027-01-04 (+20d) |  |  |
| Clsout.13.2.1.341 | Operational Spare Parts & Guarantee Certificates/Docs. | 2026-12-14 → 2027-01-03 (+20d) | 2026-12-15 → 2027-01-04 (+20d) |  | 3d → 1.32d |
| Telecom | **Telecommunication Network** | 2026-12-16 → 2027-01-05 (+20d) | 2026-12-17 → 2027-01-06 (+20d) |  |  |
| Clsout.13.2.1.321 | Operational Spare Parts & Guarantee Certificates/Docs. | 2026-12-16 → 2027-01-05 (+20d) | 2026-12-17 → 2027-01-06 (+20d) |  | 3d → 1.32d |
| SL | **Street Lighting** | 2026-12-10 → 2026-12-21 (+11d) | 2026-12-12 → 2026-12-22 (+10d) |  |  |
| Clsout.13.2.1.311 | Operational Spare Parts & Guarantee Certificates/Docs. | 2026-12-10 → 2026-12-21 (+11d) | 2026-12-12 → 2026-12-22 (+10d) |  | 25d → 30.32d |
| Snagging | **Snagging** | 2026-12-22 → 2027-01-09 (+18d) | 2027-01-14 → 2027-01-31 (+17d) |  |  |
| Clsout.13.2.1.1 | Punch List | 2026-12-22 → 2027-01-09 (+18d) | 2026-12-26 → 2027-01-13 (+18d) |  |  |
| Clsout.13.2.1.2 | Rectifying / Closing | 2026-12-27 → 2027-01-13 (+17d) | 2027-01-12 → 2027-01-29 (+17d) | 15d → 14d |  |
| Clsout.13.2.1.4 | Desnagging | 2027-01-11 → 2027-01-27 (+16d) | 2027-01-14 → 2027-01-31 (+17d) |  |  |
| Demobilization | **Demobilization** | 2027-01-16 → 2027-01-31 (+15d) | 2027-01-27 → 2027-02-13 (+17d) |  |  |
| Clsout.13.2.1.7 | Demobilization of Manpower | 2027-01-16 → 2027-01-31 (+15d) | 2027-01-19 → 2027-02-04 (+16d) |  |  |
| Clsout.13.2.1.8 | Demobilization of Equipments | 2027-01-20 → 2027-02-04 (+15d) | 2027-01-25 → 2027-02-10 (+16d) |  |  |
| Clsout.13.2.1.10 | Restoration Of Ground Surfaces | 2027-01-21 → 2027-02-06 (+16d) | 2027-01-25 → 2027-02-10 (+16d) |  |  |
| Clsout.13.2.1.9 | Demoblization of Offices & Facilities & Site Clean-up | 2027-01-21 → 2027-02-06 (+16d) | 2027-01-27 → 2027-02-13 (+17d) |  |  |
| Handing Over | **Handing Over** | 2027-01-28 → 2027-02-13 (+16d) | 2027-01-29 → 2027-02-15 (+17d) |  |  |
| Clsout.13.2.1.11 | Project Handing Over | 2027-01-28 → 2027-02-13 (+16d) | 2027-01-29 → 2027-02-15 (+17d) |  |  |
