# DEVELOPMENT OF SUDAIR INDUSTRIAL CITY PHASE 2 - 09/11/2026.

How a schedule from Primavera P6 changed from version to version. A marks actual dates.

## Version 8 (data date 2026-11-09, saved 2026-11-09, file Sudair 2 P2 09.11.26 INFRA.xer)

| ID | WBS | Task | Duration | Start | Finish | Predecessors | Complete | Total float |
| --- | --- | --- | --- | --- | --- | --- | --- | --- |
|  | M | **Milestones** |  | 2026-01-06 | 2027-07-05 |  |  |  |
|  | 1 | **Major Milestone** |  | 2026-01-06 | 2027-07-05 |  |  |  |
| SDR-2-MILS-1000 |  | Project Start Milstone | 0d | 2026-01-06 A | 2026-01-06 A |  | 100% |  |
| SDR-2-MILS-1010 |  | Project Finish Milstone | 0d | 2027-07-05 | 2027-07-05 | SDR-2-CLO-AS-M-1010, SDR-2-CON-IR-ZA-2190, SDR-2-CON-IR-ZA-2510, SDR-2-CON-IR-ZA-2550, SDR-2-CON-LS-ZA-1020, SDR-2-CON-LS-ZA-1030, SDR-2-CON-LS-ZA-1040, SDR-2-CON-LS-ZA-1050, SDR-2-CON-LS-ZA-1060, SDR-2-CON-LS-ZG-1020, SDR-2-CON-LS-ZG-1030, SDR-2-CON-LS-ZG-1040, SDR-2-CON-LS-ZG-1050, SDR-2-CON-LS-ZG-1060, SDR-2-TC-SWDN-1020, SDR-2-TC-TSE-1040, SDR-2-TC-PW-1050, SDR-2-TC-EW-1060, SDR-2-CLO-TM-1000, SDR-2-CLO-DM-1000, SDR-2-CLO-DE-1000, SDR-2-CLO-RO-1000, SDR-2-CLO-HO-1000, SDR-2-MILS-1080 FF, SDR-2-MILS-1110 FF, SDR-2-CON-IR-ZA-2310 FF, SDR-2-CON-IR-ZA-2940 FF, SDR-2-CON-IR-ZA-2980 FF, SDR-2-MILS-1060 FF, SDR-2-MILS-1070 FF, SDR-2-CLO-AS-C-1010, SDR-2-CON-CC-ZA-1410, SDR-2-CON-CC-ZA-1110 |  | 0d |
|  | 3 | **Contractual Milestone** |  | 2026-04-06 | 2027-07-05 |  |  |  |
| SDR-2-MILS-1020 |  | Mobilization Finish Milestone | 0d | 2026-04-06 A | 2026-04-06 A | SDR-2-MOBL-1060 | 100% |  |
| SDR-2-MILS-1030 |  | Execution Plan and Baseline Submission Finish Milestone | 0d | 2026-04-06 A | 2026-04-06 A | SDR-2-PREL-1110 | 100% |  |
| SDR-2-MILS-1040 |  | Submission and approval of plans and materials Finish Milestone | 0d | 2026-07-25 A | 2026-07-25 A | SDR-2-PRO-MAL-E-1160, SDR-2-PRO-MAL-E-1200 FF, SDR-2-PRO-MSL-E-1170 FF, SDR-2-PRO-MAL-E-1170 FF | 100% |  |
| SDR-2-MILS-1060 |  | Completion of medium voltage works | 0d | 2027-03-04 | 2027-03-04 | SDR-2-CON-CC-ZA-1860, SDR-2-CON-CC-ZA-1620 FF |  | 21d |
| SDR-2-MILS-1050 |  | Completion of road works | 0d | 2027-05-05 | 2027-05-05 | SDR-2-CON-RW-ZA-1710, SDR-2-CON-RW-ZA-2410 FF, SDR-2-CON-RW-ZG-1160 FF |  | 7d |
| SDR-2-MILS-1070 |  | Completion of All Network work | 0d | 2027-05-05 | 2027-05-05 | SDR-2-CON-ST-ZA-4170, SDR-2-CON-ST-ZA-5670, SDR-2-CON-ST-ZA-4020 |  | 47d |
| SDR-2-MILS-1080 |  | Completion of finishing works in the project | 0d | 2027-07-05 | 2027-07-05 | SDR-2-CON-IR-ZA-2310, SDR-2-CON-IR-ZA-2800 |  | 0.7d |
|  | 2 | **Phases Milestone** |  | 2026-11-09 | 2027-07-05 |  |  |  |
| SDR-2-MILS-1090 |  | Engineering Phase Finish Milestone | 0d | 2026-11-09 | 2026-11-09 | SDR-2-ENG-APP-M-1290 |  | 80d |
| SDR-2-MILS-1100 |  | Procurment Phase Finish Milestone | 0d | 2027-01-12 | 2027-01-12 | SDR-2-PRO-ST-E-1240 |  | 18d |
| SDR-2-MILS-1110 |  | Construction Phase Finish Milestone | 0d | 2027-07-05 | 2027-07-05 | SDR-2-CON-IR-ZA-2670 FF, SDR-2-CLO-HO-1000 FF, SDR-2-CLO-HO-1000 |  | 0d |
|  | MB | **Mobilization** |  | 2026-01-06 | 2026-04-06 |  |  |  |
|  | 6 | **Office Site Prepare** |  | 2026-01-06 | 2026-01-10 |  |  |  |
| SDR-2-MOBL-1000 |  | Office Area Grading and Prepare | 4d | 2026-01-06 A | 2026-01-10 A | SDR-2-MILS-1000 | 100% |  |
|  | 3 | **Access Roads** |  | 2026-01-11 | 2026-01-14 |  |  |  |
| SDR-2-MOBL-1010 |  | Office Area Access Roads Prepare | 4d | 2026-01-11 A | 2026-01-14 A | SDR-2-MOBL-1000 | 100% |  |
|  | 5 | **Offices Installation** |  | 2026-01-15 | 2026-01-20 |  |  |  |
| SDR-2-MOBL-1020 |  | Offices Cabins Installation | 5d | 2026-01-15 A | 2026-01-20 A | SDR-2-MOBL-1010 | 100% |  |
|  | 10 | **Offices MEP Works** |  | 2026-01-15 | 2026-01-20 |  |  |  |
| SDR-2-MOBL-1030 |  | Office Cabins MEP Works | 5d | 2026-01-15 A | 2026-01-20 A | SDR-2-MOBL-1020 | 100% |  |
|  | 4 | **Manpower Mobilization** |  | 2026-01-21 | 2026-01-25 |  |  |  |
| SDR-2-MOBL-1040 |  | Manpower Arrive | 4d | 2026-01-21 A | 2026-01-25 A | SDR-2-MOBL-1030 SS | 100% |  |
|  | 7 | **Equipment Mobilization** |  | 2026-01-26 | 2026-01-31 |  |  |  |
| SDR-2-MOBL-1050 |  | Equipment Arrive | 5d | 2026-01-26 A | 2026-01-31 A | SDR-2-MOBL-1040 | 100% |  |
|  | 1 | **Project Signage** |  | 2026-02-01 | 2026-02-05 |  |  |  |
| SDR-2-MOBL-1060 |  | Project Sign Installation | 5d | 2026-02-01 A | 2026-02-05 A | SDR-2-MOBL-1050 | 100% |  |
|  | 2 | **Preliminary Submittals** |  | 2026-01-22 | 2026-04-06 |  |  |  |
|  | 1 | **HSSE Plan** |  | 2026-01-22 | 2026-02-28 |  |  |  |
| SDR-2-PREL-1000 |  | Project HSSE Plan Submission | 3d | 2026-01-22 A | 2026-01-26 A | SDR-2-MOBL-1030, SDR-2-MOBL-1050 | 100% |  |
| SDR-2-PREL-1010 |  | Project HSSE Plan Approval | 2d | 2026-01-27 A | 2026-02-28 A | SDR-2-PREL-1000 | 100% |  |
|  | 2 | **Quality Control Plan** |  | 2026-02-01 | 2026-03-05 |  |  |  |
| SDR-2-PREL-1020 |  | Project Quality Plan Submission | 3d | 2026-02-01 A | 2026-02-03 A | SDR-2-PREL-1000 SS | 100% |  |
| SDR-2-PREL-1030 |  | Project Quality Plan Approval | 2d | 2026-02-04 A | 2026-03-05 A | SDR-2-PREL-1020 | 100% |  |
|  | 3 | **Communications Plan** |  | 2026-01-29 | 2026-02-02 |  |  |  |
| SDR-2-PREL-1040 |  | Project Communication Plan Submission | 3d | 2026-01-29 A | 2026-02-01 A | SDR-2-PREL-1020 SS | 100% |  |
| SDR-2-PREL-1050 |  | Project Communication Plan Approval | 2d | 2026-02-01 A | 2026-02-02 A | SDR-2-PREL-1040 | 100% |  |
|  | 4 | **Risk Managment Plan** |  | 2026-01-28 | 2026-02-07 |  |  |  |
| SDR-2-PREL-1070 |  | Project Risk Managment Plan Approvals | 2d | 2026-01-28 A | 2026-02-02 A | SDR-2-PREL-1060 | 100% |  |
| SDR-2-PREL-1060 |  | Project Risk Managment Plan Submission | 3d | 2026-02-01 A | 2026-02-07 A | SDR-2-PREL-1040 SS | 100% |  |
|  | 5 | **Project Execution Plan** |  | 2026-02-01 | 2026-02-07 |  |  |  |
| SDR-2-PREL-1080 |  | Project Execution Plan Submission | 3d | 2026-02-01 A | 2026-02-07 A | SDR-2-PREL-1060 SS | 100% |  |
| SDR-2-PREL-1090 |  | Project Execution Plan Approvals | 2d | 2026-02-07 A | 2026-02-07 A | SDR-2-PREL-1080, SDR-2-MILS-1030 FF | 100% |  |
|  | 6 | **Project Schedule** |  | 2026-01-29 | 2026-04-06 |  |  |  |
| SDR-2-PREL-1100 |  | Project Schedule Submission | 3d | 2026-01-29 A | 2026-02-03 A | SDR-2-PREL-1000 SS | 100% |  |
| SDR-2-PREL-1110 |  | Project Schedule Approvals | 2d | 2026-02-04 A | 2026-04-06 A | SDR-2-PREL-1100 | 100% |  |
|  | EN | **Engineering** |  | 2026-02-08 | 2026-11-21 |  |  |  |
|  | 1 | **Shop Drawings Stage** |  | 2026-02-08 | 2026-11-21 |  |  |  |
|  | 1 | **Submission** |  | 2026-02-08 | 2026-06-15 |  |  |  |
|  | 4 | **Road Works** |  | 2026-02-08 | 2026-02-18 |  |  |  |
| SDR-2-ENG-SUB-C-1000 |  | DEMOLISH WORKS OVERALL PLAN Submission | 4d | 2026-02-08 A | 2026-02-10 A | SDR-2-MILS-1000 FS+28d, SDR-2-PREL-1010, SDR-2-PREL-1030, SDR-2-PREL-1050, SDR-2-PREL-1070, SDR-2-PREL-1090, SDR-2-MILS-1020 | 100% |  |
| SDR-2-ENG-SUB-C-1010 |  | ROAD ZONES LAYOUT PLAN Submission | 4d | 2026-02-11 A | 2026-02-12 A | SDR-2-MILS-1000 FS+28d | 100% |  |
| SDR-2-ENG-SUB-C-1020 |  | ROAD LAYOUT PLAN Submission | 4d | 2026-02-12 A | 2026-02-15 A | SDR-2-MILS-1000 FS+28d | 100% |  |
| SDR-2-ENG-SUB-C-1030 |  | TYPICAL ROAD CROSS SECTIONS Submission | 4d | 2026-02-12 A | 2026-02-12 A | SDR-2-MILS-1000 FS+28d | 100% |  |
| SDR-2-ENG-SUB-C-1040 |  | GRADING TYPICAL CROSS SECTIONS Submission | 4d | 2026-02-12 A | 2026-02-16 A | SDR-2-MILS-1000 FS+28d | 100% |  |
| SDR-2-ENG-SUB-C-1050 |  | ZONE A ROAD SETTING OUT PLAN Submission | 4d | 2026-02-12 A | 2026-02-16 A | SDR-2-MILS-1000 FS+28d | 100% |  |
| SDR-2-ENG-SUB-C-1060 |  | ZONE G ROAD SETTING OUT PLAN Submission | 4d | 2026-02-12 A | 2026-02-16 A | SDR-2-MILS-1000 FS+28d | 100% |  |
| SDR-2-ENG-SUB-C-1070 |  | TYPICAL PAVEMENT DETAILS Submission | 4d | 2026-02-16 A | 2026-02-17 A | SDR-2-MILS-1000 FS+28d | 100% |  |
| SDR-2-ENG-SUB-C-1080 |  | TYPICAL JUNCTION DETAIL LOCAL-1 & LOCAL-1 (40M ROW) Submission | 4d | 2026-02-16 A | 2026-02-17 A | SDR-2-MILS-1000 FS+28d | 100% |  |
| SDR-2-ENG-SUB-C-1100 |  | ROAD PROFILES (ZONE G) Submission | 4d | 2026-02-16 A | 2026-02-17 A | SDR-2-MILS-1000 FS+28d | 100% |  |
| SDR-2-ENG-SUB-C-1110 |  | Overall Kerbing and Pavement Layout Submission | 4d | 2026-02-16 A | 2026-02-17 A | SDR-2-MILS-1000 FS+28d | 100% |  |
| SDR-2-ENG-SUB-C-1090 |  | ROAD PROFILES (ZONE A) Submission | 4d | 2026-02-16 A | 2026-02-17 A | SDR-2-MILS-1000 FS+28d | 100% |  |
| SDR-2-ENG-SUB-C-1120 |  | Typical Concrete Kerb Details Submission | 4d | 2026-02-17 A | 2026-02-18 A | SDR-2-MILS-1000 FS+28d | 100% |  |
| SDR-2-ENG-SUB-C-1130 |  | Typical Pavement Details Submission | 4d | 2026-02-17 A | 2026-02-18 A | SDR-2-MILS-1000 FS+28d | 100% |  |
| SDR-2-ENG-SUB-C-1140 |  | Road Marking Layout Submission | 4d | 2026-02-17 A | 2026-02-18 A | SDR-2-MILS-1000 FS+28d | 100% |  |
| SDR-2-ENG-SUB-C-1150 |  | Road Marking Details Submission | 4d | 2026-02-17 A | 2026-02-18 A | SDR-2-MILS-1000 FS+28d | 100% |  |

| ID | WBS | Task | Duration | Start | Finish | Predecessors | Complete |
| --- | --- | --- | --- | --- | --- | --- | --- |
| SDR-2-ENG-SUB-C-1160 |  | Road Marking And Signage Typical Standard Details Submission | 4d | 2026-02-17 A | 2026-02-18 A | SDR-2-MILS-1000 FS+28d | 100% |
| SDR-2-ENG-SUB-C-1170 |  | Standard Details Submission | 4d | 2026-02-17 A | 2026-02-18 A | SDR-2-MILS-1000 FS+28d | 100% |
| SDR-2-ENG-SUB-C-1180 |  | Site Safety Notice Board Submission | 4d | 2026-02-17 A | 2026-02-18 A | SDR-2-MILS-1000 FS+28d | 100% |
| SDR-2-ENG-SUB-C-1190 |  | Location Plan For Traffic Signage Submission | 4d | 2026-02-17 A | 2026-02-18 A | SDR-2-MILS-1000 FS+28d | 100% |
|  | 5 | **Storm Water Drainage Network** |  | 2026-02-12 | 2026-02-25 |  |  |
| SDR-2-ENG-SUB-M-1000 |  | Storm Drainage Master Plan Submission | 4d | 2026-02-12 A | 2026-02-16 A | SDR-2-MILS-1000 FS+28d | 100% |
| SDR-2-ENG-SUB-M-1010 |  | Storm Drainage Layout Submission | 4d | 2026-02-12 A | 2026-02-16 A | SDR-2-MILS-1000 FS+28d | 100% |
| SDR-2-ENG-SUB-M-1020 |  | Storm Network Profile Submission | 4d | 2026-02-16 A | 2026-02-18 A | SDR-2-MILS-1000 FS+28d | 100% |
| SDR-2-ENG-SUB-M-1030 |  | Storm Network Standard Details Submission | 4d | 2026-02-18 A | 2026-02-25 A | SDR-2-MILS-1000 FS+28d | 100% |
| SDR-2-ENG-SUB-M-1040 |  | Storm Network Section Submission | 4d | 2026-02-18 A | 2026-02-25 A | SDR-2-MILS-1000 FS+28d | 100% |
| SDR-2-ENG-SUB-M-1050 |  | POND A LAYOUT AND PROFILE Submission | 4d | 2026-02-18 A | 2026-02-23 A | SDR-2-MILS-1000 FS+28d | 100% |
| SDR-2-ENG-SUB-M-1060 |  | TYPICAL ENERGY DISSAPATION DETAILS Submission | 4d | 2026-02-23 A | 2026-02-25 A | SDR-2-MILS-1000 FS+28d | 100% |
| SDR-2-ENG-SUB-M-1070 |  | STORM WATER POND SIPHON PIPE DETAILS Submission | 4d | 2026-02-23 A | 2026-02-25 A | SDR-2-MILS-1000 FS+28d | 100% |
| SDR-2-ENG-SUB-M-1080 |  | REINFORCEMENT CONCRETE WEIR AND GABION WALL DETAILS Submission | 4d | 2026-02-23 A | 2026-02-25 A | SDR-2-MILS-1000 FS+28d | 100% |
| SDR-2-ENG-SUB-M-1090 |  | TYPICAL TRENCH AND PIPE BEDDING DETAILS Submission | 4d | 2026-02-23 A | 2026-02-25 A | SDR-2-MILS-1000 FS+28d | 100% |
| SDR-2-ENG-SUB-M-1100 |  | FLUSH AND KERB INLET MANHOLE DETAILS Submission | 4d | 2026-02-23 A | 2026-02-25 A | SDR-2-MILS-1000 FS+28d | 100% |
| SDR-2-ENG-SUB-M-1110 |  | BOX PIPE CONNECTION AND BOX PIPE WIDENING DETAILS Submission | 4d | 2026-02-23 A | 2026-02-25 A | SDR-2-MILS-1000 FS+28d | 100% |
| SDR-2-ENG-SUB-M-1120 |  | TYPICAL BOX PIPE JUNCTION DETAILS Submission | 4d | 2026-02-23 A | 2026-02-25 A | SDR-2-MILS-1000 FS+28d | 100% |
| SDR-2-ENG-SUB-M-1130 |  | TYPICAL JUNCTION CHAMBER REINFORCEMENT DETAILS Submission | 4d | 2026-02-23 A | 2026-02-25 A | SDR-2-MILS-1000 FS+28d | 100% |
| SDR-2-ENG-SUB-M-1140 |  | DEPRESSED KERB TO SWALE/MANHOLE DETAILS Submission | 4d | 2026-02-23 A | 2026-02-25 A | SDR-2-MILS-1000 FS+28d | 100% |
| SDR-2-ENG-SUB-M-1150 |  | BOX PIPE AND SWALE CONNECTION DETAILS Submission | 4d | 2026-02-23 A | 2026-02-25 A | SDR-2-MILS-1000 FS+28d | 100% |
|  | 6 | **Sewerage Network** |  | 2026-02-18 | 2026-02-25 |  |  |
| SDR-2-ENG-SUB-M-1160 |  | Sewage Layout Master Plan Submission | 4d | 2026-02-18 A | 2026-02-23 A | SDR-2-MILS-1000 FS+28d | 100% |
| SDR-2-ENG-SUB-M-1170 |  | Sewage Network Profile Submission | 4d | 2026-02-18 A | 2026-02-23 A | SDR-2-MILS-1000 FS+28d | 100% |
| SDR-2-ENG-SUB-M-1180 |  | Sewage Network Standard Details Submission | 4d | 2026-02-18 A | 2026-02-25 A | SDR-2-MILS-1000 FS+28d | 100% |
| SDR-2-ENG-SUB-M-1190 |  | Sewage Network Section Submission | 4d | 2026-02-18 A | 2026-02-25 A | SDR-2-MILS-1000 FS+28d | 100% |
|  | 7 | **TSE Network** |  | 2026-02-18 | 2026-02-25 |  |  |
| SDR-2-ENG-SUB-M-1210 |  | TSE Network Profile Submission | 4d | 2026-02-18 A | 2026-02-23 A | SDR-2-MILS-1000 FS+28d | 100% |
| SDR-2-ENG-SUB-M-1220 |  | TSE Network Standard Details Submission | 4d | 2026-02-18 A | 2026-02-25 A | SDR-2-MILS-1000 FS+28d | 100% |
| SDR-2-ENG-SUB-M-1230 |  | TSE Network Section Submission | 4d | 2026-02-18 A | 2026-02-25 A | SDR-2-MILS-1000 FS+28d | 100% |
| SDR-2-ENG-SUB-M-1200 |  | TSE Layout Master Plan Submission | 4d | 2026-02-23 A | 2026-02-25 A | SDR-2-MILS-1000 FS+28d | 100% |
|  | 8 | **Portable Water** |  | 2026-02-18 | 2026-02-25 |  |  |
| SDR-2-ENG-SUB-M-1240 |  | Potable Water Piping Layout Master Plan Submission | 4d | 2026-02-18 A | 2026-02-23 A | SDR-2-MILS-1000 FS+28d | 100% |
| SDR-2-ENG-SUB-M-1250 |  | Potable Water Piping Layout Submission | 4d | 2026-02-18 A | 2026-02-23 A | SDR-2-MILS-1000 FS+28d | 100% |
| SDR-2-ENG-SUB-M-1260 |  | Potable Water Standard Details Submission | 4d | 2026-02-18 A | 2026-02-25 A | SDR-2-MILS-1000 FS+28d | 100% |
| SDR-2-ENG-SUB-M-1270 |  | Potable Water Section Submission | 4d | 2026-02-18 A | 2026-02-23 A | SDR-2-MILS-1000 FS+28d | 100% |
|  | 9 | **Electrical** |  | 2026-02-16 | 2026-06-15 |  |  |
| SDR-2-ENG-SUB-E-1000 |  | MV Network Layout Submission | 4d | 2026-02-16 A | 2026-06-15 A | SDR-2-MILS-1000 FS+28d | 100% |
| SDR-2-ENG-SUB-E-1080 |  | Street Lighting Layout Submission | 4d | 2026-02-16 A | 2026-02-17 A | SDR-2-MILS-1000 FS+28d | 100% |
| SDR-2-ENG-SUB-E-1090 |  | Single Line Diagram for Street Lighting Submission | 4d | 2026-02-16 A | 2026-02-17 A | SDR-2-MILS-1000 FS+28d | 100% |
| SDR-2-ENG-SUB-E-1170 |  | Telecom Overall Layout Submission | 4d | 2026-02-16 A | 2026-02-17 A | SDR-2-MILS-1000 FS+28d | 100% |
| SDR-2-ENG-SUB-E-1010 |  | MV Single Line Diagram Submission | 4d | 2026-02-17 A | 2026-06-15 A | SDR-2-MILS-1000 FS+28d | 100% |
| SDR-2-ENG-SUB-E-1100 |  | Voltage Drop Calculations Submission | 4d | 2026-02-17 A | 2026-02-18 A | SDR-2-MILS-1000 FS+28d | 100% |
| SDR-2-ENG-SUB-E-1180 |  | Typical Trenches Detail Submission | 4d | 2026-02-17 A | 2026-02-18 A | SDR-2-MILS-1000 FS+28d | 100% |
| SDR-2-ENG-SUB-E-1020 |  | Design Of MV Loops Submission | 4d | 2026-02-18 A | 2026-06-15 A | SDR-2-MILS-1000 FS+28d | 100% |
| SDR-2-ENG-SUB-E-1030 |  | Loads For Plots Submission | 4d | 2026-02-18 A | 2026-06-15 A | SDR-2-MILS-1000 FS+28d | 100% |
| SDR-2-ENG-SUB-E-1040 |  | Distribution Substation Submission | 4d | 2026-02-18 A | 2026-06-15 A | SDR-2-MILS-1000 FS+28d | 100% |
| SDR-2-ENG-SUB-E-1050 |  | MV Trench Configuration Details Submission | 4d | 2026-02-18 A | 2026-06-15 A | SDR-2-MILS-1000 FS+28d | 100% |
| SDR-2-ENG-SUB-E-1060 |  | MV Electrical Duct Banks Details Submission | 4d | 2026-02-18 A | 2026-06-15 A | SDR-2-MILS-1000 FS+28d | 100% |
| SDR-2-ENG-SUB-E-1070 |  | Distribution Transformers Submission | 4d | 2026-02-18 A | 2026-06-15 A | SDR-2-MILS-1000 FS+28d | 100% |
| SDR-2-ENG-SUB-E-1110 |  | Construction Details Lighting Poles Submission | 4d | 2026-02-18 A | 2026-02-23 A | SDR-2-MILS-1000 FS+28d | 100% |
| SDR-2-ENG-SUB-E-1120 |  | Base Plate Construction Details Submission | 4d | 2026-02-18 A | 2026-02-23 A | SDR-2-MILS-1000 FS+28d | 100% |
| SDR-2-ENG-SUB-E-1190 |  | Typical Trenches Crossing Detail Submission | 4d | 2026-02-18 A | 2026-02-23 A | SDR-2-MILS-1000 FS+28d | 100% |
| SDR-2-ENG-SUB-E-1200 |  | Manholes,Hand-Holes Details Submission | 4d | 2026-02-18 A | 2026-02-23 A | SDR-2-MILS-1000 FS+28d | 100% |
| SDR-2-ENG-SUB-E-1210 |  | Typical Details Of Pock Out Ducts Submission | 4d | 2026-02-18 A | 2026-02-23 A | SDR-2-MILS-1000 FS+28d | 100% |
| SDR-2-ENG-SUB-E-1130 |  | Lighting Pole Identification Submission | 4d | 2026-02-23 A | 2026-02-25 A | SDR-2-MILS-1000 FS+28d | 100% |
| SDR-2-ENG-SUB-E-1140 |  | Typical Feeder Pillar and Timer Switch Details Submission | 4d | 2026-02-23 A | 2026-02-25 A | SDR-2-MILS-1000 FS+28d | 100% |
| SDR-2-ENG-SUB-E-1150 |  | Public Lighting Draw-Pit Construction Details Submission | 4d | 2026-02-23 A | 2026-02-25 A | SDR-2-MILS-1000 FS+28d | 100% |
| SDR-2-ENG-SUB-E-1160 |  | Concrete Earth Pit Construction Details Submission | 4d | 2026-02-23 A | 2026-02-25 A | SDR-2-MILS-1000 FS+28d | 100% |
|  | 11 | **CCTV** |  | 2026-02-16 | 2026-06-01 |  |  |
| SDR-2-ENG-SUB-E-1220 |  | CCTV Overall Layout Submission | 4d | 2026-02-16 A | 2026-06-01 A | SDR-2-MILS-1000 FS+28d | 100% |
| SDR-2-ENG-SUB-E-1230 |  | CCTV Control Room Layout Submission | 4d | 2026-02-16 A | 2026-06-01 A | SDR-2-MILS-1000 FS+28d | 100% |
| SDR-2-ENG-SUB-E-1240 |  | CCTV System Schematic Drawing Submission | 4d | 2026-02-16 A | 2026-06-01 A | SDR-2-MILS-1000 FS+28d | 100% |
| SDR-2-ENG-SUB-E-1250 |  | CCTV System 7 MTR Pole Installation Detail Submission | 4d | 2026-02-16 A | 2026-06-01 A | SDR-2-MILS-1000 FS+28d | 100% |
| SDR-2-ENG-SUB-E-1260 |  | CCTV System 25 MTR Pole Installation Detail Submission | 4d | 2026-02-16 A | 2026-06-01 A | SDR-2-MILS-1000 FS+28d | 100% |
| SDR-2-ENG-SUB-E-1270 |  | CCTV System 35 MTR Pole Installation Detail Submission | 4d | 2026-02-16 A | 2026-06-01 A | SDR-2-MILS-1000 FS+28d | 100% |
| SDR-2-ENG-SUB-E-1280 |  | Typical Solar Panel Installation Detail Submission | 4d | 2026-02-16 A | 2026-06-01 A | SDR-2-MILS-1000 FS+28d | 100% |
|  | 10 | **Landscape & Irrigation Works** |  | 2026-02-18 | 2026-04-17 |  |  |
| SDR-2-ENG-SUB-M-1280 |  | Irrigation Layout Master Plan Submission | 4d | 2026-02-18 A | 2026-02-23 A | SDR-2-MILS-1000 FS+36d | 100% |
| SDR-2-ENG-SUB-M-1290 |  | Irrigation Network Profile Submission | 4d | 2026-02-23 A | 2026-02-25 A | SDR-2-MILS-1000 FS+36d | 100% |

| ID | WBS | Task | Duration | Start | Finish | Predecessors | Complete |
| --- | --- | --- | --- | --- | --- | --- | --- |
| SDR-2-ENG-SUB-M-1300 |  | Irrigation Network Standard Details Submission | 4d | 2026-02-23 A | 2026-02-24 A | SDR-2-MILS-1000 FS+36d | 100% |
| SDR-2-ENG-SUB-M-1310 |  | Irrigation Network Section Submission | 4d | 2026-02-23 A | 2026-02-24 A | SDR-2-MILS-1000 FS+36d | 100% |
| SDR-2-ENG-SUB-M-1320 |  | Landscape Layout Master Plan Submission | 4d | 2026-02-23 A | 2026-04-17 A | SDR-2-MILS-1000 FS+36d | 100% |
|  | 4 | **Approvals** |  | 2026-02-11 | 2026-11-21 |  |  |
|  | 4 | **Road Works** |  | 2026-02-11 | 2026-02-26 |  |  |
| SDR-2-ENG-APP-C-1000 |  | DEMOLISH WORKS OVERALL PLAN Approval | 11d | 2026-02-11 A | 2026-02-16 A | SDR-2-ENG-SUB-C-1000 | 100% |
| SDR-2-ENG-APP-C-1010 |  | ROAD ZONES LAYOUT PLAN Approval | 11d | 2026-02-12 A | 2026-02-17 A | SDR-2-ENG-SUB-C-1010 | 100% |
| SDR-2-ENG-APP-C-1030 |  | TYPICAL ROAD CROSS SECTIONS Approval | 11d | 2026-02-12 A | 2026-02-18 A | SDR-2-ENG-SUB-C-1030 | 100% |
| SDR-2-ENG-APP-C-1020 |  | ROAD LAYOUT PLAN Approval | 11d | 2026-02-15 A | 2026-02-19 A | SDR-2-ENG-SUB-C-1020 | 100% |
| SDR-2-ENG-APP-C-1040 |  | GRADING TYPICAL CROSS SECTIONS Approval | 11d | 2026-02-16 A | 2026-02-23 A | SDR-2-ENG-SUB-C-1040 | 100% |
| SDR-2-ENG-APP-C-1050 |  | ZONE A ROAD SETTING OUT PLAN Approval | 11d | 2026-02-16 A | 2026-02-23 A | SDR-2-ENG-SUB-C-1050 | 100% |
| SDR-2-ENG-APP-C-1060 |  | ZONE G ROAD SETTING OUT PLAN Approval | 11d | 2026-02-16 A | 2026-02-23 A | SDR-2-ENG-SUB-C-1060 | 100% |
| SDR-2-ENG-APP-C-1070 |  | TYPICAL PAVEMENT DETAILS Approval | 11d | 2026-02-17 A | 2026-02-25 A | SDR-2-ENG-SUB-C-1070 | 100% |
| SDR-2-ENG-APP-C-1080 |  | TYPICAL JUNCTION DETAIL LOCAL-1 & LOCAL-1 (40M ROW) Approval | 11d | 2026-02-17 A | 2026-02-25 A | SDR-2-ENG-SUB-C-1080 | 100% |
| SDR-2-ENG-APP-C-1090 |  | ROAD PROFILES (ZONE A) Approval | 11d | 2026-02-17 A | 2026-02-25 A | SDR-2-ENG-SUB-C-1090 | 100% |
| SDR-2-ENG-APP-C-1100 |  | ROAD PROFILES (ZONE G) Approval | 11d | 2026-02-17 A | 2026-02-25 A | SDR-2-ENG-SUB-C-1100 | 100% |
| SDR-2-ENG-APP-C-1110 |  | Overall Kerbing and Pavement Layout Approval | 11d | 2026-02-17 A | 2026-02-25 A | SDR-2-ENG-SUB-C-1110 | 100% |
| SDR-2-ENG-APP-C-1120 |  | Typical Concrete Kerb Details Approval | 11d | 2026-02-18 A | 2026-02-26 A | SDR-2-ENG-SUB-C-1120 | 100% |
| SDR-2-ENG-APP-C-1130 |  | Typical Pavement Details Approval | 11d | 2026-02-18 A | 2026-02-26 A | SDR-2-ENG-SUB-C-1130 | 100% |
| SDR-2-ENG-APP-C-1140 |  | Road Marking Layout Approval | 11d | 2026-02-18 A | 2026-02-26 A | SDR-2-ENG-SUB-C-1140 | 100% |
| SDR-2-ENG-APP-C-1150 |  | Road Marking Details Approval | 11d | 2026-02-18 A | 2026-02-26 A | SDR-2-ENG-SUB-C-1150 | 100% |
| SDR-2-ENG-APP-C-1160 |  | Road Marking And Signage Typical Standard Details Approval | 11d | 2026-02-18 A | 2026-02-26 A | SDR-2-ENG-SUB-C-1160 | 100% |
| SDR-2-ENG-APP-C-1170 |  | Standard Details Approval | 11d | 2026-02-18 A | 2026-02-26 A | SDR-2-ENG-SUB-C-1170 | 100% |
| SDR-2-ENG-APP-C-1180 |  | Site Safety Notice Board Approval | 11d | 2026-02-18 A | 2026-02-26 A | SDR-2-ENG-SUB-C-1180 | 100% |
| SDR-2-ENG-APP-C-1190 |  | Location Plan For Traffic Signage Approval | 11d | 2026-02-18 A | 2026-02-26 A | SDR-2-ENG-SUB-C-1190 | 100% |
|  | 5 | **Storm Water Drainage Network** |  | 2026-02-16 | 2026-05-24 |  |  |
| SDR-2-ENG-APP-M-1000 |  | Storm Drainage Master Plan Approval | 11d | 2026-02-16 A | 2026-05-10 A | SDR-2-ENG-SUB-M-1000 | 100% |
| SDR-2-ENG-APP-M-1010 |  | Storm Drainage Layout Approval | 11d | 2026-02-16 A | 2026-05-10 A | SDR-2-ENG-SUB-M-1010 | 100% |
| SDR-2-ENG-APP-M-1020 |  | Storm Network Profile Approval | 11d | 2026-02-18 A | 2026-05-24 A | SDR-2-ENG-SUB-M-1020 | 100% |
| SDR-2-ENG-APP-M-1050 |  | POND A LAYOUT AND PROFILE Approval | 11d | 2026-02-23 A | 2026-05-17 A | SDR-2-ENG-SUB-M-1050 | 100% |
| SDR-2-ENG-APP-M-1030 |  | Storm Network Standard Details Approval | 11d | 2026-02-25 A | 2026-03-04 A | SDR-2-ENG-SUB-M-1030 | 100% |
| SDR-2-ENG-APP-M-1040 |  | Storm Network Section Approval | 11d | 2026-02-25 A | 2026-05-24 A | SDR-2-ENG-SUB-M-1040 | 100% |
| SDR-2-ENG-APP-M-1060 |  | TYPICAL ENERGY DISSAPATION DETAILS Approval | 11d | 2026-02-25 A | 2026-05-24 A | SDR-2-ENG-SUB-M-1060 | 100% |
| SDR-2-ENG-APP-M-1070 |  | STORM WATER POND SIPHON PIPE DETAILS SApproval | 11d | 2026-02-25 A | 2026-05-24 A | SDR-2-ENG-SUB-M-1070 | 100% |
| SDR-2-ENG-APP-M-1080 |  | REINFORCEMENT CONCRETE WEIR AND GABION WALL DETAILS Approval | 11d | 2026-02-25 A | 2026-05-24 A | SDR-2-ENG-SUB-M-1080 | 100% |
| SDR-2-ENG-APP-M-1090 |  | TYPICAL TRENCH AND PIPE BEDDING DETAILS Approval | 11d | 2026-02-25 A | 2026-04-06 A | SDR-2-ENG-SUB-M-1090 | 100% |
| SDR-2-ENG-APP-M-1100 |  | FLUSH AND KERB INLET MANHOLE DETAILS Approval | 11d | 2026-02-25 A | 2026-04-06 A | SDR-2-ENG-SUB-M-1100 | 100% |
| SDR-2-ENG-APP-M-1110 |  | BOX PIPE CONNECTION AND BOX PIPE WIDENING DETAILS Approval | 11d | 2026-02-25 A | 2026-05-24 A | SDR-2-ENG-SUB-M-1110 | 100% |
| SDR-2-ENG-APP-M-1120 |  | TYPICAL BOX PIPE JUNCTION DETAILS Approval | 11d | 2026-02-25 A | 2026-05-24 A | SDR-2-ENG-SUB-M-1120 | 100% |
| SDR-2-ENG-APP-M-1130 |  | TYPICAL JUNCTION CHAMBER REINFORCEMENT DETAILS Approval | 11d | 2026-02-25 A | 2026-05-24 A | SDR-2-ENG-SUB-M-1130 | 100% |
| SDR-2-ENG-APP-M-1140 |  | DEPRESSED KERB TO SWALE/MANHOLE DETAILS Approval | 11d | 2026-02-25 A | 2026-05-24 A | SDR-2-ENG-SUB-M-1140 | 100% |
| SDR-2-ENG-APP-M-1150 |  | BOX PIPE AND SWALE CONNECTION DETAILS Approval | 11d | 2026-02-25 A | 2026-05-24 A | SDR-2-ENG-SUB-M-1150 | 100% |
|  | 6 | **Sewerage Network** |  | 2026-02-23 | 2026-05-20 |  |  |
| SDR-2-ENG-APP-M-1160 |  | Sewage Layout Master Plan Approval | 11d | 2026-02-23 A | 2026-05-10 A | SDR-2-ENG-SUB-M-1160 | 100% |
| SDR-2-ENG-APP-M-1170 |  | Sewage Network Profile Approval | 11d | 2026-02-23 A | 2026-05-20 A | SDR-2-ENG-SUB-M-1170 | 100% |
| SDR-2-ENG-APP-M-1180 |  | Sewage Network Standard Details Approval | 11d | 2026-02-25 A | 2026-05-20 A | SDR-2-ENG-SUB-M-1180 | 100% |
| SDR-2-ENG-APP-M-1190 |  | Sewage Network Section Approval | 11d | 2026-02-25 A | 2026-05-20 A | SDR-2-ENG-SUB-M-1190 | 100% |
|  | 7 | **TSE Network** |  | 2026-02-23 | 2026-04-25 |  |  |
| SDR-2-ENG-APP-M-1210 |  | TSE Network Profile Approval | 11d | 2026-02-23 A | 2026-04-16 A | SDR-2-ENG-SUB-M-1210 | 100% |
| SDR-2-ENG-APP-M-1220 |  | TSE Network Standard Details Approval | 11d | 2026-02-25 A | 2026-04-23 A | SDR-2-ENG-SUB-M-1220 | 100% |
| SDR-2-ENG-APP-M-1230 |  | TSE Network Section Approval | 11d | 2026-02-25 A | 2026-04-25 A | SDR-2-ENG-SUB-M-1230 | 100% |
| SDR-2-ENG-APP-M-1200 |  | TSE Layout Master Plan Approval | 11d | 2026-02-25 A | 2026-04-14 A | SDR-2-ENG-SUB-M-1200 | 100% |
|  | 8 | **Portable Water** |  | 2026-02-23 | 2026-05-20 |  |  |
| SDR-2-ENG-APP-M-1240 |  | Potable Water Piping Layout Master Plan Approval | 11d | 2026-02-23 A | 2026-04-29 A | SDR-2-ENG-SUB-M-1240 | 100% |
| SDR-2-ENG-APP-M-1250 |  | Potable Water Piping Layout Approval | 11d | 2026-02-23 A | 2026-04-29 A | SDR-2-ENG-SUB-M-1250 | 100% |
| SDR-2-ENG-APP-M-1270 |  | Potable Water Section Approval | 11d | 2026-02-23 A | 2026-05-20 A | SDR-2-ENG-SUB-M-1270 | 100% |
| SDR-2-ENG-APP-M-1260 |  | Potable Water Standard Details Approval | 11d | 2026-02-25 A | 2026-05-20 A | SDR-2-ENG-SUB-M-1260 | 100% |
|  | 9 | **Electrical** |  | 2026-02-17 | 2026-11-21 |  |  |
| SDR-2-ENG-APP-E-1080 |  | Street Lighting Layout Approval | 11d | 2026-02-17 A | 2026-03-05 A | SDR-2-ENG-SUB-E-1080 | 100% |
| SDR-2-ENG-APP-E-1090 |  | Single Line Diagram for Street Lighting Approval | 11d | 2026-02-17 A | 2026-04-22 A | SDR-2-ENG-SUB-E-1090 | 100% |
| SDR-2-ENG-APP-E-1170 |  | Telecom Overall Layout Approval | 11d | 2026-02-17 A | 2026-04-26 A | SDR-2-ENG-SUB-E-1170 | 100% |
| SDR-2-ENG-APP-E-1100 |  | Voltage Drop Calculations Approval | 11d | 2026-02-18 A | 2026-03-05 A | SDR-2-ENG-SUB-E-1100 | 100% |
| SDR-2-ENG-APP-E-1180 |  | Typical Trenches Detail Approval | 11d | 2026-02-18 A | 2026-04-20 A | SDR-2-ENG-SUB-E-1180 | 100% |
| SDR-2-ENG-APP-E-1190 |  | Typical Trenches Crossing Detail Approval | 11d | 2026-02-23 A | 2026-04-26 A | SDR-2-ENG-SUB-E-1190 | 100% |
| SDR-2-ENG-APP-E-1200 |  | Manholes,Hand-Holes Details Approval | 11d | 2026-02-23 A | 2026-05-12 A | SDR-2-ENG-SUB-E-1200 | 100% |
| SDR-2-ENG-APP-E-1210 |  | Typical Details Of Pock Out Ducts Approval | 11d | 2026-02-23 A | 2026-05-13 A | SDR-2-ENG-SUB-E-1210 | 100% |
| SDR-2-ENG-APP-E-1110 |  | Construction Details Lighting Poles Approval | 11d | 2026-02-23 A | 2026-03-02 A | SDR-2-ENG-SUB-E-1110 | 100% |
| SDR-2-ENG-APP-E-1120 |  | Base Plate Construction Details Approval | 11d | 2026-02-23 A | 2026-03-02 A | SDR-2-ENG-SUB-E-1120 | 100% |
| SDR-2-ENG-APP-E-1130 |  | Lighting Pole Identification Approval | 11d | 2026-02-25 A | 2026-03-04 A | SDR-2-ENG-SUB-E-1130 | 100% |
| SDR-2-ENG-APP-E-1140 |  | Typical Feeder Pillar and Timer Switch Details Approval | 11d | 2026-02-25 A | 2026-03-04 A | SDR-2-ENG-SUB-E-1140 | 100% |

| ID | WBS | Task | Duration | Start | Finish | Predecessors | Complete | Total float |
| --- | --- | --- | --- | --- | --- | --- | --- | --- |
| SDR-2-ENG-APP-E-1150 |  | Public Lighting Draw-Pit Construction Details Approval | 11d | 2026-02-25 A | 2026-03-04 A | SDR-2-ENG-SUB-E-1150 | 100% |  |
| SDR-2-ENG-APP-E-1160 |  | Concrete Earth Pit Construction Details Approval | 11d | 2026-02-25 A | 2026-03-04 A | SDR-2-ENG-SUB-E-1160 | 100% |  |
| SDR-2-ENG-APP-E-1000 |  | MV Network Layout Approval | 11d | 2026-11-09 | 2026-11-21 | SDR-2-ENG-SUB-E-1000 |  | 0d |
| SDR-2-ENG-APP-E-1010 |  | MV Single Line Diagram Approval | 11d | 2026-11-09 | 2026-11-21 | SDR-2-ENG-SUB-E-1010 |  | 0d |
| SDR-2-ENG-APP-E-1020 |  | Design Of MV Loops Approval | 11d | 2026-11-09 | 2026-11-21 | SDR-2-ENG-SUB-E-1020 |  | 0d |
| SDR-2-ENG-APP-E-1030 |  | Loads For Plots Approval | 11d | 2026-11-09 | 2026-11-21 | SDR-2-ENG-SUB-E-1030 |  | 0d |
| SDR-2-ENG-APP-E-1040 |  | Distribution Substation Approval | 11d | 2026-11-09 | 2026-11-21 | SDR-2-ENG-SUB-E-1040 |  | 0d |
| SDR-2-ENG-APP-E-1050 |  | MV Trench Configuration Details Approval | 11d | 2026-11-09 | 2026-11-21 | SDR-2-ENG-SUB-E-1050 |  | 0d |
| SDR-2-ENG-APP-E-1060 |  | MV Electrical Duct Banks Details Approval | 11d | 2026-11-09 | 2026-11-21 | SDR-2-ENG-SUB-E-1060 |  | 0d |
| SDR-2-ENG-APP-E-1070 |  | Distribution Transformers Approval | 11d | 2026-11-09 | 2026-11-21 | SDR-2-ENG-SUB-E-1070 |  | 0d |
|  | 11 | **CCTV** |  | 2026-06-11 | 2026-11-21 |  |  |  |
| SDR-2-ENG-APP-E-1250 |  | CCTV System 7 MTR Pole Installation Detail Approval | 11d | 2026-06-11 A | 2026-06-15 A | SDR-2-ENG-SUB-E-1250 | 100% |  |
| SDR-2-ENG-APP-E-1260 |  | CCTV System 25 MTR Pole Installation Detail Approval | 11d | 2026-06-11 A | 2026-06-15 A | SDR-2-ENG-SUB-E-1260 | 100% |  |
| SDR-2-ENG-APP-E-1270 |  | CCTV System 35 MTR Pole Installation Detail Approval | 11d | 2026-06-11 A | 2026-06-15 A | SDR-2-ENG-SUB-E-1270 | 100% |  |
| SDR-2-ENG-APP-E-1220 |  | CCTV Overall Layout Approval | 11d | 2026-06-15 A | 2026-06-28 A | SDR-2-ENG-SUB-E-1220 | 100% |  |
| SDR-2-ENG-APP-E-1230 |  | CCTV Control Room Layout Approval | 11d | 2026-06-15 A | 2026-08-05 A | SDR-2-ENG-SUB-E-1230 | 100% |  |
| SDR-2-ENG-APP-E-1240 |  | CCTV System Schematic Drawing Approval | 11d | 2026-06-15 A | 2026-08-05 A | SDR-2-ENG-SUB-E-1240 | 100% |  |
| SDR-2-ENG-APP-E-1280 |  | Typical Solar Panel Installation Detail Approval | 11d | 2026-11-09 | 2026-11-21 | SDR-2-ENG-SUB-E-1280 |  | 0d |
|  | 10 | **Landscape & Irrigation Works** |  | 2026-02-23 | 2026-06-08 |  |  |  |
| SDR-2-ENG-APP-M-1280 |  | Irrigation Layout Master Plan Approval | 11d | 2026-02-23 A | 2026-04-28 A | SDR-2-ENG-SUB-M-1280 | 100% |  |
| SDR-2-ENG-APP-M-1300 |  | Irrigation Network Standard Details Approval | 11d | 2026-02-24 A | 2026-04-28 A | SDR-2-ENG-SUB-M-1300 | 100% |  |
| SDR-2-ENG-APP-M-1310 |  | Irrigation Network Section Approval | 11d | 2026-02-24 A | 2026-06-08 A | SDR-2-ENG-SUB-M-1310 | 100% |  |
| SDR-2-ENG-APP-M-1290 |  | Irrigation Network Profile Approval | 11d | 2026-02-25 A | 2026-04-28 A | SDR-2-ENG-SUB-M-1290 | 100% |  |
| SDR-2-ENG-APP-M-1320 |  | Landscape Layout Master Plan Approval | 11d | 2026-04-17 A | 2026-05-20 A | SDR-2-ENG-SUB-M-1320 | 100% |  |
|  | 3 | **Materials** |  | 2026-02-09 | 2026-11-11 |  |  |  |
|  | 5 | **Materials Submission** |  | 2026-02-09 | 2026-05-05 |  |  |  |
|  | 2 | **Short Lead Items** |  | 2026-02-09 | 2026-05-05 |  |  |  |
|  | 2 | **Civil** |  | 2026-02-09 | 2026-02-26 |  |  |  |
| SDR-2-PRO-MSS-C-1000 |  | Earth works material submission | 2d | 2026-02-09 A | 2026-02-10 A | SDR-2-ENG-APP-C-1020, SDR-2-ENG-APP-C-1000, SDR-2-ENG-APP-C-1010, SDR-2-ENG-APP-C-1050, SDR-2-ENG-APP-C-1060, SDR-2-ENG-APP-C-1090, SDR-2-ENG-APP-C-1100, SDR-2-ENG-APP-C-1170, SDR-2-ENG-APP-C-1180 | 100% |  |
| SDR-2-PRO-MSS-C-1010 |  | Ready mix concrete submission | 2d | 2026-02-11 A | 2026-02-12 A | SDR-2-ENG-APP-C-1120 | 100% |  |
| SDR-2-PRO-MSS-C-1040 |  | Kerbstone submission | 2d | 2026-02-11 A | 2026-02-12 A | SDR-2-ENG-APP-C-1110, SDR-2-ENG-APP-M-1140 | 100% |  |
| SDR-2-PRO-MSS-C-1020 |  | Asphalt Mix submission | 2d | 2026-02-14 A | 2026-02-15 A | SDR-2-ENG-APP-C-1020 | 100% |  |
| SDR-2-PRO-MSS-C-1030 |  | Road Marking submission | 2d | 2026-02-16 A | 2026-02-17 A | SDR-2-ENG-APP-C-1140, SDR-2-ENG-APP-C-1150, SDR-2-ENG-APP-C-1160 | 100% |  |
| SDR-2-PRO-MSS-C-1050 |  | Interlock Tiles submission | 2d | 2026-02-16 A | 2026-02-18 A | SDR-2-ENG-APP-C-1070, SDR-2-ENG-APP-C-1130 | 100% |  |
| SDR-2-PRO-MSS-C-1060 |  | Traffic Signage submission | 2d | 2026-02-19 A | 2026-02-23 A | SDR-2-ENG-APP-C-1190 | 100% |  |
| SDR-2-PRO-MSS-C-1070 |  | Construction material submission | 2d | 2026-02-19 A | 2026-02-23 A | SDR-2-ENG-APP-C-1080, SDR-2-ENG-APP-M-1080 | 100% |  |
| SDR-2-PRO-MSS-C-1090 |  | Protection Bollards for CCTV Pole submission | 2d | 2026-02-19 A | 2026-02-24 A | SDR-2-ENG-APP-E-1250 | 100% |  |
| SDR-2-PRO-MSS-C-1100 |  | Protection (Guard rail) for Fire hydrant submission | 2d | 2026-02-19 A | 2026-02-24 A | SDR-2-PREL-1100, SDR-2-ENG-APP-E-1240, SDR-2-PRO-MSS-C-1090 SS | 100% |  |
| SDR-2-PRO-MSS-C-1080 |  | Fence for Electrical works submission | 2d | 2026-02-23 A | 2026-02-26 A | SDR-2-PREL-1100, SDR-2-ENG-APP-E-1150, SDR-2-PRO-MSS-C-1070 SS | 100% |  |
|  | 4 | **Electrical** |  | 2026-02-09 | 2026-02-15 |  |  |  |
| SDR-2-PRO-MSS-E-1000 |  | Termination Kits & Joints submission | 2d | 2026-02-09 A | 2026-02-10 A | SDR-2-ENG-APP-E-1080 | 100% |  |
| SDR-2-PRO-MSS-E-1010 |  | UPVC Ducts & HDPE Ducts for Telecom network submission | 2d | 2026-02-11 A | 2026-02-12 A | SDR-2-ENG-APP-E-1010 SS | 100% |  |
| SDR-2-PRO-MSS-E-1020 |  | Grounding System submission | 2d | 2026-02-14 A | 2026-02-15 A | SDR-2-ENG-APP-E-1000 SS | 100% |  |
|  | 5 | **CCTV** |  | 2026-02-16 | 2026-05-05 |  |  |  |
| SDR-2-PRO-MSS-E-1030 |  | PECD Ducts for CCTV network submission | 2d | 2026-02-16 A | 2026-05-05 A | SDR-2-ENG-APP-E-1240 | 100% |  |
|  | 1 | **Long Lead Items** |  | 2026-02-09 | 2026-04-21 |  |  |  |
|  | 2 | **Mechanical** |  | 2026-02-09 | 2026-02-25 |  |  |  |
| SDR-2-PRO-MSL-M-1000 |  | GRP Pipes & UPVC Pipes &Fittings submission | 2d | 2026-02-09 A | 2026-02-10 A | SDR-2-ENG-APP-M-1000, SDR-2-ENG-APP-C-1030, SDR-2-ENG-APP-C-1040, SDR-2-ENG-APP-M-1020, SDR-2-ENG-APP-M-1030, SDR-2-ENG-APP-M-1050, SDR-2-ENG-APP-M-1070, SDR-2-ENG-APP-M-1160, SDR-2-ENG-APP-M-1170, SDR-2-ENG-APP-M-1180, SDR-2-ENG-APP-M-1190, SDR-2-ENG-APP-M-1200, SDR-2-ENG-APP-M-1210, SDR-2-ENG-APP-M-1220, SDR-2-ENG-APP-M-1230 | 100% |  |
| SDR-2-PRO-MSL-M-1010 |  | HDPE Pipes & Fittings submission | 2d | 2026-02-11 A | 2026-02-12 A | SDR-2-ENG-APP-M-1000, SDR-2-ENG-APP-M-1110, SDR-2-ENG-APP-M-1120, SDR-2-ENG-APP-M-1150, SDR-2-ENG-APP-M-1240, SDR-2-ENG-APP-M-1250, SDR-2-ENG-APP-M-1260, SDR-2-ENG-APP-M-1270, SDR-2-ENG-APP-M-1280 SS, SDR-2-ENG-APP-M-1300 SS, SDR-2-ENG-APP-M-1310 SS, SDR-2-ENG-APP-M-1320 SS | 100% |  |
| SDR-2-PRO-MSL-M-1020 |  | Valves submission | 2d | 2026-02-11 A | 2026-02-12 A | SDR-2-ENG-APP-M-1040 | 100% |  |
| SDR-2-PRO-MSL-M-1030 |  | Manhole submission | 2d | 2026-02-14 A | 2026-02-15 A | SDR-2-ENG-APP-M-1100 | 100% |  |
| SDR-2-PRO-MSL-M-1040 |  | Catch Basin submission | 2d | 2026-02-16 A | 2026-02-17 A | SDR-2-ENG-APP-M-1130 | 100% |  |
| SDR-2-PRO-MSL-M-1050 |  | Manhole, Catch basin and Valve box Cover submission | 2d | 2026-02-18 A | 2026-02-21 A | SDR-2-ENG-APP-M-1100 | 100% |  |
| SDR-2-PRO-MSL-M-1060 |  | Fire Hydrant submission | 2d | 2026-02-21 A | 2026-02-25 A | SDR-2-ENG-APP-M-1060 | 100% |  |
| SDR-2-PRO-MSL-M-1070 |  | Valve of Fire Hydrant submission | 2d | 2026-02-21 A | 2026-02-25 A | SDR-2-ENG-APP-M-1090 | 100% |  |
|  | 3 | **Electrical** |  | 2026-02-09 | 2026-04-21 |  |  |  |
| SDR-2-PRO-MSL-E-1000 |  | MV Cables submission | 2d | 2026-02-09 A | 2026-02-10 A | SDR-2-ENG-APP-E-1000 SS, SDR-2-ENG-APP-E-1020 SS, SDR-2-ENG-APP-E-1050 SS | 100% |  |
| SDR-2-PRO-MSL-E-1010 |  | LV Cables submission | 2d | 2026-02-11 A | 2026-02-12 A | SDR-2-ENG-APP-E-1100, SDR-2-ENG-APP-E-1160, SDR-2-ENG-APP-E-1170, SDR-2-ENG-APP-E-1190, SDR-2-ENG-APP-E-1210, SDR-2-ENG-APP-E-1040 SS, SDR-2-ENG-APP-E-1030 SS | 100% |  |
| SDR-2-PRO-MSL-E-1020 |  | Street Lighting Poles submission | 2d | 2026-02-11 A | 2026-02-12 A | SDR-2-ENG-APP-E-1110 | 100% |  |
| SDR-2-PRO-MSL-E-1030 |  | Street Lighting Fixtures submission | 2d | 2026-02-11 A | 2026-02-12 A | SDR-2-ENG-APP-E-1080, SDR-2-ENG-APP-E-1090, SDR-2-ENG-APP-E-1130 | 100% |  |
| SDR-2-PRO-MSL-E-1040 |  | DrawPits for Lighting submission | 2d | 2026-02-11 A | 2026-02-12 A | SDR-2-ENG-APP-E-1080 | 100% |  |
| SDR-2-PRO-MSL-E-1050 |  | Concrete Manholes & DrawPits for Telecom Network submission | 2d | 2026-02-14 A | 2026-02-15 A | SDR-2-ENG-APP-E-1180, SDR-2-ENG-APP-E-1200 | 100% |  |
| SDR-2-PRO-MSL-E-1180 |  | CCTV Wireless P2P bridges submission | 2d | 2026-02-15 A | 2026-04-21 A | SDR-2-ENG-APP-E-1250 | 100% |  |
| SDR-2-PRO-MSL-E-1060 |  | Switchgears - (RMUs) submission | 2d | 2026-02-16 A | 2026-02-17 A | SDR-2-ENG-APP-E-1040 SS | 100% |  |
| SDR-2-PRO-MSL-E-1070 |  | Unit Substation submission | 2d | 2026-02-16 A | 2026-02-17 A | SDR-2-ENG-APP-E-1040 SS, SDR-2-ENG-APP-E-1070 SS | 100% |  |
| SDR-2-PRO-MSL-E-1080 |  | Lighting Panels submission | 2d | 2026-02-16 A | 2026-02-17 A | SDR-2-ENG-APP-E-1080 | 100% |  |
| SDR-2-PRO-MSL-E-1090 |  | KWH Meter with mounting frame submission | 2d | 2026-02-16 A | 2026-02-17 A | SDR-2-ENG-APP-E-1120 | 100% |  |
| SDR-2-PRO-MSL-E-1100 |  | Main Feeder Pillar submission | 2d | 2026-02-16 A | 2026-02-17 A | SDR-2-ENG-APP-E-1140 | 100% |  |
| SDR-2-PRO-MSL-E-1190 |  | CCTV UPS submission | 2d | 2026-02-17 A | 2026-04-21 A | SDR-2-ENG-APP-E-1220 | 100% |  |
| SDR-2-PRO-MSL-E-1110 |  | CCTV Poles including all hardwares submission | 2d | 2026-02-18 A | 2026-04-21 A | SDR-2-ENG-APP-E-1260 | 100% |  |

| ID | WBS | Task | Duration | Start | Finish | Predecessors | Complete | Total float |
| --- | --- | --- | --- | --- | --- | --- | --- | --- |
| SDR-2-PRO-MSL-E-1120 |  | CCTV Cables "Power" submission | 2d | 2026-02-18 A | 2026-04-21 A | SDR-2-ENG-APP-E-1220, SDR-2-ENG-APP-E-1270, SDR-2-ENG-APP-E-1060 SS | 100% |  |
| SDR-2-PRO-MSL-E-1130 |  | CCTV Cables "CAT6" submission | 2d | 2026-02-18 A | 2026-04-21 A | SDR-2-ENG-APP-E-1230 | 100% |  |
| SDR-2-PRO-MSL-E-1200 |  | CCTV Solar System submission | 2d | 2026-02-19 A | 2026-04-21 A | SDR-2-ENG-APP-E-1280 SS | 100% |  |
| SDR-2-PRO-MSL-E-1140 |  | Racks and Patch panels submission | 2d | 2026-02-21 A | 2026-04-21 A | SDR-2-ENG-APP-E-1280 SS | 100% |  |
| SDR-2-PRO-MSL-E-1150 |  | CCTV System,Servers & WorkStations submission | 2d | 2026-02-21 A | 2026-04-21 A | SDR-2-ENG-APP-E-1230 | 100% |  |
| SDR-2-PRO-MSL-E-1160 |  | Professional 55" Video wall at control room submission | 2d | 2026-02-21 A | 2026-04-21 A | SDR-2-ENG-APP-E-1140 | 100% |  |
| SDR-2-PRO-MSL-E-1170 |  | CCTV Switches submission | 3d | 2026-02-21 A | 2026-04-21 A | SDR-2-ENG-APP-E-1220 | 100% |  |
|  | 6 | **Materials Approval** |  | 2026-02-09 | 2026-11-11 |  |  |  |
|  | 2 | **Short Lead Items** |  | 2026-02-09 | 2026-11-11 |  |  |  |
|  | 1 | **Civil** |  | 2026-02-09 | 2026-11-11 |  |  |  |
| SDR-2-PRO-MAS-C-1000 |  | Earth works material Approve | 3d | 2026-02-09 A | 2026-03-12 A | SDR-2-PRO-MSS-C-1000 | 100% |  |
| SDR-2-PRO-MAS-C-1010 |  | Ready mix concrete Approve | 3d | 2026-02-14 A | 2026-05-31 A | SDR-2-PRO-MSS-C-1010 | 100% |  |
| SDR-2-PRO-MAS-C-1040 |  | Kerbstone Approve | 3d | 2026-02-14 A | 2026-04-01 A | SDR-2-PRO-MSS-C-1040 | 100% |  |
| SDR-2-PRO-MAS-C-1020 |  | Asphalt Mix Approve | 3d | 2026-02-16 A | 2026-06-09 A | SDR-2-PRO-MSS-C-1020, SDR-2-PRO-MAS-C-1000 | 100% |  |
| SDR-2-PRO-MAS-C-1050 |  | Interlock Tiles Approve | 3d | 2026-02-19 A | 2026-04-01 A | SDR-2-PRO-MSS-C-1050 | 100% |  |
| SDR-2-PRO-MAS-C-1070 |  | Construction material Approve | 3d | 2026-02-23 A | 2026-06-08 A | SDR-2-PRO-MSS-C-1070 | 100% |  |
| SDR-2-PRO-MAS-C-1090 |  | Protection Bollards for CCTV Pole Approve | 3d | 2026-02-24 A | 2026-06-02 A | SDR-2-PRO-MSS-C-1090 | 100% |  |
| SDR-2-PRO-MAS-C-1100 |  | Protection (Guard rail) for Fire hydrant Approve | 3d | 2026-02-24 A | 2026-06-02 A | SDR-2-PRO-MSS-C-1100 | 100% |  |
| SDR-2-PRO-MAS-C-1080 |  | Fence for Electrical works Approve | 3d | 2026-02-27 A | 2026-06-01 A | SDR-2-PRO-MSS-C-1080 | 100% |  |
| SDR-2-PRO-MAS-C-1030 |  | Road Marking Approve | 3d | 2026-11-09 | 2026-11-11 | SDR-2-PRO-MSS-C-1030 |  | 0d |
| SDR-2-PRO-MAS-C-1060 |  | Traffic Signage Approve | 3d | 2026-11-09 | 2026-11-11 | SDR-2-PRO-MSS-C-1060 |  | 0d |
|  | 3 | **Electrical** |  | 2026-02-11 | 2026-06-01 |  |  |  |
| SDR-2-PRO-MAS-E-1000 |  | Termination Kits & Joints Approve | 3d | 2026-02-11 A | 2026-05-13 A | SDR-2-PRO-MSS-E-1000 | 100% |  |
| SDR-2-PRO-MAS-E-1010 |  | UPVC Ducts & HDPE Ducts for Telecom network Approve | 3d | 2026-02-14 A | 2026-04-05 A | SDR-2-PRO-MSS-E-1010 | 100% |  |
| SDR-2-PRO-MAS-E-1020 |  | Grounding System Approve | 3d | 2026-02-16 A | 2026-04-18 A | SDR-2-PRO-MSS-E-1020 | 100% |  |
| SDR-2-PRO-MAS-E-1030 |  | PECD Ducts for CCTV network Approve | 3d | 2026-02-18 A | 2026-06-01 A | SDR-2-PRO-MSS-E-1030 | 100% |  |
|  | 1 | **Long Lead Items** |  | 2026-02-11 | 2026-05-21 |  |  |  |
|  | 2 | **Mechanical** |  | 2026-02-11 | 2026-03-01 |  |  |  |
| SDR-2-PRO-MAL-M-1000 |  | GRP Pipes & UPVC Pipes & Fittings Approve | 3d | 2026-02-11 A | 2026-02-14 A | SDR-2-PRO-MSL-M-1000 | 100% |  |
| SDR-2-PRO-MAL-M-1010 |  | HDPE Pipes & Fittings Approve | 3d | 2026-02-14 A | 2026-02-16 A | SDR-2-PRO-MSL-M-1010 | 100% |  |
| SDR-2-PRO-MAL-M-1020 |  | Valves Approve | 3d | 2026-02-14 A | 2026-02-16 A | SDR-2-PRO-MSL-M-1020 | 100% |  |
| SDR-2-PRO-MAL-M-1030 |  | Manhole Approve | 3d | 2026-02-16 A | 2026-02-19 A | SDR-2-PRO-MSL-M-1030, SDR-2-PRO-MAL-M-1000 | 100% |  |
| SDR-2-PRO-MAL-M-1040 |  | Catch Basin Approve | 3d | 2026-02-18 A | 2026-02-24 A | SDR-2-PRO-MSL-M-1040 | 100% |  |
| SDR-2-PRO-MAL-M-1050 |  | Manhole, Catch basin and Valve box Cover Approve | 3d | 2026-02-21 A | 2026-02-27 A | SDR-2-PRO-MSL-M-1050 | 100% |  |
| SDR-2-PRO-MAL-M-1060 |  | Fire Hydrant Approve | 3d | 2026-02-26 A | 2026-03-01 A | SDR-2-PRO-MSL-M-1060 | 100% |  |
| SDR-2-PRO-MAL-M-1070 |  | Valve of Fire Hydrant Approve | 3d | 2026-02-26 A | 2026-03-01 A | SDR-2-PRO-MSL-M-1070 | 100% |  |
|  | 3 | **Electrical** |  | 2026-02-11 | 2026-05-21 |  |  |  |
| SDR-2-PRO-MAL-E-1000 |  | MV Cables Approve | 3d | 2026-02-11 A | 2026-02-14 A | SDR-2-PRO-MSL-E-1000 | 100% |  |
| SDR-2-PRO-MAL-E-1010 |  | LV Cables Approve | 3d | 2026-02-14 A | 2026-02-16 A | SDR-2-PRO-MSL-E-1010 | 100% |  |
| SDR-2-PRO-MAL-E-1020 |  | Street Lighting Poles Approve | 3d | 2026-02-14 A | 2026-04-20 A | SDR-2-PRO-MSL-E-1020 | 100% |  |
| SDR-2-PRO-MAL-E-1030 |  | Street Lighting Fixtures Approve | 3d | 2026-02-14 A | 2026-04-20 A | SDR-2-PRO-MSL-E-1030 | 100% |  |
| SDR-2-PRO-MAL-E-1040 |  | DrawPits for Lighting Approve | 3d | 2026-02-14 A | 2026-04-20 A | SDR-2-PRO-MSL-E-1040 | 100% |  |
| SDR-2-PRO-MAL-E-1050 |  | Concrete Manholes & DrawPits for Telecom Network Approve | 3d | 2026-02-16 A | 2026-05-12 A | SDR-2-PRO-MSL-E-1050 | 100% |  |
| SDR-2-PRO-MAL-E-1060 |  | Switchgears - (RMUs) Approve | 3d | 2026-02-18 A | 2026-04-05 A | SDR-2-PRO-MSL-E-1060 | 100% |  |
| SDR-2-PRO-MAL-E-1070 |  | Unit Substation Approve | 3d | 2026-02-18 A | 2026-05-12 A | SDR-2-PRO-MSL-E-1070 | 100% |  |
| SDR-2-PRO-MAL-E-1080 |  | Lighting Panels Approve | 3d | 2026-02-18 A | 2026-05-12 A | SDR-2-PRO-MSL-E-1080 | 100% |  |
| SDR-2-PRO-MAL-E-1090 |  | KWH Meter with mounting frame Approve | 3d | 2026-02-18 A | 2026-05-21 A | SDR-2-PRO-MSL-E-1090 | 100% |  |
| SDR-2-PRO-MAL-E-1100 |  | Main Feeder Pillar Approve | 3d | 2026-02-18 A | 2026-05-13 A | SDR-2-PRO-MSL-E-1100 | 100% |  |
| SDR-2-PRO-MAL-E-1130 |  | CCTV Cables "CAT6" Approve | 3d | 2026-04-22 A | 2026-04-29 A | SDR-2-PRO-MSL-E-1130 | 100% |  |
| SDR-2-PRO-MAL-E-1140 |  | Racks and Patch panels Approve Approve | 3d | 2026-04-22 A | 2026-04-29 A | SDR-2-PRO-MSL-E-1140 | 100% |  |
| SDR-2-PRO-MAL-E-1150 |  | CCTV System,Servers & WorkStations Approve | 3d | 2026-04-22 A | 2026-04-29 A | SDR-2-PRO-MSL-E-1150 | 100% |  |
| SDR-2-PRO-MAL-E-1160 |  | Professional 55" Video wall at control room Approve | 3d | 2026-04-22 A | 2026-04-29 A | SDR-2-PRO-MSL-E-1160 | 100% |  |
| SDR-2-PRO-MAL-E-1170 |  | CCTV Switches Approve | 3d | 2026-04-22 A | 2026-04-29 A | SDR-2-PRO-MSL-E-1170 SS+2d | 100% |  |
| SDR-2-PRO-MAL-E-1180 |  | CCTV Wireless P2P bridges Approve | 3d | 2026-04-22 A | 2026-04-29 A | SDR-2-PRO-MSL-E-1180 | 100% |  |
| SDR-2-PRO-MAL-E-1190 |  | CCTV UPS Approve | 3d | 2026-04-22 A | 2026-04-29 A | SDR-2-PRO-MSL-E-1190 | 100% |  |
| SDR-2-PRO-MAL-E-1200 |  | CCTV Solar System Approve | 3d | 2026-04-22 A | 2026-04-29 A | SDR-2-PRO-MSL-E-1200 FS+3d | 100% |  |
| SDR-2-PRO-MAL-E-1110 |  | CCTV Poles including all hardwares Approve | 3d | 2026-04-26 A | 2026-04-29 A | SDR-2-PRO-MSL-E-1110 | 100% |  |
| SDR-2-PRO-MAL-E-1120 |  | CCTV Cables "Power" Approve | 3d | 2026-04-26 A | 2026-04-29 A | SDR-2-PRO-MSL-E-1120 | 100% |  |
|  | PR | **Procurement** |  | 2026-02-17 | 2027-03-20 |  |  |  |
|  | 3 | **Purchase Order** |  | 2026-02-17 | 2026-11-23 |  |  |  |
|  | 1 | **Civil** |  | 2026-02-18 | 2026-11-23 |  |  |  |
| SDR-2-PRO-PO-C-1000 |  | Earth works material PO | 13d | 2026-02-18 A | 2026-05-25 A | SDR-2-PRO-MAS-C-1000 FS+2d | 100% |  |
| SDR-2-PRO-PO-C-1010 |  | Ready mix concrete PO | 19d | 2026-02-18 A | 2026-06-07 A | SDR-2-PRO-MAS-C-1010 | 100% |  |
| SDR-2-PRO-PO-C-1020 |  | Asphalt Mix PO | 17d | 2026-02-18 A | 2026-03-30 A | SDR-2-PRO-MAS-C-1020, SDR-2-MILS-1040, SDR-2-MILS-1090 FF | 100% |  |
| SDR-2-PRO-PO-C-1070 |  | Construction material PO | 12d | 2026-02-18 A | 2026-04-07 A | SDR-2-PRO-MAS-C-1070 | 100% |  |
| SDR-2-PRO-PO-C-1030 |  | Kerbstone PO | 12d | 2026-03-08 A | 2026-09-30 A | SDR-2-PRO-MAS-C-1040, SDR-2-MILS-1000 FS+66d | 100% |  |
| SDR-2-PRO-PO-C-1050 |  | Interlock Tiles PO | 11d | 2026-04-12 A | 2026-09-30 A | SDR-2-PRO-MAS-C-1050, SDR-2-MILS-1000 FS+84d | 100% |  |
| SDR-2-PRO-PO-C-1040 |  | Road Marking PO | 13d | 2026-11-09 | 2026-11-23 | SDR-2-MILS-1000 FS+73d, SDR-2-PRO-MAS-C-1030 FF |  | 6d |
| SDR-2-PRO-PO-C-1060 |  | Traffic Signage PO | 13d | 2026-11-09 | 2026-11-23 | SDR-2-MILS-1000 FS+92d, SDR-2-PRO-MAS-C-1060 FF |  | 5d |
| SDR-2-PRO-PO-C-1080 |  | Fence for Electrical works PO | 13d | 2026-11-09 | 2026-11-23 | SDR-2-PRO-MAS-C-1080, SDR-2-MILS-1000 FS+92d |  | 6d |

| ID | WBS | Task | Duration | Start | Finish | Predecessors | Complete | Total float |
| --- | --- | --- | --- | --- | --- | --- | --- | --- |
| SDR-2-PRO-PO-C-1090 |  | Protection Bollards for CCTV Pole PO | 13d | 2026-11-09 | 2026-11-23 | SDR-2-PRO-MAS-C-1090, SDR-2-MILS-1000 FS+115d |  | 80d |
| SDR-2-PRO-PO-C-1100 |  | Protection (Guard rail) for Fire hydrant PO | 7d | 2026-11-09 | 2026-11-16 | SDR-2-PRO-MAS-C-1100, SDR-2-MILS-1000 FS+100d |  | 0d |
|  | 2 | **Mechanical** |  | 2026-02-23 | 2026-06-15 |  |  |  |
| SDR-2-PRO-PO-M-1000 |  | GRP Pipes & UPVC Pipes &Fittings PO | 16d | 2026-02-23 A | 2026-04-01 A | SDR-2-PRO-MAL-M-1000, SDR-2-MILS-1000 FS+54d | 100% |  |
| SDR-2-PRO-PO-M-1020 |  | Valves PO | 13d | 2026-03-07 A | 2026-06-15 A | SDR-2-PRO-MAL-M-1020, SDR-2-MILS-1000 FS+79d | 100% |  |
| SDR-2-PRO-PO-M-1010 |  | HDPE Pipes & Fittings PO | 13d | 2026-03-07 A | 2026-03-12 A | SDR-2-PRO-MAL-M-1010, SDR-2-MILS-1000 FS+75d | 100% |  |
| SDR-2-PRO-PO-M-1060 |  | Fire Hydrant PO | 14d | 2026-03-08 A | 2026-03-09 A | SDR-2-PRO-MAL-M-1060, SDR-2-MILS-1000 FS+107d | 100% |  |
| SDR-2-PRO-PO-M-1070 |  | Valve of Fire Hydrant PO | 14d | 2026-03-08 A | 2026-03-09 A | SDR-2-PRO-MAL-M-1070, SDR-2-MILS-1000 FS+107d | 100% |  |
| SDR-2-PRO-PO-M-1030 |  | Manhole PO | 13d | 2026-03-12 A | 2026-05-04 A | SDR-2-PRO-MAL-M-1030, SDR-2-MILS-1000 FS+68d | 100% |  |
| SDR-2-PRO-PO-M-1050 |  | Manhole, Catch basin and Valve box Cover PO | 13d | 2026-03-13 A | 2026-06-15 A | SDR-2-PRO-MAL-M-1050, SDR-2-MILS-1000 FS+97d | 100% |  |
| SDR-2-PRO-PO-M-1040 |  | Catch Basin PO | 13d | 2026-03-14 A | 2026-06-08 A | SDR-2-PRO-MAL-M-1040, SDR-2-MILS-1000 FS+87d | 100% |  |
|  | 3 | **Electrical** |  | 2026-02-17 | 2026-11-23 |  |  |  |
| SDR-2-PRO-PO-E-1060 |  | UPVC Ducts & HDPE Ducts for Telecom network PO | 18d | 2026-02-17 A | 2026-06-01 A | SDR-2-PRO-MAS-E-1010, SDR-2-MILS-1000 FS+48d | 100% |  |
| SDR-2-PRO-PO-E-1010 |  | Termination Kits & Joints PO | 17d | 2026-02-25 A | 2026-09-10 A | SDR-2-PRO-MAS-E-1000, SDR-2-MILS-1000 FS+56d | 100% |  |
| SDR-2-PRO-PO-E-1000 |  | MV Cables PO | 17d | 2026-02-25 A | 2026-03-16 A | SDR-2-PRO-MAL-E-1000, SDR-2-MILS-1000 FS+56d | 100% |  |
| SDR-2-PRO-PO-E-1020 |  | LV Cables PO | 11d | 2026-03-16 A | 2026-06-01 A | SDR-2-PRO-MAL-E-1010, SDR-2-MILS-1000 FS+70d | 100% |  |
| SDR-2-PRO-PO-E-1080 |  | Grounding System PO | 13d | 2026-03-29 A | 2026-06-01 A | SDR-2-PRO-MAS-E-1020, SDR-2-MILS-1000 FS+75d | 100% |  |
| SDR-2-PRO-PO-E-1090 |  | Switchgears - (RMUs) PO | 13d | 2026-04-22 A | 2026-04-26 A | SDR-2-PRO-MAL-E-1060, SDR-2-MILS-1000 FS+85d | 100% |  |
| SDR-2-PRO-PO-E-1070 |  | Concrete Manholes & DrawPits for Telecom Network PO | 13d | 2026-04-26 A | 2026-08-04 A | SDR-2-PRO-MAL-E-1050, SDR-2-MILS-1000 FS+63d | 100% |  |
| SDR-2-PRO-PO-E-1150 |  | CCTV Poles including all hardwares PO | 14d | 2026-04-26 A | 2026-09-30 A | SDR-2-PRO-MAL-E-1110, SDR-2-MILS-1000 FS+109d | 100% |  |
| SDR-2-PRO-PO-E-1160 |  | CCTV Cables "Power" PO | 13d | 2026-04-26 A | 2026-09-30 A | SDR-2-PRO-MAL-E-1120, SDR-2-MILS-1000 FS+115d | 100% |  |
| SDR-2-PRO-PO-E-1170 |  | CCTV Cables "CAT6" PO | 13d | 2026-04-26 A | 2026-09-30 A | SDR-2-PRO-MAL-E-1130, SDR-2-MILS-1000 FS+115d | 100% |  |
| SDR-2-PRO-PO-E-1190 |  | CCTV System,Servers & WorkStations PO | 13d | 2026-04-26 A | 2026-10-01 A | SDR-2-PRO-MAL-E-1150, SDR-2-MILS-1000 FS+137d | 100% |  |
| SDR-2-PRO-PO-E-1200 |  | Professional 55" Video wall at control room PO | 13d | 2026-04-26 A | 2026-09-05 A | SDR-2-PRO-MAL-E-1160, SDR-2-MILS-1000 FS+149d | 100% |  |
| SDR-2-PRO-PO-E-1210 |  | CCTV Switches PO | 13d | 2026-04-26 A | 2026-09-07 A | SDR-2-PRO-MAL-E-1170, SDR-2-MILS-1000 FS+161d | 100% |  |
| SDR-2-PRO-PO-E-1220 |  | CCTV Wireless P2P bridges PO | 13d | 2026-04-26 A | 2026-09-05 A | SDR-2-PRO-MAL-E-1180, SDR-2-MILS-1000 FS+169d | 100% |  |
| SDR-2-PRO-PO-E-1230 |  | CCTV UPS PO | 13d | 2026-04-26 A | 2026-09-14 A | SDR-2-PRO-MAL-E-1190, SDR-2-MILS-1000 FS+176d | 100% |  |
| SDR-2-PRO-PO-E-1240 |  | CCTV Solar System PO | 13d | 2026-04-26 A | 2026-10-01 A | SDR-2-PRO-MAL-E-1200, SDR-2-MILS-1000 FS+189d | 100% |  |
| SDR-2-PRO-PO-E-1110 |  | Lighting Panels PO | 13d | 2026-04-29 A | 2026-08-05 A | SDR-2-PRO-MAL-E-1080, SDR-2-MILS-1000 FS+99d | 100% |  |
| SDR-2-PRO-PO-E-1030 |  | Street Lighting Poles PO | 13d | 2026-04-30 A | 2026-06-02 A | SDR-2-PRO-MAL-E-1020, SDR-2-MILS-1000 FS+80d | 100% |  |
| SDR-2-PRO-PO-E-1040 |  | Street Lighting Fixtures PO | 13d | 2026-04-30 A | 2026-08-01 A | SDR-2-PRO-MAL-E-1030, SDR-2-MILS-1000 FS+92d | 100% |  |
| SDR-2-PRO-PO-E-1050 |  | DrawPits for Lighting PO | 15d | 2026-04-30 A | 2026-09-07 A | SDR-2-PRO-MAL-E-1040, SDR-2-MILS-1000 FS+104d | 100% |  |
| SDR-2-PRO-PO-E-1140 |  | PECD Ducts for CCTV network PO | 14d | 2026-05-06 A | 2026-09-30 A | SDR-2-PRO-MAS-E-1030, SDR-2-MILS-1000 FS+111d | 100% |  |
| SDR-2-PRO-PO-E-1180 |  | Racks and Patch panels PO | 13d | 2026-06-15 A | 2026-09-15 A | SDR-2-PRO-MAL-E-1140, SDR-2-MILS-1000 FS+125d | 100% |  |
| SDR-2-PRO-PO-E-1130 |  | Main Feeder Pillar PO | 13d | 2026-08-16 A | 2026-09-30 A | SDR-2-PRO-MAL-E-1100, SDR-2-MILS-1000 FS+99d | 100% |  |
| SDR-2-PRO-PO-E-1100 |  | Unit Substation PO | 13d | 2026-11-09 | 2026-11-23 | SDR-2-PRO-MAL-E-1070, SDR-2-MILS-1000 FS+80d |  | 10d |
| SDR-2-PRO-PO-E-1120 |  | KWH Meter with mounting frame PO | 13d | 2026-11-09 | 2026-11-23 | SDR-2-PRO-MAL-E-1090, SDR-2-MILS-1000 FS+99d |  | 2d |
|  | 1 | **Delivery to Site** |  | 2026-03-14 | 2027-03-16 |  |  |  |
|  | 2 | **Short Lead Items Delivery** |  | 2026-04-19 | 2027-03-16 |  |  |  |
|  | 1 | **Civil** |  | 2026-04-19 | 2027-03-16 |  |  |  |
| SDR-2-PRO-DES-C-1070 |  | Construction material Delivery | 110d | 2026-04-19 A | 2026-07-20 A | SDR-2-PRO-PO-C-1070 FS+20d | 100% |  |
| SDR-2-PRO-DES-C-1000 |  | Earth works material Delivery | 50d | 2026-05-31 A | 2026-07-20 A | SDR-2-PRO-PO-C-1000 FS+14d | 100% |  |
| SDR-2-PRO-DES-C-1010 |  | Ready mix concrete Delivery | 118d | 2026-06-15 A | 2026-06-22 A | SDR-2-PRO-PO-C-1010 FS+30d | 100% |  |
| SDR-2-PRO-DES-C-1020 |  | Asphalt Mix Delivery | 98d | 2026-09-01 A | 2027-01-26 | SDR-2-PRO-PO-C-1020 FF | 40% | 14.1d |
| SDR-2-PRO-DES-C-1030 |  | Kerbstone Delivery | 60d | 2026-09-01 A | 2026-12-19 | SDR-2-PRO-PO-C-1030 FF | 15% | 0d |
| SDR-2-PRO-DES-C-1050 |  | Interlock Tiles Delivery | 40d | 2026-09-01 A | 2026-11-29 | SDR-2-PRO-PO-C-1050 FF | 15% | 104.1d |
| SDR-2-PRO-DES-C-1090 |  | Protection Bollards for CCTV Pole Delivery | 17d | 2026-11-24 | 2026-12-10 | SDR-2-PRO-PO-C-1090 |  | 93d |
| SDR-2-PRO-DES-C-1100 |  | Protection (Guard rail) for Fire hydrant Delivery | 60d | 2026-11-24 | 2027-01-22 | SDR-2-PRO-PO-C-1100 FS+6d |  | 0d |
| SDR-2-PRO-DES-C-1040 |  | Road Marking Delivery | 90d | 2026-12-11 | 2027-03-16 | SDR-2-PRO-PO-C-1040 FS+15d |  | 7d |
| SDR-2-PRO-DES-C-1080 |  | Fence for Electrical works Delivery | 29d | 2026-12-13 | 2027-01-10 | SDR-2-PRO-PO-C-1080 FS+16d |  | 7d |
| SDR-2-PRO-DES-C-1060 |  | Traffic Signage Manufacture and Delivery | 20d | 2026-12-18 | 2027-01-06 | SDR-2-PRO-PO-C-1060 FS+21d |  | 6d |
|  | 3 | **Electrical** |  | 2026-04-20 | 2026-12-15 |  |  |  |
| SDR-2-PRO-DES-E-1000 |  | UPVC Ducts & HDPE Ducts for Telecom network M Delivery | 35d | 2026-04-20 A | 2026-07-01 A | SDR-2-PRO-PO-E-1060 FS+19d | 100% |  |
| SDR-2-PRO-DES-E-1010 |  | Grounding System Delivery | 37d | 2026-06-02 A | 2026-07-01 A | SDR-2-PRO-PO-E-1080 FS+12d | 100% |  |
| SDR-2-PRO-DES-E-1020 |  | PECD Ducts for CCTV network Delivery | 37d | 2026-11-09 | 2026-12-15 | SDR-2-PRO-PO-E-1140 FF |  | 1d |
|  | 5 | **Long Lead Items Delivery** |  | 2026-03-14 | 2027-01-17 |  |  |  |
|  | 3 | **Electrical** |  | 2026-03-14 | 2027-01-17 |  |  |  |
| SDR-2-PRO-DEL-E-1000 |  | MV Cables Delivery | 70d | 2026-03-14 A | 2026-09-10 A | SDR-2-PRO-PO-E-1000 FS+24d | 100% |  |
| SDR-2-PRO-DEL-E-1060 |  | Switchgears - (RMUs) Delivery | 50d | 2026-05-10 A | 2026-05-18 A | SDR-2-PRO-PO-E-1090 | 100% |  |
| SDR-2-PRO-DEL-E-1010 |  | LV Cables Delivery | 70d | 2026-06-27 A | 2026-09-17 A | SDR-2-PRO-PO-E-1020 FS+22d | 100% |  |
| SDR-2-PRO-DEL-E-1050 |  | Concrete Manholes & DrawPits for Telecom Network Delivery | 65d | 2026-07-21 A | 2026-08-24 A | SDR-2-PRO-PO-E-1070 FS+28d | 100% |  |
| SDR-2-PRO-DEL-E-1210 |  | Termination Kits & Joints Delivery | 60d | 2026-08-24 A | 2026-09-14 A | SDR-2-PRO-PO-E-1010 FS+30d | 100% |  |
| SDR-2-PRO-DEL-E-1140 |  | Racks and Patch panels Delivery | 50d | 2026-08-24 A | 2026-10-08 A | SDR-2-PRO-PO-E-1180 FF | 100% |  |
| SDR-2-PRO-DEL-E-1160 |  | Professional 55" Video wall at control room Delivery | 50d | 2026-08-24 A | 2026-10-06 A | SDR-2-PRO-PO-E-1200 FF | 100% |  |
| SDR-2-PRO-DEL-E-1170 |  | CCTV Switches Delivery | 50d | 2026-08-24 A | 2026-10-06 A | SDR-2-PRO-PO-E-1210 FF | 100% |  |
| SDR-2-PRO-DEL-E-1180 |  | CCTV Wireless P2P bridges Delivery | 50d | 2026-08-24 A | 2026-09-16 A | SDR-2-PRO-PO-E-1220 FF | 100% |  |
| SDR-2-PRO-DEL-E-1190 |  | CCTV UPS Delivery | 50d | 2026-08-24 A | 2026-10-08 A | SDR-2-PRO-PO-E-1230 FF | 100% |  |
| SDR-2-PRO-DEL-E-1040 |  | DrawPits for Lighting Delivery | 40d | 2026-09-07 A | 2026-09-14 A | SDR-2-PRO-PO-E-1050 FS+12d | 100% |  |
| SDR-2-PRO-DEL-E-1020 |  | Street Lighting Poles Delivery | 70d | 2026-11-09 | 2027-01-17 | SDR-2-PRO-PO-E-1030 FS+22d |  | 6d |
| SDR-2-PRO-DEL-E-1030 |  | Street Lighting Fixtures Delivery | 70d | 2026-11-09 | 2027-01-17 | SDR-2-PRO-PO-E-1040 FS+9d |  | 6d |

| ID | WBS | Task | Duration | Start | Finish | Predecessors | Complete | Total float |
| --- | --- | --- | --- | --- | --- | --- | --- | --- |
| SDR-2-PRO-DEL-E-1070 |  | Unit Substation Delivery | 65d | 2026-11-09 | 2027-01-12 | SDR-2-PRO-PO-E-1100 SS |  | 11d |
| SDR-2-PRO-DEL-E-1080 |  | Lighting Panels Delivery | 65d | 2026-11-09 | 2027-01-12 | SDR-2-PRO-PO-E-1110 FS+20d |  | 0d |
| SDR-2-PRO-DEL-E-1090 |  | KWH Meter with mounting frame Delivery | 50d | 2026-11-09 | 2026-12-28 | SDR-2-PRO-PO-E-1120 SS |  | 2d |
| SDR-2-PRO-DEL-E-1100 |  | Main Feeder Pillar Manufacture and Delivery | 50d | 2026-11-09 | 2026-12-28 | SDR-2-PRO-PO-E-1130 FS+12d |  | 15d |
| SDR-2-PRO-DEL-E-1110 |  | CCTV Poles including all hardwares Delivery | 65d | 2026-11-09 | 2027-01-12 | SDR-2-PRO-PO-E-1150 FF |  | -1d |
| SDR-2-PRO-DEL-E-1120 |  | CCTV Cables "Power" Delivery | 65d | 2026-11-09 | 2027-01-12 | SDR-2-PRO-PO-E-1160 FF |  | -1d |
| SDR-2-PRO-DEL-E-1130 |  | CCTV Cables "CAT6" Delivery | 45d | 2026-11-09 | 2026-12-23 | SDR-2-PRO-PO-E-1170 FF |  | 1d |
| SDR-2-PRO-DEL-E-1150 |  | CCTV System,Servers & WorkStations Delivery | 50d | 2026-11-09 | 2026-12-28 | SDR-2-PRO-PO-E-1190 FF |  | 14d |
| SDR-2-PRO-DEL-E-1200 |  | CCTV Solar System Delivery | 55d | 2026-11-09 | 2027-01-02 | SDR-2-PRO-PO-E-1240 FF |  | 21d |
|  | 2 | **Mechanical** |  | 2026-03-16 | 2026-10-01 |  |  |  |
| SDR-2-PRO-DEL-M-1000 |  | GRP Pipes & UPVC Pipes &Fittings Delivery | 48d | 2026-03-16 A | 2026-07-13 A | SDR-2-PRO-PO-M-1000 FS+25d | 100% |  |
| SDR-2-PRO-DEL-M-1010 |  | HDPE Pipes & Fittings Delivery | 40d | 2026-03-16 A | 2026-07-13 A | SDR-2-PRO-PO-M-1010 FS+21d | 100% |  |
| SDR-2-PRO-DEL-M-1030 |  | Manhole Delivery | 48d | 2026-05-12 A | 2026-09-12 A | SDR-2-PRO-PO-M-1030 FS+27d | 100% |  |
| SDR-2-PRO-DEL-M-1050 |  | Manhole, Catch basin and Valve box Cover Delivery | 40d | 2026-05-12 A | 2026-09-12 A | SDR-2-PRO-PO-M-1050 FS+8d | 100% |  |
| SDR-2-PRO-DEL-M-1060 |  | Fire Hydrant Delivery | 75d | 2026-06-03 A | 2026-09-21 A | SDR-2-PRO-PO-M-1060 FS+2d | 100% |  |
| SDR-2-PRO-DEL-M-1070 |  | Valve of Fire Hydrant Delivery | 75d | 2026-06-03 A | 2026-09-21 A | SDR-2-PRO-PO-M-1070 FS+2d | 100% |  |
| SDR-2-PRO-DEL-M-1020 |  | Valves Delivery | 100d | 2026-06-03 A | 2026-10-01 A | SDR-2-PRO-PO-M-1020 FS+20d | 100% |  |
| SDR-2-PRO-DEL-M-1040 |  | Catch Basin Delivery | 50d | 2026-06-17 A | 2026-09-12 A | SDR-2-PRO-PO-M-1040 FS+10d | 100% |  |
|  | 4 | **Materials Staging Time** |  | 2026-03-17 | 2027-03-20 |  |  |  |
|  | 1 | **Civil** |  | 2026-04-21 | 2027-03-20 |  |  |  |
| SDR-2-PRO-ST-C-1070 |  | Construction material staging | 4d | 2026-04-21 A | 2026-07-21 A | SDR-2-PRO-DES-C-1070 SS+40d | 100% |  |
| SDR-2-PRO-ST-C-1000 |  | Earth works material staging | 4d | 2026-06-01 A | 2026-07-21 A | SDR-2-PRO-DES-C-1000 SS | 100% |  |
| SDR-2-PRO-ST-C-1010 |  | Ready mix concrete staging | 4d | 2026-07-01 A | 2026-07-04 A | SDR-2-PRO-DES-C-1000 SS | 100% |  |
| SDR-2-PRO-ST-C-1050 |  | Interlock Tiles staging | 4d | 2026-09-01 A | 2026-12-03 | SDR-2-PRO-DES-C-1050 | 15% | 104.1d |
| SDR-2-PRO-ST-C-1030 |  | Kerbstone staging | 4d | 2026-09-16 A | 2026-12-19 | SDR-2-PRO-DES-C-1030 FF | 15% | 68.1d |
| SDR-2-PRO-ST-C-1020 |  | Asphalt Mix staging | 0d | 2026-10-01 A | 2027-01-26 | SDR-2-PRO-DES-C-1020 FF | 40% | 49.2d |
| SDR-2-PRO-ST-C-1090 |  | Protection Bollards for CCTV Pole staging | 4d | 2026-12-15 | 2026-12-18 | SDR-2-PRO-DES-C-1090 FS+4d |  | 93d |
| SDR-2-PRO-ST-C-1060 |  | Traffic Signage staging | 4d | 2027-01-07 | 2027-01-10 | SDR-2-PRO-DES-C-1060 |  | 111d |
| SDR-2-PRO-ST-C-1080 |  | Fence for Electrical works staging | 4d | 2027-01-11 | 2027-01-14 | SDR-2-PRO-DES-C-1080 |  | 7d |
| SDR-2-PRO-ST-C-1100 |  | Protection (Guard rail) for Fire hydrant staging | 4d | 2027-01-23 | 2027-01-26 | SDR-2-PRO-DES-C-1100 |  | 0d |
| SDR-2-PRO-ST-C-1040 |  | Road Marking staging | 4d | 2027-03-17 | 2027-03-20 | SDR-2-PRO-DES-C-1040 |  | 15d |
|  | 2 | **Mechanical** |  | 2026-03-21 | 2026-09-22 |  |  |  |
| SDR-2-PRO-ST-M-1000 |  | GRP Pipes & Fittings staging | 10d | 2026-03-21 A | 2026-07-21 A | SDR-2-PRO-DEL-M-1000 | 100% |  |
| SDR-2-PRO-ST-M-1010 |  | HDPE Pipes & Fittings staging | 10d | 2026-03-21 A | 2026-07-21 A | SDR-2-PRO-DEL-M-1010 | 100% |  |
| SDR-2-PRO-ST-M-1050 |  | Manhole, Catch basin and Valve box Cover staging | 10d | 2026-05-13 A | 2026-09-12 A | SDR-2-PRO-DEL-M-1050 FF | 100% |  |
| SDR-2-PRO-ST-M-1030 |  | Manhole staging | 10d | 2026-05-13 A | 2026-09-12 A | SDR-2-PRO-DEL-M-1030 FF | 100% |  |
| SDR-2-PRO-ST-M-1020 |  | Valves staging | 10d | 2026-06-15 A | 2026-09-22 A | SDR-2-PRO-DEL-M-1020 FF | 100% |  |
| SDR-2-PRO-ST-M-1060 |  | Fire Hydrant staging | 10d | 2026-06-18 A | 2026-09-21 A | SDR-2-PRO-DEL-M-1060 FF | 100% |  |
| SDR-2-PRO-ST-M-1070 |  | Valve of Fire Hydrant staging | 10d | 2026-06-18 A | 2026-09-21 A | SDR-2-PRO-DEL-M-1070 FF | 100% |  |
| SDR-2-PRO-ST-M-1040 |  | Catch Basin staging | 10d | 2026-06-18 A | 2026-09-12 A | SDR-2-PRO-DEL-M-1040 FF | 100% |  |
|  | 3 | **Electrical** |  | 2026-03-17 | 2027-01-22 |  |  |  |
| SDR-2-PRO-ST-E-1000 |  | MV Cables staging | 10d | 2026-03-17 A | 2026-09-10 A | SDR-2-PRO-DEL-E-1000 | 100% |  |
| SDR-2-PRO-ST-E-1090 |  | Switchgears - (RMUs) staging | 10d | 2026-05-17 A | 2026-06-01 A | SDR-2-PRO-DEL-E-1060 | 100% |  |
| SDR-2-PRO-ST-E-1060 |  | UPVC Ducts & HDPE Ducts for Telecom network staging | 10d | 2026-06-01 A | 2026-07-21 A | SDR-2-PRO-DES-E-1000 | 100% |  |
| SDR-2-PRO-ST-E-1080 |  | Grounding System staging | 10d | 2026-06-03 A | 2026-07-21 A | SDR-2-PRO-DES-E-1010 | 100% |  |
| SDR-2-PRO-ST-E-1020 |  | LV Cables staging | 10d | 2026-07-20 A | 2026-09-17 A | SDR-2-PRO-DEL-E-1010 FS+3d | 100% |  |
| SDR-2-PRO-ST-E-1070 |  | Concrete Manholes & DrawPits for Telecom Network staging | 10d | 2026-07-27 A | 2026-08-24 A | SDR-2-PRO-DEL-E-1050 | 100% |  |
| SDR-2-PRO-ST-E-1050 |  | DrawPits for Lighting staging | 10d | 2026-08-20 A | 2026-09-07 A | SDR-2-PRO-DEL-E-1040 | 100% |  |
| SDR-2-PRO-ST-E-1010 |  | Termination Kits & Joints staging | 10d | 2026-08-24 A | 2026-09-14 A | SDR-2-PRO-DEL-E-1210 | 100% |  |
| SDR-2-PRO-ST-E-1180 |  | Racks and Patch panels staging | 10d | 2026-08-24 A | 2026-10-08 A | SDR-2-PRO-DEL-E-1140 | 100% |  |
| SDR-2-PRO-ST-E-1200 |  | Professional 55" Video wall at control room staging | 10d | 2026-08-24 A | 2026-10-06 A | SDR-2-PRO-DEL-E-1160 | 100% |  |
| SDR-2-PRO-ST-E-1210 |  | CCTV Switches staging | 10d | 2026-08-24 A | 2026-10-06 A | SDR-2-PRO-DEL-E-1170 | 100% |  |
| SDR-2-PRO-ST-E-1220 |  | CCTV Wireless P2P bridges staging | 10d | 2026-08-24 A | 2026-09-16 A | SDR-2-PRO-DEL-E-1180 | 100% |  |
| SDR-2-PRO-ST-E-1230 |  | CCTV UPS staging | 10d | 2026-08-24 A | 2026-10-08 A | SDR-2-PRO-DEL-E-1190 | 100% |  |
| SDR-2-PRO-ST-E-1030 |  | Street Lighting Poles staging | 10d | 2026-11-09 | 2026-11-18 | SDR-2-PRO-DEL-E-1020 SS |  | 20d |
| SDR-2-PRO-ST-E-1040 |  | Street Lighting Fixtures staging | 10d | 2026-11-09 | 2026-11-18 | SDR-2-PRO-DEL-E-1030 SS |  | 20d |
| SDR-2-PRO-ST-E-1100 |  | Unit Substation staging | 10d | 2026-11-09 | 2026-11-18 | SDR-2-PRO-DEL-E-1070 SS |  | 82d |
| SDR-2-PRO-ST-E-1110 |  | Lighting Panels staging | 10d | 2026-11-09 | 2026-11-18 | SDR-2-PRO-DEL-E-1080 SS |  | 40d |
| SDR-2-PRO-ST-E-1130 |  | Main Feeder Pillar staging | 10d | 2026-11-11 | 2026-11-20 | SDR-2-PRO-DEL-E-1100 SS+2d |  | 38d |
| SDR-2-PRO-ST-E-1140 |  | PECD Ducts for CCTV network staging | 10d | 2026-12-16 | 2026-12-25 | SDR-2-PRO-DES-E-1020 |  | 18d |
| SDR-2-PRO-ST-E-1170 |  | CCTV Cables "CAT6" staging | 10d | 2026-12-24 | 2027-01-02 | SDR-2-PRO-DEL-E-1130 |  | 10d |
| SDR-2-PRO-ST-E-1120 |  | KWH Meter with mounting frame staging | 10d | 2026-12-29 | 2027-01-07 | SDR-2-PRO-DEL-E-1090 |  | 2d |
| SDR-2-PRO-ST-E-1190 |  | CCTV System,Servers & WorkStations staging | 10d | 2026-12-29 | 2027-01-07 | SDR-2-PRO-DEL-E-1150 |  | 14d |
| SDR-2-PRO-ST-E-1240 |  | CCTV Solar System staging | 10d | 2027-01-03 | 2027-01-12 | SDR-2-PRO-DEL-E-1200 |  | 21d |
| SDR-2-PRO-ST-E-1150 |  | CCTV Poles including all hardwares staging | 10d | 2027-01-13 | 2027-01-22 | SDR-2-PRO-DEL-E-1110 |  | -1d |
| SDR-2-PRO-ST-E-1160 |  | CCTV Cables "Power" staging | 10d | 2027-01-13 | 2027-01-22 | SDR-2-PRO-DEL-E-1120 |  | -1d |
|  | CON | **Construction** |  | 2026-02-06 | 2027-07-05 |  |  |  |
|  | RO | **ROAD WORKS** |  | 2026-02-06 | 2027-05-30 |  |  |  |
|  | ZA | **ZONE A** |  | 2026-02-06 | 2027-05-30 |  |  |  |
|  | 14 | **GENERAL WORKS** |  | 2026-02-06 | 2026-03-16 |  |  |  |

| ID | WBS | Task | Duration | Start | Finish | Predecessors | Complete | Total float |
| --- | --- | --- | --- | --- | --- | --- | --- | --- |
|  | 10 | **Cleaning and removal of organic materials in Zone A** |  | 2026-02-06 | 2026-03-06 |  |  |  |
| SDR-2-CON-RW-ZA-1000 |  | Cleaning and removal of organic materials in Zone A | 16d | 2026-02-06 A | 2026-03-06 A | SDR-2-MOBL-1060 | 100% |  |
|  | 12 | **Surveying works Zone A** |  | 2026-03-06 | 2026-03-16 |  |  |  |
| SDR-2-CON-RW-ZA-1010 |  | Surveying works Zone A | 16d | 2026-03-06 A | 2026-03-16 A | SDR-2-ENG-APP-M-1010 SS, SDR-2-PREL-1100, SDR-2-CON-RW-ZA-1000, SDR-2-PRO-MAS-C-1030 SS, SDR-2-PRO-MAS-C-1060 SS, SDR-2-PRO-MAL-E-1150, SDR-2-PRO-MAL-E-1140, SDR-2-PRO-MAL-E-1130, SDR-2-PRO-MAL-E-1120, SDR-2-PRO-MAL-E-1110, SDR-2-PRO-MAL-E-1000, SDR-2-PRO-MAL-E-1010, SDR-2-PRO-MAL-E-1020, SDR-2-PRO-MAL-E-1030, SDR-2-PRO-MAL-E-1040, SDR-2-PRO-MAL-E-1050, SDR-2-PRO-MAL-E-1180, SDR-2-PRO-MAL-E-1060, SDR-2-PRO-MAL-E-1070, SDR-2-PRO-MAL-E-1080, SDR-2-PRO-MAL-E-1090, SDR-2-PRO-MAL-E-1100, SDR-2-PRO-MAL-E-1190, SDR-2-PRO-MAL-M-1000, SDR-2-PRO-MAL-M-1010, SDR-2-PRO-MAL-M-1020, SDR-2-PRO-MAL-M-1030, SDR-2-PRO-MAL-M-1040, SDR-2-PRO-MAL-M-1050, SDR-2-PRO-MAL-M-1060, SDR-2-PRO-MAL-M-1070, SDR-2-PRO-MAS-E-1000, SDR-2-PRO-MAS-E-1010, SDR-2-PRO-MAS-E-1020, SDR-2-PRO-MAS-E-1030, SDR-2-PRO-MAS-C-1000, SDR-2-PRO-MAS-C-1010, SDR-2-PRO-MAS-C-1040, SDR-2-PRO-MAS-C-1020, SDR-2-PRO-MAS-C-1050, SDR-2-PRO-MAS-C-1070, SDR-2-PRO-MAS-C-1090, SDR-2-PRO-MAS-C-1100, SDR-2-PRO-MAS-C-1080 | 100% |  |
|  | 1 | **ROAD WORKS IN ( PH2-COL-MC10 )** |  | 2026-03-23 | 2027-05-29 |  |  |  |
|  | 1 | **Earth Works Road** |  | 2026-03-23 | 2026-05-07 |  |  |  |
| SDR-2-CON-RW-ZA-1020 |  | Roadway Excavation and cuttings | 20d | 2026-03-23 A | 2026-05-07 A | SDR-2-CON-RW-ZA-1010 FS+11d, SDR-2-PRO-ST-C-1000 FF | 100% |  |
|  | 10 | **Backfilling Works** |  | 2026-04-07 | 2026-06-12 |  |  |  |
| SDR-2-CON-RW-ZA-2860 |  | Embankments to the Road 1 Layer | 21d | 2026-04-07 A | 2026-04-30 A | SDR-2-CON-RW-ZA-1020 | 100% |  |
| SDR-2-CON-RW-ZA-2870 |  | Embankments to the Road 2 Layer | 21d | 2026-05-16 A | 2026-05-23 A | SDR-2-CON-RW-ZA-2860 | 100% |  |
| SDR-2-CON-RW-ZA-2880 |  | Embankments to the Road 3 Layer | 21d | 2026-05-23 A | 2026-06-04 A | SDR-2-CON-RW-ZA-2870, SDR-2-PRO-DES-E-1010, SDR-2-PRO-DES-E-1010 FF | 100% |  |
| SDR-2-CON-RW-ZA-1030 |  | Embankments to the Road 4 Layer | 21d | 2026-06-04 A | 2026-06-12 A | SDR-2-CON-RW-ZA-2880 | 100% |  |
|  | 11 | **Subgrade** |  | 2026-08-11 | 2026-08-31 |  |  |  |
| SDR-2-CON-RW-ZA-1060 |  | Subgrade layer works | 21d | 2026-08-11 A | 2026-08-31 A | SDR-2-CON-RW-ZA-1030 | 100% |  |
|  | 9 | **Earth Works Plot** |  | 2026-05-16 | 2026-07-21 |  |  |  |
| SDR-2-CON-RW-ZA-1040 |  | Plot Excavation for cuttings (all types of soil) | 21d | 2026-05-16 A | 2026-05-31 A | SDR-2-CON-RW-ZA-1060, SDR-2-PRO-DES-C-1070, SDR-2-PRO-DES-C-1000 | 100% |  |
| SDR-2-CON-RW-ZA-2890 |  | Embankments to the Plot Layer 1 | 21d | 2026-05-23 A | 2026-06-04 A | SDR-2-CON-RW-ZA-1040 | 100% |  |
| SDR-2-CON-RW-ZA-2900 |  | Embankments to the Plot Layer 2 | 21d | 2026-06-15 A | 2026-07-05 A | SDR-2-CON-RW-ZA-2890 | 100% |  |
| SDR-2-CON-RW-ZA-1050 |  | Embankments to the Plot Layer 3 | 21d | 2026-07-14 A | 2026-07-21 A | SDR-2-CON-RW-ZA-2900 | 100% |  |
|  | 2 | **Base Course** |  | 2026-08-31 | 2026-10-01 |  |  |  |
| SDR-2-CON-RW-ZA-1070 |  | Aggregate base course layer | 21d | 2026-08-31 A | 2026-10-01 A | SDR-2-PRO-ST-C-1070, SDR-2-CON-RW-ZA-1060 | 100% |  |
|  | 8 | **Demolition Work** |  | 2026-10-13 | 2026-10-19 |  |  |  |
| SDR-2-CON-RW-ZA-1080 |  | Milling of wearing course | 12d | 2026-10-13 A | 2026-10-19 A | SDR-2-CON-RW-ZA-1070 | 100% |  |
|  | 3 | **Asphalt Works** |  | 2026-10-13 | 2027-02-20 |  |  |  |
| SDR-2-CON-RW-ZA-1090 |  | Asphalt works 2st Layer with RC-01 | 16d | 2026-10-13 A | 2026-10-19 A | SDR-2-PRO-DES-C-1020 FF, SDR-2-PRO-DES-C-1010, SDR-2-PRO-MAS-C-1020, SDR-2-CON-RW-ZA-1070, SDR-2-CON-RW-ZA-1080, SDR-2-PRO-ST-C-1020 | 100% |  |
| SDR-2-CON-RW-ZA-1100 |  | Asphalt works 3nd layer with RC-02 | 21d | 2026-10-22 A | 2027-02-20 | SDR-2-PRO-DES-C-1020, SDR-2-CON-RW-ZA-1090 SS+10d | 30% | 42.2d |
|  | 4 | **Kerbstone Installation** |  | 2026-10-27 | 2027-02-21 |  |  |  |
| SDR-2-CON-RW-ZA-3400 |  | Kerbstone Installation "all Types" Part1 | 18d | 2026-10-27 A | 2027-01-09 | SDR-2-CON-RW-ZA-1060, SDR-2-PRO-ST-C-1030 | 30% | 58.1d |
| SDR-2-CON-RW-ZA-1110 |  | Kerbstone Installation "all Types" Part2 | 21d | 2027-01-27 | 2027-02-21 | SDR-2-CON-CC-ZG-1610, SDR-2-CON-RW-ZA-1100 SS+15d, SDR-2-PRO-ST-C-1010, SDR-2-PRO-MAS-C-1010, SDR-2-PRO-MAS-C-1040, SDR-2-CON-RW-ZA-3400 |  | 42.2d |
|  | 5 | **Interlock Installation** |  | 2027-03-17 | 2027-04-10 |  |  |  |
| SDR-2-CON-RW-ZA-1120 |  | Interlock Installation | 21d | 2027-03-17 | 2027-04-10 | SDR-2-CON-RW-ZA-1110 SS, SDR-2-PRO-ST-C-1050, SDR-2-PRO-MAS-C-1050, SDR-2-PRO-DES-C-1040 |  | 6d |
|  | 6 | **Road Marking** |  | 2027-03-29 | 2027-04-29 |  |  |  |
| SDR-2-CON-RW-ZA-1130 |  | Retroreflective Thermoplastic White Traffic lines | 14d | 2027-03-29 | 2027-04-13 | SDR-2-CON-RW-ZA-1120 SS+10d, SDR-2-PRO-ST-C-1040, SDR-2-PRO-MAS-C-1030, SDR-2-CON-RW-ZA-1050 SS |  | 6d |
| SDR-2-CON-RW-ZA-1140 |  | Retroreflective Thermoplastic Yellow, Traffic lines | 14d | 2027-04-14 | 2027-04-29 | SDR-2-CON-RW-ZA-1130 |  | 6d |
|  | 7 | **Traffic Signage** |  | 2027-05-01 | 2027-05-29 |  |  |  |
| SDR-2-CON-RW-ZA-1150 |  | Single post-Traffic signs Installation | 20d | 2027-05-01 | 2027-05-29 | SDR-2-CON-RW-ZA-1050, SDR-2-CON-RW-ZA-1140, SDR-2-PRO-ST-C-1060, SDR-2-PRO-MAS-C-1060 |  | 6d |
|  | 8 | **ROAD WORKS IN ( PH2-COL-MC20 )** |  | 2026-04-07 | 2027-05-30 |  |  |  |
|  | 1 | **Earth Works Road** |  | 2026-04-25 | 2026-07-21 |  |  |  |
| SDR-2-CON-RW-ZA-1160 |  | Roadway Excavation and cuttings | 20d | 2026-04-25 A | 2026-07-21 A | SDR-2-CON-RW-ZA-1020 SS+4d | 100% |  |
|  | 10 | **Backfilling Works** |  | 2026-04-07 | 2026-06-13 |  |  |  |
| SDR-2-CON-RW-ZA-2910 |  | Embankments to the Road Layer 1 | 21d | 2026-04-07 A | 2026-05-23 A | SDR-2-CON-RW-ZA-1160, SDR-2-PRO-DES-E-1000 | 100% |  |
| SDR-2-CON-RW-ZA-2920 |  | Embankments to the Road Layer 2 | 21d | 2026-05-05 A | 2026-05-23 A | SDR-2-CON-RW-ZA-2910 | 100% |  |
| SDR-2-CON-RW-ZA-2930 |  | Embankments to the Road Layer 3 | 21d | 2026-05-23 A | 2026-06-03 A | SDR-2-CON-RW-ZA-2920 | 100% |  |
| SDR-2-CON-RW-ZA-1170 |  | Embankments to the Road Layer 4 | 21d | 2026-06-04 A | 2026-06-13 A | SDR-2-CON-RW-ZA-2930 FS+1d | 100% |  |
|  | 11 | **Subgrade** |  | 2026-09-03 | 2026-09-24 |  |  |  |
| SDR-2-CON-RW-ZA-1180 |  | Subgrade layer works | 21d | 2026-09-03 A | 2026-09-24 A | SDR-2-CON-RW-ZA-1170 | 100% |  |
|  | 9 | **Earth Works Plot** |  | 2026-06-08 | 2026-07-26 |  |  |  |
| SDR-2-CON-RW-ZA-2940 |  | Embankments to the Plot 1 Layer | 21d | 2026-06-08 A | 2026-06-15 A | SDR-2-CON-RW-ZA-1170, SDR-2-CON-RW-ZA-1190 | 100% |  |
| SDR-2-CON-RW-ZA-2950 |  | Embankments to the Plot 2 Layer | 21d | 2026-06-15 A | 2026-06-27 A | SDR-2-CON-RW-ZA-2940 | 100% |  |
| SDR-2-CON-RW-ZA-1200 |  | Embankments to the Plot 3 Layer | 21d | 2026-07-04 A | 2026-07-14 A | SDR-2-CON-RW-ZA-2950 | 100% |  |
| SDR-2-CON-RW-ZA-1190 |  | Plot Excavation for cuttings (all types of soil) | 21d | 2026-07-14 A | 2026-07-26 A | SDR-2-CON-RW-ZA-1160, SDR-2-CON-RW-ZA-1180 SS | 100% |  |
|  | 2 | **Base Course** |  | 2026-09-26 | 2026-10-15 |  |  |  |
| SDR-2-CON-RW-ZA-1210 |  | Aggregate base course layer | 19d | 2026-09-26 A | 2026-10-15 A | SDR-2-CON-RW-ZA-1180 | 100% |  |
|  | 8 | **Demolition Work** |  | 2026-10-15 | 2026-10-17 |  |  |  |
| SDR-2-CON-RW-ZA-1220 |  | Milling of wearing course | 6d | 2026-10-15 A | 2026-10-17 A | SDR-2-CON-RW-ZA-1210 | 100% |  |
|  | 3 | **Asphalt Works** |  | 2026-10-18 | 2026-12-21 |  |  |  |
| SDR-2-CON-RW-ZA-1230 |  | Asphalt works 1st Layer with MC-01 | 9d | 2026-10-18 A | 2026-10-31 A | SDR-2-CON-RW-ZA-1210, SDR-2-CON-RW-ZA-1220 | 100% |  |
| SDR-2-CON-RW-ZA-1240 |  | Asphalt works 2nd layer with RC-01 | 18d | 2026-11-09 | 2026-11-29 | SDR-2-CON-RW-ZA-1230 |  | 49d |
| SDR-2-CON-RW-ZA-2840 |  | Asphalt Works 3 rd Layer with RC-02 | 19d | 2026-11-30 | 2026-12-21 | SDR-2-CON-RW-ZA-1240 |  | 49d |
|  | 4 | **Kerbstone Installation** |  | 2027-01-27 | 2027-03-18 |  |  |  |
| SDR-2-CON-RW-ZA-3410 |  | Kerbstone Installation "all Types" Part 1 | 18d | 2027-01-27 | 2027-02-16 | SDR-2-CON-RW-ZA-1180, SDR-2-PRO-ST-C-1100 |  | 0d |
| SDR-2-CON-RW-ZA-1250 |  | Kerbstone Installation "all Types" Part 2 | 21d | 2027-02-17 | 2027-03-18 | SDR-2-CON-RW-ZA-2840, SDR-2-CON-RW-ZA-3410 |  | 0d |
|  | 5 | **Interlock Installation** |  | 2027-03-20 | 2027-04-12 |  |  |  |
| SDR-2-CON-RW-ZA-1260 |  | Interlock Installation | 21d | 2027-03-20 | 2027-04-12 | SDR-2-CON-RW-ZA-1250 |  | 0d |
|  | 6 | **Road Marking** |  | 2027-04-13 | 2027-05-03 |  |  |  |
| SDR-2-CON-RW-ZA-1270 |  | Retroreflective Thermoplastic White Traffic lines | 11d | 2027-04-13 | 2027-04-25 | SDR-2-CON-RW-ZA-1260 |  | 0d |
| SDR-2-CON-RW-ZA-1280 |  | Retroreflective Thermoplastic Yellow, Traffic lines | 7d | 2027-04-26 | 2027-05-03 | SDR-2-CON-RW-ZA-1270 |  | 0d |
|  | 7 | **Traffic Signage** |  | 2027-05-04 | 2027-05-30 |  |  |  |
| SDR-2-CON-RW-ZA-1290 |  | Single post-Traffic signs Installation | 18d | 2027-05-04 | 2027-05-30 | SDR-2-CON-RW-ZA-1280 |  | 0d |
|  | 13 | **ROAD WORKS IN ( PH2-A-MCI0 )** |  | 2026-04-28 | 2027-05-13 |  |  |  |

| ID | WBS | Task | Duration | Start | Finish | Predecessors | Complete | Total float |
| --- | --- | --- | --- | --- | --- | --- | --- | --- |
|  | 1 | **Earth Works Road** |  | 2026-04-28 | 2026-05-20 |  |  |  |
| SDR-2-CON-RW-ZA-1300 |  | Roadway Excavation and cuttings | 20d | 2026-04-28 A | 2026-05-20 A | SDR-2-CON-RW-ZA-1160 SS+4d | 100% |  |
|  | 10 | **Backfilling Works** |  | 2026-04-29 | 2026-06-14 |  |  |  |
| SDR-2-CON-RW-ZA-2960 |  | Embankments to the Road 1 Layer | 21d | 2026-04-29 A | 2026-05-07 A | SDR-2-CON-RW-ZA-1300 | 100% |  |
| SDR-2-CON-RW-ZA-2970 |  | Embankments to the Road 2 Layer | 21d | 2026-05-07 A | 2026-05-14 A | SDR-2-CON-RW-ZA-2960 | 100% |  |
| SDR-2-CON-RW-ZA-2980 |  | Embankments to the Road 3 Layer | 21d | 2026-06-01 A | 2026-06-09 A | SDR-2-CON-RW-ZA-2970 FS+1d | 100% |  |
| SDR-2-CON-RW-ZA-1310 |  | Embankments to the Road 4 Layer | 21d | 2026-06-09 A | 2026-06-14 A | SDR-2-CON-RW-ZA-2980 | 100% |  |
|  | 11 | **Subgrade** |  | 2026-10-05 | 2026-12-01 |  |  |  |
| SDR-2-CON-RW-ZA-1320 |  | Subgrade layer works | 20d | 2026-10-05 A | 2026-12-01 | SDR-2-CON-RW-ZA-1310 | 50% | 5d |
|  | 9 | **Earth Works Plot** |  | 2026-06-08 | 2026-07-20 |  |  |  |
| SDR-2-CON-RW-ZA-2990 |  | Embankments to the Plot 1 Layer | 21d | 2026-06-08 A | 2026-06-15 A | SDR-2-CON-RW-ZA-1310, SDR-2-CON-RW-ZA-1330 | 100% |  |
| SDR-2-CON-RW-ZA-1340 |  | Embankments to the Plot 2 Layer | 21d | 2026-06-15 A | 2026-06-27 A | SDR-2-CON-RW-ZA-2990 FS+4d | 100% |  |
| SDR-2-CON-RW-ZA-1330 |  | Plot Excavation for cuttings (all types of soil) | 21d | 2026-07-13 A | 2026-07-20 A | SDR-2-CON-RW-ZA-1300 | 100% |  |
|  | 2 | **Base Course** |  | 2026-12-02 | 2026-12-24 |  |  |  |
| SDR-2-CON-RW-ZA-1350 |  | Aggregate base course layer | 20d | 2026-12-02 | 2026-12-24 | SDR-2-CON-RW-ZA-1320 |  | 5d |
|  | 8 | **Demolition Work** |  | 2026-12-26 | 2026-12-30 |  |  |  |
| SDR-2-CON-RW-ZA-1360 |  | Milling of wearing course | 5d | 2026-12-26 | 2026-12-30 | SDR-2-CON-RW-ZA-1350, SDR-2-CON-RW-ZA-1190 |  | 5d |
|  | 3 | **Asphalt Works** |  | 2026-12-31 | 2027-01-30 |  |  |  |
| SDR-2-CON-RW-ZA-1370 |  | Asphalt works 1st Layer with MC-01 | 5d | 2026-12-31 | 2027-01-05 | SDR-2-CON-RW-ZA-1350, SDR-2-CON-RW-ZA-1360 |  | 5d |
| SDR-2-CON-RW-ZA-1380 |  | Asphalt works 2nd layer with RC-02 | 21d | 2027-01-06 | 2027-01-30 | SDR-2-CON-RW-ZA-1370 |  | 5d |
|  | 4 | **Kerbstone Installation** |  | 2026-11-09 | 2027-02-16 |  |  |  |
| SDR-2-CON-RW-ZA-3420 |  | Kerbstone Installation "all Types" Part 1 | 18d | 2026-11-09 | 2026-11-29 | SDR-2-CON-RW-ZA-1320 SS+6d |  | 13d |
| SDR-2-CON-RW-ZA-1390 |  | Kerbstone Installation "all Types" Part 2 | 21d | 2027-01-24 | 2027-02-16 | SDR-2-CON-RW-ZA-1380 SS+15d |  | 5d |
|  | 5 | **Interlock Installation** |  | 2027-02-17 | 2027-03-18 |  |  |  |
| SDR-2-CON-RW-ZA-1400 |  | Interlock Installation | 21d | 2027-02-17 | 2027-03-18 | SDR-2-CON-RW-ZA-1390 |  | 5d |
|  | 6 | **Road Marking** |  | 2027-03-20 | 2027-04-20 |  |  |  |
| SDR-2-CON-RW-ZA-1410 |  | Retroreflective Thermoplastic White Traffic lines | 14d | 2027-03-20 | 2027-04-04 | SDR-2-CON-RW-ZA-1400 |  | 5d |
| SDR-2-CON-RW-ZA-1420 |  | Retroreflective Thermoplastic Yellow, Traffic lines | 14d | 2027-04-05 | 2027-04-20 | SDR-2-CON-RW-ZA-1410 |  | 5d |
|  | 7 | **Traffic Signage** |  | 2027-04-21 | 2027-05-13 |  |  |  |
| SDR-2-CON-RW-ZA-1430 |  | Single post-Traffic signs Installation | 20d | 2027-04-21 | 2027-05-13 | SDR-2-CON-RW-ZA-1420, SDR-2-CON-RW-ZA-1340, SDR-2-CON-RW-ZA-1200 |  | 5d |
|  | 2 | **ROAD WORKS IN ( PH2-A-MCA0 )** |  | 2026-04-22 | 2027-05-10 |  |  |  |
|  | 1 | **Earth Works Road** |  | 2026-04-22 | 2026-05-03 |  |  |  |
| SDR-2-CON-RW-ZA-1440 |  | Roadway Excavation and cuttings | 20d | 2026-04-22 A | 2026-05-03 A | SDR-2-CON-RW-ZA-1300 SS+4d | 100% |  |
|  | 10 | **Backfilling Works** |  | 2026-05-03 | 2026-06-06 |  |  |  |
| SDR-2-CON-RW-ZA-3000 |  | Embankments to the Road 1 Layer | 21d | 2026-05-03 A | 2026-05-10 A | SDR-2-CON-RW-ZA-1440 | 100% |  |
| SDR-2-CON-RW-ZA-3010 |  | Embankments to the Road 2 Layer | 21d | 2026-05-11 A | 2026-05-19 A | SDR-2-CON-RW-ZA-3000, SDR-2-PRO-DES-E-1010 | 100% |  |
| SDR-2-CON-RW-ZA-3020 |  | Embankments to the Road 3 Layer | 21d | 2026-05-19 A | 2026-05-24 A | SDR-2-CON-RW-ZA-3010 | 100% |  |
| SDR-2-CON-RW-ZA-1450 |  | Embankments to the Road 4 Layer | 21d | 2026-05-24 A | 2026-06-06 A | SDR-2-CON-RW-ZA-3000 SS, SDR-2-CON-RW-ZA-3020 FS+1d | 100% |  |
|  | 11 | **Subgrade** |  | 2026-09-01 | 2026-11-12 |  |  |  |
| SDR-2-CON-RW-ZA-1460 |  | Subgrade layer works | 21d | 2026-09-01 A | 2026-11-12 | SDR-2-CON-RW-ZA-1450 | 75% | 12d |
|  | 9 | **Earth Works Plot** |  | 2026-06-04 | 2026-12-07 |  |  |  |
| SDR-2-CON-RW-ZA-3030 |  | Embankments to the Plot 1 Layer | 21d | 2026-06-04 A | 2026-06-14 A | SDR-2-CON-RW-ZA-1330 | 100% |  |
| SDR-2-CON-RW-ZA-1470 |  | Plot Excavation for cuttings (all types of soil) | 21d | 2026-09-30 A | 2026-12-07 | SDR-2-CON-RW-ZA-1440, SDR-2-CON-RW-ZA-1460 | 70% | 18d |
| SDR-2-CON-RW-ZA-1480 |  | Embankments to the Plot 2 Layer | 21d | 2026-11-09 | 2026-12-02 | SDR-2-CON-RW-ZA-3030 |  | 37d |
|  | 2 | **Base Course** |  | 2026-10-20 | 2026-11-30 |  |  |  |
| SDR-2-CON-RW-ZA-1490 |  | Aggregate base course layer | 15d | 2026-10-20 A | 2026-11-30 | SDR-2-CON-RW-ZA-1460 | 30% | 12d |
|  | 8 | **Demolition Work** |  | 2026-10-26 | 2026-12-05 |  |  |  |
| SDR-2-CON-RW-ZA-1500 |  | Milling of wearing course | 4d | 2026-10-26 A | 2026-12-05 | SDR-2-CON-RW-ZA-3420, SDR-2-CON-RW-ZA-1490 | 30% | 12d |
|  | 3 | **Asphalt Works** |  | 2026-10-28 | 2027-01-18 |  |  |  |
| SDR-2-CON-RW-ZA-1510 |  | Asphalt works 1st Layer with MC-01 | 18d | 2026-10-28 A | 2026-12-26 | SDR-2-CON-RW-ZA-1490, SDR-2-CON-RW-ZA-1500 | 25% | 12d |
| SDR-2-CON-RW-ZA-1520 |  | Asphalt works 2nd layer with RC-02 | 20d | 2026-12-27 | 2027-01-18 | SDR-2-CON-RW-ZA-1510 |  | 12d |
|  | 4 | **Kerbstone Installation** |  | 2026-11-14 | 2027-02-11 |  |  |  |
| SDR-2-CON-RW-ZA-3440 |  | Kerbstone Installation "all Types" Part 1 | 21d | 2026-11-14 | 2026-12-07 | SDR-2-CON-RW-ZA-1460 |  | 48d |
| SDR-2-CON-RW-ZA-1530 |  | Kerbstone Installation "all Types" Part 2 | 21d | 2027-01-19 | 2027-02-11 | SDR-2-CON-RW-ZA-1520, SDR-2-CON-RW-ZA-3440 |  | 12d |
|  | 5 | **Interlock Installation** |  | 2027-02-13 | 2027-03-14 |  |  |  |
| SDR-2-CON-RW-ZA-1540 |  | Interlock Installation | 21d | 2027-02-13 | 2027-03-14 | SDR-2-CON-RW-ZA-1530 |  | 12d |
|  | 6 | **Road Marking** |  | 2027-03-15 | 2027-04-17 |  |  |  |
| SDR-2-CON-RW-ZA-1550 |  | Retroreflective Thermoplastic White Traffic lines | 14d | 2027-03-15 | 2027-03-30 | SDR-2-CON-SL-ZA-3490, SDR-2-CON-RW-ZA-1540 |  | 12d |
| SDR-2-CON-RW-ZA-1560 |  | Retroreflective Thermoplastic Yellow, Traffic lines | 15d | 2027-03-31 | 2027-04-17 | SDR-2-CON-RW-ZA-1550 |  | 12d |
|  | 7 | **Traffic Signage** |  | 2027-04-18 | 2027-05-10 |  |  |  |
| SDR-2-CON-RW-ZA-1570 |  | Single post-Traffic signs Installation | 20d | 2027-04-18 | 2027-05-10 | SDR-2-CON-RW-ZA-1480, SDR-2-CON-RW-ZA-1560 |  | 12d |
|  | 3 | **ROAD WORKS IN ( PH2-A-MCB0 )** |  | 2026-04-22 | 2027-05-04 |  |  |  |
|  | 1 | **Earth Works Road** |  | 2026-04-22 | 2026-05-24 |  |  |  |
| SDR-2-CON-RW-ZA-1580 |  | Roadway Excavation and cuttings | 20d | 2026-04-22 A | 2026-05-24 A | SDR-2-CON-RW-ZA-1440 SS+4d | 100% |  |
|  | 10 | **Backfilling Works** |  | 2026-04-28 | 2026-06-06 |  |  |  |
| SDR-2-CON-RW-ZA-3040 |  | Embankments to the Road 1 Layer | 21d | 2026-04-28 A | 2026-05-11 A | SDR-2-CON-RW-ZA-1580 FS+2d | 100% |  |
| SDR-2-CON-RW-ZA-3050 |  | Embankments to the Road 2 Layer | 21d | 2026-05-09 A | 2026-05-18 A | SDR-2-CON-RW-ZA-3040 | 100% |  |
| SDR-2-CON-RW-ZA-3060 |  | Embankments to the Road 3 Layer | 21d | 2026-05-16 A | 2026-05-24 A | SDR-2-CON-RW-ZA-3050 | 100% |  |
| SDR-2-CON-RW-ZA-1590 |  | Embankments to the Road 4 Layer | 21d | 2026-05-24 A | 2026-06-06 A | SDR-2-CON-RW-ZA-3060 FS+1d | 100% |  |
|  | 11 | **Subgrade** |  | 2026-09-01 | 2026-11-09 |  |  |  |

| ID | WBS | Task | Duration | Start | Finish | Predecessors | Complete | Total float |
| --- | --- | --- | --- | --- | --- | --- | --- | --- |
| SDR-2-CON-RW-ZA-1600 |  | Subgrade layer works | 16d | 2026-09-01 A | 2026-11-09 | SDR-2-CON-RW-ZA-1590 | 50% | 1d |
|  | 9 | **Earth Works Plot** |  | 2026-06-08 | 2026-11-09 |  |  |  |
| SDR-2-CON-RW-ZA-1610 |  | Plot Excavation for cuttings (all types of soil) | 21d | 2026-06-08 A | 2026-11-09 | SDR-2-CON-RW-ZA-1580, SDR-2-CON-RW-ZA-1600 FF | 85% | 24d |
| SDR-2-CON-RW-ZA-3070 |  | Embankments to the Plot 1 Layer | 21d | 2026-06-15 A | 2026-06-25 A | SDR-2-CON-RW-ZA-1610 SS | 100% |  |
| SDR-2-CON-RW-ZA-1620 |  | Embankments to the Plot 2 Layer | 21d | 2026-06-30 A | 2026-11-09 | SDR-2-CON-RW-ZA-3070 FS+1d | 25% | 127d |
|  | 8 | **Demolition Work** |  | 2026-10-20 | 2026-12-06 |  |  |  |
| SDR-2-CON-RW-ZA-1640 |  | Milling of wearing course | 3d | 2026-10-20 A | 2026-12-06 | SDR-2-CON-RW-ZA-1470 SS, SDR-2-CON-RW-ZA-1630 | 25% | 1d |
|  | 2 | **Base Course** |  | 2026-10-27 | 2026-12-02 |  |  |  |
| SDR-2-CON-RW-ZA-1630 |  | Aggregate base course layer | 20d | 2026-10-27 A | 2026-12-02 | SDR-2-CON-RW-ZA-1600 | 25% | 1d |
|  | 3 | **Asphalt Works** |  | 2026-12-07 | 2027-01-13 |  |  |  |
| SDR-2-CON-RW-ZA-1650 |  | Asphalt works 1st Layer with MC-01 | 21d | 2026-12-07 | 2026-12-30 | SDR-2-CON-RW-ZA-1630, SDR-2-CON-RW-ZA-1640, SDR-2-CON-RW-ZA-1610 |  | 1d |
| SDR-2-CON-RW-ZA-1660 |  | Asphalt works 2nd layer with RC-02 | 12d | 2026-12-31 | 2027-01-13 | SDR-2-CON-RW-ZA-3030, SDR-2-CON-RW-ZA-1650 |  | 1d |
|  | 4 | **Kerbstone Installation** |  | 2026-11-10 | 2027-02-06 |  |  |  |
| SDR-2-CON-RW-ZA-3430 |  | Kerbstone Installation "all Types" Part 1 | 20d | 2026-11-10 | 2026-12-02 | SDR-2-CON-RW-ZA-1600 |  | 37d |
| SDR-2-CON-RW-ZA-1670 |  | Kerbstone Installation "all Types" Part 2 | 20d | 2027-01-14 | 2027-02-06 | SDR-2-CON-RW-ZA-1480, SDR-2-CON-RW-ZA-3430, SDR-2-CON-RW-ZA-1660 |  | 1d |
|  | 5 | **Interlock Installation** |  | 2027-02-07 | 2027-03-03 |  |  |  |
| SDR-2-CON-RW-ZA-1680 |  | Interlock Installation | 21d | 2027-02-07 | 2027-03-03 | SDR-2-CON-RW-ZA-1670 |  | 1d |
|  | 6 | **Road Marking** |  | 2027-03-04 | 2027-04-11 |  |  |  |
| SDR-2-CON-RW-ZA-1690 |  | Retroreflective Thermoplastic White Traffic lines | 15d | 2027-03-04 | 2027-03-25 | SDR-2-CON-RW-ZA-1680 |  | 1d |
| SDR-2-CON-RW-ZA-1700 |  | Retroreflective Thermoplastic Yellow, Traffic lines | 14d | 2027-03-27 | 2027-04-11 | SDR-2-CON-RW-ZA-1690 |  | 1d |
|  | 7 | **Traffic Signage** |  | 2027-04-12 | 2027-05-04 |  |  |  |
| SDR-2-CON-RW-ZA-1710 |  | Single post-Traffic signs Installation | 20d | 2027-04-12 | 2027-05-04 | SDR-2-CON-RW-ZA-1700, SDR-2-CON-RW-ZA-1620 |  | 1d |
|  | 7 | **ROAD WORKS IN ( PH2-A-MCC0 )** |  | 2026-04-09 | 2027-04-24 |  |  |  |
|  | 1 | **Earth Works Road** |  | 2026-05-09 | 2026-06-01 |  |  |  |
| SDR-2-CON-RW-ZA-1720 |  | Roadway Excavation and cuttings | 20d | 2026-05-09 A | 2026-06-01 A | SDR-2-CON-RW-ZA-1580 SS+4d | 100% |  |
|  | 10 | **Backfilling Works** |  | 2026-04-09 | 2026-07-05 |  |  |  |
| SDR-2-CON-RW-ZA-3080 |  | Embankments to the Road 1 Layer | 21d | 2026-04-09 A | 2026-04-22 A | SDR-2-CON-RW-ZA-1720 | 100% |  |
| SDR-2-CON-RW-ZA-3090 |  | Embankments to the Road 2 Layer | 21d | 2026-04-22 A | 2026-04-30 A | SDR-2-CON-RW-ZA-3080 | 100% |  |
| SDR-2-CON-RW-ZA-3100 |  | Embankments to the Road 3 Layer | 21d | 2026-06-22 A | 2026-06-29 A | SDR-2-CON-RW-ZA-3090, SDR-2-PRO-DEL-M-1050 SS, SDR-2-PRO-DEL-M-1030 SS | 100% |  |
| SDR-2-CON-RW-ZA-1730 |  | Embankments to the Road 4 Layer | 21d | 2026-06-29 A | 2026-07-05 A | SDR-2-CON-RW-ZA-3100 FS+4d | 100% |  |
|  | 11 | **Subgrade** |  | 2026-07-01 | 2026-09-17 |  |  |  |
| SDR-2-CON-RW-ZA-1740 |  | Subgrade layer works | 16d | 2026-07-01 A | 2026-09-17 A | SDR-2-CON-RW-ZA-1730 | 100% |  |
|  | 9 | **Earth Works Plot** |  | 2026-06-08 | 2026-11-10 |  |  |  |
| SDR-2-CON-RW-ZA-1750 |  | Plot Excavation for cuttings (all types of soil) | 20d | 2026-06-08 A | 2026-11-09 | SDR-2-CON-RW-ZA-1720, SDR-2-CON-RW-ZA-1740, SDR-2-PRO-DEL-E-1160 FF | 85% | 67d |
| SDR-2-CON-RW-ZA-3110 |  | Embankments to the Plot 1 Layer | 21d | 2026-07-07 A | 2026-11-05 A | SDR-2-CON-RW-ZA-1750 | 100% |  |
| SDR-2-CON-RW-ZA-1760 |  | Embankments to the Plot 2 Layer | 21d | 2026-07-18 A | 2026-11-10 | SDR-2-CON-RW-ZA-3110, SDR-2-CON-RW-ZA-3070 FS+4d | 80% | 105d |
|  | 2 | **Base Course** |  | 2026-08-31 | 2026-10-14 |  |  |  |
| SDR-2-CON-RW-ZA-1770 |  | Aggregate base course layer | 21d | 2026-08-31 A | 2026-10-14 A | SDR-2-CON-RW-ZA-1740 | 100% |  |
|  | 8 | **Demolition Work** |  | 2026-10-15 | 2026-10-19 |  |  |  |
| SDR-2-CON-RW-ZA-1780 |  | Milling of wearing course | 3d | 2026-10-15 A | 2026-10-19 A | SDR-2-CON-RW-ZA-3430 SS, SDR-2-CON-RW-ZA-1770 | 100% |  |
|  | 3 | **Asphalt Works** |  | 2026-10-28 | 2027-01-04 |  |  |  |
| SDR-2-CON-RW-ZA-1790 |  | Asphalt works 1st Layer with MC-01 | 16d | 2026-10-28 A | 2026-11-02 A | SDR-2-CON-RW-ZA-3470, SDR-2-CON-RW-ZA-1770, SDR-2-CON-RW-ZA-1780 | 100% |  |
| SDR-2-CON-RW-ZA-1800 |  | Asphalt works 2nd layer with RC-02 | 11d | 2026-12-23 | 2027-01-04 | SDR-2-CON-RW-ZA-1790 |  | 26d |
|  | 4 | **Kerbstone Installation** |  | 2026-11-09 | 2027-01-27 |  |  |  |
| SDR-2-CON-RW-ZA-3450 |  | Kerbstone Installation "all Types" Part 1 | 18d | 2026-11-09 | 2026-11-29 | SDR-2-CON-RW-ZA-1740 |  | 67d |
| SDR-2-CON-RW-ZA-1810 |  | Kerbstone Installation "all Types" Part 2 | 20d | 2027-01-05 | 2027-01-27 | SDR-2-CON-RW-ZA-1800 |  | 26d |
|  | 5 | **Interlock Installation** |  | 2027-01-28 | 2027-02-21 |  |  |  |
| SDR-2-CON-RW-ZA-1820 |  | Interlock Installation | 21d | 2027-01-28 | 2027-02-21 | SDR-2-CON-RW-ZA-1810 |  | 26d |
|  | 6 | **Road Marking** |  | 2027-02-23 | 2027-03-31 |  |  |  |
| SDR-2-CON-RW-ZA-1830 |  | Retroreflective Thermoplastic White Traffic lines | 14d | 2027-02-23 | 2027-03-15 | SDR-2-CON-RW-ZA-1760 SS, SDR-2-CON-RW-ZA-1820 |  | 26d |
| SDR-2-CON-RW-ZA-1840 |  | Retroreflective Thermoplastic Yellow, Traffic lines | 14d | 2027-03-16 | 2027-03-31 | SDR-2-CON-RW-ZA-1830 |  | 26d |
|  | 7 | **Traffic Signage** |  | 2027-04-01 | 2027-04-24 |  |  |  |
| SDR-2-CON-RW-ZA-1850 |  | Single post-Traffic signs Installation | 20d | 2027-04-01 | 2027-04-24 | SDR-2-CON-RW-ZA-1840, SDR-2-CON-RW-ZA-1760 |  | 26d |
|  | 4 | **ROAD WORKS IN ( PH2-A-MCD0 )** |  | 2026-05-09 | 2027-05-04 |  |  |  |
|  | 1 | **Earth Works Road** |  | 2026-05-09 | 2026-05-12 |  |  |  |
| SDR-2-CON-RW-ZA-1860 |  | Roadway Excavation and cuttings | 20d | 2026-05-09 A | 2026-05-12 A | SDR-2-CON-RW-ZA-1720 SS+3d | 100% |  |
|  | 10 | **Backfilling Works** |  | 2026-05-15 | 2026-07-05 |  |  |  |
| SDR-2-CON-RW-ZA-3120 |  | Embankments to the Road 1 Layer | 21d | 2026-05-15 A | 2026-05-24 A | SDR-2-CON-RW-ZA-1860 | 100% |  |
| SDR-2-CON-RW-ZA-3130 |  | Embankments to the Road 2 Layer | 21d | 2026-05-24 A | 2026-06-04 A | SDR-2-CON-RW-ZA-3120, SDR-2-PRO-DES-E-1000, SDR-2-PRO-DES-C-1000 | 100% |  |
| SDR-2-CON-RW-ZA-3140 |  | Embankments to the Road 3 Layer | 21d | 2026-06-08 A | 2026-06-18 A | SDR-2-CON-RW-ZA-3130 | 100% |  |
| SDR-2-CON-RW-ZA-1870 |  | Embankments to the Road 4 Layer | 21d | 2026-06-24 A | 2026-07-05 A | SDR-2-CON-RW-ZA-3140 FS+1d, SDR-2-PRO-DEL-E-1040 | 100% |  |
|  | 11 | **Subgrade** |  | 2026-08-11 | 2026-09-17 |  |  |  |
| SDR-2-CON-RW-ZA-1880 |  | Subgrade layer works | 20d | 2026-08-11 A | 2026-09-17 A | SDR-2-PRO-DES-C-1070, SDR-2-CON-RW-ZA-1870 | 100% |  |
|  | 9 | **Earth Works Plot** |  | 2026-06-09 | 2026-10-17 |  |  |  |
| SDR-2-CON-RW-ZA-3150 |  | Embankments to the Plot 1 Layer | 21d | 2026-06-09 A | 2026-06-14 A | SDR-2-CON-RW-ZA-1890 SS | 100% |  |
| SDR-2-CON-RW-ZA-1890 |  | Plot Excavation for cuttings (all types of soil) | 21d | 2026-06-15 A | 2026-10-15 A | SDR-2-CON-RW-ZA-1860, SDR-2-CON-RW-ZA-1880 | 100% |  |
| SDR-2-CON-RW-ZA-1900 |  | Embankments to the Plot 2 Layer | 21d | 2026-06-23 A | 2026-10-17 A | SDR-2-CON-RW-ZA-3150 FS+1d | 100% |  |
|  | 2 | **Base Course** |  | 2026-08-30 | 2026-10-14 |  |  |  |
| SDR-2-CON-RW-ZA-1910 |  | Aggregate base course layer | 20d | 2026-08-30 A | 2026-10-14 A | SDR-2-CON-RW-ZA-1880 | 100% |  |
|  | 8 | **Demolition Work** |  | 2026-10-14 | 2026-10-19 |  |  |  |

| ID | WBS | Task | Duration | Start | Finish | Predecessors | Complete | Total float |
| --- | --- | --- | --- | --- | --- | --- | --- | --- |
| SDR-2-CON-RW-ZA-1920 |  | Milling of wearing course | 6d | 2026-10-14 A | 2026-10-19 A | SDR-2-CON-RW-ZA-1910, SDR-2-CON-RW-ZA-1750 SS | 100% |  |
|  | 3 | **Asphalt Works** |  | 2026-10-27 | 2027-01-13 |  |  |  |
| SDR-2-CON-RW-ZA-1930 |  | Asphalt works 1st Layer with MC-01 | 9d | 2026-10-27 A | 2026-11-04 A | SDR-2-CON-RW-ZA-3450 SS, SDR-2-CON-RW-ZA-3480, SDR-2-CON-ST-ZA-6340, SDR-2-CON-RW-ZA-1910, SDR-2-CON-RW-ZA-1920 | 100% |  |
| SDR-2-CON-RW-ZA-1940 |  | Asphalt works 2nd layer with RC-02 | 7d | 2027-01-06 | 2027-01-13 | SDR-2-CON-RW-ZA-1930 |  | 17d |
|  | 4 | **Kerbstone Installation** |  | 2026-10-31 | 2027-02-07 |  |  |  |
| SDR-2-CON-RW-ZA-3460 |  | Kerbstone Installation "all Types" Part 1 | 18d | 2026-10-31 A | 2026-11-29 | SDR-2-CON-RW-ZA-1880 | 25% | 56d |
| SDR-2-CON-RW-ZA-1950 |  | Kerbstone Installation "all Types" Part 2 | 21d | 2027-01-14 | 2027-02-07 | SDR-2-CON-RW-ZA-1940, SDR-2-CON-RW-ZA-3460 |  | 17d |
|  | 5 | **Interlock Installation** |  | 2027-02-08 | 2027-03-04 |  |  |  |
| SDR-2-CON-RW-ZA-1960 |  | Interlock Installation | 21d | 2027-02-08 | 2027-03-04 | SDR-2-CON-RW-ZA-1950 |  | 17d |
|  | 6 | **Road Marking** |  | 2027-03-06 | 2027-04-11 |  |  |  |
| SDR-2-CON-RW-ZA-1970 |  | Retroreflective Thermoplastic White Traffic lines | 14d | 2027-03-06 | 2027-03-25 | SDR-2-CON-RW-ZA-1960, SDR-2-CON-RW-ZA-1900 SS+2d |  | 17d |
| SDR-2-CON-RW-ZA-1980 |  | Retroreflective Thermoplastic Yellow, Traffic lines | 14d | 2027-03-27 | 2027-04-11 | SDR-2-CON-RW-ZA-1970 |  | 17d |
|  | 7 | **Traffic Signage** |  | 2027-04-12 | 2027-05-04 |  |  |  |
| SDR-2-CON-RW-ZA-1990 |  | Single post-Traffic signs Installation | 20d | 2027-04-12 | 2027-05-04 | SDR-2-CON-RW-ZA-1900, SDR-2-CON-RW-ZA-1980 |  | 17d |
|  | 5 | **ROAD WORKS IN ( PH2-A-MCE0 )** |  | 2026-04-07 | 2027-04-20 |  |  |  |
|  | 1 | **Earth Works Road** |  | 2026-05-02 | 2026-06-01 |  |  |  |
| SDR-2-CON-RW-ZA-2000 |  | Roadway Excavation and cuttings | 20d | 2026-05-02 A | 2026-06-01 A | SDR-2-CON-RW-ZA-1860 SS+3d | 100% |  |
|  | 10 | **Backfilling Works** |  | 2026-04-07 | 2026-06-16 |  |  |  |
| SDR-2-CON-RW-ZA-3160 |  | Embankments to the Road 1 Layer | 21d | 2026-04-07 A | 2026-05-24 A | SDR-2-CON-RW-ZA-2000 | 100% |  |
| SDR-2-CON-RW-ZA-3170 |  | Embankments to the Road 2 Layer | 21d | 2026-05-10 A | 2026-05-19 A | SDR-2-CON-RW-ZA-3160 | 100% |  |
| SDR-2-CON-RW-ZA-3180 |  | Embankments to the Road 3 Layer | 21d | 2026-05-19 A | 2026-06-01 A | SDR-2-CON-RW-ZA-3170 | 100% |  |
| SDR-2-CON-RW-ZA-2010 |  | Embankments to the Road 4 Layer | 21d | 2026-06-03 A | 2026-06-16 A | SDR-2-CON-RW-ZA-3180, SDR-2-CON-RW-ZA-3180 FF | 100% |  |
|  | 11 | **Subgrade** |  | 2026-10-05 | 2026-12-01 |  |  |  |
| SDR-2-CON-RW-ZA-2020 |  | Subgrade layer works | 20d | 2026-10-05 A | 2026-12-01 | SDR-2-CON-RW-ZA-2010 | 75% | 26d |
|  | 9 | **Earth Works Plot** |  | 2026-06-14 | 2026-12-01 |  |  |  |
| SDR-2-CON-RW-ZA-3190 |  | Embankments to the Plot 2 Layer | 21d | 2026-06-14 A | 2026-12-01 | SDR-2-CON-RW-ZA-2030 FF | 85% | 74d |
| SDR-2-CON-RW-ZA-2030 |  | Plot Excavation for cuttings (all types of soil) | 21d | 2026-06-15 A | 2026-12-01 | SDR-2-CON-RW-ZA-2000, SDR-2-CON-RW-ZA-2020 FF | 80% | 35d |
| SDR-2-CON-RW-ZA-2040 |  | Embankments to the Plot 1 Layer | 21d | 2026-07-13 A | 2026-10-26 A | SDR-2-CON-RW-ZA-3110, SDR-2-CON-RW-ZA-3190 FF | 100% |  |
|  | 2 | **Base Course** |  | 2026-10-28 | 2026-11-02 |  |  |  |
| SDR-2-CON-RW-ZA-2050 |  | Aggregate base course layer | 8d | 2026-10-28 A | 2026-11-02 A | SDR-2-CON-RW-ZA-2020 | 100% |  |
|  | 8 | **Demolition Work** |  | 2026-12-02 | 2026-12-03 |  |  |  |
| SDR-2-CON-RW-ZA-2060 |  | Milling of wearing course | 2d | 2026-12-02 | 2026-12-03 | SDR-2-CON-RW-ZA-2050 |  | 29d |
|  | 3 | **Asphalt Works** |  | 2026-11-05 | 2026-12-30 |  |  |  |
| SDR-2-CON-RW-ZA-2070 |  | Asphalt works 1st Layer with MC-01 | 10d | 2026-11-05 A | 2026-12-15 | SDR-2-CON-RW-ZA-2050, SDR-2-CON-RW-ZA-2060, SDR-2-CON-RW-ZA-1890 FS+3d | 30% | 29d |
| SDR-2-CON-RW-ZA-2080 |  | Asphalt works 2nd layer with RC-02 | 13d | 2026-12-16 | 2026-12-30 | SDR-2-CON-RW-ZA-2070 |  | 29d |
|  | 4 | **Kerbstone Installation** |  | 2026-12-02 | 2027-01-24 |  |  |  |
| SDR-2-CON-RW-ZA-3470 |  | Kerbstone Installation "all Types" Part 1 | 18d | 2026-12-02 | 2026-12-22 | SDR-2-CON-RW-ZA-2020 |  | 26d |
| SDR-2-CON-RW-ZA-2090 |  | Kerbstone Installation "all Types" Part 2 | 21d | 2026-12-31 | 2027-01-24 | SDR-2-CON-RW-ZA-2080 |  | 29d |
|  | 5 | **Interlock Installation** |  | 2027-01-25 | 2027-02-17 |  |  |  |
| SDR-2-CON-RW-ZA-2100 |  | Interlock Installation | 21d | 2027-01-25 | 2027-02-17 | SDR-2-CON-RW-ZA-2090 |  | 29d |
|  | 6 | **Road Marking** |  | 2027-02-18 | 2027-03-28 |  |  |  |
| SDR-2-CON-RW-ZA-2110 |  | Retroreflective Thermoplastic White Traffic lines | 14d | 2027-02-18 | 2027-03-07 | SDR-2-CON-RW-ZA-2100 |  | 29d |
| SDR-2-CON-RW-ZA-2120 |  | Retroreflective Thermoplastic Yellow, Traffic lines | 14d | 2027-03-08 | 2027-03-28 | SDR-2-CON-RW-ZA-2110 |  | 29d |
|  | 7 | **Traffic Signage** |  | 2027-03-29 | 2027-04-20 |  |  |  |
| SDR-2-CON-RW-ZA-2130 |  | Single post-Traffic signs Installation | 20d | 2027-03-29 | 2027-04-20 | SDR-2-CON-RW-ZA-2120, SDR-2-CON-RW-ZA-2040 |  | 29d |
|  | 6 | **ROAD WORKS IN ( PH2-A-MCF0 )** |  | 2026-04-08 | 2027-04-17 |  |  |  |
|  | 1 | **Earth Works Road** |  | 2026-05-02 | 2026-06-21 |  |  |  |
| SDR-2-CON-RW-ZA-2140 |  | Roadway Excavation and cuttings | 20d | 2026-05-02 A | 2026-06-21 A | SDR-2-PRO-DES-C-1000, SDR-2-CON-RW-ZA-2000 SS+3d | 100% |  |
|  | 10 | **Backfilling Works** |  | 2026-04-08 | 2026-06-11 |  |  |  |
| SDR-2-CON-RW-ZA-3200 |  | Embankments to the Road 1 Layer | 21d | 2026-04-08 A | 2026-05-13 A | SDR-2-CON-RW-ZA-2140 | 100% |  |
| SDR-2-CON-RW-ZA-3210 |  | Embankments to the Road 2 Layer | 21d | 2026-05-14 A | 2026-05-24 A | SDR-2-CON-RW-ZA-3200 | 100% |  |
| SDR-2-CON-RW-ZA-3220 |  | Embankments to the Road 3 Layer | 19d | 2026-05-24 A | 2026-06-06 A | SDR-2-CON-RW-ZA-3210 | 100% |  |
| SDR-2-CON-RW-ZA-2150 |  | Embankments to the Road 4 Layer | 19d | 2026-06-08 A | 2026-06-11 A | SDR-2-CON-RW-ZA-3220 | 100% |  |
|  | 11 | **Subgrade** |  | 2026-10-05 | 2026-10-28 |  |  |  |
| SDR-2-CON-RW-ZA-2160 |  | Subgrade layer works | 20d | 2026-10-05 A | 2026-10-28 A | SDR-2-CON-RW-ZA-2150 | 100% |  |
|  | 9 | **Earth Works Plot** |  | 2026-06-01 | 2026-08-12 |  |  |  |
| SDR-2-CON-RW-ZA-3230 |  | Embankments to the Plot 1 Layer | 21d | 2026-06-01 A | 2026-08-06 A | SDR-2-CON-RW-ZA-2170 | 100% |  |
| SDR-2-CON-RW-ZA-2170 |  | Plot Excavation for cuttings (all types of soil) | 20d | 2026-07-13 A | 2026-08-11 A | SDR-2-CON-RW-ZA-2140 | 100% |  |
| SDR-2-CON-RW-ZA-2180 |  | Embankments to the Plot 2 Layer | 21d | 2026-08-03 A | 2026-08-12 A | SDR-2-CON-RW-ZA-3230 FS+1d, SDR-2-CON-RW-ZA-3110, SDR-2-CON-RW-ZA-1900 SS | 100% |  |
|  | 2 | **Base Course** |  | 2026-10-22 | 2026-10-31 |  |  |  |
| SDR-2-CON-RW-ZA-2190 |  | Aggregate base course layer | 12d | 2026-10-22 A | 2026-10-31 A | SDR-2-CON-RW-ZA-2160 | 100% |  |
|  | 8 | **Demolition Work** |  | 2026-12-02 | 2026-12-03 |  |  |  |
| SDR-2-CON-RW-ZA-2200 |  | Milling of wearing course | 2d | 2026-12-02 | 2026-12-03 | SDR-2-CON-RW-ZA-3470 SS, SDR-2-CON-RW-ZA-2190 |  | 32d |
|  | 3 | **Asphalt Works** |  | 2026-11-05 | 2026-12-27 |  |  |  |
| SDR-2-CON-RW-ZA-2210 |  | Asphalt works 1st Layer with MC-01 | 8d | 2026-11-05 A | 2026-12-13 | SDR-2-CON-RW-ZA-2030 SS, SDR-2-CON-RW-ZA-3150 SS, SDR-2-CON-RW-ZA-2200 | 30% | 32d |
| SDR-2-CON-RW-ZA-2220 |  | Asphalt works 2nd layer with RC-02 | 12d | 2026-12-14 | 2026-12-27 | SDR-2-CON-RW-ZA-2210 |  | 32d |
|  | 4 | **Kerbstone Installation** |  | 2026-11-09 | 2027-01-20 |  |  |  |
| SDR-2-CON-RW-ZA-3480 |  | Kerbstone Installation "all Types" Part 1 | 18d | 2026-11-09 | 2026-11-29 | SDR-2-CON-RW-ZA-2160 |  | 36d |
| SDR-2-CON-RW-ZA-2230 |  | Kerbstone Installation "all Types" Part 2 | 21d | 2026-12-28 | 2027-01-20 | SDR-2-CON-RW-ZA-2220 |  | 32d |
|  | 5 | **Interlock Installation** |  | 2027-01-21 | 2027-02-14 |  |  |  |

| ID | WBS | Task | Duration | Start | Finish | Predecessors | Complete | Total float |
| --- | --- | --- | --- | --- | --- | --- | --- | --- |
| SDR-2-CON-RW-ZA-2240 |  | Interlock Installation | 21d | 2027-01-21 | 2027-02-14 | SDR-2-CON-RW-ZA-2230 |  | 32d |
|  | 6 | **Road Marking** |  | 2027-02-15 | 2027-03-24 |  |  |  |
| SDR-2-CON-RW-ZA-2250 |  | Retroreflective Thermoplastic White Traffic lines | 14d | 2027-02-15 | 2027-03-03 | SDR-2-CON-RW-ZA-2240 |  | 32d |
| SDR-2-CON-RW-ZA-2260 |  | Retroreflective Thermoplastic Yellow, Traffic lines | 14d | 2027-03-04 | 2027-03-24 | SDR-2-CON-RW-ZA-2250 |  | 32d |
|  | 7 | **Traffic Signage** |  | 2027-03-25 | 2027-04-17 |  |  |  |
| SDR-2-CON-RW-ZA-2270 |  | Single post-Traffic signs Installation | 20d | 2027-03-25 | 2027-04-17 | SDR-2-CON-RW-ZA-2260, SDR-2-CON-RW-ZA-2180 FS+1d |  | 32d |
|  | 9 | **ROAD WORKS IN ( PH2-A-MCG0 )** |  | 2026-04-22 | 2027-03-14 |  |  |  |
|  | 1 | **Earth Works Road** |  | 2026-05-02 | 2026-05-24 |  |  |  |
| SDR-2-CON-RW-ZA-2280 |  | Roadway Excavation and cuttings | 20d | 2026-05-02 A | 2026-05-24 A | SDR-2-CON-RW-ZA-2140 SS | 100% |  |
|  | 10 | **Backfilling Works** |  | 2026-04-22 | 2026-06-15 |  |  |  |
| SDR-2-CON-RW-ZA-3240 |  | Embankments to the Road 1 Layer | 21d | 2026-04-22 A | 2026-05-13 A | SDR-2-CON-RW-ZA-2280 | 100% |  |
| SDR-2-CON-RW-ZA-3250 |  | Embankments to the Road 2 Layer | 21d | 2026-05-13 A | 2026-05-25 A | SDR-2-CON-RW-ZA-3240 | 100% |  |
| SDR-2-CON-RW-ZA-2290 |  | Embankments to the Road 4 Layer | 21d | 2026-05-24 A | 2026-06-08 A | SDR-2-CON-RW-ZA-3260 | 100% |  |
| SDR-2-CON-RW-ZA-3260 |  | Embankments to the Road 3 Layer | 21d | 2026-05-24 A | 2026-06-15 A | SDR-2-CON-RW-ZA-3250 | 100% |  |
|  | 11 | **Subgrade** |  | 2026-10-05 | 2026-10-22 |  |  |  |
| SDR-2-CON-RW-ZA-2300 |  | Subgrade layer works | 18d | 2026-10-05 A | 2026-10-22 A | SDR-2-CON-RW-ZA-2290 | 100% |  |
|  | 9 | **Earth Works Plot** |  | 2026-06-01 | 2026-10-19 |  |  |  |
| SDR-2-CON-RW-ZA-3270 |  | Embankments to the Plot 1 Layer | 21d | 2026-06-01 A | 2026-06-23 A | SDR-2-CON-RW-ZA-2310 SS | 100% |  |
| SDR-2-CON-RW-ZA-2310 |  | Plot Excavation for cuttings (all types of soil) | 21d | 2026-07-13 A | 2026-10-17 A | SDR-2-CON-RW-ZA-2280, SDR-2-CON-RW-ZA-2300 FF | 100% |  |
| SDR-2-CON-RW-ZA-2320 |  | Embankments to the Plot 2 Layer | 21d | 2026-07-27 A | 2026-10-19 A | SDR-2-CON-RW-ZA-3270, SDR-2-CON-RW-ZA-3270 FF, SDR-2-CON-RW-ZA-3230, SDR-2-CON-RW-ZA-3190 FF | 100% |  |
|  | 2 | **Base Course** |  | 2026-10-24 | 2026-11-02 |  |  |  |
| SDR-2-CON-RW-ZA-2330 |  | Aggregate base course layer | 7d | 2026-10-24 A | 2026-11-02 A | SDR-2-CON-RW-ZA-2300 | 100% |  |
|  | 8 | **Demolition Work** |  | 2026-11-09 | 2026-11-10 |  |  |  |
| SDR-2-CON-RW-ZA-2340 |  | Milling of wearing course | 2d | 2026-11-09 | 2026-11-10 | SDR-2-CON-RW-ZA-3480 SS, SDR-2-CON-RW-ZA-2330 |  | 36d |
|  | 3 | **Asphalt Works** |  | 2026-11-03 | 2026-11-23 |  |  |  |
| SDR-2-CON-RW-ZA-2350 |  | Asphalt works 1st Layer with MC-01 | 3d | 2026-11-03 A | 2026-11-07 A | SDR-2-CON-RW-ZA-3490 SS, SDR-2-CON-RW-ZA-2330, SDR-2-CON-RW-ZA-2340, SDR-2-CON-RW-ZA-2170 SS | 100% |  |
| SDR-2-CON-RW-ZA-2360 |  | Asphalt works 2nd layer with RC-02 | 11d | 2026-11-11 | 2026-11-23 | SDR-2-CON-RW-ZA-2310, SDR-2-CON-RW-ZA-2350 |  | 51d |
|  | 4 | **Kerbstone Installation** |  | 2026-11-09 | 2026-12-17 |  |  |  |
| SDR-2-CON-RW-ZA-3490 |  | Kerbstone Installation "all Types" Part 1 | 18d | 2026-11-09 | 2026-11-29 | SDR-2-CON-RW-ZA-2300 |  | 20d |
| SDR-2-CON-RW-ZA-2370 |  | Kerbstone Installation "all Types" Part 2 | 21d | 2026-11-24 | 2026-12-17 | SDR-2-CON-RW-ZA-2360 |  | 51d |
|  | 5 | **Interlock Installation** |  | 2026-12-19 | 2027-01-11 |  |  |  |
| SDR-2-CON-RW-ZA-2380 |  | Interlock Installation | 21d | 2026-12-19 | 2027-01-11 | SDR-2-CON-RW-ZA-2180 FS+4d, SDR-2-CON-RW-ZA-2370 |  | 52d |
|  | 6 | **Road Marking** |  | 2027-01-12 | 2027-02-13 |  |  |  |
| SDR-2-CON-RW-ZA-2390 |  | Retroreflective Thermoplastic White Traffic lines | 14d | 2027-01-12 | 2027-01-27 | SDR-2-CON-RW-ZA-2380 |  | 52d |
| SDR-2-CON-RW-ZA-2400 |  | Retroreflective Thermoplastic Yellow, Traffic lines | 14d | 2027-01-28 | 2027-02-13 | SDR-2-CON-RW-ZA-2390 |  | 52d |
|  | 7 | **Traffic Signage** |  | 2027-02-14 | 2027-03-14 |  |  |  |
| SDR-2-CON-RW-ZA-2410 |  | Single post-Traffic signs Installation | 20d | 2027-02-14 | 2027-03-14 | SDR-2-CON-RW-ZA-2320, SDR-2-CON-RW-ZA-2400, SDR-2-CON-RW-ZA-2320 SS+2d |  | 52d |
|  | 10 | **ROAD WORKS IN ( PH2-A-MCH0 )** |  | 2026-04-22 | 2027-04-25 |  |  |  |
|  | 1 | **Earth Works Road** |  | 2026-04-22 | 2026-05-02 |  |  |  |
| SDR-2-CON-RW-ZA-2420 |  | Roadway Excavation and cuttings | 21d | 2026-04-22 A | 2026-05-02 A | SDR-2-CON-RW-ZA-2280 SS | 100% |  |
|  | 10 | **Backfilling Works** |  | 2026-04-25 | 2026-06-15 |  |  |  |
| SDR-2-CON-RW-ZA-3280 |  | Embankments to the Road 1 Layer | 21d | 2026-04-25 A | 2026-05-07 A | SDR-2-CON-RW-ZA-2420 | 100% |  |
| SDR-2-CON-RW-ZA-3290 |  | Embankments to the Road 2 Layer | 21d | 2026-05-09 A | 2026-05-18 A | SDR-2-CON-RW-ZA-3280 | 100% |  |
| SDR-2-CON-RW-ZA-3300 |  | Embankments to the Road 3 Layer | 21d | 2026-05-18 A | 2026-05-31 A | SDR-2-CON-RW-ZA-3290 | 100% |  |
| SDR-2-CON-RW-ZA-2430 |  | Embankments to the Road 4 Layer | 21d | 2026-06-01 A | 2026-06-15 A | SDR-2-CON-RW-ZA-3300 | 100% |  |
|  | 11 | **Subgrade** |  | 2026-10-05 | 2026-11-17 |  |  |  |
| SDR-2-CON-RW-ZA-2440 |  | Subgrade layer works | 8d | 2026-10-05 A | 2026-11-17 | SDR-2-CON-RW-ZA-2430 | 25% | 8d |
|  | 9 | **Earth Works Plot** |  | 2026-06-01 | 2026-12-03 |  |  |  |
| SDR-2-CON-RW-ZA-2450 |  | Plot Excavation for cuttings (all types of soil) | 21d | 2026-06-01 A | 2026-06-08 A | SDR-2-CON-RW-ZA-2420 | 100% |  |
| SDR-2-CON-RW-ZA-3310 |  | Embankments to the Plot 1 Layer | 21d | 2026-06-01 A | 2026-11-09 | SDR-2-CON-RW-ZA-2450 | 85% | 32d |
| SDR-2-CON-RW-ZA-2460 |  | Embankments to the Plot 2 Layer | 21d | 2026-10-05 A | 2026-12-03 | SDR-2-CON-RW-ZA-3310 | 30% | 32d |
|  | 2 | **Base Course** |  | 2026-11-18 | 2026-12-05 |  |  |  |
| SDR-2-CON-RW-ZA-2470 |  | Aggregate base course layer | 15d | 2026-11-18 | 2026-12-05 | SDR-2-CON-RW-ZA-2440 |  | 9d |
|  | 8 | **Demolition Work** |  | 2026-12-06 | 2026-12-07 |  |  |  |
| SDR-2-CON-RW-ZA-2480 |  | Milling of wearing course | 2d | 2026-12-06 | 2026-12-07 | SDR-2-CON-RW-ZA-2470 |  | 9d |
|  | 3 | **Asphalt Works** |  | 2026-12-09 | 2027-01-04 |  |  |  |
| SDR-2-CON-RW-ZA-2490 |  | Asphalt works 1st Layer with MC-01 | 12d | 2026-12-09 | 2026-12-22 | SDR-2-CON-RW-ZA-3500, SDR-2-CON-RW-ZA-2470, SDR-2-CON-RW-ZA-2480 |  | 8d |
| SDR-2-CON-RW-ZA-2500 |  | Asphalt works 2nd layer with RC-02 | 11d | 2026-12-23 | 2027-01-04 | SDR-2-CON-RW-ZA-2490 |  | 8d |
|  | 4 | **Kerbstone Installation** |  | 2026-11-18 | 2027-01-28 |  |  |  |
| SDR-2-CON-RW-ZA-3500 |  | Kerbstone Installation "all Types" Part 1 | 18d | 2026-11-18 | 2026-12-08 | SDR-2-CON-RW-ZA-2440 |  | 8d |
| SDR-2-CON-RW-ZA-2510 |  | Kerbstone Installation "all Types" Part 2 | 21d | 2027-01-05 | 2027-01-28 | SDR-2-CON-RW-ZA-2500 |  | 8d |
|  | 5 | **Interlock Installation** |  | 2027-01-30 | 2027-02-23 |  |  |  |
| SDR-2-CON-RW-ZA-2520 |  | Interlock Installation | 21d | 2027-01-30 | 2027-02-23 | SDR-2-CON-RW-ZA-2040, SDR-2-CON-RW-ZA-2510 |  | 24d |
|  | 6 | **Road Marking** |  | 2027-02-24 | 2027-04-01 |  |  |  |
| SDR-2-CON-RW-ZA-2530 |  | Retroreflective Thermoplastic White Traffic lines | 14d | 2027-02-24 | 2027-03-16 | SDR-2-CON-RW-ZA-2520 |  | 24d |
| SDR-2-CON-RW-ZA-2540 |  | Retroreflective Thermoplastic Yellow, Traffic lines | 14d | 2027-03-17 | 2027-04-01 | SDR-2-CON-RW-ZA-2530 |  | 24d |
|  | 7 | **Traffic Signage** |  | 2027-04-03 | 2027-04-25 |  |  |  |
| SDR-2-CON-RW-ZA-2550 |  | Single post-Traffic signs Installation | 20d | 2027-04-03 | 2027-04-25 | SDR-2-CON-RW-ZA-2540, SDR-2-CON-RW-ZA-2460 |  | 24d |
|  | 11 | **ROAD WORKS IN ( PH2-ART-MC00 )** |  | 2026-04-28 | 2027-03-20 |  |  |  |
|  | 1 | **Earth Works Road** |  | 2026-04-28 | 2026-07-20 |  |  |  |

| ID | WBS | Task | Duration | Start | Finish | Predecessors | Complete | Total float |
| --- | --- | --- | --- | --- | --- | --- | --- | --- |
| SDR-2-CON-RW-ZA-2560 |  | Roadway Excavation and cuttings | 21d | 2026-04-28 A | 2026-07-20 A | SDR-2-CON-RW-ZA-2420 SS | 100% |  |
|  | 10 | **Backfilling Works** |  | 2026-06-01 | 2026-06-28 |  |  |  |
| SDR-2-CON-RW-ZA-3320 |  | Embankments to the Road 1 Layer | 21d | 2026-06-01 A | 2026-06-08 A | SDR-2-CON-RW-ZA-2560 | 100% |  |
| SDR-2-CON-RW-ZA-3330 |  | Embankments to the Road 2 Layer | 21d | 2026-06-08 A | 2026-06-15 A | SDR-2-CON-RW-ZA-3320 | 100% |  |
| SDR-2-CON-RW-ZA-3340 |  | Embankments to the Road 3 Layer | 21d | 2026-06-15 A | 2026-06-22 A | SDR-2-CON-RW-ZA-3330 | 100% |  |
| SDR-2-CON-RW-ZA-2570 |  | Embankments to the Road 4 Layer | 21d | 2026-06-22 A | 2026-06-28 A | SDR-2-CON-RW-ZA-3340 | 100% |  |
|  | 11 | **Subgrade** |  | 2026-08-11 | 2026-09-17 |  |  |  |
| SDR-2-CON-RW-ZA-2580 |  | Subgrade layer works | 13d | 2026-08-11 A | 2026-09-17 A | SDR-2-CON-RW-ZA-2570 | 100% |  |
|  | 9 | **Earth Works Plot** |  | 2026-06-07 | 2026-06-25 |  |  |  |
| SDR-2-CON-RW-ZA-3350 |  | Embankments to the Plot 1 Layer | 21d | 2026-06-07 A | 2026-06-16 A | SDR-2-CON-RW-ZA-2590 | 100% |  |
| SDR-2-CON-RW-ZA-2590 |  | Plot Excavation for cuttings (all types of soil) | 21d | 2026-06-08 A | 2026-06-15 A | SDR-2-CON-RW-ZA-2560, SDR-2-CON-RW-ZA-2580 | 100% |  |
| SDR-2-CON-RW-ZA-2600 |  | Embankments to the Plot 2 Layer | 21d | 2026-06-15 A | 2026-06-25 A | SDR-2-CON-RW-ZA-3350 | 100% |  |
|  | 2 | **Base Course** |  | 2026-08-31 | 2026-10-05 |  |  |  |
| SDR-2-CON-RW-ZA-2610 |  | Aggregate base course layer | 11d | 2026-08-31 A | 2026-10-05 A | SDR-2-CON-RW-ZA-2580 | 100% |  |
|  | 8 | **Demolition Work** |  | 2026-10-06 | 2026-10-12 |  |  |  |
| SDR-2-CON-RW-ZA-2620 |  | Milling of wearing course | 2d | 2026-10-06 A | 2026-10-12 A | SDR-2-CON-RW-ZA-2610 | 100% |  |
|  | 3 | **Asphalt Works** |  | 2026-10-13 | 2026-11-21 |  |  |  |
| SDR-2-CON-RW-ZA-2630 |  | Asphalt works 1st Layer with MC-01 | 12d | 2026-10-13 A | 2026-10-19 A | SDR-2-CON-RW-ZA-2620 | 100% |  |
| SDR-2-CON-RW-ZA-2640 |  | Asphalt works 2nd layer with RC-02 | 11d | 2026-10-20 A | 2026-11-21 | SDR-2-CON-RW-ZA-2630, SDR-2-CON-RW-ZA-2450 | 50% | 22d |
|  | 4 | **Kerbstone Installation** |  | 2026-10-25 | 2026-12-23 |  |  |  |
| SDR-2-CON-RW-ZA-3510 |  | Kerbstone Installation "all Types" Part 1 | 18d | 2026-10-25 A | 2026-11-29 | SDR-2-CON-RW-ZA-2580 | 50% | 15d |
| SDR-2-CON-RW-ZA-2650 |  | Kerbstone Installation "all Types" Part 2 | 21d | 2026-11-30 | 2026-12-23 | SDR-2-CON-RW-ZA-3310, SDR-2-CON-RW-ZA-2640, SDR-2-CON-RW-ZA-3510 |  | 15d |
|  | 5 | **Interlock Installation** |  | 2026-12-24 | 2027-01-17 |  |  |  |
| SDR-2-CON-RW-ZA-2660 |  | Interlock Installation | 21d | 2026-12-24 | 2027-01-17 | SDR-2-CON-RW-ZA-2460, SDR-2-CON-RW-ZA-2650 |  | 15d |
|  | 6 | **Road Marking** |  | 2027-01-18 | 2027-02-24 |  |  |  |
| SDR-2-CON-RW-ZA-2670 |  | Retroreflective Thermoplastic White Traffic lines | 17d | 2027-01-18 | 2027-02-06 | SDR-2-CON-RW-ZA-2660 |  | 15d |
| SDR-2-CON-RW-ZA-2680 |  | Retroreflective Thermoplastic Yellow, Traffic lines | 15d | 2027-02-07 | 2027-02-24 | SDR-2-CON-RW-ZA-2670 |  | 15d |
|  | 7 | **Traffic Signage** |  | 2027-02-25 | 2027-03-20 |  |  |  |
| SDR-2-CON-RW-ZA-2690 |  | Single post-Traffic signs Installation | 16d | 2027-02-25 | 2027-03-20 | SDR-2-CON-RW-ZA-2680 |  | 15d |
|  | 12 | **ROAD WORKS IN ( PH2-ART-MC10 )** |  | 2026-04-22 | 2027-03-30 |  |  |  |
|  | 1 | **Earth Works Road** |  | 2026-04-22 | 2026-05-13 |  |  |  |
| SDR-2-CON-RW-ZA-2700 |  | Roadway Excavation and cuttings | 20d | 2026-04-22 A | 2026-05-13 A | SDR-2-CON-RW-ZA-2560 SS | 100% |  |
|  | 10 | **Backfilling Works** |  | 2026-05-02 | 2026-06-21 |  |  |  |
| SDR-2-CON-RW-ZA-3360 |  | Embankments to the Road 1 Layer | 21d | 2026-05-02 A | 2026-05-13 A | SDR-2-CON-RW-ZA-2700 | 100% |  |
| SDR-2-CON-RW-ZA-3370 |  | Embankments to the Road 2 Layer | 21d | 2026-05-07 A | 2026-05-18 A | SDR-2-CON-RW-ZA-3360 | 100% |  |
| SDR-2-CON-RW-ZA-3380 |  | Embankments to the Road 3 Layer | 21d | 2026-05-16 A | 2026-05-24 A | SDR-2-CON-RW-ZA-3370 | 100% |  |
| SDR-2-CON-RW-ZA-2710 |  | Embankments to the Road 4 Layer | 21d | 2026-06-11 A | 2026-06-21 A | SDR-2-CON-RW-ZA-3380 FS+1d | 100% |  |
|  | 11 | **Subgrade** |  | 2026-09-24 | 2026-10-12 |  |  |  |
| SDR-2-CON-RW-ZA-2720 |  | Subgrade layer works | 12d | 2026-09-24 A | 2026-10-12 A | SDR-2-CON-RW-ZA-2710 | 100% |  |
|  | 9 | **Earth Works Plot** |  | 2026-06-09 | 2026-06-29 |  |  |  |
| SDR-2-CON-RW-ZA-2730 |  | Plot Excavation for cuttings (all types of soil) | 21d | 2026-06-09 A | 2026-06-18 A | SDR-2-CON-RW-ZA-2700 | 100% |  |
| SDR-2-CON-RW-ZA-3390 |  | Embankments to the Plot 1 Layer | 21d | 2026-06-15 A | 2026-06-23 A | SDR-2-CON-RW-ZA-2730, SDR-2-CON-RW-ZA-2590 | 100% |  |
| SDR-2-CON-RW-ZA-2740 |  | Embankments to the Plot 2 Layer | 21d | 2026-06-18 A | 2026-06-29 A | SDR-2-CON-RW-ZA-3390 | 100% |  |
|  | 2 | **Base Course** |  | 2026-10-15 | 2026-10-25 |  |  |  |
| SDR-2-CON-RW-ZA-2750 |  | Aggregate base course layer | 11d | 2026-10-15 A | 2026-10-25 A | SDR-2-CON-RW-ZA-2720 | 100% |  |
|  | 8 | **Demolition Work** |  | 2026-10-26 | 2026-11-10 |  |  |  |
| SDR-2-CON-RW-ZA-2760 |  | Milling of wearing course | 2d | 2026-10-26 A | 2026-11-10 | SDR-2-CON-RW-ZA-2750 | 75% | 47d |
|  | 3 | **Asphalt Works** |  | 2026-10-24 | 2027-01-02 |  |  |  |
| SDR-2-CON-RW-ZA-2770 |  | Asphalt works 1st Layer with MC-01 | 10d | 2026-10-24 A | 2026-11-22 | SDR-2-CON-RW-ZA-2750, SDR-2-CON-RW-ZA-2760 | 95% | 47d |
| SDR-2-CON-RW-ZA-2780 |  | Asphalt works 2nd layer with RC-02 | 14d | 2026-11-23 | 2026-12-08 | SDR-2-CON-RW-ZA-2770 |  | 47d |
| SDR-2-CON-RW-ZA-2850 |  | Asphalt Works 3 rd Layer with RC-02 | 21d | 2026-12-09 | 2027-01-02 | SDR-2-CON-RW-ZA-2780 |  | 47d |
|  | 4 | **Kerbstone Installation** |  | 2026-11-09 | 2027-01-26 |  |  |  |
| SDR-2-CON-RW-ZA-3520 |  | Kerbstone Installation "all Types" Part 1 | 18d | 2026-11-09 | 2026-11-29 | SDR-2-CON-RW-ZA-2720 |  | 60d |
| SDR-2-CON-RW-ZA-2790 |  | Kerbstone Installation "all Types" Part 2 | 21d | 2027-01-03 | 2027-01-26 | SDR-2-CON-RW-ZA-2040 FS+2d, SDR-2-CON-RW-ZA-2850, SDR-2-CON-RW-ZA-2850 FF |  | 47d |
|  | 5 | **Interlock Installation** |  | 2027-01-27 | 2027-02-20 |  |  |  |
| SDR-2-CON-RW-ZA-2800 |  | Interlock Installation | 21d | 2027-01-27 | 2027-02-20 | SDR-2-CON-RW-ZA-2790 |  | 47d |
|  | 6 | **Road Marking** |  | 2027-02-21 | 2027-03-16 |  |  |  |
| SDR-2-CON-RW-ZA-2810 |  | Retroreflective Thermoplastic White Traffic lines | 8d | 2027-02-21 | 2027-03-02 | SDR-2-CON-RW-ZA-2800 |  | 47d |
| SDR-2-CON-RW-ZA-2820 |  | Retroreflective Thermoplastic Yellow, Traffic lines | 8d | 2027-03-03 | 2027-03-16 | SDR-2-CON-RW-ZA-2810 |  | 47d |
|  | 7 | **Traffic Signage** |  | 2027-03-17 | 2027-03-30 |  |  |  |
| SDR-2-CON-RW-ZA-2830 |  | Single post-Traffic signs Installation | 12d | 2027-03-17 | 2027-03-30 | SDR-2-CON-RW-ZA-2820, SDR-2-CON-RW-ZA-2740 |  | 47d |
|  | ZG | **ZONE G** |  | 2026-02-06 | 2027-05-05 |  |  |  |
|  | 14 | **GENERAL WORKS** |  | 2026-02-06 | 2026-03-16 |  |  |  |
|  | 10 | **Cleaning and removal of organic materials in Zone A** |  | 2026-02-06 | 2026-03-06 |  |  |  |
| SDR-2-CON-RW-ZG-1000 |  | Cleaning and removal of organic materials in Zone G | 17d | 2026-02-06 A | 2026-03-06 A | SDR-2-MOBL-1060 | 100% |  |
|  | 12 | **Surveying works Zone A** |  | 2026-03-06 | 2026-03-16 |  |  |  |
| SDR-2-CON-RW-ZG-1010 |  | Surveying works Zone G | 16d | 2026-03-06 A | 2026-03-16 A | SDR-2-CON-RW-ZG-1000 | 100% |  |
|  | 5 | **ROAD WORKS IN ( PH2-COL-MC50 )** |  | 2026-03-28 | 2027-05-05 |  |  |  |
|  | 1 | **Earth Works Road** |  | 2026-04-04 | 2026-04-27 |  |  |  |
| SDR-2-CON-RW-ZG-1020 |  | Roadway Excavation and cuttings | 21d | 2026-04-04 A | 2026-04-27 A | SDR-2-CON-RW-ZG-1010 | 100% |  |

| ID | WBS | Task | Duration | Start | Finish | Predecessors | Complete | Total float |
| --- | --- | --- | --- | --- | --- | --- | --- | --- |
|  | 10 | **Backfilling Works** |  | 2026-03-28 | 2026-07-15 |  |  |  |
| SDR-2-CON-RW-ZG-2220 |  | Embankments to the Road 1 Layer | 21d | 2026-03-28 A | 2026-05-21 A | SDR-2-CON-RW-ZG-1020 | 100% |  |
| SDR-2-CON-RW-ZG-2230 |  | Embankments to the Road 2 Layer | 21d | 2026-05-23 A | 2026-06-03 A | SDR-2-CON-RW-ZG-2220 | 100% |  |
| SDR-2-CON-RW-ZG-2240 |  | Embankments to the Road 3 Layer | 21d | 2026-06-04 A | 2026-07-01 A | SDR-2-CON-RW-ZG-2230 | 100% |  |
| SDR-2-CON-RW-ZG-1030 |  | Embankments to the Road 4 Layer | 21d | 2026-07-02 A | 2026-07-15 A | SDR-2-CON-RW-ZG-2240 FS+6d | 100% |  |
|  | 11 | **Subgrade** |  | 2026-07-16 | 2026-10-01 |  |  |  |
| SDR-2-CON-RW-ZG-1040 |  | Subgrade layer works | 21d | 2026-07-16 A | 2026-10-01 A | SDR-2-CON-RW-ZG-1030 | 100% |  |
|  | 9 | **Earth Works Plot** |  | 2026-06-23 | 2026-10-19 |  |  |  |
| SDR-2-CON-RW-ZG-1050 |  | Plot Excavation for cuttings (all types of soil) | 21d | 2026-06-23 A | 2026-10-12 A | SDR-2-CON-RW-ZG-1020, SDR-2-CON-RW-ZG-1040 FF | 100% |  |
| SDR-2-CON-RW-ZG-2250 |  | Embankments to the Plot 1 Layer | 21d | 2026-07-21 A | 2026-08-03 A | SDR-2-CON-RW-ZG-1050 SS | 100% |  |
| SDR-2-CON-RW-ZG-2260 |  | Embankments to the Plot 2 Layer | 21d | 2026-07-21 A | 2026-10-14 A | SDR-2-CON-RW-ZG-2250, SDR-2-CON-RW-ZA-3520 FF | 100% |  |
| SDR-2-CON-RW-ZG-1060 |  | Embankments to the Plot 3 Layer | 21d | 2026-08-01 A | 2026-10-19 A | SDR-2-CON-RW-ZG-2260 FF | 100% |  |
|  | 2 | **Base Course** |  | 2026-08-20 | 2026-10-05 |  |  |  |
| SDR-2-CON-RW-ZG-1070 |  | Aggregate base course layer | 21d | 2026-08-20 A | 2026-10-05 A | SDR-2-CON-RW-ZG-1040 FF | 100% |  |
|  | 8 | **Demolition Work** |  | 2026-10-19 | 2026-11-18 |  |  |  |
| SDR-2-CON-RW-ZG-1080 |  | Removal of curbstone | 11d | 2026-10-19 A | 2026-10-25 A | SDR-2-CON-RW-ZG-1070 | 100% |  |
| SDR-2-CON-RW-ZG-1090 |  | Milling of wearing course | 9d | 2026-10-26 A | 2026-11-18 | SDR-2-CON-RW-ZG-1080 | 50% | 16d |
|  | 3 | **Asphalt Works** |  | 2026-10-05 | 2027-01-14 |  |  |  |
| SDR-2-CON-RW-ZG-1100 |  | Asphalt works 1st Layer with MC-01 | 19d | 2026-10-05 A | 2026-12-21 | SDR-2-CON-RW-ZG-2550, SDR-2-CON-RW-ZG-1070, SDR-2-CON-RW-ZG-1090 | 50% | 7d |
| SDR-2-CON-RW-ZG-1110 |  | Asphalt works 2nd layer with RC-02 | 21d | 2026-12-22 | 2027-01-14 | SDR-2-CON-RW-ZG-1100 |  | 7d |
|  | 4 | **Kerbstone Installation** |  | 2026-11-09 | 2027-02-08 |  |  |  |
| SDR-2-CON-RW-ZG-2550 |  | Kerbstone Installation "all Types" Part 1 | 18d | 2026-11-09 | 2026-11-29 | SDR-2-CON-RW-ZG-1070 |  | 7d |
| SDR-2-CON-RW-ZG-1120 |  | Kerbstone Installation "all Types" Part 2 | 21d | 2027-01-16 | 2027-02-08 | SDR-2-CON-RW-ZA-3350, SDR-2-CON-RW-ZG-1110 |  | 7d |
|  | 5 | **Interlock Installation** |  | 2027-02-09 | 2027-03-06 |  |  |  |
| SDR-2-CON-RW-ZG-1130 |  | Interlock Installation | 21d | 2027-02-09 | 2027-03-06 | SDR-2-CON-RW-ZA-2600, SDR-2-CON-RW-ZG-1120 |  | 7d |
|  | 6 | **Road Marking** |  | 2027-03-07 | 2027-04-12 |  |  |  |
| SDR-2-CON-RW-ZG-1140 |  | Retroreflective Thermoplastic White Traffic lines | 14d | 2027-03-07 | 2027-03-27 | SDR-2-CON-RW-ZG-1130 |  | 7d |
| SDR-2-CON-RW-ZG-1150 |  | Retroreflective Thermoplastic Yellow, Traffic lines | 14d | 2027-03-28 | 2027-04-12 | SDR-2-CON-RW-ZG-1140 |  | 7d |
|  | 7 | **Traffic Signage** |  | 2027-04-13 | 2027-05-05 |  |  |  |
| SDR-2-CON-RW-ZG-1160 |  | Single post-Traffic signs Installation | 20d | 2027-04-13 | 2027-05-05 | SDR-2-CON-RW-ZG-1150, SDR-2-CON-RW-ZG-1060 |  | 7d |
|  | 1 | **ROAD WORKS IN ( PH2-G-MCA0 )** |  | 2026-03-30 | 2027-04-01 |  |  |  |
|  | 1 | **Earth Works Road** |  | 2026-03-30 | 2026-05-03 |  |  |  |
| SDR-2-CON-RW-ZG-1320 |  | Roadway Excavation and cuttings | 20d | 2026-03-30 A | 2026-05-03 A | SDR-2-CON-RW-ZG-1170 SS+3d | 100% |  |
|  | 10 | **Backfilling Works** |  | 2026-03-30 | 2026-06-13 |  |  |  |
| SDR-2-CON-RW-ZG-2310 |  | Embankments to the Road 1 Layer | 21d | 2026-03-30 A | 2026-04-30 A | SDR-2-CON-RW-ZG-1320 | 100% |  |
| SDR-2-CON-RW-ZG-2320 |  | Embankments to the Road 2 Layer | 21d | 2026-05-02 A | 2026-05-18 A | SDR-2-CON-RW-ZG-2310 | 100% |  |
| SDR-2-CON-RW-ZG-2330 |  | Embankments to the Road 3 Layer | 21d | 2026-05-19 A | 2026-06-01 A | SDR-2-CON-RW-ZG-2320 FS+5d | 100% |  |
| SDR-2-CON-RW-ZG-1330 |  | Embankments to the Road 4 Layer | 21d | 2026-06-02 A | 2026-06-13 A | SDR-2-CON-RW-ZG-2330 FS+6d, SDR-2-PRO-DEL-E-1010 | 100% |  |
|  | 11 | **Subgrade** |  | 2026-08-20 | 2026-08-31 |  |  |  |
| SDR-2-CON-RW-ZG-1340 |  | Subgrade layer works | 21d | 2026-08-20 A | 2026-08-31 A | SDR-2-CON-RW-ZG-1330 FS+5d | 100% |  |
|  | 9 | **Earth Works Plot** |  | 2026-05-11 | 2026-06-15 |  |  |  |
| SDR-2-CON-RW-ZG-1350 |  | Plot Excavation for cuttings (all types of soil) | 21d | 2026-05-11 A | 2026-05-23 A | SDR-2-CON-RW-ZG-1320, SDR-2-CON-RW-ZG-1340 | 100% |  |
| SDR-2-CON-RW-ZG-2340 |  | Embankments to the Plot 1 Layer | 21d | 2026-05-23 A | 2026-06-04 A | SDR-2-CON-RW-ZG-1350 | 100% |  |
| SDR-2-CON-RW-ZG-1360 |  | Embankments to the Plot 2 Layer | 21d | 2026-06-06 A | 2026-06-15 A | SDR-2-CON-RW-ZG-2340, SDR-2-CON-RW-ZG-2300 | 100% |  |
|  | 2 | **Base Course** |  | 2026-08-22 | 2026-09-26 |  |  |  |
| SDR-2-CON-RW-ZG-1370 |  | Aggregate base course layer | 21d | 2026-08-22 A | 2026-09-26 A | SDR-2-CON-RW-ZG-1340 | 100% |  |
|  | 8 | **Demolition Work** |  | 2026-11-09 | 2026-11-26 |  |  |  |
| SDR-2-CON-RW-ZG-1380 |  | Removal of curbstone | 9d | 2026-11-09 | 2026-11-18 | SDR-2-CON-RW-ZG-1370 |  | 23d |
| SDR-2-CON-RW-ZG-1390 |  | Milling of wearing course | 7d | 2026-11-19 | 2026-11-26 | SDR-2-CON-RW-ZG-1380 |  | 23d |
|  | 3 | **Asphalt Works** |  | 2026-10-05 | 2026-12-13 |  |  |  |
| SDR-2-CON-RW-ZG-1400 |  | Asphalt works 1st Layer with MC-01 | 12d | 2026-10-05 A | 2026-11-22 | SDR-2-CON-RW-ZG-1370 | 75% | 36d |
| SDR-2-CON-RW-ZG-1410 |  | Asphalt works 2nd layer with RC-02 | 18d | 2026-11-23 | 2026-12-13 | SDR-2-CON-RW-ZG-1400 |  | 36d |
|  | 4 | **Kerbstone Installation** |  | 2026-11-30 | 2027-01-06 |  |  |  |
| SDR-2-CON-RW-ZG-2570 |  | Kerbstone Installation "all Types" Part 1 | 18d | 2026-11-30 | 2026-12-20 | SDR-2-CON-RW-ZG-1340, SDR-2-CON-RW-ZG-2560 |  | 9d |
| SDR-2-CON-RW-ZG-1420 |  | Kerbstone Installation "all Types" Part 2 | 21d | 2026-12-14 | 2027-01-06 | SDR-2-CON-RW-ZG-1390, SDR-2-CON-RW-ZG-1410 |  | 36d |
|  | 5 | **Interlock Installation** |  | 2027-01-07 | 2027-01-30 |  |  |  |
| SDR-2-CON-RW-ZG-1430 |  | Interlock Installation | 20d | 2027-01-07 | 2027-01-30 | SDR-2-CON-RW-ZG-1420 |  | 36d |
|  | 6 | **Road Marking** |  | 2027-01-31 | 2027-03-04 |  |  |  |
| SDR-2-CON-RW-ZG-1440 |  | Retroreflective Thermoplastic White Traffic lines | 14d | 2027-01-31 | 2027-02-15 | SDR-2-CON-RW-ZG-1430 |  | 36d |
| SDR-2-CON-RW-ZG-1450 |  | Retroreflective Thermoplastic Yellow, Traffic lines | 14d | 2027-02-16 | 2027-03-04 | SDR-2-CON-RW-ZG-1440, SDR-2-CON-RW-ZG-1360 SS |  | 36d |
|  | 7 | **Traffic Signage** |  | 2027-03-06 | 2027-04-01 |  |  |  |
| SDR-2-CON-RW-ZG-1460 |  | Single post-Traffic signs Installation | 20d | 2027-03-06 | 2027-04-01 | SDR-2-CON-RW-ZG-1360, SDR-2-CON-RW-ZG-1450 |  | 36d |
|  | 6 | **ROAD WORKS IN ( PH2-ART-MC00 )** |  | 2026-03-26 | 2027-04-12 |  |  |  |
|  | 1 | **Earth Works Road** |  | 2026-03-26 | 2026-05-29 |  |  |  |
| SDR-2-CON-RW-ZG-1170 |  | Roadway Excavation and cuttings | 20d | 2026-03-26 A | 2026-05-29 A | SDR-2-CON-RW-ZG-1020 SS+3d | 100% |  |
|  | 10 | **Backfilling Works** |  | 2026-03-28 | 2026-06-30 |  |  |  |
| SDR-2-CON-RW-ZG-2270 |  | Embankments to the Road 1 Layer | 21d | 2026-03-28 A | 2026-06-09 A | SDR-2-CON-RW-ZG-1170 | 100% |  |
| SDR-2-CON-RW-ZG-2280 |  | Embankments to the Road 2 Layer | 21d | 2026-05-25 A | 2026-06-22 A | SDR-2-CON-RW-ZG-2270 | 100% |  |
| SDR-2-CON-RW-ZG-1180 |  | Embankments to the Road 4 Layer | 21d | 2026-06-09 A | 2026-06-30 A | SDR-2-CON-RW-ZG-2290 | 100% |  |
| SDR-2-CON-RW-ZG-2290 |  | Embankments to the Road 3 Layer | 21d | 2026-06-17 A | 2026-06-25 A | SDR-2-CON-RW-ZG-2280 | 100% |  |

| ID | WBS | Task | Duration | Start | Finish | Predecessors | Complete | Total float |
| --- | --- | --- | --- | --- | --- | --- | --- | --- |
|  | 11 | **Subgrade** |  | 2026-08-10 | 2026-08-24 |  |  |  |
| SDR-2-CON-RW-ZG-1190 |  | Subgrade layer works | 21d | 2026-08-10 A | 2026-08-24 A | SDR-2-CON-RW-ZG-1180 | 100% |  |
|  | 9 | **Earth Works Plot** |  | 2026-07-01 | 2026-07-30 |  |  |  |
| SDR-2-CON-RW-ZG-1200 |  | Plot Excavation for cuttings (all types of soil) | 21d | 2026-07-01 A | 2026-07-20 A | SDR-2-CON-RW-ZG-1170, SDR-2-CON-RW-ZG-1190 | 100% |  |
| SDR-2-CON-RW-ZG-2300 |  | Embankments to the Plot 1 Layer | 21d | 2026-07-11 A | 2026-07-21 A | SDR-2-CON-RW-ZG-1200 FS+4d, SDR-2-CON-RW-ZG-1050 SS | 100% |  |
| SDR-2-CON-RW-ZG-1210 |  | Embankments to the Plot 2 Layer | 21d | 2026-07-20 A | 2026-07-30 A | SDR-2-CON-RW-ZG-2300 | 100% |  |
|  | 2 | **Base Course** |  | 2026-08-20 | 2026-10-05 |  |  |  |
| SDR-2-CON-RW-ZG-1220 |  | Aggregate base course layer | 21d | 2026-08-20 A | 2026-10-05 A | SDR-2-CON-RW-ZG-1190 | 100% |  |
|  | 8 | **Demolition Work** |  | 2026-10-05 | 2026-10-18 |  |  |  |
| SDR-2-CON-RW-ZG-1230 |  | Removal of curbstone | 8d | 2026-10-05 A | 2026-10-15 A | SDR-2-CON-RW-ZG-1220 | 100% |  |
| SDR-2-CON-RW-ZG-1240 |  | Milling of wearing course | 13d | 2026-10-13 A | 2026-10-18 A | SDR-2-CON-RW-ZG-1230 | 100% |  |
|  | 3 | **Asphalt Works** |  | 2026-10-05 | 2026-12-23 |  |  |  |
| SDR-2-CON-RW-ZG-1250 |  | Asphalt works 1st Layer with MC-01 | 21d | 2026-10-05 A | 2026-10-19 A | SDR-2-CON-RW-ZG-1220, SDR-2-CON-RW-ZG-1240 | 100% |  |
| SDR-2-CON-RW-ZG-1260 |  | Asphalt works 2nd layer with RC-02 | 21d | 2026-11-30 | 2026-12-23 | SDR-2-CON-RW-ZG-2550, SDR-2-CON-RW-ZG-1250 |  | 36d |
|  | 4 | **Kerbstone Installation** |  | 2026-10-26 | 2027-01-16 |  |  |  |
| SDR-2-CON-RW-ZG-2560 |  | Kerbstone Installation "all Types" Part 1 | 18d | 2026-10-26 A | 2026-11-29 | SDR-2-CON-RW-ZG-1190 | 75% | 9d |
| SDR-2-CON-RW-ZG-1270 |  | Kerbstone Installation "all Types" Part 2 | 20d | 2026-12-24 | 2027-01-16 | SDR-2-CON-RW-ZG-1260 |  | 36d |
|  | 5 | **Interlock Installation** |  | 2027-01-17 | 2027-02-09 |  |  |  |
| SDR-2-CON-RW-ZG-1280 |  | Interlock Installation | 21d | 2027-01-17 | 2027-02-09 | SDR-2-CON-RW-ZG-1270 |  | 36d |
|  | 6 | **Road Marking** |  | 2027-02-10 | 2027-03-20 |  |  |  |
| SDR-2-CON-RW-ZG-1290 |  | Retroreflective Thermoplastic White Traffic lines | 14d | 2027-02-10 | 2027-02-27 | SDR-2-CON-RW-ZG-1280 |  | 36d |
| SDR-2-CON-RW-ZG-1300 |  | Retroreflective Thermoplastic Yellow, Traffic lines | 14d | 2027-02-28 | 2027-03-20 | SDR-2-CON-RW-ZG-1290 |  | 36d |
|  | 7 | **Traffic Signage** |  | 2027-03-21 | 2027-04-12 |  |  |  |
| SDR-2-CON-RW-ZG-1310 |  | Single post-Traffic signs Installation | 20d | 2027-03-21 | 2027-04-12 | SDR-2-CON-RW-ZG-1300, SDR-2-CON-RW-ZG-1210 |  | 36d |
|  | 8 | **ROAD WORKS IN ( PH2-G-MCE0 )** |  | 2026-03-15 | 2027-05-03 |  |  |  |
|  | 1 | **Earth Works Road** |  | 2026-04-14 | 2026-04-30 |  |  |  |
| SDR-2-CON-RW-ZG-1470 |  | Roadway Excavation and cuttings | 21d | 2026-04-14 A | 2026-04-30 A | SDR-2-CON-RW-ZG-1320 SS+3d | 100% |  |
|  | 10 | **Backfilling Works** |  | 2026-03-15 | 2026-05-13 |  |  |  |
| SDR-2-CON-RW-ZG-2350 |  | Embankments to the Road 1 Layer | 21d | 2026-03-15 A | 2026-04-01 A | SDR-2-CON-RW-ZG-1470 | 100% |  |
| SDR-2-CON-RW-ZG-2360 |  | Embankments to the Road 2 Layer | 21d | 2026-04-02 A | 2026-04-07 A | SDR-2-CON-RW-ZG-2350 | 100% |  |
| SDR-2-CON-RW-ZG-2370 |  | Embankments to the Road 3 Layer | 21d | 2026-04-08 A | 2026-04-15 A | SDR-2-CON-RW-ZG-2360 | 100% |  |
| SDR-2-CON-RW-ZG-1480 |  | Embankments to the Road 4 Layer | 21d | 2026-04-14 A | 2026-05-13 A | SDR-2-CON-RW-ZG-2370 FS+6d, SDR-2-PRO-DEL-E-1010 | 100% |  |
|  | 11 | **Subgrade** |  | 2026-08-24 | 2026-09-14 |  |  |  |
| SDR-2-CON-RW-ZG-1490 |  | Subgrade layer works | 21d | 2026-08-24 A | 2026-09-14 A | SDR-2-CON-RW-ZG-1480 FS+6d | 100% |  |
|  | 9 | **Earth Works Plot** |  | 2026-05-20 | 2026-07-20 |  |  |  |
| SDR-2-CON-RW-ZG-1500 |  | Plot Excavation for cuttings (all types of soil) | 21d | 2026-05-20 A | 2026-05-31 A | SDR-2-CON-RW-ZG-1470, SDR-2-CON-RW-ZG-1490 | 100% |  |
| SDR-2-CON-RW-ZG-2380 |  | Embankments to the Plot 1 Layer | 21d | 2026-06-04 A | 2026-06-22 A | SDR-2-CON-RW-ZG-1500 | 100% |  |
| SDR-2-CON-RW-ZG-1510 |  | Embankments to the Plot 2 Layer | 21d | 2026-07-13 A | 2026-07-20 A | SDR-2-CON-RW-ZG-2380 FS+2d | 100% |  |
|  | 2 | **Base Course** |  | 2026-09-14 | 2026-09-24 |  |  |  |
| SDR-2-CON-RW-ZG-1520 |  | Aggregate base course layer | 18d | 2026-09-14 A | 2026-09-24 A | SDR-2-CON-RW-ZG-1490 | 100% |  |
|  | 8 | **Demolition Work** |  | 2026-11-09 | 2026-12-26 |  |  |  |
| SDR-2-CON-RW-ZG-1530 |  | Removal of curbstone | 4d | 2026-11-09 | 2026-11-12 | SDR-2-CON-RW-ZG-1520 |  | 41d |
| SDR-2-CON-RW-ZG-1540 |  | Milling of wearing course | 5d | 2026-12-21 | 2026-12-26 | SDR-2-CON-RW-ZG-2570, SDR-2-CON-RW-ZG-1530 |  | 9d |
|  | 3 | **Asphalt Works** |  | 2026-09-26 | 2027-01-12 |  |  |  |
| SDR-2-CON-RW-ZG-1550 |  | Asphalt works 1st Layer with MC-01 | 12d | 2026-09-26 A | 2026-10-01 A | SDR-2-CON-RW-ZG-1520, SDR-2-CON-RW-ZG-1540 | 100% |  |
| SDR-2-CON-RW-ZG-1560 |  | Asphalt works 2nd layer with RC-02 | 15d | 2026-12-27 | 2027-01-12 | SDR-2-CON-RW-ZG-1550 |  | 9d |
|  | 4 | **Kerbstone Installation** |  | 2026-11-09 | 2027-02-06 |  |  |  |
| SDR-2-CON-RW-ZG-2580 |  | Kerbstone Installation "all Types" Part 1 | 18d | 2026-11-09 | 2026-11-29 | SDR-2-CON-RW-ZG-1490 |  | 32d |
| SDR-2-CON-RW-ZG-1570 |  | Kerbstone Installation "all Types" Part 2 | 21d | 2027-01-13 | 2027-02-06 | SDR-2-CON-RW-ZG-1560 |  | 9d |
|  | 5 | **Interlock Installation** |  | 2027-02-07 | 2027-03-03 |  |  |  |
| SDR-2-CON-RW-ZG-1580 |  | Interlock Installation | 21d | 2027-02-07 | 2027-03-03 | SDR-2-CON-RW-ZG-1570 |  | 9d |
|  | 6 | **Road Marking** |  | 2027-03-04 | 2027-04-10 |  |  |  |
| SDR-2-CON-RW-ZG-1590 |  | Retroreflective Thermoplastic White Traffic lines | 14d | 2027-03-04 | 2027-03-24 | SDR-2-CON-RW-ZG-1580 |  | 9d |
| SDR-2-CON-RW-ZG-1600 |  | Retroreflective Thermoplastic Yellow, Traffic lines | 14d | 2027-03-25 | 2027-04-10 | SDR-2-CON-RW-ZG-1590 |  | 9d |
|  | 7 | **Traffic Signage** |  | 2027-04-11 | 2027-05-03 |  |  |  |
| SDR-2-CON-RW-ZG-1610 |  | Single post-Traffic signs Installation | 20d | 2027-04-11 | 2027-05-03 | SDR-2-CON-RW-ZG-1600, SDR-2-CON-RW-ZG-1510 |  | 9d |
|  | 4 | **ROAD WORKS IN ( PH2-G-MCD0 )** |  | 2026-03-21 | 2027-04-18 |  |  |  |
|  | 1 | **Earth Works Road** |  | 2026-03-21 | 2026-04-14 |  |  |  |
| SDR-2-CON-RW-ZG-1620 |  | Roadway Excavation and cuttings | 20d | 2026-03-21 A | 2026-04-14 A | SDR-2-CON-RW-ZG-1470 SS+3d | 100% |  |
|  | 10 | **Backfilling Works** |  | 2026-03-29 | 2026-05-25 |  |  |  |
| SDR-2-CON-RW-ZG-2390 |  | Embankments to the Road 1 Layer | 21d | 2026-03-29 A | 2026-04-15 A | SDR-2-CON-RW-ZG-1620 | 100% |  |
| SDR-2-CON-RW-ZG-2400 |  | Embankments to the Road 2 Layer | 21d | 2026-04-15 A | 2026-05-13 A | SDR-2-CON-RW-ZG-2390 | 100% |  |
| SDR-2-CON-RW-ZG-2410 |  | Embankments to the Road 3 Layer | 21d | 2026-05-16 A | 2026-05-25 A | SDR-2-CON-RW-ZG-2400 | 100% |  |
| SDR-2-CON-RW-ZG-1630 |  | Embankments to the Road 4 Layer | 21d | 2026-05-24 A | 2026-05-24 A | SDR-2-CON-RW-ZG-2410 FS+6d | 100% |  |
|  | 11 | **Subgrade** |  | 2026-09-10 | 2026-09-30 |  |  |  |
| SDR-2-CON-RW-ZG-1640 |  | Subgrade layer works | 21d | 2026-09-10 A | 2026-09-30 A | SDR-2-CON-RW-ZG-1630 FS+4d | 100% |  |
|  | 9 | **Earth Works Plot** |  | 2026-05-18 | 2026-10-31 |  |  |  |
| SDR-2-CON-RW-ZG-1650 |  | Plot Excavation for cuttings (all types of soil) | 21d | 2026-05-18 A | 2026-10-25 A | SDR-2-CON-RW-ZG-1640 FF, SDR-2-CON-RW-ZG-1620 | 100% |  |
| SDR-2-CON-RW-ZG-2420 |  | Embankments to the Plot 1 Layer | 21d | 2026-06-04 A | 2026-10-11 A | SDR-2-CON-RW-ZG-1650 FF, SDR-2-CON-RW-ZG-2580 FF | 100% |  |
| SDR-2-CON-RW-ZG-1660 |  | Embankments to the Plot 2 Layer | 21d | 2026-07-07 A | 2026-10-31 A | SDR-2-CON-RW-ZG-2380, SDR-2-CON-RW-ZG-2420 FF | 100% |  |

| ID | WBS | Task | Duration | Start | Finish | Predecessors | Complete | Total float |
| --- | --- | --- | --- | --- | --- | --- | --- | --- |
|  | 2 | **Base Course** |  | 2026-10-01 | 2026-10-05 |  |  |  |
| SDR-2-CON-RW-ZG-1670 |  | Aggregate base course layer | 16d | 2026-10-01 A | 2026-10-05 A | SDR-2-CON-RW-ZG-1640 | 100% |  |
|  | 8 | **Demolition Work** |  | 2026-10-19 | 2026-11-14 |  |  |  |
| SDR-2-CON-RW-ZG-1680 |  | Removal of curbstone | 4d | 2026-10-19 A | 2026-10-25 A | SDR-2-CON-RW-ZG-1670 | 100% |  |
| SDR-2-CON-RW-ZG-1690 |  | Milling of wearing course | 5d | 2026-10-26 A | 2026-11-14 | SDR-2-CON-RW-ZG-1680 | 50% | 31d |
|  | 3 | **Asphalt Works** |  | 2026-10-11 | 2026-12-29 |  |  |  |
| SDR-2-CON-RW-ZG-1700 |  | Asphalt works 1st Layer with MC-01 | 18d | 2026-10-11 A | 2026-12-05 | SDR-2-CON-RW-ZG-1670, SDR-2-CON-RW-ZG-1690 | 90% | 31d |
| SDR-2-CON-RW-ZG-1710 |  | Asphalt works 2nd layer with RC-02 | 21d | 2026-12-06 | 2026-12-29 | SDR-2-CON-RW-ZG-1700 |  | 31d |
|  | 4 | **Kerbstone Installation** |  | 2026-11-09 | 2027-01-23 |  |  |  |
| SDR-2-CON-RW-ZG-2590 |  | Kerbstone Installation "all Types" Part 1 | 18d | 2026-11-09 | 2026-11-29 | SDR-2-CON-RW-ZG-1640 |  | 4d |
| SDR-2-CON-RW-ZG-1720 |  | Kerbstone Installation "all Types" Part 2 | 21d | 2026-12-30 | 2027-01-23 | SDR-2-CON-RW-ZG-1710 |  | 31d |
|  | 5 | **Interlock Installation** |  | 2027-01-24 | 2027-02-15 |  |  |  |
| SDR-2-CON-RW-ZG-1730 |  | Interlock Installation | 20d | 2027-01-24 | 2027-02-15 | SDR-2-CON-RW-ZG-1720 |  | 31d |
|  | 6 | **Road Marking** |  | 2027-02-16 | 2027-03-25 |  |  |  |
| SDR-2-CON-RW-ZG-1740 |  | Retroreflective Thermoplastic White Traffic lines | 14d | 2027-02-16 | 2027-03-04 | SDR-2-CON-RW-ZG-1730 |  | 31d |
| SDR-2-CON-RW-ZG-1750 |  | Retroreflective Thermoplastic Yellow, Traffic lines | 14d | 2027-03-06 | 2027-03-25 | SDR-2-CON-RW-ZG-1740, SDR-2-CON-RW-ZG-1660 SS |  | 31d |
|  | 7 | **Traffic Signage** |  | 2027-03-27 | 2027-04-18 |  |  |  |
| SDR-2-CON-RW-ZG-1760 |  | Single post-Traffic signs Installation | 20d | 2027-03-27 | 2027-04-18 | SDR-2-CON-RW-ZG-1660, SDR-2-CON-RW-ZG-1750 |  | 31d |
|  | 2 | **ROAD WORKS IN ( PH2-G-MCF0 )** |  | 2026-03-25 | 2027-04-21 |  |  |  |
|  | 1 | **Earth Works Road** |  | 2026-03-25 | 2026-05-13 |  |  |  |
| SDR-2-CON-RW-ZG-1770 |  | Roadway Excavation and cuttings | 21d | 2026-03-25 A | 2026-05-13 A | SDR-2-CON-RW-ZG-1620 SS+3d | 100% |  |
|  | 10 | **Backfilling Works** |  | 2026-03-25 | 2026-06-18 |  |  |  |
| SDR-2-CON-RW-ZG-2430 |  | Embankments to the Road 1 Layer | 21d | 2026-03-25 A | 2026-04-15 A | SDR-2-CON-RW-ZG-1770 | 100% |  |
| SDR-2-CON-RW-ZG-2440 |  | Embankments to the Road 2 Layer | 21d | 2026-04-07 A | 2026-04-30 A | SDR-2-CON-RW-ZG-2430 | 100% |  |
| SDR-2-CON-RW-ZG-2450 |  | Embankments to the Road 3 Layer | 21d | 2026-05-02 A | 2026-05-21 A | SDR-2-CON-RW-ZG-2440 | 100% |  |
| SDR-2-CON-RW-ZG-1780 |  | Embankments to the Road 4 Layer | 21d | 2026-05-21 A | 2026-06-18 A | SDR-2-CON-RW-ZG-2450 FS+6d | 100% |  |
|  | 11 | **Subgrade** |  | 2026-08-15 | 2026-09-03 |  |  |  |
| SDR-2-CON-RW-ZG-1790 |  | Subgrade layer works | 13d | 2026-08-15 A | 2026-09-03 A | SDR-2-CON-RW-ZG-1780 | 100% |  |
|  | 9 | **Earth Works Plot** |  | 2026-05-04 | 2026-09-07 |  |  |  |
| SDR-2-CON-RW-ZG-1800 |  | Plot Excavation for cuttings (all types of soil) | 21d | 2026-05-04 A | 2026-05-18 A | SDR-2-CON-RW-ZG-1770, SDR-2-CON-RW-ZG-1790 | 100% |  |
| SDR-2-CON-RW-ZG-2460 |  | Embankments to the Plot1 Layer | 21d | 2026-05-18 A | 2026-05-24 A | SDR-2-CON-RW-ZG-1800 | 100% |  |
| SDR-2-CON-RW-ZG-1810 |  | Embankments to the Plot 2 Layer | 21d | 2026-05-24 A | 2026-09-07 A | SDR-2-CON-RW-ZG-2460 | 100% |  |
|  | 2 | **Base Course** |  | 2026-08-31 | 2026-09-14 |  |  |  |
| SDR-2-CON-RW-ZG-1820 |  | Aggregate base course layer | 21d | 2026-08-31 A | 2026-09-14 A | SDR-2-CON-RW-ZG-1790 | 100% |  |
|  | 8 | **Demolition Work** |  | 2026-11-09 | 2026-12-07 |  |  |  |
| SDR-2-CON-RW-ZG-1830 |  | Removal of curbstone | 7d | 2026-11-09 | 2026-11-16 | SDR-2-CON-RW-ZG-1820 |  | 15d |
| SDR-2-CON-RW-ZG-1840 |  | Milling of wearing course | 7d | 2026-11-30 | 2026-12-07 | SDR-2-CON-RW-ZG-2590, SDR-2-CON-RW-ZG-1830 |  | 4d |
|  | 3 | **Asphalt Works** |  | 2026-09-15 | 2026-12-31 |  |  |  |
| SDR-2-CON-RW-ZG-1850 |  | Asphalt works 1st Layer with MC-01 | 17d | 2026-09-15 A | 2026-09-24 A | SDR-2-CON-RW-ZG-1820 FF, SDR-2-CON-RW-ZG-1840 FF | 100% |  |
| SDR-2-CON-RW-ZG-1860 |  | Asphalt works 2nd layer with RC-02 | 21d | 2026-12-08 | 2026-12-31 | SDR-2-CON-RW-ZG-1850 |  | 4d |
|  | 4 | **Kerbstone Installation** |  | 2026-11-09 | 2027-01-25 |  |  |  |
| SDR-2-CON-RW-ZG-2600 |  | Kerbstone Installation "all Types" Part 1 | 18d | 2026-11-09 | 2026-11-29 | SDR-2-CON-RW-ZG-1790 |  | 2d |
| SDR-2-CON-RW-ZG-1870 |  | Kerbstone Installation "all Types" Part 2 | 21d | 2027-01-02 | 2027-01-25 | SDR-2-CON-RW-ZG-1860 |  | 4d |
|  | 5 | **Interlock Installation** |  | 2027-01-26 | 2027-02-18 |  |  |  |
| SDR-2-CON-RW-ZG-1880 |  | Interlock Installation | 21d | 2027-01-26 | 2027-02-18 | SDR-2-CON-RW-ZG-1870 |  | 4d |
|  | 6 | **Road Marking** |  | 2027-02-20 | 2027-03-29 |  |  |  |
| SDR-2-CON-RW-ZG-1890 |  | Retroreflective Thermoplastic White Traffic lines | 14d | 2027-02-20 | 2027-03-08 | SDR-2-CON-RW-ZG-1880 |  | 4d |
| SDR-2-CON-RW-ZG-1900 |  | Retroreflective Thermoplastic Yellow, Traffic lines | 14d | 2027-03-14 | 2027-03-29 | SDR-2-CON-RW-ZG-1890, SDR-2-CON-RW-ZG-1810 SS |  | 4d |
|  | 7 | **Traffic Signage** |  | 2027-03-30 | 2027-04-21 |  |  |  |
| SDR-2-CON-RW-ZG-1910 |  | Single post-Traffic signs Installation | 20d | 2027-03-30 | 2027-04-21 | SDR-2-CON-RW-ZG-1810, SDR-2-CON-RW-ZG-1900 |  | 4d |
|  | 3 | **ROAD WORKS IN ( PH2-G-MCG0 )** |  | 2026-03-15 | 2027-04-24 |  |  |  |
|  | 1 | **Earth Works Road** |  | 2026-03-26 | 2026-05-13 |  |  |  |
| SDR-2-CON-RW-ZG-1920 |  | Roadway Excavation and cuttings | 21d | 2026-03-26 A | 2026-05-13 A | SDR-2-CON-RW-ZG-1770 SS | 100% |  |
|  | 10 | **Backfilling Works** |  | 2026-03-15 | 2026-07-11 |  |  |  |
| SDR-2-CON-RW-ZG-2470 |  | Embankments to the Road 1 Layer | 21d | 2026-03-15 A | 2026-04-02 A | SDR-2-CON-RW-ZG-1920 | 100% |  |
| SDR-2-CON-RW-ZG-2480 |  | Embankments to the Road 2 Layer | 21d | 2026-04-07 A | 2026-04-16 A | SDR-2-CON-RW-ZG-2470 | 100% |  |
| SDR-2-CON-RW-ZG-2490 |  | Embankments to the Road 3 Layer | 21d | 2026-04-25 A | 2026-05-07 A | SDR-2-CON-RW-ZG-2480 | 100% |  |
| SDR-2-CON-RW-ZG-1930 |  | Embankments to the Road 4 Layer | 21d | 2026-05-02 A | 2026-07-11 A | SDR-2-CON-RW-ZG-2490 FS+3d | 100% |  |
|  | 11 | **Subgrade** |  | 2026-08-15 | 2026-08-31 |  |  |  |
| SDR-2-CON-RW-ZG-1940 |  | Subgrade layer works | 21d | 2026-08-15 A | 2026-08-31 A | SDR-2-CON-RW-ZG-1930 FS+3d | 100% |  |
|  | 9 | **Earth Works Plot** |  | 2026-05-18 | 2026-11-10 |  |  |  |
| SDR-2-CON-RW-ZG-1950 |  | Plot Excavation for cuttings (all types of soil) | 21d | 2026-05-18 A | 2026-11-09 | SDR-2-CON-RW-ZG-1920, SDR-2-CON-RW-ZG-1940 | 55% | 18d |
| SDR-2-CON-RW-ZG-2500 |  | Embankments to the Plot 1 Layer | 21d | 2026-06-11 A | 2026-11-09 | SDR-2-CON-RW-ZG-1950 FF | 80% | 54d |
| SDR-2-CON-RW-ZG-1960 |  | Embankments to the Plot 2 Layer | 21d | 2026-06-22 A | 2026-11-10 | SDR-2-CON-RW-ZG-2500 | 55% | 70d |
|  | 2 | **Base Course** |  | 2026-08-27 | 2026-09-03 |  |  |  |
| SDR-2-CON-RW-ZG-1970 |  | Aggregate base course layer | 21d | 2026-08-27 A | 2026-09-03 A | SDR-2-CON-RW-ZG-1940 | 100% |  |
|  | 8 | **Demolition Work** |  | 2026-11-09 | 2026-12-15 |  |  |  |
| SDR-2-CON-RW-ZG-1980 |  | Removal of curbstone | 8d | 2026-11-09 | 2026-11-17 | SDR-2-CON-RW-ZG-1970, SDR-2-CON-RW-ZG-1950 SS |  | 18d |
| SDR-2-CON-RW-ZG-1990 |  | Milling of wearing course | 8d | 2026-12-07 | 2026-12-15 | SDR-2-CON-RW-ZG-2610, SDR-2-CON-RW-ZG-2600 FS+6d, SDR-2-CON-RW-ZG-1980 |  | 2d |
|  | 3 | **Asphalt Works** |  | 2026-09-05 | 2027-01-03 |  |  |  |

| ID | WBS | Task | Duration | Start | Finish | Predecessors | Complete | Total float |
| --- | --- | --- | --- | --- | --- | --- | --- | --- |
| SDR-2-CON-RW-ZG-2000 |  | Asphalt works 1st Layer with MC-01 | 12d | 2026-09-05 A | 2026-09-24 A | SDR-2-CON-RW-ZG-1970, SDR-2-CON-RW-ZG-1990 FF | 100% |  |
| SDR-2-CON-RW-ZG-2010 |  | Asphalt works 2nd layer with RC-02 | 16d | 2026-12-16 | 2027-01-03 | SDR-2-CON-RW-ZG-2460, SDR-2-CON-RW-ZG-2000 |  | 2d |
|  | 4 | **Kerbstone Installation** |  | 2026-11-09 | 2027-01-27 |  |  |  |
| SDR-2-CON-RW-ZG-2610 |  | Kerbstone Installation "all Types" Part 1 | 18d | 2026-11-09 | 2026-11-29 | SDR-2-CON-RW-ZG-1940 |  | 8d |
| SDR-2-CON-RW-ZG-2020 |  | Kerbstone Installation "all Types" Part 2 | 21d | 2027-01-04 | 2027-01-27 | SDR-2-CON-RW-ZG-1810, SDR-2-CON-RW-ZG-2420, SDR-2-CON-RW-ZG-2010 |  | 2d |
|  | 5 | **Interlock Installation** |  | 2027-01-28 | 2027-02-21 |  |  |  |
| SDR-2-CON-RW-ZG-2030 |  | Interlock Installation | 21d | 2027-01-28 | 2027-02-21 | SDR-2-CON-RW-ZG-2020, SDR-2-CON-RW-ZG-1960 SS |  | 2d |
|  | 6 | **Road Marking** |  | 2027-02-23 | 2027-03-31 |  |  |  |
| SDR-2-CON-RW-ZG-2040 |  | Retroreflective Thermoplastic White Traffic lines | 14d | 2027-02-23 | 2027-03-15 | SDR-2-CON-RW-ZG-2030 |  | 2d |
| SDR-2-CON-RW-ZG-2050 |  | Retroreflective Thermoplastic Yellow, Traffic lines | 14d | 2027-03-16 | 2027-03-31 | SDR-2-CON-RW-ZG-2040 |  | 2d |
|  | 7 | **Traffic Signage** |  | 2027-04-01 | 2027-04-24 |  |  |  |
| SDR-2-CON-RW-ZG-2060 |  | Single post-Traffic signs Installation | 20d | 2027-04-01 | 2027-04-24 | SDR-2-CON-RW-ZG-1960, SDR-2-CON-RW-ZG-2050 |  | 2d |
|  | 7 | **ROAD WORKS IN ( PH2-G-MCZ0 )** |  | 2026-03-29 | 2027-03-31 |  |  |  |
|  | 1 | **Earth Works Road** |  | 2026-03-29 | 2026-05-14 |  |  |  |
| SDR-2-CON-RW-ZG-2070 |  | Roadway Excavation and cuttings | 21d | 2026-03-29 A | 2026-05-14 A | SDR-2-CON-RW-ZG-1920 SS | 100% |  |
|  | 10 | **Backfilling Works** |  | 2026-03-29 | 2026-07-08 |  |  |  |
| SDR-2-CON-RW-ZG-2510 |  | Embankments to the Road 1 Layer | 21d | 2026-03-29 A | 2026-04-08 A | SDR-2-CON-RW-ZG-2070 | 100% |  |
| SDR-2-CON-RW-ZG-2520 |  | Embankments to the Road 2 Layer | 21d | 2026-04-28 A | 2026-05-24 A | SDR-2-CON-RW-ZG-2510 | 100% |  |
| SDR-2-CON-RW-ZG-2530 |  | Embankments to the Road 3 Layer | 21d | 2026-05-18 A | 2026-05-31 A | SDR-2-CON-RW-ZG-2520 | 100% |  |
| SDR-2-CON-RW-ZG-2080 |  | Embankments to the Road 4 Layer | 21d | 2026-05-24 A | 2026-07-08 A | SDR-2-CON-RW-ZG-2530 | 100% |  |
|  | 11 | **Subgrade** |  | 2026-08-20 | 2026-09-09 |  |  |  |
| SDR-2-CON-RW-ZG-2090 |  | Subgrade layer works | 21d | 2026-08-20 A | 2026-09-09 A | SDR-2-CON-RW-ZG-2080 | 100% |  |
|  | 9 | **Earth Works Plot** |  | 2026-04-30 | 2026-05-24 |  |  |  |
| SDR-2-CON-RW-ZG-2100 |  | Plot Excavation for cuttings (all types of soil) | 21d | 2026-04-30 A | 2026-05-10 A | SDR-2-CON-RW-ZG-2070, SDR-2-CON-RW-ZG-2090 | 100% |  |
| SDR-2-CON-RW-ZG-2540 |  | Embankments to the Plot 1 Layer | 21d | 2026-05-10 A | 2026-05-17 A | SDR-2-CON-RW-ZG-2070, SDR-2-CON-RW-ZG-2100 | 100% |  |
| SDR-2-CON-RW-ZG-2110 |  | Embankments to the Plot 2 Layer | 21d | 2026-05-17 A | 2026-05-24 A | SDR-2-CON-RW-ZG-2540 | 100% |  |
|  | 2 | **Base Course** |  | 2026-09-10 | 2026-09-17 |  |  |  |
| SDR-2-CON-RW-ZG-2120 |  | Aggregate base course layer | 21d | 2026-09-10 A | 2026-09-17 A | SDR-2-CON-RW-ZG-2090 | 100% |  |
|  | 8 | **Demolition Work** |  | 2026-11-02 | 2026-11-25 |  |  |  |
| SDR-2-CON-RW-ZG-2130 |  | Removal of curbstone | 5d | 2026-11-02 A | 2026-11-14 | SDR-2-PRO-DEL-E-1190, SDR-2-CON-RW-ZG-2120 | 50% | 22d |
| SDR-2-CON-RW-ZG-2140 |  | Milling of wearing course | 10d | 2026-11-15 | 2026-11-25 | SDR-2-CON-RW-ZG-2130, SDR-2-CON-RW-ZG-2100 |  | 22d |
|  | 3 | **Asphalt Works** |  | 2026-09-14 | 2026-12-10 |  |  |  |
| SDR-2-CON-RW-ZG-2150 |  | Asphalt works 1st Layer with MC-01 | 12d | 2026-09-14 A | 2026-09-26 A | SDR-2-CON-RW-ZG-2120, SDR-2-CON-RW-ZG-2140 FF | 100% |  |
| SDR-2-CON-RW-ZG-2160 |  | Asphalt works 2nd layer with RC-02 | 13d | 2026-11-26 | 2026-12-10 | SDR-2-CON-RW-ZG-2150 |  | 22d |
|  | 4 | **Kerbstone Installation** |  | 2026-11-09 | 2027-01-04 |  |  |  |
| SDR-2-CON-RW-ZG-2620 |  | Kerbstone Installation "all Types" Part 1 | 18d | 2026-11-09 | 2026-11-29 | SDR-2-CON-RW-ZG-2120 |  | 32d |
| SDR-2-CON-RW-ZG-2170 |  | Kerbstone Installation "all Types" Part 2 | 21d | 2026-12-12 | 2027-01-04 | SDR-2-CON-RW-ZG-2160, SDR-2-CON-RW-ZG-2620 |  | 22d |
|  | 5 | **Interlock Installation** |  | 2027-01-05 | 2027-01-28 |  |  |  |
| SDR-2-CON-RW-ZG-2180 |  | Interlock Installation | 21d | 2027-01-05 | 2027-01-28 | SDR-2-CON-RW-ZG-2170 |  | 22d |
|  | 6 | **Road Marking** |  | 2027-01-30 | 2027-03-03 |  |  |  |
| SDR-2-CON-RW-ZG-2190 |  | Retroreflective Thermoplastic White Traffic lines | 14d | 2027-01-30 | 2027-02-14 | SDR-2-CON-RW-ZG-2180 |  | 22d |
| SDR-2-CON-RW-ZG-2200 |  | Retroreflective Thermoplastic Yellow, Traffic lines | 14d | 2027-02-15 | 2027-03-03 | SDR-2-CON-RW-ZG-2190, SDR-2-CON-RW-ZG-2110 SS |  | 22d |
|  | 7 | **Traffic Signage** |  | 2027-03-04 | 2027-03-31 |  |  |  |
| SDR-2-CON-RW-ZG-2210 |  | Single post-Traffic signs Installation | 20d | 2027-03-04 | 2027-03-31 | SDR-2-CON-RW-ZG-2110, SDR-2-CON-RW-ZG-2200 |  | 22d |
|  | ST | **Storm Water Drainage Network** |  | 2026-03-24 | 2027-06-01 |  |  |  |
|  | ZA | **ZONE A** |  | 2026-03-24 | 2027-06-01 |  |  |  |
|  | 11 | **STORM WATER LINE IN ( PH2-A-MCB0 )** |  | 2026-05-19 | 2027-03-20 |  |  |  |
|  | 8 | **Pipes Works** |  | 2026-05-19 | 2027-02-23 |  |  |  |
|  | 1 | **Excavation** |  | 2026-05-19 | 2026-07-07 |  |  |  |
| SDR-2-CON-ST-ZA-6900 |  | Excavation for GRP Pipes Section 1 | 21d | 2026-05-19 A | 2026-05-31 A | SDR-2-CON-RW-ZA-2870, SDR-2-ENG-APP-M-1130, SDR-2-PRO-MSS-C-1080 FS+2d, SDR-2-PRO-ST-M-1000, SDR-2-PRO-DEL-M-1040 SS, SDR-2-PRO-DES-C-1030 SS | 100% |  |
| SDR-2-CON-ST-ZA-6360 |  | Excavation for GRP Pipes Section 2 | 21d | 2026-06-01 A | 2026-06-08 A | SDR-2-CON-ST-ZA-6900 | 100% |  |
| SDR-2-CON-ST-ZA-1000 |  | Excavation for GRP Pipes Section 3 | 21d | 2026-06-08 A | 2026-07-07 A | SDR-2-CON-ST-ZA-6360, SDR-2-PRO-DES-C-1070, SDR-2-PRO-DEL-M-1020 SS | 100% |  |
|  | 7 | **bedding Works** |  | 2026-06-27 | 2026-07-09 |  |  |  |
| SDR-2-CON-ST-ZA-3450 |  | Sand bedding for GRP Pipes | 21d | 2026-06-27 A | 2026-07-09 A | SDR-2-CON-ST-ZA-1000 FS+4d | 100% |  |
|  | 2 | **Pipes Laying** |  | 2026-08-20 | 2027-01-26 |  |  |  |
| SDR-2-CON-ST-ZA-1090 |  | Install ST GRP Pipes | 21d | 2026-08-20 A | 2027-01-26 | SDR-2-PRO-DES-C-1020 FF, SDR-2-CON-ST-ZA-3450 | 75% | 12.1d |
|  | 6 | **Testing** |  | 2027-01-26 | 2027-02-20 |  |  |  |
| SDR-2-CON-ST-ZA-3440 |  | Testing ST GRP Pipes | 21d | 2027-01-26 | 2027-02-20 | SDR-2-PRO-DEL-E-1200, SDR-2-CON-ST-ZA-1090 |  | 12.1d |
|  | 3 | **Backfilling** |  | 2027-01-28 | 2027-02-23 |  |  |  |
| SDR-2-CON-ST-ZA-1140 |  | Backfilling ST GRP Pipes | 21d | 2027-01-28 | 2027-02-23 | SDR-2-CON-ST-ZA-3440 SS+2d |  | 12.1d |
|  | 4 | **Manholes** |  | 2026-06-08 | 2027-03-03 |  |  |  |
|  | 1 | **Excavation** |  | 2026-06-08 | 2026-12-28 |  |  |  |
| SDR-2-CON-ST-ZA-6910 |  | Excavation Manholes Section 1 | 21d | 2026-06-08 A | 2026-08-31 A | SDR-2-CON-ST-ZA-6900 SS, SDR-2-PRO-DEL-M-1030 SS, SDR-2-PRO-ST-M-1050 SS | 100% |  |
| SDR-2-CON-ST-ZA-6370 |  | Excavation Manholes Section 2 | 21d | 2026-06-15 A | 2026-06-22 A | SDR-2-CON-ST-ZA-6910 | 100% |  |
| SDR-2-CON-ST-ZA-1210 |  | Excavation Manholes Section 3 | 21d | 2026-06-22 A | 2026-12-28 | SDR-2-CON-ST-ZA-6370, SDR-2-PRO-DEL-E-1090 FF | 90% | 13d |
|  | 2 | **bedding Works** |  | 2026-08-20 | 2027-01-06 |  |  |  |
| SDR-2-CON-ST-ZA-3520 |  | Sand bedding for Manholes | 21d | 2026-08-20 A | 2027-01-06 | SDR-2-PRO-DEL-E-1050, SDR-2-CON-ST-ZA-1210 FF, SDR-2-PRO-DES-C-1060 FF | 50% | 5d |
|  | 3 | **Install Manholes** |  | 2026-08-20 | 2027-01-06 |  |  |  |
| SDR-2-CON-ST-ZA-3600 |  | Manholes Installation | 21d | 2026-08-20 A | 2027-01-06 | SDR-2-CON-ST-ZA-3520 FF, SDR-2-PRO-DEL-M-1030 FF, SDR-2-PRO-DEL-M-1020 FF, SDR-2-PRO-ST-E-1070 FF, SDR-2-CON-RW-ZG-2600 FF | 50% | 5d |
|  | 4 | **Testing** |  | 2027-01-13 | 2027-02-06 |  |  |  |

| ID | WBS | Task | Duration | Start | Finish | Predecessors | Complete | Total float |
| --- | --- | --- | --- | --- | --- | --- | --- | --- |
| SDR-2-CON-ST-ZA-3680 |  | Testing for Manholes | 21d | 2027-01-13 | 2027-02-06 | SDR-2-CON-ST-ZA-3600 FS+5d |  | 5d |
|  | 5 | **Backfilling** |  | 2027-02-07 | 2027-03-03 |  |  |  |
| SDR-2-CON-ST-ZA-3760 |  | Backfilling for Manholes | 21d | 2027-02-07 | 2027-03-03 | SDR-2-CON-ST-ZA-3680 |  | 5d |
|  | 5 | **Catch basin** |  | 2026-08-16 | 2027-03-20 |  |  |  |
|  | 1 | **Excavation** |  | 2026-08-16 | 2026-12-03 |  |  |  |
| SDR-2-CON-ST-ZA-6930 |  | Excavation for Catch basin Section 1 | 21d | 2026-08-16 A | 2026-11-09 | SDR-2-CON-ST-ZA-6370, SDR-2-CON-ST-ZA-6910, SDR-2-PRO-ST-M-1040 FF | 60% | 81d |
| SDR-2-CON-ST-ZA-1300 |  | Excavation for Catch basin Section 2 | 21d | 2026-10-19 A | 2026-12-03 | SDR-2-CON-ST-ZA-6930 | 10% | 81d |
|  | 2 | **bedding Works** |  | 2026-10-20 | 2026-12-28 |  |  |  |
| SDR-2-CON-ST-ZA-3840 |  | Sand Dedding for Catch basin | 21d | 2026-10-20 A | 2026-12-28 | SDR-2-CON-ST-ZA-1300 | 10% | 81d |
|  | 3 | **Install Catch basin** |  | 2026-10-22 | 2027-01-21 |  |  |  |
| SDR-2-CON-ST-ZA-3900 |  | Install Catch basin | 21d | 2026-10-22 A | 2027-01-21 | SDR-2-CON-RW-ZA-2740, SDR-2-CON-ST-ZA-3840 | 10% | 81d |
|  | 4 | **Testing** |  | 2027-01-13 | 2027-02-06 |  |  |  |
| SDR-2-CON-ST-ZA-3960 |  | Testing for Catch basin pipe | 21d | 2027-01-13 | 2027-02-06 | SDR-2-CON-ST-ZA-3900 SS, SDR-2-MILS-1100 |  | 68d |
|  | 5 | **Backfilling** |  | 2027-01-13 | 2027-03-20 |  |  |  |
| SDR-2-CON-ST-ZA-6940 |  | Backfilling for Catch basin Section 1 | 11d | 2027-01-13 | 2027-01-25 | SDR-2-CON-ST-ZA-3960 SS |  | 80d |
| SDR-2-CON-ST-ZA-4020 |  | Backfilling for Catch basin Section 2 | 10d | 2027-03-04 | 2027-03-20 | SDR-2-CON-ST-ZA-6940 SS, SDR-2-CON-RW-ZG-2210 SS |  | 47d |
|  | 12 | **STORM WATER LINE IN ( PH2-A-MCD0 )** |  | 2026-06-01 | 2027-05-05 |  |  |  |
|  | 8 | **Pipes Works** |  | 2026-06-08 | 2026-12-28 |  |  |  |
|  | 1 | **Excavation** |  | 2026-06-08 | 2026-07-14 |  |  |  |
| SDR-2-CON-ST-ZA-6950 |  | Excavation for GRP Pipes Section 1 | 21d | 2026-06-08 A | 2026-06-15 A | SDR-2-CON-ST-ZA-6900 SS+3d | 100% |  |
| SDR-2-CON-ST-ZA-6390 |  | Excavation for GRP Pipes Section 2 | 21d | 2026-06-15 A | 2026-06-22 A | SDR-2-CON-ST-ZA-6950 | 100% |  |
| SDR-2-CON-ST-ZA-4030 |  | Excavation for GRP Pipes Section 3 | 21d | 2026-06-22 A | 2026-07-14 A | SDR-2-CON-ST-ZA-6390 | 100% |  |
|  | 7 | **bedding Works** |  | 2026-08-20 | 2026-11-09 |  |  |  |
| SDR-2-CON-ST-ZA-4090 |  | Sand bedding for GRP Pipes | 21d | 2026-08-20 A | 2026-11-09 | SDR-2-CON-ST-ZA-4030 FF, SDR-2-CON-ST-ZA-4030 | 80% | 58d |
|  | 2 | **Pipes Laying** |  | 2026-08-26 | 2026-11-09 |  |  |  |
| SDR-2-CON-ST-ZA-4040 |  | Install ST GRP Pipes | 21d | 2026-08-26 A | 2026-11-09 | SDR-2-CON-ST-ZA-4090 FF | 80% | 58d |
|  | 6 | **Testing** |  | 2026-11-10 | 2026-12-03 |  |  |  |
| SDR-2-CON-ST-ZA-4080 |  | Testing ST GRP Pipes | 21d | 2026-11-10 | 2026-12-03 | SDR-2-CON-ST-ZA-4040 |  | 58d |
|  | 3 | **Backfilling** |  | 2026-12-05 | 2026-12-28 |  |  |  |
| SDR-2-CON-ST-ZA-4050 |  | Backfilling ST GRP Pipes | 21d | 2026-12-05 | 2026-12-28 | SDR-2-CON-RW-ZG-1210, SDR-2-CON-ST-ZA-4080 |  | 58d |
|  | 4 | **Manholes** |  | 2026-06-01 | 2026-12-29 |  |  |  |
|  | 1 | **Excavation** |  | 2026-06-01 | 2026-08-31 |  |  |  |
| SDR-2-CON-ST-ZA-6960 |  | Excavation Manholes Section 1 | 21d | 2026-06-01 A | 2026-08-31 A | SDR-2-CON-ST-ZA-6950 SS | 100% |  |
| SDR-2-CON-ST-ZA-6400 |  | Excavation Manholes Section 2 | 21d | 2026-06-08 A | 2026-06-15 A | SDR-2-CON-ST-ZA-6960 | 100% |  |
| SDR-2-CON-ST-ZA-4060 |  | Excavation Manholes Section 3 | 21d | 2026-07-13 A | 2026-07-20 A | SDR-2-CON-ST-ZA-6400 | 100% |  |
|  | 2 | **bedding Works** |  | 2026-08-27 | 2026-11-09 |  |  |  |
| SDR-2-CON-ST-ZA-4100 |  | Sand bedding for Manholes | 21d | 2026-08-27 A | 2026-11-09 | SDR-2-CON-ST-ZA-4060 | 75% | 92.91d |
|  | 3 | **Install Manholes** |  | 2026-08-30 | 2026-11-10 |  |  |  |
| SDR-2-CON-ST-ZA-4110 |  | Manholes Installation | 21d | 2026-08-30 A | 2026-11-10 | SDR-2-CON-ST-ZA-4100 FF | 75% | 91d |
|  | 4 | **Testing** |  | 2026-11-11 | 2026-12-05 |  |  |  |
| SDR-2-CON-ST-ZA-4120 |  | Testing for Manholes | 21d | 2026-11-11 | 2026-12-05 | SDR-2-CON-ST-ZA-4110 |  | 92d |
|  | 5 | **Backfilling** |  | 2026-12-06 | 2026-12-29 |  |  |  |
| SDR-2-CON-ST-ZA-4130 |  | Backfilling for Manholes | 21d | 2026-12-06 | 2026-12-29 | SDR-2-CON-ST-ZA-4120 |  | 92d |
|  | 5 | **Catch basin** |  | 2026-08-16 | 2027-05-05 |  |  |  |
|  | 1 | **Excavation** |  | 2026-08-16 | 2026-12-27 |  |  |  |
| SDR-2-CON-ST-ZA-6970 |  | Excavation for Catch basin Section 1 | 21d | 2026-08-16 A | 2026-11-10 | SDR-2-CON-ST-ZA-4110 FF | 50% | 91d |
| SDR-2-CON-ST-ZA-6410 |  | Excavation for Catch basin Section 2 | 21d | 2026-11-11 | 2026-12-05 | SDR-2-CON-ST-ZA-6970 |  | 91d |
| SDR-2-CON-ST-ZA-4070 |  | Excavation for Catch basin Section 3 | 19d | 2026-12-06 | 2026-12-27 | SDR-2-CON-ST-ZA-6410 |  | 91d |
|  | 2 | **bedding Works** |  | 2027-01-26 | 2027-02-18 |  |  |  |
| SDR-2-CON-ST-ZA-4140 |  | Sand Dedding for Catch basin | 21d | 2027-01-26 | 2027-02-18 | SDR-2-CON-CC-ZG-1620, SDR-2-CON-ST-ZA-4070 |  | 66d |
|  | 3 | **Install Catch basin** |  | 2027-02-20 | 2027-03-21 |  |  |  |
| SDR-2-CON-ST-ZA-4150 |  | Install Catch basin | 21d | 2027-02-20 | 2027-03-21 | SDR-2-CON-ST-ZA-4140, SDR-2-CON-ST-ZA-4050 |  | 66d |
|  | 4 | **Testing** |  | 2027-04-13 | 2027-04-24 |  |  |  |
| SDR-2-CON-ST-ZA-4160 |  | Testing for Catch basin pipe | 10d | 2027-04-13 | 2027-04-24 | SDR-2-CON-RW-ZG-1310, SDR-2-CON-ST-ZA-4150 |  | 47d |
|  | 5 | **Backfilling** |  | 2027-04-25 | 2027-05-05 |  |  |  |
| SDR-2-CON-ST-ZA-4170 |  | Backfilling for Catch basin | 10d | 2027-04-25 | 2027-05-05 | SDR-2-CON-ST-ZA-4160 |  | 47d |
|  | 13 | **STORM WATER LINE IN ( PH2-A-MCE0 )** |  | 2026-07-01 | 2027-04-19 |  |  |  |
|  | 8 | **Pipes Works** |  | 2026-07-01 | 2026-12-28 |  |  |  |
|  | 1 | **Excavation** |  | 2026-07-01 | 2026-07-20 |  |  |  |
| SDR-2-CON-ST-ZA-6980 |  | Excavation for GRP Pipes Section 1 | 21d | 2026-07-01 A | 2026-07-09 A | SDR-2-CON-ST-ZA-6950 SS+5d, SDR-2-PRO-DEL-E-1040, SDR-2-PRO-DEL-E-1000 | 100% |  |
| SDR-2-CON-ST-ZA-6420 |  | Excavation for GRP Pipes Section 2 | 21d | 2026-07-09 A | 2026-07-12 A | SDR-2-CON-ST-ZA-6980, SDR-2-PRO-DES-C-1070 | 100% |  |
| SDR-2-CON-ST-ZA-4180 |  | Excavation for GRP Pipes Section 3 | 21d | 2026-07-13 A | 2026-07-20 A | SDR-2-CON-ST-ZA-6420 FS+4d | 100% |  |
|  | 7 | **bedding Works** |  | 2026-08-20 | 2026-11-09 |  |  |  |
| SDR-2-CON-ST-ZA-4240 |  | Sand bedding for GRP Pipes | 21d | 2026-08-20 A | 2026-11-09 | SDR-2-CON-ST-ZA-4180 | 75% | 55d |
|  | 2 | **Pipes Laying** |  | 2026-08-27 | 2026-11-09 |  |  |  |
| SDR-2-CON-ST-ZA-4190 |  | Install ST GRP Pipes | 21d | 2026-08-27 A | 2026-11-09 | SDR-2-CON-ST-ZA-4240 FF, SDR-2-PRO-ST-M-1020 FF | 75% | 55d |
|  | 6 | **Testing** |  | 2026-11-10 | 2026-12-03 |  |  |  |
| SDR-2-CON-ST-ZA-4230 |  | Testing ST GRP Pipes | 21d | 2026-11-10 | 2026-12-03 | SDR-2-CON-ST-ZA-4190 |  | 55d |
|  | 3 | **Backfilling** |  | 2026-12-05 | 2026-12-28 |  |  |  |
| SDR-2-CON-ST-ZA-4200 |  | Backfilling ST GRP Pipes | 21d | 2026-12-05 | 2026-12-28 | SDR-2-CON-ST-ZA-4230 |  | 55d |

| ID | WBS | Task | Duration | Start | Finish | Predecessors | Complete | Total float |
| --- | --- | --- | --- | --- | --- | --- | --- | --- |
|  | 4 | **Manholes** |  | 2026-07-01 | 2026-12-28 |  |  |  |
|  | 1 | **Excavation** |  | 2026-07-01 | 2026-08-31 |  |  |  |
| SDR-2-CON-ST-ZA-6990 |  | Excavation Manholes Section 1 | 21d | 2026-07-01 A | 2026-08-31 A | SDR-2-CON-ST-ZA-6980 SS | 100% |  |
| SDR-2-CON-ST-ZA-6430 |  | Excavation Manholes Section 2 | 21d | 2026-07-13 A | 2026-07-20 A | SDR-2-CON-ST-ZA-6990 | 100% |  |
| SDR-2-CON-ST-ZA-4210 |  | Excavation Manholes Section 3 | 21d | 2026-07-20 A | 2026-08-01 A | SDR-2-CON-ST-ZA-6430 FS+3d | 100% |  |
|  | 2 | **bedding Works** |  | 2026-08-20 | 2026-11-09 |  |  |  |
| SDR-2-CON-ST-ZA-4250 |  | Sand bedding for Manholes | 21d | 2026-08-20 A | 2026-11-09 | SDR-2-CON-ST-ZA-4210 | 50% | 79d |
|  | 3 | **Install Manholes** |  | 2026-08-27 | 2026-11-09 |  |  |  |
| SDR-2-CON-ST-ZA-4260 |  | Manholes Installation | 21d | 2026-08-27 A | 2026-11-09 | SDR-2-CON-ST-ZA-4250 FF | 50% | 79d |
|  | 4 | **Testing** |  | 2026-11-10 | 2026-12-03 |  |  |  |
| SDR-2-CON-ST-ZA-4270 |  | Testing for Manholes | 21d | 2026-11-10 | 2026-12-03 | SDR-2-CON-ST-ZA-4260 |  | 79d |
|  | 5 | **Backfilling** |  | 2026-12-05 | 2026-12-28 |  |  |  |
| SDR-2-CON-ST-ZA-4280 |  | Backfilling for Manholes | 21d | 2026-12-05 | 2026-12-28 | SDR-2-CON-ST-ZA-4270 |  | 79d |
|  | 5 | **Catch basin** |  | 2026-08-16 | 2027-04-19 |  |  |  |
|  | 1 | **Excavation** |  | 2026-08-16 | 2026-10-15 |  |  |  |
| SDR-2-CON-ST-ZA-6440 |  | Excavation for Catch basin Section 1 | 21d | 2026-08-16 A | 2026-10-06 A | SDR-2-CON-ST-ZA-4260 FF | 100% |  |
| SDR-2-CON-ST-ZA-4220 |  | Excavation for Catch basin Section 2 | 21d | 2026-09-17 A | 2026-10-15 A | SDR-2-CON-ST-ZA-6440 FS+7d | 100% |  |
|  | 2 | **bedding Works** |  | 2026-10-07 | 2027-02-18 |  |  |  |
| SDR-2-CON-ST-ZA-4290 |  | Sand Dedding for Catch basin | 21d | 2026-10-07 A | 2027-02-18 | SDR-2-CON-CC-ZG-1620, SDR-2-CON-ST-ZA-4220 | 70% | 21d |
|  | 3 | **Install Catch basin** |  | 2026-10-07 | 2027-03-21 |  |  |  |
| SDR-2-CON-ST-ZA-4300 |  | Install Catch basin | 21d | 2026-10-07 A | 2027-03-21 | SDR-2-CON-ST-ZA-4290 | 70% | 21d |
|  | 4 | **Testing** |  | 2027-03-28 | 2027-04-07 |  |  |  |
| SDR-2-CON-ST-ZA-4310 |  | Testing for Catch basin pipe | 10d | 2027-03-28 | 2027-04-07 | SDR-2-CON-ST-ZA-4300 FS+5d |  | 21d |
|  | 5 | **Backfilling** |  | 2027-04-08 | 2027-04-19 |  |  |  |
| SDR-2-CON-ST-ZA-4320 |  | Backfilling for Catch basin | 10d | 2027-04-08 | 2027-04-19 | SDR-2-CON-ST-ZA-3960, SDR-2-CON-ST-ZA-4310, SDR-2-CON-ST-ZA-4280, SDR-2-CON-ST-ZA-4130, SDR-2-CON-ST-ZA-3760 |  | 21d |
|  | 14 | **STORM WATER LINE IN ( PH2-A-MCF0 )** |  | 2026-06-22 | 2027-04-21 |  |  |  |
|  | 8 | **Pipes Works** |  | 2026-06-22 | 2027-01-20 |  |  |  |
|  | 1 | **Excavation** |  | 2026-06-22 | 2026-07-13 |  |  |  |
| SDR-2-CON-ST-ZA-7000 |  | Excavation for GRP Pipes Section 1 | 21d | 2026-06-22 A | 2026-06-30 A | SDR-2-CON-ST-ZA-6980 SS+4d, SDR-2-PRO-DEL-E-1050, SDR-2-PRO-DEL-E-1130 SS | 100% |  |
| SDR-2-CON-ST-ZA-6450 |  | Excavation for GRP Pipes Section 2 | 21d | 2026-06-30 A | 2026-07-06 A | SDR-2-CON-ST-ZA-7000 | 100% |  |
| SDR-2-CON-ST-ZA-4330 |  | Excavation for GRP Pipes Section 3 | 21d | 2026-07-06 A | 2026-07-13 A | SDR-2-CON-ST-ZA-6450 | 100% |  |
|  | 7 | **bedding Works** |  | 2026-09-21 | 2026-12-02 |  |  |  |
| SDR-2-CON-ST-ZA-4390 |  | Sand bedding for GRP Pipes | 21d | 2026-09-21 A | 2026-12-02 | SDR-2-CON-ST-ZA-4330 | 75% | 36d |
|  | 2 | **Pipes Laying** |  | 2026-10-01 | 2026-12-02 |  |  |  |
| SDR-2-CON-ST-ZA-4340 |  | Install ST GRP Pipes | 21d | 2026-10-01 A | 2026-12-02 | SDR-2-CON-ST-ZA-4390 FF | 75% | 36d |
|  | 6 | **Testing** |  | 2026-12-03 | 2026-12-27 |  |  |  |
| SDR-2-CON-ST-ZA-4380 |  | Testing ST GRP Pipes | 21d | 2026-12-03 | 2026-12-27 | SDR-2-CON-ST-ZA-4340 |  | 36d |
|  | 3 | **Backfilling** |  | 2026-12-28 | 2027-01-20 |  |  |  |
| SDR-2-CON-ST-ZA-4350 |  | Backfilling ST GRP Pipes | 21d | 2026-12-28 | 2027-01-20 | SDR-2-CON-ST-ZA-4380 |  | 36d |
|  | 4 | **Manholes** |  | 2026-06-30 | 2027-02-08 |  |  |  |
|  | 1 | **Excavation** |  | 2026-06-30 | 2026-11-09 |  |  |  |
| SDR-2-CON-ST-ZA-6460 |  | Excavation Manholes Section 1 | 21d | 2026-06-30 A | 2026-08-31 A | SDR-2-CON-ST-ZA-7000 SS | 100% |  |
| SDR-2-CON-ST-ZA-4360 |  | Excavation Manholes Section 2 | 21d | 2026-07-06 A | 2026-11-09 | SDR-2-CON-ST-ZA-6460 | 50% | 4d |
|  | 2 | **bedding Works** |  | 2026-10-08 | 2026-12-03 |  |  |  |
| SDR-2-CON-ST-ZA-4400 |  | Sand bedding for Manholes | 21d | 2026-10-08 A | 2026-12-03 | SDR-2-CON-ST-ZA-4360 | 50% | 4d |
|  | 3 | **Install Manholes** |  | 2026-10-08 | 2026-12-28 |  |  |  |
| SDR-2-CON-ST-ZA-4410 |  | Manholes Installation | 21d | 2026-10-08 A | 2026-12-28 | SDR-2-CON-ST-ZA-4400 | 50% | 4d |
|  | 4 | **Testing** |  | 2026-12-29 | 2027-01-21 |  |  |  |
| SDR-2-CON-ST-ZA-4420 |  | Testing for Manholes | 21d | 2026-12-29 | 2027-01-21 | SDR-2-CON-ST-ZA-4410 |  | 4d |
|  | 5 | **Backfilling** |  | 2027-01-16 | 2027-02-08 |  |  |  |
| SDR-2-CON-ST-ZA-4430 |  | Backfilling for Manholes | 21d | 2027-01-16 | 2027-02-08 | SDR-2-CON-ST-ZA-4420 SS+15d |  | 4d |
|  | 5 | **Catch basin** |  | 2026-08-16 | 2027-04-21 |  |  |  |
|  | 1 | **Excavation** |  | 2026-08-16 | 2026-10-25 |  |  |  |
| SDR-2-CON-ST-ZA-6470 |  | Excavation for Catch basin Section 1 | 21d | 2026-08-16 A | 2026-10-06 A | SDR-2-CON-ST-ZA-4410 FF | 100% |  |
| SDR-2-CON-ST-ZA-4370 |  | Excavation for Catch basin Section 2 | 21d | 2026-09-17 A | 2026-10-25 A | SDR-2-CON-ST-ZA-6470 | 100% |  |
|  | 2 | **bedding Works** |  | 2026-10-07 | 2027-01-21 |  |  |  |
| SDR-2-CON-ST-ZA-4440 |  | Sand Dedding for Catch basin | 21d | 2026-10-07 A | 2027-01-21 | SDR-2-CON-RW-ZG-2110, SDR-2-CON-ST-ZA-4370 | 65% | 19d |
|  | 3 | **Install Catch basin** |  | 2026-10-07 | 2027-02-15 |  |  |  |
| SDR-2-CON-ST-ZA-4450 |  | Install Catch basin | 21d | 2026-10-07 A | 2027-02-15 | SDR-2-CON-ST-ZA-4440 | 65% | 19d |
|  | 4 | **Testing** |  | 2027-02-16 | 2027-03-17 |  |  |  |
| SDR-2-CON-ST-ZA-4460 |  | Testing for Catch basin pipe | 21d | 2027-02-16 | 2027-03-17 | SDR-2-CON-ST-ZA-4450 |  | 19d |
|  | 5 | **Backfilling** |  | 2027-03-18 | 2027-04-21 |  |  |  |
| SDR-2-CON-ST-ZA-7010 |  | Backfilling for Catch basin Section 1 | 15d | 2027-03-18 | 2027-04-04 | SDR-2-CON-ST-ZA-4460 |  | 19d |
| SDR-2-CON-ST-ZA-4470 |  | Backfilling for Catch basin Section 2 | 15d | 2027-04-05 | 2027-04-21 | SDR-2-CON-ST-ZA-7010, SDR-2-CON-RW-ZG-2210 |  | 19d |
|  | 15 | **STORM WATER LINE IN ( PH2-A-MCG0 )** |  | 2026-07-01 | 2027-05-11 |  |  |  |
|  | 8 | **Pipes Works** |  | 2026-07-01 | 2027-02-14 |  |  |  |
|  | 1 | **Excavation** |  | 2026-07-01 | 2026-07-20 |  |  |  |
| SDR-2-CON-ST-ZA-6480 |  | Excavation for GRP Pipes Section 1 | 21d | 2026-07-01 A | 2026-07-11 A | SDR-2-CON-ST-ZA-7000 SS+4d, SDR-2-PRO-DES-E-1020 SS | 100% |  |
| SDR-2-CON-ST-ZA-4480 |  | Excavation for GRP Pipes Section 2 | 21d | 2026-07-12 A | 2026-07-20 A | SDR-2-CON-ST-ZA-6480 | 100% |  |
|  | 7 | **bedding Works** |  | 2026-10-08 | 2026-12-02 |  |  |  |

| ID | WBS | Task | Duration | Start | Finish | Predecessors | Complete | Total float |
| --- | --- | --- | --- | --- | --- | --- | --- | --- |
| SDR-2-CON-ST-ZA-4540 |  | Sand bedding for GRP Pipes | 21d | 2026-10-08 A | 2026-12-02 | SDR-2-CON-ST-ZA-4480 | 75% | 22d |
|  | 2 | **Pipes Laying** |  | 2026-10-08 | 2026-12-27 |  |  |  |
| SDR-2-CON-ST-ZA-4490 |  | Install ST GRP Pipes | 21d | 2026-10-08 A | 2026-12-27 | SDR-2-CON-ST-ZA-4540 | 75% | 22d |
|  | 6 | **Testing** |  | 2026-12-28 | 2027-01-20 |  |  |  |
| SDR-2-CON-ST-ZA-4530 |  | Testing ST GRP Pipes | 21d | 2026-12-28 | 2027-01-20 | SDR-2-CON-ST-ZA-4490 |  | 22d |
|  | 3 | **Backfilling** |  | 2027-01-21 | 2027-02-14 |  |  |  |
| SDR-2-CON-ST-ZA-4500 |  | Backfilling ST GRP Pipes | 21d | 2027-01-21 | 2027-02-14 | SDR-2-CON-ST-ZA-4530 |  | 22d |
|  | 4 | **Manholes** |  | 2026-07-20 | 2027-02-15 |  |  |  |
|  | 1 | **Excavation** |  | 2026-07-20 | 2026-11-09 |  |  |  |
| SDR-2-CON-ST-ZA-6490 |  | Excavation Manholes Section 1 | 21d | 2026-07-20 A | 2026-08-31 A | SDR-2-CON-ST-ZA-6480 SS | 100% |  |
| SDR-2-CON-ST-ZA-4510 |  | Excavation Manholes Section 2 | 21d | 2026-07-29 A | 2026-11-09 | SDR-2-CON-ST-ZA-6490 FS+3d | 75% | 10d |
|  | 2 | **bedding Works** |  | 2026-10-07 | 2026-12-03 |  |  |  |
| SDR-2-CON-ST-ZA-4550 |  | Sand bedding for Manholes | 21d | 2026-10-07 A | 2026-12-03 | SDR-2-CON-ST-ZA-4510 | 50% | 10d |
|  | 3 | **Install Manholes** |  | 2026-10-08 | 2026-12-28 |  |  |  |
| SDR-2-CON-ST-ZA-4560 |  | Manholes Installation | 21d | 2026-10-08 A | 2026-12-28 | SDR-2-CON-ST-ZA-4550 | 50% | 10d |
|  | 4 | **Testing** |  | 2026-12-29 | 2027-01-21 |  |  |  |
| SDR-2-CON-ST-ZA-4570 |  | Testing for Manholes | 21d | 2026-12-29 | 2027-01-21 | SDR-2-CON-ST-ZA-4560 |  | 18d |
|  | 5 | **Backfilling** |  | 2027-01-23 | 2027-02-15 |  |  |  |
| SDR-2-CON-ST-ZA-4580 |  | Backfilling for Manholes | 21d | 2027-01-23 | 2027-02-15 | SDR-2-CON-RW-ZG-2110, SDR-2-CON-ST-ZA-4570 |  | 18d |
|  | 5 | **Catch basin** |  | 2026-08-16 | 2027-05-11 |  |  |  |
|  | 1 | **Excavation** |  | 2026-08-16 | 2027-01-21 |  |  |  |
| SDR-2-CON-ST-ZA-6500 |  | Excavation for Catch basin Section 1 | 21d | 2026-08-16 A | 2026-10-25 A | SDR-2-CON-ST-ZA-4560 FF | 100% |  |
| SDR-2-CON-ST-ZA-4520 |  | Excavation for Catch basin Section 2 | 21d | 2026-10-19 A | 2027-01-21 | SDR-2-CON-ST-ZA-6500 FS+5d | 25% | 10d |
|  | 2 | **bedding Works** |  | 2026-10-20 | 2027-02-15 |  |  |  |
| SDR-2-CON-ST-ZA-4590 |  | Sand Bedding for Catch basin | 21d | 2026-10-20 A | 2027-02-15 | SDR-2-MILS-1100, SDR-2-CON-ST-ZA-4520 | 25% | 10d |
|  | 3 | **Install Catch basin** |  | 2026-10-20 | 2027-03-17 |  |  |  |
| SDR-2-CON-ST-ZA-4600 |  | Install Catch basin | 21d | 2026-10-20 A | 2027-03-17 | SDR-2-CON-ST-ZA-4590 | 25% | 10d |
|  | 4 | **Testing** |  | 2027-03-18 | 2027-03-29 |  |  |  |
| SDR-2-CON-ST-ZA-4610 |  | Testing for Catch basin pipe | 10d | 2027-03-18 | 2027-03-29 | SDR-2-CON-ST-ZA-4600 |  | 10d |
|  | 5 | **Backfilling** |  | 2027-03-30 | 2027-05-11 |  |  |  |
| SDR-2-CON-ST-ZA-7020 |  | Backfilling for Catch basin Section 1 | 14d | 2027-03-30 | 2027-04-14 | SDR-2-CON-ST-ZA-4610 |  | 10d |
| SDR-2-CON-ST-ZA-4620 |  | Backfilling for Catch basin Section 2 | 15d | 2027-04-25 | 2027-05-11 | SDR-2-CON-ST-ZA-7020, SDR-2-CON-RW-ZG-2060 |  | 2d |
|  | 16 | **STORM WATER LINE IN ( PH2-A-MCH0 )** |  | 2026-07-01 | 2027-05-09 |  |  |  |
|  | 8 | **Pipes Works** |  | 2026-07-01 | 2027-02-14 |  |  |  |
|  | 1 | **Excavation** |  | 2026-07-01 | 2026-07-20 |  |  |  |
| SDR-2-CON-ST-ZA-6510 |  | Excavation for GRP Pipes Section 1 | 21d | 2026-07-01 A | 2026-07-11 A | SDR-2-CON-ST-ZA-6480 SS | 100% |  |
| SDR-2-CON-ST-ZA-4630 |  | Excavation for GRP Pipes Section 2 | 21d | 2026-07-12 A | 2026-07-20 A | SDR-2-CON-ST-ZA-6510 | 100% |  |
|  | 7 | **bedding Works** |  | 2026-10-10 | 2026-12-02 |  |  |  |
| SDR-2-CON-ST-ZA-4690 |  | Sand bedding for GRP Pipes | 21d | 2026-10-10 A | 2026-12-02 | SDR-2-CON-ST-ZA-4630 | 30% | 1d |
|  | 2 | **Pipes Laying** |  | 2026-10-10 | 2026-12-27 |  |  |  |
| SDR-2-CON-ST-ZA-4640 |  | Install ST GRP Pipes | 21d | 2026-10-10 A | 2026-12-27 | SDR-2-CON-ST-ZA-4690 | 30% | 1d |
|  | 6 | **Testing** |  | 2026-12-28 | 2027-01-20 |  |  |  |
| SDR-2-CON-ST-ZA-4680 |  | Testing ST GRP Pipes | 21d | 2026-12-28 | 2027-01-20 | SDR-2-CON-ST-ZA-4640 |  | 1d |
|  | 3 | **Backfilling** |  | 2027-01-21 | 2027-02-14 |  |  |  |
| SDR-2-CON-ST-ZA-4650 |  | Backfilling ST GRP Pipes | 21d | 2027-01-21 | 2027-02-14 | SDR-2-CON-RW-ZG-2500, SDR-2-CON-ST-ZA-4680 |  | 1d |
|  | 4 | **Manholes** |  | 2026-07-01 | 2027-02-15 |  |  |  |
|  | 1 | **Excavation** |  | 2026-07-01 | 2026-11-09 |  |  |  |
| SDR-2-CON-ST-ZA-6520 |  | Excavation Manholes Section 1 | 21d | 2026-07-01 A | 2026-08-31 A | SDR-2-CON-ST-ZA-6510 SS | 100% |  |
| SDR-2-CON-ST-ZA-6350 |  | Excavation Manholes Section 2 | 21d | 2026-07-13 A | 2026-11-09 | SDR-2-CON-ST-ZA-6520 FS+3d | 60% | 5d |
|  | 2 | **bedding Works** |  | 2026-11-10 | 2026-12-03 |  |  |  |
| SDR-2-CON-ST-ZA-4700 |  | Sand bedding for Manholes | 21d | 2026-11-10 | 2026-12-03 | SDR-2-CON-ST-ZA-6350 |  | 5d |
|  | 3 | **Install Manholes** |  | 2026-12-05 | 2026-12-28 |  |  |  |
| SDR-2-CON-ST-ZA-4710 |  | Manholes Installation | 21d | 2026-12-05 | 2026-12-28 | SDR-2-CON-ST-ZA-4700 |  | 5d |
|  | 4 | **Testing** |  | 2026-12-29 | 2027-01-21 |  |  |  |
| SDR-2-CON-ST-ZA-4720 |  | Testing for Manholes | 21d | 2026-12-29 | 2027-01-21 | SDR-2-CON-ST-ZA-4710 |  | 12d |
|  | 5 | **Backfilling** |  | 2027-01-23 | 2027-02-15 |  |  |  |
| SDR-2-CON-ST-ZA-4730 |  | Backfilling for Manholes | 21d | 2027-01-23 | 2027-02-15 | SDR-2-CON-ST-ZA-4720 |  | 12d |
|  | 5 | **Catch basin** |  | 2026-08-16 | 2027-05-09 |  |  |  |
|  | 1 | **Excavation** |  | 2026-08-16 | 2027-01-21 |  |  |  |
| SDR-2-CON-ST-ZA-6530 |  | Excavation for Catch basin Section 1 | 21d | 2026-08-16 A | 2026-12-28 | SDR-2-CON-ST-ZA-4710 FF | 40% | 5d |
| SDR-2-CON-ST-ZA-4670 |  | Excavation for Catch basin Section 2 | 21d | 2026-12-29 | 2027-01-21 | SDR-2-CON-ST-ZA-6530 |  | 5d |
|  | 2 | **bedding Works** |  | 2027-01-23 | 2027-02-15 |  |  |  |
| SDR-2-CON-ST-ZA-4740 |  | Sand Dedding for Catch basin | 21d | 2027-01-23 | 2027-02-15 | SDR-2-CON-ST-ZA-4670 |  | 5d |
|  | 3 | **Install Catch basin** |  | 2027-02-23 | 2027-03-23 |  |  |  |
| SDR-2-CON-ST-ZA-4750 |  | Install Catch basin | 21d | 2027-02-23 | 2027-03-23 | SDR-2-CON-ST-ZA-4740 FS+5d |  | 5d |
|  | 4 | **Testing** |  | 2027-03-24 | 2027-04-04 |  |  |  |
| SDR-2-CON-ST-ZA-4760 |  | Testing for Catch basin pipe | 10d | 2027-03-24 | 2027-04-04 | SDR-2-CON-ST-ZA-4750 |  | 5d |
|  | 5 | **Backfilling** |  | 2027-04-05 | 2027-05-09 |  |  |  |
| SDR-2-CON-ST-ZA-7030 |  | Backfilling for Catch basin Section 1 | 14d | 2027-04-05 | 2027-04-20 | SDR-2-CON-ST-ZA-4760 |  | 5d |
| SDR-2-CON-ST-ZA-4770 |  | Backfilling for Catch basin Section 2 | 15d | 2027-04-22 | 2027-05-09 | SDR-2-CON-ST-ZA-7030, SDR-2-CON-RW-ZG-1910 |  | 4d |

| ID | WBS | Task | Duration | Start | Finish | Predecessors | Complete | Total float |
| --- | --- | --- | --- | --- | --- | --- | --- | --- |
|  | 1 | **STORM WATER LINE IN ( PH2-A-MCA0 )** |  | 2026-06-15 | 2027-05-10 |  |  |  |
|  | 8 | **Pipes Works** |  | 2026-06-22 | 2027-01-30 |  |  |  |
|  | 1 | **Excavation** |  | 2026-06-22 | 2026-07-20 |  |  |  |
| SDR-2-CON-ST-ZA-6540 |  | Excavation for GRP Pipes Section 1 | 21d | 2026-06-22 A | 2026-06-29 A | SDR-2-CON-ST-ZA-6360 SS | 100% |  |
| SDR-2-CON-ST-ZA-4780 |  | Excavation for GRP Pipes Section 2 | 21d | 2026-07-01 A | 2026-07-20 A | SDR-2-CON-ST-ZA-6540 | 100% |  |
|  | 7 | **bedding Works** |  | 2026-10-01 | 2026-12-02 |  |  |  |
| SDR-2-CON-ST-ZA-4840 |  | Sand bedding for GRP Pipes | 21d | 2026-10-01 A | 2026-12-02 | SDR-2-CON-ST-ZA-4780 | 25% | 26d |
|  | 2 | **Pipes Laying** |  | 2026-10-22 | 2026-12-02 |  |  |  |
| SDR-2-CON-ST-ZA-4790 |  | Install ST GRP Pipes | 21d | 2026-10-22 A | 2026-12-02 | SDR-2-CON-ST-ZA-4840 SS+15d | 25% | 26d |
|  | 6 | **Testing** |  | 2026-12-03 | 2026-12-27 |  |  |  |
| SDR-2-CON-ST-ZA-4830 |  | Testing ST GRP Pipes | 21d | 2026-12-03 | 2026-12-27 | SDR-2-CON-ST-ZA-4790 |  | 26d |
|  | 3 | **Backfilling** |  | 2027-01-06 | 2027-01-30 |  |  |  |
| SDR-2-CON-ST-ZA-4800 |  | Backfilling ST GRP Pipes | 21d | 2027-01-06 | 2027-01-30 | SDR-2-CON-ST-ZA-4830 FS+8d |  | 26d |
|  | 4 | **Manholes** |  | 2026-06-15 | 2027-02-15 |  |  |  |
|  | 1 | **Excavation** |  | 2026-06-15 | 2026-11-09 |  |  |  |
| SDR-2-CON-ST-ZA-6550 |  | Excavation Manholes Section 1 | 21d | 2026-06-15 A | 2026-08-31 A | SDR-2-CON-ST-ZA-6540 SS | 100% |  |
| SDR-2-CON-ST-ZA-4810 |  | Excavation Manholes Section 2 | 21d | 2026-07-14 A | 2026-11-09 | SDR-2-CON-ST-ZA-6550 | 50% | 2d |
|  | 2 | **bedding Works** |  | 2026-10-07 | 2026-12-03 |  |  |  |
| SDR-2-CON-ST-ZA-4850 |  | Sand bedding for Manholes | 21d | 2026-10-07 A | 2026-12-03 | SDR-2-CON-ST-ZA-4810 | 25% | 2d |
|  | 3 | **Install Manholes** |  | 2026-10-07 | 2026-12-28 |  |  |  |
| SDR-2-CON-ST-ZA-4860 |  | Manholes Installation | 21d | 2026-10-07 A | 2026-12-28 | SDR-2-CON-ST-ZA-4850 | 25% | 2d |
|  | 4 | **Testing** |  | 2026-12-29 | 2027-01-21 |  |  |  |
| SDR-2-CON-ST-ZA-4870 |  | Testing for Manholes | 21d | 2026-12-29 | 2027-01-21 | SDR-2-CON-ST-ZA-4860 |  | 12d |
|  | 5 | **Backfilling** |  | 2027-01-23 | 2027-02-15 |  |  |  |
| SDR-2-CON-ST-ZA-4880 |  | Backfilling for Manholes | 21d | 2027-01-23 | 2027-02-15 | SDR-2-CON-ST-ZA-4870 |  | 12d |
|  | 5 | **Catch basin** |  | 2026-10-20 | 2027-05-10 |  |  |  |
|  | 1 | **Excavation** |  | 2026-10-20 | 2027-01-28 |  |  |  |
| SDR-2-CON-ST-ZA-6560 |  | Excavation for Catch basin Section 2 | 21d | 2026-10-20 A | 2026-12-28 | SDR-2-CON-ST-ZA-4860 FF | 25% | 2d |
| SDR-2-CON-ST-ZA-4820 |  | Excavation for Catch basin Section 1 | 21d | 2026-10-21 A | 2027-01-28 | SDR-2-CON-ST-ZA-6560 FS+6d | 75% | 2d |
|  | 2 | **bedding Works** |  | 2026-10-22 | 2027-02-23 |  |  |  |
| SDR-2-CON-ST-ZA-4890 |  | Sand Dedding for Catch basin | 21d | 2026-10-22 A | 2027-02-23 | SDR-2-CON-ST-ZA-4820 | 50% | 2d |
|  | 3 | **Install Catch basin** |  | 2026-10-24 | 2027-03-24 |  |  |  |
| SDR-2-CON-ST-ZA-4900 |  | Install Catch basin | 21d | 2026-10-24 A | 2027-03-24 | SDR-2-CON-ST-ZA-4890 | 50% | 2d |
|  | 4 | **Testing** |  | 2027-03-25 | 2027-04-07 |  |  |  |
| SDR-2-CON-ST-ZA-4910 |  | Testing for Catch basin pipe | 12d | 2027-03-25 | 2027-04-07 | SDR-2-CON-ST-ZA-4900 |  | 2d |
|  | 5 | **Backfilling** |  | 2027-04-08 | 2027-05-10 |  |  |  |
| SDR-2-CON-ST-ZA-7040 |  | Backfilling for Catch basin Section 1 | 14d | 2027-04-08 | 2027-04-24 | SDR-2-CON-ST-ZA-4910 |  | 2d |
| SDR-2-CON-ST-ZA-4920 |  | Backfilling for Catch basin Section 2 | 14d | 2027-04-25 | 2027-05-10 | SDR-2-CON-ST-ZA-7040 |  | 2d |
|  | 17 | **STORM WATER LINE IN ( PH2-A-MCI0 )** |  | 2026-07-01 | 2027-05-08 |  |  |  |
|  | 8 | **Pipes Works** |  | 2026-07-01 | 2027-02-14 |  |  |  |
|  | 1 | **Excavation** |  | 2026-07-01 | 2026-08-05 |  |  |  |
| SDR-2-CON-ST-ZA-6570 |  | Excavation for GRP Pipes Section 1 | 21d | 2026-07-01 A | 2026-07-20 A | SDR-2-CON-ST-ZA-6540 SS+4d | 100% |  |
| SDR-2-CON-ST-ZA-4930 |  | Excavation for GRP Pipes Section 2 | 21d | 2026-07-21 A | 2026-08-05 A | SDR-2-CON-ST-ZA-6570 | 100% |  |
|  | 7 | **bedding Works** |  | 2026-10-17 | 2026-12-02 |  |  |  |
| SDR-2-CON-ST-ZA-4990 |  | Sand bedding for GRP Pipes | 21d | 2026-10-17 A | 2026-12-02 | SDR-2-CON-ST-ZA-4930 | 50% | 13d |
|  | 2 | **Pipes Laying** |  | 2026-10-18 | 2026-12-27 |  |  |  |
| SDR-2-CON-ST-ZA-4940 |  | Install ST GRP Pipes | 21d | 2026-10-18 A | 2026-12-27 | SDR-2-CON-ST-ZA-4990 | 50% | 13d |
|  | 6 | **Testing** |  | 2026-12-28 | 2027-01-20 |  |  |  |
| SDR-2-CON-ST-ZA-4980 |  | Testing ST GRP Pipes | 21d | 2026-12-28 | 2027-01-20 | SDR-2-CON-RW-ZG-2500, SDR-2-CON-ST-ZA-4940 |  | 13d |
|  | 3 | **Backfilling** |  | 2027-01-21 | 2027-02-14 |  |  |  |
| SDR-2-CON-ST-ZA-4950 |  | Backfilling ST GRP Pipes | 21d | 2027-01-21 | 2027-02-14 | SDR-2-CON-ST-ZA-4980 |  | 13d |
|  | 4 | **Manholes** |  | 2026-07-20 | 2027-02-15 |  |  |  |
|  | 1 | **Excavation** |  | 2026-07-20 | 2026-11-09 |  |  |  |
| SDR-2-CON-ST-ZA-6580 |  | Excavation Manholes Section 1 | 21d | 2026-07-20 A | 2026-07-30 A | SDR-2-CON-ST-ZA-6570 SS | 100% |  |
| SDR-2-CON-ST-ZA-4960 |  | Excavation Manholes Section 2 | 21d | 2026-07-30 A | 2026-11-09 | SDR-2-CON-ST-ZA-6580 | 50% | 6d |
|  | 2 | **bedding Works** |  | 2026-11-10 | 2026-12-03 |  |  |  |
| SDR-2-CON-ST-ZA-5000 |  | Sand bedding for Manholes | 21d | 2026-11-10 | 2026-12-03 | SDR-2-CON-ST-ZA-4960 |  | 6d |
|  | 3 | **Install Manholes** |  | 2026-12-05 | 2026-12-28 |  |  |  |
| SDR-2-CON-ST-ZA-5010 |  | Manholes Installation | 21d | 2026-12-05 | 2026-12-28 | SDR-2-CON-ST-ZA-5000 |  | 6d |
|  | 4 | **Testing** |  | 2026-12-29 | 2027-01-21 |  |  |  |
| SDR-2-CON-ST-ZA-5020 |  | Testing for Manholes | 21d | 2026-12-29 | 2027-01-21 | SDR-2-CON-ST-ZA-5010 |  | 12d |
|  | 5 | **Backfilling** |  | 2027-01-23 | 2027-02-15 |  |  |  |
| SDR-2-CON-ST-ZA-5030 |  | Backfilling for Manholes | 21d | 2027-01-23 | 2027-02-15 | SDR-2-CON-ST-ZA-5020 |  | 12d |
|  | 5 | **Catch basin** |  | 2026-10-20 | 2027-05-08 |  |  |  |
|  | 1 | **Excavation** |  | 2026-10-20 | 2027-01-21 |  |  |  |
| SDR-2-CON-ST-ZA-4970 |  | Excavation for Catch basin Section 1 | 21d | 2026-10-20 A | 2026-10-26 A | SDR-2-CON-ST-ZA-6590 FS+5d | 100% |  |
| SDR-2-CON-ST-ZA-6590 |  | Excavation for Catch basin Section 2 | 21d | 2026-10-22 A | 2027-01-21 | SDR-2-CON-ST-ZA-5010 | 20% | 6d |
|  | 2 | **bedding Works** |  | 2026-10-24 | 2027-02-21 |  |  |  |
| SDR-2-CON-ST-ZA-5040 |  | Sand Dedding for Catch basin | 21d | 2026-10-24 A | 2027-02-21 | SDR-2-CON-ST-ZA-4970 | 20% | 22d |
|  | 3 | **Install Catch basin** |  | 2026-10-24 | 2027-03-23 |  |  |  |

| ID | WBS | Task | Duration | Start | Finish | Predecessors | Complete | Total float |
| --- | --- | --- | --- | --- | --- | --- | --- | --- |
| SDR-2-CON-ST-ZA-5050 |  | Install Catch basin | 21d | 2026-10-24 A | 2027-03-23 | SDR-2-CON-ST-ZA-5040 | 20% | 22d |
|  | 4 | **Testing** |  | 2027-03-24 | 2027-04-06 |  |  |  |
| SDR-2-CON-ST-ZA-5060 |  | Testing for Catch basin pipe | 12d | 2027-03-24 | 2027-04-06 | SDR-2-CON-ST-ZA-5050 |  | 22d |
|  | 5 | **Backfilling** |  | 2027-04-07 | 2027-05-08 |  |  |  |
| SDR-2-CON-ST-ZA-7050 |  | Backfilling for Catch basin Section 1 | 15d | 2027-04-07 | 2027-04-24 | SDR-2-CON-ST-ZA-5060 |  | 22d |
| SDR-2-CON-ST-ZA-5070 |  | Backfilling for Catch basin Section 2 | 12d | 2027-04-25 | 2027-05-08 | SDR-2-CON-ST-ZA-7050 |  | 22d |
|  | 18 | **STORM WATER LINE From STA-A2/10 TO STA-A2/1** |  | 2026-07-21 | 2027-06-01 |  |  |  |
|  | 8 | **Pipes Works** |  | 2026-07-21 | 2027-02-14 |  |  |  |
|  | 1 | **Excavation** |  | 2026-07-21 | 2026-08-16 |  |  |  |
| SDR-2-CON-ST-ZA-6600 |  | Excavation for GRP Pipes Section 1 | 21d | 2026-07-21 A | 2026-08-01 A | SDR-2-CON-ST-ZA-6570 SS+4d | 100% |  |
| SDR-2-CON-ST-ZA-5080 |  | Excavation for GRP Pipes Section 2 | 21d | 2026-08-12 A | 2026-08-16 A | SDR-2-CON-ST-ZA-6600 | 100% |  |
|  | 7 | **bedding Works** |  | 2026-10-27 | 2026-12-02 |  |  |  |
| SDR-2-CON-ST-ZA-5140 |  | Sand bedding for GRP Pipes | 21d | 2026-10-27 A | 2026-12-02 | SDR-2-CON-ST-ZA-5080 | 15% | 1d |
|  | 2 | **Pipes Laying** |  | 2026-11-04 | 2026-12-27 |  |  |  |
| SDR-2-CON-ST-ZA-5090 |  | Install ST GRP Pipes | 21d | 2026-11-04 A | 2026-12-27 | SDR-2-CON-ST-ZA-5140 | 15% | 1d |
|  | 6 | **Testing** |  | 2026-12-28 | 2027-01-20 |  |  |  |
| SDR-2-CON-ST-ZA-5130 |  | Testing ST GRP Pipes | 21d | 2026-12-28 | 2027-01-20 | SDR-2-CON-ST-ZA-5090 |  | 1d |
|  | 3 | **Backfilling** |  | 2027-01-21 | 2027-02-14 |  |  |  |
| SDR-2-CON-ST-ZA-5100 |  | Backfilling ST GRP Pipes | 21d | 2027-01-21 | 2027-02-14 | SDR-2-CON-ST-ZA-5130 |  | 1d |
|  | 4 | **Manholes** |  | 2026-11-09 | 2027-04-10 |  |  |  |
|  | 1 | **Excavation** |  | 2026-11-09 | 2026-12-27 |  |  |  |
| SDR-2-CON-ST-ZA-6610 |  | Excavation Manholes Section 1 | 21d | 2026-11-09 | 2026-12-02 | SDR-2-CON-ST-ZA-6600 SS |  | 8d |
| SDR-2-CON-ST-ZA-5110 |  | Excavation Manholes Section 2 | 21d | 2026-12-03 | 2026-12-27 | SDR-2-CON-ST-ZA-6610 |  | 8d |
|  | 2 | **bedding Works** |  | 2026-12-28 | 2027-01-20 |  |  |  |
| SDR-2-CON-ST-ZA-5150 |  | Sand bedding for Manholes | 21d | 2026-12-28 | 2027-01-20 | SDR-2-CON-ST-ZA-5110 |  | 8d |
|  | 3 | **Install Manholes** |  | 2027-01-21 | 2027-02-14 |  |  |  |
| SDR-2-CON-ST-ZA-5160 |  | Manholes Installation | 21d | 2027-01-21 | 2027-02-14 | SDR-2-CON-ST-ZA-5150 |  | 8d |
|  | 4 | **Testing** |  | 2027-02-15 | 2027-03-16 |  |  |  |
| SDR-2-CON-ST-ZA-5170 |  | Testing for Manholes | 21d | 2027-02-15 | 2027-03-16 | SDR-2-CON-ST-ZA-5160 |  | 8d |
|  | 5 | **Backfilling** |  | 2027-03-17 | 2027-04-10 |  |  |  |
| SDR-2-CON-ST-ZA-5180 |  | Backfilling for Manholes | 21d | 2027-03-17 | 2027-04-10 | SDR-2-CON-ST-ZA-5170 |  | 8d |
|  | 5 | **Catch basin** |  | 2027-01-23 | 2027-06-01 |  |  |  |
|  | 1 | **Excavation** |  | 2027-01-23 | 2027-03-17 |  |  |  |
| SDR-2-CON-ST-ZA-6620 |  | Excavation for Catch basin Section 1 | 21d | 2027-01-23 | 2027-02-15 | SDR-2-CON-ST-ZA-6590 |  | 6d |
| SDR-2-CON-ST-ZA-5120 |  | Excavation for Catch basin Section 2 | 21d | 2027-02-16 | 2027-03-17 | SDR-2-CON-ST-ZA-6620 |  | 6d |
|  | 2 | **bedding Works** |  | 2027-03-18 | 2027-04-11 |  |  |  |
| SDR-2-CON-ST-ZA-5190 |  | Sand Dedding for Catch basin | 21d | 2027-03-18 | 2027-04-11 | SDR-2-CON-ST-ZA-5120 |  | 6d |
|  | 3 | **Install Catch basin** |  | 2027-04-12 | 2027-05-05 |  |  |  |
| SDR-2-CON-ST-ZA-5200 |  | Install Catch basin | 21d | 2027-04-12 | 2027-05-05 | SDR-2-CON-ST-ZA-5190, SDR-2-CON-ST-ZA-4200 |  | 6d |
|  | 4 | **Testing** |  | 2027-05-06 | 2027-05-25 |  |  |  |
| SDR-2-CON-ST-ZA-5210 |  | Testing for Catch basin pipe | 12d | 2027-05-06 | 2027-05-25 | SDR-2-CON-ST-ZA-5200 |  | 6d |
|  | 5 | **Backfilling** |  | 2027-05-11 | 2027-06-01 |  |  |  |
| SDR-2-CON-ST-ZA-5220 |  | Backfilling for Catch basin Section 2 | 14d | 2027-05-11 | 2027-06-01 | SDR-2-CON-ST-ZA-7060 SS |  | 6d |
| SDR-2-CON-ST-ZA-7060 |  | Backfilling for Catch basin Section 1 | 13d | 2027-05-11 | 2027-05-31 | SDR-2-CON-ST-ZA-5210 SS+4d |  | 6d |
|  | 19 | **STORM WATER LINE From IP A7 To Pond A** |  | 2026-08-12 | 2027-05-08 |  |  |  |
|  | 8 | **Pipes Works** |  | 2026-08-12 | 2027-02-15 |  |  |  |
|  | 1 | **Excavation** |  | 2026-08-12 | 2026-11-09 |  |  |  |
| SDR-2-CON-ST-ZA-5830 |  | Excavation for GRP Pipes Section 2 | 21d | 2026-08-12 A | 2026-11-09 | SDR-2-CON-ST-ZA-6630 FF | 90% | 0d |
| SDR-2-CON-ST-ZA-6630 |  | Excavation for GRP Pipes Section 1 | 21d | 2026-08-12 A | 2026-11-09 | SDR-2-CON-ST-ZA-6600 SS+4d | 90% | 0d |
|  | 7 | **bedding Works** |  | 2026-11-10 | 2026-12-03 |  |  |  |
| SDR-2-CON-ST-ZA-5890 |  | Sand bedding for GRP Pipes | 21d | 2026-11-10 | 2026-12-03 | SDR-2-CON-ST-ZA-5830 |  | 0d |
|  | 2 | **Pipes Laying** |  | 2026-12-05 | 2026-12-28 |  |  |  |
| SDR-2-CON-ST-ZA-5840 |  | Install ST GRP Pipes | 21d | 2026-12-05 | 2026-12-28 | SDR-2-CON-ST-ZA-5890 |  | 0d |
|  | 6 | **Testing** |  | 2026-12-29 | 2027-01-21 |  |  |  |
| SDR-2-CON-ST-ZA-5880 |  | Testing ST GRP Pipes | 21d | 2026-12-29 | 2027-01-21 | SDR-2-CON-ST-ZA-5840 |  | 0d |
|  | 3 | **Backfilling** |  | 2027-01-23 | 2027-02-15 |  |  |  |
| SDR-2-CON-ST-ZA-5850 |  | Backfilling ST GRP Pipes | 21d | 2027-01-23 | 2027-02-15 | SDR-2-CON-ST-ZA-5880 |  | 0d |
|  | 4 | **Manholes** |  | 2026-11-09 | 2027-04-13 |  |  |  |
|  | 1 | **Excavation** |  | 2026-11-09 | 2026-12-30 |  |  |  |
| SDR-2-CON-ST-ZA-6640 |  | Excavation Manholes Section 1 | 21d | 2026-11-09 | 2026-12-02 | SDR-2-CON-ST-ZA-6630 SS |  | 5d |
| SDR-2-CON-ST-ZA-5860 |  | Excavation Manholes Section 2 | 21d | 2026-12-07 | 2026-12-30 | SDR-2-CON-ST-ZA-6640 FS+3d |  | 5d |
|  | 2 | **bedding Works** |  | 2026-12-31 | 2027-01-24 |  |  |  |
| SDR-2-CON-ST-ZA-5900 |  | Sand bedding for Manholes | 21d | 2026-12-31 | 2027-01-24 | SDR-2-CON-ST-ZA-5860 |  | 5d |
|  | 3 | **Install Manholes** |  | 2027-01-25 | 2027-02-17 |  |  |  |
| SDR-2-CON-ST-ZA-5910 |  | Manholes Installation | 21d | 2027-01-25 | 2027-02-17 | SDR-2-CON-ST-ZA-5900 |  | 5d |
|  | 4 | **Testing** |  | 2027-02-18 | 2027-03-20 |  |  |  |
| SDR-2-CON-ST-ZA-5920 |  | Testing for Manholes | 21d | 2027-02-18 | 2027-03-20 | SDR-2-CON-ST-ZA-5910 |  | 5d |
|  | 5 | **Backfilling** |  | 2027-03-21 | 2027-04-13 |  |  |  |
| SDR-2-CON-ST-ZA-5930 |  | Backfilling for Manholes | 21d | 2027-03-21 | 2027-04-13 | SDR-2-CON-ST-ZA-5920 |  | 5d |
|  | 5 | **Catch basin** |  | 2026-12-05 | 2027-05-08 |  |  |  |

| ID | WBS | Task | Duration | Start | Finish | Predecessors | Complete | Total float |
| --- | --- | --- | --- | --- | --- | --- | --- | --- |
|  | 1 | **Excavation** |  | 2026-12-05 | 2027-01-21 |  |  |  |
| SDR-2-CON-ST-ZA-6650 |  | Excavation for Catch basin Section 1 | 21d | 2026-12-05 | 2026-12-28 | SDR-2-CON-ST-ZA-6560 SS |  | 20d |
| SDR-2-CON-ST-ZA-5870 |  | Excavation for Catch basin Section 2 | 21d | 2026-12-29 | 2027-01-21 | SDR-2-CON-ST-ZA-6650 |  | 20d |
|  | 2 | **bedding Works** |  | 2027-01-23 | 2027-02-15 |  |  |  |
| SDR-2-CON-ST-ZA-5940 |  | Sand Dedding for Catch basin | 21d | 2027-01-23 | 2027-02-15 | SDR-2-CON-ST-ZA-5870 |  | 20d |
|  | 3 | **Install Catch basin** |  | 2027-02-16 | 2027-03-17 |  |  |  |
| SDR-2-CON-ST-ZA-5950 |  | Install Catch basin | 21d | 2027-02-16 | 2027-03-17 | SDR-2-CON-ST-ZA-5940 |  | 20d |
|  | 4 | **Testing** |  | 2027-03-18 | 2027-03-27 |  |  |  |
| SDR-2-CON-ST-ZA-5960 |  | Testing for Catch basin pipe | 8d | 2027-03-18 | 2027-03-27 | SDR-2-CON-ST-ZA-5950 |  | 20d |
|  | 5 | **Backfilling** |  | 2027-04-14 | 2027-05-08 |  |  |  |
| SDR-2-CON-ST-ZA-5970 |  | Backfilling for Catch basin | 21d | 2027-04-14 | 2027-05-08 | SDR-2-CON-ST-ZA-5960, SDR-2-CON-ST-ZA-5930, SDR-2-CON-ST-ZA-5180 |  | 5d |
|  | 2 | **Concrete Box culverts** |  | 2026-07-01 | 2027-01-05 |  |  |  |
|  | 6 | **For Pond A** |  | 2026-07-01 | 2026-12-02 |  |  |  |
|  | 1 | **Excavation** |  | 2026-07-01 | 2026-07-15 |  |  |  |
| SDR-2-CON-ST-ZA-3270 |  | Excavation for Box Culvert. | 10d | 2026-07-01 A | 2026-07-15 A | SDR-2-CON-ST-ZA-5080 SS, SDR-2-CON-ST-ZA-6140 | 100% |  |
|  | 2 | **Backfilling with common / suitable excavated material** |  | 2026-07-02 | 2026-07-20 |  |  |  |
| SDR-2-CON-ST-ZA-3280 |  | Backfilling with common / suitable excavated material or with suitable imported material | 8d | 2026-07-02 A | 2026-07-20 A | SDR-2-CON-ST-ZA-3270 | 100% |  |
|  | 3 | **Plain Concrete** |  | 2026-11-09 | 2026-11-15 |  |  |  |
| SDR-2-CON-ST-ZA-3290 |  | Plain Concrete for box culvert | 6d | 2026-11-09 | 2026-11-15 | SDR-2-CON-ST-ZA-3280 |  | 35d |
|  | 4 | **Steel Reinforcement** |  | 2026-11-16 | 2026-11-24 |  |  |  |
| SDR-2-CON-ST-ZA-3300 |  | Steel Reinforcement for box culverts | 8d | 2026-11-16 | 2026-11-24 | SDR-2-CON-ST-ZA-3290 |  | 35d |
|  | 5 | **Reinforced Concrete** |  | 2026-11-25 | 2026-12-02 |  |  |  |
| SDR-2-CON-ST-ZA-3310 |  | Reinforced Concrete for box culvert | 7d | 2026-11-25 | 2026-12-02 | SDR-2-CON-ST-ZA-3300 |  | 35d |
|  | 7 | **For Pond B** |  | 2026-07-01 | 2026-12-12 |  |  |  |
|  | 1 | **Excavation** |  | 2026-07-01 | 2026-07-20 |  |  |  |
| SDR-2-CON-ST-ZA-6250 |  | Excavation for Box Culvert. | 10d | 2026-07-01 A | 2026-07-20 A | SDR-2-CON-RW-ZA-2870 | 100% |  |
|  | 2 | **Backfilling with common / suitable excavated material** |  | 2026-11-09 | 2026-11-17 |  |  |  |
| SDR-2-CON-ST-ZA-6260 |  | Backfilling with common / suitable excavated material or with suitable imported material | 8d | 2026-11-09 | 2026-11-17 | SDR-2-CON-ST-ZA-6250 |  | 14d |
|  | 3 | **Plain Concrete** |  | 2026-11-18 | 2026-11-24 |  |  |  |
| SDR-2-CON-ST-ZA-6270 |  | Plain Concrete for box culvert | 6d | 2026-11-18 | 2026-11-24 | SDR-2-CON-ST-ZA-6260 |  | 14d |
|  | 4 | **Steel Reinforcement** |  | 2026-11-25 | 2026-12-03 |  |  |  |
| SDR-2-CON-ST-ZA-6280 |  | Steel Reinforcement for box culverts | 8d | 2026-11-25 | 2026-12-03 | SDR-2-CON-ST-ZA-6270 |  | 14d |
|  | 5 | **Reinforced Concrete** |  | 2026-12-05 | 2026-12-12 |  |  |  |
| SDR-2-CON-ST-ZA-6290 |  | Reinforced Concrete for box culvert | 7d | 2026-12-05 | 2026-12-12 | SDR-2-CON-ST-ZA-6280 |  | 14d |
|  | 8 | **For Pond C** |  | 2026-11-12 | 2027-01-05 |  |  |  |
|  | 1 | **Excavation** |  | 2026-11-12 | 2026-11-23 |  |  |  |
| SDR-2-CON-ST-ZA-6300 |  | Excavation for Box Culvert. | 10d | 2026-11-12 | 2026-11-23 | SDR-2-CON-ST-ZA-3320 SS |  | 17d |
|  | 2 | **Backfilling with common / suitable excavated material** |  | 2026-11-24 | 2026-12-02 |  |  |  |
| SDR-2-CON-ST-ZA-6310 |  | Backfilling with common / suitable excavated material or with suitable imported material | 8d | 2026-11-24 | 2026-12-02 | SDR-2-CON-ST-ZA-6300 |  | 17d |
|  | 3 | **Plain Concrete** |  | 2026-12-03 | 2026-12-09 |  |  |  |
| SDR-2-CON-ST-ZA-6320 |  | Plain Concrete for box culvert | 6d | 2026-12-03 | 2026-12-09 | SDR-2-CON-ST-ZA-6310 |  | 17d |
|  | 4 | **Steel Reinforcement** |  | 2026-12-10 | 2026-12-19 |  |  |  |
| SDR-2-CON-ST-ZA-6330 |  | Steel Reinforcement for box culverts | 8d | 2026-12-10 | 2026-12-19 | SDR-2-CON-ST-ZA-6320 |  | 17d |
|  | 5 | **Reinforced Concrete** |  | 2026-12-29 | 2027-01-05 |  |  |  |
| SDR-2-CON-ST-ZA-6340 |  | Reinforced Concrete for box culvert | 7d | 2026-12-29 | 2027-01-05 | SDR-2-CON-ST-ZA-6330 FS+8d, SDR-2-CON-ST-ZA-6290 FS+6d, SDR-2-CON-ST-ZA-3310 FS+4d |  | 17d |
|  | 3 | **Drainage works for ponds and open canals** |  | 2026-03-24 | 2027-05-04 |  |  |  |
|  | 7 | **Pond A** |  | 2026-03-24 | 2027-01-27 |  |  |  |
|  | 2 | **Access road for Storm water Ponds** |  | 2026-03-24 | 2026-03-30 |  |  |  |
| SDR-2-CON-ST-ZA-6140 |  | Embankments with common / suitable excavated material | 16d | 2026-03-24 A | 2026-03-30 A | SDR-2-CON-RW-ZA-1010 | 100% |  |
|  | 1 | **Excavation** |  | 2026-03-26 | 2026-06-22 |  |  |  |
| SDR-2-CON-ST-ZA-6660 |  | Excavation for cutting material Section 1 | 20d | 2026-03-26 A | 2026-05-02 A | SDR-2-CON-ST-ZA-6140 | 100% |  |
| SDR-2-CON-ST-ZA-6670 |  | Excavation for cutting material Section 2 | 20d | 2026-05-03 A | 2026-05-24 A | SDR-2-CON-ST-ZA-6660 | 100% |  |
| SDR-2-CON-ST-ZA-6680 |  | Excavation for cutting material Section 3 | 20d | 2026-05-31 A | 2026-06-14 A | SDR-2-CON-ST-ZA-6670 | 100% |  |
| SDR-2-CON-ST-ZA-6130 |  | Excavation for cutting material Section 4 | 20d | 2026-06-09 A | 2026-06-22 A | SDR-2-CON-ST-ZA-6680 | 100% |  |
|  | 3 | **Sand lining for pond bed** |  | 2026-08-31 | 2026-12-09 |  |  |  |
| SDR-2-CON-ST-ZA-6690 |  | Sand lining for pond bed Section 1 & Section 2 | 21d | 2026-08-31 A | 2026-11-11 | SDR-2-CON-ST-ZA-6130, SDR-2-CON-ST-ZA-6710 | 30% | 31d |
| SDR-2-CON-ST-ZA-6150 |  | Sand lining for pond bed Section 3 & Section 4 | 21d | 2026-11-16 | 2026-12-09 | SDR-2-CON-ST-ZA-6690 FS+3d |  | 31d |
|  | 6 | **Pipe Encasements,** |  | 2026-12-10 | 2027-01-03 |  |  |  |
| SDR-2-CON-ST-ZA-6180 |  | Pipe encasement | 21d | 2026-12-10 | 2027-01-03 | SDR-2-CON-ST-ZA-6150 |  | 31d |
|  | 5 | **Concrete Outfalls** |  | 2027-01-04 | 2027-01-27 |  |  |  |
| SDR-2-CON-ST-ZA-6170 |  | Concrete Outfall structure. | 21d | 2027-01-04 | 2027-01-27 | SDR-2-CON-ST-ZA-6180 |  | 31d |
|  | 4 | **Loose Riprap** |  | 2026-07-20 | 2026-07-30 |  |  |  |
| SDR-2-CON-ST-ZA-6160 |  | Loose Riprap work | 21d | 2026-07-20 A | 2026-07-30 A | SDR-2-CON-ST-ZA-6170 | 100% |  |
|  | 8 | **Pond B** |  | 2026-03-25 | 2027-05-04 |  |  |  |
|  | 2 | **Access road for Storm water Ponds** |  | 2026-03-25 | 2026-03-30 |  |  |  |
| SDR-2-CON-ST-ZA-6200 |  | Embankments with common / suitable excavated material | 15d | 2026-03-25 A | 2026-03-30 A | SDR-2-CON-ST-ZA-6140 FS+12d | 100% |  |
|  | 1 | **Excavation** |  | 2026-03-29 | 2026-06-23 |  |  |  |
| SDR-2-CON-ST-ZA-6700 |  | Excavation for cutting material. Section 1 | 21d | 2026-03-29 A | 2026-05-02 A | SDR-2-CON-ST-ZA-6200 | 100% |  |
| SDR-2-CON-ST-ZA-6710 |  | Excavation for cutting material. Section 2 | 21d | 2026-05-04 A | 2026-05-31 A | SDR-2-CON-ST-ZA-6700 | 100% |  |
| SDR-2-CON-ST-ZA-6190 |  | Excavation for cutting material. Section 3 | 21d | 2026-06-02 A | 2026-06-23 A | SDR-2-CON-ST-ZA-6710 FS+7d | 100% |  |

| ID | WBS | Task | Duration | Start | Finish | Predecessors | Complete | Total float |
| --- | --- | --- | --- | --- | --- | --- | --- | --- |
|  | 3 | **Sand lining for pond bed** |  | 2026-08-31 | 2027-01-27 |  |  |  |
| SDR-2-CON-ST-ZA-6720 |  | Sand lining for pond bed Section 1 | 21d | 2026-08-31 A | 2027-01-05 | SDR-2-CON-ST-ZA-6190, SDR-2-CON-ST-ZA-6340 FF | 30% | 25d |
| SDR-2-CON-ST-ZA-6210 |  | Sand lining for pond bed Section 2 | 19d | 2027-01-06 | 2027-01-27 | SDR-2-CON-ST-ZA-6720 |  | 25d |
|  | 6 | **Pipe Encasements,** |  | 2027-01-28 | 2027-02-21 |  |  |  |
| SDR-2-CON-ST-ZA-6240 |  | Pipe encasement | 21d | 2027-01-28 | 2027-02-21 | SDR-2-CON-ST-ZA-6210 |  | 25d |
|  | 5 | **Concrete Outfalls** |  | 2027-02-23 | 2027-03-23 |  |  |  |
| SDR-2-CON-ST-ZA-6230 |  | Concrete Outfall structure. | 21d | 2027-02-23 | 2027-03-23 | SDR-2-CON-ST-ZA-6240 |  | 25d |
|  | 4 | **Loose Riprap** |  | 2027-04-11 | 2027-05-04 |  |  |  |
| SDR-2-CON-ST-ZA-6220 |  | Loose Riprap work | 21d | 2027-04-11 | 2027-05-04 | SDR-2-CON-ST-ZA-6230, SDR-2-CON-ST-ZA-5180, SDR-2-CON-ST-ZA-5030 FS+9d, SDR-2-CON-ST-ZA-4880 FS+14d, SDR-2-CON-ST-ZA-4730 FS+7d, SDR-2-CON-ST-ZA-4580 FS+5d, SDR-2-CON-ST-ZA-4280 FS+14d, SDR-2-CON-ST-ZA-4130, SDR-2-CON-ST-ZA-3760 FF |  | 10d |
|  | 9 | **Pond C** |  | 2026-04-09 | 2027-04-11 |  |  |  |
|  | 2 | **Access road for Storm water Ponds** |  | 2026-04-27 | 2026-07-20 |  |  |  |
| SDR-2-CON-ST-ZA-3330 |  | Embankments with common / suitable excavated material | 15d | 2026-04-27 A | 2026-07-20 A | SDR-2-CON-ST-ZA-6200 | 100% |  |
|  | 1 | **Excavation** |  | 2026-04-09 | 2026-12-06 |  |  |  |
| SDR-2-CON-ST-ZA-6730 |  | Excavation for cutting material. Section 1 | 21d | 2026-04-09 A | 2026-04-22 A | SDR-2-CON-ST-ZA-3330 | 100% |  |
| SDR-2-CON-ST-ZA-6740 |  | Excavation for cutting material. Section 2 | 21d | 2026-08-31 A | 2026-11-11 | SDR-2-CON-ST-ZA-6730 | 25% | 0d |
| SDR-2-CON-ST-ZA-3320 |  | Excavation for cutting material. Section 3 | 21d | 2026-11-12 | 2026-12-06 | SDR-2-CON-ST-ZA-6740 |  | 0d |
|  | 3 | **Sand lining for pond bed** |  | 2026-12-07 | 2027-01-21 |  |  |  |
| SDR-2-CON-ST-ZA-6750 |  | Sand lining for pond bed Section 1 | 20d | 2026-12-07 | 2026-12-29 | SDR-2-CON-ST-ZA-3320 |  | 0d |
| SDR-2-CON-ST-ZA-3340 |  | Sand lining for pond bed Section 2 &Section 3 | 20d | 2026-12-30 | 2027-01-21 | SDR-2-CON-ST-ZA-6750 |  | 0d |
|  | 6 | **Pipe Encasements,** |  | 2027-01-23 | 2027-02-15 |  |  |  |
| SDR-2-CON-ST-ZA-3370 |  | Pipe encasement | 21d | 2027-01-23 | 2027-02-15 | SDR-2-CON-ST-ZA-3340 |  | 0d |
|  | 5 | **Concrete Outfalls** |  | 2027-02-16 | 2027-03-17 |  |  |  |
| SDR-2-CON-ST-ZA-3360 |  | Concrete Outfall structure. | 21d | 2027-02-16 | 2027-03-17 | SDR-2-CON-ST-ZA-3370 |  | 0d |
|  | 4 | **Loose Riprap** |  | 2027-03-18 | 2027-04-11 |  |  |  |
| SDR-2-CON-ST-ZA-3350 |  | Loose Riprap work | 21d | 2027-03-18 | 2027-04-11 | SDR-2-CON-ST-ZA-3360 |  | 0d |
|  | ZG | **ZONE G** |  | 2026-04-30 | 2026-11-18 |  |  |  |
|  | 11 | **STORM WATER LINE IN ( PH2-G-MCE0 )** |  | 2026-04-30 | 2026-11-11 |  |  |  |
|  | 8 | **Pipes Works** |  | 2026-04-30 | 2026-08-31 |  |  |  |
|  | 1 | **Excavation** |  | 2026-04-30 | 2026-06-08 |  |  |  |
| SDR-2-CON-ST-ZA-6880 |  | Excavation for GRP Pipes Section 1 | 21d | 2026-04-30 A | 2026-06-01 A | SDR-2-CON-ST-ZA-7000 SS | 100% |  |
| SDR-2-CON-ST-ZA-6760 |  | Excavation for GRP Pipes Section 2 | 21d | 2026-05-06 A | 2026-06-04 A | SDR-2-CON-ST-ZA-6880, SDR-2-CON-ST-ZA-6710 | 100% |  |
| SDR-2-CON-ST-ZA-5380 |  | Excavation for GRP Pipes Section 3 | 21d | 2026-06-04 A | 2026-06-08 A | SDR-2-CON-ST-ZA-6760 | 100% |  |
|  | 7 | **bedding Works** |  | 2026-05-16 | 2026-06-01 |  |  |  |
| SDR-2-CON-ST-ZA-5440 |  | Sand bedding for GRP Pipes | 21d | 2026-05-16 A | 2026-06-01 A | SDR-2-CON-ST-ZA-5380 | 100% |  |
|  | 2 | **Pipes Laying** |  | 2026-05-17 | 2026-06-18 |  |  |  |
| SDR-2-CON-ST-ZA-5390 |  | Install ST GRP Pipes | 21d | 2026-05-17 A | 2026-06-18 A | SDR-2-CON-ST-ZA-5440 | 100% |  |
|  | 6 | **Testing** |  | 2026-08-01 | 2026-08-08 |  |  |  |
| SDR-2-CON-ST-ZA-5430 |  | Testing ST GRP Pipes | 21d | 2026-08-01 A | 2026-08-08 A | SDR-2-CON-ST-ZA-5390 | 100% |  |
|  | 3 | **Backfilling** |  | 2026-08-09 | 2026-08-31 |  |  |  |
| SDR-2-CON-ST-ZA-5400 |  | Backfilling ST GRP Pipes | 21d | 2026-08-09 A | 2026-08-31 A | SDR-2-CON-ST-ZA-5430 | 100% |  |
|  | 4 | **Manholes** |  | 2026-05-13 | 2026-11-11 |  |  |  |
|  | 1 | **Excavation** |  | 2026-05-13 | 2026-06-09 |  |  |  |
| SDR-2-CON-ST-ZA-6890 |  | Excavation Manholes Section 1 | 21d | 2026-05-13 A | 2026-06-01 A | SDR-2-CON-ST-ZA-6880 SS | 100% |  |
| SDR-2-CON-ST-ZA-6770 |  | Excavation Manholes Section 2 | 21d | 2026-05-14 A | 2026-06-02 A | SDR-2-CON-ST-ZA-6890 | 100% |  |
| SDR-2-CON-ST-ZA-5410 |  | Excavation Manholes Section 3 | 21d | 2026-06-04 A | 2026-06-09 A | SDR-2-CON-ST-ZA-6770 FS+3d | 100% |  |
|  | 2 | **bedding Works** |  | 2026-05-18 | 2026-06-11 |  |  |  |
| SDR-2-CON-ST-ZA-5450 |  | Sand bedding for Manholes | 21d | 2026-05-18 A | 2026-06-11 A | SDR-2-CON-ST-ZA-5410 | 100% |  |
|  | 3 | **Install Manholes** |  | 2026-06-01 | 2026-07-21 |  |  |  |
| SDR-2-CON-ST-ZA-5460 |  | Manholes Installation Section 2 | 21d | 2026-06-01 A | 2026-07-21 A | SDR-2-CON-ST-ZA-6780 FS+5d | 100% |  |
| SDR-2-CON-ST-ZA-6780 |  | Manholes Installation Section 1 | 21d | 2026-06-01 A | 2026-06-01 A | SDR-2-CON-ST-ZA-5450 | 100% |  |
|  | 4 | **Testing** |  | 2026-08-31 | 2026-11-11 |  |  |  |
| SDR-2-CON-ST-ZA-5470 |  | Testing for Manholes | 21d | 2026-08-31 A | 2026-11-11 | SDR-2-CON-ST-ZA-5460 | 25% | 142d |
|  | 5 | **Backfilling** |  | 2026-08-16 | 2026-08-20 |  |  |  |
| SDR-2-CON-ST-ZA-5480 |  | Backfilling for Manholes | 21d | 2026-08-16 A | 2026-08-20 A | SDR-2-CON-ST-ZA-5470 SS | 100% |  |
|  | 5 | **Catch basin** |  | 2026-08-10 | 2026-08-27 |  |  |  |
|  | 1 | **Excavation** |  | 2026-08-10 | 2026-08-15 |  |  |  |
| SDR-2-CON-ST-ZA-5420 |  | Excavation for Catch basin Section 2 | 21d | 2026-08-10 A | 2026-08-15 A | SDR-2-CON-ST-ZA-6790 FS+3d | 100% |  |
| SDR-2-CON-ST-ZA-6790 |  | Excavation for Catch basin Section 1 | 21d | 2026-08-10 A | 2026-08-15 A | SDR-2-CON-ST-ZA-6890, SDR-2-CON-ST-ZA-6780 | 100% |  |
|  | 2 | **bedding Works** |  | 2026-08-15 | 2026-08-18 |  |  |  |
| SDR-2-CON-ST-ZA-5490 |  | Sand Dedding for Catch basin | 21d | 2026-08-15 A | 2026-08-18 A | SDR-2-CON-ST-ZA-5420 | 100% |  |
|  | 3 | **Install Catch basin** |  | 2026-08-18 | 2026-08-20 |  |  |  |
| SDR-2-CON-ST-ZA-5500 |  | Install Catch basin | 21d | 2026-08-18 A | 2026-08-20 A | SDR-2-CON-ST-ZA-5490 | 100% |  |
|  | 4 | **Testing** |  | 2026-08-18 | 2026-08-20 |  |  |  |
| SDR-2-CON-ST-ZA-5510 |  | Testing for Catch basin pipe | 8d | 2026-08-18 A | 2026-08-20 A | SDR-2-CON-ST-ZA-5500 | 100% |  |
|  | 5 | **Backfilling** |  | 2026-08-20 | 2026-08-27 |  |  |  |
| SDR-2-CON-ST-ZA-5520 |  | Backfilling for Catch basin Part 2 | 13d | 2026-08-20 A | 2026-08-27 A | SDR-2-CON-ST-ZA-6870 | 100% |  |
| SDR-2-CON-ST-ZA-6870 |  | Backfilling for Catch basin Part 1 | 13d | 2026-08-20 A | 2026-08-27 A | SDR-2-CON-ST-ZA-5510 | 100% |  |
|  | 12 | **STORM WATER LINE IN ( PH2-G-MCF0 )** |  | 2026-05-09 | 2026-11-11 |  |  |  |
|  | 8 | **Pipes Works** |  | 2026-05-09 | 2026-08-16 |  |  |  |
|  | 1 | **Excavation** |  | 2026-05-09 | 2026-05-24 |  |  |  |

| ID | WBS | Task | Duration | Start | Finish | Predecessors | Complete | Total float |
| --- | --- | --- | --- | --- | --- | --- | --- | --- |
| SDR-2-CON-ST-ZA-6800 |  | Excavation for GRP Pipes Section 1 | 21d | 2026-05-09 A | 2026-05-18 A | SDR-2-CON-ST-ZA-6880 SS+4d | 100% |  |
| SDR-2-CON-ST-ZA-5530 |  | Excavation for GRP Pipes Section 2 | 21d | 2026-05-18 A | 2026-05-24 A | SDR-2-CON-ST-ZA-6800 | 100% |  |
|  | 7 | **bedding Works** |  | 2026-05-18 | 2026-06-04 |  |  |  |
| SDR-2-CON-ST-ZA-5590 |  | Sand bedding for GRP Pipes | 21d | 2026-05-18 A | 2026-06-04 A | SDR-2-CON-ST-ZA-5530 | 100% |  |
|  | 2 | **Pipes Laying** |  | 2026-06-04 | 2026-07-12 |  |  |  |
| SDR-2-CON-ST-ZA-5540 |  | Install ST GRP Pipes | 21d | 2026-06-04 A | 2026-07-12 A | SDR-2-CON-ST-ZA-5590 | 100% |  |
|  | 6 | **Testing** |  | 2026-07-14 | 2026-07-20 |  |  |  |
| SDR-2-CON-ST-ZA-5580 |  | Testing ST GRP Pipes | 21d | 2026-07-14 A | 2026-07-20 A | SDR-2-CON-ST-ZA-5540 | 100% |  |
|  | 3 | **Backfilling** |  | 2026-08-09 | 2026-08-16 |  |  |  |
| SDR-2-CON-ST-ZA-5550 |  | Backfilling ST GRP Pipes | 21d | 2026-08-09 A | 2026-08-16 A | SDR-2-CON-ST-ZA-5580 | 100% |  |
|  | 4 | **Manholes** |  | 2026-05-18 | 2026-11-11 |  |  |  |
|  | 1 | **Excavation** |  | 2026-05-18 | 2026-06-06 |  |  |  |
| SDR-2-CON-ST-ZA-6810 |  | Excavation Manholes Section 1 | 21d | 2026-05-18 A | 2026-05-31 A | SDR-2-CON-ST-ZA-6800 SS | 100% |  |
| SDR-2-CON-ST-ZA-5560 |  | Excavation Manholes Section 2 | 21d | 2026-06-02 A | 2026-06-06 A | SDR-2-CON-ST-ZA-6810 FS+3d | 100% |  |
|  | 2 | **bedding Works** |  | 2026-05-23 | 2026-06-06 |  |  |  |
| SDR-2-CON-ST-ZA-5600 |  | Sand bedding for Manholes | 21d | 2026-05-23 A | 2026-06-06 A | SDR-2-CON-ST-ZA-5560 | 100% |  |
|  | 3 | **Install Manholes** |  | 2026-06-01 | 2026-07-20 |  |  |  |
| SDR-2-CON-ST-ZA-5610 |  | Manholes Installation | 21d | 2026-06-01 A | 2026-07-20 A | SDR-2-CON-ST-ZA-5600 | 100% |  |
|  | 4 | **Testing** |  | 2026-08-31 | 2026-11-11 |  |  |  |
| SDR-2-CON-ST-ZA-5620 |  | Testing for Manholes | 21d | 2026-08-31 A | 2026-11-11 | SDR-2-CON-ST-ZA-5610 FS+5d | 25% | 79d |
|  | 5 | **Backfilling** |  | 2026-08-16 | 2026-08-20 |  |  |  |
| SDR-2-CON-ST-ZA-5630 |  | Backfilling for Manholes | 21d | 2026-08-16 A | 2026-08-20 A | SDR-2-CON-ST-ZA-5620 SS | 100% |  |
|  | 5 | **Catch basin** |  | 2026-06-12 | 2026-08-30 |  |  |  |
|  | 1 | **Excavation** |  | 2026-06-12 | 2026-07-01 |  |  |  |
| SDR-2-CON-ST-ZA-6820 |  | Excavation for Catch basin Section 1 | 21d | 2026-06-12 A | 2026-07-01 A | SDR-2-CON-ST-ZA-5610 | 100% |  |
| SDR-2-CON-ST-ZA-5570 |  | Excavation for Catch basin Section 2 | 21d | 2026-06-22 A | 2026-07-01 A | SDR-2-CON-ST-ZA-6820 | 100% |  |
|  | 2 | **bedding Works** |  | 2026-08-09 | 2026-08-12 |  |  |  |
| SDR-2-CON-ST-ZA-5640 |  | Sand Dedding for Catch basin | 21d | 2026-08-09 A | 2026-08-12 A | SDR-2-CON-ST-ZA-5570 | 100% |  |
|  | 3 | **Install Catch basin** |  | 2026-08-13 | 2026-08-18 |  |  |  |
| SDR-2-CON-ST-ZA-6830 |  | Install Catch basin Section 1 | 21d | 2026-08-13 A | 2026-08-16 A | SDR-2-CON-ST-ZA-5640 | 100% |  |
| SDR-2-CON-ST-ZA-5650 |  | Install Catch basin Section 2 | 21d | 2026-08-16 A | 2026-08-18 A | SDR-2-CON-ST-ZA-6830, SDR-2-CON-ST-ZA-5640, SDR-2-CON-ST-ZA-5400 FS+4d, SDR-2-CON-ST-ZA-5550 | 100% |  |
|  | 4 | **Testing** |  | 2026-08-18 | 2026-08-19 |  |  |  |
| SDR-2-CON-ST-ZA-5660 |  | Testing for Catch basin pipe | 21d | 2026-08-18 A | 2026-08-19 A | SDR-2-CON-ST-ZA-5650 | 100% |  |
|  | 5 | **Backfilling** |  | 2026-08-20 | 2026-08-30 |  |  |  |
| SDR-2-CON-ST-ZA-5670 |  | Backfilling for Catch basin | 15d | 2026-08-20 A | 2026-08-30 A | SDR-2-CON-ST-ZA-5660 | 100% |  |
|  | 13 | **STORM WATER LINE IN ( PH2-G-MCG0 )** |  | 2026-05-08 | 2026-11-18 |  |  |  |
|  | 8 | **Pipes Works** |  | 2026-05-08 | 2026-08-17 |  |  |  |
|  | 1 | **Excavation** |  | 2026-05-08 | 2026-05-31 |  |  |  |
| SDR-2-CON-ST-ZA-6840 |  | Excavation for GRP Pipes Section 1 | 21d | 2026-05-08 A | 2026-05-18 A | SDR-2-CON-ST-ZA-6800 SS+4d | 100% |  |
| SDR-2-CON-ST-ZA-5980 |  | Excavation for GRP Pipes Section 2 | 21d | 2026-05-18 A | 2026-05-31 A | SDR-2-CON-ST-ZA-6840 FS+8d | 100% |  |
|  | 7 | **bedding Works** |  | 2026-06-01 | 2026-06-08 |  |  |  |
| SDR-2-CON-ST-ZA-6040 |  | Sand bedding for GRP Pipes | 21d | 2026-06-01 A | 2026-06-08 A | SDR-2-CON-ST-ZA-5980 | 100% |  |
|  | 2 | **Pipes Laying** |  | 2026-06-06 | 2026-07-06 |  |  |  |
| SDR-2-CON-ST-ZA-5990 |  | Install ST GRP Pipes | 21d | 2026-06-06 A | 2026-07-06 A | SDR-2-CON-ST-ZA-6040 | 100% |  |
|  | 6 | **Testing** |  | 2026-07-07 | 2026-07-20 |  |  |  |
| SDR-2-CON-ST-ZA-6030 |  | Testing ST GRP Pipes | 21d | 2026-07-07 A | 2026-07-20 A | SDR-2-CON-ST-ZA-5990 | 100% |  |
|  | 3 | **Backfilling** |  | 2026-08-16 | 2026-08-17 |  |  |  |
| SDR-2-CON-ST-ZA-6000 |  | Backfilling ST GRP Pipes | 21d | 2026-08-16 A | 2026-08-17 A | SDR-2-CON-ST-ZA-6030 | 100% |  |
|  | 4 | **Manholes** |  | 2026-05-16 | 2026-11-18 |  |  |  |
|  | 1 | **Excavation** |  | 2026-05-16 | 2026-06-01 |  |  |  |
| SDR-2-CON-ST-ZA-6850 |  | Excavation Manholes Section 1 | 21d | 2026-05-16 A | 2026-05-23 A | SDR-2-CON-ST-ZA-6840 SS | 100% |  |
| SDR-2-CON-ST-ZA-6010 |  | Excavation Manholes Section 2 | 21d | 2026-05-23 A | 2026-06-01 A | SDR-2-CON-ST-ZA-6850 FS+3d | 100% |  |
|  | 2 | **bedding Works** |  | 2026-06-02 | 2026-06-06 |  |  |  |
| SDR-2-CON-ST-ZA-6050 |  | Sand bedding for Manholes | 21d | 2026-06-02 A | 2026-06-06 A | SDR-2-CON-ST-ZA-6010, SDR-2-PRO-DEL-E-1160 SS | 100% |  |
|  | 3 | **Install Manholes** |  | 2026-06-07 | 2026-07-01 |  |  |  |
| SDR-2-CON-ST-ZA-6060 |  | Manholes Installation | 21d | 2026-06-07 A | 2026-07-01 A | SDR-2-CON-ST-ZA-6050 | 100% |  |
|  | 4 | **Testing** |  | 2026-09-07 | 2026-11-18 |  |  |  |
| SDR-2-CON-ST-ZA-6070 |  | Testing for Manholes | 21d | 2026-09-07 A | 2026-11-18 | SDR-2-CON-ST-ZA-6060 | 25% | 79d |
|  | 5 | **Backfilling** |  | 2026-08-17 | 2026-08-20 |  |  |  |
| SDR-2-CON-ST-ZA-6080 |  | Backfilling for Manholes | 21d | 2026-08-17 A | 2026-08-20 A | SDR-2-CON-ST-ZA-6070 SS | 100% |  |
|  | 5 | **Catch basin** |  | 2026-06-08 | 2026-08-29 |  |  |  |
|  | 1 | **Excavation** |  | 2026-06-08 | 2026-07-16 |  |  |  |
| SDR-2-CON-ST-ZA-6860 |  | Excavation for Catch basin Section 1 | 20d | 2026-06-08 A | 2026-07-16 A | SDR-2-CON-ST-ZA-6060 FS+18d | 100% |  |
| SDR-2-CON-ST-ZA-6020 |  | Excavation for Catch basin Section 2 | 20d | 2026-06-15 A | 2026-07-16 A | SDR-2-CON-ST-ZA-6860 | 100% |  |
|  | 2 | **bedding Works** |  | 2026-07-23 | 2026-07-28 |  |  |  |
| SDR-2-CON-ST-ZA-6090 |  | Sand Dedding for Catch basin | 21d | 2026-07-23 A | 2026-07-28 A | SDR-2-CON-ST-ZA-6020 | 100% |  |
|  | 3 | **Install Catch basin** |  | 2026-07-27 | 2026-08-01 |  |  |  |
| SDR-2-CON-ST-ZA-6100 |  | Install Catch basin | 21d | 2026-07-27 A | 2026-08-01 A | SDR-2-CON-ST-ZA-6090 | 100% |  |
|  | 4 | **Testing** |  | 2026-08-03 | 2026-08-10 |  |  |  |
| SDR-2-CON-ST-ZA-6110 |  | Testing for Catch basin pipe | 8d | 2026-08-03 A | 2026-08-10 A | SDR-2-CON-ST-ZA-6100 | 100% |  |

| ID | WBS | Task | Duration | Start | Finish | Predecessors | Complete | Total float |
| --- | --- | --- | --- | --- | --- | --- | --- | --- |
|  | 5 | **Backfilling** |  | 2026-08-09 | 2026-08-29 |  |  |  |
| SDR-2-CON-ST-ZA-6120 |  | Backfilling for Catch basin | 21d | 2026-08-09 A | 2026-08-29 A | SDR-2-CON-ST-ZA-6110 | 100% |  |
|  | SN | **Sewerage Network** |  | 2026-05-18 | 2027-05-05 |  |  |  |
|  | ZA | **ZONE A** |  | 2026-05-18 | 2027-05-05 |  |  |  |
|  | 3 | **LINE 1 ( PH2-A-MCA0 )** |  | 2026-06-01 | 2026-12-05 |  |  |  |
|  | 7 | **Pipes Work** |  | 2026-06-01 | 2026-12-05 |  |  |  |
|  | 1 | **Excavation** |  | 2026-06-01 | 2026-07-21 |  |  |  |
| SDR-2-CON-SE-ZA-2460 |  | Excavation for GRP Pipe 200mm Diameter Section 1 | 21d | 2026-06-01 A | 2026-06-08 A | SDR-2-CON-ST-ZA-4780 | 100% |  |
| SDR-2-CON-SE-ZA-1000 |  | Excavation for GRP Pipe 200mm Diameter Section 2 | 20d | 2026-06-08 A | 2026-07-21 A | SDR-2-CON-SE-ZA-2460 FS+3d, SDR-2-PRO-DEL-E-1190 SS, SDR-2-PRO-DEL-E-1180 SS, SDR-2-PRO-DEL-E-1170 SS, SDR-2-PRO-DES-C-1020 SS | 100% |  |
|  | 5 | **bedding Works** |  | 2026-06-15 | 2026-07-25 |  |  |  |
| SDR-2-CON-SE-ZA-1420 |  | Sand bedding for GRP Pipe 200mm Diameter | 21d | 2026-06-15 A | 2026-07-25 A | SDR-2-CON-SE-ZA-1000 | 100% |  |
|  | 2 | **Pipes Laying** |  | 2026-06-22 | 2026-11-09 |  |  |  |
| SDR-2-CON-SE-ZA-1010 |  | 200 mm GRP Pipe Laying | 21d | 2026-06-22 A | 2026-11-09 | SDR-2-CON-SE-ZA-1000, SDR-2-CON-SE-ZA-1420 | 90% | 106d |
|  | 3 | **Testing** |  | 2026-08-16 | 2026-11-10 |  |  |  |
| SDR-2-CON-SE-ZA-1020 |  | Testing of 200 mm GRP Pipe. | 21d | 2026-08-16 A | 2026-11-10 | SDR-2-CON-SE-ZA-1010 FF, SDR-2-CON-RW-ZA-1760 FF | 55% | 105d |
|  | 6 | **Backfilling** |  | 2026-11-11 | 2026-12-05 |  |  |  |
| SDR-2-CON-SE-ZA-1430 |  | Backfilling of 200 mm GRP Pipe. | 21d | 2026-11-11 | 2026-12-05 | SDR-2-CON-SE-ZA-1020 |  | 105d |
|  | 4 | **Manholes** |  | 2026-06-15 | 2026-12-03 |  |  |  |
|  | 1 | **Excavation** |  | 2026-06-15 | 2026-07-21 |  |  |  |
| SDR-2-CON-SE-ZA-2470 |  | Excavation for manhole. Section 1 | 21d | 2026-06-15 A | 2026-06-24 A | SDR-2-CON-SE-ZA-2460 SS | 100% |  |
| SDR-2-CON-SE-ZA-1030 |  | Excavation for manhole. Section 2 | 21d | 2026-07-01 A | 2026-07-21 A | SDR-2-CON-SE-ZA-2470, SDR-2-CON-RW-ZA-1040 | 100% |  |
|  | 2 | **bedding Works** |  | 2026-07-05 | 2026-07-23 |  |  |  |
| SDR-2-CON-SE-ZA-1450 |  | Sand bedding for manhole. | 21d | 2026-07-05 A | 2026-07-23 A | SDR-2-CON-SE-ZA-1030 | 100% |  |
|  | 3 | **Install Manholes** |  | 2026-07-06 | 2026-10-26 |  |  |  |
| SDR-2-CON-SE-ZA-1040 |  | Manhole Installation | 21d | 2026-07-06 A | 2026-10-26 A | SDR-2-CON-RW-ZA-3110, SDR-2-CON-SE-ZA-1030, SDR-2-PRO-MAS-C-1070, SDR-2-PRO-ST-M-1030 FF, SDR-2-CON-SE-ZA-1450 | 100% |  |
|  | 4 | **Testing** |  | 2026-07-09 | 2026-11-09 |  |  |  |
| SDR-2-CON-SE-ZA-1050 |  | Testing | 21d | 2026-07-09 A | 2026-11-09 | SDR-2-CON-RW-ZA-2900 | 60% | 109d |
|  | 5 | **Backfilling** |  | 2026-11-10 | 2026-12-03 |  |  |  |
| SDR-2-CON-SE-ZA-1440 |  | Backfilling | 21d | 2026-11-10 | 2026-12-03 | SDR-2-CON-SE-ZA-1050, SDR-2-CON-ST-ZA-6080 FS+11d, SDR-2-CON-ST-ZA-6000 FS+9d, SDR-2-CON-ST-ZA-5630 FS+10d |  | 109d |
|  | 4 | **LINE 2 AND LINE 3 ( PH2-A-MCC0 )** |  | 2026-06-08 | 2027-03-16 |  |  |  |
|  | 7 | **Pipes Work** |  | 2026-06-08 | 2027-03-16 |  |  |  |
|  | 1 | **Excavation** |  | 2026-06-08 | 2026-06-22 |  |  |  |
| SDR-2-CON-SE-ZA-2480 |  | Excavation for GRP Pipe 200mm Diameter Section 1 | 21d | 2026-06-08 A | 2026-06-15 A | SDR-2-CON-SE-ZA-2460 SS+10d | 100% |  |
| SDR-2-CON-SE-ZA-1460 |  | Excavation for GRP Pipe 200mm Diameter Section 2 | 20d | 2026-06-15 A | 2026-06-22 A | SDR-2-CON-SE-ZA-2480 FS+7d | 100% |  |
|  | 5 | **bedding Works** |  | 2026-07-12 | 2026-07-20 |  |  |  |
| SDR-2-CON-SE-ZA-1520 |  | Sand bedding for GRP Pipe 200mm Diameter | 21d | 2026-07-12 A | 2026-07-20 A | SDR-2-CON-SE-ZA-1460 | 100% |  |
|  | 2 | **Pipes Laying** |  | 2026-07-22 | 2026-11-29 |  |  |  |
| SDR-2-CON-SE-ZA-1470 |  | 200 mm GRP Pipe Laying | 21d | 2026-07-22 A | 2026-11-29 | SDR-2-CON-SE-ZA-1460, SDR-2-CON-SE-ZA-1520, SDR-2-CON-RW-ZG-2260 FF | 90% | 92d |
|  | 3 | **Testing** |  | 2026-08-17 | 2027-02-14 |  |  |  |
| SDR-2-CON-SE-ZA-1480 |  | Testing of 200 mm GRP Pipe. | 21d | 2026-08-17 A | 2027-02-14 | SDR-2-CON-ST-ZA-5550, SDR-2-CON-RW-ZA-1050 FS+2d, SDR-2-CON-SE-ZA-1470 FF, SDR-2-CON-ST-ZA-5100 FF, SDR-2-CON-ST-ZA-1300 FF | 60% | 26d |
|  | 6 | **Backfilling** |  | 2027-02-15 | 2027-03-16 |  |  |  |
| SDR-2-CON-SE-ZA-1530 |  | Backfilling of 200 mm GRP Pipe. | 21d | 2027-02-15 | 2027-03-16 | SDR-2-CON-SE-ZA-1480 |  | 26d |
|  | 4 | **Manholes** |  | 2026-06-11 | 2026-12-23 |  |  |  |
|  | 1 | **Excavation** |  | 2026-06-11 | 2026-06-30 |  |  |  |
| SDR-2-CON-SE-ZA-2490 |  | Excavation for manhole. Section 1 | 21d | 2026-06-11 A | 2026-06-20 A | SDR-2-CON-SE-ZA-2480 SS | 100% |  |
| SDR-2-CON-SE-ZA-1490 |  | Excavation for manhole. Section 2 | 21d | 2026-06-21 A | 2026-06-30 A | SDR-2-CON-SE-ZA-2490 FS+3d | 100% |  |
|  | 2 | **bedding Works** |  | 2026-07-01 | 2026-07-13 |  |  |  |
| SDR-2-CON-SE-ZA-1550 |  | Sand bedding for manhole. | 21d | 2026-07-01 A | 2026-07-13 A | SDR-2-CON-SE-ZA-1490 | 100% |  |
|  | 3 | **Install Manholes** |  | 2026-07-07 | 2026-10-06 |  |  |  |
| SDR-2-CON-SE-ZA-1500 |  | Manhole Installation | 21d | 2026-07-07 A | 2026-10-06 A | SDR-2-CON-SE-ZA-1490, SDR-2-CON-SE-ZA-1550, SDR-2-CON-RW-ZG-2500 FF | 100% |  |
|  | 4 | **Testing** |  | 2026-08-26 | 2026-11-29 |  |  |  |
| SDR-2-CON-SE-ZA-1510 |  | Testing | 21d | 2026-08-26 A | 2026-11-29 | SDR-2-CON-ST-ZA-5550, SDR-2-CON-ST-ZA-5400, SDR-2-CON-RW-ZG-1060 FF | 45% | 92d |
|  | 5 | **Backfilling** |  | 2026-11-30 | 2026-12-23 |  |  |  |
| SDR-2-CON-SE-ZA-1540 |  | Backfilling | 21d | 2026-11-30 | 2026-12-23 | SDR-2-CON-SE-ZA-1510 |  | 92d |
|  | 5 | **LINE 4 AND LINE 5 ( PH2-A-MCD0 )** |  | 2026-05-18 | 2027-05-05 |  |  |  |
|  | 7 | **Pipes Work** |  | 2026-05-18 | 2027-03-16 |  |  |  |
|  | 1 | **Excavation** |  | 2026-05-18 | 2026-06-15 |  |  |  |
| SDR-2-CON-SE-ZA-2500 |  | Excavation for GRP Pipe 200mm Diameter Section 1 | 21d | 2026-05-18 A | 2026-05-24 A | SDR-2-CON-ST-ZA-4030 FS+10d, SDR-2-CON-ST-ZA-6190 | 100% |  |
| SDR-2-CON-SE-ZA-1560 |  | Excavation for GRP Pipe 200mm Diameter Section 2 | 21d | 2026-05-24 A | 2026-06-15 A | SDR-2-CON-SE-ZA-2500 FS+4d, SDR-2-CON-RW-ZG-2250 | 100% |  |
|  | 5 | **bedding Works** |  | 2026-06-22 | 2026-06-30 |  |  |  |
| SDR-2-CON-SE-ZA-1620 |  | Sand bedding for GRP Pipe 200mm Diameter | 21d | 2026-06-22 A | 2026-06-30 A | SDR-2-CON-SE-ZA-1560 | 100% |  |
|  | 2 | **Pipes Laying** |  | 2026-07-21 | 2026-11-09 |  |  |  |
| SDR-2-CON-SE-ZA-1570 |  | 200 mm GRP Pipe Laying | 21d | 2026-07-21 A | 2026-11-09 | SDR-2-CON-SE-ZA-1560, SDR-2-CON-SE-ZA-1620 | 90% | 109d |
|  | 3 | **Testing** |  | 2026-08-16 | 2027-02-14 |  |  |  |
| SDR-2-CON-SE-ZA-1580 |  | Testing of 200 mm GRP Pipe. | 21d | 2026-08-16 A | 2027-02-14 | SDR-2-CON-ST-ZA-6160, SDR-2-CON-SE-ZA-1570 FF, SDR-2-CON-ST-ZA-4500 FF | 60% | 26d |
|  | 6 | **Backfilling** |  | 2027-02-15 | 2027-03-16 |  |  |  |
| SDR-2-CON-SE-ZA-1630 |  | Backfilling of 200 mm GRP Pipe. | 21d | 2027-02-15 | 2027-03-16 | SDR-2-CON-SE-ZA-1580 |  | 26d |
|  | 4 | **Manholes** |  | 2026-05-18 | 2027-05-05 |  |  |  |
|  | 1 | **Excavation** |  | 2026-05-18 | 2026-07-16 |  |  |  |
| SDR-2-CON-SE-ZA-2510 |  | Excavation for manhole. Section 1 | 21d | 2026-05-18 A | 2026-05-25 A | SDR-2-CON-SE-ZA-2500 | 100% |  |

| ID | WBS | Task | Duration | Start | Finish | Predecessors | Complete | Total float |
| --- | --- | --- | --- | --- | --- | --- | --- | --- |
| SDR-2-CON-SE-ZA-1590 |  | Excavation for manhole. Section 2 | 21d | 2026-07-09 A | 2026-07-16 A | SDR-2-CON-SE-ZA-2510 | 100% |  |
|  | 2 | **bedding Works** |  | 2026-07-16 | 2026-07-27 |  |  |  |
| SDR-2-CON-SE-ZA-1650 |  | Sand bedding for manhole. | 21d | 2026-07-16 A | 2026-07-27 A | SDR-2-CON-SE-ZA-1590 | 100% |  |
|  | 3 | **Install Manholes** |  | 2026-07-27 | 2026-10-06 |  |  |  |
| SDR-2-CON-SE-ZA-1600 |  | Manhole Installation | 21d | 2026-07-27 A | 2026-10-06 A | SDR-2-CON-ST-ZA-6160, SDR-2-CON-SE-ZA-1590, SDR-2-CON-SE-ZA-1650, SDR-2-CON-ST-ZA-4500 FF | 100% |  |
|  | 4 | **Testing** |  | 2026-08-27 | 2027-02-15 |  |  |  |
| SDR-2-CON-SE-ZA-1610 |  | Testing | 21d | 2026-08-27 A | 2027-02-15 | SDR-2-CON-SE-ZA-1600 FF | 25% | 43d |
|  | 5 | **Backfilling** |  | 2027-04-12 | 2027-05-05 |  |  |  |
| SDR-2-CON-SE-ZA-2690 |  | Backfilling | 21d | 2027-04-12 | 2027-05-05 | SDR-2-CON-SE-ZA-1610, SDR-2-CON-ST-ZA-3350 |  | 0d |
|  | 6 | **LINE 6 AND LINE 7 ( PH2-A-MCE0 )** |  | 2026-06-08 | 2027-03-17 |  |  |  |
|  | 7 | **Pipes Work** |  | 2026-06-08 | 2027-03-17 |  |  |  |
|  | 1 | **Excavation** |  | 2026-06-08 | 2026-07-20 |  |  |  |
| SDR-2-CON-SE-ZA-2520 |  | Excavation for GRP Pipe 200mm Diameter Section 1 | 21d | 2026-06-08 A | 2026-06-15 A | SDR-2-CON-ST-ZA-4180 FS+6d | 100% |  |
| SDR-2-CON-SE-ZA-1660 |  | Excavation for GRP Pipe 200mm Diameter Section 2 | 21d | 2026-06-15 A | 2026-07-20 A | SDR-2-CON-SE-ZA-2520 FS+3d | 100% |  |
|  | 5 | **bedding Works** |  | 2026-07-20 | 2026-08-05 |  |  |  |
| SDR-2-CON-SE-ZA-1720 |  | Sand bedding for GRP Pipe 200mm Diameter | 21d | 2026-07-20 A | 2026-08-05 A | SDR-2-CON-SE-ZA-1660 | 100% |  |
|  | 2 | **Pipes Laying** |  | 2026-07-28 | 2027-01-02 |  |  |  |
| SDR-2-CON-SE-ZA-1670 |  | 200 mm GRP Pipe Laying | 21d | 2026-07-28 A | 2027-01-02 | SDR-2-CON-SE-ZA-1660, SDR-2-CON-SE-ZA-1720, SDR-2-CON-RW-ZA-2850 FF | 85% | 70d |
|  | 3 | **Testing** |  | 2026-08-16 | 2027-02-15 |  |  |  |
| SDR-2-CON-SE-ZA-1680 |  | Testing of 200 mm GRP Pipe. | 21d | 2026-08-16 A | 2027-02-15 | SDR-2-CON-SE-ZA-1670 FF, SDR-2-CON-ST-ZA-4580 FF | 60% | 32d |
|  | 6 | **Backfilling** |  | 2027-02-16 | 2027-03-17 |  |  |  |
| SDR-2-CON-SE-ZA-1730 |  | Backfilling of 200 mm GRP Pipe. | 21d | 2027-02-16 | 2027-03-17 | SDR-2-CON-SE-ZA-1680 |  | 32d |
|  | 4 | **Manholes** |  | 2026-06-14 | 2027-01-17 |  |  |  |
|  | 1 | **Excavation** |  | 2026-06-14 | 2026-07-01 |  |  |  |
| SDR-2-CON-SE-ZA-2530 |  | Excavation for manhole. Section 1 | 21d | 2026-06-14 A | 2026-06-22 A | SDR-2-CON-SE-ZA-2520 SS | 100% |  |
| SDR-2-CON-SE-ZA-1690 |  | Excavation for manhole.Section 2 | 21d | 2026-06-23 A | 2026-07-01 A | SDR-2-CON-SE-ZA-2530 | 100% |  |
|  | 2 | **bedding Works** |  | 2026-07-01 | 2026-07-13 |  |  |  |
| SDR-2-CON-SE-ZA-1750 |  | Sand bedding for manhole. | 21d | 2026-07-01 A | 2026-07-13 A | SDR-2-CON-SE-ZA-1690 | 100% |  |
|  | 3 | **Install Manholes** |  | 2026-07-15 | 2026-10-06 |  |  |  |
| SDR-2-CON-SE-ZA-1700 |  | Manhole Installation | 21d | 2026-07-15 A | 2026-10-06 A | SDR-2-CON-SE-ZA-1690, SDR-2-CON-SE-ZA-1750 | 100% |  |
|  | 4 | **Testing** |  | 2026-08-27 | 2026-12-17 |  |  |  |
| SDR-2-CON-SE-ZA-1710 |  | Testing | 21d | 2026-08-27 A | 2026-12-17 | SDR-2-CON-ST-ZA-1300 FF, SDR-2-CON-RW-ZA-2370 FF | 30% | 78d |
|  | 5 | **Backfilling** |  | 2026-12-24 | 2027-01-17 |  |  |  |
| SDR-2-CON-SE-ZA-1740 |  | Backfilling | 21d | 2026-12-24 | 2027-01-17 | SDR-2-CON-SE-ZA-1710 FS+5d |  | 78d |
|  | 7 | **LINE 8 AND LINE 9 ( PH2-A-MCF0 )** |  | 2026-06-23 | 2026-12-09 |  |  |  |
|  | 7 | **Pipes Work** |  | 2026-06-23 | 2026-12-03 |  |  |  |
|  | 1 | **Excavation** |  | 2026-06-23 | 2026-07-13 |  |  |  |
| SDR-2-CON-SE-ZA-2540 |  | Excavation for GRP Pipe 200mm Diameter Section 1 | 21d | 2026-06-23 A | 2026-07-02 A | SDR-2-CON-ST-ZA-4330 | 100% |  |
| SDR-2-CON-SE-ZA-1760 |  | Excavation for GRP Pipe 200mm Diameter Section 2 | 21d | 2026-07-04 A | 2026-07-13 A | SDR-2-CON-SE-ZA-2540 FS+3d | 100% |  |
|  | 5 | **bedding Works** |  | 2026-07-14 | 2026-07-27 |  |  |  |
| SDR-2-CON-SE-ZA-1820 |  | Sand bedding for GRP Pipe 200mm Diameter | 21d | 2026-07-14 A | 2026-07-27 A | SDR-2-CON-SE-ZA-1760, SDR-2-CON-RW-ZG-1950 SS | 100% |  |
|  | 2 | **Pipes Laying** |  | 2026-07-27 | 2026-11-09 |  |  |  |
| SDR-2-CON-SE-ZA-1770 |  | 200 mm GRP Pipe Laying | 21d | 2026-07-27 A | 2026-11-09 | SDR-2-CON-SE-ZA-1760, SDR-2-CON-SE-ZA-1820, SDR-2-CON-RW-ZG-2500 FF | 75% | 109d |
|  | 3 | **Testing** |  | 2026-08-18 | 2026-11-09 |  |  |  |
| SDR-2-CON-SE-ZA-1780 |  | Testing of 200 mm GRP Pipe. | 21d | 2026-08-18 A | 2026-11-09 | SDR-2-CON-SE-ZA-1770 FF | 60% | 109d |
|  | 6 | **Backfilling** |  | 2026-11-10 | 2026-12-03 |  |  |  |
| SDR-2-CON-SE-ZA-1830 |  | Backfilling of 200 mm GRP Pipe. | 21d | 2026-11-10 | 2026-12-03 | SDR-2-CON-SE-ZA-1780 |  | 109d |
|  | 4 | **Manholes** |  | 2026-06-23 | 2026-12-09 |  |  |  |
|  | 1 | **Excavation** |  | 2026-06-23 | 2026-07-14 |  |  |  |
| SDR-2-CON-SE-ZA-2550 |  | Excavation for manhole. Section 1 | 21d | 2026-06-23 A | 2026-06-30 A | SDR-2-CON-SE-ZA-2540 SS | 100% |  |
| SDR-2-CON-SE-ZA-1790 |  | Excavation for manhole. Section 2 | 21d | 2026-07-01 A | 2026-07-14 A | SDR-2-CON-SE-ZA-2550 FS+3d | 100% |  |
|  | 2 | **bedding Works** |  | 2026-07-01 | 2026-07-20 |  |  |  |
| SDR-2-CON-SE-ZA-1850 |  | Sand bedding for manhole. | 21d | 2026-07-01 A | 2026-07-20 A | SDR-2-CON-SE-ZA-1790 | 100% |  |
|  | 3 | **Install Manholes** |  | 2026-07-08 | 2026-10-06 |  |  |  |
| SDR-2-CON-SE-ZA-1800 |  | Manhole Installation | 21d | 2026-07-08 A | 2026-10-06 A | SDR-2-CON-SE-ZA-1790, SDR-2-CON-SE-ZA-1850 | 100% |  |
|  | 4 | **Testing** |  | 2026-08-27 | 2026-11-09 |  |  |  |
| SDR-2-CON-SE-ZA-1810 |  | Testing | 21d | 2026-08-27 A | 2026-11-09 | SDR-2-CON-SE-ZA-1800 FF | 30% | 111d |
|  | 5 | **Backfilling** |  | 2026-11-19 | 2026-12-09 |  |  |  |
| SDR-2-CON-SE-ZA-1840 |  | Backfilling | 18d | 2026-11-19 | 2026-12-09 | SDR-2-CON-SE-ZA-1810 FS+9d |  | 111d |
|  | 8 | **LINE 10 AND LINE 11 ( PH2-A-MCG0 )** |  | 2026-06-16 | 2027-03-06 |  |  |  |
|  | 7 | **Pipes Work** |  | 2026-06-28 | 2027-02-21 |  |  |  |
|  | 1 | **Excavation** |  | 2026-06-28 | 2026-07-13 |  |  |  |
| SDR-2-CON-SE-ZA-2560 |  | Excavation for GRP Pipe 200mm Diameter Section 1 | 21d | 2026-06-28 A | 2026-07-08 A | SDR-2-CON-ST-ZA-4480 FS+5d, SDR-2-CON-ST-ZA-6190 | 100% |  |
| SDR-2-CON-SE-ZA-1860 |  | Excavation for GRP Pipe 200mm Diameter Section 2 | 21d | 2026-07-01 A | 2026-07-13 A | SDR-2-CON-SE-ZA-2560 FS+3d | 100% |  |
|  | 5 | **bedding Works** |  | 2026-07-14 | 2026-07-27 |  |  |  |
| SDR-2-CON-SE-ZA-1920 |  | Sand bedding for GRP Pipe 200mm Diameter | 21d | 2026-07-14 A | 2026-07-27 A | SDR-2-CON-SE-ZA-1860, SDR-2-CON-RW-ZG-1950 SS | 100% |  |
|  | 2 | **Pipes Laying** |  | 2026-07-27 | 2026-11-09 |  |  |  |
| SDR-2-CON-SE-ZA-1870 |  | 200 mm GRP Pipe Laying | 21d | 2026-07-27 A | 2026-11-09 | SDR-2-CON-SE-ZA-1860, SDR-2-CON-SE-ZA-1920 | 75% | 106d |
|  | 3 | **Testing** |  | 2026-08-27 | 2027-01-28 |  |  |  |
| SDR-2-CON-SE-ZA-1880 |  | Testing of 200 mm GRP Pipe. | 21d | 2026-08-27 A | 2027-01-28 | SDR-2-CON-ST-ZA-6160, SDR-2-CON-RW-ZA-2740, SDR-2-CON-SE-ZA-1870 FF | 30% | 38d |

| ID | WBS | Task | Duration | Start | Finish | Predecessors | Complete | Total float |
| --- | --- | --- | --- | --- | --- | --- | --- | --- |
|  | 6 | **Backfilling** |  | 2027-01-28 | 2027-02-21 |  |  |  |
| SDR-2-CON-SE-ZA-1930 |  | Backfilling of 200 mm GRP Pipe. | 21d | 2027-01-28 | 2027-02-21 | SDR-2-CON-SE-ZA-1880 |  | 38d |
|  | 4 | **Manholes** |  | 2026-06-16 | 2027-03-06 |  |  |  |
|  | 1 | **Excavation** |  | 2026-06-16 | 2026-07-15 |  |  |  |
| SDR-2-CON-SE-ZA-2570 |  | Excavation for manhole. Section 1 | 21d | 2026-06-16 A | 2026-07-01 A | SDR-2-CON-SE-ZA-2560 SS | 100% |  |
| SDR-2-CON-SE-ZA-1890 |  | Excavation for manhole. Section 2 | 21d | 2026-07-01 A | 2026-07-15 A | SDR-2-CON-SE-ZA-2570 | 100% |  |
|  | 2 | **bedding Works** |  | 2026-07-14 | 2026-07-27 |  |  |  |
| SDR-2-CON-SE-ZA-1950 |  | Sand bedding for manhole. | 21d | 2026-07-14 A | 2026-07-27 A | SDR-2-CON-SE-ZA-1890 | 100% |  |
|  | 3 | **Install Manholes** |  | 2026-07-27 | 2026-10-06 |  |  |  |
| SDR-2-CON-SE-ZA-1900 |  | Manhole Installation | 21d | 2026-07-27 A | 2026-10-06 A | SDR-2-CON-SE-ZA-1890, SDR-2-CON-SE-ZA-1950 | 100% |  |
|  | 4 | **Testing** |  | 2026-08-27 | 2027-01-28 |  |  |  |
| SDR-2-CON-SE-ZA-1910 |  | Testing | 21d | 2026-08-27 A | 2027-01-28 | SDR-2-CON-ST-ZA-6160 | 30% | 31d |
|  | 5 | **Backfilling** |  | 2027-02-09 | 2027-03-06 |  |  |  |
| SDR-2-CON-SE-ZA-1940 |  | Backfilling | 21d | 2027-02-09 | 2027-03-06 | SDR-2-CON-SE-ZA-1910 FS+10d |  | 31d |
|  | 9 | **LINE 12 AND LINE 13 ( PH2-A-MCH0 )** |  | 2026-06-22 | 2026-12-28 |  |  |  |
|  | 7 | **Pipes Work** |  | 2026-06-22 | 2026-12-28 |  |  |  |
|  | 1 | **Excavation** |  | 2026-06-22 | 2026-07-13 |  |  |  |
| SDR-2-CON-SE-ZA-2580 |  | Excavation for GRP Pipe 200mm Diameter Section 1 | 21d | 2026-06-22 A | 2026-06-30 A | SDR-2-CON-ST-ZA-4630 FS+10d | 100% |  |
| SDR-2-CON-SE-ZA-1960 |  | Excavation for GRP Pipe 200mm Diameter Section 2 | 21d | 2026-07-01 A | 2026-07-13 A | SDR-2-CON-SE-ZA-2580 FS+3d, SDR-2-CON-RW-ZA-1330 | 100% |  |
|  | 5 | **bedding Works** |  | 2026-07-14 | 2026-07-22 |  |  |  |
| SDR-2-CON-SE-ZA-2020 |  | Sand bedding for GRP Pipe 200mm Diameter | 21d | 2026-07-14 A | 2026-07-22 A | SDR-2-CON-RW-ZA-2990, SDR-2-CON-SE-ZA-1960 | 100% |  |
|  | 2 | **Pipes Laying** |  | 2026-07-25 | 2026-11-09 |  |  |  |
| SDR-2-CON-SE-ZA-1970 |  | 200 mm GRP Pipe Laying | 21d | 2026-07-25 A | 2026-11-09 | SDR-2-CON-RW-ZA-2950, SDR-2-CON-SE-ZA-1960, SDR-2-CON-SE-ZA-2020 | 85% | 99d |
|  | 3 | **Testing** |  | 2026-11-10 | 2026-12-03 |  |  |  |
| SDR-2-CON-SE-ZA-1980 |  | Testing of 200 mm GRP Pipe. | 21d | 2026-11-10 | 2026-12-03 | SDR-2-CON-RW-ZA-1200, SDR-2-CON-SE-ZA-1970 |  | 99d |
|  | 6 | **Backfilling** |  | 2026-12-05 | 2026-12-28 |  |  |  |
| SDR-2-CON-SE-ZA-2030 |  | Backfilling of 200 mm GRP Pipe. | 21d | 2026-12-05 | 2026-12-28 | SDR-2-CON-SE-ZA-1980 |  | 99d |
|  | 4 | **Manholes** |  | 2026-07-01 | 2026-12-21 |  |  |  |
|  | 1 | **Excavation** |  | 2026-07-01 | 2026-07-21 |  |  |  |
| SDR-2-CON-SE-ZA-2590 |  | Excavation for manhole. Section 1 | 21d | 2026-07-01 A | 2026-07-13 A | SDR-2-CON-SE-ZA-2580 | 100% |  |
| SDR-2-CON-SE-ZA-1990 |  | Excavation for manhole. Section 2 | 21d | 2026-07-14 A | 2026-07-21 A | SDR-2-CON-SE-ZA-2590 | 100% |  |
|  | 2 | **bedding Works** |  | 2026-07-14 | 2026-08-05 |  |  |  |
| SDR-2-CON-SE-ZA-2050 |  | Sand bedding for manhole. | 21d | 2026-07-14 A | 2026-08-05 A | SDR-2-CON-SE-ZA-1990 | 100% |  |
|  | 3 | **Install Manholes** |  | 2026-07-27 | 2026-10-06 |  |  |  |
| SDR-2-CON-SE-ZA-2000 |  | Manhole Installation | 21d | 2026-07-27 A | 2026-10-06 A | SDR-2-CON-SE-ZA-1990, SDR-2-CON-SE-ZA-2050 | 100% |  |
|  | 4 | **Testing** |  | 2026-11-09 | 2026-12-02 |  |  |  |
| SDR-2-CON-SE-ZA-2010 |  | Testing | 21d | 2026-11-09 | 2026-12-02 | SDR-2-CON-SE-ZA-2000, SDR-2-CON-SE-ZA-2000 FF |  | 101d |
|  | 5 | **Backfilling** |  | 2026-12-03 | 2026-12-21 |  |  |  |
| SDR-2-CON-SE-ZA-2040 |  | Backfilling | 16d | 2026-12-03 | 2026-12-21 | SDR-2-CON-SE-ZA-2010 |  | 101d |
|  | ZG | **ZONE G** |  | 2026-05-18 | 2027-02-07 |  |  |  |
|  | 3 | **LINE 49 AND LINE 51 ( PH2-G-MCE0 )** |  | 2026-05-19 | 2026-11-18 |  |  |  |
|  | 7 | **Pipes Work** |  | 2026-06-01 | 2026-08-27 |  |  |  |
|  | 1 | **Excavation** |  | 2026-06-01 | 2026-06-15 |  |  |  |
| SDR-2-CON-SE-ZA-2600 |  | Excavation for GRP Pipe 200mm Diameter Section 1 | 21d | 2026-06-01 A | 2026-06-08 A | SDR-2-CON-ST-ZA-5380 | 100% |  |
| SDR-2-CON-SE-ZA-2060 |  | Excavation for GRP Pipe 200mm Diameter Section 2 | 21d | 2026-06-08 A | 2026-06-15 A | SDR-2-CON-SE-ZA-2600 | 100% |  |
|  | 5 | **bedding Works** |  | 2026-06-15 | 2026-06-25 |  |  |  |
| SDR-2-CON-SE-ZA-2120 |  | Sand bedding for GRP Pipe 200mm Diameter | 21d | 2026-06-15 A | 2026-06-25 A | SDR-2-CON-SE-ZA-2060 | 100% |  |
|  | 2 | **Pipes Laying** |  | 2026-06-22 | 2026-07-06 |  |  |  |
| SDR-2-CON-SE-ZA-2070 |  | 200 mm GRP Pipe Laying | 21d | 2026-06-22 A | 2026-07-06 A | SDR-2-CON-RW-ZA-1340, SDR-2-CON-SE-ZA-2060, SDR-2-CON-SE-ZA-2120 | 100% |  |
|  | 3 | **Testing** |  | 2026-07-07 | 2026-08-05 |  |  |  |
| SDR-2-CON-SE-ZA-2080 |  | Testing of 200 mm GRP Pipe. | 21d | 2026-07-07 A | 2026-08-05 A | SDR-2-CON-SE-ZA-2070 | 100% |  |
|  | 6 | **Backfilling** |  | 2026-08-12 | 2026-08-27 |  |  |  |
| SDR-2-CON-SE-ZA-2130 |  | Backfilling of 200 mm GRP Pipe. | 21d | 2026-08-12 A | 2026-08-27 A | SDR-2-CON-SE-ZA-2080 | 100% |  |
|  | 4 | **Manholes** |  | 2026-05-19 | 2026-11-18 |  |  |  |
|  | 1 | **Excavation** |  | 2026-05-19 | 2026-06-06 |  |  |  |
| SDR-2-CON-SE-ZA-2610 |  | Excavation for manhole. Section 1 | 21d | 2026-05-19 A | 2026-06-01 A | SDR-2-CON-SE-ZA-2600 SS | 100% |  |
| SDR-2-CON-SE-ZA-2090 |  | Excavation for manhole. Section 2 | 21d | 2026-05-31 A | 2026-06-06 A | SDR-2-CON-SE-ZA-2610 FS+3d | 100% |  |
|  | 2 | **bedding Works** |  | 2026-06-01 | 2026-06-11 |  |  |  |
| SDR-2-CON-SE-ZA-2150 |  | Sand bedding for manhole. | 21d | 2026-06-01 A | 2026-06-11 A | SDR-2-CON-SE-ZA-2090 | 100% |  |
|  | 3 | **Install Manholes** |  | 2026-05-31 | 2026-08-31 |  |  |  |
| SDR-2-CON-SE-ZA-2100 |  | Manhole Installation | 21d | 2026-05-31 A | 2026-08-31 A | SDR-2-CON-SE-ZA-2090, SDR-2-CON-SE-ZA-2150 | 100% |  |
|  | 4 | **Testing** |  | 2026-09-07 | 2026-11-18 |  |  |  |
| SDR-2-CON-SE-ZA-2110 |  | Testing | 21d | 2026-09-07 A | 2026-11-18 | SDR-2-CON-SE-ZA-2100, SDR-2-CON-SE-ZA-2100 FF | 10% | 128d |
|  | 5 | **Backfilling** |  | 2026-08-20 | 2026-08-31 |  |  |  |
| SDR-2-CON-SE-ZA-2140 |  | Backfilling | 21d | 2026-08-20 A | 2026-08-31 A | SDR-2-CON-SE-ZA-2110 SS | 100% |  |
|  | 4 | **LINE 50 ( PH2-G-MCD0 )** |  | 2026-05-23 | 2027-02-07 |  |  |  |
|  | 7 | **Pipes Work** |  | 2026-06-01 | 2027-02-07 |  |  |  |
|  | 1 | **Excavation** |  | 2026-06-01 | 2026-06-15 |  |  |  |
| SDR-2-CON-SE-ZA-2620 |  | Excavation for GRP Pipe 200mm Diameter Section 1 | 21d | 2026-06-01 A | 2026-06-08 A | SDR-2-CON-ST-ZA-5380 FS+5d | 100% |  |
| SDR-2-CON-SE-ZA-2160 |  | Excavation for GRP Pipe 200mm Diameter Section 2 | 21d | 2026-06-08 A | 2026-06-15 A | SDR-2-CON-SE-ZA-2620 FS+3d | 100% |  |

| ID | WBS | Task | Duration | Start | Finish | Predecessors | Complete | Total float |
| --- | --- | --- | --- | --- | --- | --- | --- | --- |
|  | 5 | **bedding Works** |  | 2026-06-15 | 2026-07-16 |  |  |  |
| SDR-2-CON-SE-ZA-2220 |  | Sand bedding for GRP Pipe 200mm Diameter | 21d | 2026-06-15 A | 2026-07-16 A | SDR-2-CON-SE-ZA-2160 | 100% |  |
|  | 2 | **Pipes Laying** |  | 2026-06-22 | 2026-07-20 |  |  |  |
| SDR-2-CON-SE-ZA-2170 |  | 200 mm GRP Pipe Laying | 21d | 2026-06-22 A | 2026-07-20 A | SDR-2-CON-ST-ZA-6160, SDR-2-CON-SE-ZA-2160, SDR-2-CON-SE-ZA-2220 | 100% |  |
|  | 3 | **Testing** |  | 2026-09-07 | 2027-02-07 |  |  |  |
| SDR-2-CON-SE-ZA-2180 |  | Testing of 200 mm GRP Pipe. | 21d | 2026-09-07 A | 2027-02-07 | SDR-2-CON-SE-ZA-2170 | 10% | 59d |
|  | 6 | **Backfilling** |  | 2026-08-20 | 2026-08-31 |  |  |  |
| SDR-2-CON-SE-ZA-2230 |  | Backfilling of 200 mm GRP Pipe. | 21d | 2026-08-20 A | 2026-08-31 A | SDR-2-CON-SE-ZA-2180 SS | 100% |  |
|  | 4 | **Manholes** |  | 2026-05-23 | 2026-11-18 |  |  |  |
|  | 1 | **Excavation** |  | 2026-05-23 | 2026-06-06 |  |  |  |
| SDR-2-CON-SE-ZA-2630 |  | Excavation for manhole. Section 1 | 21d | 2026-05-23 A | 2026-06-03 A | SDR-2-CON-SE-ZA-2620 SS | 100% |  |
| SDR-2-CON-SE-ZA-2190 |  | Excavation for manhole. Section 2 | 21d | 2026-06-01 A | 2026-06-06 A | SDR-2-CON-SE-ZA-2630 FS+3d | 100% |  |
|  | 2 | **bedding Works** |  | 2026-06-01 | 2026-06-08 |  |  |  |
| SDR-2-CON-SE-ZA-2250 |  | Sand bedding for manhole. | 21d | 2026-06-01 A | 2026-06-08 A | SDR-2-CON-SE-ZA-2190 | 100% |  |
|  | 3 | **Install Manholes** |  | 2026-06-15 | 2026-06-27 |  |  |  |
| SDR-2-CON-SE-ZA-2200 |  | Manhole Installation | 21d | 2026-06-15 A | 2026-06-27 A | SDR-2-CON-SE-ZA-2190, SDR-2-CON-SE-ZA-2250 | 100% |  |
|  | 4 | **Testing** |  | 2026-09-07 | 2026-11-18 |  |  |  |
| SDR-2-CON-SE-ZA-2210 |  | Testing | 21d | 2026-09-07 A | 2026-11-18 | SDR-2-CON-SE-ZA-2200, SDR-2-CON-SE-ZA-2200 FF | 10% | 123d |
|  | 5 | **Backfilling** |  | 2026-08-20 | 2026-08-31 |  |  |  |
| SDR-2-CON-SE-ZA-2240 |  | Backfilling | 17d | 2026-08-20 A | 2026-08-31 A | SDR-2-CON-SE-ZA-2210 SS | 100% |  |
|  | 5 | **LINE 52 AND LINE 53 ( PH2-G-MCF0 )** |  | 2026-05-21 | 2026-11-18 |  |  |  |
|  | 7 | **Pipes Work** |  | 2026-05-21 | 2026-08-31 |  |  |  |
|  | 1 | **Excavation** |  | 2026-05-21 | 2026-06-06 |  |  |  |
| SDR-2-CON-SE-ZA-2640 |  | Excavation for GRP Pipe 200mm Diameter Section 1 | 21d | 2026-05-21 A | 2026-06-01 A | SDR-2-CON-ST-ZA-5530 | 100% |  |
| SDR-2-CON-SE-ZA-2260 |  | Excavation for GRP Pipe 200mm Diameter Section 2 | 21d | 2026-06-01 A | 2026-06-06 A | SDR-2-CON-SE-ZA-2640 FS+3d | 100% |  |
|  | 5 | **bedding Works** |  | 2026-05-21 | 2026-06-08 |  |  |  |
| SDR-2-CON-SE-ZA-2320 |  | Sand bedding for GRP Pipe 200mm Diameter | 21d | 2026-05-21 A | 2026-06-08 A | SDR-2-CON-SE-ZA-2260 | 100% |  |
|  | 2 | **Pipes Laying** |  | 2026-06-09 | 2026-07-01 |  |  |  |
| SDR-2-CON-SE-ZA-2270 |  | 200 mm GRP Pipe Laying | 21d | 2026-06-09 A | 2026-07-01 A | SDR-2-CON-SE-ZA-2260, SDR-2-CON-SE-ZA-2320 | 100% |  |
|  | 3 | **Testing** |  | 2026-08-20 | 2026-08-27 |  |  |  |
| SDR-2-CON-SE-ZA-2280 |  | Testing of 200 mm GRP Pipe. | 21d | 2026-08-20 A | 2026-08-27 A | SDR-2-CON-SE-ZA-2270 | 100% |  |
|  | 6 | **Backfilling** |  | 2026-08-26 | 2026-08-31 |  |  |  |
| SDR-2-CON-SE-ZA-2330 |  | Backfilling of 200 mm GRP Pipe. | 21d | 2026-08-26 A | 2026-08-31 A | SDR-2-CON-SE-ZA-2280 | 100% |  |
|  | 4 | **Manholes** |  | 2026-05-23 | 2026-11-18 |  |  |  |
|  | 1 | **Excavation** |  | 2026-05-23 | 2026-06-06 |  |  |  |
| SDR-2-CON-SE-ZA-2650 |  | Excavation for manhole. Section 1 | 21d | 2026-05-23 A | 2026-06-03 A | SDR-2-CON-SE-ZA-2640 SS | 100% |  |
| SDR-2-CON-SE-ZA-2290 |  | Excavation for manhole. Section 2 | 21d | 2026-06-01 A | 2026-06-06 A | SDR-2-CON-SE-ZA-2650 FS+3d | 100% |  |
|  | 2 | **bedding Works** |  | 2026-05-30 | 2026-06-08 |  |  |  |
| SDR-2-CON-SE-ZA-2350 |  | Sand bedding for manhole. | 21d | 2026-05-30 A | 2026-06-08 A | SDR-2-CON-SE-ZA-2290 | 100% |  |
|  | 3 | **Install Manholes** |  | 2026-06-11 | 2026-06-22 |  |  |  |
| SDR-2-CON-SE-ZA-2300 |  | Manhole Installation | 21d | 2026-06-11 A | 2026-06-22 A | SDR-2-CON-SE-ZA-2290, SDR-2-CON-SE-ZA-2350 | 100% |  |
|  | 4 | **Testing** |  | 2026-09-07 | 2026-11-18 |  |  |  |
| SDR-2-CON-SE-ZA-2310 |  | Testing | 21d | 2026-09-07 A | 2026-11-18 | SDR-2-CON-SE-ZA-2300, SDR-2-CON-SE-ZA-2300 FF | 10% | 121d |
|  | 5 | **Backfilling** |  | 2026-08-20 | 2026-08-31 |  |  |  |
| SDR-2-CON-SE-ZA-2340 |  | Backfilling | 21d | 2026-08-20 A | 2026-08-31 A | SDR-2-CON-SE-ZA-2310 SS | 100% |  |
|  | 6 | **LINE 54 AND LINE 55 ( PH2-G-MCG0 )** |  | 2026-05-18 | 2026-11-18 |  |  |  |
|  | 7 | **Pipes Work** |  | 2026-06-08 | 2026-08-31 |  |  |  |
|  | 1 | **Excavation** |  | 2026-06-08 | 2026-06-29 |  |  |  |
| SDR-2-CON-SE-ZA-2660 |  | Excavation for GRP Pipe 200mm Diameter Section 1 | 21d | 2026-06-08 A | 2026-06-21 A | SDR-2-CON-ST-ZA-5980 | 100% |  |
| SDR-2-CON-SE-ZA-2360 |  | Excavation for GRP Pipe 200mm Diameter Section 2 | 21d | 2026-06-22 A | 2026-06-29 A | SDR-2-CON-SE-ZA-2660 FS+3d | 100% |  |
|  | 5 | **bedding Works** |  | 2026-06-26 | 2026-07-01 |  |  |  |
| SDR-2-CON-SE-ZA-2420 |  | Sand bedding for GRP Pipe 200mm Diameter | 21d | 2026-06-26 A | 2026-07-01 A | SDR-2-CON-SE-ZA-2360 | 100% |  |
|  | 2 | **Pipes Laying** |  | 2026-06-25 | 2026-07-04 |  |  |  |
| SDR-2-CON-SE-ZA-2370 |  | 200 mm GRP Pipe Laying | 21d | 2026-06-25 A | 2026-07-04 A | SDR-2-CON-RW-ZG-1360, SDR-2-CON-SE-ZA-2360, SDR-2-CON-SE-ZA-2420 | 100% |  |
|  | 3 | **Testing** |  | 2026-08-13 | 2026-08-20 |  |  |  |
| SDR-2-CON-SE-ZA-2380 |  | Testing of 200 mm GRP Pipe. | 21d | 2026-08-13 A | 2026-08-20 A | SDR-2-CON-SE-ZA-2370, SDR-2-CON-RW-ZG-1060 SS | 100% |  |
|  | 6 | **Backfilling** |  | 2026-08-20 | 2026-08-31 |  |  |  |
| SDR-2-CON-SE-ZA-2430 |  | Backfilling of 200 mm GRP Pipe. | 21d | 2026-08-20 A | 2026-08-31 A | SDR-2-CON-SE-ZA-2380 | 100% |  |
|  | 4 | **Manholes** |  | 2026-05-18 | 2026-11-18 |  |  |  |
|  | 1 | **Excavation** |  | 2026-05-18 | 2026-06-06 |  |  |  |
| SDR-2-CON-SE-ZA-2670 |  | Excavation for manhole. Section 1 | 21d | 2026-05-18 A | 2026-05-31 A | SDR-2-CON-SE-ZA-2660 SS | 100% |  |
| SDR-2-CON-SE-ZA-2390 |  | Excavation for manhole. Section 2 | 21d | 2026-06-01 A | 2026-06-06 A | SDR-2-CON-SE-ZA-2670 FS+3d, SDR-2-CON-RW-ZG-1200 | 100% |  |
|  | 2 | **bedding Works** |  | 2026-06-06 | 2026-06-14 |  |  |  |
| SDR-2-CON-SE-ZA-2450 |  | Sand bedding for manhole. | 21d | 2026-06-06 A | 2026-06-14 A | SDR-2-CON-SE-ZA-2390 | 100% |  |
|  | 3 | **Install Manholes** |  | 2026-06-27 | 2026-07-05 |  |  |  |
| SDR-2-CON-SE-ZA-2400 |  | Manhole Installation | 21d | 2026-06-27 A | 2026-07-05 A | SDR-2-CON-SE-ZA-2390, SDR-2-CON-SE-ZA-2450 | 100% |  |
|  | 4 | **Testing** |  | 2026-09-07 | 2026-11-18 |  |  |  |
| SDR-2-CON-SE-ZA-2410 |  | Testing | 21d | 2026-09-07 A | 2026-11-18 | SDR-2-CON-SE-ZA-2400, SDR-2-CON-SE-ZA-2400 FF | 10% | 134d |
|  | 5 | **Backfilling** |  | 2026-08-20 | 2026-08-31 |  |  |  |
| SDR-2-CON-SE-ZA-2440 |  | Backfilling | 21d | 2026-08-20 A | 2026-08-31 A | SDR-2-CON-SE-ZA-2410 SS | 100% |  |

| ID | WBS | Task | Duration | Start | Finish | Predecessors | Complete | Total float |
| --- | --- | --- | --- | --- | --- | --- | --- | --- |
|  | TSE | **TSE Network** |  | 2026-08-06 | 2027-06-20 |  |  |  |
|  | ZA | **ZONE A** |  | 2026-08-06 | 2027-05-30 |  |  |  |
|  | 1 | **TSE NETWORK IN ( PH2-COL-MC10 )** |  | 2026-08-09 | 2027-05-12 |  |  |  |
|  | 6 | **Pipes Work** |  | 2026-08-09 | 2027-05-12 |  |  |  |
|  | 1 | **Excavation** |  | 2026-08-09 | 2026-12-20 |  |  |  |
| SDR-2-CON-TS-ZA-3200 |  | Excavation for TSE HDPE Pipes 225 mm Section 1 | 20d | 2026-08-09 A | 2026-11-26 | SDR-2-CON-SE-ZA-1000, SDR-2-PRO-ST-M-1010, SDR-2-PRO-ST-E-1060, SDR-2-CON-RW-ZG-1390 FF, SDR-2-CON-RW-ZA-2350 FF | 65% | 23d |
| SDR-2-CON-TS-ZA-1000 |  | Excavation for TSE HDPE Pipes 225 mm Section 2 | 20d | 2026-11-28 | 2026-12-20 | SDR-2-CON-RW-ZG-2300, SDR-2-CON-TS-ZA-3200 FF, SDR-2-CON-CC-ZG-1650 FF |  | 10d |
|  | 6 | **bedding Works** |  | 2026-12-21 | 2027-01-13 |  |  |  |
| SDR-2-CON-TS-ZA-1900 |  | Sand bedding for TSE HDPE Pipes 225 mm | 21d | 2026-12-21 | 2027-01-13 | SDR-2-CON-RW-ZG-1210 FS+4d, SDR-2-CON-TS-ZA-1000 |  | 46d |
|  | 2 | **Pipes Laying** |  | 2027-03-14 | 2027-04-06 |  |  |  |
| SDR-2-CON-TS-ZA-1010 |  | Install TSE 225 mm HDPE Pipe | 21d | 2027-03-14 | 2027-04-06 | SDR-2-CON-ST-ZA-4200, SDR-2-CON-CC-ZA-1820 SS, SDR-2-CON-TS-ZA-1000, SDR-2-PRO-MAL-M-1010, SDR-2-CON-TS-ZA-1900 |  | 1d |
|  | 5 | **Testing** |  | 2027-04-07 | 2027-04-22 |  |  |  |
| SDR-2-CON-TS-ZA-1080 |  | Testing of TSE HDPE Pipe 225 mm. | 14d | 2027-04-07 | 2027-04-22 | SDR-2-CON-CC-ZG-1620, SDR-2-CON-TS-ZA-1010 |  | 1d |
|  | 7 | **Backfilling** |  | 2027-04-19 | 2027-05-12 |  |  |  |
| SDR-2-CON-TS-ZA-1910 |  | Backfilling of TSE HDPE Pipe 225 mm. | 21d | 2027-04-19 | 2027-05-12 | SDR-2-CON-TS-ZA-1080 SS+10d |  | 1d |
|  | 3 | **Valve Chambers & Valves** |  | 2026-11-30 | 2027-04-20 |  |  |  |
|  | 3 | **Excavation** |  | 2026-11-30 | 2027-01-14 |  |  |  |
| SDR-2-CON-TS-ZA-3210 |  | Excavation for Valve Chambers Section 1 | 20d | 2026-11-30 | 2026-12-22 | SDR-2-CON-TS-ZA-3200 SS, SDR-2-CON-RW-ZA-3490, SDR-2-CON-RW-ZA-2350 |  | 20d |
| SDR-2-CON-TS-ZA-1040 |  | Excavation for Valve Chambers Section 2 | 20d | 2026-12-23 | 2027-01-14 | SDR-2-CON-TS-ZA-3210 |  | 20d |
|  | 1 | **bedding Works** |  | 2027-01-16 | 2027-02-08 |  |  |  |
| SDR-2-CON-TS-ZA-1020 |  | Sand bedding for Valve Chambers | 21d | 2027-01-16 | 2027-02-08 | SDR-2-CON-RW-ZG-1060, SDR-2-PRO-MAL-M-1020, SDR-2-CON-TS-ZA-1040 |  | 20d |
|  | 4 | **Install Chambers & Valves** |  | 2027-02-09 | 2027-03-06 |  |  |  |
| SDR-2-CON-TS-ZA-1050 |  | Valve Chambers & Valves Installation | 21d | 2027-02-09 | 2027-03-06 | SDR-2-CON-TS-ZA-1040, SDR-2-CON-TS-ZA-1020 |  | 20d |
|  | 5 | **Testing** |  | 2027-03-07 | 2027-03-27 |  |  |  |
| SDR-2-CON-TS-ZA-1060 |  | Testing Chambers & Valves Installation | 14d | 2027-03-07 | 2027-03-27 | SDR-2-MILS-1060, SDR-2-CON-TS-ZA-1050 |  | 20d |
|  | 6 | **Backfilling** |  | 2027-03-28 | 2027-04-20 |  |  |  |
| SDR-2-CON-TS-ZA-1070 |  | Backfilling Chambers & Valves Installation | 21d | 2027-03-28 | 2027-04-20 | SDR-2-CON-TS-ZA-1060 |  | 20d |
|  | 2 | **TSE NETWORK IN ( PH2-COL-MC20 )** |  | 2026-10-01 | 2027-05-13 |  |  |  |
|  | 6 | **Pipes Work** |  | 2026-10-01 | 2027-05-09 |  |  |  |
|  | 1 | **Excavation** |  | 2026-10-01 | 2027-02-10 |  |  |  |
| SDR-2-CON-TS-ZA-3220 |  | Excavation for TSE HDPE Pipes 225 mm Section 1 | 20d | 2026-10-01 A | 2027-01-18 | SDR-2-CON-SE-ZA-1460, SDR-2-CON-CC-ZG-1610, SDR-2-CON-RW-ZA-3490 | 30% | 4d |
| SDR-2-CON-TS-ZA-2200 |  | Excavation for TSE HDPE Pipes 225 mm Section 2 | 20d | 2027-01-19 | 2027-02-10 | SDR-2-CON-TS-ZA-3220 |  | 4d |
|  | 6 | **bedding Works** |  | 2027-02-11 | 2027-03-08 |  |  |  |
| SDR-2-CON-TS-ZA-2280 |  | Sand bedding for TSE HDPE Pipes 225 mm | 21d | 2027-02-11 | 2027-03-08 | SDR-2-CON-RW-ZA-2370, SDR-2-CON-TS-ZA-2200 |  | 4d |
|  | 2 | **Pipes Laying** |  | 2026-10-03 | 2027-04-06 |  |  |  |
| SDR-2-CON-TS-ZA-2210 |  | Install TSE 225 mm HDPE Pipe | 21d | 2026-10-03 A | 2027-04-06 | SDR-2-CON-TS-ZA-2200, SDR-2-CON-TS-ZA-2280 | 15% | 4d |
|  | 5 | **Testing** |  | 2027-04-07 | 2027-04-18 |  |  |  |
| SDR-2-CON-TS-ZA-2270 |  | Testing of TSE HDPE Pipe 225 mm. | 10d | 2027-04-07 | 2027-04-18 | SDR-2-CON-TS-ZA-2210 |  | 4d |
|  | 7 | **Backfilling** |  | 2027-04-19 | 2027-05-09 |  |  |  |
| SDR-2-CON-TS-ZA-2290 |  | Backfilling of TSE HDPE Pipe 225 mm. | 18d | 2027-04-19 | 2027-05-09 | SDR-2-CON-TS-ZA-2270 |  | 4d |
|  | 3 | **Valve Chambers & Valves** |  | 2026-12-27 | 2027-05-13 |  |  |  |
|  | 3 | **Excavation** |  | 2026-12-27 | 2027-02-10 |  |  |  |
| SDR-2-CON-TS-ZA-3230 |  | Excavation for Valve Chambers Section 1 | 20d | 2026-12-27 | 2027-01-18 | SDR-2-CON-TS-ZA-3220 SS, SDR-2-CON-RW-ZA-3490 |  | 4d |
| SDR-2-CON-TS-ZA-2230 |  | Excavation for Valve Chambers Section 2 | 20d | 2027-01-19 | 2027-02-10 | SDR-2-CON-TS-ZA-3230 |  | 4d |
|  | 1 | **bedding Works** |  | 2027-02-16 | 2027-03-17 |  |  |  |
| SDR-2-CON-TS-ZA-2220 |  | Sand bedding for Valve Chambers | 21d | 2027-02-16 | 2027-03-17 | SDR-2-CON-ST-ZA-6000, SDR-2-CON-ST-ZA-5850, SDR-2-CON-TS-ZA-2230 |  | 0d |
|  | 4 | **Install Chambers & Valves** |  | 2027-03-18 | 2027-04-11 |  |  |  |
| SDR-2-CON-TS-ZA-2240 |  | Valve Chambers & Valves Installation | 21d | 2027-03-18 | 2027-04-11 | SDR-2-CON-TS-ZA-2230, SDR-2-CON-TS-ZA-2220 |  | 0d |
|  | 5 | **Testing** |  | 2027-04-12 | 2027-04-22 |  |  |  |
| SDR-2-CON-TS-ZA-2250 |  | Testing Chambers & Valves Installation | 10d | 2027-04-12 | 2027-04-22 | SDR-2-CON-TS-ZA-2240 |  | 0d |
|  | 6 | **Backfilling** |  | 2027-04-24 | 2027-05-13 |  |  |  |
| SDR-2-CON-TS-ZA-2260 |  | Backfilling Chambers & Valves Installation | 18d | 2027-04-24 | 2027-05-13 | SDR-2-CON-TS-ZA-2250 |  | 0d |
|  | 3 | **TSE NETWORK IN ( PH2-A-MCC0 )** |  | 2026-09-24 | 2027-05-10 |  |  |  |
|  | 6 | **Pipes Work** |  | 2026-09-24 | 2027-02-13 |  |  |  |
|  | 1 | **Excavation** |  | 2026-09-24 | 2026-11-09 |  |  |  |
| SDR-2-CON-TS-ZA-1180 |  | Excavation for TSE HDPE Pipes 125 mm Section 1 | 21d | 2026-09-24 A | 2026-10-01 A | SDR-2-CON-TS-ZA-3240 FS+3d, SDR-2-CON-RW-ZG-1060 | 100% |  |
| SDR-2-CON-TS-ZA-3240 |  | Excavation for TSE HDPE Pipes 125 mm Section 2 | 21d | 2026-10-04 A | 2026-11-09 | SDR-2-CON-SE-ZA-1460 FS+1d | 75% | 45.3d |
|  | 3 | **bedding Works** |  | 2026-10-22 | 2026-12-23 |  |  |  |
| SDR-2-CON-TS-ZA-1920 |  | Sand bedding for TSE HDPE Pipes 125 mm | 21d | 2026-10-22 A | 2026-12-23 | SDR-2-CON-TS-ZA-1180 | 50% | 72d |
|  | 2 | **Pipes Laying** |  | 2026-10-22 | 2027-01-17 |  |  |  |
| SDR-2-CON-TS-ZA-1190 |  | Install TSE 125 mm HDPE Pipe | 21d | 2026-10-22 A | 2027-01-17 | SDR-2-CON-TS-ZA-1180, SDR-2-CON-TS-ZA-1920 | 50% | 72d |
|  | 5 | **Testing** |  | 2027-01-18 | 2027-01-28 |  |  |  |
| SDR-2-CON-TS-ZA-1260 |  | Testing of TSE HDPE Pipe 125 mm. | 10d | 2027-01-18 | 2027-01-28 | SDR-2-CON-TS-ZA-1190 |  | 72d |
|  | 4 | **Backfilling** |  | 2027-01-30 | 2027-02-13 |  |  |  |
| SDR-2-CON-TS-ZA-1930 |  | Backfilling of TSE HDPE Pipe 125 mm. | 13d | 2027-01-30 | 2027-02-13 | SDR-2-CON-TS-ZA-1260 |  | 72d |
|  | 3 | **Valve Chambers & Valves** |  | 2026-11-09 | 2027-05-10 |  |  |  |
|  | 3 | **Excavation** |  | 2026-11-09 | 2026-12-23 |  |  |  |
| SDR-2-CON-TS-ZA-3250 |  | Excavation for Valve Chambers Section 1 | 21d | 2026-11-09 | 2026-12-02 | SDR-2-CON-TS-ZA-3240 SS |  | 45.3d |
| SDR-2-CON-TS-ZA-2010 |  | Excavation for Valve Chambers Section 2 | 18d | 2026-12-03 | 2026-12-23 | SDR-2-CON-TS-ZA-3250 |  | 45.3d |
|  | 1 | **bedding Works** |  | 2026-12-24 | 2027-01-17 |  |  |  |

| ID | WBS | Task | Duration | Start | Finish | Predecessors | Complete | Total float |
| --- | --- | --- | --- | --- | --- | --- | --- | --- |
| SDR-2-CON-TS-ZA-2000 |  | Sand bedding for Valve Chambers | 21d | 2026-12-24 | 2027-01-17 | SDR-2-CON-TS-ZA-2010 |  | 45.3d |
|  | 4 | **Install Chambers & Valves** |  | 2027-03-14 | 2027-04-06 |  |  |  |
| SDR-2-CON-TS-ZA-2020 |  | Valve Chambers & Valves Installation | 21d | 2027-03-14 | 2027-04-06 | SDR-2-TC-CCTV-1080, SDR-2-CON-TS-ZA-2010, SDR-2-CON-TS-ZA-2000 |  | 3.3d |
|  | 5 | **Testing** |  | 2027-04-07 | 2027-04-14 |  |  |  |
| SDR-2-CON-TS-ZA-2030 |  | Testing Chambers & Valves Installation | 7d | 2027-04-07 | 2027-04-14 | SDR-2-CON-TS-ZA-2020 |  | 3.3d |
|  | 6 | **Backfilling** |  | 2027-04-15 | 2027-05-10 |  |  |  |
| SDR-2-CON-TS-ZA-2040 |  | Backfilling Chambers & Valves Installation | 21d | 2027-04-15 | 2027-05-10 | SDR-2-CON-TS-ZA-2030 FS+0.7d |  | 3.3d |
|  | 4 | **TSE NETWORK IN ( PH2-A-MCD0 )** |  | 2026-09-07 | 2027-05-15 |  |  |  |
|  | 6 | **Pipes Work** |  | 2026-09-07 | 2027-05-13 |  |  |  |
|  | 1 | **Excavation** |  | 2026-09-07 | 2026-11-09 |  |  |  |
| SDR-2-CON-TS-ZA-1270 |  | Excavation for TSE HDPE Pipes 90 mm Section 1 | 19d | 2026-09-07 A | 2026-10-01 A | SDR-2-CON-TS-ZA-3260 | 100% |  |
| SDR-2-CON-TS-ZA-3260 |  | Excavation for TSE HDPE Pipes 90 mm Section 2 | 20d | 2026-10-04 A | 2026-11-09 | SDR-2-CON-SE-ZA-1560 | 50% | 55d |
|  | 3 | **bedding Works** |  | 2026-10-22 | 2026-11-29 |  |  |  |
| SDR-2-CON-TS-ZA-1940 |  | Sand bedding for TSE HDPE Pipes 90 mm | 18d | 2026-10-22 A | 2026-11-29 | SDR-2-CON-TS-ZA-1270 | 30% | 84d |
|  | 2 | **Pipes Laying** |  | 2026-10-22 | 2027-04-06 |  |  |  |
| SDR-2-CON-TS-ZA-1280 |  | Install TSE 90 mm HDPE Pipe | 21d | 2026-10-22 A | 2027-04-06 | SDR-2-TC-CCTV-1080, SDR-2-CON-TS-ZA-1940 | 30% | 0d |
|  | 5 | **Testing** |  | 2027-04-07 | 2027-04-19 |  |  |  |
| SDR-2-CON-TS-ZA-1350 |  | Testing of TSE HDPE Pipe 90 mm. | 11d | 2027-04-07 | 2027-04-19 | SDR-2-CON-SE-ZA-2430, SDR-2-CON-SE-ZA-2340, SDR-2-CON-SE-ZA-2330, SDR-2-CON-SE-ZA-2240 SS, SDR-2-CON-TS-ZA-1280 |  | 0d |
|  | 4 | **Backfilling** |  | 2027-04-20 | 2027-05-13 |  |  |  |
| SDR-2-CON-TS-ZA-1950 |  | Backfilling of TSE HDPE Pipe 90 mm. | 21d | 2027-04-20 | 2027-05-13 | SDR-2-CON-TS-ZA-1350 |  | 0d |
|  | 3 | **Valve Chambers & Valves** |  | 2026-11-09 | 2027-05-15 |  |  |  |
|  | 3 | **Excavation** |  | 2026-11-09 | 2026-12-23 |  |  |  |
| SDR-2-CON-TS-ZA-3270 |  | Excavation for Valve Chambers Section 1 | 20d | 2026-11-09 | 2026-12-01 | SDR-2-CON-TS-ZA-3260 SS |  | 55d |
| SDR-2-CON-TS-ZA-2060 |  | Excavation for Valve Chambers Section 2 | 19d | 2026-12-02 | 2026-12-23 | SDR-2-CON-TS-ZA-3270 |  | 55d |
|  | 1 | **bedding Works** |  | 2026-12-24 | 2027-01-11 |  |  |  |
| SDR-2-CON-TS-ZA-2050 |  | Sand bedding for Valve Chambers | 16d | 2026-12-24 | 2027-01-11 | SDR-2-CON-TS-ZA-2060 |  | 55d |
|  | 4 | **Install Chambers & Valves** |  | 2027-03-14 | 2027-04-06 |  |  |  |
| SDR-2-CON-TS-ZA-2070 |  | Valve Chambers & Valves Installation | 21d | 2027-03-14 | 2027-04-06 | SDR-2-TC-CCTV-1080, SDR-2-CON-TS-ZA-2060, SDR-2-CON-TS-ZA-2050 |  | 8d |
|  | 5 | **Testing** |  | 2027-04-07 | 2027-04-22 |  |  |  |
| SDR-2-CON-TS-ZA-2080 |  | Testing Chambers & Valves Installation | 14d | 2027-04-07 | 2027-04-22 | SDR-2-CON-SE-ZA-2340, SDR-2-CON-SE-ZA-2330, SDR-2-CON-SE-ZA-2240 SS, SDR-2-CON-TS-ZA-2070 |  | 8d |
|  | 6 | **Backfilling** |  | 2027-04-24 | 2027-05-15 |  |  |  |
| SDR-2-CON-TS-ZA-2090 |  | Backfilling Chambers & Valves Installation | 19d | 2027-04-24 | 2027-05-15 | SDR-2-CON-TS-ZA-2080 |  | 8d |
|  | 5 | **TSE NETWORK IN ( PH2-A-MCE0 )** |  | 2026-09-07 | 2027-05-30 |  |  |  |
|  | 6 | **Pipes Work** |  | 2026-09-07 | 2027-05-30 |  |  |  |
|  | 1 | **Excavation** |  | 2026-09-07 | 2026-10-08 |  |  |  |
| SDR-2-CON-TS-ZA-3280 |  | Excavation for TSE HDPE Pipes 90 mm Section 1 | 20d | 2026-09-07 A | 2026-09-14 A | SDR-2-CON-SE-ZA-1660 | 100% |  |
| SDR-2-CON-TS-ZA-2600 |  | Excavation for TSE HDPE Pipes 90 mm Section 2 | 20d | 2026-10-05 A | 2026-10-08 A | SDR-2-CON-TS-ZA-3280, SDR-2-CON-TE-ZA-1840, SDR-2-CON-MV-ZA-1260 | 100% |  |
|  | 3 | **bedding Works** |  | 2026-09-30 | 2027-04-05 |  |  |  |
| SDR-2-CON-TS-ZA-2630 |  | Sand bedding for TSE HDPE Pipes 90 mm | 19d | 2026-09-30 A | 2027-04-05 | SDR-2-CON-TS-ZA-2600 | 75% | 18d |
|  | 2 | **Pipes Laying** |  | 2026-09-30 | 2027-04-26 |  |  |  |
| SDR-2-CON-TS-ZA-2610 |  | Install TSE 90 mm HDPE Pipe | 18d | 2026-09-30 A | 2027-04-26 | SDR-2-CON-TS-ZA-2630 | 75% | 18d |
|  | 5 | **Testing** |  | 2027-04-27 | 2027-05-08 |  |  |  |
| SDR-2-CON-TS-ZA-2620 |  | Testing of TSE HDPE Pipe 90 mm. | 10d | 2027-04-27 | 2027-05-08 | SDR-2-CON-TS-ZA-2610 |  | 18d |
|  | 4 | **Backfilling** |  | 2027-05-02 | 2027-05-30 |  |  |  |
| SDR-2-CON-TS-ZA-2640 |  | Backfilling of TSE HDPE Pipe 90 mm. | 20d | 2027-05-02 | 2027-05-30 | SDR-2-CON-TS-ZA-2620 SS+4d |  | 18d |
|  | 3 | **Valve Chambers & Valves** |  | 2026-11-09 | 2027-03-20 |  |  |  |
|  | 3 | **Excavation** |  | 2026-11-09 | 2026-12-24 |  |  |  |
| SDR-2-CON-TS-ZA-3290 |  | Excavation for Valve Chambers Section 1 | 21d | 2026-11-09 | 2026-12-02 | SDR-2-CON-TS-ZA-3280 SS |  | 47d |
| SDR-2-CON-TS-ZA-2660 |  | Excavation for Valve Chambers Section 2 | 19d | 2026-12-03 | 2026-12-24 | SDR-2-CON-TS-ZA-3290 |  | 47d |
|  | 1 | **bedding Works** |  | 2026-12-26 | 2027-01-17 |  |  |  |
| SDR-2-CON-TS-ZA-2650 |  | Sand bedding for Valve Chambers | 20d | 2026-12-26 | 2027-01-17 | SDR-2-CON-TS-ZA-2660 |  | 47d |
|  | 4 | **Install Chambers & Valves** |  | 2027-01-18 | 2027-02-10 |  |  |  |
| SDR-2-CON-TS-ZA-2670 |  | Valve Chambers & Valves Installation | 21d | 2027-01-18 | 2027-02-10 | SDR-2-CON-TS-ZA-2660, SDR-2-CON-TS-ZA-2650 |  | 47d |
|  | 5 | **Testing** |  | 2027-02-11 | 2027-02-18 |  |  |  |
| SDR-2-CON-TS-ZA-2680 |  | Testing Chambers & Valves Installation | 7d | 2027-02-11 | 2027-02-18 | SDR-2-CON-SE-ZA-2240 SS, SDR-2-CON-SE-ZA-2230 SS, SDR-2-CON-SE-ZA-2140 SS, SDR-2-CON-SE-ZA-2130, SDR-2-CON-TS-ZA-2670 |  | 47d |
|  | 6 | **Backfilling** |  | 2027-02-20 | 2027-03-20 |  |  |  |
| SDR-2-CON-TS-ZA-2690 |  | Backfilling Chambers & Valves Installation | 20d | 2027-02-20 | 2027-03-20 | SDR-2-CON-TS-ZA-2680 |  | 47d |
|  | 6 | **TSE NETWORK IN ( PH2-A-MCF0 )** |  | 2026-10-05 | 2027-04-28 |  |  |  |
|  | 6 | **Pipes Work** |  | 2026-10-05 | 2027-01-30 |  |  |  |
|  | 1 | **Excavation** |  | 2026-10-05 | 2026-10-20 |  |  |  |
| SDR-2-CON-TS-ZA-3300 |  | Excavation for TSE HDPE Pipes 90 mm Section 1 | 20d | 2026-10-05 A | 2026-10-08 A | SDR-2-CON-SE-ZA-1760 | 100% |  |
| SDR-2-CON-TS-ZA-2700 |  | Excavation for TSE HDPE Pipes 90 mm Section 2 | 20d | 2026-10-07 A | 2026-10-20 A | SDR-2-CON-TS-ZA-3300 | 100% |  |
|  | 3 | **bedding Works** |  | 2026-10-10 | 2026-12-01 |  |  |  |
| SDR-2-CON-TS-ZA-2730 |  | Sand bedding for TSE HDPE Pipes 90 mm | 20d | 2026-10-10 A | 2026-12-01 | SDR-2-CON-TS-ZA-2700 | 75% | 84d |
|  | 2 | **Pipes Laying** |  | 2026-10-11 | 2026-12-23 |  |  |  |
| SDR-2-CON-TS-ZA-2710 |  | Install TSE 90 mm HDPE Pipe | 19d | 2026-10-11 A | 2026-12-23 | SDR-2-CON-TS-ZA-2730 | 75% | 84d |
|  | 5 | **Testing** |  | 2026-12-24 | 2027-01-05 |  |  |  |
| SDR-2-CON-TS-ZA-2720 |  | Testing of TSE HDPE Pipe 90 mm. | 11d | 2026-12-24 | 2027-01-05 | SDR-2-CON-TS-ZA-2710 |  | 84d |
|  | 4 | **Backfilling** |  | 2027-01-06 | 2027-01-30 |  |  |  |
| SDR-2-CON-TS-ZA-2740 |  | Backfilling of TSE HDPE Pipe 90 mm. | 21d | 2027-01-06 | 2027-01-30 | SDR-2-CON-TS-ZA-2720 |  | 84d |

| ID | WBS | Task | Duration | Start | Finish | Predecessors | Complete | Total float |
| --- | --- | --- | --- | --- | --- | --- | --- | --- |
|  | 3 | **Valve Chambers & Valves** |  | 2026-11-09 | 2027-04-28 |  |  |  |
|  | 3 | **Excavation** |  | 2026-11-09 | 2027-01-30 |  |  |  |
| SDR-2-CON-TS-ZA-3310 |  | Excavation for Valve Chambers Section 1 | 20d | 2026-11-09 | 2026-12-01 | SDR-2-CON-TS-ZA-3300 SS |  | 65d |
| SDR-2-CON-TS-ZA-2760 |  | Excavation for Valve Chambers Section 2 | 20d | 2027-01-07 | 2027-01-30 | SDR-2-CON-TS-ZA-3310, SDR-2-CON-MV-ZA-1260, SDR-2-CON-MV-ZA-1220 |  | 34d |
|  | 1 | **bedding Works** |  | 2027-01-31 | 2027-02-20 |  |  |  |
| SDR-2-CON-TS-ZA-2750 |  | Sand bedding for Valve Chambers | 18d | 2027-01-31 | 2027-02-20 | SDR-2-CON-TS-ZA-2760 |  | 34d |
|  | 4 | **Install Chambers & Valves** |  | 2027-02-21 | 2027-03-22 |  |  |  |
| SDR-2-CON-TS-ZA-2770 |  | Valve Chambers & Valves Installation | 21d | 2027-02-21 | 2027-03-22 | SDR-2-CON-TS-ZA-2760, SDR-2-CON-TS-ZA-2750 |  | 34d |
|  | 5 | **Testing** |  | 2027-03-23 | 2027-04-04 |  |  |  |
| SDR-2-CON-TS-ZA-2780 |  | Testing Chambers & Valves Installation | 11d | 2027-03-23 | 2027-04-04 | SDR-2-CON-TS-ZA-2770 |  | 34d |
|  | 6 | **Backfilling** |  | 2027-04-05 | 2027-04-28 |  |  |  |
| SDR-2-CON-TS-ZA-2790 |  | Backfilling Chambers & Valves Installation | 21d | 2027-04-05 | 2027-04-28 | SDR-2-CON-TS-ZA-2780 |  | 40d |
|  | 7 | **TSE NETWORK IN ( PH2-A-MCG0 )** |  | 2026-11-09 | 2027-04-03 |  |  |  |
|  | 6 | **Pipes Work** |  | 2026-11-09 | 2027-03-23 |  |  |  |
|  | 1 | **Excavation** |  | 2026-11-09 | 2026-12-24 |  |  |  |
| SDR-2-CON-TS-ZA-3320 |  | Excavation for TSE HDPE Pipes 90 mm Section 1 | 20d | 2026-11-09 | 2026-12-01 | SDR-2-CON-SE-ZA-1860 |  | 18d |
| SDR-2-CON-TS-ZA-2800 |  | Excavation for TSE HDPE Pipes 90 mm Section 2 | 20d | 2026-12-02 | 2026-12-24 | SDR-2-CON-TS-ZA-3320 |  | 36d |
|  | 3 | **bedding Works** |  | 2026-12-26 | 2027-01-14 |  |  |  |
| SDR-2-CON-TS-ZA-2830 |  | Sand bedding for TSE HDPE Pipes 90 mm | 18d | 2026-12-26 | 2027-01-14 | SDR-2-CON-TS-ZA-2800 |  | 36d |
|  | 2 | **Pipes Laying** |  | 2027-01-16 | 2027-02-08 |  |  |  |
| SDR-2-CON-TS-ZA-2810 |  | Install TSE 90 mm HDPE Pipe | 21d | 2027-01-16 | 2027-02-08 | SDR-2-CON-TS-ZA-2830 |  | 36d |
|  | 5 | **Testing** |  | 2027-02-09 | 2027-02-24 |  |  |  |
| SDR-2-CON-TS-ZA-2820 |  | Testing of TSE HDPE Pipe 90 mm. | 13d | 2027-02-09 | 2027-02-24 | SDR-2-CON-TS-ZA-2810 |  | 36d |
|  | 4 | **Backfilling** |  | 2027-02-25 | 2027-03-23 |  |  |  |
| SDR-2-CON-TS-ZA-2840 |  | Backfilling of TSE HDPE Pipe 90 mm. | 19d | 2027-02-25 | 2027-03-23 | SDR-2-CON-TS-ZA-2820 |  | 36d |
|  | 3 | **Valve Chambers & Valves** |  | 2026-11-09 | 2027-04-03 |  |  |  |
|  | 3 | **Excavation** |  | 2026-11-09 | 2026-12-24 |  |  |  |
| SDR-2-CON-TS-ZA-3330 |  | Excavation for Valve Chambers Section 1 | 20d | 2026-11-09 | 2026-12-01 | SDR-2-CON-TS-ZA-3320 SS |  | 35d |
| SDR-2-CON-TS-ZA-2860 |  | Excavation for Valve Chambers Section 2 | 20d | 2026-12-02 | 2026-12-24 | SDR-2-CON-TS-ZA-3330 |  | 35d |
|  | 1 | **bedding Works** |  | 2026-12-26 | 2027-01-16 |  |  |  |
| SDR-2-CON-TS-ZA-2850 |  | Sand bedding for Valve Chambers | 19d | 2026-12-26 | 2027-01-16 | SDR-2-CON-TS-ZA-2860 |  | 35d |
|  | 4 | **Install Chambers & Valves** |  | 2027-01-17 | 2027-02-09 |  |  |  |
| SDR-2-CON-TS-ZA-2870 |  | Valve Chambers & Valves Installation | 21d | 2027-01-17 | 2027-02-09 | SDR-2-CON-TS-ZA-2860, SDR-2-CON-TS-ZA-2850 |  | 35d |
|  | 5 | **Testing** |  | 2027-02-10 | 2027-03-06 |  |  |  |
| SDR-2-CON-TS-ZA-2880 |  | Testing Chambers & Valves Installation | 20d | 2027-02-10 | 2027-03-06 | SDR-2-CON-TS-ZA-2870 |  | 35d |
|  | 6 | **Backfilling** |  | 2027-03-07 | 2027-04-03 |  |  |  |
| SDR-2-CON-TS-ZA-2890 |  | Backfilling Chambers & Valves Installation | 20d | 2027-03-07 | 2027-04-03 | SDR-2-CON-TS-ZA-2880 |  | 35d |
|  | 8 | **TSE NETWORK IN ( PH2-A-MCH0 )** |  | 2026-11-09 | 2027-05-12 |  |  |  |
|  | 6 | **Pipes Work** |  | 2026-11-09 | 2027-05-06 |  |  |  |
|  | 1 | **Excavation** |  | 2026-11-09 | 2027-02-06 |  |  |  |
| SDR-2-CON-TS-ZA-3340 |  | Excavation for TSE HDPE Pipes 250 mm Section 1 | 20d | 2026-11-09 | 2026-12-01 | SDR-2-CON-SE-ZA-1960 |  | 38d |
| SDR-2-CON-TS-ZA-1630 |  | Excavation for TSE HDPE Pipes 250 mm Section 2 | 20d | 2027-01-14 | 2027-02-06 | SDR-2-CON-TS-ZA-3340, SDR-2-CON-MV-ZA-1220, SDR-2-CON-MV-ZA-1180, SDR-2-CON-SL-ZA-2940 |  | 1d |
|  | 7 | **bedding Works** |  | 2027-02-07 | 2027-03-03 |  |  |  |
| SDR-2-CON-TS-ZA-1960 |  | Sand bedding for TSE HDPE Pipes 250 mm | 21d | 2027-02-07 | 2027-03-03 | SDR-2-CON-SL-ZA-3210, SDR-2-CON-TS-ZA-1630 |  | 6d |
|  | 2 | **Pipes Laying** |  | 2027-03-04 | 2027-04-01 |  |  |  |
| SDR-2-CON-TS-ZA-1640 |  | Install TSE 250 mm HDPE Pipe | 21d | 2027-03-04 | 2027-04-01 | SDR-2-CON-TS-ZA-1630, SDR-2-CON-TS-ZA-1960 |  | 6d |
|  | 5 | **Testing** |  | 2027-04-03 | 2027-04-20 |  |  |  |
| SDR-2-CON-TS-ZA-1710 |  | Testing of TSE HDPE Pipe 250 mm. | 16d | 2027-04-03 | 2027-04-20 | SDR-2-CON-TS-ZA-1640 |  | 6d |
|  | 8 | **Backfilling** |  | 2027-04-21 | 2027-05-06 |  |  |  |
| SDR-2-CON-TS-ZA-1970 |  | Backfilling of TSE HDPE Pipe 250 mm. | 14d | 2027-04-21 | 2027-05-06 | SDR-2-CON-TS-ZA-1710, SDR-2-CON-TS-ZA-1960 FS+14d |  | 6d |
|  | 3 | **Valve Chambers & Valves** |  | 2026-11-09 | 2027-05-12 |  |  |  |
|  | 3 | **Excavation** |  | 2026-11-09 | 2027-02-06 |  |  |  |
| SDR-2-CON-TS-ZA-3350 |  | Excavation for Valve Chambers Section 1 | 20d | 2026-11-09 | 2026-12-01 | SDR-2-CON-TS-ZA-3340 SS |  | 38d |
| SDR-2-CON-TS-ZA-2110 |  | Excavation for Valve Chambers Section 2 | 20d | 2027-01-14 | 2027-02-06 | SDR-2-CON-TS-ZA-3350, SDR-2-CON-TS-ZA-1630 SS |  | 1d |
|  | 1 | **bedding Works** |  | 2027-02-07 | 2027-03-03 |  |  |  |
| SDR-2-CON-TS-ZA-2100 |  | Sand bedding for Valve Chambers | 21d | 2027-02-07 | 2027-03-03 | SDR-2-CON-SL-ZA-3210, SDR-2-CON-TS-ZA-2110 |  | 1d |
|  | 4 | **Install Chambers & Valves** |  | 2027-03-04 | 2027-04-01 |  |  |  |
| SDR-2-CON-TS-ZA-2120 |  | Valve Chambers & Valves Installation | 21d | 2027-03-04 | 2027-04-01 | SDR-2-CON-TS-ZA-2110, SDR-2-CON-TS-ZA-2100 |  | 1d |
|  | 5 | **Testing** |  | 2027-04-03 | 2027-04-19 |  |  |  |
| SDR-2-CON-TS-ZA-2130 |  | Testing Chambers & Valves Installation | 15d | 2027-04-03 | 2027-04-19 | SDR-2-CON-TS-ZA-2120 |  | 1d |
|  | 6 | **Backfilling** |  | 2027-04-20 | 2027-05-12 |  |  |  |
| SDR-2-CON-TS-ZA-2140 |  | Backfilling Chambers & Valves Installation | 20d | 2027-04-20 | 2027-05-12 | SDR-2-CON-TS-ZA-2130 |  | 1d |
|  | 9 | **TSE NETWORK IN ( PH2-ART-MCA0 )** |  | 2026-09-07 | 2027-04-22 |  |  |  |
|  | 6 | **Pipes Work** |  | 2026-09-07 | 2027-03-30 |  |  |  |
|  | 1 | **Excavation** |  | 2026-09-07 | 2026-12-24 |  |  |  |
| SDR-2-CON-TS-ZA-3360 |  | Excavation for TSE HDPE Pipes 450 mm Section 1 | 20d | 2026-09-07 A | 2026-09-14 A | SDR-2-CON-TS-ZA-3320 | 100% |  |
| SDR-2-CON-TS-ZA-1720 |  | Excavation for TSE HDPE Pipes 450 mm Section 2 | 20d | 2026-10-01 A | 2026-12-24 | SDR-2-CON-TS-ZA-3360 | 50% | 38d |
|  | 7 | **bedding Works** |  | 2026-10-20 | 2027-01-18 |  |  |  |
| SDR-2-CON-TS-ZA-1980 |  | Sand bedding for TSE HDPE Pipes 450 mm | 21d | 2026-10-20 A | 2027-01-18 | SDR-2-CON-TS-ZA-1720 | 20% | 38d |
|  | 2 | **Pipes Laying** |  | 2026-10-22 | 2027-02-11 |  |  |  |

| ID | WBS | Task | Duration | Start | Finish | Predecessors | Complete | Total float |
| --- | --- | --- | --- | --- | --- | --- | --- | --- |
| SDR-2-CON-TS-ZA-1730 |  | Install TSE 450 mm HDPE Pipe | 21d | 2026-10-22 A | 2027-02-11 | SDR-2-CON-TS-ZA-1720, SDR-2-CON-TS-ZA-1980 | 20% | 38d |
|  | 5 | **Testing** |  | 2027-02-13 | 2027-03-02 |  |  |  |
| SDR-2-CON-TS-ZA-1800 |  | Testing of TSE HDPE Pipe 450 mm. | 15d | 2027-02-13 | 2027-03-02 | SDR-2-CON-TS-ZA-1730 |  | 38d |
|  | 8 | **Backfilling** |  | 2027-03-03 | 2027-03-30 |  |  |  |
| SDR-2-CON-TS-ZA-1990 |  | Backfilling of TSE HDPE Pipe 450 mm. | 20d | 2027-03-03 | 2027-03-30 | SDR-2-CON-TS-ZA-1800, SDR-2-CON-TS-ZA-1980 FS+12d |  | 38d |
|  | 3 | **Valve Chambers & Valves** |  | 2026-12-02 | 2027-04-22 |  |  |  |
|  | 3 | **Excavation** |  | 2026-12-02 | 2027-01-17 |  |  |  |
| SDR-2-CON-TS-ZA-3370 |  | Excavation for Valve Chambers Section 1 | 20d | 2026-12-02 | 2026-12-24 | SDR-2-CON-TS-ZA-3360 SS |  | 18d |
| SDR-2-CON-TS-ZA-2160 |  | Excavation for Valve Chambers Section 2 | 20d | 2026-12-26 | 2027-01-17 | SDR-2-CON-TS-ZA-3370 |  | 18d |
|  | 1 | **bedding Works** |  | 2027-01-18 | 2027-02-10 |  |  |  |
| SDR-2-CON-TS-ZA-2150 |  | Sand bedding for Valve Chambers | 21d | 2027-01-18 | 2027-02-10 | SDR-2-CON-TS-ZA-2160 |  | 18d |
|  | 4 | **Install Chambers & Valves** |  | 2027-02-11 | 2027-03-08 |  |  |  |
| SDR-2-CON-TS-ZA-2170 |  | Valve Chambers & Valves Installation | 21d | 2027-02-11 | 2027-03-08 | SDR-2-CON-TS-ZA-2160, SDR-2-CON-TS-ZA-2150 |  | 18d |
|  | 5 | **Testing** |  | 2027-03-14 | 2027-03-30 |  |  |  |
| SDR-2-CON-TS-ZA-2180 |  | Testing Chambers & Valves Installation | 15d | 2027-03-14 | 2027-03-30 | SDR-2-CON-TS-ZA-2170 |  | 18d |
|  | 6 | **Backfilling** |  | 2027-03-31 | 2027-04-22 |  |  |  |
| SDR-2-CON-TS-ZA-2190 |  | Backfilling Chambers & Valves Installation | 20d | 2027-03-31 | 2027-04-22 | SDR-2-CON-TS-ZA-2180 |  | 18d |
|  | 10 | **TSE NETWORK IN ( PH2-ART-MC10 )** |  | 2026-08-06 | 2027-04-12 |  |  |  |
|  | 6 | **Pipes Work** |  | 2026-08-06 | 2027-01-11 |  |  |  |
|  | 1 | **Excavation** |  | 2026-08-06 | 2026-10-01 |  |  |  |
| SDR-2-CON-TS-ZA-3380 |  | Excavation for TSE HDPE Pipes 450 mm Section 1 | 20d | 2026-08-06 A | 2026-09-03 A | SDR-2-CON-TS-ZA-3360 | 100% |  |
| SDR-2-CON-TS-ZA-3100 |  | Excavation for TSE HDPE Pipes 450 mm Section 2 | 19d | 2026-08-25 A | 2026-10-01 A | SDR-2-CON-TS-ZA-3380, SDR-2-CON-SL-ZA-3170 FF | 100% |  |
|  | 7 | **bedding Works** |  | 2026-08-13 | 2027-01-11 |  |  |  |
| SDR-2-CON-TS-ZA-3130 |  | Sand bedding for TSE HDPE Pipes 450 mm | 15d | 2026-08-13 A | 2027-01-11 | SDR-2-CON-TS-ZA-3100 FF | 80% | 100d |
|  | 2 | **Pipes Laying** |  | 2026-08-17 | 2027-01-11 |  |  |  |
| SDR-2-CON-TS-ZA-3110 |  | Install TSE 450 mm HDPE Pipe | 21d | 2026-08-17 A | 2027-01-11 | SDR-2-CON-TS-ZA-3100 FF, SDR-2-CON-TS-ZA-3130 FF | 80% | 100d |
|  | 5 | **Testing** |  | 2026-08-25 | 2027-01-11 |  |  |  |
| SDR-2-CON-TS-ZA-3120 |  | Testing of TSE HDPE Pipe 450 mm. | 13d | 2026-08-25 A | 2027-01-11 | SDR-2-CON-TS-ZA-3110 FF | 50% | 100d |
|  | 8 | **Backfilling** |  | 2026-08-31 | 2027-01-11 |  |  |  |
| SDR-2-CON-TS-ZA-3140 |  | Backfilling of TSE HDPE Pipe 450 mm. | 19d | 2026-08-31 A | 2027-01-11 | SDR-2-CON-TS-ZA-3120 FF | 50% | 100d |
|  | 3 | **Valve Chambers & Valves** |  | 2026-12-02 | 2027-04-12 |  |  |  |
|  | 3 | **Excavation** |  | 2026-12-02 | 2027-01-16 |  |  |  |
| SDR-2-CON-TS-ZA-3390 |  | Excavation for Valve Chambers Section 1 | 20d | 2026-12-02 | 2026-12-24 | SDR-2-CON-TS-ZA-3380 SS |  | 27d |
| SDR-2-CON-TS-ZA-3160 |  | Excavation for Valve Chambers Section 2 | 19d | 2026-12-26 | 2027-01-16 | SDR-2-CON-TS-ZA-3390, SDR-2-CON-ST-ZA-5550 |  | 27d |
|  | 1 | **bedding Works** |  | 2027-01-17 | 2027-02-06 |  |  |  |
| SDR-2-CON-TS-ZA-3150 |  | Sand bedding for Valve Chambers | 18d | 2027-01-17 | 2027-02-06 | SDR-2-CON-TS-ZA-3160 |  | 27d |
|  | 4 | **Install Chambers & Valves** |  | 2027-02-07 | 2027-03-03 |  |  |  |
| SDR-2-CON-TS-ZA-3170 |  | Valve Chambers & Valves Installation | 21d | 2027-02-07 | 2027-03-03 | SDR-2-CON-TS-ZA-3160, SDR-2-CON-TS-ZA-3150 |  | 27d |
|  | 5 | **Testing** |  | 2027-03-04 | 2027-03-20 |  |  |  |
| SDR-2-CON-TS-ZA-3180 |  | Testing Chambers & Valves Installation | 10d | 2027-03-04 | 2027-03-20 | SDR-2-CON-TS-ZA-3170 |  | 27d |
|  | 6 | **Backfilling** |  | 2027-03-21 | 2027-04-12 |  |  |  |
| SDR-2-CON-TS-ZA-3190 |  | Backfilling Chambers & Valves Installation | 20d | 2027-03-21 | 2027-04-12 | SDR-2-CON-TS-ZA-3180 |  | 27d |
|  | ZG | **ZONE G** |  | 2026-08-12 | 2027-06-20 |  |  |  |
|  | 1 | **TSE NETWORK IN ( PH2-G-MCA0 )** |  | 2026-08-12 | 2027-03-29 |  |  |  |
|  | 6 | **Pipes Work** |  | 2026-08-12 | 2026-12-17 |  |  |  |
|  | 1 | **Excavation** |  | 2026-08-12 | 2026-11-09 |  |  |  |
| SDR-2-CON-TS-ZA-2300 |  | Excavation for TSE HDPE Pipes 225 mm Section 2 | 21d | 2026-08-12 A | 2026-11-09 | SDR-2-CON-TS-ZA-3400 FF | 30% | 59d |
| SDR-2-CON-TS-ZA-3400 |  | Excavation for TSE HDPE Pipes 225 mm Section 1 | 21d | 2026-08-12 A | 2026-11-09 | SDR-2-CON-SE-ZA-2360 | 30% | 39d |
|  | 6 | **bedding Works** |  | 2026-08-24 | 2026-11-09 |  |  |  |
| SDR-2-CON-TS-ZA-2380 |  | Sand bedding for TSE HDPE Pipes 225 mm | 21d | 2026-08-24 A | 2026-11-09 | SDR-2-CON-TS-ZA-2300 FF | 20% | 121d |
|  | 2 | **Pipes Laying** |  | 2026-08-25 | 2026-11-09 |  |  |  |
| SDR-2-CON-TS-ZA-2310 |  | Install TSE 225 mm HDPE Pipe | 21d | 2026-08-25 A | 2026-11-09 | SDR-2-CON-TS-ZA-2300 FF, SDR-2-CON-TS-ZA-2380 FF | 20% | 121d |
|  | 5 | **Testing** |  | 2026-11-10 | 2026-11-24 |  |  |  |
| SDR-2-CON-TS-ZA-2370 |  | Testing of TSE HDPE Pipe 225 mm. | 13d | 2026-11-10 | 2026-11-24 | SDR-2-CON-TS-ZA-2310 |  | 121d |
|  | 7 | **Backfilling** |  | 2026-11-25 | 2026-12-17 |  |  |  |
| SDR-2-CON-TS-ZA-2390 |  | Backfilling of TSE HDPE Pipe 225 mm. | 20d | 2026-11-25 | 2026-12-17 | SDR-2-CON-TS-ZA-2370 |  | 121d |
|  | 3 | **Valve Chambers & Valves** |  | 2026-11-09 | 2027-03-29 |  |  |  |
|  | 3 | **Excavation** |  | 2026-11-09 | 2026-12-24 |  |  |  |
| SDR-2-CON-TS-ZA-3410 |  | Excavation for Valve Chambers Section 1 | 20d | 2026-11-09 | 2026-12-01 | SDR-2-CON-TS-ZA-3400 SS |  | 39d |
| SDR-2-CON-TS-ZA-2330 |  | Excavation for Valve Chambers Section 2 | 20d | 2026-12-02 | 2026-12-24 | SDR-2-CON-TS-ZA-3410 |  | 39d |
|  | 1 | **bedding Works** |  | 2026-12-26 | 2027-01-18 |  |  |  |
| SDR-2-CON-TS-ZA-2320 |  | Sand bedding for Valve Chambers | 21d | 2026-12-26 | 2027-01-18 | SDR-2-CON-ST-ZA-6080, SDR-2-CON-ST-ZA-5630, SDR-2-CON-ST-ZA-5550, SDR-2-CON-TS-ZA-2330 |  | 39d |
|  | 4 | **Install Chambers & Valves** |  | 2027-01-19 | 2027-02-11 |  |  |  |
| SDR-2-CON-TS-ZA-2340 |  | Valve Chambers & Valves Installation | 21d | 2027-01-19 | 2027-02-11 | SDR-2-CON-TS-ZA-2330, SDR-2-CON-TS-ZA-2320 |  | 39d |
|  | 5 | **Testing** |  | 2027-02-13 | 2027-02-28 |  |  |  |
| SDR-2-CON-TS-ZA-2350 |  | Testing Chambers & Valves Installation | 13d | 2027-02-13 | 2027-02-28 | SDR-2-CON-TS-ZA-2340 |  | 39d |
|  | 6 | **Backfilling** |  | 2027-03-02 | 2027-03-29 |  |  |  |
| SDR-2-CON-TS-ZA-2360 |  | Backfilling Chambers & Valves Installation | 20d | 2027-03-02 | 2027-03-29 | SDR-2-CON-TS-ZA-2350 FS+1d |  | 39d |
|  | 2 | **TSE NETWORK IN ( PH2-G-MCE0 )** |  | 2026-08-12 | 2027-05-06 |  |  |  |
|  | 6 | **Pipes Work** |  | 2026-08-12 | 2027-02-02 |  |  |  |

| ID | WBS | Task | Duration | Start | Finish | Predecessors | Complete | Total float |
| --- | --- | --- | --- | --- | --- | --- | --- | --- |
|  | 1 | **Excavation** |  | 2026-08-12 | 2026-11-09 |  |  |  |
| SDR-2-CON-TS-ZA-2400 |  | Excavation for TSE HDPE Pipes 125 mm Section 2 | 20d | 2026-08-12 A | 2026-11-09 | SDR-2-CON-TS-ZA-3420 FF | 30% | 68d |
| SDR-2-CON-TS-ZA-3420 |  | Excavation for TSE HDPE Pipes 125 mm Section 1 | 21d | 2026-08-12 A | 2026-11-09 | SDR-2-CON-SE-ZA-2060 | 30% | 68d |
|  | 3 | **bedding Works** |  | 2026-11-10 | 2026-12-03 |  |  |  |
| SDR-2-CON-TS-ZA-2430 |  | Sand bedding for TSE HDPE Pipes 125 mm | 21d | 2026-11-10 | 2026-12-03 | SDR-2-CON-ST-ZA-6080, SDR-2-CON-TS-ZA-2400 |  | 81d |
|  | 2 | **Pipes Laying** |  | 2026-12-05 | 2026-12-28 |  |  |  |
| SDR-2-CON-TS-ZA-2410 |  | Install TSE 125 mm HDPE Pipe | 21d | 2026-12-05 | 2026-12-28 | SDR-2-CON-TS-ZA-2400, SDR-2-CON-TS-ZA-2430 |  | 81d |
|  | 5 | **Testing** |  | 2026-12-29 | 2027-01-09 |  |  |  |
| SDR-2-CON-TS-ZA-2420 |  | Testing of TSE HDPE Pipe 125 mm. | 10d | 2026-12-29 | 2027-01-09 | SDR-2-CON-TS-ZA-2410 |  | 81d |
|  | 4 | **Backfilling** |  | 2027-01-10 | 2027-02-02 |  |  |  |
| SDR-2-CON-TS-ZA-2440 |  | Backfilling of TSE HDPE Pipe 125 mm. | 21d | 2027-01-10 | 2027-02-02 | SDR-2-CON-TS-ZA-2420 |  | 81d |
|  | 3 | **Valve Chambers & Valves** |  | 2026-11-10 | 2027-05-06 |  |  |  |
|  | 3 | **Excavation** |  | 2026-11-10 | 2026-12-28 |  |  |  |
| SDR-2-CON-TS-ZA-3430 |  | Excavation for Valve Chambers Section 1 | 21d | 2026-11-10 | 2026-12-03 | SDR-2-CON-TS-ZA-3400 |  | 49d |
| SDR-2-CON-TS-ZA-2460 |  | Excavation for Valve Chambers Section 2 | 21d | 2026-12-05 | 2026-12-28 | SDR-2-CON-TS-ZA-3430 |  | 49d |
|  | 1 | **bedding Works** |  | 2026-12-29 | 2027-01-21 |  |  |  |
| SDR-2-CON-TS-ZA-2450 |  | Sand bedding for Valve Chambers | 21d | 2026-12-29 | 2027-01-21 | SDR-2-CON-ST-ZA-6080, SDR-2-CON-TS-ZA-2460 |  | 49d |
|  | 4 | **Install Chambers & Valves** |  | 2027-03-04 | 2027-04-01 |  |  |  |
| SDR-2-CON-TS-ZA-2470 |  | Valve Chambers & Valves Installation | 21d | 2027-03-04 | 2027-04-01 | SDR-2-CON-TS-ZA-2530 SS, SDR-2-CON-TS-ZA-2460, SDR-2-CON-TS-ZA-2450 |  | 15d |
|  | 5 | **Testing** |  | 2027-04-03 | 2027-04-12 |  |  |  |
| SDR-2-CON-TS-ZA-2480 |  | Testing Chambers & Valves Installation | 9d | 2027-04-03 | 2027-04-12 | SDR-2-CON-TS-ZA-2470 |  | 15d |
|  | 6 | **Backfilling** |  | 2027-04-13 | 2027-05-06 |  |  |  |
| SDR-2-CON-TS-ZA-2490 |  | Backfilling Chambers & Valves Installation | 21d | 2027-04-13 | 2027-05-06 | SDR-2-CON-TS-ZA-2480 |  | 15d |
|  | 3 | **TSE NETWORK IN ( PH2-G-MCF0 )** |  | 2026-08-13 | 2027-05-25 |  |  |  |
|  | 6 | **Pipes Work** |  | 2026-08-13 | 2027-05-08 |  |  |  |
|  | 1 | **Excavation** |  | 2026-08-13 | 2027-01-11 |  |  |  |
| SDR-2-CON-TS-ZA-2900 |  | Excavation for TSE HDPE Pipes 90 mm Section 2 | 20d | 2026-08-13 A | 2027-01-11 | SDR-2-CON-TS-ZA-3440 FF, SDR-2-CON-SL-ZA-2970 FF | 30% | 7d |
| SDR-2-CON-TS-ZA-3440 |  | Excavation for TSE HDPE Pipes 90 mm Section 1 | 21d | 2026-08-13 A | 2026-11-09 | SDR-2-CON-SE-ZA-2260, SDR-2-PRO-ST-E-1200 FF | 30% | 43d |
|  | 3 | **bedding Works** |  | 2027-01-24 | 2027-02-16 |  |  |  |
| SDR-2-CON-TS-ZA-2930 |  | Sand bedding for TSE HDPE Pipes 90 mm | 21d | 2027-01-24 | 2027-02-16 | SDR-2-CON-ST-ZA-4430 SS, SDR-2-CON-RW-ZG-2110, SDR-2-CON-SL-ZA-3130, SDR-2-CON-TS-ZA-2900 |  | 17d |
|  | 2 | **Pipes Laying** |  | 2027-02-17 | 2027-03-18 |  |  |  |
| SDR-2-CON-TS-ZA-2910 |  | Install TSE 90 mm HDPE Pipe | 21d | 2027-02-17 | 2027-03-18 | SDR-2-CON-ST-ZA-4350 FS+4d, SDR-2-CON-TS-ZA-2930 |  | 17d |
|  | 5 | **Testing** |  | 2027-04-03 | 2027-04-25 |  |  |  |
| SDR-2-CON-TS-ZA-2920 |  | Testing of TSE HDPE Pipe 90 mm. | 20d | 2027-04-03 | 2027-04-25 | SDR-2-CON-TS-ZA-2530, SDR-2-CON-TS-ZA-2910 |  | 5d |
|  | 4 | **Backfilling** |  | 2027-04-14 | 2027-05-08 |  |  |  |
| SDR-2-CON-TS-ZA-2940 |  | Backfilling of TSE HDPE Pipe 90 mm. | 21d | 2027-04-14 | 2027-05-08 | SDR-2-CON-TS-ZA-2920 SS+10d |  | 5d |
|  | 3 | **Valve Chambers & Valves** |  | 2026-11-09 | 2027-05-25 |  |  |  |
|  | 3 | **Excavation** |  | 2026-11-09 | 2026-12-24 |  |  |  |
| SDR-2-CON-TS-ZA-3450 |  | Excavation for Valve Chambers Section 1 | 20d | 2026-11-09 | 2026-12-01 | SDR-2-CON-TS-ZA-3440 SS |  | 43d |
| SDR-2-CON-TS-ZA-2960 |  | Excavation for Valve Chambers Section 2 | 20d | 2026-12-02 | 2026-12-24 | SDR-2-CON-TS-ZA-3450 |  | 43d |
|  | 1 | **bedding Works** |  | 2027-02-09 | 2027-03-02 |  |  |  |
| SDR-2-CON-TS-ZA-2950 |  | Sand bedding for Valve Chambers | 18d | 2027-02-09 | 2027-03-02 | SDR-2-CON-ST-ZA-4430, SDR-2-CON-TS-ZA-2960 |  | 4d |
|  | 4 | **Install Chambers & Valves** |  | 2027-03-03 | 2027-03-31 |  |  |  |
| SDR-2-CON-TS-ZA-2970 |  | Valve Chambers & Valves Installation | 21d | 2027-03-03 | 2027-03-31 | SDR-2-CON-ST-ZA-4200 FS+3d, SDR-2-CON-TS-ZA-2960, SDR-2-CON-TS-ZA-2950 |  | 4d |
|  | 5 | **Testing** |  | 2027-04-01 | 2027-04-24 |  |  |  |
| SDR-2-CON-TS-ZA-2980 |  | Testing Chambers & Valves Installation | 20d | 2027-04-01 | 2027-04-24 | SDR-2-CON-TS-ZA-2970 |  | 4d |
|  | 6 | **Backfilling** |  | 2027-04-26 | 2027-05-25 |  |  |  |
| SDR-2-CON-TS-ZA-2990 |  | Backfilling Chambers & Valves Installation | 21d | 2027-04-26 | 2027-05-25 | SDR-2-CON-TS-ZA-2980 FS+1d |  | 4d |
|  | 4 | **TSE NETWORK IN ( PH2-G-MCG0 )** |  | 2026-08-13 | 2027-06-20 |  |  |  |
|  | 6 | **Pipes Work** |  | 2026-08-13 | 2027-02-21 |  |  |  |
|  | 1 | **Excavation** |  | 2026-08-13 | 2026-11-09 |  |  |  |
| SDR-2-CON-TS-ZA-3000 |  | Excavation for TSE HDPE Pipes 90 mm Section 2 | 20d | 2026-08-13 A | 2026-11-09 | SDR-2-CON-TS-ZA-3460 FF | 40% | 56d |
| SDR-2-CON-TS-ZA-3460 |  | Excavation for TSE HDPE Pipes 90 mm Section 1 | 20d | 2026-08-13 A | 2026-09-27 A | SDR-2-CON-SE-ZA-2360 | 100% |  |
|  | 3 | **bedding Works** |  | 2026-11-10 | 2026-12-03 |  |  |  |
| SDR-2-CON-TS-ZA-3030 |  | Sand bedding for TSE HDPE Pipes 90 mm | 21d | 2026-11-10 | 2026-12-03 | SDR-2-CON-RW-ZG-2110, SDR-2-CON-TS-ZA-3000 |  | 78d |
|  | 2 | **Pipes Laying** |  | 2026-12-05 | 2026-12-28 |  |  |  |
| SDR-2-CON-TS-ZA-3010 |  | Install TSE 90 mm HDPE Pipe | 21d | 2026-12-05 | 2026-12-28 | SDR-2-CON-TS-ZA-3030 |  | 78d |
|  | 5 | **Testing** |  | 2026-12-29 | 2027-01-12 |  |  |  |
| SDR-2-CON-TS-ZA-3020 |  | Testing of TSE HDPE Pipe 90 mm. | 13d | 2026-12-29 | 2027-01-12 | SDR-2-CON-SE-ZA-2340, SDR-2-CON-SE-ZA-2330 FS+5d, SDR-2-CON-TS-ZA-3010 |  | 78d |
|  | 4 | **Backfilling** |  | 2027-01-28 | 2027-02-21 |  |  |  |
| SDR-2-CON-TS-ZA-3040 |  | Backfilling of TSE HDPE Pipe 90 mm. | 21d | 2027-01-28 | 2027-02-21 | SDR-2-CON-SE-ZA-2440, SDR-2-CON-SE-ZA-2230, SDR-2-CON-SE-ZA-2140, SDR-2-CON-TS-ZA-3020 |  | 65d |
|  | 3 | **Valve Chambers & Valves** |  | 2026-11-09 | 2027-06-20 |  |  |  |
|  | 3 | **Excavation** |  | 2026-11-09 | 2026-12-24 |  |  |  |
| SDR-2-CON-TS-ZA-3470 |  | Excavation for Valve Chambers Section 1 | 20d | 2026-11-09 | 2026-12-01 | SDR-2-CON-TS-ZA-3460 SS |  | 66d |
| SDR-2-CON-TS-ZA-3060 |  | Excavation for Valve Chambers Section 2 | 20d | 2026-12-02 | 2026-12-24 | SDR-2-CON-TS-ZA-3470 |  | 66d |
|  | 1 | **bedding Works** |  | 2027-02-16 | 2027-03-17 |  |  |  |
| SDR-2-CON-TS-ZA-3050 |  | Sand bedding for Valve Chambers | 21d | 2027-02-16 | 2027-03-17 | SDR-2-CON-ST-ZA-4880, SDR-2-CON-ST-ZA-4580, SDR-2-CON-ST-ZA-4500, SDR-2-CON-ST-ZA-4430, SDR-2-CON-TS-ZA-3060 |  | 21d |
|  | 4 | **Install Chambers & Valves** |  | 2027-04-12 | 2027-05-05 |  |  |  |
| SDR-2-CON-TS-ZA-3070 |  | Valve Chambers & Valves Installation | 21d | 2027-04-12 | 2027-05-05 | SDR-2-CON-ST-ZA-3350, SDR-2-CON-TS-ZA-3060, SDR-2-CON-TS-ZA-3050 |  | 0d |
|  | 5 | **Testing** |  | 2027-04-29 | 2027-05-26 |  |  |  |

| ID | WBS | Task | Duration | Start | Finish | Predecessors | Complete | Total float |
| --- | --- | --- | --- | --- | --- | --- | --- | --- |
| SDR-2-CON-TS-ZA-3080 |  | Testing Chambers & Valves Installation | 19d | 2027-04-29 | 2027-05-26 | SDR-2-CON-SE-ZA-2030, SDR-2-CON-ST-ZA-5480, SDR-2-CON-TS-ZA-3070 SS+15d |  | 0d |
|  | 6 | **Backfilling** |  | 2027-05-27 | 2027-06-20 |  |  |  |
| SDR-2-CON-TS-ZA-3090 |  | Backfilling Chambers & Valves Installation | 21d | 2027-05-27 | 2027-06-20 | SDR-2-CON-TS-ZA-3080 |  | 0d |
|  | 5 | **TSE NETWORK IN ( PH2-G-MCZ0 )** |  | 2026-08-13 | 2027-06-20 |  |  |  |
|  | 6 | **Pipes Work** |  | 2026-08-13 | 2027-06-20 |  |  |  |
|  | 1 | **Excavation** |  | 2026-08-13 | 2026-11-09 |  |  |  |
| SDR-2-CON-TS-ZA-2500 |  | Excavation for TSE HDPE Pipes 125 mm Section 2 | 20d | 2026-08-13 A | 2026-11-09 | SDR-2-CON-RW-ZG-2540, SDR-2-CON-TS-ZA-3480 FF | 40% | 55d |
| SDR-2-CON-TS-ZA-3480 |  | Excavation for TSE HDPE Pipes 125 mm Section 1 | 21d | 2026-08-13 A | 2026-11-09 | SDR-2-CON-SE-ZA-2360 | 40% | 55d |
|  | 3 | **bedding Works** |  | 2027-03-04 | 2027-04-01 |  |  |  |
| SDR-2-CON-TS-ZA-2530 |  | Sand bedding for TSE HDPE Pipes 125 mm | 21d | 2027-03-04 | 2027-04-01 | SDR-2-CON-ST-ZA-4880, SDR-2-CON-ST-ZA-4580, SDR-2-CON-ST-ZA-4050 FS+2d, SDR-2-CON-ST-ZA-3760, SDR-2-CON-ST-ZA-1140, SDR-2-CON-RW-ZG-2110, SDR-2-CON-TS-ZA-2500 |  | 5d |
|  | 2 | **Pipes Laying** |  | 2027-04-03 | 2027-04-26 |  |  |  |
| SDR-2-CON-TS-ZA-2510 |  | Install TSE 125 mm HDPE Pipe | 21d | 2027-04-03 | 2027-04-26 | SDR-2-CON-TS-ZA-2500, SDR-2-CON-TS-ZA-2530 |  | 7d |
|  | 5 | **Testing** |  | 2027-04-27 | 2027-05-05 |  |  |  |
| SDR-2-CON-TS-ZA-2520 |  | Testing of TSE HDPE Pipe 125 mm. | 8d | 2027-04-27 | 2027-05-05 | SDR-2-CON-TS-ZA-2840, SDR-2-CON-ST-ZA-7040, SDR-2-CON-ST-ZA-7030, SDR-2-CON-ST-ZA-7020, SDR-2-CON-ST-ZA-7010, SDR-2-CON-ST-ZA-6940, SDR-2-CON-TS-ZA-2510 |  | 7d |
|  | 4 | **Backfilling** |  | 2027-05-31 | 2027-06-20 |  |  |  |
| SDR-2-CON-TS-ZA-2540 |  | Backfilling of TSE HDPE Pipe 125 mm. | 18d | 2027-05-31 | 2027-06-20 | SDR-2-TC-CW-1010, SDR-2-CON-PW-ZA-2320, SDR-2-CON-PW-ZA-2350, SDR-2-CON-PW-ZA-1070 SS, SDR-2-CON-PW-ZA-2210, SDR-2-CON-TS-ZA-2590, SDR-2-CON-TS-ZA-3040, SDR-2-CON-TS-ZA-2990, SDR-2-CON-TS-ZA-2940, SDR-2-CON-TS-ZA-2490, SDR-2-CON-TS-ZA-2440, SDR-2-CON-TS-ZA-2360, SDR-2-CON-TS-ZA-2390, SDR-2-CON-TS-ZA-3190, SDR-2-CON-TS-ZA-3140, SDR-2-CON-TS-ZA-2190, SDR-2-CON-TS-ZA-1990, SDR-2-CON-TS-ZA-2140, SDR-2-CON-TS-ZA-1970, SDR-2-CON-TS-ZA-2890, SDR-2-CON-TS-ZA-2840, SDR-2-CON-TS-ZA-2740, SDR-2-CON-TS-ZA-2690 SS, SDR-2-CON-TS-ZA-2090, SDR-2-CON-TS-ZA-1950 SS, SDR-2-CON-TS-ZA-2040, SDR-2-CON-TS-ZA-1930 SS, SDR-2-CON-TS-ZA-1930 FF, SDR-2-CON-TS-ZA-2260, SDR-2-CON-TS-ZA-2290, SDR-2-CON-TS-ZA-1070, SDR-2-CON-TS-ZA-1910 SS, SDR-2-CON-ST-ZA-5070 SS, SDR-2-CON-ST-ZA-4920 SS, SDR-2-CON-ST-ZA-4770, SDR-2-CON-ST-ZA-4620, SDR-2-CON-ST-ZA-4470, SDR-2-CON-ST-ZA-4320, SDR-2-CON-ST-ZA-4020, SDR-2-CON-RW-ZG-2210, SDR-2-CON-RW-ZG-2060, SDR-2-CON-RW-ZG-1910, SDR-2-CON-RW-ZG-1760, SDR-2-CON-RW-ZG-1610, SDR-2-CON-RW-ZG-1460, SDR-2-CON-RW-ZG-1310, SDR-2-CON-RW-ZG-1160 SS, SDR-2-CON-RW-ZA-2830, SDR-2-CON-RW-ZA-2690, SDR-2-CON-RW-ZA-2550, SDR-2-CON-RW-ZA-2410, SDR-2-CON-RW-ZA-2270, SDR-2-CON-RW-ZA-2130, SDR-2-CON-RW-ZA-1990, SDR-2-CON-RW-ZA-1850, SDR-2-CON-RW-ZA-1710, SDR-2-CON-RW-ZA-1570, SDR-2-CON-RW-ZA-1290, SDR-2-CON-RW-ZA-1150 SS, SDR-2-CON-TS-ZA-2520 |  | 0d |
|  | 3 | **Valve Chambers & Valves** |  | 2026-11-09 | 2027-05-12 |  |  |  |
|  | 3 | **Excavation** |  | 2026-11-09 | 2026-12-24 |  |  |  |
| SDR-2-CON-TS-ZA-3490 |  | Excavation for Valve Chambers Section 1 | 20d | 2026-11-09 | 2026-12-01 | SDR-2-CON-TS-ZA-3480 SS |  | 57d |
| SDR-2-CON-TS-ZA-2560 |  | Excavation for Valve Chambers Section 2 | 20d | 2026-12-02 | 2026-12-24 | SDR-2-CON-TS-ZA-3490 |  | 57d |
|  | 1 | **bedding Works** |  | 2027-02-16 | 2027-03-17 |  |  |  |
| SDR-2-CON-TS-ZA-2550 |  | Sand bedding for Valve Chambers | 21d | 2027-02-16 | 2027-03-17 | SDR-2-CON-ST-ZA-5030, SDR-2-CON-ST-ZA-4950, SDR-2-CON-ST-ZA-4880, SDR-2-CON-ST-ZA-4800, SDR-2-CON-ST-ZA-4730, SDR-2-CON-TS-ZA-2560 |  | 12d |
|  | 4 | **Install Chambers & Valves** |  | 2027-03-18 | 2027-04-11 |  |  |  |
| SDR-2-CON-TS-ZA-2570 |  | Valve Chambers & Valves Installation | 21d | 2027-03-18 | 2027-04-11 | SDR-2-CON-TS-ZA-2560, SDR-2-CON-TS-ZA-2550 |  | 12d |
|  | 5 | **Testing** |  | 2027-04-12 | 2027-04-28 |  |  |  |
| SDR-2-CON-TS-ZA-2580 |  | Testing Chambers & Valves Installation | 15d | 2027-04-12 | 2027-04-28 | SDR-2-CON-ST-ZA-3350, SDR-2-CON-SE-ZA-1930, SDR-2-CON-SE-ZA-1430, SDR-2-CON-TS-ZA-2570 SS+10d |  | 1d |
|  | 6 | **Backfilling** |  | 2027-04-24 | 2027-05-12 |  |  |  |
| SDR-2-CON-TS-ZA-2590 |  | Backfilling Chambers & Valves Installation | 17d | 2027-04-24 | 2027-05-12 | SDR-2-CON-SE-ZA-2040, SDR-2-CON-TS-ZA-2580 SS+10d |  | 1d |
|  | PW | **Portable Water** |  | 2026-05-06 | 2027-06-20 |  |  |  |
|  | ZA | **ZONE A** |  | 2026-08-13 | 2027-06-20 |  |  |  |
|  | 1 | **PORTABLE WATER IN ( PH2-COL-MC10 )** |  | 2026-08-13 | 2027-06-08 |  |  |  |
|  | 7 | **Pipes Work** |  | 2026-08-13 | 2027-05-09 |  |  |  |
|  | 1 | **Excavation** |  | 2026-08-13 | 2027-02-15 |  |  |  |
| SDR-2-CON-PW-ZA-3710 |  | Excavation for PW HDPE Pipes 315 mm Section 1 | 21d | 2026-08-13 A | 2026-12-20 | SDR-2-CON-RW-ZG-2340 FF, SDR-2-CON-TS-ZA-1000 FF | 75% | 10d |
| SDR-2-CON-PW-ZA-1000 |  | Excavation for PW HDPE Pipes 315 mm Section 2 | 21d | 2026-08-20 A | 2027-02-15 | SDR-2-CON-RW-ZG-1360, SDR-2-CON-PW-ZA-3710 FF, SDR-2-CON-RW-ZA-1620 FF, SDR-2-CON-RW-ZG-1660 FF, SDR-2-CON-ST-ZA-4730 FF, SDR-2-CON-ST-ZA-4650 FF, SDR-2-CON-SL-ZA-3490 FF | 40% | 46d |
|  | 8 | **bedding Works** |  | 2026-08-25 | 2027-04-06 |  |  |  |
| SDR-2-CON-PW-ZA-2200 |  | Sand bedding for PW HDPE Pipes 315 mm | 19d | 2026-08-25 A | 2027-04-06 | SDR-2-CON-PW-ZA-1000 FF, SDR-2-CON-CC-ZA-1820 FF | 10% | 8d |
|  | 2 | **Pipes Laying** |  | 2026-08-27 | 2027-04-11 |  |  |  |
| SDR-2-CON-PW-ZA-1010 |  | Install PW 315 mm HDPE Pipe | 18d | 2026-08-27 A | 2027-04-11 | SDR-2-CON-PW-ZA-2200 FF, SDR-2-CON-ST-ZA-3350 FF, SDR-2-CON-SE-ZA-1440 FF | 30% | 4d |
|  | 5 | **Testing** |  | 2027-04-12 | 2027-04-19 |  |  |  |
| SDR-2-CON-PW-ZA-1080 |  | Testing of PW HDPE Pipe 315 mm. | 7d | 2027-04-12 | 2027-04-19 | SDR-2-CON-SE-ZA-2040 SS, SDR-2-CON-SE-ZA-1940, SDR-2-CON-SE-ZA-1830, SDR-2-CON-SE-ZA-1630, SDR-2-CON-SE-ZA-1540, SDR-2-CON-SE-ZA-1530, SDR-2-CON-PW-ZA-1010 |  | 4d |
|  | 9 | **Backfilling** |  | 2027-04-20 | 2027-05-09 |  |  |  |
| SDR-2-CON-PW-ZA-2210 |  | Backfilling of PW HDPE Pipe 315 mm. | 17d | 2027-04-20 | 2027-05-09 | SDR-2-CON-SE-ZA-1840, SDR-2-CON-SE-ZA-1740, SDR-2-CON-SE-ZA-1730, SDR-2-CON-PW-ZA-1080 |  | 4d |
|  | 3 | **Valve Chambers & Valves & Fire Hydrant** |  | 2026-12-20 | 2027-06-08 |  |  |  |
|  | 3 | **Excavation** |  | 2026-12-20 | 2027-02-03 |  |  |  |
| SDR-2-CON-PW-ZA-3720 |  | Excavation for Valve Chambers Section 1 | 20d | 2026-12-20 | 2027-01-11 | SDR-2-CON-PW-ZA-3710 SS, SDR-2-CON-RW-ZG-2420, SDR-2-CON-RW-ZG-1390 |  | 44d |
| SDR-2-CON-PW-ZA-1040 |  | Excavation for Valve Chambers Section 2 | 20d | 2027-01-12 | 2027-02-03 | SDR-2-CON-PW-ZA-3720 |  | 44d |
|  | 1 | **bedding Works** |  | 2027-02-04 | 2027-02-23 |  |  |  |
| SDR-2-CON-PW-ZA-1020 |  | Sand bedding for Valve Chambers | 16d | 2027-02-04 | 2027-02-23 | SDR-2-CON-PW-ZA-1040 |  | 44d |
|  | 4 | **Install Chambers & Valves & Fire Hydrant** |  | 2027-02-24 | 2027-03-23 |  |  |  |
| SDR-2-CON-PW-ZA-1050 |  | Install Chambers & Valves | 20d | 2027-02-24 | 2027-03-23 | SDR-2-CON-PW-ZA-1020 |  | 44d |
|  | 2 | **Testing** |  | 2027-05-05 | 2027-05-13 |  |  |  |
| SDR-2-CON-PW-ZA-1030 |  | Testing for Chambers & Valves | 8d | 2027-05-05 | 2027-05-13 | SDR-2-CON-SE-ZA-2040 SS, SDR-2-CON-ST-ZA-6220, SDR-2-CON-PW-ZA-1050 |  | 10d |
|  | 6 | **Backfilling** |  | 2027-05-10 | 2027-06-08 |  |  |  |
| SDR-2-CON-PW-ZA-1070 |  | Backfilling for Chambers & Valves | 21d | 2027-05-10 | 2027-06-08 | SDR-2-CON-RW-ZG-1760 SS+2d, SDR-2-CON-PW-ZA-1030 SS+4d |  | 10d |
|  | 2 | **PORTABLE WATER IN ( PH2-COL-MC20 )** |  | 2026-08-16 | 2027-05-03 |  |  |  |
|  | 7 | **Pipes Work** |  | 2026-08-16 | 2027-05-03 |  |  |  |
|  | 1 | **Excavation** |  | 2026-08-16 | 2026-09-28 |  |  |  |
| SDR-2-CON-PW-ZA-2260 |  | Excavation for PW HDPE Pipes 315 mm Section 2 | 21d | 2026-08-16 A | 2026-09-28 A | SDR-2-CON-PW-ZA-3730 FF, SDR-2-CON-RW-ZG-1510, SDR-2-CON-RW-ZG-1660 FF, SDR-2-CON-ST-ZA-4130 FF, SDR-2-CON-SL-ZA-3460 FF | 100% |  |
| SDR-2-CON-PW-ZA-3730 |  | Excavation for PW HDPE Pipes 315 mm Section 1 | 21d | 2026-08-16 A | 2026-09-14 A | SDR-2-CON-PW-ZA-3710 FF | 100% |  |
|  | 8 | **bedding Works** |  | 2026-08-20 | 2027-02-11 |  |  |  |
| SDR-2-CON-PW-ZA-2340 |  | Sand bedding for PW HDPE Pipes 315 mm | 15d | 2026-08-20 A | 2027-02-11 | SDR-2-CON-PW-ZA-2260 FF, SDR-2-CON-RW-ZA-1050 | 70% | 73d |
|  | 2 | **Pipes Laying** |  | 2026-08-27 | 2027-02-11 |  |  |  |
| SDR-2-CON-PW-ZA-2270 |  | Install PW 315 mm HDPE Pipe | 15d | 2026-08-27 A | 2027-02-11 | SDR-2-CON-PW-ZA-2340 FF | 70% | 73d |
|  | 5 | **Testing** |  | 2026-09-01 | 2027-03-06 |  |  |  |
| SDR-2-CON-PW-ZA-2330 |  | Testing of PW HDPE Pipe 315 mm. | 8d | 2026-09-01 A | 2027-03-06 | SDR-2-CON-PW-ZA-2270 FF, SDR-2-CON-SE-ZA-1940 FF, SDR-2-CON-SE-ZA-1930 FF | 10% | 55d |
|  | 9 | **Backfilling** |  | 2026-09-03 | 2027-05-03 |  |  |  |
| SDR-2-CON-PW-ZA-2350 |  | Backfilling of PW HDPE Pipe 315 mm. | 17d | 2026-09-03 A | 2027-05-03 | SDR-2-CON-PW-ZA-2330 FF, SDR-2-CON-RW-ZG-1610 FF, SDR-2-CON-RW-ZG-1460 FF | 10% | 9d |
|  | 3 | **Valve Chambers & Valves & Fire Hydrant** |  | 2026-12-21 | 2027-04-19 |  |  |  |
|  | 3 | **Excavation** |  | 2026-12-21 | 2027-02-07 |  |  |  |

| ID | WBS | Task | Duration | Start | Finish | Predecessors | Complete | Total float |
| --- | --- | --- | --- | --- | --- | --- | --- | --- |
| SDR-2-CON-PW-ZA-3740 |  | Excavation for Valve Chambers Section 1 | 21d | 2026-12-21 | 2027-01-13 | SDR-2-CON-PW-ZA-3730 SS, SDR-2-CON-RW-ZG-1660, SDR-2-CON-RW-ZG-1510 |  | 30d |
| SDR-2-CON-PW-ZA-2300 |  | Excavation for Valve Chambers Section 2 | 21d | 2027-01-14 | 2027-02-07 | SDR-2-CON-PW-ZA-3740 |  | 30d |
|  | 1 | **bedding Works** |  | 2027-02-08 | 2027-02-25 |  |  |  |
| SDR-2-CON-PW-ZA-2280 |  | Sand bedding for Valve Chambers | 15d | 2027-02-08 | 2027-02-25 | SDR-2-CON-SL-ZA-3410, SDR-2-CON-PW-ZA-2300 |  | 30d |
|  | 4 | **Install Chambers & Valves & Fire Hydrant** |  | 2027-02-27 | 2027-03-20 |  |  |  |
| SDR-2-CON-PW-ZA-2310 |  | Install Chambers & Valves | 15d | 2027-02-27 | 2027-03-20 | SDR-2-CON-PW-ZA-2280 |  | 30d |
|  | 2 | **Testing** |  | 2027-03-21 | 2027-03-28 |  |  |  |
| SDR-2-CON-PW-ZA-2290 |  | Testing for Chambers & Valves | 7d | 2027-03-21 | 2027-03-28 | SDR-2-CON-PW-ZA-2310 |  | 30d |
|  | 6 | **Backfilling** |  | 2027-03-29 | 2027-04-19 |  |  |  |
| SDR-2-CON-PW-ZA-2320 |  | Backfilling for Chambers & Valves | 19d | 2027-03-29 | 2027-04-19 | SDR-2-CON-PW-ZA-2290 |  | 30d |
|  | 11 | **PORTABLE WATER IN ( PH2-A-MCA0 )** |  | 2026-10-19 | 2027-06-08 |  |  |  |
|  | 7 | **Pipes Work** |  | 2026-10-19 | 2027-06-08 |  |  |  |
|  | 1 | **Excavation** |  | 2026-10-19 | 2027-03-18 |  |  |  |
| SDR-2-CON-PW-ZA-1200 |  | Excavation for PW HDPE Pipe 225 mm. Section 2 | 21d | 2026-10-19 A | 2027-03-18 | SDR-2-CON-PW-ZA-3750, SDR-2-CON-ST-ZA-5100 FS+2d | 50% | 1d |
| SDR-2-CON-PW-ZA-3750 |  | Excavation for PW HDPE Pipe 225 mm. Section 1 | 21d | 2026-10-22 A | 2027-01-13 | SDR-2-CON-PW-ZA-3730 SS | 25% | 10d |
|  | 3 | **bedding Works** |  | 2026-10-28 | 2027-04-11 |  |  |  |
| SDR-2-CON-PW-ZA-2220 |  | Sand bedding for PW HDPE Pipe 225 mm. | 20d | 2026-10-28 A | 2027-04-11 | SDR-2-CON-PW-ZA-1200 | 25% | 1d |
|  | 2 | **Pipes Laying** |  | 2026-10-31 | 2027-05-01 |  |  |  |
| SDR-2-CON-PW-ZA-1210 |  | Install PW 225 mm HDPE Pipe | 17d | 2026-10-31 A | 2027-05-01 | SDR-2-CON-PW-ZA-2220 | 25% | 1d |
|  | 5 | **Testing** |  | 2027-05-06 | 2027-05-13 |  |  |  |
| SDR-2-CON-PW-ZA-1280 |  | Testing of PW HDPE Pipe 225 mm. | 7d | 2027-05-06 | 2027-05-13 | SDR-2-CON-SE-ZA-2690, SDR-2-CON-PW-ZA-1210 FS+3d |  | 0d |
|  | 4 | **Backfilling** |  | 2027-05-15 | 2027-06-08 |  |  |  |
| SDR-2-CON-PW-ZA-2230 |  | Backfilling of PW HDPE Pipe 225 mm. | 17d | 2027-05-15 | 2027-06-08 | SDR-2-CON-PW-ZA-1280 |  | 0d |
|  | 3 | **Valve Chambers & Valves & Fire Hydrant** |  | 2026-12-21 | 2027-06-07 |  |  |  |
|  | 3 | **Excavation** |  | 2026-12-21 | 2027-02-11 |  |  |  |
| SDR-2-CON-PW-ZA-3760 |  | Excavation for Valve Chambers Section 1 | 20d | 2026-12-21 | 2027-01-12 | SDR-2-CON-PW-ZA-3750 SS |  | 39d |
| SDR-2-CON-PW-ZA-2680 |  | Excavation for Valve Chambers Section 2 | 20d | 2027-01-20 | 2027-02-11 | SDR-2-CON-PW-ZA-3760, SDR-2-CON-SL-ZA-3290 |  | 33d |
|  | 1 | **bedding Works** |  | 2027-02-13 | 2027-03-08 |  |  |  |
| SDR-2-CON-PW-ZA-2660 |  | Sand bedding for Valve Chambers | 20d | 2027-02-13 | 2027-03-08 | SDR-2-CON-PW-ZA-2680 |  | 33d |
|  | 4 | **Install Chambers & Valves & Fire Hydrant** |  | 2027-03-14 | 2027-04-05 |  |  |  |
| SDR-2-CON-PW-ZA-2690 |  | Install Chambers & Valves | 20d | 2027-03-14 | 2027-04-05 | SDR-2-CON-PW-ZA-2660 |  | 33d |
|  | 2 | **Testing** |  | 2027-05-06 | 2027-05-15 |  |  |  |
| SDR-2-CON-PW-ZA-2670 |  | Testing for Chambers & Valves | 8d | 2027-05-06 | 2027-05-15 | SDR-2-CON-SE-ZA-2690, SDR-2-CON-RW-ZG-1160, SDR-2-CON-PW-ZA-2690 FS+3d |  | 11d |
|  | 6 | **Backfilling** |  | 2027-05-22 | 2027-06-07 |  |  |  |
| SDR-2-CON-PW-ZA-2700 |  | Backfilling for Chambers & Valves | 15d | 2027-05-22 | 2027-06-07 | SDR-2-CON-PW-ZA-2670 |  | 11d |
|  | 12 | **PORTABLE WATER IN ( PH2-A-MCB0 )** |  | 2026-10-19 | 2027-06-14 |  |  |  |
|  | 7 | **Pipes Work** |  | 2026-10-19 | 2027-06-14 |  |  |  |
|  | 1 | **Excavation** |  | 2026-10-19 | 2027-02-07 |  |  |  |
| SDR-2-CON-PW-ZA-2710 |  | Excavation for PW HDPE Pipe 225 mm. Section 2 | 21d | 2026-10-19 A | 2027-02-07 | SDR-2-CON-PW-ZA-3770, SDR-2-CON-SL-ZA-3410, SDR-2-CON-SL-ZA-3370, SDR-2-CON-SL-ZA-3330 | 30% | 50d |
| SDR-2-CON-PW-ZA-3770 |  | Excavation for PW HDPE Pipe 225 mm. Section 1 | 21d | 2026-10-26 A | 2027-01-13 | SDR-2-CON-PW-ZA-3750 SS | 15% | 10d |
|  | 3 | **bedding Works** |  | 2026-10-31 | 2027-05-01 |  |  |  |
| SDR-2-CON-PW-ZA-2740 |  | Sand bedding for PW HDPE Pipe 225 mm. | 21d | 2026-10-31 A | 2027-05-01 | SDR-2-CON-PW-ZA-2710, SDR-2-CON-TS-ZA-2530 FS+4d | 15% | 5d |
|  | 2 | **Pipes Laying** |  | 2026-10-31 | 2027-05-30 |  |  |  |
| SDR-2-CON-PW-ZA-2720 |  | Install PW 225 mm HDPE Pipe | 20d | 2026-10-31 A | 2027-05-30 | SDR-2-CON-PW-ZA-2740 | 15% | 5d |
|  | 5 | **Testing** |  | 2027-05-31 | 2027-06-08 |  |  |  |
| SDR-2-CON-PW-ZA-2730 |  | Testing of PW HDPE Pipe 225 mm. | 8d | 2027-05-31 | 2027-06-08 | SDR-2-CON-RW-ZA-2270, SDR-2-CON-RW-ZA-2130, SDR-2-CON-RW-ZA-1990, SDR-2-CON-RW-ZA-1850, SDR-2-CON-RW-ZA-1570, SDR-2-CON-RW-ZA-1430, SDR-2-CON-RW-ZA-1290, SDR-2-CON-RW-ZA-1150, SDR-2-CON-PW-ZA-2720 |  | 5d |
|  | 4 | **Backfilling** |  | 2027-05-31 | 2027-06-14 |  |  |  |
| SDR-2-CON-PW-ZA-2750 |  | Backfilling of PW HDPE Pipe 225 mm. | 13d | 2027-05-31 | 2027-06-14 | SDR-2-CON-PW-ZA-2730 SS |  | 5d |
|  | 3 | **Valve Chambers & Valves & Fire Hydrant** |  | 2026-12-21 | 2027-02-28 |  |  |  |
|  | 3 | **Excavation** |  | 2026-12-21 | 2027-01-13 |  |  |  |
| SDR-2-CON-PW-ZA-2780 |  | Excavation for Valve Chambers Section 2 | 21d | 2026-12-21 | 2027-01-13 | SDR-2-CON-PW-ZA-3780 SS |  | 87d |
| SDR-2-CON-PW-ZA-3780 |  | Excavation for Valve Chambers Section 1 | 21d | 2026-12-21 | 2027-01-13 | SDR-2-CON-PW-ZA-3770 SS |  | 87d |
|  | 1 | **bedding Works** |  | 2026-12-21 | 2027-01-12 |  |  |  |
| SDR-2-CON-PW-ZA-2760 |  | Sand bedding for Valve Chambers | 20d | 2026-12-21 | 2027-01-12 | SDR-2-CON-PW-ZA-2780 SS |  | 87d |
|  | 4 | **Install Chambers & Valves & Fire Hydrant** |  | 2027-01-13 | 2027-02-03 |  |  |  |
| SDR-2-CON-PW-ZA-2790 |  | Install Chambers & Valves | 19d | 2027-01-13 | 2027-02-03 | SDR-2-CON-PW-ZA-2760 |  | 87d |
|  | 2 | **Testing** |  | 2027-02-04 | 2027-02-13 |  |  |  |
| SDR-2-CON-PW-ZA-2770 |  | Testing for Chambers & Valves | 8d | 2027-02-04 | 2027-02-13 | SDR-2-CON-PW-ZA-2790 |  | 87d |
|  | 6 | **Backfilling** |  | 2027-02-14 | 2027-02-28 |  |  |  |
| SDR-2-CON-PW-ZA-2800 |  | Backfilling for Chambers & Valves | 12d | 2027-02-14 | 2027-02-28 | SDR-2-CON-PW-ZA-2770 |  | 87d |
|  | 3 | **PORTABLE WATER IN ( PH2-A-MCC0 )** |  | 2026-09-24 | 2027-05-24 |  |  |  |
|  | 7 | **Pipes Work** |  | 2026-09-24 | 2027-03-30 |  |  |  |
|  | 1 | **Excavation** |  | 2026-09-24 | 2026-10-14 |  |  |  |
| SDR-2-CON-PW-ZA-1400 |  | Excavation for PW HDPE Pipe 160 mm. Section 1 | 21d | 2026-09-24 A | 2026-10-01 A | SDR-2-CON-PW-ZA-3790 | 100% |  |
| SDR-2-CON-PW-ZA-3790 |  | Excavation for PW HDPE Pipe 160 mm. Section 2 | 21d | 2026-10-01 A | 2026-10-14 A | SDR-2-CON-PW-ZA-3770 FF | 100% |  |
|  | 3 | **bedding Works** |  | 2026-10-22 | 2027-02-06 |  |  |  |
| SDR-2-CON-PW-ZA-2240 |  | Sand bedding for PW HDPE Pipe 160 mm. | 20d | 2026-10-22 A | 2027-02-06 | SDR-2-CON-PW-ZA-1400 | 75% | 65d |
|  | 2 | **Pipes Laying** |  | 2026-10-22 | 2027-03-02 |  |  |  |
| SDR-2-CON-PW-ZA-1410 |  | Install PW 160 mm HDPE Pipe | 20d | 2026-10-22 A | 2027-03-02 | SDR-2-CON-PW-ZA-2240 | 75% | 65d |
|  | 5 | **Testing** |  | 2027-03-03 | 2027-03-16 |  |  |  |

| ID | WBS | Task | Duration | Start | Finish | Predecessors | Complete | Total float |
| --- | --- | --- | --- | --- | --- | --- | --- | --- |
| SDR-2-CON-PW-ZA-1480 |  | Testing of PW HDPE Pipe 160 mm. | 8d | 2027-03-03 | 2027-03-16 | SDR-2-CON-PW-ZA-1410 |  | 65d |
|  | 4 | **Backfilling** |  | 2027-03-17 | 2027-03-30 |  |  |  |
| SDR-2-CON-PW-ZA-2250 |  | Backfilling of PW HDPE Pipe 160 mm. | 12d | 2027-03-17 | 2027-03-30 | SDR-2-CON-PW-ZA-1480 |  | 65d |
|  | 3 | **Valve Chambers & Valves & Fire Hydrant** |  | 2027-01-14 | 2027-05-24 |  |  |  |
|  | 3 | **Excavation** |  | 2027-01-14 | 2027-03-04 |  |  |  |
| SDR-2-CON-PW-ZA-3800 |  | Excavation for Valve Chambers Section 1 | 21d | 2027-01-14 | 2027-02-07 | SDR-2-CON-PW-ZA-3790 SS |  | 23d |
| SDR-2-CON-PW-ZA-3230 |  | Excavation for Valve Chambers Section 2 | 21d | 2027-02-08 | 2027-03-04 | SDR-2-CON-PW-ZA-3800, SDR-2-CON-SL-ZA-3250 |  | 23d |
|  | 1 | **bedding Works** |  | 2027-03-06 | 2027-04-01 |  |  |  |
| SDR-2-CON-PW-ZA-3210 |  | Sand bedding for Valve Chambers | 20d | 2027-03-06 | 2027-04-01 | SDR-2-CON-PW-ZA-3230 |  | 23d |
|  | 4 | **Install Chambers & Valves & Fire Hydrant** |  | 2027-04-03 | 2027-04-25 |  |  |  |
| SDR-2-CON-PW-ZA-3240 |  | Install Chambers & Valves | 20d | 2027-04-03 | 2027-04-25 | SDR-2-CON-PW-ZA-3210 |  | 23d |
|  | 2 | **Testing** |  | 2027-04-26 | 2027-05-02 |  |  |  |
| SDR-2-CON-PW-ZA-3220 |  | Testing for Chambers & Valves | 6d | 2027-04-26 | 2027-05-02 | SDR-2-CON-PW-ZA-3240 |  | 23d |
|  | 6 | **Backfilling** |  | 2027-05-03 | 2027-05-24 |  |  |  |
| SDR-2-CON-PW-ZA-3250 |  | Backfilling for Chambers & Valves | 14d | 2027-05-03 | 2027-05-24 | SDR-2-CON-PW-ZA-3220 |  | 23d |
|  | 4 | **PORTABLE WATER IN ( PH2-A-MCD0 )** |  | 2026-09-24 | 2027-05-31 |  |  |  |
|  | 7 | **Pipes Work** |  | 2026-09-24 | 2027-05-06 |  |  |  |
|  | 1 | **Excavation** |  | 2026-09-24 | 2026-10-20 |  |  |  |
| SDR-2-CON-PW-ZA-3260 |  | Excavation for PW HDPE Pipe 160 mm. Section 1 | 21d | 2026-09-24 A | 2026-10-04 A | SDR-2-CON-PW-ZA-3810, SDR-2-CON-TE-ZA-4170, SDR-2-CON-TE-ZA-4180, SDR-2-CON-TE-ZA-4080, SDR-2-CON-TE-ZA-4090, SDR-2-CON-TE-ZA-3990, SDR-2-CON-TE-ZA-4000, SDR-2-CON-TE-ZA-3900, SDR-2-CON-TE-ZA-3910, SDR-2-CON-TE-ZA-3810, SDR-2-CON-TE-ZA-3820, SDR-2-CON-TE-ZA-3720 | 100% |  |
| SDR-2-CON-PW-ZA-3810 |  | Excavation for PW HDPE Pipe 160 mm. Section 2 | 21d | 2026-10-05 A | 2026-10-20 A | SDR-2-CON-TS-ZA-1270 SS, SDR-2-CON-PW-ZA-3790 FF, SDR-2-CON-SL-ZA-3290 | 100% |  |
|  | 3 | **bedding Works** |  | 2026-10-22 | 2027-03-23 |  |  |  |
| SDR-2-CON-PW-ZA-3290 |  | Sand bedding for PW HDPE Pipe 160 mm. | 18d | 2026-10-22 A | 2027-03-23 | SDR-2-CON-PW-ZA-3260 | 50% | 16d |
|  | 2 | **Pipes Laying** |  | 2026-10-24 | 2027-04-15 |  |  |  |
| SDR-2-CON-PW-ZA-3270 |  | Install PW 160 mm HDPE Pipe | 20d | 2026-10-24 A | 2027-04-15 | SDR-2-CON-PW-ZA-3290 | 50% | 16d |
|  | 5 | **Testing** |  | 2027-04-17 | 2027-04-25 |  |  |  |
| SDR-2-CON-PW-ZA-3280 |  | Testing of PW HDPE Pipe 160 mm. | 8d | 2027-04-17 | 2027-04-25 | SDR-2-CON-PW-ZA-3270 |  | 16d |
|  | 4 | **Backfilling** |  | 2027-04-26 | 2027-05-06 |  |  |  |
| SDR-2-CON-PW-ZA-3300 |  | Backfilling of PW HDPE Pipe 160 mm. | 10d | 2027-04-26 | 2027-05-06 | SDR-2-CON-PW-ZA-3280 |  | 33d |
|  | 3 | **Valve Chambers & Valves & Fire Hydrant** |  | 2027-01-20 | 2027-05-31 |  |  |  |
|  | 3 | **Excavation** |  | 2027-01-20 | 2027-03-21 |  |  |  |
| SDR-2-CON-PW-ZA-3820 |  | Excavation for Valve Chambers Section 1 | 21d | 2027-01-20 | 2027-02-13 | SDR-2-CON-PW-ZA-3810 SS |  | 5d |
| SDR-2-CON-PW-ZA-3330 |  | Excavation for Valve Chambers Section 2 | 21d | 2027-02-20 | 2027-03-21 | SDR-2-CON-PW-ZA-3820, SDR-2-CON-CC-ZA-1780, SDR-2-CON-TE-ZA-3630 |  | 0d |
|  | 1 | **bedding Works** |  | 2027-03-22 | 2027-04-11 |  |  |  |
| SDR-2-CON-PW-ZA-3310 |  | Sand bedding for Valve Chambers | 18d | 2027-03-22 | 2027-04-11 | SDR-2-CON-PW-ZA-3330 |  | 0d |
|  | 4 | **Install Chambers & Valves & Fire Hydrant** |  | 2027-04-12 | 2027-05-04 |  |  |  |
| SDR-2-CON-PW-ZA-3340 |  | Install Chambers & Valves | 20d | 2027-04-12 | 2027-05-04 | SDR-2-CON-PW-ZA-3310 |  | 0d |
|  | 2 | **Testing** |  | 2027-05-05 | 2027-05-13 |  |  |  |
| SDR-2-CON-PW-ZA-3320 |  | Testing for Chambers & Valves | 8d | 2027-05-05 | 2027-05-13 | SDR-2-CON-PW-ZA-3340 |  | 0d |
|  | 6 | **Backfilling** |  | 2027-05-15 | 2027-05-31 |  |  |  |
| SDR-2-CON-PW-ZA-3350 |  | Backfilling for Chambers & Valves | 10d | 2027-05-15 | 2027-05-31 | SDR-2-CON-PW-ZA-3320 |  | 0d |
|  | 5 | **PORTABLE WATER IN ( PH2-A-MCE0 )** |  | 2026-09-07 | 2027-06-17 |  |  |  |
|  | 7 | **Pipes Work** |  | 2026-09-07 | 2027-02-14 |  |  |  |
|  | 1 | **Excavation** |  | 2026-09-07 | 2026-10-10 |  |  |  |
| SDR-2-CON-PW-ZA-3830 |  | Excavation for PW HDPE Pipe 160 mm. Section 1 | 21d | 2026-09-07 A | 2026-09-14 A | SDR-2-CON-TE-ZA-4540 SS, SDR-2-CON-TE-ZA-4360 SS | 100% |  |
| SDR-2-CON-PW-ZA-3360 |  | Excavation for PW HDPE Pipe 160 mm. Section 2 | 21d | 2026-10-05 A | 2026-10-10 A | SDR-2-CON-PW-ZA-3830, SDR-2-CON-TE-ZA-4440, SDR-2-CON-TE-ZA-4450 | 100% |  |
|  | 3 | **bedding Works** |  | 2026-10-11 | 2026-12-31 |  |  |  |
| SDR-2-CON-PW-ZA-3390 |  | Sand bedding for PW HDPE Pipe 160 mm. | 18d | 2026-10-11 A | 2026-12-31 | SDR-2-CON-PW-ZA-3360 | 75% | 71d |
|  | 2 | **Pipes Laying** |  | 2026-10-11 | 2027-01-18 |  |  |  |
| SDR-2-CON-PW-ZA-3370 |  | Install PW 160 mm HDPE Pipe | 15d | 2026-10-11 A | 2027-01-18 | SDR-2-CON-PW-ZA-3390 | 75% | 71d |
|  | 5 | **Testing** |  | 2027-01-19 | 2027-01-27 |  |  |  |
| SDR-2-CON-PW-ZA-3380 |  | Testing of PW HDPE Pipe 160 mm. | 8d | 2027-01-19 | 2027-01-27 | SDR-2-CON-PW-ZA-3370 |  | 71d |
|  | 4 | **Backfilling** |  | 2027-01-28 | 2027-02-14 |  |  |  |
| SDR-2-CON-PW-ZA-3400 |  | Backfilling of PW HDPE Pipe 160 mm. | 15d | 2027-01-28 | 2027-02-14 | SDR-2-CON-PW-ZA-3380 |  | 71d |
|  | 3 | **Valve Chambers & Valves & Fire Hydrant** |  | 2026-11-09 | 2027-06-17 |  |  |  |
|  | 3 | **Excavation** |  | 2026-11-09 | 2027-04-05 |  |  |  |
| SDR-2-CON-PW-ZA-3840 |  | Excavation for Valve Chambers Section 1 | 20d | 2026-11-09 | 2026-12-01 | SDR-2-CON-PW-ZA-3830 SS |  | 84d |
| SDR-2-CON-PW-ZA-3430 |  | Excavation for Valve Chambers Section 2 | 20d | 2027-03-08 | 2027-04-05 | SDR-2-CON-PW-ZA-3840, SDR-2-CON-TE-ZA-3450, SDR-2-CON-TE-ZA-3360 |  | 2.81d |
|  | 1 | **bedding Works** |  | 2027-04-05 | 2027-04-26 |  |  |  |
| SDR-2-CON-PW-ZA-3410 |  | Sand bedding for Valve Chambers | 18d | 2027-04-05 | 2027-04-26 | SDR-2-CON-PW-ZA-3430 |  | 2.81d |
|  | 4 | **Install Chambers & Valves & Fire Hydrant** |  | 2027-04-26 | 2027-05-22 |  |  |  |
| SDR-2-CON-PW-ZA-3440 |  | Install Chambers & Valves | 17d | 2027-04-26 | 2027-05-22 | SDR-2-CON-PW-ZA-3410 |  | 2.81d |
|  | 2 | **Testing** |  | 2027-05-22 | 2027-05-31 |  |  |  |
| SDR-2-CON-PW-ZA-3420 |  | Testing for Chambers & Valves | 8d | 2027-05-22 | 2027-05-31 | SDR-2-CON-PW-ZA-3440 |  | 2.81d |
|  | 6 | **Backfilling** |  | 2027-05-31 | 2027-06-17 |  |  |  |
| SDR-2-CON-PW-ZA-3450 |  | Backfilling for Chambers & Valves | 15d | 2027-05-31 | 2027-06-17 | SDR-2-CON-PW-ZA-3420 |  | 2.81d |
|  | 6 | **PORTABLE WATER IN ( PH2-A-MCF0 )** |  | 2026-10-01 | 2027-06-07 |  |  |  |
|  | 7 | **Pipes Work** |  | 2026-10-01 | 2027-04-13 |  |  |  |
|  | 1 | **Excavation** |  | 2026-10-01 | 2027-01-06 |  |  |  |
| SDR-2-CON-PW-ZA-3850 |  | Excavation for PW HDPE Pipe 160 mm. Section 1 | 21d | 2026-10-01 A | 2027-01-06 A | SDR-2-CON-PW-ZA-3830 SS+3d, SDR-2-CON-TE-ZA-3540, SDR-2-CON-TE-ZA-3550, SDR-2-CON-TE-ZA-3460, SDR-2-CON-TE-ZA-3370, SDR-2-CON-TE-ZA-3270 | 100% |  |
| SDR-2-CON-PW-ZA-3460 |  | Excavation for PW HDPE Pipe 160 mm. Section 2 | 21d | 2026-10-06 A | 2026-10-20 A | SDR-2-CON-PW-ZA-3850 | 100% |  |

| ID | WBS | Task | Duration | Start | Finish | Predecessors | Complete | Total float |
| --- | --- | --- | --- | --- | --- | --- | --- | --- |
|  | 3 | **bedding Works** |  | 2026-10-07 | 2027-02-23 |  |  |  |
| SDR-2-CON-PW-ZA-3490 |  | Sand bedding for PW HDPE Pipe 160 mm. | 18d | 2026-10-07 A | 2027-02-23 | SDR-2-CON-PW-ZA-3460 | 75% | 26d |
|  | 2 | **Pipes Laying** |  | 2026-10-07 | 2027-03-23 |  |  |  |
| SDR-2-CON-PW-ZA-3470 |  | Install PW 160 mm HDPE Pipe | 20d | 2026-10-07 A | 2027-03-23 | SDR-2-CON-PW-ZA-3490 | 75% | 26d |
|  | 5 | **Testing** |  | 2027-03-24 | 2027-03-30 |  |  |  |
| SDR-2-CON-PW-ZA-3480 |  | Testing of PW HDPE Pipe 160 mm. | 6d | 2027-03-24 | 2027-03-30 | SDR-2-CON-PW-ZA-3470 |  | 26d |
|  | 4 | **Backfilling** |  | 2027-03-31 | 2027-04-13 |  |  |  |
| SDR-2-CON-PW-ZA-3500 |  | Backfilling of PW HDPE Pipe 160 mm. | 12d | 2027-03-31 | 2027-04-13 | SDR-2-CON-PW-ZA-3480 |  | 26d |
|  | 3 | **Valve Chambers & Valves & Fire Hydrant** |  | 2027-02-02 | 2027-06-07 |  |  |  |
|  | 3 | **Excavation** |  | 2027-02-02 | 2027-03-28 |  |  |  |
| SDR-2-CON-PW-ZA-3860 |  | Excavation for Valve Chambers Section 1 | 21d | 2027-02-02 | 2027-02-27 | SDR-2-CON-PW-ZA-3850 SS |  | 11d |
| SDR-2-CON-PW-ZA-3530 |  | Excavation for Valve Chambers Section 2 | 21d | 2027-02-28 | 2027-03-28 | SDR-2-CON-PW-ZA-3860 |  | 11d |
|  | 1 | **bedding Works** |  | 2027-03-29 | 2027-04-18 |  |  |  |
| SDR-2-CON-PW-ZA-3510 |  | Sand bedding for Valve Chambers | 18d | 2027-03-29 | 2027-04-18 | SDR-2-CON-PW-ZA-3530 |  | 11d |
|  | 4 | **Install Chambers & Valves & Fire Hydrant** |  | 2027-04-19 | 2027-05-11 |  |  |  |
| SDR-2-CON-PW-ZA-3540 |  | Install Chambers & Valves | 20d | 2027-04-19 | 2027-05-11 | SDR-2-CON-PW-ZA-3510 |  | 11d |
|  | 2 | **Testing** |  | 2027-05-12 | 2027-05-25 |  |  |  |
| SDR-2-CON-PW-ZA-3520 |  | Testing for Chambers & Valves | 7d | 2027-05-12 | 2027-05-25 | SDR-2-CON-PW-ZA-3540 |  | 11d |
|  | 6 | **Backfilling** |  | 2027-05-26 | 2027-06-07 |  |  |  |
| SDR-2-CON-PW-ZA-3550 |  | Backfilling for Chambers & Valves | 11d | 2027-05-26 | 2027-06-07 | SDR-2-CON-PW-ZA-3520 |  | 11d |
|  | 7 | **PORTABLE WATER IN ( PH2-A-MCG0 )** |  | 2026-10-22 | 2027-06-19 |  |  |  |
|  | 7 | **Pipes Work** |  | 2026-10-22 | 2027-06-06 |  |  |  |
|  | 1 | **Excavation** |  | 2026-10-22 | 2027-03-28 |  |  |  |
| SDR-2-CON-PW-ZA-3870 |  | Excavation for PW HDPE Pipe 160 mm. Section 1 | 21d | 2026-10-22 A | 2027-02-27 | SDR-2-CON-PW-ZA-3850 SS+3d | 30% | 3d |
| SDR-2-CON-PW-ZA-3560 |  | Excavation for PW HDPE Pipe 160 mm. Section 2 | 21d | 2026-10-26 A | 2027-03-28 | SDR-2-CON-PW-ZA-3870 | 10% | 12d |
|  | 3 | **bedding Works** |  | 2026-11-03 | 2027-04-20 |  |  |  |
| SDR-2-CON-PW-ZA-3590 |  | Sand bedding for PW HDPE Pipe 160 mm. | 20d | 2026-11-03 A | 2027-04-20 | SDR-2-CON-PW-ZA-3560 | 10% | 12d |
|  | 2 | **Pipes Laying** |  | 2026-11-03 | 2027-05-06 |  |  |  |
| SDR-2-CON-PW-ZA-3570 |  | Install PW 160 mm HDPE Pipe | 14d | 2026-11-03 A | 2027-05-06 | SDR-2-CON-PW-ZA-3590 | 10% | 12d |
|  | 5 | **Testing** |  | 2027-05-08 | 2027-05-22 |  |  |  |
| SDR-2-CON-PW-ZA-3580 |  | Testing of PW HDPE Pipe 160 mm. | 8d | 2027-05-08 | 2027-05-22 | SDR-2-CON-PW-ZA-3570 |  | 12d |
|  | 4 | **Backfilling** |  | 2027-05-23 | 2027-06-06 |  |  |  |
| SDR-2-CON-PW-ZA-3600 |  | Backfilling of PW HDPE Pipe 160 mm. | 13d | 2027-05-23 | 2027-06-06 | SDR-2-CON-PW-ZA-3580 |  | 12d |
|  | 3 | **Valve Chambers & Valves & Fire Hydrant** |  | 2027-02-15 | 2027-06-19 |  |  |  |
|  | 3 | **Excavation** |  | 2027-02-15 | 2027-04-10 |  |  |  |
| SDR-2-CON-PW-ZA-3880 |  | Excavation for Valve Chambers Section 1 | 21d | 2027-02-15 | 2027-03-16 | SDR-2-CON-PW-ZA-3870 SS, SDR-2-CON-ST-ZA-4650 |  | 1d |
| SDR-2-CON-PW-ZA-3630 |  | Excavation for Valve Chambers Section 2 | 21d | 2027-03-17 | 2027-04-10 | SDR-2-CON-PW-ZA-3880, SDR-2-CON-PW-ZA-3560 SS |  | 1d |
|  | 1 | **bedding Works** |  | 2027-04-11 | 2027-05-03 |  |  |  |
| SDR-2-CON-PW-ZA-3610 |  | Sand bedding for Valve Chambers | 20d | 2027-04-11 | 2027-05-03 | SDR-2-CON-PW-ZA-3630 |  | 1d |
|  | 4 | **Install Chambers & Valves & Fire Hydrant** |  | 2027-05-04 | 2027-05-29 |  |  |  |
| SDR-2-CON-PW-ZA-3640 |  | Install Chambers & Valves | 17d | 2027-05-04 | 2027-05-29 | SDR-2-CON-PW-ZA-3610 |  | 1d |
|  | 2 | **Testing** |  | 2027-05-30 | 2027-06-07 |  |  |  |
| SDR-2-CON-PW-ZA-3620 |  | Testing for Chambers & Valves | 8d | 2027-05-30 | 2027-06-07 | SDR-2-CON-PW-ZA-3640 |  | 1d |
|  | 6 | **Backfilling** |  | 2027-06-08 | 2027-06-19 |  |  |  |
| SDR-2-CON-PW-ZA-3650 |  | Backfilling for Chambers & Valves | 10d | 2027-06-08 | 2027-06-19 | SDR-2-CON-PW-ZA-3620 |  | 1d |
|  | 8 | **PORTABLE WATER IN ( PH2-A-MCH0 )** |  | 2027-02-02 | 2027-06-05 |  |  |  |
|  | 7 | **Pipes Work** |  | 2027-02-02 | 2027-05-30 |  |  |  |
|  | 1 | **Excavation** |  | 2027-02-02 | 2027-03-28 |  |  |  |
| SDR-2-CON-PW-ZA-3890 |  | Excavation for PW HDPE Pipe 225 mm. Section 1 | 21d | 2027-02-02 | 2027-02-27 | SDR-2-CON-PW-ZA-3870 SS+3d |  | 3d |
| SDR-2-CON-PW-ZA-2810 |  | Excavation for PW HDPE Pipe 225 mm. Section 2 | 21d | 2027-02-28 | 2027-03-28 | SDR-2-CON-PW-ZA-3890 |  | 3d |
|  | 3 | **bedding Works** |  | 2027-03-29 | 2027-04-20 |  |  |  |
| SDR-2-CON-PW-ZA-2840 |  | Sand bedding for PW HDPE Pipe 225 mm. | 20d | 2027-03-29 | 2027-04-20 | SDR-2-CON-PW-ZA-2810 |  | 3d |
|  | 2 | **Pipes Laying** |  | 2027-04-15 | 2027-05-02 |  |  |  |
| SDR-2-CON-PW-ZA-2820 |  | Install PW 225 mm HDPE Pipe | 15d | 2027-04-15 | 2027-05-02 | SDR-2-CON-PW-ZA-2840 SS+15d |  | 3d |
|  | 5 | **Testing** |  | 2027-05-03 | 2027-05-10 |  |  |  |
| SDR-2-CON-PW-ZA-2830 |  | Testing of PW HDPE Pipe 225 mm. | 7d | 2027-05-03 | 2027-05-10 | SDR-2-CON-PW-ZA-2820 |  | 3d |
|  | 4 | **Backfilling** |  | 2027-05-11 | 2027-05-30 |  |  |  |
| SDR-2-CON-PW-ZA-2850 |  | Backfilling of PW HDPE Pipe 225 mm. | 12d | 2027-05-11 | 2027-05-30 | SDR-2-CON-PW-ZA-2830 |  | 18d |
|  | 3 | **Valve Chambers & Valves & Fire Hydrant** |  | 2027-02-02 | 2027-06-05 |  |  |  |
|  | 3 | **Excavation** |  | 2027-02-02 | 2027-03-28 |  |  |  |
| SDR-2-CON-PW-ZA-3900 |  | Excavation for Valve Chambers Section 1 | 21d | 2027-02-02 | 2027-02-27 | SDR-2-CON-PW-ZA-3890 SS, SDR-2-CON-RW-ZA-2510 |  | 5d |
| SDR-2-CON-PW-ZA-2880 |  | Excavation for Valve Chambers Section 2 | 21d | 2027-02-28 | 2027-03-28 | SDR-2-CON-PW-ZA-3900 |  | 5d |
|  | 1 | **bedding Works** |  | 2027-03-29 | 2027-04-20 |  |  |  |
| SDR-2-CON-PW-ZA-2860 |  | Sand bedding for Valve Chambers | 20d | 2027-03-29 | 2027-04-20 | SDR-2-CON-PW-ZA-2880 |  | 5d |
|  | 4 | **Install Chambers & Valves & Fire Hydrant** |  | 2027-04-21 | 2027-05-08 |  |  |  |
| SDR-2-CON-PW-ZA-2890 |  | Install Chambers & Valves | 15d | 2027-04-21 | 2027-05-08 | SDR-2-CON-PW-ZA-2860 |  | 5d |
|  | 2 | **Testing** |  | 2027-05-09 | 2027-05-22 |  |  |  |
| SDR-2-CON-PW-ZA-2870 |  | Testing for Chambers & Valves | 7d | 2027-05-09 | 2027-05-22 | SDR-2-CON-RW-ZA-2550, SDR-2-CON-PW-ZA-2890 |  | 13d |
|  | 6 | **Backfilling** |  | 2027-05-23 | 2027-06-05 |  |  |  |
| SDR-2-CON-PW-ZA-2900 |  | Backfilling for Chambers & Valves | 12d | 2027-05-23 | 2027-06-05 | SDR-2-CON-PW-ZA-2870 |  | 13d |

| ID | WBS | Task | Duration | Start | Finish | Predecessors | Complete | Total float |
| --- | --- | --- | --- | --- | --- | --- | --- | --- |
|  | 9 | **PORTABLE WATER IN ( PH2-ART-MC00 )** |  | 2026-09-14 | 2027-06-06 |  |  |  |
|  | 7 | **Pipes Work** |  | 2026-09-14 | 2027-05-06 |  |  |  |
|  | 1 | **Excavation** |  | 2026-09-14 | 2027-03-02 |  |  |  |
| SDR-2-CON-PW-ZA-3910 |  | Excavation for PW HDPE Pipes 315 mm Section 1 | 21d | 2026-09-14 A | 2026-09-30 A | SDR-2-CON-PW-ZA-3890 SS+3d | 100% |  |
| SDR-2-CON-PW-ZA-2360 |  | Excavation for PW HDPE Pipes 315 mm Section 2 | 21d | 2026-10-01 A | 2027-03-02 | SDR-2-CON-PW-ZA-3910 | 25% | 6d |
|  | 8 | **bedding Works** |  | 2027-03-03 | 2027-03-30 |  |  |  |
| SDR-2-CON-PW-ZA-2440 |  | Sand bedding for PW HDPE Pipes 315 mm | 20d | 2027-03-03 | 2027-03-30 | SDR-2-CON-PW-ZA-2360 |  | 6d |
|  | 2 | **Pipes Laying** |  | 2027-03-31 | 2027-04-19 |  |  |  |
| SDR-2-CON-PW-ZA-2370 |  | Install PW 315 mm HDPE Pipe | 17d | 2027-03-31 | 2027-04-19 | SDR-2-CON-RW-ZA-2690, SDR-2-CON-PW-ZA-2440 |  | 6d |
|  | 5 | **Testing** |  | 2027-04-20 | 2027-04-27 |  |  |  |
| SDR-2-CON-PW-ZA-2430 |  | Testing of PW HDPE Pipe 315 mm. | 7d | 2027-04-20 | 2027-04-27 | SDR-2-CON-PW-ZA-2370 |  | 6d |
|  | 9 | **Backfilling** |  | 2027-04-28 | 2027-05-06 |  |  |  |
| SDR-2-CON-PW-ZA-2450 |  | Backfilling of PW HDPE Pipe 315 mm. | 8d | 2027-04-28 | 2027-05-06 | SDR-2-CON-PW-ZA-2430 |  | 6d |
|  | 3 | **Valve Chambers & Valves & Fire Hydrant** |  | 2027-02-06 | 2027-06-06 |  |  |  |
|  | 3 | **Excavation** |  | 2027-02-06 | 2027-03-31 |  |  |  |
| SDR-2-CON-PW-ZA-3920 |  | Excavation for Valve Chambers Section 1 | 21d | 2027-02-06 | 2027-03-02 | SDR-2-CON-PW-ZA-3910 SS |  | 12d |
| SDR-2-CON-PW-ZA-2400 |  | Excavation for Valve Chambers Section 2 | 21d | 2027-03-03 | 2027-03-31 | SDR-2-CON-PW-ZA-3920 |  | 12d |
|  | 1 | **bedding Works** |  | 2027-04-01 | 2027-04-24 |  |  |  |
| SDR-2-CON-PW-ZA-2380 |  | Sand bedding for Valve Chambers | 20d | 2027-04-01 | 2027-04-24 | SDR-2-CON-PW-ZA-2400 |  | 12d |
|  | 4 | **Install Chambers & Valves & Fire Hydrant** |  | 2027-04-25 | 2027-05-12 |  |  |  |
| SDR-2-CON-PW-ZA-2410 |  | Install Chambers & Valves | 16d | 2027-04-25 | 2027-05-12 | SDR-2-CON-PW-ZA-2380 |  | 12d |
|  | 2 | **Testing** |  | 2027-05-13 | 2027-05-27 |  |  |  |
| SDR-2-CON-PW-ZA-2390 |  | Testing for Chambers & Valves | 8d | 2027-05-13 | 2027-05-27 | SDR-2-CON-PW-ZA-2410 |  | 12d |
|  | 6 | **Backfilling** |  | 2027-05-29 | 2027-06-06 |  |  |  |
| SDR-2-CON-PW-ZA-2420 |  | Backfilling for Chambers & Valves | 8d | 2027-05-29 | 2027-06-06 | SDR-2-CON-PW-ZA-2390 |  | 12d |
|  | 10 | **PORTABLE WATER IN ( PH2-ART-MC10 )** |  | 2026-09-24 | 2027-06-20 |  |  |  |
|  | 7 | **Pipes Work** |  | 2026-09-24 | 2027-06-20 |  |  |  |
|  | 1 | **Excavation** |  | 2026-09-24 | 2027-03-02 |  |  |  |
| SDR-2-CON-PW-ZA-3930 |  | Excavation for PW HDPE Pipes 315 mm Section 1 | 21d | 2026-09-24 A | 2027-02-04 | SDR-2-CON-PW-ZA-3910 FF+2d | 40% | 16d |
| SDR-2-CON-PW-ZA-2460 |  | Excavation for PW HDPE Pipes 315 mm Section 2 | 21d | 2026-10-03 A | 2027-03-02 | SDR-2-CON-PW-ZA-3930 | 10% | 16d |
|  | 8 | **bedding Works** |  | 2026-10-03 | 2027-03-30 |  |  |  |
| SDR-2-CON-PW-ZA-2540 |  | Sand bedding for PW HDPE Pipes 315 mm | 20d | 2026-10-03 A | 2027-03-30 | SDR-2-CON-PW-ZA-2460 | 20% | 16d |
|  | 2 | **Pipes Laying** |  | 2026-10-03 | 2027-04-17 |  |  |  |
| SDR-2-CON-PW-ZA-2470 |  | Install PW 315 mm HDPE Pipe | 15d | 2026-10-03 A | 2027-04-17 | SDR-2-CON-PW-ZA-2540 | 20% | 16d |
|  | 5 | **Testing** |  | 2027-04-18 | 2027-04-25 |  |  |  |
| SDR-2-CON-PW-ZA-2530 |  | Testing of PW HDPE Pipe 315 mm. | 7d | 2027-04-18 | 2027-04-25 | SDR-2-CON-PW-ZA-2470 |  | 16d |
|  | 9 | **Backfilling** |  | 2027-06-09 | 2027-06-20 |  |  |  |
| SDR-2-CON-PW-ZA-2550 |  | Backfilling of PW HDPE Pipe 315 mm. | 10d | 2027-06-09 | 2027-06-20 | SDR-2-CON-PW-ZA-2230, SDR-2-CON-PW-ZA-2530 |  | 0d |
|  | 3 | **Valve Chambers & Valves & Fire Hydrant** |  | 2027-01-17 | 2027-05-11 |  |  |  |
|  | 3 | **Excavation** |  | 2027-01-17 | 2027-03-07 |  |  |  |
| SDR-2-CON-PW-ZA-3940 |  | Excavation for Valve Chambers Section 1 | 21d | 2027-01-17 | 2027-02-09 | SDR-2-CON-PW-ZA-3930 SS, SDR-2-CON-TE-ZA-1060, SDR-2-CON-MV-ZA-1260, SDR-2-CON-MV-ZA-1220 |  | 29d |
| SDR-2-CON-PW-ZA-2500 |  | Excavation for Valve Chambers Section 2 | 21d | 2027-02-10 | 2027-03-07 | SDR-2-CON-PW-ZA-3940 |  | 29d |
|  | 1 | **bedding Works** |  | 2027-03-08 | 2027-04-04 |  |  |  |
| SDR-2-CON-PW-ZA-2480 |  | Sand bedding for Valve Chambers | 20d | 2027-03-08 | 2027-04-04 | SDR-2-CON-PW-ZA-2500 |  | 29d |
|  | 4 | **Install Chambers & Valves & Fire Hydrant** |  | 2027-04-05 | 2027-04-20 |  |  |  |
| SDR-2-CON-PW-ZA-2510 |  | Install Chambers & Valves | 14d | 2027-04-05 | 2027-04-20 | SDR-2-CON-PW-ZA-2480 |  | 29d |
|  | 2 | **Testing** |  | 2027-04-21 | 2027-04-29 |  |  |  |
| SDR-2-CON-PW-ZA-2490 |  | Testing for Chambers & Valves | 8d | 2027-04-21 | 2027-04-29 | SDR-2-CON-PW-ZA-2510 |  | 29d |
|  | 6 | **Backfilling** |  | 2027-05-01 | 2027-05-11 |  |  |  |
| SDR-2-CON-PW-ZA-2520 |  | Backfilling for Chambers & Valves | 10d | 2027-05-01 | 2027-05-11 | SDR-2-CON-PW-ZA-2490 |  | 29d |
|  | ZG | **ZONE G** |  | 2026-05-06 | 2027-06-02 |  |  |  |
|  | 1 | **PORTABLE WATER IN ( PH2-G-MCA0 )** |  | 2026-05-06 | 2027-03-01 |  |  |  |
|  | 7 | **Pipes Work** |  | 2026-05-06 | 2026-12-05 |  |  |  |
|  | 1 | **Excavation** |  | 2026-05-06 | 2026-08-20 |  |  |  |
| SDR-2-CON-PW-ZG-1520 |  | Excavation for PW HDPE Pipes 400 mm Section 1 | 21d | 2026-05-06 A | 2026-05-24 A | SDR-2-CON-TS-ZA-2300 SS | 100% |  |
| SDR-2-CON-PW-ZG-1000 |  | Excavation for PW HDPE Pipes 400 mm Section 2 | 21d | 2026-06-22 A | 2026-08-20 A | SDR-2-CON-PW-ZG-1520 | 100% |  |
|  | 3 | **bedding Works** |  | 2026-08-01 | 2026-11-09 |  |  |  |
| SDR-2-CON-PW-ZG-1500 |  | Sand bedding for PW HDPE Pipes 400 mm | 16d | 2026-08-01 A | 2026-11-09 | SDR-2-CON-PW-ZG-1000 | 92% | 132d |
|  | 2 | **Pipes Laying** |  | 2026-08-13 | 2026-11-09 |  |  |  |
| SDR-2-CON-PW-ZG-1010 |  | Install PW 400 mm HDPE Pipe | 16d | 2026-08-13 A | 2026-11-09 | SDR-2-CON-PW-ZG-1500 FF | 92% | 132d |
|  | 5 | **Testing** |  | 2026-11-10 | 2026-11-21 |  |  |  |
| SDR-2-CON-PW-ZG-1080 |  | Testing of PW HDPE Pipe 400 mm. | 10d | 2026-11-10 | 2026-11-21 | SDR-2-CON-PW-ZG-1010 |  | 132d |
|  | 4 | **Backfilling** |  | 2026-11-22 | 2026-12-05 |  |  |  |
| SDR-2-CON-PW-ZG-1510 |  | Backfilling of PW HDPE Pipe 400 mm. | 12d | 2026-11-22 | 2026-12-05 | SDR-2-CON-PW-ZG-1080 |  | 132d |
|  | 3 | **Valve Chambers & Valves & Fire Hydrant** |  | 2026-11-09 | 2027-03-01 |  |  |  |
|  | 3 | **Excavation** |  | 2026-11-09 | 2026-12-27 |  |  |  |
| SDR-2-CON-PW-ZA-3950 |  | Excavation for Valve Chambers Section 1 | 21d | 2026-11-09 | 2026-12-02 | SDR-2-CON-PW-ZG-1520 SS |  | 59d |
| SDR-2-CON-PW-ZA-3680 |  | Excavation for Valve Chambers Section 2 | 21d | 2026-12-03 | 2026-12-27 | SDR-2-CON-PW-ZA-3950 |  | 59d |
|  | 1 | **bedding Works** |  | 2026-12-28 | 2027-01-17 |  |  |  |
| SDR-2-CON-PW-ZA-3660 |  | Sand bedding for Valve Chambers | 18d | 2026-12-28 | 2027-01-17 | SDR-2-CON-PW-ZA-3680 |  | 59d |

| ID | WBS | Task | Duration | Start | Finish | Predecessors | Complete | Total float |
| --- | --- | --- | --- | --- | --- | --- | --- | --- |
|  | 4 | **Install Chambers & Valves & Fire Hydrant** |  | 2027-01-18 | 2027-02-04 |  |  |  |
| SDR-2-CON-PW-ZA-3690 |  | Install Chambers & Valves | 16d | 2027-01-18 | 2027-02-04 | SDR-2-CON-PW-ZA-3660 |  | 59d |
|  | 2 | **Testing** |  | 2027-02-06 | 2027-02-16 |  |  |  |
| SDR-2-CON-PW-ZA-3670 |  | Testing for Chambers & Valves | 10d | 2027-02-06 | 2027-02-16 | SDR-2-CON-PW-ZA-3690 |  | 59d |
|  | 6 | **Backfilling** |  | 2027-02-17 | 2027-03-01 |  |  |  |
| SDR-2-CON-PW-ZA-3700 |  | Backfilling for Chambers & Valves | 10d | 2027-02-17 | 2027-03-01 | SDR-2-CON-PW-ZA-3670 |  | 59d |
|  | 2 | **PORTABLE WATER IN ( PH2-G-MCE0 )** |  | 2026-07-07 | 2027-06-02 |  |  |  |
|  | 7 | **Pipes Work** |  | 2026-07-07 | 2026-12-02 |  |  |  |
|  | 1 | **Excavation** |  | 2026-07-07 | 2026-08-16 |  |  |  |
| SDR-2-CON-PW-ZA-3960 |  | Excavation for PW HDPE Pipe 225 mm. Section 1 | 21d | 2026-07-07 A | 2026-07-14 A | SDR-2-CON-TS-ZA-2400 SS | 100% |  |
| SDR-2-CON-PW-ZA-2910 |  | Excavation for PW HDPE Pipe 225 mm. Section 2 | 21d | 2026-07-19 A | 2026-08-16 A | SDR-2-CON-PW-ZA-3960 | 100% |  |
|  | 3 | **bedding Works** |  | 2026-08-26 | 2026-11-09 |  |  |  |
| SDR-2-CON-PW-ZA-2940 |  | Sand bedding for PW HDPE Pipe 225 mm. | 18d | 2026-08-26 A | 2026-11-09 | SDR-2-CON-PW-ZA-2910 | 45% | 134d |
|  | 2 | **Pipes Laying** |  | 2026-08-13 | 2026-11-09 |  |  |  |
| SDR-2-CON-PW-ZA-2920 |  | Install PW 225 mm HDPE Pipe | 18d | 2026-08-13 A | 2026-11-09 | SDR-2-CON-PW-ZA-2940 FF | 98% | 134d |
|  | 5 | **Testing** |  | 2026-11-10 | 2026-11-17 |  |  |  |
| SDR-2-CON-PW-ZA-2930 |  | Testing of PW HDPE Pipe 225 mm. | 7d | 2026-11-10 | 2026-11-17 | SDR-2-CON-PW-ZA-2920 |  | 134d |
|  | 4 | **Backfilling** |  | 2026-11-18 | 2026-12-02 |  |  |  |
| SDR-2-CON-PW-ZA-2950 |  | Backfilling of PW HDPE Pipe 225 mm. | 13d | 2026-11-18 | 2026-12-02 | SDR-2-CON-PW-ZA-2930 |  | 134d |
|  | 3 | **Valve Chambers & Valves & Fire Hydrant** |  | 2027-01-27 | 2027-06-02 |  |  |  |
|  | 3 | **Excavation** |  | 2027-01-27 | 2027-03-22 |  |  |  |
| SDR-2-CON-PW-ZA-3970 |  | Excavation for Valve Chambers Section 1 | 21d | 2027-01-27 | 2027-02-20 | SDR-2-CON-PW-ZA-3960 SS, SDR-2-CON-TE-ZA-3370 |  | 0d |
| SDR-2-CON-PW-ZA-2980 |  | Excavation for Valve Chambers Section 2 | 21d | 2027-02-21 | 2027-03-22 | SDR-2-CON-PW-ZA-3970 |  | 0d |
|  | 1 | **bedding Works** |  | 2027-03-23 | 2027-04-12 |  |  |  |
| SDR-2-CON-PW-ZA-2960 |  | Sand bedding for Valve Chambers | 18d | 2027-03-23 | 2027-04-12 | SDR-2-CON-PW-ZA-2980 |  | 0d |
|  | 4 | **Install Chambers & Valves & Fire Hydrant** |  | 2027-04-13 | 2027-05-02 |  |  |  |
| SDR-2-CON-PW-ZA-2990 |  | Install Chambers & Valves | 17d | 2027-04-13 | 2027-05-02 | SDR-2-CON-PW-ZA-2960 |  | 0d |
|  | 2 | **Testing** |  | 2027-05-03 | 2027-05-13 |  |  |  |
| SDR-2-CON-PW-ZA-2970 |  | Testing for Chambers & Valves | 10d | 2027-05-03 | 2027-05-13 | SDR-2-CON-PW-ZA-2990 |  | 0d |
|  | 6 | **Backfilling** |  | 2027-05-15 | 2027-06-02 |  |  |  |
| SDR-2-CON-PW-ZA-3000 |  | Backfilling for Chambers & Valves | 12d | 2027-05-15 | 2027-06-02 | SDR-2-CON-PW-ZA-2970 |  | 15d |
|  | 3 | **PORTABLE WATER IN ( PH2-G-MCF0 )** |  | 2026-07-14 | 2027-05-05 |  |  |  |
|  | 7 | **Pipes Work** |  | 2026-07-14 | 2027-02-09 |  |  |  |
|  | 1 | **Excavation** |  | 2026-07-14 | 2026-08-09 |  |  |  |
| SDR-2-CON-PW-ZA-3980 |  | Excavation for PW HDPE Pipe 225 mm. Section 1 | 21d | 2026-07-14 A | 2026-07-20 A | SDR-2-CON-TS-ZA-2900 SS | 100% |  |
| SDR-2-CON-PW-ZA-3010 |  | Excavation for PW HDPE Pipe 225 mm. Section 2 | 21d | 2026-08-01 A | 2026-08-09 A | SDR-2-CON-PW-ZA-3980 | 100% |  |
|  | 3 | **bedding Works** |  | 2026-08-10 | 2027-01-11 |  |  |  |
| SDR-2-CON-PW-ZA-3040 |  | Sand bedding for PW HDPE Pipe 225 mm. | 18d | 2026-08-10 A | 2027-01-11 | SDR-2-CON-PW-ZA-3010 | 90% | 75d |
|  | 2 | **Pipes Laying** |  | 2026-08-13 | 2026-08-18 |  |  |  |
| SDR-2-CON-PW-ZA-3020 |  | Install PW 225 mm HDPE Pipe | 19d | 2026-08-13 A | 2026-08-18 A | SDR-2-CON-PW-ZA-3040 SS | 100% |  |
|  | 5 | **Testing** |  | 2027-01-11 | 2027-01-19 |  |  |  |
| SDR-2-CON-PW-ZA-3030 |  | Testing of PW HDPE Pipe 225 mm. | 8d | 2027-01-11 | 2027-01-19 | SDR-2-CON-PW-ZA-3020 |  | 75d |
|  | 4 | **Backfilling** |  | 2027-01-20 | 2027-02-09 |  |  |  |
| SDR-2-CON-PW-ZA-3050 |  | Backfilling of PW HDPE Pipe 225 mm. | 18d | 2027-01-20 | 2027-02-09 | SDR-2-CON-PW-ZA-3030 |  | 75d |
|  | 3 | **Valve Chambers & Valves & Fire Hydrant** |  | 2027-01-11 | 2027-05-05 |  |  |  |
|  | 3 | **Excavation** |  | 2027-01-11 | 2027-02-15 |  |  |  |
| SDR-2-CON-PW-ZA-3990 |  | Excavation for Valve Chambers Section 1 | 21d | 2027-01-11 | 2027-02-03 | SDR-2-CON-PW-ZA-3980 SS |  | 7d |
| SDR-2-CON-PW-ZA-3080 |  | Excavation for Valve Chambers Section 2 | 21d | 2027-01-23 | 2027-02-15 | SDR-2-CON-PW-ZA-3990 SS+10d |  | 7d |
|  | 1 | **bedding Works** |  | 2027-02-16 | 2027-03-16 |  |  |  |
| SDR-2-CON-PW-ZA-3060 |  | Sand bedding for Valve Chambers | 20d | 2027-02-16 | 2027-03-16 | SDR-2-CON-PW-ZA-3080 |  | 7d |
|  | 4 | **Install Chambers & Valves & Fire Hydrant** |  | 2027-03-17 | 2027-04-07 |  |  |  |
| SDR-2-CON-PW-ZA-3090 |  | Install Chambers & Valves | 19d | 2027-03-17 | 2027-04-07 | SDR-2-CON-PW-ZA-3060 |  | 7d |
|  | 2 | **Testing** |  | 2027-04-08 | 2027-04-17 |  |  |  |
| SDR-2-CON-PW-ZA-3070 |  | Testing for Chambers & Valves | 8d | 2027-04-08 | 2027-04-17 | SDR-2-CON-PW-ZA-3090 |  | 7d |
|  | 6 | **Backfilling** |  | 2027-04-18 | 2027-05-05 |  |  |  |
| SDR-2-CON-PW-ZA-3100 |  | Backfilling for Chambers & Valves | 16d | 2027-04-18 | 2027-05-05 | SDR-2-CON-PW-ZA-3070 |  | 7d |
|  | 4 | **PORTABLE WATER IN ( PH2-G-MCG0 )** |  | 2026-06-08 | 2027-03-04 |  |  |  |
|  | 7 | **Pipes Work** |  | 2026-06-08 | 2026-12-07 |  |  |  |
|  | 1 | **Excavation** |  | 2026-06-08 | 2026-06-29 |  |  |  |
| SDR-2-CON-PW-ZA-4000 |  | Excavation for PW HDPE Pipe 225 mm. Section 1 | 21d | 2026-06-08 A | 2026-06-18 A | SDR-2-CON-TS-ZA-3000 SS | 100% |  |
| SDR-2-CON-PW-ZA-3110 |  | Excavation for PW HDPE Pipe 225 mm. Section 2 | 21d | 2026-06-15 A | 2026-06-29 A | SDR-2-CON-PW-ZA-4000 | 100% |  |
|  | 3 | **bedding Works** |  | 2026-08-26 | 2026-11-09 |  |  |  |
| SDR-2-CON-PW-ZA-3140 |  | Sand bedding for PW HDPE Pipe 225 mm. | 18d | 2026-08-26 A | 2026-11-09 | SDR-2-CON-PW-ZA-3110 | 50% | 130d |
|  | 2 | **Pipes Laying** |  | 2026-08-13 | 2026-08-20 |  |  |  |
| SDR-2-CON-PW-ZA-3120 |  | Install PW 225 mm HDPE Pipe | 14d | 2026-08-13 A | 2026-08-20 A | SDR-2-CON-PW-ZA-3140 SS | 100% |  |
|  | 5 | **Testing** |  | 2026-11-09 | 2026-11-17 |  |  |  |
| SDR-2-CON-PW-ZA-3130 |  | Testing of PW HDPE Pipe 225 mm. | 8d | 2026-11-09 | 2026-11-17 | SDR-2-CON-PW-ZA-3120 |  | 130d |
|  | 4 | **Backfilling** |  | 2026-11-18 | 2026-12-07 |  |  |  |
| SDR-2-CON-PW-ZA-3150 |  | Backfilling of PW HDPE Pipe 225 mm. | 17d | 2026-11-18 | 2026-12-07 | SDR-2-CON-PW-ZA-3130 |  | 130d |
|  | 3 | **Valve Chambers & Valves & Fire Hydrant** |  | 2026-11-09 | 2027-03-04 |  |  |  |

| ID | WBS | Task | Duration | Start | Finish | Predecessors | Complete | Total float |
| --- | --- | --- | --- | --- | --- | --- | --- | --- |
|  | 3 | **Excavation** |  | 2026-11-09 | 2026-12-27 |  |  |  |
| SDR-2-CON-PW-ZA-4010 |  | Excavation for Valve Chambers Section 1 | 21d | 2026-11-09 | 2026-12-02 | SDR-2-CON-PW-ZA-4000 SS |  | 56d |
| SDR-2-CON-PW-ZA-3180 |  | Excavation for Valve Chambers Section 2 | 21d | 2026-12-03 | 2026-12-27 | SDR-2-CON-PW-ZA-4010 |  | 56d |
|  | 1 | **bedding Works** |  | 2026-12-28 | 2027-01-17 |  |  |  |
| SDR-2-CON-PW-ZA-3160 |  | Sand bedding for Valve Chambers | 18d | 2026-12-28 | 2027-01-17 | SDR-2-CON-PW-ZA-3180 |  | 56d |
|  | 4 | **Install Chambers & Valves & Fire Hydrant** |  | 2027-01-18 | 2027-02-02 |  |  |  |
| SDR-2-CON-PW-ZA-3190 |  | Install Chambers & Valves | 14d | 2027-01-18 | 2027-02-02 | SDR-2-CON-PW-ZA-3160 |  | 56d |
|  | 2 | **Testing** |  | 2027-02-03 | 2027-02-11 |  |  |  |
| SDR-2-CON-PW-ZA-3170 |  | Testing for Chambers & Valves | 8d | 2027-02-03 | 2027-02-11 | SDR-2-CON-PW-ZA-3190 |  | 56d |
|  | 6 | **Backfilling** |  | 2027-02-13 | 2027-03-04 |  |  |  |
| SDR-2-CON-PW-ZA-3200 |  | Backfilling for Chambers & Valves | 17d | 2027-02-13 | 2027-03-04 | SDR-2-CON-PW-ZA-3170 |  | 56d |
|  | 5 | **PORTABLE WATER IN ( PH2-G-MCZ0 )** |  | 2026-07-13 | 2027-03-06 |  |  |  |
|  | 7 | **Pipes Work** |  | 2026-07-13 | 2026-12-06 |  |  |  |
|  | 1 | **Excavation** |  | 2026-07-13 | 2026-08-19 |  |  |  |
| SDR-2-CON-PW-ZA-4020 |  | Excavation for PW HDPE Pipes 315 mm Section 1 | 21d | 2026-07-13 A | 2026-07-20 A | SDR-2-CON-TS-ZA-2500 SS | 100% |  |
| SDR-2-CON-PW-ZA-2560 |  | Excavation for PW HDPE Pipes 315 mm Section 2 | 21d | 2026-07-21 A | 2026-08-19 A | SDR-2-CON-PW-ZA-4020 | 100% |  |
|  | 8 | **bedding Works** |  | 2026-08-26 | 2026-11-09 |  |  |  |
| SDR-2-CON-PW-ZA-2640 |  | Sand bedding for PW HDPE Pipes 315 mm | 19d | 2026-08-26 A | 2026-11-09 | SDR-2-CON-PW-ZA-2560 | 50% | 131d |
|  | 2 | **Pipes Laying** |  | 2026-08-13 | 2026-11-09 |  |  |  |
| SDR-2-CON-PW-ZA-2570 |  | Install PW 315 mm HDPE Pipe | 16d | 2026-08-13 A | 2026-11-09 | SDR-2-CON-PW-ZA-2640 FF | 95% | 131d |
|  | 5 | **Testing** |  | 2026-11-10 | 2026-11-16 |  |  |  |
| SDR-2-CON-PW-ZA-2630 |  | Testing of PW HDPE Pipe 315 mm. | 6d | 2026-11-10 | 2026-11-16 | SDR-2-CON-PW-ZA-2570 |  | 131d |
|  | 9 | **Backfilling** |  | 2026-11-17 | 2026-12-06 |  |  |  |
| SDR-2-CON-PW-ZA-2650 |  | Backfilling of PW HDPE Pipe 315 mm. | 17d | 2026-11-17 | 2026-12-06 | SDR-2-CON-PW-ZA-2630 |  | 131d |
|  | 3 | **Valve Chambers & Valves & Fire Hydrant** |  | 2026-11-09 | 2027-03-06 |  |  |  |
|  | 3 | **Excavation** |  | 2026-11-09 | 2026-12-27 |  |  |  |
| SDR-2-CON-PW-ZA-4030 |  | Excavation for Valve Chambers Section 1 | 21d | 2026-11-09 | 2026-12-02 | SDR-2-CON-PW-ZA-4020 SS |  | 55d |
| SDR-2-CON-PW-ZA-2600 |  | Excavation for Valve Chambers Section 2 | 21d | 2026-12-03 | 2026-12-27 | SDR-2-CON-PW-ZA-4030 |  | 55d |
|  | 1 | **bedding Works** |  | 2026-12-28 | 2027-01-18 |  |  |  |
| SDR-2-CON-PW-ZA-2580 |  | Sand bedding for Valve Chambers | 19d | 2026-12-28 | 2027-01-18 | SDR-2-CON-PW-ZA-2600 |  | 55d |
|  | 4 | **Install Chambers & Valves & Fire Hydrant** |  | 2027-01-19 | 2027-02-06 |  |  |  |
| SDR-2-CON-PW-ZA-2610 |  | Install Chambers & Valves | 16d | 2027-01-19 | 2027-02-06 | SDR-2-CON-PW-ZA-2580 |  | 55d |
|  | 2 | **Testing** |  | 2027-02-07 | 2027-02-13 |  |  |  |
| SDR-2-CON-PW-ZA-2590 |  | Testing for Chambers & Valves | 6d | 2027-02-07 | 2027-02-13 | SDR-2-CON-PW-ZA-2610 |  | 55d |
|  | 6 | **Backfilling** |  | 2027-02-14 | 2027-03-06 |  |  |  |
| SDR-2-CON-PW-ZA-2620 |  | Backfilling for Chambers & Valves | 17d | 2027-02-14 | 2027-03-06 | SDR-2-CON-PW-ZA-2590 |  | 55d |
|  | EW | **Electrical Works** |  | 2026-07-01 | 2027-04-06 |  |  |  |
|  | ZA | **ZONE A** |  | 2026-07-01 | 2027-04-06 |  |  |  |
|  | 1 | **Street Lighting Network** |  | 2026-07-01 | 2027-04-06 |  |  |  |
|  | 16 | **Street Lighting Network IN ( PH2-COL-MC10 )** |  | 2026-07-20 | 2027-03-30 |  |  |  |
|  | 10 | **Excavation** |  | 2026-07-20 | 2026-11-09 |  |  |  |
| SDR-2-CON-SL-ZA-3590 |  | Excavation for LV Cable Drawpits | 21d | 2026-07-20 A | 2026-09-28 A | SDR-2-PRO-DEL-E-1060, SDR-2-PRO-DEL-M-1010, SDR-2-PRO-DEL-M-1000, SDR-2-PRO-DES-E-1010, SDR-2-PRO-ST-E-1080 | 100% |  |
| SDR-2-CON-SL-ZA-1000 |  | Excavation for LV Cable Trenches | 21d | 2026-08-12 A | 2026-11-09 | SDR-2-PRO-DEL-E-1060, SDR-2-CON-SL-ZA-3590 FF | 20% | 0d |
|  | 11 | **Install Footings** |  | 2026-08-31 | 2027-01-17 |  |  |  |
| SDR-2-CON-SL-ZA-1010 |  | Install Footings | 21d | 2026-08-31 A | 2027-01-17 | SDR-2-CON-SL-ZA-1000 FF, SDR-2-PRO-DEL-E-1030 FF, SDR-2-PRO-DEL-E-1020 FF, SDR-2-PRO-DEL-E-1070 FF, SDR-2-PRO-DEL-E-1000, SDR-2-PRO-DEL-E-1010, SDR-2-PRO-DEL-E-1210 | 35% | 5d |
|  | 12 | **Backfilling** |  | 2027-01-18 | 2027-02-10 |  |  |  |
| SDR-2-CON-SL-ZA-1110 |  | Backfilling over LV Cables of Street lighting | 21d | 2027-01-18 | 2027-02-10 | SDR-2-CON-SL-ZA-1010 |  | 5d |
|  | 13 | **Install pole** |  | 2027-03-02 | 2027-03-30 |  |  |  |
| SDR-2-CON-SL-ZA-1100 |  | Install Pole | 21d | 2027-03-02 | 2027-03-30 | SDR-2-PRO-MAL-E-1040, SDR-2-CON-SL-ZA-1010, SDR-2-CON-SL-ZA-1110 FS+15d, SDR-2-PRO-DEL-E-1100 |  | 5d |
|  | 17 | **Street Lighting Network IN ( PH2-COL-MC20 )** |  | 2026-07-01 | 2027-02-20 |  |  |  |
|  | 10 | **Excavation** |  | 2026-07-01 | 2026-11-09 |  |  |  |
| SDR-2-CON-SL-ZA-3600 |  | Excavation for LV Cable Drawpits | 21d | 2026-07-01 A | 2026-09-28 A | SDR-2-PRO-DES-E-1010, SDR-2-CON-SL-ZA-3590 FF | 100% |  |
| SDR-2-CON-SL-ZA-2870 |  | Excavation for LV Cable Trenches | 21d | 2026-07-13 A | 2026-11-09 | SDR-2-CON-SL-ZA-3600 FF | 50% | 64d |
|  | 11 | **Install Footings** |  | 2026-09-03 | 2026-12-15 |  |  |  |
| SDR-2-CON-SL-ZA-2880 |  | Install Footings | 21d | 2026-09-03 A | 2026-12-15 | SDR-2-CON-SL-ZA-2870 FF, SDR-2-PRO-DES-E-1020 FF | 40% | 33d |
|  | 12 | **Backfilling** |  | 2026-12-16 | 2027-01-09 |  |  |  |
| SDR-2-CON-SL-ZA-2900 |  | Backfilling over LV Cables of Street lighting | 21d | 2026-12-16 | 2027-01-09 | SDR-2-CON-SL-ZA-2880 |  | 33d |
|  | 13 | **Install pole** |  | 2027-01-27 | 2027-02-20 |  |  |  |
| SDR-2-CON-SL-ZA-2890 |  | Install Pole | 21d | 2027-01-27 | 2027-02-20 | SDR-2-CON-SL-ZA-2880, SDR-2-CON-SL-ZA-2900 FS+15d, SDR-2-PRO-DEL-E-1080 |  | 33d |
|  | 18 | **Street Lighting Network IN ( PH2-A-MCA0 )** |  | 2026-08-01 | 2027-01-23 |  |  |  |
|  | 10 | **Excavation** |  | 2026-08-01 | 2026-11-09 |  |  |  |
| SDR-2-CON-SL-ZA-3610 |  | Excavation for LV Cable Drawpits | 21d | 2026-08-01 A | 2026-11-09 | SDR-2-CON-SL-ZA-3600 FF | 70% | 9d |
| SDR-2-CON-SL-ZA-1300 |  | Excavation for LV Cable Trenches | 21d | 2026-08-12 A | 2026-11-09 | SDR-2-CON-SL-ZA-3610 FF | 50% | 42d |
|  | 11 | **Install Footings** |  | 2026-09-03 | 2026-12-12 |  |  |  |
| SDR-2-CON-SL-ZA-1310 |  | Install Footings | 21d | 2026-09-03 A | 2026-12-12 | SDR-2-CON-SL-ZA-1300 FF, SDR-2-CON-ST-ZA-6290 FF | 40% | 14d |
|  | 12 | **Backfilling** |  | 2026-12-06 | 2026-12-29 |  |  |  |
| SDR-2-CON-SL-ZA-1410 |  | Backfilling over LV Cables of Street lighting | 21d | 2026-12-06 | 2026-12-29 | SDR-2-CON-SL-ZA-1310 SS |  | 14d |
|  | 13 | **Install pole** |  | 2026-12-30 | 2027-01-23 |  |  |  |
| SDR-2-CON-SL-ZA-1400 |  | Install Pole | 21d | 2026-12-30 | 2027-01-23 | SDR-2-CON-SL-ZA-1410 |  | 14d |
|  | 19 | **Street Lighting Network IN ( PH2-A-MCB0 )** |  | 2026-08-04 | 2027-01-11 |  |  |  |

| ID | WBS | Task | Duration | Start | Finish | Predecessors | Complete | Total float |
| --- | --- | --- | --- | --- | --- | --- | --- | --- |
|  | 10 | **Excavation** |  | 2026-08-04 | 2026-11-09 |  |  |  |
| SDR-2-CON-SL-ZA-3620 |  | Excavation for LV Cable Drawpits | 21d | 2026-08-04 A | 2026-11-09 | SDR-2-CON-SL-ZA-3610 FF | 80% | 9d |
| SDR-2-CON-SL-ZA-2950 |  | Excavation for LV Cable Trenches | 21d | 2026-08-12 A | 2026-11-09 | SDR-2-CON-SL-ZA-3620 FF | 50% | 9d |
|  | 11 | **Install Footings** |  | 2026-08-31 | 2026-11-11 |  |  |  |
| SDR-2-CON-SL-ZA-2960 |  | Install Footings | 21d | 2026-08-31 A | 2026-11-11 | SDR-2-CON-SL-ZA-2950 FF | 40% | 7d |
|  | 12 | **Backfilling** |  | 2026-11-12 | 2026-12-06 |  |  |  |
| SDR-2-CON-SL-ZA-2980 |  | Backfilling over LV Cables of Street lighting | 21d | 2026-11-12 | 2026-12-06 | SDR-2-CON-SL-ZA-2960 |  | 7d |
|  | 13 | **Install pole** |  | 2026-12-19 | 2027-01-11 |  |  |  |
| SDR-2-CON-SL-ZA-2970 |  | Install Pole | 21d | 2026-12-19 | 2027-01-11 | SDR-2-CON-SL-ZA-2980 FS+10d |  | 7d |
|  | 20 | **Street Lighting Network IN ( PH2-A-MCC0 )** |  | 2026-07-20 | 2027-01-20 |  |  |  |
|  | 10 | **Excavation** |  | 2026-07-20 | 2026-11-09 |  |  |  |
| SDR-2-CON-SL-ZA-3630 |  | Excavation for LV Cable Drawpits | 21d | 2026-07-20 A | 2026-11-09 | SDR-2-CON-SL-ZA-3620 FF | 80% | 25d |
| SDR-2-CON-SL-ZA-2990 |  | Excavation for LV Cable Trenches | 21d | 2026-08-01 A | 2026-11-09 | SDR-2-CON-SL-ZA-3630 FF | 50% | 45d |
|  | 11 | **Install Footings** |  | 2026-09-03 | 2026-11-15 |  |  |  |
| SDR-2-CON-SL-ZA-3000 |  | Install Footings | 21d | 2026-09-03 A | 2026-11-15 | SDR-2-CON-SL-ZA-2990 FF | 40% | 40d |
|  | 12 | **Backfilling** |  | 2026-11-16 | 2026-12-09 |  |  |  |
| SDR-2-CON-SL-ZA-3020 |  | Backfilling over LV Cables of Street lighting | 21d | 2026-11-16 | 2026-12-09 | SDR-2-CON-SL-ZA-3000 |  | 40d |
|  | 13 | **Install pole** |  | 2026-12-28 | 2027-01-20 |  |  |  |
| SDR-2-CON-SL-ZA-3010 |  | Install Pole | 21d | 2026-12-28 | 2027-01-20 | SDR-2-CON-SL-ZA-3020 FS+15d |  | 40d |
|  | 21 | **Street Lighting Network IN ( PH2-A-MCD0 )** |  | 2026-07-20 | 2027-04-06 |  |  |  |
|  | 10 | **Excavation** |  | 2026-07-20 | 2026-11-09 |  |  |  |
| SDR-2-CON-SL-ZA-3640 |  | Excavation for LV Cable Drawpits | 21d | 2026-07-20 A | 2026-11-09 | SDR-2-PRO-DES-E-1000 FS+12d, SDR-2-CON-SL-ZA-3630 FF | 80% | 25d |
| SDR-2-CON-SL-ZA-3030 |  | Excavation for LV Cable Trenches | 21d | 2026-08-01 A | 2026-11-09 | SDR-2-CON-SL-ZA-3640 FF | 50% | 66d |
|  | 11 | **Install Footings** |  | 2026-09-03 | 2026-11-15 |  |  |  |
| SDR-2-CON-SL-ZA-3040 |  | Install Footings | 21d | 2026-09-03 A | 2026-11-15 | SDR-2-CON-SL-ZA-3030 FF | 45% | 61d |
|  | 12 | **Backfilling** |  | 2026-11-16 | 2026-12-09 |  |  |  |
| SDR-2-CON-SL-ZA-3060 |  | Backfilling over LV Cables of Street lighting | 21d | 2026-11-16 | 2026-12-09 | SDR-2-CON-SL-ZA-3040 |  | 61d |
|  | 13 | **Install pole** |  | 2027-03-14 | 2027-04-06 |  |  |  |
| SDR-2-CON-SL-ZA-3050 |  | Install Pole | 21d | 2027-03-14 | 2027-04-06 | SDR-2-CON-MV-ZA-1100, SDR-2-CON-SL-ZA-3550 SS+10d, SDR-2-CON-SL-ZA-3520, SDR-2-CON-SL-ZA-3060 FS+15d |  | 1d |
|  | 22 | **Street Lighting Network IN ( PH2-A-MCE0 )** |  | 2026-07-02 | 2027-01-18 |  |  |  |
|  | 10 | **Excavation** |  | 2026-07-02 | 2026-11-09 |  |  |  |
| SDR-2-CON-SL-ZA-3650 |  | Excavation for LV Cable Drawpits | 21d | 2026-07-02 A | 2026-11-09 | SDR-2-PRO-ST-E-1050, SDR-2-CON-SL-ZA-3640 FF, SDR-2-PRO-ST-E-1020 FF | 65% | 25d |
| SDR-2-CON-SL-ZA-3070 |  | Excavation for LV Cable Trenches | 21d | 2026-07-14 A | 2026-11-09 | SDR-2-CON-SL-ZA-3650 FF | 50% | 88d |
|  | 11 | **Install Footings** |  | 2026-09-03 | 2026-11-15 |  |  |  |
| SDR-2-CON-SL-ZA-3080 |  | Install Footings | 21d | 2026-09-03 A | 2026-11-15 | SDR-2-CON-SL-ZA-3070 FF | 30% | 83d |
|  | 12 | **Backfilling** |  | 2026-11-16 | 2026-12-09 |  |  |  |
| SDR-2-CON-SL-ZA-3100 |  | Backfilling over LV Cables of Street lighting | 21d | 2026-11-16 | 2026-12-09 | SDR-2-CON-SL-ZA-3080 |  | 83d |
|  | 13 | **Install pole** |  | 2026-12-28 | 2027-01-18 |  |  |  |
| SDR-2-CON-SL-ZA-3090 |  | Install Pole | 19d | 2026-12-28 | 2027-01-18 | SDR-2-CON-ST-ZA-4040, SDR-2-CON-RW-ZA-3390 FS+2d, SDR-2-CON-RW-ZA-3270 FS+2d, SDR-2-CON-SL-ZA-3100 FS+15d |  | 83d |
|  | 23 | **Street Lighting Network IN ( PH2-A-MCF0 )** |  | 2026-07-01 | 2027-01-23 |  |  |  |
|  | 10 | **Excavation** |  | 2026-07-01 | 2026-11-18 |  |  |  |
| SDR-2-CON-SL-ZA-3660 |  | Excavation for LV Cable Drawpits | 21d | 2026-07-01 A | 2026-11-18 | SDR-2-CON-SL-ZA-3650 FF, SDR-2-PRO-ST-E-1040 FF, SDR-2-PRO-ST-E-1030 FF | 65% | 17d |
| SDR-2-CON-SL-ZA-3110 |  | Excavation for LV Cable Trenches | 21d | 2026-07-14 A | 2026-11-18 | SDR-2-CON-SL-ZA-3660 FF | 50% | 17d |
|  | 11 | **Install Footings** |  | 2026-08-31 | 2026-11-18 |  |  |  |
| SDR-2-CON-SL-ZA-3120 |  | Install Footings | 20d | 2026-08-31 A | 2026-11-18 | SDR-2-CON-SL-ZA-3110 FF | 30% | 17d |
|  | 12 | **Backfilling** |  | 2026-11-19 | 2026-12-12 |  |  |  |
| SDR-2-CON-SL-ZA-3140 |  | Backfilling over LV Cables of Street lighting | 20d | 2026-11-19 | 2026-12-12 | SDR-2-CON-SL-ZA-3120 |  | 17d |
|  | 13 | **Install pole** |  | 2026-12-30 | 2027-01-23 |  |  |  |
| SDR-2-CON-SL-ZA-3130 |  | Install Pole | 21d | 2026-12-30 | 2027-01-23 | SDR-2-CON-SL-ZA-3140 FS+15d |  | 17d |
|  | 24 | **Street Lighting Network IN ( PH2-A-MCG0 )** |  | 2026-07-06 | 2027-01-11 |  |  |  |
|  | 10 | **Excavation** |  | 2026-07-06 | 2026-11-18 |  |  |  |
| SDR-2-CON-SL-ZA-3670 |  | Excavation for LV Cable Drawpits | 21d | 2026-07-06 A | 2026-11-18 | SDR-2-CON-SL-ZA-3660 FF | 65% | 18d |
| SDR-2-CON-SL-ZA-3150 |  | Excavation for LV Cable Trenches | 21d | 2026-07-16 A | 2026-11-18 | SDR-2-CON-SL-ZA-3670 FF | 50% | 89d |
|  | 11 | **Install Footings** |  | 2026-09-03 | 2026-11-18 |  |  |  |
| SDR-2-CON-SL-ZA-3160 |  | Install Footings | 20d | 2026-09-03 A | 2026-11-18 | SDR-2-CON-SL-ZA-3150 FF | 30% | 89d |
|  | 12 | **Backfilling** |  | 2026-11-19 | 2026-12-10 |  |  |  |
| SDR-2-CON-SL-ZA-3180 |  | Backfilling over LV Cables of Street lighting | 19d | 2026-11-19 | 2026-12-10 | SDR-2-CON-SL-ZA-3160 |  | 89d |
|  | 13 | **Install pole** |  | 2026-12-29 | 2027-01-11 |  |  |  |
| SDR-2-CON-SL-ZA-3170 |  | Install Pole | 12d | 2026-12-29 | 2027-01-11 | SDR-2-CON-SL-ZA-3180 FS+15d |  | 89d |
|  | 25 | **Street Lighting Network IN ( PH2-A-MCH0 )** |  | 2026-07-20 | 2027-01-17 |  |  |  |
|  | 10 | **Excavation** |  | 2026-07-20 | 2026-11-18 |  |  |  |
| SDR-2-CON-SL-ZA-3680 |  | Excavation for LV Cable Drawpits | 21d | 2026-07-20 A | 2026-11-18 | SDR-2-CON-SL-ZA-3670 FF | 65% | 18d |
| SDR-2-CON-SL-ZA-3190 |  | Excavation for LV Cable Trenches | 21d | 2026-08-01 A | 2026-11-18 | SDR-2-CON-SL-ZA-3680 FF | 50% | 18d |
|  | 11 | **Install Footings** |  | 2026-09-03 | 2026-11-18 |  |  |  |
| SDR-2-CON-SL-ZA-3200 |  | Install Footings | 20d | 2026-09-03 A | 2026-11-18 | SDR-2-CON-SL-ZA-3190 FF | 30% | 18d |
|  | 12 | **Backfilling** |  | 2026-11-19 | 2026-12-10 |  |  |  |
| SDR-2-CON-SL-ZA-3220 |  | Backfilling over LV Cables of Street lighting | 19d | 2026-11-19 | 2026-12-10 | SDR-2-CON-SL-ZA-3200 |  | 18d |
|  | 13 | **Install pole** |  | 2026-12-29 | 2027-01-17 |  |  |  |
| SDR-2-CON-SL-ZA-3210 |  | Install Pole | 17d | 2026-12-29 | 2027-01-17 | SDR-2-CON-SL-ZA-3220 FS+15d |  | 18d |
|  | 27 | **Street Lighting Network IN ( PH2-ART-MC10 )** |  | 2026-07-20 | 2027-01-21 |  |  |  |

| ID | WBS | Task | Duration | Start | Finish | Predecessors | Complete | Total float |
| --- | --- | --- | --- | --- | --- | --- | --- | --- |
|  | 10 | **Excavation** |  | 2026-07-20 | 2026-11-18 |  |  |  |
| SDR-2-CON-SL-ZA-3690 |  | Excavation for LV Cable Drawpits | 21d | 2026-07-20 A | 2026-11-18 | SDR-2-CON-SL-ZA-3680 FF | 70% | 28d |
| SDR-2-CON-SL-ZA-2910 |  | Excavation for LV Cable Trenches | 21d | 2026-08-01 A | 2026-11-18 | SDR-2-CON-SL-ZA-3690 FF | 50% | 28d |
|  | 11 | **Install Footings** |  | 2026-09-03 | 2026-11-18 |  |  |  |
| SDR-2-CON-SL-ZA-2920 |  | Install Footings | 21d | 2026-09-03 A | 2026-11-18 | SDR-2-CON-SL-ZA-2910 FF | 30% | 28d |
|  | 12 | **Backfilling** |  | 2026-11-19 | 2026-12-13 |  |  |  |
| SDR-2-CON-SL-ZA-2940 |  | Backfilling over LV Cables of Street lighting | 21d | 2026-11-19 | 2026-12-13 | SDR-2-CON-SL-ZA-2920 |  | 28d |
|  | 13 | **Install pole** |  | 2026-12-29 | 2027-01-21 |  |  |  |
| SDR-2-CON-SL-ZA-2930 |  | Install Pole | 21d | 2026-12-29 | 2027-01-21 | SDR-2-CON-RW-ZA-2320, SDR-2-CON-SL-ZA-2920, SDR-2-CON-SL-ZA-2940 FS+13d |  | 84d |
|  | 10 | **Lighting Pole Panels** |  | 2026-11-19 | 2027-03-15 |  |  |  |
|  | 1 | **Excavation** |  | 2026-11-19 | 2026-12-13 |  |  |  |
| SDR-2-CON-SL-ZA-2650 |  | Street Lighting Panels Excavation | 21d | 2026-11-19 | 2026-12-13 | SDR-2-CON-SL-ZA-3690 SS+5d, SDR-2-PRO-ST-E-1110, SDR-2-PRO-MAL-E-1080 |  | 34d |
|  | 2 | **Install Footings** |  | 2026-12-14 | 2027-01-05 |  |  |  |
| SDR-2-CON-SL-ZA-2760 |  | Installation Footings Street Lighting Panels | 20d | 2026-12-14 | 2027-01-05 | SDR-2-CON-SL-ZA-2650 |  | 44d |
|  | 3 | **Backfilling** |  | 2027-01-06 | 2027-01-26 |  |  |  |
| SDR-2-CON-SL-ZA-2770 |  | Street Lighting Panels Backfilling | 18d | 2027-01-06 | 2027-01-26 | SDR-2-CON-SL-ZA-2760 |  | 44d |
|  | 4 | **Install pole** |  | 2027-02-14 | 2027-03-15 |  |  |  |
| SDR-2-CON-SL-ZA-2780 |  | Street Lighting Panels Installation | 21d | 2027-02-14 | 2027-03-15 | SDR-2-CON-SL-ZA-2770 FS+15d |  | 44d |
|  | 11 | **Ring Main Unit** |  | 2026-11-19 | 2027-02-08 |  |  |  |
|  | 1 | **Leveling** |  | 2026-11-19 | 2026-12-12 |  |  |  |
| SDR-2-CON-SL-ZA-2660 |  | Ring Main Unit leveling | 20d | 2026-11-19 | 2026-12-12 | SDR-2-CON-SL-ZA-2650 SS |  | 34d |
|  | 2 | **Lean Concrete** |  | 2026-12-13 | 2027-01-04 |  |  |  |
| SDR-2-CON-SL-ZA-2790 |  | Ring Main Unit Lean Concrete | 20d | 2026-12-13 | 2027-01-04 | SDR-2-CON-SL-ZA-2660 |  | 69d |
|  | 3 | **Installation** |  | 2027-01-17 | 2027-02-08 |  |  |  |
| SDR-2-CON-SL-ZA-2800 |  | Ring Main Unit installation for Street Lighting | 20d | 2027-01-17 | 2027-02-08 | SDR-2-PRO-ST-M-1060, SDR-2-PRO-ST-M-1070, SDR-2-CON-SL-ZA-2790 FS+10d |  | 69d |
|  | 12 | **Feeder Pillars** |  | 2026-11-21 | 2027-02-15 |  |  |  |
|  | 1 | **Leveling** |  | 2026-11-21 | 2026-12-13 |  |  |  |
| SDR-2-CON-SL-ZA-2670 |  | Feeder Pillars Leveling | 20d | 2026-11-21 | 2026-12-13 | SDR-2-CON-SL-ZA-2660 SS, SDR-2-PRO-ST-E-1130, SDR-2-PRO-MAL-E-1100 |  | 33d |
|  | 2 | **Lean Concrete** |  | 2026-12-14 | 2027-01-05 |  |  |  |
| SDR-2-CON-SL-ZA-2810 |  | Feeder Pillars Lean Concrete | 20d | 2026-12-14 | 2027-01-05 | SDR-2-CON-SL-ZA-2670 |  | 63d |
|  | 3 | **Installation** |  | 2027-01-24 | 2027-02-15 |  |  |  |
| SDR-2-CON-SL-ZA-2820 |  | Feeder Pillars Installation | 20d | 2027-01-24 | 2027-02-15 | SDR-2-CON-MV-ZA-1100, SDR-2-CON-SL-ZA-2810 FS+15d |  | 63d |
|  | 13 | **KWH Frame** |  | 2027-01-09 | 2027-03-24 |  |  |  |
|  | 1 | **Leveling** |  | 2027-01-09 | 2027-01-31 |  |  |  |
| SDR-2-CON-SL-ZA-2680 |  | KWH meter mounting frame Leveling | 20d | 2027-01-09 | 2027-01-31 | SDR-2-CON-SL-ZA-2670 SS+1d, SDR-2-PRO-ST-E-1120, SDR-2-PRO-MAL-E-1090 |  | 1d |
|  | 2 | **Lean Concrete** |  | 2027-02-01 | 2027-02-24 |  |  |  |
| SDR-2-CON-SL-ZA-2830 |  | KWH meter mounting frame Lean Concrete | 20d | 2027-02-01 | 2027-02-24 | SDR-2-CON-SL-ZA-2680 |  | 36d |
|  | 3 | **Installation** |  | 2027-02-25 | 2027-03-24 |  |  |  |
| SDR-2-CON-SL-ZA-2840 |  | KWH meter mounting frame installation | 20d | 2027-02-25 | 2027-03-24 | SDR-2-CON-SL-ZA-2830 |  | 36d |
|  | 14 | **Street Lighting Sub-station** |  | 2027-01-10 | 2027-03-27 |  |  |  |
|  | 1 | **Leveling** |  | 2027-01-10 | 2027-02-01 |  |  |  |
| SDR-2-CON-SL-ZA-2690 |  | Unit Substation Leveling | 20d | 2027-01-10 | 2027-02-01 | SDR-2-CON-SL-ZA-2680 SS+1d, SDR-2-PRO-ST-E-1100, SDR-2-PRO-MAL-E-1070 |  | 26d |
|  | 2 | **Lean Concrete** |  | 2027-02-02 | 2027-02-25 |  |  |  |
| SDR-2-CON-SL-ZA-2850 |  | Unit Substation Lean Concrete | 20d | 2027-02-02 | 2027-02-25 | SDR-2-CON-SL-ZA-2690 |  | 34d |
|  | 3 | **Installation** |  | 2027-02-27 | 2027-03-27 |  |  |  |
| SDR-2-CON-SL-ZA-2860 |  | Unit Substation Install for Street Lighting | 21d | 2027-02-27 | 2027-03-27 | SDR-2-CON-SL-ZA-2850 |  | 34d |
|  | 2 | **MV Network** |  | 2026-07-14 | 2027-01-13 |  |  |  |
|  | 1 | **LOOP 3** |  | 2026-07-14 | 2026-12-03 |  |  |  |
|  | 6 | **Excavation** |  | 2026-07-14 | 2026-11-09 |  |  |  |
| SDR-2-CON-MV-ZA-1000 |  | Excavation Works | 21d | 2026-07-14 A | 2026-11-09 | SDR-2-CON-SL-ZA-1000 FF | 70% | 0d |
|  | 7 | **Pipe laying** |  | 2026-07-25 | 2026-11-09 |  |  |  |
| SDR-2-CON-MV-ZA-1070 |  | Pipe Laying | 20d | 2026-07-25 A | 2026-11-09 | SDR-2-CON-MV-ZA-1000 FF | 70% | 15d |
|  | 8 | **Backfilling** |  | 2026-08-03 | 2026-11-09 |  |  |  |
| SDR-2-CON-MV-ZA-1150 |  | Backfilling Works | 21d | 2026-08-03 A | 2026-11-09 | SDR-2-CON-MV-ZA-1070 FF, SDR-2-PRO-MAL-E-1000 | 70% | 15d |
|  | 9 | **Pulling Cable** |  | 2026-11-10 | 2026-12-03 |  |  |  |
| SDR-2-CON-MV-ZA-1100 |  | Pulling Cable | 21d | 2026-11-10 | 2026-12-03 | SDR-2-PRO-ST-E-1000, SDR-2-CON-MV-ZA-1070, SDR-2-CON-MV-ZA-1150, SDR-2-PRO-ST-E-1010 |  | 15d |
|  | 2 | **LOOP 4** |  | 2026-07-25 | 2027-01-13 |  |  |  |
|  | 6 | **Excavation** |  | 2026-07-25 | 2026-11-09 |  |  |  |
| SDR-2-CON-MV-ZA-1160 |  | Excavation Works | 21d | 2026-07-25 A | 2026-11-09 | SDR-2-CON-MV-ZA-1000 FF | 70% | 1d |
|  | 7 | **Pipe laying** |  | 2026-08-13 | 2026-11-09 |  |  |  |
| SDR-2-CON-MV-ZA-1170 |  | Pipe Laying | 21d | 2026-08-13 A | 2026-11-09 | SDR-2-CON-MV-ZA-1160 FF | 62% | 1d |
|  | 8 | **Backfilling** |  | 2026-11-10 | 2026-12-03 |  |  |  |
| SDR-2-CON-MV-ZA-1190 |  | Backfilling Works | 21d | 2026-11-10 | 2026-12-03 | SDR-2-CON-MV-ZA-1170 |  | 1d |
|  | 9 | **Pulling Cable** |  | 2026-12-21 | 2027-01-13 |  |  |  |
| SDR-2-CON-MV-ZA-1180 |  | Pulling Cable | 21d | 2026-12-21 | 2027-01-13 | SDR-2-CON-MV-ZA-1100, SDR-2-CON-MV-ZA-1170, SDR-2-CON-MV-ZA-1190 FS+14d |  | 1d |
|  | 3 | **LOOP 5** |  | 2026-08-13 | 2027-01-06 |  |  |  |
|  | 6 | **Excavation** |  | 2026-08-13 | 2026-11-09 |  |  |  |
| SDR-2-CON-MV-ZA-1200 |  | Excavation Works | 21d | 2026-08-13 A | 2026-11-09 | SDR-2-CON-MV-ZA-1160 FF | 50% | 7d |
|  | 7 | **Pipe laying** |  | 2026-08-13 | 2026-11-09 |  |  |  |
| SDR-2-CON-MV-ZA-1210 |  | Pipe Laying | 21d | 2026-08-13 A | 2026-11-09 | SDR-2-CON-MV-ZA-1200 FF | 50% | 7d |

| ID | WBS | Task | Duration | Start | Finish | Predecessors | Complete | Total float |
| --- | --- | --- | --- | --- | --- | --- | --- | --- |
|  | 8 | **Backfilling** |  | 2026-11-10 | 2026-12-03 |  |  |  |
| SDR-2-CON-MV-ZA-1230 |  | Backfilling Works | 21d | 2026-11-10 | 2026-12-03 | SDR-2-CON-MV-ZA-1210 |  | 7d |
|  | 9 | **Pulling Cable** |  | 2026-12-14 | 2027-01-06 |  |  |  |
| SDR-2-CON-MV-ZA-1220 |  | Pulling Cable | 21d | 2026-12-14 | 2027-01-06 | SDR-2-CON-MV-ZA-1210, SDR-2-CON-MV-ZA-1230 FS+8d |  | 7d |
|  | 4 | **LOOP 6** |  | 2026-08-13 | 2027-01-04 |  |  |  |
|  | 6 | **Excavation** |  | 2026-08-13 | 2026-11-09 |  |  |  |
| SDR-2-CON-MV-ZA-1240 |  | Excavation Works | 21d | 2026-08-13 A | 2026-11-09 | SDR-2-CON-MV-ZA-1200 FF | 50% | 36d |
|  | 7 | **Pipe laying** |  | 2026-08-13 | 2026-11-09 |  |  |  |
| SDR-2-CON-MV-ZA-1250 |  | Pipe Laying | 20d | 2026-08-13 A | 2026-11-09 | SDR-2-CON-MV-ZA-1240 FF | 50% | 36d |
|  | 8 | **Backfilling** |  | 2026-11-10 | 2026-12-03 |  |  |  |
| SDR-2-CON-MV-ZA-1270 |  | Backfilling Works | 21d | 2026-11-10 | 2026-12-03 | SDR-2-CON-MV-ZA-1250 |  | 36d |
|  | 9 | **Pulling Cable** |  | 2026-12-12 | 2027-01-04 |  |  |  |
| SDR-2-CON-MV-ZA-1260 |  | Pulling Cable | 21d | 2026-12-12 | 2027-01-04 | SDR-2-CON-MV-ZA-1100, SDR-2-CON-MV-ZA-1250, SDR-2-CON-MV-ZA-1270 FS+6d |  | 36d |
|  | 3 | **TELECOMMUNICATIONS Works** |  | 2026-07-09 | 2027-03-14 |  |  |  |
|  | 1 | **TELECOMMUNICATION IN ( PH2-COL-MC10 )** |  | 2026-09-01 | 2027-03-14 |  |  |  |
|  | 3 | **Ducts** |  | 2026-09-13 | 2027-03-14 |  |  |  |
|  | 2 | **Excavation** |  | 2026-09-13 | 2026-12-19 |  |  |  |
| SDR-2-CON-TE-ZA-4560 |  | Excavation for telecom crossing ducts | 21d | 2026-09-13 A | 2026-11-24 | SDR-2-CON-SL-ZA-1000 FF | 50% | 18d |
| SDR-2-CON-TE-ZA-1000 |  | Excavation for telecom trenches | 21d | 2026-11-25 | 2026-12-19 | SDR-2-CON-TE-ZA-4560 |  | 18d |
|  | 5 | **Pipe laying** |  | 2026-12-20 | 2027-01-10 |  |  |  |
| SDR-2-CON-TE-ZA-1010 |  | HDPE Pipes for Telecom Installation | 19d | 2026-12-20 | 2027-01-10 | SDR-2-CON-TE-ZA-1000, SDR-2-PRO-MAS-E-1010 |  | 18d |
|  | 6 | **Backfilling** |  | 2027-01-11 | 2027-01-31 |  |  |  |
| SDR-2-CON-TE-ZA-1020 |  | Backfilling over HDPE Telecom Pipes | 18d | 2027-01-11 | 2027-01-31 | SDR-2-CON-TE-ZA-1010 |  | 18d |
|  | 7 | **Pulling Cable** |  | 2027-02-13 | 2027-03-14 |  |  |  |
| SDR-2-CON-TE-ZA-1840 |  | Pulling Cable | 21d | 2027-02-13 | 2027-03-14 | SDR-2-CON-TE-ZA-1020 FS+10d |  | 18d |
|  | 4 | **Manholes** |  | 2026-09-01 | 2027-01-16 |  |  |  |
|  | 1 | **Excavation** |  | 2026-09-01 | 2026-09-24 |  |  |  |
| SDR-2-CON-TE-ZA-1030 |  | Excavation for Telecom Manholes | 21d | 2026-09-01 A | 2026-09-24 A | SDR-2-CON-TE-ZA-4560 FF | 100% |  |
|  | 2 | **Bedding Work** |  | 2026-09-15 | 2026-10-26 |  |  |  |
| SDR-2-CON-TE-ZA-1850 |  | Sand bedding for Telecom Manhole | 19d | 2026-09-15 A | 2026-10-26 A | SDR-2-CON-TE-ZA-1030 FF | 100% |  |
|  | 3 | **Install Manholes** |  | 2026-09-21 | 2026-10-26 |  |  |  |
| SDR-2-CON-TE-ZA-1040 |  | Installation of Telecom Manhole | 20d | 2026-09-21 A | 2026-10-26 A | SDR-2-CON-TE-ZA-1030, SDR-2-PRO-MAL-E-1050, SDR-2-CON-TE-ZA-1850 | 100% |  |
|  | 4 | **Testting** |  | 2026-11-25 | 2026-12-10 |  |  |  |
| SDR-2-CON-TE-ZA-1050 |  | Telecom Manhole finishing works | 14d | 2026-11-25 | 2026-12-10 | SDR-2-CON-TE-ZA-1040 |  | 29d |
|  | 5 | **Backfilling** |  | 2026-12-23 | 2027-01-16 |  |  |  |
| SDR-2-CON-TE-ZA-1060 |  | Backfilling over Telecom Manhole | 21d | 2026-12-23 | 2027-01-16 | SDR-2-CON-MV-ZA-1100, SDR-2-CON-TE-ZA-1050 FS+10d |  | 29d |
|  | 2 | **TELECOMMUNICATION IN ( PH2-COL-MC20 )** |  | 2026-07-14 | 2027-01-06 |  |  |  |
|  | 3 | **Ducts** |  | 2026-07-14 | 2026-12-03 |  |  |  |
|  | 2 | **Excavation** |  | 2026-07-14 | 2026-11-09 |  |  |  |
| SDR-2-CON-TE-ZA-3210 |  | Excavation for telecom crossing ducts & trenches | 21d | 2026-07-14 A | 2026-11-09 | SDR-2-CON-SL-ZA-1000 FF | 80% | 0d |
|  | 5 | **Pipe laying** |  | 2026-07-21 | 2026-11-09 |  |  |  |
| SDR-2-CON-TE-ZA-3220 |  | HDPE Pipes for Telecom Installation | 20d | 2026-07-21 A | 2026-11-09 | SDR-2-CON-TE-ZA-3210 FF | 70% | 126d |
|  | 6 | **Backfilling** |  | 2026-08-01 | 2026-11-09 |  |  |  |
| SDR-2-CON-TE-ZA-3230 |  | Backfilling over HDPE Telecom Pipes | 20d | 2026-08-01 A | 2026-11-09 | SDR-2-CON-TE-ZA-3220 FF | 70% | 126d |
|  | 7 | **Pulling Cable** |  | 2026-11-10 | 2026-12-03 |  |  |  |
| SDR-2-CON-TE-ZA-3280 |  | Pulling Cable | 21d | 2026-11-10 | 2026-12-03 | SDR-2-CON-TE-ZA-3230 |  | 126d |
|  | 4 | **Manholes** |  | 2026-09-03 | 2027-01-06 |  |  |  |
|  | 1 | **Excavation** |  | 2026-09-03 | 2026-10-01 |  |  |  |
| SDR-2-CON-TE-ZA-3240 |  | Excavation for Telecom Manholes | 21d | 2026-09-03 A | 2026-10-01 A | SDR-2-CON-TE-ZA-3210 FF | 100% |  |
|  | 2 | **Bedding Work** |  | 2026-09-05 | 2026-11-15 |  |  |  |
| SDR-2-CON-TE-ZA-3290 |  | Sand bedding for Telecom Manhole | 20d | 2026-09-05 A | 2026-11-15 | SDR-2-CON-TE-ZA-3240 FF | 80% | 25d |
|  | 3 | **Install Manholes** |  | 2026-09-03 | 2026-11-15 |  |  |  |
| SDR-2-CON-TE-ZA-3250 |  | Installation of Telecom Manhole | 20d | 2026-09-03 A | 2026-11-15 | SDR-2-CON-TE-ZA-3240 FF, SDR-2-CON-TE-ZA-3290 FF | 80% | 25d |
|  | 4 | **Testting** |  | 2026-11-16 | 2026-12-01 |  |  |  |
| SDR-2-CON-TE-ZA-3260 |  | Telecom Manhole finishing works | 14d | 2026-11-16 | 2026-12-01 | SDR-2-CON-TE-ZA-3250 |  | 25d |
|  | 5 | **Backfilling** |  | 2026-12-14 | 2027-01-06 |  |  |  |
| SDR-2-CON-TE-ZA-3270 |  | Backfilling over Telecom Manhole | 21d | 2026-12-14 | 2027-01-06 | SDR-2-CON-TE-ZA-3260 FS+10d |  | 25d |
|  | 11 | **TELECOMMUNICATION IN ( PH2-A-MCA0 )** |  | 2026-08-01 | 2027-02-23 |  |  |  |
|  | 3 | **Ducts** |  | 2026-08-01 | 2027-01-26 |  |  |  |
|  | 2 | **Excavation** |  | 2026-08-01 | 2026-11-09 |  |  |  |
| SDR-2-CON-TE-ZA-3300 |  | Excavation for telecom crossing ducts & trenches | 21d | 2026-08-01 A | 2026-11-09 | SDR-2-CON-SL-ZA-1000 FF, SDR-2-CON-TE-ZA-3210 FF | 60% | 0d |
|  | 5 | **Pipe laying** |  | 2026-11-10 | 2026-12-01 |  |  |  |
| SDR-2-CON-TE-ZA-3310 |  | HDPE Pipes for Telecom Installation | 19d | 2026-11-10 | 2026-12-01 | SDR-2-CON-TE-ZA-3300 |  | 0d |
|  | 6 | **Backfilling** |  | 2026-12-02 | 2026-12-24 |  |  |  |
| SDR-2-CON-TE-ZA-3320 |  | Backfilling over HDPE Telecom Pipes | 20d | 2026-12-02 | 2026-12-24 | SDR-2-CON-TE-ZA-3310 |  | 0d |
|  | 7 | **Pulling Cable** |  | 2027-01-04 | 2027-01-26 |  |  |  |
| SDR-2-CON-TE-ZA-3370 |  | Pulling Cable | 20d | 2027-01-04 | 2027-01-26 | SDR-2-CON-MV-ZA-1100 FS+5d, SDR-2-CON-TE-ZA-3320 FS+8d |  | 0d |
|  | 4 | **Manholes** |  | 2026-09-07 | 2027-02-23 |  |  |  |
|  | 1 | **Excavation** |  | 2026-09-07 | 2026-10-19 |  |  |  |
| SDR-2-CON-TE-ZA-3330 |  | Excavation for Telecom Manholes | 21d | 2026-09-07 A | 2026-10-19 A | SDR-2-CON-TE-ZA-3300 FF | 100% |  |

| ID | WBS | Task | Duration | Start | Finish | Predecessors | Complete | Total float |
| --- | --- | --- | --- | --- | --- | --- | --- | --- |
|  | 2 | **Bedding Work** |  | 2026-10-14 | 2026-12-02 |  |  |  |
| SDR-2-CON-TE-ZA-3380 |  | Sand bedding for Telecom Manhole | 20d | 2026-10-14 A | 2026-12-02 | SDR-2-CON-TE-ZA-3330 | 50% | 13d |
|  | 3 | **Install Manholes** |  | 2026-10-22 | 2026-12-26 |  |  |  |
| SDR-2-CON-TE-ZA-3340 |  | Installation of Telecom Manhole | 20d | 2026-10-22 A | 2026-12-26 | SDR-2-CON-TE-ZA-3330, SDR-2-CON-TE-ZA-3380 | 50% | 13d |
|  | 4 | **Testting** |  | 2026-12-27 | 2027-01-18 |  |  |  |
| SDR-2-CON-TE-ZA-3350 |  | Telecom Manhole finishing works | 20d | 2026-12-27 | 2027-01-18 | SDR-2-CON-TE-ZA-3340 |  | 13d |
|  | 5 | **Backfilling** |  | 2027-01-31 | 2027-02-23 |  |  |  |
| SDR-2-CON-TE-ZA-3360 |  | Backfilling over Telecom Manhole | 20d | 2027-01-31 | 2027-02-23 | SDR-2-CON-TE-ZA-3350 FS+10d |  | 13d |
|  | 12 | **TELECOMMUNICATION IN ( PH2-A-MCB0 )** |  | 2026-08-08 | 2027-03-08 |  |  |  |
|  | 3 | **Ducts** |  | 2026-08-08 | 2027-02-01 |  |  |  |
|  | 2 | **Excavation** |  | 2026-08-08 | 2026-11-09 |  |  |  |
| SDR-2-CON-TE-ZA-3390 |  | Excavation for telecom crossing ducts & trenches | 21d | 2026-08-08 A | 2026-11-09 | SDR-2-CON-SL-ZA-1000 FF, SDR-2-CON-TE-ZA-3300 FF | 30% | 3d |
|  | 5 | **Pipe laying** |  | 2026-11-10 | 2026-12-03 |  |  |  |
| SDR-2-CON-TE-ZA-3400 |  | HDPE Pipes for Telecom Installation | 21d | 2026-11-10 | 2026-12-03 | SDR-2-CON-TE-ZA-3390 |  | 3d |
|  | 6 | **Backfilling** |  | 2026-12-05 | 2026-12-27 |  |  |  |
| SDR-2-CON-TE-ZA-3410 |  | Backfilling over HDPE Telecom Pipes | 20d | 2026-12-05 | 2026-12-27 | SDR-2-CON-TE-ZA-3400 |  | 3d |
|  | 7 | **Pulling Cable** |  | 2027-01-09 | 2027-02-01 |  |  |  |
| SDR-2-CON-TE-ZA-3460 |  | Pulling Cable | 21d | 2027-01-09 | 2027-02-01 | SDR-2-CON-TE-ZA-3410 FS+10d |  | 3d |
|  | 4 | **Manholes** |  | 2026-09-13 | 2027-03-08 |  |  |  |
|  | 1 | **Excavation** |  | 2026-09-13 | 2026-11-25 |  |  |  |
| SDR-2-CON-TE-ZA-3420 |  | Excavation for Telecom Manholes | 21d | 2026-09-13 A | 2026-11-25 | SDR-2-CON-TE-ZA-3390 FF | 75% | 2.81d |
|  | 2 | **Bedding Work** |  | 2026-10-21 | 2026-12-19 |  |  |  |
| SDR-2-CON-TE-ZA-3470 |  | Sand bedding for Telecom Manhole | 20d | 2026-10-21 A | 2026-12-19 | SDR-2-CON-TE-ZA-3420 | 50% | 2.81d |
|  | 3 | **Install Manholes** |  | 2026-10-22 | 2027-01-11 |  |  |  |
| SDR-2-CON-TE-ZA-3430 |  | Installation of Telecom Manhole | 20d | 2026-10-22 A | 2027-01-11 | SDR-2-CON-TE-ZA-3420, SDR-2-CON-TE-ZA-3470 | 50% | 2.81d |
|  | 4 | **Testting** |  | 2027-01-11 | 2027-02-04 |  |  |  |
| SDR-2-CON-TE-ZA-3440 |  | Telecom Manhole finishing works | 21d | 2027-01-11 | 2027-02-04 | SDR-2-CON-TE-ZA-3430 |  | 2.81d |
|  | 5 | **Backfilling** |  | 2027-02-10 | 2027-03-08 |  |  |  |
| SDR-2-CON-TE-ZA-3450 |  | Backfilling over Telecom Manhole | 21d | 2027-02-10 | 2027-03-08 | SDR-2-CON-TE-ZA-4350, SDR-2-CON-TE-ZA-4360, SDR-2-CON-TE-ZA-4260, SDR-2-CON-TE-ZA-4270, SDR-2-CON-MV-ZA-1340, SDR-2-CON-TE-ZA-3440 FS+5d |  | 2.81d |
|  | 13 | **TELECOMMUNICATION IN ( PH2-A-MCC0 )** |  | 2026-07-20 | 2027-01-12 |  |  |  |
|  | 3 | **Ducts** |  | 2026-07-20 | 2027-01-12 |  |  |  |
|  | 2 | **Excavation** |  | 2026-07-20 | 2026-11-09 |  |  |  |
| SDR-2-CON-TE-ZA-3480 |  | Excavation for telecom crossing ducts & trenches | 21d | 2026-07-20 A | 2026-11-09 | SDR-2-CON-SL-ZA-1000 FF, SDR-2-CON-TE-ZA-3390 FF | 75% | 16d |
|  | 5 | **Pipe laying** |  | 2026-09-03 | 2026-11-14 |  |  |  |
| SDR-2-CON-TE-ZA-3490 |  | HDPE Pipes for Telecom Installation | 20d | 2026-09-03 A | 2026-11-14 | SDR-2-CON-TE-ZA-3480 FF | 25% | 20d |
|  | 6 | **Backfilling** |  | 2026-11-15 | 2026-12-07 |  |  |  |
| SDR-2-CON-TE-ZA-3500 |  | Backfilling over HDPE Telecom Pipes | 20d | 2026-11-15 | 2026-12-07 | SDR-2-CON-TE-ZA-3490 |  | 20d |
|  | 7 | **Pulling Cable** |  | 2026-12-20 | 2027-01-12 |  |  |  |
| SDR-2-CON-TE-ZA-3550 |  | Pulling Cable | 21d | 2026-12-20 | 2027-01-12 | SDR-2-CON-TE-ZA-3500 FS+10d |  | 20d |
|  | 4 | **Manholes** |  | 2026-09-10 | 2026-12-19 |  |  |  |
|  | 1 | **Excavation** |  | 2026-09-10 | 2026-10-01 |  |  |  |
| SDR-2-CON-TE-ZA-3510 |  | Excavation for Telecom Manholes | 21d | 2026-09-10 A | 2026-10-01 A | SDR-2-CON-TE-ZA-3480 FF | 100% |  |
|  | 2 | **Bedding Work** |  | 2026-09-10 | 2026-10-22 |  |  |  |
| SDR-2-CON-TE-ZA-3560 |  | Sand bedding for Telecom Manhole | 20d | 2026-09-10 A | 2026-10-22 A | SDR-2-CON-TE-ZA-3510 FF | 100% |  |
|  | 3 | **Install Manholes** |  | 2026-10-01 | 2026-10-22 |  |  |  |
| SDR-2-CON-TE-ZA-3520 |  | Installation of Telecom Manhole | 19d | 2026-10-01 A | 2026-10-22 A | SDR-2-CON-TE-ZA-3510, SDR-2-CON-TE-ZA-3560 | 100% |  |
|  | 4 | **Testting** |  | 2026-11-10 | 2026-11-25 |  |  |  |
| SDR-2-CON-TE-ZA-3530 |  | Telecom Manhole finishing works | 14d | 2026-11-10 | 2026-11-25 | SDR-2-CON-TE-ZA-3520 |  | 41d |
|  | 5 | **Backfilling** |  | 2026-11-26 | 2026-12-19 |  |  |  |
| SDR-2-CON-TE-ZA-3540 |  | Backfilling over Telecom Manhole | 20d | 2026-11-26 | 2026-12-19 | SDR-2-CON-TE-ZA-3530 |  | 41d |
|  | 14 | **TELECOMMUNICATION IN ( PH2-A-MCD0 )** |  | 2026-07-20 | 2027-02-02 |  |  |  |
|  | 3 | **Ducts** |  | 2026-07-20 | 2026-12-29 |  |  |  |
|  | 2 | **Excavation** |  | 2026-07-20 | 2026-11-09 |  |  |  |
| SDR-2-CON-TE-ZA-3570 |  | Excavation for telecom crossing ducts & trenches | 21d | 2026-07-20 A | 2026-11-09 | SDR-2-CON-SL-ZA-1000 FF, SDR-2-CON-TE-ZA-3480 FF | 80% | 16d |
|  | 5 | **Pipe laying** |  | 2026-09-03 | 2026-11-14 |  |  |  |
| SDR-2-CON-TE-ZA-3580 |  | HDPE Pipes for Telecom Installation | 20d | 2026-09-03 A | 2026-11-14 | SDR-2-CON-TE-ZA-3570 FF | 25% | 104d |
|  | 6 | **Backfilling** |  | 2026-11-15 | 2026-12-05 |  |  |  |
| SDR-2-CON-TE-ZA-3590 |  | Backfilling over HDPE Telecom Pipes | 18d | 2026-11-15 | 2026-12-05 | SDR-2-CON-TE-ZA-3580 |  | 104d |
|  | 7 | **Pulling Cable** |  | 2026-12-06 | 2026-12-29 |  |  |  |
| SDR-2-CON-TE-ZA-3640 |  | Pulling Cable | 21d | 2026-12-06 | 2026-12-29 | SDR-2-CON-TE-ZA-3590 |  | 104d |
|  | 4 | **Manholes** |  | 2026-09-10 | 2027-02-02 |  |  |  |
|  | 1 | **Excavation** |  | 2026-09-10 | 2026-10-01 |  |  |  |
| SDR-2-CON-TE-ZA-3600 |  | Excavation for Telecom Manholes | 21d | 2026-09-10 A | 2026-10-01 A | SDR-2-CON-TE-ZA-3570 FF | 100% |  |
|  | 2 | **Bedding Work** |  | 2026-09-15 | 2026-11-26 |  |  |  |
| SDR-2-CON-TE-ZA-3650 |  | Sand bedding for Telecom Manhole | 20d | 2026-09-15 A | 2026-11-26 | SDR-2-CON-TE-ZA-3600 FF | 75% | 18.81d |
|  | 3 | **Install Manholes** |  | 2026-10-01 | 2026-12-21 |  |  |  |
| SDR-2-CON-TE-ZA-3610 |  | Installation of Telecom Manhole | 21d | 2026-10-01 A | 2026-12-21 | SDR-2-CON-TE-ZA-3600, SDR-2-CON-TE-ZA-3650 | 75% | 18.81d |
|  | 4 | **Testting** |  | 2026-12-27 | 2027-01-09 |  |  |  |
| SDR-2-CON-TE-ZA-3620 |  | Telecom Manhole finishing works | 12d | 2026-12-27 | 2027-01-09 | SDR-2-CON-CC-ZG-1610, SDR-2-CON-TE-ZA-3610 |  | 14d |
|  | 5 | **Backfilling** |  | 2027-01-10 | 2027-02-02 |  |  |  |

| ID | WBS | Task | Duration | Start | Finish | Predecessors | Complete | Total float |
| --- | --- | --- | --- | --- | --- | --- | --- | --- |
| SDR-2-CON-TE-ZA-3630 |  | Backfilling over Telecom Manhole | 21d | 2027-01-10 | 2027-02-02 | SDR-2-CON-TE-ZA-4540, SDR-2-CON-TE-ZA-3620 |  | 14d |
|  | 5 | **TELECOMMUNICATION IN ( PH2-A-MCE0 )** |  | 2026-07-14 | 2027-02-25 |  |  |  |
|  | 3 | **Ducts** |  | 2026-07-14 | 2026-12-28 |  |  |  |
|  | 2 | **Excavation** |  | 2026-07-14 | 2026-11-09 |  |  |  |
| SDR-2-CON-TE-ZA-3660 |  | Excavation for telecom crossing ducts & trenches | 21d | 2026-07-14 A | 2026-11-09 | SDR-2-CON-SL-ZA-1000 FF, SDR-2-CON-TE-ZA-3570 FF | 75% | 16d |
|  | 5 | **Pipe laying** |  | 2026-07-21 | 2026-11-09 |  |  |  |
| SDR-2-CON-TE-ZA-3670 |  | HDPE Pipes for Telecom Installation | 17d | 2026-07-21 A | 2026-11-09 | SDR-2-CON-TE-ZA-3660 FF | 25% | 105d |
|  | 6 | **Backfilling** |  | 2026-11-10 | 2026-12-03 |  |  |  |
| SDR-2-CON-TE-ZA-3680 |  | Backfilling over HDPE Telecom Pipes | 21d | 2026-11-10 | 2026-12-03 | SDR-2-CON-TE-ZA-3670 |  | 105d |
|  | 7 | **Pulling Cable** |  | 2026-12-05 | 2026-12-28 |  |  |  |
| SDR-2-CON-TE-ZA-3730 |  | Pulling Cable | 21d | 2026-12-05 | 2026-12-28 | SDR-2-CON-TE-ZA-3680 |  | 105d |
|  | 4 | **Manholes** |  | 2026-10-19 | 2027-02-25 |  |  |  |
|  | 1 | **Excavation** |  | 2026-10-19 | 2026-12-02 |  |  |  |
| SDR-2-CON-TE-ZA-3690 |  | Excavation for Telecom Manholes | 21d | 2026-10-19 A | 2026-12-02 | SDR-2-CON-TE-ZA-3660 SS | 25% | 16d |
|  | 2 | **Bedding Work** |  | 2026-10-22 | 2026-12-26 |  |  |  |
| SDR-2-CON-TE-ZA-3740 |  | Sand bedding for Telecom Manhole | 20d | 2026-10-22 A | 2026-12-26 | SDR-2-CON-TE-ZA-3690 | 20% | 16d |
|  | 3 | **Install Manholes** |  | 2026-12-27 | 2027-01-18 |  |  |  |
| SDR-2-CON-TE-ZA-3700 |  | Installation of Telecom Manhole | 20d | 2026-12-27 | 2027-01-18 | SDR-2-CON-TE-ZA-3690, SDR-2-CON-TE-ZA-3740 |  | 16d |
|  | 4 | **Testting** |  | 2027-01-19 | 2027-02-01 |  |  |  |
| SDR-2-CON-TE-ZA-3710 |  | Telecom Manhole finishing works | 12d | 2027-01-19 | 2027-02-01 | SDR-2-CON-TE-ZA-3700 |  | 16d |
|  | 5 | **Backfilling** |  | 2027-02-02 | 2027-02-25 |  |  |  |
| SDR-2-CON-TE-ZA-3720 |  | Backfilling over Telecom Manhole | 20d | 2027-02-02 | 2027-02-25 | SDR-2-CON-TE-ZA-3710 |  | 16d |
|  | 6 | **TELECOMMUNICATION IN ( PH2-A-MCF0 )** |  | 2026-07-14 | 2027-02-01 |  |  |  |
|  | 3 | **Ducts** |  | 2026-07-14 | 2026-12-27 |  |  |  |
|  | 2 | **Excavation** |  | 2026-07-14 | 2026-11-09 |  |  |  |
| SDR-2-CON-TE-ZA-3750 |  | Excavation for telecom crossing ducts & trenches | 21d | 2026-07-14 A | 2026-11-09 | SDR-2-CON-SL-ZA-1000 FF, SDR-2-CON-TE-ZA-3660 FF | 75% | 16d |
|  | 5 | **Pipe laying** |  | 2026-07-21 | 2026-11-09 |  |  |  |
| SDR-2-CON-TE-ZA-3760 |  | HDPE Pipes for Telecom Installation | 20d | 2026-07-21 A | 2026-11-09 | SDR-2-CON-TE-ZA-3750 FF | 25% | 67d |
|  | 6 | **Backfilling** |  | 2026-11-10 | 2026-12-03 |  |  |  |
| SDR-2-CON-TE-ZA-3770 |  | Backfilling over HDPE Telecom Pipes | 21d | 2026-11-10 | 2026-12-03 | SDR-2-CON-TE-ZA-3760 |  | 67d |
|  | 7 | **Pulling Cable** |  | 2026-12-05 | 2026-12-27 |  |  |  |
| SDR-2-CON-TE-ZA-3820 |  | Pulling Cable | 20d | 2026-12-05 | 2026-12-27 | SDR-2-CON-TE-ZA-3770 |  | 67d |
|  | 4 | **Manholes** |  | 2026-10-20 | 2027-02-01 |  |  |  |
|  | 1 | **Excavation** |  | 2026-10-20 | 2026-10-31 |  |  |  |
| SDR-2-CON-TE-ZA-3780 |  | Excavation for Telecom Manholes | 21d | 2026-10-20 A | 2026-10-31 A | SDR-2-CON-TE-ZA-3750 SS | 100% |  |
|  | 2 | **Bedding Work** |  | 2026-10-22 | 2026-12-01 |  |  |  |
| SDR-2-CON-TE-ZA-3830 |  | Sand bedding for Telecom Manhole | 20d | 2026-10-22 A | 2026-12-01 | SDR-2-CON-TE-ZA-3780 | 75% | 36d |
|  | 3 | **Install Manholes** |  | 2026-10-24 | 2026-12-24 |  |  |  |
| SDR-2-CON-TE-ZA-3790 |  | Installation of Telecom Manhole | 20d | 2026-10-24 A | 2026-12-24 | SDR-2-CON-TE-ZA-3780, SDR-2-CON-TE-ZA-3830 | 75% | 36d |
|  | 4 | **Testting** |  | 2026-12-26 | 2027-01-07 |  |  |  |
| SDR-2-CON-TE-ZA-3800 |  | Telecom Manhole finishing works | 12d | 2026-12-26 | 2027-01-07 | SDR-2-CON-TE-ZA-3790 |  | 36d |
|  | 5 | **Backfilling** |  | 2027-01-09 | 2027-02-01 |  |  |  |
| SDR-2-CON-TE-ZA-3810 |  | Backfilling over Telecom Manhole | 21d | 2027-01-09 | 2027-02-01 | SDR-2-CON-TE-ZA-3800 |  | 36d |
|  | 7 | **TELECOMMUNICATION IN ( PH2-A-MCG0 )** |  | 2026-07-14 | 2027-02-25 |  |  |  |
|  | 3 | **Ducts** |  | 2026-07-14 | 2027-01-06 |  |  |  |
|  | 2 | **Excavation** |  | 2026-07-14 | 2026-11-09 |  |  |  |
| SDR-2-CON-TE-ZA-3840 |  | Excavation for telecom crossing ducts & trenches | 21d | 2026-07-14 A | 2026-11-09 | SDR-2-CON-SL-ZA-1000 FF, SDR-2-CON-TE-ZA-3750 FF | 75% | 16d |
|  | 5 | **Pipe laying** |  | 2026-07-21 | 2026-11-09 |  |  |  |
| SDR-2-CON-TE-ZA-3850 |  | HDPE Pipes for Telecom Installation | 20d | 2026-07-21 A | 2026-11-09 | SDR-2-CON-TE-ZA-3840 FF | 25% | 58d |
|  | 6 | **Backfilling** |  | 2026-11-10 | 2026-12-02 |  |  |  |
| SDR-2-CON-TE-ZA-3860 |  | Backfilling over HDPE Telecom Pipes | 20d | 2026-11-10 | 2026-12-02 | SDR-2-CON-TE-ZA-3850 |  | 58d |
|  | 7 | **Pulling Cable** |  | 2026-12-14 | 2027-01-06 |  |  |  |
| SDR-2-CON-TE-ZA-3910 |  | Pulling Cable | 21d | 2026-12-14 | 2027-01-06 | SDR-2-CON-TE-ZA-3860 FS+9d |  | 58d |
|  | 4 | **Manholes** |  | 2026-10-20 | 2027-02-25 |  |  |  |
|  | 1 | **Excavation** |  | 2026-10-20 | 2026-12-02 |  |  |  |
| SDR-2-CON-TE-ZA-3870 |  | Excavation for Telecom Manholes | 21d | 2026-10-20 A | 2026-12-02 | SDR-2-CON-TE-ZA-3840 SS | 85% | 16d |
|  | 2 | **Bedding Work** |  | 2026-10-24 | 2026-12-26 |  |  |  |
| SDR-2-CON-TE-ZA-3920 |  | Sand bedding for Telecom Manhole | 20d | 2026-10-24 A | 2026-12-26 | SDR-2-CON-TE-ZA-3870 | 75% | 16d |
|  | 3 | **Install Manholes** |  | 2026-10-24 | 2027-01-18 |  |  |  |
| SDR-2-CON-TE-ZA-3880 |  | Installation of Telecom Manhole | 20d | 2026-10-24 A | 2027-01-18 | SDR-2-CON-TE-ZA-3870, SDR-2-CON-TE-ZA-3920 | 75% | 16d |
|  | 4 | **Testting** |  | 2027-01-19 | 2027-02-01 |  |  |  |
| SDR-2-CON-TE-ZA-3890 |  | Telecom Manhole finishing works | 12d | 2027-01-19 | 2027-02-01 | SDR-2-CON-TE-ZA-3880 |  | 16d |
|  | 5 | **Backfilling** |  | 2027-02-02 | 2027-02-25 |  |  |  |
| SDR-2-CON-TE-ZA-3900 |  | Backfilling over Telecom Manhole | 20d | 2027-02-02 | 2027-02-25 | SDR-2-CON-TE-ZA-3890 |  | 16d |
|  | 8 | **TELECOMMUNICATION IN ( PH2-A-MCH0 )** |  | 2026-07-30 | 2027-02-23 |  |  |  |
|  | 3 | **Ducts** |  | 2026-07-30 | 2027-01-19 |  |  |  |
|  | 2 | **Excavation** |  | 2026-07-30 | 2026-11-09 |  |  |  |
| SDR-2-CON-TE-ZA-3930 |  | Excavation for telecom crossing ducts & trenches | 21d | 2026-07-30 A | 2026-11-09 | SDR-2-CON-SL-ZA-1000 FF, SDR-2-CON-TE-ZA-3840 FF | 80% | 18d |
|  | 5 | **Pipe laying** |  | 2026-11-10 | 2026-12-02 |  |  |  |
| SDR-2-CON-TE-ZA-3940 |  | HDPE Pipes for Telecom Installation | 20d | 2026-11-10 | 2026-12-02 | SDR-2-CON-TE-ZA-3930 |  | 47d |

| ID | WBS | Task | Duration | Start | Finish | Predecessors | Complete | Total float |
| --- | --- | --- | --- | --- | --- | --- | --- | --- |
|  | 6 | **Backfilling** |  | 2026-12-03 | 2026-12-26 |  |  |  |
| SDR-2-CON-TE-ZA-3950 |  | Backfilling over HDPE Telecom Pipes | 20d | 2026-12-03 | 2026-12-26 | SDR-2-CON-TE-ZA-3940 |  | 47d |
|  | 7 | **Pulling Cable** |  | 2026-12-27 | 2027-01-19 |  |  |  |
| SDR-2-CON-TE-ZA-4000 |  | Pulling Cable | 21d | 2026-12-27 | 2027-01-19 | SDR-2-CON-TE-ZA-3950 |  | 47d |
|  | 4 | **Manholes** |  | 2026-10-20 | 2027-02-23 |  |  |  |
|  | 1 | **Excavation** |  | 2026-10-20 | 2026-12-02 |  |  |  |
| SDR-2-CON-TE-ZA-3960 |  | Excavation for Telecom Manholes | 21d | 2026-10-20 A | 2026-12-02 | SDR-2-CON-TE-ZA-3930 SS | 25% | 18d |
|  | 2 | **Bedding Work** |  | 2026-10-22 | 2026-12-26 |  |  |  |
| SDR-2-CON-TE-ZA-4010 |  | Sand bedding for Telecom Manhole | 20d | 2026-10-22 A | 2026-12-26 | SDR-2-CON-TE-ZA-3960 | 10% | 18d |
|  | 3 | **Install Manholes** |  | 2026-10-24 | 2027-01-18 |  |  |  |
| SDR-2-CON-TE-ZA-3970 |  | Installation of Telecom Manhole | 20d | 2026-10-24 A | 2027-01-18 | SDR-2-CON-TE-ZA-3960, SDR-2-CON-TE-ZA-4010 | 10% | 18d |
|  | 4 | **Testting** |  | 2027-01-19 | 2027-02-01 |  |  |  |
| SDR-2-CON-TE-ZA-3980 |  | Telecom Manhole finishing works | 12d | 2027-01-19 | 2027-02-01 | SDR-2-CON-TE-ZA-3970 |  | 18d |
|  | 5 | **Backfilling** |  | 2027-02-02 | 2027-02-23 |  |  |  |
| SDR-2-CON-TE-ZA-3990 |  | Backfilling over Telecom Manhole | 18d | 2027-02-02 | 2027-02-23 | SDR-2-CON-TE-ZA-3980 |  | 18d |
|  | 9 | **TELECOMMUNICATION IN ( PH2-ART-MC00 )** |  | 2026-07-09 | 2027-01-28 |  |  |  |
|  | 3 | **Ducts** |  | 2026-07-09 | 2027-01-18 |  |  |  |
|  | 2 | **Excavation** |  | 2026-07-09 | 2026-11-09 |  |  |  |
| SDR-2-CON-TE-ZA-4020 |  | Excavation for telecom crossing ducts & trenches | 21d | 2026-07-09 A | 2026-11-09 | SDR-2-CON-SL-ZA-1000 FF, SDR-2-CON-TE-ZA-3930 FF | 70% | 39d |
|  | 5 | **Pipe laying** |  | 2026-11-10 | 2026-12-02 |  |  |  |
| SDR-2-CON-TE-ZA-4030 |  | HDPE Pipes for Telecom Installation | 20d | 2026-11-10 | 2026-12-02 | SDR-2-CON-TE-ZA-4020 |  | 48d |
|  | 6 | **Backfilling** |  | 2026-12-03 | 2026-12-24 |  |  |  |
| SDR-2-CON-TE-ZA-4040 |  | Backfilling over HDPE Telecom Pipes | 19d | 2026-12-03 | 2026-12-24 | SDR-2-CON-TE-ZA-4030 |  | 48d |
|  | 7 | **Pulling Cable** |  | 2026-12-26 | 2027-01-18 |  |  |  |
| SDR-2-CON-TE-ZA-4090 |  | Pulling Cable | 21d | 2026-12-26 | 2027-01-18 | SDR-2-CON-TE-ZA-4040 |  | 48d |
|  | 4 | **Manholes** |  | 2026-10-12 | 2027-01-28 |  |  |  |
|  | 1 | **Excavation** |  | 2026-10-12 | 2026-10-22 |  |  |  |
| SDR-2-CON-TE-ZA-4050 |  | Excavation for Telecom Manholes | 21d | 2026-10-12 A | 2026-10-22 A | SDR-2-CON-TE-ZA-4020 SS | 100% |  |
|  | 2 | **Bedding Work** |  | 2026-10-19 | 2026-12-01 |  |  |  |
| SDR-2-CON-TE-ZA-4100 |  | Sand bedding for Telecom Manhole | 20d | 2026-10-19 A | 2026-12-01 | SDR-2-CON-TE-ZA-4050 | 50% | 39d |
|  | 3 | **Install Manholes** |  | 2026-10-22 | 2026-12-24 |  |  |  |
| SDR-2-CON-TE-ZA-4060 |  | Installation of Telecom Manhole | 20d | 2026-10-22 A | 2026-12-24 | SDR-2-CON-TE-ZA-4050, SDR-2-CON-TE-ZA-4100 | 50% | 39d |
|  | 4 | **Testting** |  | 2026-12-26 | 2027-01-07 |  |  |  |
| SDR-2-CON-TE-ZA-4070 |  | Telecom Manhole finishing works | 12d | 2026-12-26 | 2027-01-07 | SDR-2-CON-TE-ZA-4060 |  | 39d |
|  | 5 | **Backfilling** |  | 2027-01-09 | 2027-01-28 |  |  |  |
| SDR-2-CON-TE-ZA-4080 |  | Backfilling over Telecom Manhole | 18d | 2027-01-09 | 2027-01-28 | SDR-2-CON-TE-ZA-4070 |  | 39d |
|  | 10 | **TELECOMMUNICATION IN ( PH2-ART-MC10 )** |  | 2026-07-14 | 2027-01-02 |  |  |  |
|  | 3 | **Ducts** |  | 2026-07-14 | 2026-12-27 |  |  |  |
|  | 2 | **Excavation** |  | 2026-07-14 | 2026-11-09 |  |  |  |
| SDR-2-CON-TE-ZA-4110 |  | Excavation for telecom crossing ducts & trenches | 21d | 2026-07-14 A | 2026-11-09 | SDR-2-CON-SL-ZA-1000 FF, SDR-2-CON-TE-ZA-3930 FF | 75% | 67d |
|  | 5 | **Pipe laying** |  | 2026-07-21 | 2026-11-09 |  |  |  |
| SDR-2-CON-TE-ZA-4120 |  | HDPE Pipes for Telecom Installation | 20d | 2026-07-21 A | 2026-11-09 | SDR-2-CON-TE-ZA-4110 FF | 25% | 67d |
|  | 6 | **Backfilling** |  | 2026-11-10 | 2026-12-02 |  |  |  |
| SDR-2-CON-TE-ZA-4130 |  | Backfilling over HDPE Telecom Pipes | 20d | 2026-11-10 | 2026-12-02 | SDR-2-CON-TE-ZA-4120 |  | 67d |
|  | 7 | **Pulling Cable** |  | 2026-12-03 | 2026-12-27 |  |  |  |
| SDR-2-CON-TE-ZA-4180 |  | Pulling Cable | 21d | 2026-12-03 | 2026-12-27 | SDR-2-CON-TE-ZA-4130 |  | 67d |
|  | 4 | **Manholes** |  | 2026-09-12 | 2027-01-02 |  |  |  |
|  | 1 | **Excavation** |  | 2026-09-12 | 2026-09-30 |  |  |  |
| SDR-2-CON-TE-ZA-4140 |  | Excavation for Telecom Manholes | 21d | 2026-09-12 A | 2026-09-30 A | SDR-2-CON-TE-ZA-4110 FF | 100% |  |
|  | 2 | **Bedding Work** |  | 2026-09-16 | 2026-11-25 |  |  |  |
| SDR-2-CON-TE-ZA-4190 |  | Sand bedding for Telecom Manhole | 18d | 2026-09-16 A | 2026-11-25 | SDR-2-CON-TE-ZA-4140 FF | 60% | 62.46d |
|  | 3 | **Install Manholes** |  | 2026-09-13 | 2026-11-25 |  |  |  |
| SDR-2-CON-TE-ZA-4150 |  | Installation of Telecom Manhole | 20d | 2026-09-13 A | 2026-11-25 | SDR-2-CON-TE-ZA-4140 FF, SDR-2-CON-TE-ZA-4190 FF | 60% | 62.46d |
|  | 4 | **Testting** |  | 2026-11-25 | 2026-12-08 |  |  |  |
| SDR-2-CON-TE-ZA-4160 |  | Telecom Manhole finishing works | 11d | 2026-11-25 | 2026-12-08 | SDR-2-CON-TE-ZA-4150 |  | 62.46d |
|  | 5 | **Backfilling** |  | 2026-12-08 | 2027-01-02 |  |  |  |
| SDR-2-CON-TE-ZA-4170 |  | Backfilling over Telecom Manhole | 21d | 2026-12-08 | 2027-01-02 | SDR-2-CON-TE-ZA-4160 |  | 62.46d |
|  | ZG | **ZONE G** |  | 2026-07-01 | 2027-04-05 |  |  |  |
|  | 1 | **Street Lighting Network** |  | 2026-07-01 | 2027-04-05 |  |  |  |
|  | 5 | **Street Lighting IN ( PH2-G-MCA0 )** |  | 2026-08-13 | 2027-01-04 |  |  |  |
|  | 10 | **Excavation** |  | 2026-08-13 | 2026-11-09 |  |  |  |
| SDR-2-CON-SL-ZA-3230 |  | Excavation for LV Cable drawpits & trenches | 21d | 2026-08-13 A | 2026-11-09 | SDR-2-CON-SL-ZA-3590 FF, SDR-2-CON-SL-ZA-1000 FF, SDR-2-CON-SL-ZA-2950 FF | 76% | 37d |
|  | 11 | **Install Footings** |  | 2026-08-13 | 2026-11-09 |  |  |  |
| SDR-2-CON-SL-ZA-3240 |  | Install Footings | 21d | 2026-08-13 A | 2026-11-09 | SDR-2-CON-SL-ZA-3230 FF | 60% | 52d |
|  | 12 | **Backfilling** |  | 2026-10-25 | 2026-12-02 |  |  |  |
| SDR-2-CON-SL-ZA-3260 |  | Backfilling over LV Cables of Street lighting | 20d | 2026-10-25 A | 2026-12-02 | SDR-2-CON-SL-ZA-3240 | 30% | 52d |
|  | 13 | **Install pole** |  | 2026-12-12 | 2027-01-04 |  |  |  |
| SDR-2-CON-SL-ZA-3250 |  | Install Pole | 21d | 2026-12-12 | 2027-01-04 | SDR-2-CON-SL-ZA-3240, SDR-2-CON-SL-ZA-3260 FS+7d |  | 52d |
|  | 6 | **Street Lighting IN ( PH2-G-MCE0 )** |  | 2026-07-04 | 2027-01-19 |  |  |  |
|  | 10 | **Excavation** |  | 2026-07-04 | 2026-11-09 |  |  |  |

| ID | WBS | Task | Duration | Start | Finish | Predecessors | Complete | Total float |
| --- | --- | --- | --- | --- | --- | --- | --- | --- |
| SDR-2-CON-SL-ZA-3270 |  | Excavation for LV Cable drawpits & trenches | 21d | 2026-07-04 A | 2026-11-09 | SDR-2-CON-SL-ZA-3590 FF, SDR-2-CON-SL-ZA-2950 FF | 90% | 15d |
|  | 11 | **Install Footings** |  | 2026-08-13 | 2026-11-09 |  |  |  |
| SDR-2-CON-SL-ZA-3280 |  | Install Footings | 21d | 2026-08-13 A | 2026-11-09 | SDR-2-CON-SL-ZA-3270 FF | 60% | 15d |
|  | 12 | **Backfilling** |  | 2026-10-27 | 2026-12-02 |  |  |  |
| SDR-2-CON-SL-ZA-3300 |  | Backfilling over LV Cables of Street lighting | 20d | 2026-10-27 A | 2026-12-02 | SDR-2-CON-SL-ZA-3280 | 50% | 15d |
|  | 13 | **Install pole** |  | 2026-12-27 | 2027-01-19 |  |  |  |
| SDR-2-CON-SL-ZA-3290 |  | Install Pole | 21d | 2026-12-27 | 2027-01-19 | SDR-2-CON-CC-ZG-1610, SDR-2-CON-SL-ZA-3300 FS+10d |  | 5d |
|  | 7 | **Street Lighting IN ( PH2-G-MCF0 )** |  | 2026-07-04 | 2026-12-07 |  |  |  |
|  | 10 | **Excavation** |  | 2026-07-04 | 2026-10-19 |  |  |  |
| SDR-2-CON-SL-ZA-3310 |  | Excavation for LV Cable drawpits & trenches | 21d | 2026-07-04 A | 2026-10-19 A | SDR-2-CON-SL-ZA-3230 FF, SDR-2-CON-SL-ZA-3270 FF | 100% |  |
|  | 11 | **Install Footings** |  | 2026-08-13 | 2026-11-09 |  |  |  |
| SDR-2-CON-SL-ZA-3320 |  | Install Footings | 20d | 2026-08-13 A | 2026-11-09 | SDR-2-CON-SL-ZA-3310 FF | 80% | 82d |
|  | 12 | **Backfilling** |  | 2026-10-20 | 2026-10-31 |  |  |  |
| SDR-2-CON-SL-ZA-3340 |  | Backfilling over LV Cables of Street lighting | 20d | 2026-10-20 A | 2026-10-31 A | SDR-2-CON-SL-ZA-3320 | 100% |  |
|  | 13 | **Install pole** |  | 2026-11-14 | 2026-12-07 |  |  |  |
| SDR-2-CON-SL-ZA-3330 |  | Install Pole | 21d | 2026-11-14 | 2026-12-07 | SDR-2-CON-SL-ZA-3340 FS+10d |  | 82d |
|  | 4 | **Street Lighting IN ( PH2-G-MCG0 )** |  | 2026-07-04 | 2026-12-07 |  |  |  |
|  | 10 | **Excavation** |  | 2026-07-04 | 2026-10-19 |  |  |  |
| SDR-2-CON-SL-ZA-3350 |  | Excavation for LV Cable drawpits & trenches | 21d | 2026-07-04 A | 2026-10-19 A | SDR-2-CON-SL-ZA-3310 FF | 100% |  |
|  | 11 | **Install Footings** |  | 2026-08-13 | 2026-11-09 |  |  |  |
| SDR-2-CON-SL-ZA-3360 |  | Install Footings | 20d | 2026-08-13 A | 2026-11-09 | SDR-2-CON-SL-ZA-3350 FF | 95% | 82d |
|  | 12 | **Backfilling** |  | 2026-10-06 | 2026-10-31 |  |  |  |
| SDR-2-CON-SL-ZA-3380 |  | Backfilling over LV Cables of Street lighting | 20d | 2026-10-06 A | 2026-10-31 A | SDR-2-CON-SL-ZA-3360 | 100% |  |
|  | 13 | **Install pole** |  | 2026-11-14 | 2026-12-07 |  |  |  |
| SDR-2-CON-SL-ZA-3370 |  | Install Pole | 21d | 2026-11-14 | 2026-12-07 | SDR-2-CON-SL-ZA-3380 FS+10d |  | 82d |
|  | 1 | **Street Lighting IN ( PH2-G-MCZ0 )** |  | 2026-07-01 | 2026-11-09 |  |  |  |
|  | 10 | **Excavation** |  | 2026-07-01 | 2026-10-27 |  |  |  |
| SDR-2-CON-SL-ZA-3390 |  | Excavation for LV Cable drawpits & trenches | 21d | 2026-07-01 A | 2026-10-27 A | SDR-2-CON-SL-ZA-3350 FF | 100% |  |
|  | 11 | **Install Footings** |  | 2026-08-13 | 2026-11-09 |  |  |  |
| SDR-2-CON-SL-ZA-3400 |  | Install Footings | 21d | 2026-08-13 A | 2026-11-09 | SDR-2-CON-SL-ZA-3390 FF | 60% | 106d |
|  | 12 | **Backfilling** |  | 2026-07-20 | 2026-10-31 |  |  |  |
| SDR-2-CON-SL-ZA-3420 |  | Backfilling over LV Cables of Street lighting | 21d | 2026-07-20 A | 2026-10-31 A | SDR-2-CON-SL-ZA-3400 FF | 100% |  |
|  | 13 | **Install pole** |  | 2026-07-30 | 2026-11-09 |  |  |  |
| SDR-2-CON-SL-ZA-3410 |  | Install Pole | 21d | 2026-07-30 A | 2026-11-09 | SDR-2-CON-SL-ZA-3420 FF | 50% | 106d |
|  | 10 | **Lighting Pole Panels** |  | 2026-11-10 | 2027-02-11 |  |  |  |
|  | 1 | **Excavation** |  | 2026-11-10 | 2026-12-03 |  |  |  |
| SDR-2-CON-SL-ZA-3430 |  | Street Lighting Panels Excavation | 21d | 2026-11-10 | 2026-12-03 | SDR-2-CON-SL-ZA-3390 SS+5d |  | 37d |
|  | 2 | **Install Footings** |  | 2026-12-05 | 2026-12-26 |  |  |  |
| SDR-2-CON-SL-ZA-3440 |  | Installation Footings Street Lighting Panels | 19d | 2026-12-05 | 2026-12-26 | SDR-2-CON-SL-ZA-3430 |  | 66d |
|  | 3 | **Backfilling** |  | 2026-12-27 | 2027-01-18 |  |  |  |
| SDR-2-CON-SL-ZA-3450 |  | Street Lighting Panels Backfilling | 20d | 2026-12-27 | 2027-01-18 | SDR-2-CON-SL-ZA-3440 |  | 66d |
|  | 4 | **Install pole** |  | 2027-01-19 | 2027-02-11 |  |  |  |
| SDR-2-CON-SL-ZA-3460 |  | Street Lighting Panels Installation | 21d | 2027-01-19 | 2027-02-11 | SDR-2-CON-SL-ZA-3450 |  | 66d |
|  | 11 | **Ring Main Unit** |  | 2026-12-05 | 2027-02-07 |  |  |  |
|  | 1 | **Leveling** |  | 2026-12-05 | 2026-12-27 |  |  |  |
| SDR-2-CON-SL-ZA-3470 |  | Ring Main Unit leveling | 20d | 2026-12-05 | 2026-12-27 | SDR-2-CON-SL-ZA-3430, SDR-2-CON-SL-ZA-2660 SS |  | 37d |
|  | 2 | **Lean Concrete** |  | 2026-12-28 | 2027-01-14 |  |  |  |
| SDR-2-CON-SL-ZA-3480 |  | Ring Main Unit Lean Concrete | 16d | 2026-12-28 | 2027-01-14 | SDR-2-CON-SL-ZA-3470 |  | 37d |
|  | 3 | **Installation** |  | 2027-01-16 | 2027-02-07 |  |  |  |
| SDR-2-CON-SL-ZA-3490 |  | Ring Main Unit installation for Street Lighting | 20d | 2027-01-16 | 2027-02-07 | SDR-2-CON-SL-ZA-3480 |  | 37d |
|  | 12 | **Feeder Pillars** |  | 2026-11-21 | 2027-01-28 |  |  |  |
|  | 1 | **Leveling** |  | 2026-11-21 | 2026-12-13 |  |  |  |
| SDR-2-CON-SL-ZA-3500 |  | Feeder Pillars Leveling | 20d | 2026-11-21 | 2026-12-13 | SDR-2-CON-SL-ZA-2670 SS |  | 33d |
|  | 2 | **Lean Concrete** |  | 2026-12-14 | 2027-01-05 |  |  |  |
| SDR-2-CON-SL-ZA-3510 |  | Feeder Pillars Lean Concrete | 20d | 2026-12-14 | 2027-01-05 | SDR-2-CON-SL-ZA-3500 |  | 33d |
|  | 3 | **Installation** |  | 2027-01-06 | 2027-01-28 |  |  |  |
| SDR-2-CON-SL-ZA-3520 |  | Feeder Pillars Installation | 20d | 2027-01-06 | 2027-01-28 | SDR-2-CON-SL-ZA-3510 |  | 33d |
|  | 13 | **KWH Frame** |  | 2027-01-09 | 2027-03-24 |  |  |  |
|  | 1 | **Leveling** |  | 2027-01-09 | 2027-01-31 |  |  |  |
| SDR-2-CON-SL-ZA-3530 |  | KWH meter mounting frame Leveling | 20d | 2027-01-09 | 2027-01-31 | SDR-2-CON-SL-ZA-2680 SS |  | 1d |
|  | 2 | **Lean Concrete** |  | 2027-02-01 | 2027-02-24 |  |  |  |
| SDR-2-CON-SL-ZA-3540 |  | KWH meter mounting frame Lean Concrete | 20d | 2027-02-01 | 2027-02-24 | SDR-2-CON-SL-ZA-3530 |  | 1d |
|  | 3 | **Installation** |  | 2027-02-25 | 2027-03-24 |  |  |  |
| SDR-2-CON-SL-ZA-3550 |  | KWH meter mounting frame installation | 20d | 2027-02-25 | 2027-03-24 | SDR-2-CON-SL-ZA-3540 |  | 1d |
|  | 14 | **Street Lighting Sub-station** |  | 2027-01-10 | 2027-04-05 |  |  |  |
|  | 1 | **Leveling** |  | 2027-01-10 | 2027-02-01 |  |  |  |
| SDR-2-CON-SL-ZA-3560 |  | Unit Substation Leveling | 20d | 2027-01-10 | 2027-02-01 | SDR-2-CON-SL-ZA-2690 SS |  | 26d |
|  | 2 | **Lean Concrete** |  | 2027-02-02 | 2027-02-24 |  |  |  |
| SDR-2-CON-SL-ZA-3570 |  | Unit Substation Lean Concrete | 19d | 2027-02-02 | 2027-02-24 | SDR-2-CON-SL-ZA-3560 |  | 26d |
|  | 3 | **Installation** |  | 2027-03-14 | 2027-04-05 |  |  |  |

| ID | WBS | Task | Duration | Start | Finish | Predecessors | Complete | Total float |
| --- | --- | --- | --- | --- | --- | --- | --- | --- |
| SDR-2-CON-SL-ZA-3580 |  | Unit Substation Install for Street Lighting | 20d | 2027-03-14 | 2027-04-05 | SDR-2-CON-SL-ZA-3570 FS+10d |  | 26d |
|  | 2 | **MV Network** |  | 2026-07-19 | 2026-12-14 |  |  |  |
|  | 1 | **LOOP 1** |  | 2026-07-19 | 2026-12-14 |  |  |  |
|  | 6 | **Excavation** |  | 2026-07-19 | 2026-11-09 |  |  |  |
| SDR-2-CON-MV-ZA-1280 |  | Excavation Works | 21d | 2026-07-19 A | 2026-11-09 | SDR-2-CON-SL-ZA-1000 FF | 50% | 48d |
|  | 7 | **Pipe laying** |  | 2026-08-04 | 2026-11-09 |  |  |  |
| SDR-2-CON-MV-ZA-1290 |  | Pipe Laying | 21d | 2026-08-04 A | 2026-11-09 | SDR-2-CON-MV-ZA-1280 FF | 50% | 48d |
|  | 8 | **Backfilling** |  | 2026-08-08 | 2026-11-09 |  |  |  |
| SDR-2-CON-MV-ZA-1310 |  | Backfilling Works | 12d | 2026-08-08 A | 2026-11-09 | SDR-2-CON-MV-ZA-1290 FF | 25% | 48d |
|  | 9 | **Pulling Cable** |  | 2026-11-22 | 2026-12-14 |  |  |  |
| SDR-2-CON-MV-ZA-1300 |  | Pulling Cable | 20d | 2026-11-22 | 2026-12-14 | SDR-2-CON-MV-ZA-1290, SDR-2-CON-MV-ZA-1310 FS+10d |  | 48d |
|  | 2 | **LOOP 2** |  | 2026-08-01 | 2026-12-14 |  |  |  |
|  | 6 | **Excavation** |  | 2026-08-01 | 2026-11-09 |  |  |  |
| SDR-2-CON-MV-ZA-1320 |  | Excavation Works | 21d | 2026-08-01 A | 2026-11-09 | SDR-2-CON-MV-ZA-1280 FF | 50% | 52d |
|  | 7 | **Pipe laying** |  | 2026-08-04 | 2026-11-09 |  |  |  |
| SDR-2-CON-MV-ZA-1330 |  | Pipe Laying | 20d | 2026-08-04 A | 2026-11-09 | SDR-2-CON-MV-ZA-1320 FF | 50% | 52d |
|  | 8 | **Backfilling** |  | 2026-08-08 | 2026-11-09 |  |  |  |
| SDR-2-CON-MV-ZA-1350 |  | Backfilling Works | 20d | 2026-08-08 A | 2026-11-09 | SDR-2-CON-MV-ZA-1330 FF | 25% | 52d |
|  | 9 | **Pulling Cable** |  | 2026-11-22 | 2026-12-14 |  |  |  |
| SDR-2-CON-MV-ZA-1340 |  | Pulling Cable | 20d | 2026-11-22 | 2026-12-14 | SDR-2-CON-MV-ZA-1330, SDR-2-CON-MV-ZA-1350 FS+10d |  | 52d |
|  | 3 | **TELECOMMUNICATIONS Works** |  | 2026-07-01 | 2026-12-26 |  |  |  |
|  | 5 | **TELECOMMUNICATION IN ( PH2-G-MCA0 )** |  | 2026-07-01 | 2026-12-26 |  |  |  |
|  | 3 | **Ducts** |  | 2026-07-01 | 2026-12-26 |  |  |  |
|  | 2 | **Excavation** |  | 2026-07-01 | 2026-11-09 |  |  |  |
| SDR-2-CON-TE-ZA-4200 |  | Excavation for telecom crossing ducts & trenches | 21d | 2026-07-01 A | 2026-11-09 | SDR-2-CON-SL-ZA-1000 FF | 53% | 42d |
|  | 5 | **Pipe laying** |  | 2026-08-13 | 2026-11-09 |  |  |  |
| SDR-2-CON-TE-ZA-4210 |  | HDPE Pipes for Telecom Installation | 18d | 2026-08-13 A | 2026-11-09 | SDR-2-CON-TE-ZA-4200 FF | 52% | 42d |
|  | 6 | **Backfilling** |  | 2026-11-10 | 2026-12-02 |  |  |  |
| SDR-2-CON-TE-ZA-4220 |  | Backfilling over HDPE Telecom Pipes | 20d | 2026-11-10 | 2026-12-02 | SDR-2-CON-TE-ZA-4210 |  | 42d |
|  | 7 | **Pulling Cable** |  | 2026-12-03 | 2026-12-26 |  |  |  |
| SDR-2-CON-TE-ZA-4270 |  | Pulling Cable | 20d | 2026-12-03 | 2026-12-26 | SDR-2-CON-TE-ZA-4220 |  | 42d |
|  | 4 | **Manholes** |  | 2026-08-15 | 2026-12-02 |  |  |  |
|  | 1 | **Excavation** |  | 2026-08-15 | 2026-11-09 |  |  |  |
| SDR-2-CON-TE-ZA-4230 |  | Excavation for Telecom Manholes | 21d | 2026-08-15 A | 2026-11-09 | SDR-2-CON-TE-ZA-4200 FF | 60% | 62d |
|  | 2 | **Bedding Work** |  | 2026-08-24 | 2026-11-09 |  |  |  |
| SDR-2-CON-TE-ZA-4280 |  | Sand bedding for Telecom Manhole | 17d | 2026-08-24 A | 2026-11-09 | SDR-2-CON-TE-ZA-4230 FF | 25% | 62d |
|  | 3 | **Install Manholes** |  | 2026-08-15 | 2026-11-09 |  |  |  |
| SDR-2-CON-TE-ZA-4240 |  | Installation of Telecom Manhole | 19d | 2026-08-15 A | 2026-11-09 | SDR-2-CON-TE-ZA-4230 FF, SDR-2-CON-TE-ZA-4280 FF | 50% | 62d |
|  | 4 | **Testting** |  | 2026-09-02 | 2026-11-09 |  |  |  |
| SDR-2-CON-TE-ZA-4250 |  | Telecom Manhole finishing works | 7d | 2026-09-02 A | 2026-11-09 | SDR-2-CON-TE-ZA-4240 FF | 25% | 62d |
|  | 5 | **Backfilling** |  | 2026-11-10 | 2026-12-02 |  |  |  |
| SDR-2-CON-TE-ZA-4260 |  | Backfilling over Telecom Manhole | 20d | 2026-11-10 | 2026-12-02 | SDR-2-CON-TE-ZA-4250 |  | 62d |
|  | 6 | **TELECOMMUNICATION IN ( PH2-G-MCE0 )** |  | 2026-07-06 | 2026-12-12 |  |  |  |
|  | 3 | **Ducts** |  | 2026-07-06 | 2026-11-09 |  |  |  |
|  | 2 | **Excavation** |  | 2026-07-06 | 2026-07-20 |  |  |  |
| SDR-2-CON-TE-ZA-4290 |  | Excavation for telecom crossing ducts & trenches | 21d | 2026-07-06 A | 2026-07-20 A | SDR-2-CON-SL-ZA-1000 SS | 100% |  |
|  | 5 | **Pipe laying** |  | 2026-07-16 | 2026-11-09 |  |  |  |
| SDR-2-CON-TE-ZA-4300 |  | HDPE Pipes for Telecom Installation | 20d | 2026-07-16 A | 2026-11-09 | SDR-2-CON-TE-ZA-4290 | 50% | 76d |
|  | 6 | **Backfilling** |  | 2026-07-20 | 2026-11-09 |  |  |  |
| SDR-2-CON-TE-ZA-4310 |  | Backfilling over HDPE Telecom Pipes | 20d | 2026-07-20 A | 2026-11-09 | SDR-2-CON-TE-ZA-4300 FF | 50% | 76d |
|  | 7 | **Pulling Cable** |  | 2026-07-16 | 2026-11-09 |  |  |  |
| SDR-2-CON-TE-ZA-4360 |  | Pulling Cable | 20d | 2026-07-16 A | 2026-11-09 | SDR-2-CON-TE-ZA-4310 FF | 50% | 76d |
|  | 4 | **Manholes** |  | 2026-08-15 | 2026-12-12 |  |  |  |
|  | 1 | **Excavation** |  | 2026-08-15 | 2026-11-09 |  |  |  |
| SDR-2-CON-TE-ZA-4320 |  | Excavation for Telecom Manholes | 21d | 2026-08-15 A | 2026-11-09 | SDR-2-CON-TE-ZA-4290 SS | 55% | 54d |
|  | 2 | **Bedding Work** |  | 2026-08-17 | 2026-11-09 |  |  |  |
| SDR-2-CON-TE-ZA-4370 |  | Sand bedding for Telecom Manhole | 15d | 2026-08-17 A | 2026-11-09 | SDR-2-CON-TE-ZA-4320 FF | 50% | 54d |
|  | 3 | **Install Manholes** |  | 2026-08-19 | 2026-11-09 |  |  |  |
| SDR-2-CON-TE-ZA-4330 |  | Installation of Telecom Manhole | 19d | 2026-08-19 A | 2026-11-09 | SDR-2-CON-TE-ZA-4320 FF, SDR-2-CON-TE-ZA-4370 FF | 50% | 54d |
|  | 4 | **Testting** |  | 2026-11-10 | 2026-11-17 |  |  |  |
| SDR-2-CON-TE-ZA-4340 |  | Telecom Manhole finishing works | 7d | 2026-11-10 | 2026-11-17 | SDR-2-CON-TE-ZA-4330 |  | 54d |
|  | 5 | **Backfilling** |  | 2026-11-18 | 2026-12-12 |  |  |  |
| SDR-2-CON-TE-ZA-4350 |  | Backfilling over Telecom Manhole | 21d | 2026-11-18 | 2026-12-12 | SDR-2-CON-TE-ZA-4340 |  | 54d |
|  | 7 | **TELECOMMUNICATION IN ( PH2-G-MCF0 )** |  | 2026-07-06 | 2026-12-10 |  |  |  |
|  | 3 | **Ducts** |  | 2026-07-06 | 2026-11-09 |  |  |  |
|  | 2 | **Excavation** |  | 2026-07-06 | 2026-11-09 |  |  |  |
| SDR-2-CON-TE-ZA-4380 |  | Excavation for telecom crossing ducts & trenches | 21d | 2026-07-06 A | 2026-11-09 | SDR-2-CON-SL-ZA-1000 FF, SDR-2-CON-TE-ZA-4320 FF | 50% | 71d |
|  | 5 | **Pipe laying** |  | 2026-07-16 | 2026-11-09 |  |  |  |
| SDR-2-CON-TE-ZA-4390 |  | HDPE Pipes for Telecom Installation | 19d | 2026-07-16 A | 2026-11-09 | SDR-2-CON-TE-ZA-4380 FF | 50% | 98d |
|  | 6 | **Backfilling** |  | 2026-08-16 | 2026-11-09 |  |  |  |

| ID | WBS | Task | Duration | Start | Finish | Predecessors | Complete | Total float |
| --- | --- | --- | --- | --- | --- | --- | --- | --- |
| SDR-2-CON-TE-ZA-4400 |  | Backfilling over HDPE Telecom Pipes | 20d | 2026-08-16 A | 2026-11-09 | SDR-2-CON-TE-ZA-4390 FF | 50% | 98d |
|  | 7 | **Pulling Cable** |  | 2026-07-16 | 2026-11-09 |  |  |  |
| SDR-2-CON-TE-ZA-4450 |  | Pulling Cable | 21d | 2026-07-16 A | 2026-11-09 | SDR-2-CON-TE-ZA-4400 FF | 50% | 98d |
|  | 4 | **Manholes** |  | 2026-08-15 | 2026-12-10 |  |  |  |
|  | 1 | **Excavation** |  | 2026-08-15 | 2026-11-09 |  |  |  |
| SDR-2-CON-TE-ZA-4410 |  | Excavation for Telecom Manholes | 21d | 2026-08-15 A | 2026-11-09 | SDR-2-CON-TE-ZA-4380 FF | 56% | 71d |
|  | 2 | **Bedding Work** |  | 2026-08-17 | 2026-11-09 |  |  |  |
| SDR-2-CON-TE-ZA-4460 |  | Sand bedding for Telecom Manhole | 20d | 2026-08-17 A | 2026-11-09 | SDR-2-CON-TE-ZA-4410 FF | 50% | 71d |
|  | 3 | **Install Manholes** |  | 2026-08-19 | 2026-11-09 |  |  |  |
| SDR-2-CON-TE-ZA-4420 |  | Installation of Telecom Manhole | 19d | 2026-08-19 A | 2026-11-09 | SDR-2-CON-TE-ZA-4410 FF, SDR-2-CON-TE-ZA-4460 FF | 50% | 71d |
|  | 4 | **Testting** |  | 2026-11-10 | 2026-11-17 |  |  |  |
| SDR-2-CON-TE-ZA-4430 |  | Telecom Manhole finishing works | 7d | 2026-11-10 | 2026-11-17 | SDR-2-CON-TE-ZA-4420 |  | 71d |
|  | 5 | **Backfilling** |  | 2026-11-18 | 2026-12-10 |  |  |  |
| SDR-2-CON-TE-ZA-4440 |  | Backfilling over Telecom Manhole | 20d | 2026-11-18 | 2026-12-10 | SDR-2-CON-TE-ZA-4430 |  | 71d |
|  | 4 | **TELECOMMUNICATION IN ( PH2-G-MCG0 )** |  | 2026-07-06 | 2026-12-23 |  |  |  |
|  | 3 | **Ducts** |  | 2026-07-06 | 2026-11-09 |  |  |  |
|  | 2 | **Excavation** |  | 2026-07-06 | 2026-11-09 |  |  |  |
| SDR-2-CON-TE-ZA-4470 |  | Excavation for telecom crossing ducts & trenches | 21d | 2026-07-06 A | 2026-11-09 | SDR-2-CON-SL-ZA-1000 FF | 50% | 66d |
|  | 5 | **Pipe laying** |  | 2026-07-15 | 2026-11-09 |  |  |  |
| SDR-2-CON-TE-ZA-4480 |  | HDPE Pipes for Telecom Installation | 18d | 2026-07-15 A | 2026-11-09 | SDR-2-CON-TE-ZA-4470 FF | 55% | 66d |
|  | 6 | **Backfilling** |  | 2026-08-16 | 2026-11-09 |  |  |  |
| SDR-2-CON-TE-ZA-4490 |  | Backfilling over HDPE Telecom Pipes | 20d | 2026-08-16 A | 2026-11-09 | SDR-2-CON-TE-ZA-4480 FF | 55% | 66d |
|  | 7 | **Pulling Cable** |  | 2026-07-14 | 2026-11-09 |  |  |  |
| SDR-2-CON-TE-ZA-4540 |  | Pulling Cable | 20d | 2026-07-14 A | 2026-11-09 | SDR-2-CON-TE-ZA-4490 FF | 55% | 66d |
|  | 4 | **Manholes** |  | 2026-08-15 | 2026-12-23 |  |  |  |
|  | 1 | **Excavation** |  | 2026-08-15 | 2026-11-09 |  |  |  |
| SDR-2-CON-TE-ZA-4500 |  | Excavation for Telecom Manholes | 21d | 2026-08-15 A | 2026-11-09 | SDR-2-CON-TE-ZA-4470 FF | 76% | 109d |
|  | 2 | **Bedding Work** |  | 2026-08-17 | 2026-11-09 |  |  |  |
| SDR-2-CON-TE-ZA-4550 |  | Sand bedding for Telecom Manhole | 15d | 2026-08-17 A | 2026-11-09 | SDR-2-CON-TE-ZA-4500 FF | 75% | 109d |
|  | 3 | **Install Manholes** |  | 2026-08-19 | 2026-11-09 |  |  |  |
| SDR-2-CON-TE-ZA-4510 |  | Installation of Telecom Manhole | 20d | 2026-08-19 A | 2026-11-09 | SDR-2-CON-TE-ZA-4500 FF, SDR-2-CON-TE-ZA-4550 FF | 75% | 109d |
|  | 4 | **Testting** |  | 2026-11-10 | 2026-11-17 |  |  |  |
| SDR-2-CON-TE-ZA-4520 |  | Telecom Manhole finishing works | 7d | 2026-11-10 | 2026-11-17 | SDR-2-CON-TE-ZA-4510 |  | 109d |
|  | 5 | **Backfilling** |  | 2026-11-30 | 2026-12-23 |  |  |  |
| SDR-2-CON-TE-ZA-4530 |  | Backfilling over Telecom Manhole | 21d | 2026-11-30 | 2026-12-23 | SDR-2-CON-TE-ZA-4520 FS+10d |  | 109d |
|  | LI | **Landscape & Irrigation Works** |  | 2026-08-01 | 2027-07-05 |  |  |  |
|  | ZA | **ZONE A** |  | 2026-08-01 | 2027-07-05 |  |  |  |
|  | 2 | **IRRIGATION WORKS** |  | 2026-08-01 | 2027-07-05 |  |  |  |
|  | 1 | **IRRIGATION WORKS IN ( PH2-COL-MC10 )** |  | 2026-08-01 | 2027-07-05 |  |  |  |
|  | 7 | **Pre install** |  | 2026-08-01 | 2027-05-13 |  |  |  |
| SDR-2-CON-IR-ZA-1000 |  | Pre Install for irrigation Works | 19d | 2026-08-01 A | 2027-05-13 | SDR-2-CON-SE-ZA-1490, SDR-2-CON-SE-ZA-1550, SDR-2-CON-SE-ZA-1560, SDR-2-CON-SE-ZA-1620, SDR-2-CON-SE-ZA-1590, SDR-2-CON-SE-ZA-1650, SDR-2-CON-SE-ZA-1660, SDR-2-CON-SE-ZA-1720, SDR-2-CON-SE-ZA-1690, SDR-2-CON-SE-ZA-1750, SDR-2-CON-SE-ZA-1760, SDR-2-CON-SE-ZA-1820, SDR-2-CON-SE-ZA-1790, SDR-2-CON-SE-ZA-1850, SDR-2-CON-SE-ZA-1860, SDR-2-CON-SE-ZA-1920, SDR-2-CON-SE-ZA-1890, SDR-2-CON-SE-ZA-1950, SDR-2-CON-SE-ZA-1960, SDR-2-CON-SE-ZA-2020, SDR-2-CON-SE-ZA-1990, SDR-2-CON-SE-ZA-2050, SDR-2-CON-SE-ZA-2060, SDR-2-CON-SE-ZA-2120, SDR-2-CON-SE-ZA-2070, SDR-2-CON-SE-ZA-2080, SDR-2-CON-SE-ZA-2130, SDR-2-CON-SE-ZA-2090, SDR-2-CON-SE-ZA-2150, SDR-2-CON-SE-ZA-2100, SDR-2-CON-SE-ZA-2140, SDR-2-CON-SE-ZA-2160, SDR-2-CON-SE-ZA-2220, SDR-2-CON-SE-ZA-2170, SDR-2-CON-SE-ZA-2230, SDR-2-CON-SE-ZA-2190, SDR-2-CON-SE-ZA-2250, SDR-2-CON-SE-ZA-2200, SDR-2-CON-SE-ZA-2240, SDR-2-CON-SE-ZA-2260, SDR-2-CON-SE-ZA-2320, SDR-2-CON-SE-ZA-2270, SDR-2-CON-SE-ZA-2280, SDR-2-CON-SE-ZA-2330, SDR-2-CON-SE-ZA-2290, SDR-2-CON-SE-ZA-2350, SDR-2-CON-SE-ZA-2300, SDR-2-CON-SE-ZA-2340, SDR-2-CON-SE-ZA-2360, SDR-2-CON-SE-ZA-2420, SDR-2-CON-SE-ZA-2370, SDR-2-CON-SE-ZA-2380, SDR-2-CON-SE-ZA-2430, SDR-2-CON-SE-ZA-2390, SDR-2-CON-SE-ZA-2450, SDR-2-CON-SE-ZA-2400, SDR-2-CON-SE-ZA-2440, SDR-2-CON-PW-ZG-1000, SDR-2-CON-PW-ZA-2910, SDR-2-CON-PW-ZA-3010, SDR-2-CON-PW-ZA-3020, SDR-2-CON-PW-ZA-3110, SDR-2-CON-PW-ZA-3120, SDR-2-CON-PW-ZA-2560, SDR-2-CON-TE-ZA-4290, SDR-2-CON-RW-ZA-1720, SDR-2-CON-RW-ZA-1720 FF, SDR-2-CON-ST-ZA-6120, SDR-2-CON-SE-ZA-1010 FF, SDR-2-CON-SE-ZA-1020 FF, SDR-2-CON-SE-ZA-1040 FF, SDR-2-CON-SE-ZA-1050 FF, SDR-2-CON-SE-ZA-1470 FF, SDR-2-CON-SE-ZA-1480 FF, SDR-2-CON-SE-ZA-1500 FF, SDR-2-CON-SE-ZA-1510 FF, SDR-2-CON-SE-ZA-1570 FF, SDR-2-CON-SE-ZA-1580 FF, SDR-2-CON-SE-ZA-1600 FF, SDR-2-CON-SE-ZA-1610 FF, SDR-2-CON-SE-ZA-1670 FF, SDR-2-CON-SE-ZA-1680 FF, SDR-2-CON-SE-ZA-1700 FF, SDR-2-CON-SE-ZA-1710 FF, SDR-2-CON-SE-ZA-1770 FF, SDR-2-CON-SE-ZA-1780 FF, SDR-2-CON-SE-ZA-1800 FF, SDR-2-CON-SE-ZA-1810 FF, SDR-2-CON-SE-ZA-1870 FF, SDR-2-CON-SE-ZA-1880 FF, SDR-2-CON-SE-ZA-1900 FF, SDR-2-CON-SE-ZA-1910 FF, SDR-2-CON-SE-ZA-1970 FF, SDR-2-CON-SE-ZA-2000 FF, SDR-2-CON-SE-ZA-2110 FF, SDR-2-CON-SE-ZA-2180 FF, SDR-2-CON-SE-ZA-2210 FF, SDR-2-CON-SE-ZA-2310 FF, SDR-2-CON-SE-ZA-2410 FF, SDR-2-CON-TS-ZA-3100 FF, SDR-2-CON-TS-ZA-3130 FF, SDR-2-CON-TS-ZA-3110 FF, SDR-2-CON-TS-ZA-3120 FF, SDR-2-CON-TS-ZA-3140 FF, SDR-2-CON-TS-ZA-2300 FF, SDR-2-CON-TS-ZA-2380 FF, SDR-2-CON-TS-ZA-2310 FF, SDR-2-CON-TS-ZA-2400 FF, SDR-2-CON-TS-ZA-2900 FF, SDR-2-CON-TS-ZA-3000 FF, SDR-2-CON-TS-ZA-2500 FF, SDR-2-CON-PW-ZA-1000 FF, SDR-2-CON-PW-ZA-2200 FF, SDR-2-CON-PW-ZA-1010 FF, SDR-2-CON-PW-ZA-2260 FF, SDR-2-CON-PW-ZA-2340 FF, SDR-2-CON-PW-ZA-2270 FF, SDR-2-CON-PW-ZA-2330 FF, SDR-2-CON-PW-ZA-2350 FF, SDR-2-CON-PW-ZG-1500 FF, SDR-2-CON-PW-ZG-1010 FF, SDR-2-CON-PW-ZA-2940 FF, SDR-2-CON-PW-ZA-2920 FF, SDR-2-CON-PW-ZA-3040 FF, SDR-2-CON-PW-ZA-3140 FF, SDR-2-CON-PW-ZA-2640 FF, SDR-2-CON-PW-ZA-2570 FF, SDR-2-CON-SL-ZA-2870 FF, SDR-2-CON-SL-ZA-2880 FF, SDR-2-CON-SL-ZA-1300 FF, SDR-2-CON-SL-ZA-1310 FF, SDR-2-CON-SL-ZA-2950 FF, SDR-2-CON-SL-ZA-2960 FF, SDR-2-CON-SL-ZA-2990 FF, SDR-2-CON-SL-ZA-3000 FF, SDR-2-CON-SL-ZA-3030 FF, SDR-2-CON-SL-ZA-3040 FF, SDR-2-CON-SL-ZA-3070 FF, SDR-2-CON-SL-ZA-3080 FF, SDR-2-CON-SL-ZA-3110 FF, SDR-2-CON-SL-ZA-3120 FF, SDR-2-CON-SL-ZA-3150 FF, SDR-2-CON-SL-ZA-3160 FF, SDR-2-CON-SL-ZA-3190 FF, SDR-2-CON-SL-ZA-3200 FF, SDR-2-CON-SL-ZA-2910 FF, SDR-2-CON-SL-ZA-2920 FF, SDR-2-CON-MV-ZA-1000 FF, SDR-2-CON-MV-ZA-1070 FF, SDR-2-CON-MV-ZA-1150 FF, SDR-2-CON-MV-ZA-1160 FF, SDR-2-CON-MV-ZA-1170 FF, SDR-2-CON-MV-ZA-1200 FF, SDR-2-CON-MV-ZA-1210 FF, SDR-2-CON-MV-ZA-1240 FF, SDR-2-CON-MV-ZA-1250 FF, SDR-2-CON-TE-ZA-1030 FF, SDR-2-CON-TE-ZA-3220 FF, SDR-2-CON-TE-ZA-3230 FF, SDR-2-CON-TE-ZA-3240 FF, SDR-2-CON-TE-ZA-3290 FF, SDR-2-CON-TE-ZA-3250 FF, SDR-2-CON-TE-ZA-3330 FF, SDR-2-CON-TE-ZA-3490 FF, SDR-2-CON-TE-ZA-3510 FF, SDR-2-CON-TE-ZA-3560 FF, SDR-2-CON-TE-ZA-3570 FF, SDR-2-CON-TE-ZA-3580 FF, SDR-2-CON-TE-ZA-3600 FF, SDR-2-CON-TE-ZA-3650 FF, SDR-2-CON-TE-ZA-3660 FF, SDR-2-CON-TE-ZA-3670 FF, SDR-2-CON-TE-ZA-3750 FF, SDR-2-CON-TE-ZA-3760 FF, SDR-2-CON-TE-ZA-3840 FF, SDR-2-CON-TE-ZA-3850 FF, SDR-2-CON-TE-ZA-3930 FF, SDR-2-CON-TE-ZA-4020 FF, SDR-2-CON-TE-ZA-4110 FF, SDR-2-CON-TE-ZA-4120 FF, SDR-2-CON-TE-ZA-4140 FF, SDR-2-CON-TE-ZA-4190 FF, SDR-2-CON-TE-ZA-4150 FF, SDR-2-CON-SL-ZA-3230 FF, SDR-2-CON-SL-ZA-3240 FF, SDR-2-CON-SL-ZA-3270 FF, SDR-2-CON-SL-ZA-3280 FF, SDR-2-CON-SL-ZA-3310 FF, SDR-2-CON-SL-ZA-3320 FF, SDR-2-CON-SL-ZA-3350 FF, SDR-2-CON-SL-ZA-3360 FF, SDR-2-CON-SL-ZA-3390 FF, SDR-2-CON-SL-ZA-3400 FF, SDR-2-CON-SL-ZA-3420 FF, SDR-2-CON-SL-ZA-3410 FF, SDR-2-CON-MV-ZA-1280 FF, SDR-2-CON-MV-ZA-1290 FF, SDR-2-CON-MV-ZA-1310 FF, SDR-2-CON-MV-ZA-1320 FF, SDR-2-CON-MV-ZA-1330 FF, SDR-2-CON-MV-ZA-1350 FF, SDR-2-CON-TE-ZA-4200 FF, SDR-2-CON-TE-ZA-4210 FF, SDR-2-CON-TE-ZA-4230 FF, SDR-2-CON-TE-ZA-4280 FF, SDR-2-CON-TE-ZA-4240 FF, SDR-2-CON-TE-ZA-4250 FF, SDR-2-CON-TE-ZA-4300 FF, SDR-2-CON-TE-ZA-4310 FF, SDR-2-CON-TE-ZA-4360 FF, SDR-2-CON-TE-ZA-4320 FF, SDR-2-CON-TE-ZA-4370 FF, SDR-2-CON-TE-ZA-4330 FF, SDR-2-CON-TE-ZA-4380 FF, SDR-2-CON-TE-ZA-4390 FF, SDR-2-CON-TE-ZA-4400 FF, SDR-2-CON-TE-ZA-4450 FF, SDR-2-CON-TE-ZA-4410 FF, SDR-2-CON-TE-ZA-4460 FF, SDR-2-CON-TE-ZA-4420 FF, SDR-2-CON-TE-ZA-4470 FF, SDR-2-CON-TE-ZA-4480 FF, SDR-2-CON-TE-ZA-4490 FF, SDR-2-CON-TE-ZA-4540 FF, SDR-2-CON-TE-ZA-4500 FF, SDR-2-CON-TE-ZA-4550 FF, SDR-2-CON-TE-ZA-4510 FF, SDR-2-CON-CC-ZA-1000 FF, SDR-2-CON-CC-ZA-1090 FF, SDR-2-CON-CC-ZA-1250 FF, SDR-2-CON-CC-ZA-1390 FF, SDR-2-CON-CC-ZA-1670 FF, SDR-2-CON-CC-ZA-1700 FF, SDR-2-CON-CC-ZA-1750 FF, SDR-2-CON-CC-ZA-1790 FF, SDR-2-CON-CC-ZA-1830 FF, SDR-2-CON-ST-ZA-4020 FF, SDR-2-CON-SE-ZA-1430 FF, SDR-2-CON-SE-ZA-1440 FF, SDR-2-CON-SE-ZA-1530 FF, SDR-2-CON-SE-ZA-1540 FF, SDR-2-CON-SE-ZA-1630 FF, SDR-2-CON-SE-ZA-1730 FF, SDR-2-CON-SE-ZA-1740 FF, SDR-2-CON-SE-ZA-1830 FF, SDR-2-CON-SE-ZA-1840 FF, SDR-2-CON-SE-ZA-1930 FF, SDR-2-CON-SE-ZA-1940 FF, SDR-2-CON-SE-ZA-1980 FF, SDR-2-CON-SE-ZA-2030 FF, SDR-2-CON-SE-ZA-2010 FF, SDR-2-CON-SE-ZA-2040 FF, SDR-2-CON-TS-ZA-1900 FF, SDR-2-CON-TS-ZA-1010 FF, SDR-2-CON-TS-ZA-1080 FF, SDR-2-CON-TS-ZA-1910 FF, SDR-2-CON-TS-ZA-1040 FF, SDR-2-CON-TS-ZA-1020 FF, SDR-2-CON-TS-ZA-1050 FF, SDR-2-CON-TS-ZA-1060 FF, SDR-2-CON-TS-ZA-1070 FF, SDR-2-CON-TS-ZA-2200 FF, SDR-2-CON-TS-ZA-2280 FF, SDR-2-CON-TS-ZA-2210 FF, SDR-2-CON-TS-ZA-2270 FF, SDR-2-CON-TS-ZA-2290 FF, SDR-2-CON-TS-ZA-2230 FF, SDR-2-CON-TS-ZA-2240 FF, SDR-2-CON-TS-ZA-2250 FF, SDR-2-CON-TS-ZA-2260 FF, SDR-2-CON-TS-ZA-1180 FF, SDR-2-CON-TS-ZA-1920 FF, SDR-2-CON-TS-ZA-1190 FF, SDR-2-CON-TS-ZA-1260 FF, SDR-2-CON-TS-ZA-1930 FF, SDR-2-CON-TS-ZA-2010 FF, SDR-2-CON-TS-ZA-2000 FF, SDR-2-CON-TS-ZA-2020 FF, SDR-2-CON-TS-ZA-2030 FF, SDR-2-CON-TS-ZA-2040 FF, SDR-2-CON-TS-ZA-1270 FF, SDR-2-CON-TS-ZA-1940 FF, SDR-2-CON-TS-ZA-1280 FF, SDR-2-CON-TS-ZA-1350 FF, SDR-2-CON-TS-ZA-1950 FF, SDR-2-CON-TS-ZA-2060 FF, SDR-2-CON-TS-ZA-2050 FF, SDR-2-CON-TS-ZA-2660 FF, SDR-2-CON-TS-ZA-2650 FF, SDR-2-CON-TS-ZA-2670 FF, SDR-2-CON-TS-ZA-2680 FF, SDR-2-CON-TS-ZA-2690 FF, SDR-2-CON-TS-ZA-2700 FF, SDR-2-CON-TS-ZA-2730 FF, SDR-2-CON-TS-ZA-2710 FF, SDR-2-CON-TS-ZA-2720 FF, SDR-2-CON-TS-ZA-2740 FF, SDR-2-CON-TS-ZA-2760 FF, SDR-2-CON-TS-ZA-2750 FF, SDR-2-CON-TS-ZA-2770 FF, SDR-2-CON-TS-ZA-2780 FF, SDR-2-CON-TS-ZA-2800 FF, SDR-2-CON-TS-ZA-2830 FF, SDR-2-CON-TS-ZA-2810 FF, SDR-2-CON-TS-ZA-2820 FF, SDR-2-CON-TS-ZA-2840 FF, SDR-2-CON-TS-ZA-2860 FF, SDR-2-CON-TS-ZA-2850 FF, SDR-2-CON-TS-ZA-2870 FF, SDR-2-CON-TS-ZA-2880 FF, SDR-2-CON-TS-ZA-2890 FF, SDR-2-CON-TS-ZA-1630 FF, SDR-2-CON-TS-ZA-1960 FF, SDR-2-CON-TS-ZA-1640 FF, SDR-2-CON-TS-ZA-1710 FF, SDR-2-CON-TS-ZA-1970 FF, SDR-2-CON-TS-ZA-2110 FF, SDR-2-CON-TS-ZA-2100 FF, SDR-2-CON-TS-ZA-2120 FF, SDR-2-CON-TS-ZA-2130 FF, SDR-2-CON-TS-ZA-2140 FF, SDR-2-CON-TS-ZA-1720 FF, SDR-2-CON-TS-ZA-1980 FF, SDR-2-CON-TS-ZA-1730 FF, SDR-2-CON-TS-ZA-1800 FF, SDR-2-CON-TS-ZA-1990 FF, SDR-2-CON-TS-ZA-2160 FF, SDR-2-CON-TS-ZA-2150 FF, SDR-2-CON-TS-ZA-2170 FF, SDR-2-CON-TS-ZA-2180 FF, SDR-2-CON-TS-ZA-2190 FF, SDR-2-CON-TS-ZA-3160 FF, SDR-2-CON-TS-ZA-3150 FF, SDR-2-CON-TS-ZA-3170 FF, SDR-2-CON-TS-ZA-3180 FF, SDR-2-CON-TS-ZA-3190 FF, SDR-2-CON-TS-ZA-2370 FF, SDR-2-CON-TS-ZA-2390 FF, SDR-2-CON-TS-ZA-2330 FF, SDR-2-CON-TS-ZA-2320 FF, SDR-2-CON-TS-ZA-2340 FF, SDR-2-CON-TS-ZA-2350 FF, SDR-2-CON-TS-ZA-2360 FF, SDR-2-CON-TS-ZA-2430 FF, SDR-2-CON-TS-ZA-2410 FF, SDR-2-CON-TS-ZA-2420 FF, SDR-2-CON-TS-ZA-2440 FF, SDR-2-CON-TS-ZA-2460 FF, SDR-2-CON-TS-ZA-2450 FF, SDR-2-CON-TS-ZA-2930 FF, SDR-2-CON-TS-ZA-2910 FF, SDR-2-CON-TS-ZA-2920 FF, SDR-2-CON-TS-ZA-2940 FF, SDR-2-CON-TS-ZA-2960 FF, SDR-2-CON-TS-ZA-3030 FF, SDR-2-CON-TS-ZA-3010 FF, SDR-2-CON-TS-ZA-3020 FF, SDR-2-CON-TS-ZA-3040 FF, SDR-2-CON-TS-ZA-3060 FF, SDR-2-CON-TS-ZA-3050 FF, SDR-2-CON-TS-ZA-2510 FF, SDR-2-CON-TS-ZA-2520 FF, SDR-2-CON-TS-ZA-2560 FF, SDR-2-CON-TS-ZA-2550 FF, SDR-2-CON-TS-ZA-2570 FF, SDR-2-CON-TS-ZA-2580 FF, SDR-2-CON-TS-ZA-2590 FF, SDR-2-CON-PW-ZA-1080 FF, SDR-2-CON-PW-ZA-2210 FF, SDR-2-CON-PW-ZA-1040 FF, SDR-2-CON-PW-ZA-1020 FF, SDR-2-CON-PW-ZA-1050 FF, SDR-2-CON-PW-ZA-2300 FF, SDR-2-CON-PW-ZA-2280 FF, SDR-2-CON-PW-ZA-2310 FF, SDR-2-CON-PW-ZA-2290 FF, SDR-2-CON-PW-ZA-2680 FF, SDR-2-CON-PW-ZA-2660 FF, SDR-2-CON-PW-ZA-2690 FF, SDR-2-CON-PW-ZA-2710 FF, SDR-2-CON-PW-ZA-3260 FF, SDR-2-CON-PW-ZA-3290 FF, SDR-2-CON-PW-ZA-3270 FF, SDR-2-CON-PW-ZA-3280 FF, SDR-2-CON-PW-ZA-3360 FF, SDR-2-CON-PW-ZA-3390 FF, SDR-2-CON-PW-ZA-3370 FF, SDR-2-CON-PW-ZA-3380 FF, SDR-2-CON-PW-ZA-3400 FF, SDR-2-CON-PW-ZA-3460 FF, SDR-2-CON-PW-ZA-3490 FF, SDR-2-CON-PW-ZA-3470 FF, SDR-2-CON-PW-ZA-3480 FF, SDR-2-CON-PW-ZA-3500 FF, SDR-2-CON-PW-ZA-2810 FF, SDR-2-CON-PW-ZA-2840 FF, SDR-2-CON-PW-ZA-2820 FF, SDR-2-CON-PW-ZA-2830 FF, SDR-2-CON-PW-ZA-2880 FF, SDR-2-CON-PW-ZA-2860 FF, SDR-2-CON-PW-ZA-2890 FF, SDR-2-CON-PW-ZA-2360 FF, SDR-2-CON-PW-ZA-2440 FF, SDR-2-CON-PW-ZA-2370 FF, SDR-2-CON-PW-ZA-2430 FF, SDR-2-CON-PW-ZA-2450 FF, SDR-2-CON-PW-ZA-2460 FF, SDR-2-CON-PW-ZA-2540 FF, SDR-2-CON-PW-ZA-2470 FF, SDR-2-CON-PW-ZA-2530 FF, SDR-2-CON-PW-ZG-1080 FF, SDR-2-CON-PW-ZG-1510 FF, SDR-2-CON-PW-ZA-3680 FF, SDR-2-CON-PW-ZA-3660 FF, SDR-2-CON-PW-ZA-3690 FF, SDR-2-CON-PW-ZA-3670 FF, SDR-2-CON-PW-ZA-3700 FF, SDR-2-CON-PW-ZA-2930 FF, SDR-2-CON-PW-ZA-2950 FF, SDR-2-CON-PW-ZA-2980 FF, SDR-2-CON-PW-ZA-2960 FF, SDR-2-CON-PW-ZA-2990 FF, SDR-2-CON-PW-ZA-2970 FF, SDR-2-CON-PW-ZA-3030 FF, SDR-2-CON-PW-ZA-3050 FF, SDR-2-CON-PW-ZA-3080 FF, SDR-2-CON-PW-ZA-3060 FF, SDR-2-CON-PW-ZA-3090 FF, SDR-2-CON-PW-ZA-3070 FF, SDR-2-CON-PW-ZA-3100 FF, SDR-2-CON-PW-ZA-3130 FF, SDR-2-CON-PW-ZA-3150 FF, SDR-2-CON-PW-ZA-3180 FF, SDR-2-CON-PW-ZA-3160 FF, SDR-2-CON-PW-ZA-3190 FF, SDR-2-CON-PW-ZA-3170 FF, SDR-2-CON-PW-ZA-3200 FF, SDR-2-CON-PW-ZA-2630 FF, SDR-2-CON-PW-ZA-2650 FF, SDR-2-CON-PW-ZA-2600 FF, SDR-2-CON-PW-ZA-2580 FF, SDR-2-CON-PW-ZA-2610 FF, SDR-2-CON-PW-ZA-2590 FF, SDR-2-CON-PW-ZA-2620 FF, SDR-2-CON-SL-ZA-2900 FF, SDR-2-CON-SL-ZA-2890 FF, SDR-2-CON-SL-ZA-1410 FF, SDR-2-CON-SL-ZA-1400 FF, SDR-2-CON-SL-ZA-2980 FF, SDR-2-CON-SL-ZA-2970 FF, SDR-2-CON-SL-ZA-3020 FF, SDR-2-CON-SL-ZA-3010 FF, SDR-2-CON-SL-ZA-3060 FF, SDR-2-CON-SL-ZA-3050 FF, SDR-2-CON-SL-ZA-3100 FF, SDR-2-CON-SL-ZA-3090 FF, SDR-2-CON-SL-ZA-3140 FF, SDR-2-CON-SL-ZA-3130 FF, SDR-2-CON-SL-ZA-3180 FF, SDR-2-CON-SL-ZA-3170 FF, SDR-2-CON-SL-ZA-3220 FF, SDR-2-CON-SL-ZA-3210 FF, SDR-2-CON-SL-ZA-2940 FF, SDR-2-CON-SL-ZA-2930 FF, SDR-2-CON-SL-ZA-2650 FF, SDR-2-CON-SL-ZA-2660 FF, SDR-2-CON-SL-ZA-2800 FF, SDR-2-CON-SL-ZA-2670 FF, SDR-2-CON-SL-ZA-2810 FF, SDR-2-CON-SL-ZA-2820 FF, SDR-2-CON-SL-ZA-2830 FF, SDR-2-CON-SL-ZA-2840 FF, SDR-2-CON-SL-ZA-2850 FF, SDR-2-CON-SL-ZA-2860 FF, SDR-2-CON-MV-ZA-1100 FF, SDR-2-CON-MV-ZA-1190 FF, SDR-2-CON-MV-ZA-1180 FF, SDR-2-CON-MV-ZA-1230 FF, SDR-2-CON-MV-ZA-1220 FF, SDR-2-CON-MV-ZA-1270 FF, SDR-2-CON-MV-ZA-1260 FF, SDR-2-CON-TE-ZA-3280 FF, SDR-2-CON-TE-ZA-3260 FF, SDR-2-CON-TE-ZA-3270 FF, SDR-2-CON-TE-ZA-3310 FF, SDR-2-CON-TE-ZA-3320 FF, SDR-2-CON-TE-ZA-3370 FF, SDR-2-CON-TE-ZA-3380 FF, SDR-2-CON-TE-ZA-3340 FF, SDR-2-CON-TE-ZA-3350 FF, SDR-2-CON-TE-ZA-3360 FF, SDR-2-CON-TE-ZA-3500 FF, SDR-2-CON-TE-ZA-3550 FF, SDR-2-CON-TE-ZA-3520 FF, SDR-2-CON-TE-ZA-3530 FF, SDR-2-CON-TE-ZA-3540 FF, SDR-2-CON-TE-ZA-3590 FF, SDR-2-CON-TE-ZA-3640 FF, SDR-2-CON-TE-ZA-3610 FF, SDR-2-CON-TE-ZA-3620 FF, SDR-2-CON-TE-ZA-3630 FF, SDR-2-CON-TE-ZA-3680 FF, SDR-2-CON-TE-ZA-3730 FF, SDR-2-CON-TE-ZA-3690 FF, SDR-2-CON-TE-ZA-3740 FF, SDR-2-CON-TE-ZA-3700 FF, SDR-2-CON-TE-ZA-3710 FF, SDR-2-CON-TE-ZA-3720 FF, SDR-2-CON-TE-ZA-3770 FF, SDR-2-CON-TE-ZA-3820 FF, SDR-2-CON-TE-ZA-3780 FF, SDR-2-CON-TE-ZA-3830 FF, SDR-2-CON-TE-ZA-3790 FF, SDR-2-CON-TE-ZA-3800 FF, SDR-2-CON-TE-ZA-3810 FF, SDR-2-CON-TE-ZA-3860 FF, SDR-2-CON-TE-ZA-3910 FF, SDR-2-CON-TE-ZA-3870 FF, SDR-2-CON-TE-ZA-3920 FF, SDR-2-CON-TE-ZA-3880 FF, SDR-2-CON-TE-ZA-3890 FF, SDR-2-CON-TE-ZA-3900 FF, SDR-2-CON-TE-ZA-3940 FF, SDR-2-CON-TE-ZA-3950 FF, SDR-2-CON-TE-ZA-4000 FF, SDR-2-CON-TE-ZA-3960 FF, SDR-2-CON-TE-ZA-4010 FF, SDR-2-CON-TE-ZA-3970 FF, SDR-2-CON-TE-ZA-3980 FF, SDR-2-CON-TE-ZA-3990 FF, SDR-2-CON-TE-ZA-4030 FF, SDR-2-CON-TE-ZA-4040 FF, SDR-2-CON-TE-ZA-4090 FF, SDR-2-CON-TE-ZA-4050 FF, SDR-2-CON-TE-ZA-4100 FF, SDR-2-CON-TE-ZA-4060 FF, SDR-2-CON-TE-ZA-4070 FF, SDR-2-CON-TE-ZA-4080 FF, SDR-2-CON-TE-ZA-4130 FF, SDR-2-CON-TE-ZA-4180 FF, SDR-2-CON-TE-ZA-4160 FF, SDR-2-CON-TE-ZA-4170 FF, SDR-2-CON-SL-ZA-3260 FF, SDR-2-CON-SL-ZA-3250 FF, SDR-2-CON-SL-ZA-3300 FF, SDR-2-CON-SL-ZA-3290 FF, SDR-2-CON-SL-ZA-3340 FF, SDR-2-CON-SL-ZA-3330 FF, SDR-2-CON-SL-ZA-3380 FF, SDR-2-CON-SL-ZA-3370 FF, SDR-2-CON-SL-ZA-3430 FF, SDR-2-CON-SL-ZA-3440 FF, SDR-2-CON-SL-ZA-3450 FF, SDR-2-CON-SL-ZA-3460 FF, SDR-2-CON-SL-ZA-3470 FF, SDR-2-CON-SL-ZA-3480 FF, SDR-2-CON-SL-ZA-3490 FF, SDR-2-CON-SL-ZA-3500 FF, SDR-2-CON-SL-ZA-3510 FF, SDR-2-CON-SL-ZA-3520 FF, SDR-2-CON-SL-ZA-3530 FF, SDR-2-CON-SL-ZA-3540 FF, SDR-2-CON-SL-ZA-3550 FF, SDR-2-CON-MV-ZA-1300 FF, SDR-2-CON-MV-ZA-1340 FF, SDR-2-CON-TE-ZA-4220 FF, SDR-2-CON-TE-ZA-4270 FF, SDR-2-CON-TE-ZA-4260 FF, SDR-2-CON-TE-ZA-4340 FF, SDR-2-CON-TE-ZA-4350 FF, SDR-2-CON-TE-ZA-4430 FF, SDR-2-CON-TE-ZA-4440 FF, SDR-2-CON-TE-ZA-4520 FF, SDR-2-CON-TE-ZA-4530 FF, SDR-2-CON-CC-ZA-1260 FF, SDR-2-CON-CC-ZA-1270 FF, SDR-2-CON-CC-ZA-1620 FF, SDR-2-CON-CC-ZA-1630 FF, SDR-2-CON-CC-ZA-1640 FF, SDR-2-CON-CC-ZA-1650 FF, SDR-2-CON-CC-ZA-1660 FF, SDR-2-CON-CC-ZA-1720 FF, SDR-2-CON-CC-ZA-1730 FF, SDR-2-CON-CC-ZA-1760 FF, SDR-2-CON-CC-ZA-1770 FF, SDR-2-CON-CC-ZA-1780 FF, SDR-2-CON-CC-ZA-1800 FF, SDR-2-CON-CC-ZA-1810 FF, SDR-2-CON-CC-ZA-1820 FF, SDR-2-CON-CC-ZA-1840 FF, SDR-2-CON-CC-ZA-1850 FF, SDR-2-CON-CC-ZA-1860 FF, SDR-2-CON-CC-ZG-1500 FF, SDR-2-CON-CC-ZG-1540 FF, SDR-2-CON-CC-ZG-1550 FF, SDR-2-CON-CC-ZG-1510 FF, SDR-2-CON-CC-ZG-1560 FF, SDR-2-CON-CC-ZG-1570 FF, SDR-2-CON-CC-ZG-1580 FF, SDR-2-CON-CC-ZG-1520 FF, SDR-2-CON-CC-ZG-1590 FF, SDR-2-CON-CC-ZG-1530 FF, SDR-2-CON-CC-ZG-1600 FF, SDR-2-CON-CC-ZG-1610 FF, SDR-2-CON-CC-ZG-1620 FF, SDR-2-CON-CC-ZG-1630 FF, SDR-2-CON-CC-ZG-1640 FF, SDR-2-CON-CC-ZG-1650 FF, SDR-2-MILS-1050 FF, SDR-2-CON-ST-ZA-5970 FF, SDR-2-CON-SE-ZA-1000, SDR-2-CON-SE-ZA-1420, SDR-2-CON-SE-ZA-1030, SDR-2-CON-SE-ZA-1450, SDR-2-CON-SE-ZA-1460, SDR-2-CON-SE-ZA-1520 | 15% | 0d |
|  | 8 | **install** |  | 2027-06-21 | 2027-07-05 |  |  |  |
| SDR-2-CON-IR-ZA-1010 |  | Installation of HDPE Pipe | 13d | 2027-06-21 | 2027-07-05 | SDR-2-TC-PW-1050 SS, SDR-2-CON-PW-ZA-3500, SDR-2-CON-PW-ZA-3600, SDR-2-CON-PW-ZA-2850, SDR-2-CON-PW-ZA-2450, SDR-2-CON-PW-ZG-1510, SDR-2-CON-PW-ZA-2950, SDR-2-CON-PW-ZA-3050, SDR-2-CON-PW-ZA-3150, SDR-2-CON-IR-ZA-1000 |  | 0d |
|  | 9 | **Finishing** |  | 2027-06-23 | 2027-07-04 |  |  |  |
| SDR-2-CON-IR-ZA-1020 |  | Finishing Works for irrigation | 10d | 2027-06-23 | 2027-07-04 | SDR-2-CON-IR-ZA-1010 SS+2d |  | 1d |
|  | 10 | **Repairs** |  | 2027-06-23 | 2027-06-27 |  |  |  |
| SDR-2-CON-IR-ZA-1030 |  | Repair for irrigation Works | 4d | 2027-06-23 | 2027-06-27 | SDR-2-CON-IR-ZA-1020 SS |  | 7d |
|  | 2 | **IRRIGATION WORKS IN ( PH2-COL-MC20 )** |  | 2027-05-13 | 2027-06-29 |  |  |  |
|  | 7 | **Pre install** |  | 2027-05-13 | 2027-06-10 |  |  |  |
| SDR-2-CON-IR-ZA-2120 |  | Pre Install for irrigation Works | 20d | 2027-05-13 | 2027-06-10 | SDR-2-CON-IR-ZA-1000 SS, SDR-2-CON-ST-ZA-4020 |  | 4d |
|  | 8 | **install** |  | 2027-05-31 | 2027-06-13 |  |  |  |
| SDR-2-CON-IR-ZA-2130 |  | Installation of HDPE Pipe | 12d | 2027-05-31 | 2027-06-13 | SDR-2-CON-IR-ZA-2120 SS+10d |  | 4d |
|  | 9 | **Finishing** |  | 2027-06-14 | 2027-06-23 |  |  |  |
| SDR-2-CON-IR-ZA-2140 |  | Finishing Works for irrigation | 9d | 2027-06-14 | 2027-06-23 | SDR-2-CON-IR-ZA-2130 |  | 5d |
|  | 10 | **Repairs** |  | 2027-06-24 | 2027-06-29 |  |  |  |
| SDR-2-CON-IR-ZA-2150 |  | Repair for irrigation Works | 5d | 2027-06-24 | 2027-06-29 | SDR-2-CON-IR-ZA-2140 |  | 5d |
|  | 11 | **IRRIGATION WORKS IN ( PH2-A-MCA0 )** |  | 2027-05-13 | 2027-06-29 |  |  |  |
|  | 7 | **Pre install** |  | 2027-05-13 | 2027-06-01 |  |  |  |
| SDR-2-CON-IR-ZA-2160 |  | Pre Install for irrigation Works | 12d | 2027-05-13 | 2027-06-01 | SDR-2-CON-IR-ZA-1000 SS, SDR-2-CON-ST-ZA-4920 |  | 0d |
|  | 8 | **install** |  | 2027-06-02 | 2027-06-16 |  |  |  |
| SDR-2-CON-IR-ZA-2170 |  | Installation of HDPE Pipe | 13d | 2027-06-02 | 2027-06-16 | SDR-2-CON-IR-ZA-2160 |  | 0d |
|  | 9 | **Finishing** |  | 2027-06-17 | 2027-06-27 |  |  |  |
| SDR-2-CON-IR-ZA-2180 |  | Finishing Works for irrigation | 9d | 2027-06-17 | 2027-06-27 | SDR-2-CON-IR-ZA-2170 |  | 0d |
|  | 10 | **Repairs** |  | 2027-06-28 | 2027-06-29 |  |  |  |
| SDR-2-CON-IR-ZA-2190 |  | Repair for irrigation Works | 2d | 2027-06-28 | 2027-06-29 | SDR-2-CON-IR-ZA-2180 |  | 0d |
|  | 12 | **IRRIGATION WORKS IN ( PH2-A-MCB0 )** |  | 2027-05-13 | 2027-07-04 |  |  |  |
|  | 7 | **Pre install** |  | 2027-05-13 | 2027-06-03 |  |  |  |
| SDR-2-CON-IR-ZA-2200 |  | Pre Install for irrigation Works | 14d | 2027-05-13 | 2027-06-03 | SDR-2-CON-IR-ZA-1000 SS, SDR-2-CON-ST-ZA-4020 |  | 1d |
|  | 8 | **install** |  | 2027-06-05 | 2027-06-17 |  |  |  |
| SDR-2-CON-IR-ZA-2210 |  | Installation of HDPE Pipe | 12d | 2027-06-05 | 2027-06-17 | SDR-2-CON-IR-ZA-2200, SDR-2-CON-ST-ZA-5970 |  | 1d |

| ID | WBS | Task | Duration | Start | Finish | Predecessors | Complete | Total float |
| --- | --- | --- | --- | --- | --- | --- | --- | --- |
|  | 9 | **Finishing** |  | 2027-06-19 | 2027-06-27 |  |  |  |
| SDR-2-CON-IR-ZA-2220 |  | Finishing Works for irrigation | 8d | 2027-06-19 | 2027-06-27 | SDR-2-CON-IR-ZA-2210 |  | 1d |
|  | 10 | **Repairs** |  | 2027-06-28 | 2027-07-04 |  |  |  |
| SDR-2-CON-IR-ZA-2230 |  | Repair for irrigation Works | 6d | 2027-06-28 | 2027-07-04 | SDR-2-CON-IR-ZA-2220 |  | 1d |
|  | 3 | **IRRIGATION WORKS IN ( PH2-A-MCC0 )** |  | 2026-09-28 | 2027-06-29 |  |  |  |
|  | 7 | **Pre install** |  | 2026-09-28 | 2027-06-03 |  |  |  |
| SDR-2-CON-IR-ZA-2240 |  | Pre Install for irrigation Works | 14d | 2026-09-28 A | 2027-06-03 | SDR-2-CON-IR-ZA-1000 SS, SDR-2-CON-ST-ZA-4470 | 25% | 5d |
|  | 8 | **install** |  | 2027-06-05 | 2027-06-19 |  |  |  |
| SDR-2-CON-IR-ZA-2250 |  | Installation of HDPE Pipe | 13d | 2027-06-05 | 2027-06-19 | SDR-2-CON-IR-ZA-2240 |  | 5d |
|  | 9 | **Finishing** |  | 2027-06-16 | 2027-06-27 |  |  |  |
| SDR-2-CON-IR-ZA-2260 |  | Finishing Works for irrigation | 10d | 2027-06-16 | 2027-06-27 | SDR-2-CON-IR-ZA-2250 SS+10d |  | 5d |
|  | 10 | **Repairs** |  | 2027-06-28 | 2027-06-29 |  |  |  |
| SDR-2-CON-IR-ZA-2270 |  | Repair for irrigation Works | 2d | 2027-06-28 | 2027-06-29 | SDR-2-CON-IR-ZA-2260 |  | 5d |
|  | 4 | **IRRIGATION WORKS IN ( PH2-A-MCD0 )** |  | 2026-09-24 | 2027-06-20 |  |  |  |
|  | 7 | **Pre install** |  | 2026-09-24 | 2027-06-10 |  |  |  |
| SDR-2-CON-IR-ZA-2280 |  | Pre Install for irrigation Works | 20d | 2026-09-24 A | 2027-06-10 | SDR-2-CON-IR-ZA-1000 SS | 25% | 13d |
|  | 8 | **install** |  | 2026-09-26 | 2027-06-10 |  |  |  |
| SDR-2-CON-IR-ZA-2290 |  | Installation of HDPE Pipe | 13d | 2026-09-26 A | 2027-06-10 | SDR-2-CON-IR-ZA-2280 FF | 25% | 13d |
|  | 9 | **Finishing** |  | 2027-06-12 | 2027-06-15 |  |  |  |
| SDR-2-CON-IR-ZA-2300 |  | Finishing Works for irrigation | 4d | 2027-06-12 | 2027-06-15 | SDR-2-CON-IR-ZA-2290 |  | 13d |
|  | 10 | **Repairs** |  | 2027-06-16 | 2027-06-20 |  |  |  |
| SDR-2-CON-IR-ZA-2310 |  | Repair for irrigation Works | 4d | 2027-06-16 | 2027-06-20 | SDR-2-CON-IR-ZA-2300 |  | 13d |
|  | 5 | **IRRIGATION WORKS IN ( PH2-A-MCE0 )** |  | 2026-09-28 | 2027-07-04 |  |  |  |
|  | 7 | **Pre install** |  | 2026-09-28 | 2027-06-03 |  |  |  |
| SDR-2-CON-IR-ZA-2320 |  | Pre Install for irrigation Works | 14d | 2026-09-28 A | 2027-06-03 | SDR-2-CON-IR-ZA-1000 SS, SDR-2-CON-ST-ZA-4320 | 25% | 1d |
|  | 8 | **install** |  | 2026-10-01 | 2027-06-19 |  |  |  |
| SDR-2-CON-IR-ZA-2330 |  | Installation of HDPE Pipe | 13d | 2026-10-01 A | 2027-06-19 | SDR-2-CON-IR-ZA-2320 | 25% | 1d |
|  | 9 | **Finishing** |  | 2027-06-20 | 2027-06-30 |  |  |  |
| SDR-2-CON-IR-ZA-2340 |  | Finishing Works for irrigation | 10d | 2027-06-20 | 2027-06-30 | SDR-2-CON-IR-ZA-2330 |  | 1d |
|  | 10 | **Repairs** |  | 2027-07-01 | 2027-07-04 |  |  |  |
| SDR-2-CON-IR-ZA-2350 |  | Repair for irrigation Works | 3d | 2027-07-01 | 2027-07-04 | SDR-2-CON-IR-ZA-2340 |  | 1d |
|  | 6 | **IRRIGATION WORKS IN ( PH2-A-MCF0 )** |  | 2027-05-13 | 2027-07-04 |  |  |  |
|  | 7 | **Pre install** |  | 2027-05-13 | 2027-06-03 |  |  |  |
| SDR-2-CON-IR-ZA-2360 |  | Pre Install for irrigation Works | 14d | 2027-05-13 | 2027-06-03 | SDR-2-CON-IR-ZA-1000 SS, SDR-2-CON-ST-ZA-4470 |  | 1d |
|  | 8 | **install** |  | 2027-06-05 | 2027-06-19 |  |  |  |
| SDR-2-CON-IR-ZA-2370 |  | Installation of HDPE Pipe | 13d | 2027-06-05 | 2027-06-19 | SDR-2-CON-IR-ZA-2360 |  | 1d |
|  | 9 | **Finishing** |  | 2027-06-20 | 2027-06-30 |  |  |  |
| SDR-2-CON-IR-ZA-2380 |  | Finishing Works for irrigation | 10d | 2027-06-20 | 2027-06-30 | SDR-2-CON-IR-ZA-2370 |  | 1d |
|  | 10 | **Repairs** |  | 2027-07-01 | 2027-07-04 |  |  |  |
| SDR-2-CON-IR-ZA-2390 |  | Repair for irrigation Works | 3d | 2027-07-01 | 2027-07-04 | SDR-2-CON-IR-ZA-2380 |  | 1d |
|  | 7 | **IRRIGATION WORKS IN ( PH2-A-MCG0 )** |  | 2027-05-13 | 2027-07-04 |  |  |  |
|  | 7 | **Pre install** |  | 2027-05-13 | 2027-06-03 |  |  |  |
| SDR-2-CON-IR-ZA-2400 |  | Pre Install for irrigation Works | 14d | 2027-05-13 | 2027-06-03 | SDR-2-CON-IR-ZA-1000 SS, SDR-2-CON-ST-ZA-4620 |  | 1d |
|  | 8 | **install** |  | 2027-06-05 | 2027-06-19 |  |  |  |
| SDR-2-CON-IR-ZA-2410 |  | Installation of HDPE Pipe | 13d | 2027-06-05 | 2027-06-19 | SDR-2-CON-IR-ZA-2400 |  | 1d |
|  | 9 | **Finishing** |  | 2027-06-20 | 2027-07-01 |  |  |  |
| SDR-2-CON-IR-ZA-2420 |  | Finishing Works for irrigation | 11d | 2027-06-20 | 2027-07-01 | SDR-2-CON-IR-ZA-2410 |  | 1d |
|  | 10 | **Repairs** |  | 2027-07-03 | 2027-07-04 |  |  |  |
| SDR-2-CON-IR-ZA-2430 |  | Repair for irrigation Works | 2d | 2027-07-03 | 2027-07-04 | SDR-2-CON-IR-ZA-2420, SDR-2-CON-IR-ZA-2350 FF, SDR-2-CON-IR-ZA-2390 FF |  | 1d |
|  | 8 | **IRRIGATION WORKS IN ( PH2-A-MCH0 )** |  | 2027-05-13 | 2027-07-04 |  |  |  |
|  | 7 | **Pre install** |  | 2027-05-13 | 2027-06-03 |  |  |  |
| SDR-2-CON-IR-ZA-2440 |  | Pre Install for irrigation Works | 14d | 2027-05-13 | 2027-06-03 | SDR-2-CON-IR-ZA-1000 SS, SDR-2-CON-ST-ZA-4770 |  | 1d |
|  | 8 | **install** |  | 2027-06-05 | 2027-06-19 |  |  |  |
| SDR-2-CON-IR-ZA-2450 |  | Installation of HDPE Pipe | 13d | 2027-06-05 | 2027-06-19 | SDR-2-CON-IR-ZA-2440 |  | 1d |
|  | 9 | **Finishing** |  | 2027-06-20 | 2027-07-01 |  |  |  |
| SDR-2-CON-IR-ZA-2460 |  | Finishing Works for irrigation | 11d | 2027-06-20 | 2027-07-01 | SDR-2-CON-IR-ZA-2450 |  | 1d |
|  | 10 | **Repairs** |  | 2027-07-03 | 2027-07-04 |  |  |  |
| SDR-2-CON-IR-ZA-2470 |  | Repair for irrigation Works | 2d | 2027-07-03 | 2027-07-04 | SDR-2-CON-IR-ZA-2460, SDR-2-CON-IR-ZA-2430 FF |  | 1d |
|  | 9 | **IRRIGATION WORKS IN ( PH2-ART-MC00 )** |  | 2026-09-28 | 2027-07-04 |  |  |  |
|  | 7 | **Pre install** |  | 2026-09-28 | 2027-06-10 |  |  |  |
| SDR-2-CON-IR-ZA-2480 |  | Pre Install for irrigation Works | 20d | 2026-09-28 A | 2027-06-10 | SDR-2-CON-IR-ZA-1000 SS, SDR-2-CON-ST-ZA-4920 | 25% | 15d |
|  | 8 | **install** |  | 2026-10-01 | 2027-06-02 |  |  |  |
| SDR-2-CON-IR-ZA-2490 |  | Installation of HDPE Pipe | 13d | 2026-10-01 A | 2027-06-02 | SDR-2-CON-IR-ZA-2480 SS+10d | 25% | 15d |
|  | 9 | **Finishing** |  | 2027-06-03 | 2027-06-15 |  |  |  |
| SDR-2-CON-IR-ZA-2500 |  | Finishing Works for irrigation | 11d | 2027-06-03 | 2027-06-15 | SDR-2-CON-IR-ZA-2490 |  | 15d |
|  | 10 | **Repairs** |  | 2027-07-03 | 2027-07-04 |  |  |  |
| SDR-2-CON-IR-ZA-2510 |  | Repair for irrigation Works | 2d | 2027-07-03 | 2027-07-04 | SDR-2-CON-IR-ZA-2500, SDR-2-CON-IR-ZA-2470 FF |  | 1d |
|  | 10 | **IRRIGATION WORKS IN ( PH2-ART-MC10 )** |  | 2026-08-31 | 2027-07-04 |  |  |  |
|  | 7 | **Pre install** |  | 2026-08-31 | 2027-05-13 |  |  |  |
| SDR-2-CON-IR-ZA-2520 |  | Pre Install for irrigation Works | 20d | 2026-08-31 A | 2027-05-13 | SDR-2-CON-IR-ZA-1000 FF, SDR-2-CON-ST-ZA-4920 FF | 25% | 0.7d |

| ID | WBS | Task | Duration | Start | Finish | Predecessors | Complete | Total float |
| --- | --- | --- | --- | --- | --- | --- | --- | --- |
|  | 8 | **install** |  | 2026-10-03 | 2027-06-03 |  |  |  |
| SDR-2-CON-IR-ZA-2530 |  | Installation of HDPE Pipe | 13d | 2026-10-03 A | 2027-06-03 | SDR-2-CON-IR-ZA-2520 | 10% | 14d |
|  | 9 | **Finishing** |  | 2027-06-05 | 2027-06-16 |  |  |  |
| SDR-2-CON-IR-ZA-2540 |  | Finishing Works for irrigation | 11d | 2027-06-05 | 2027-06-16 | SDR-2-CON-IR-ZA-2530 |  | 14d |
|  | 10 | **Repairs** |  | 2027-07-03 | 2027-07-04 |  |  |  |
| SDR-2-CON-IR-ZA-2550 |  | Repair for irrigation Works | 2d | 2027-07-03 | 2027-07-04 | SDR-2-CON-IR-ZA-2540, SDR-2-CON-IR-ZA-2510 SS |  | 1d |
|  | 13 | **Irrigation Controllers** |  | 2027-05-11 | 2027-07-03 |  |  |  |
|  | 1 | **Pre install** |  | 2027-05-11 | 2027-06-10 |  |  |  |
| SDR-2-CON-IR-ZA-2070 |  | Pre Install of Irrigation controllers | 21d | 2027-05-11 | 2027-06-10 | SDR-2-CON-IR-ZA-2520 SS |  | 8.7d |
|  | 2 | **install** |  | 2027-05-29 | 2027-06-15 |  |  |  |
| SDR-2-CON-IR-ZA-2760 |  | Install Irrigation controllers | 15d | 2027-05-29 | 2027-06-15 | SDR-2-CON-IR-ZA-2070 SS+10d |  | 8.7d |
|  | 3 | **Finishing** |  | 2027-06-15 | 2027-06-24 |  |  |  |
| SDR-2-CON-IR-ZA-2770 |  | Finishing of Irrigation controllers | 8d | 2027-06-15 | 2027-06-24 | SDR-2-CON-IR-ZA-2760 |  | 8.7d |
|  | 4 | **Repairs** |  | 2027-07-03 | 2027-07-03 |  |  |  |
| SDR-2-CON-IR-ZA-2780 |  | Repairs of Irrigation controllers | 1d | 2027-07-03 | 2027-07-03 | SDR-2-CON-IR-ZA-2770, SDR-2-CON-IR-ZA-2550 SS |  | 2d |
|  | 14 | **Decoder Cable & Conduit Works** |  | 2027-05-11 | 2027-07-05 |  |  |  |
|  | 1 | **Pre install** |  | 2027-05-11 | 2027-06-10 |  |  |  |
| SDR-2-CON-IR-ZA-2080 |  | Pre Install of Decoder Cable & Conduits Works | 21d | 2027-05-11 | 2027-06-10 | SDR-2-CON-IR-ZA-2520 SS |  | 0.7d |
|  | 2 | **install** |  | 2027-06-10 | 2027-06-28 |  |  |  |
| SDR-2-CON-IR-ZA-2090 |  | Install of Decoder Cable & Conduits Works | 15d | 2027-06-10 | 2027-06-28 | SDR-2-CON-IR-ZA-2080, SDR-2-CON-IR-ZA-2080 FF |  | 0.7d |
|  | 3 | **Finishing** |  | 2027-06-28 | 2027-07-04 |  |  |  |
| SDR-2-CON-IR-ZA-2790 |  | Finishing of Decoder Cable & Conduits Works | 5d | 2027-06-28 | 2027-07-04 | SDR-2-CON-IR-ZA-2090 |  | 0.7d |
|  | 4 | **Repairs** |  | 2027-07-04 | 2027-07-05 |  |  |  |
| SDR-2-CON-IR-ZA-2800 |  | Repair of Decoder Cable & Conduits Works | 1d | 2027-07-04 | 2027-07-05 | SDR-2-CON-IR-ZA-2790, SDR-2-CON-IR-ZA-2270 FF, SDR-2-CON-IR-ZA-2780 FF |  | 0.7d |
|  | 15 | **Solar Power System Installation** |  | 2027-05-11 | 2027-07-05 |  |  |  |
|  | 1 | **Pre install** |  | 2027-05-11 | 2027-06-10 |  |  |  |
| SDR-2-CON-IR-ZA-2100 |  | Pre Install of Solar Power System Installation | 21d | 2027-05-11 | 2027-06-10 | SDR-2-CON-IR-ZA-2520 SS |  | 0.7d |
|  | 2 | **install** |  | 2027-06-10 | 2027-06-28 |  |  |  |
| SDR-2-CON-IR-ZA-2810 |  | Install of Pre Install of Solar Power System Installation | 15d | 2027-06-10 | 2027-06-28 | SDR-2-CON-IR-ZA-2100 |  | 0.7d |
|  | 3 | **Finishing** |  | 2027-06-28 | 2027-07-05 |  |  |  |
| SDR-2-CON-IR-ZA-2820 |  | Finishing of Pre Install of Solar Power System Installation | 6d | 2027-06-28 | 2027-07-05 | SDR-2-CON-IR-ZA-2810 |  | 0.7d |
|  | 4 | **Repairs** |  | 2027-07-04 | 2027-07-05 |  |  |  |
| SDR-2-CON-IR-ZA-2830 |  | Repair of Solar Power System Installation | 1d | 2027-07-04 | 2027-07-05 | SDR-2-CON-IR-ZA-2820 SS, SDR-2-CON-IR-ZA-2800 SS |  | 0.7d |
|  | 16 | **System Integration & Programming** |  | 2027-05-11 | 2027-07-05 |  |  |  |
|  | 1 | **Pre install** |  | 2027-05-11 | 2027-06-10 |  |  |  |
| SDR-2-CON-IR-ZA-2110 |  | Pre Install of System Integration & Programming | 21d | 2027-05-11 | 2027-06-10 | SDR-2-CON-IR-ZA-2520 SS |  | 8.7d |
|  | 2 | **install** |  | 2027-05-29 | 2027-06-15 |  |  |  |
| SDR-2-CON-IR-ZA-2840 |  | Install of System Integration & Programming | 15d | 2027-05-29 | 2027-06-15 | SDR-2-CON-IR-ZA-2110 SS+10d |  | 8.7d |
|  | 3 | **Finishing** |  | 2027-06-15 | 2027-06-24 |  |  |  |
| SDR-2-CON-IR-ZA-2850 |  | Finishing of System Integration & Programming | 8d | 2027-06-15 | 2027-06-24 | SDR-2-CON-IR-ZA-2840 |  | 8.7d |
|  | 4 | **Repairs** |  | 2027-07-04 | 2027-07-05 |  |  |  |
| SDR-2-CON-IR-ZA-2860 |  | Repair of System Integration & Programming | 1d | 2027-07-04 | 2027-07-05 | SDR-2-CON-IR-ZA-2850, SDR-2-CON-IR-ZA-2830 FF |  | 0.7d |
|  | 1 | **Landscape Works** |  | 2027-05-22 | 2027-07-05 |  |  |  |
|  | 1 | **GROUND COVER** |  | 2027-05-22 | 2027-06-14 |  |  |  |
| SDR-2-CON-LS-ZA-1000 |  | Clearing & grubbing of landscape areas | 15d | 2027-05-22 | 2027-06-07 | SDR-2-CON-ST-ZA-6120, SDR-2-CLO-AS-C-1010 SS+2d, SDR-2-CON-IR-ZA-2520 SS |  | 1d |
| SDR-2-CON-LS-ZA-1010 |  | Grass laying | 14d | 2027-05-30 | 2027-06-14 | SDR-2-CON-LS-ZA-1000 SS+7d |  | 1d |
|  | 2 | **Trees** |  | 2027-06-15 | 2027-07-04 |  |  |  |
| SDR-2-CON-LS-ZA-1020 |  | Albizia lebbeck tress planting. | 14d | 2027-06-15 | 2027-06-30 | SDR-2-CON-LS-ZA-1010 |  | 1d |
| SDR-2-CON-LS-ZA-1030 |  | Tabopia tress planting. | 14d | 2027-06-15 | 2027-06-30 | SDR-2-CON-LS-ZA-1020 SS |  | 1d |
| SDR-2-CON-LS-ZA-1040 |  | Plumeria alba tress planting. | 14d | 2027-06-19 | 2027-07-04 | SDR-2-CON-LS-ZA-1030 SS+3d |  | 1d |
| SDR-2-CON-LS-ZA-1050 |  | Cassia glauca tress planting. | 14d | 2027-06-19 | 2027-07-04 | SDR-2-CON-LS-ZA-1040 SS |  | 1d |
|  | 3 | **Miscellaneous landscaping items** |  | 2027-06-20 | 2027-07-05 |  |  |  |
| SDR-2-CON-LS-ZA-1060 |  | Gravel/Stone mulch: 75mm thick Hard, durable stone, washed free of loam, sand, clay, | 13d | 2027-06-20 | 2027-07-05 | SDR-2-CON-LS-ZA-1050 SS, SDR-2-CON-IR-ZA-2230 FF, SDR-2-CON-IR-ZA-2860 FF |  | 0.7d |
|  | ZG | **ZONE G** |  | 2027-05-11 | 2027-07-04 |  |  |  |
|  | 2 | **Irrigation Works** |  | 2027-05-11 | 2027-07-01 |  |  |  |
|  | 11 | **IRRIGATION WORKS IN ( PH2-G-MCE0 )** |  | 2027-05-13 | 2027-06-28 |  |  |  |
|  | 7 | **Pre install** |  | 2027-05-13 | 2027-06-10 |  |  |  |
| SDR-2-CON-IR-ZA-2560 |  | Pre Install for irrigation Works | 20d | 2027-05-13 | 2027-06-10 | SDR-2-CON-IR-ZA-1000 SS, SDR-2-CON-ST-ZA-5520 FF |  | 6d |
|  | 8 | **install** |  | 2027-06-12 | 2027-06-26 |  |  |  |
| SDR-2-CON-IR-ZA-2570 |  | Installation of HDPE Pipe | 13d | 2027-06-12 | 2027-06-26 | SDR-2-CON-IR-ZA-2560 |  | 6d |
|  | 9 | **Finishing** |  | 2027-06-17 | 2027-06-28 |  |  |  |
| SDR-2-CON-IR-ZA-2580 |  | Finishing Works for irrigation | 10d | 2027-06-17 | 2027-06-28 | SDR-2-CON-IR-ZA-2570 SS+5d |  | 6d |
|  | 10 | **Repairs** |  | 2027-06-17 | 2027-06-20 |  |  |  |
| SDR-2-CON-IR-ZA-2590 |  | Repair for irrigation Works | 3d | 2027-06-17 | 2027-06-20 | SDR-2-CON-IR-ZA-2580 SS |  | 13d |
|  | 5 | **IRRIGATION WORKS IN ( PH2-G-MCZ0 )** |  | 2027-05-13 | 2027-06-30 |  |  |  |
|  | 7 | **Pre install** |  | 2027-05-13 | 2027-06-10 |  |  |  |
| SDR-2-CON-IR-ZA-2600 |  | Pre Install for irrigation Works | 20d | 2027-05-13 | 2027-06-10 | SDR-2-CON-IR-ZA-1000 SS, SDR-2-CON-ST-ZA-5670 FF |  | 4d |
|  | 8 | **install** |  | 2027-06-12 | 2027-06-26 |  |  |  |
| SDR-2-CON-IR-ZA-2610 |  | Installation of HDPE Pipe | 13d | 2027-06-12 | 2027-06-26 | SDR-2-CON-IR-ZA-2600 |  | 4d |
|  | 9 | **Finishing** |  | 2027-06-16 | 2027-06-27 |  |  |  |

| ID | WBS | Task | Duration | Start | Finish | Predecessors | Total float |
| --- | --- | --- | --- | --- | --- | --- | --- |
| SDR-2-CON-IR-ZA-2620 |  | Finishing Works for irrigation | 10d | 2027-06-16 | 2027-06-27 | SDR-2-CON-IR-ZA-2610 SS+4d | 4d |
|  | 10 | **Repairs** |  | 2027-06-28 | 2027-06-30 |  |  |
| SDR-2-CON-IR-ZA-2630 |  | Repair for irrigation Works | 3d | 2027-06-28 | 2027-06-30 | SDR-2-CON-IR-ZA-2620, SDR-2-CON-IR-ZA-2590 FF | 4d |
|  | 1 | **IRRIGATION WORKS IN ( PH2-G-MCA0 )** |  | 2027-05-13 | 2027-06-30 |  |  |
|  | 7 | **Pre install** |  | 2027-05-13 | 2027-06-09 |  |  |
| SDR-2-CON-IR-ZA-2640 |  | Pre Install for irrigation Works | 19d | 2027-05-13 | 2027-06-09 | SDR-2-CON-IR-ZA-2600 SS, SDR-2-CON-ST-ZA-6120 FS+0.8d | 5d |
|  | 8 | **install** |  | 2027-06-10 | 2027-06-24 |  |  |
| SDR-2-CON-IR-ZA-2650 |  | Installation of HDPE Pipe | 13d | 2027-06-10 | 2027-06-24 | SDR-2-CON-IR-ZA-2640 | 5d |
|  | 9 | **Finishing** |  | 2027-06-16 | 2027-06-29 |  |  |
| SDR-2-CON-IR-ZA-2660 |  | Finishing Works for irrigation | 12d | 2027-06-16 | 2027-06-29 | SDR-2-CON-IR-ZA-2650 SS+5d | 5d |
|  | 10 | **Repairs** |  | 2027-06-29 | 2027-06-30 |  |  |
| SDR-2-CON-IR-ZA-2670 |  | Repair for irrigation Works | 2d | 2027-06-29 | 2027-06-30 | SDR-2-CON-IR-ZA-2660 SS, SDR-2-CON-IR-ZA-2630 FF | 4d |
|  | 2 | **IRRIGATION WORKS IN ( PH2-G-MCF0 )** |  | 2027-05-13 | 2027-07-01 |  |  |
|  | 7 | **Pre install** |  | 2027-05-13 | 2027-06-10 |  |  |
| SDR-2-CON-IR-ZA-2680 |  | Pre Install for irrigation Works | 20d | 2027-05-13 | 2027-06-10 | SDR-2-CON-IR-ZA-1000 SS, SDR-2-CON-ST-ZA-5670 FF | 3d |
|  | 8 | **install** |  | 2027-06-12 | 2027-06-26 |  |  |
| SDR-2-CON-IR-ZA-2690 |  | Installation of HDPE Pipe | 13d | 2027-06-12 | 2027-06-26 | SDR-2-CON-IR-ZA-2680 | 3d |
|  | 9 | **Finishing** |  | 2027-06-17 | 2027-06-29 |  |  |
| SDR-2-CON-IR-ZA-2700 |  | Finishing Works for irrigation | 11d | 2027-06-17 | 2027-06-29 | SDR-2-CON-IR-ZA-2690 SS+5d | 3d |
|  | 10 | **Repairs** |  | 2027-06-30 | 2027-07-01 |  |  |
| SDR-2-CON-IR-ZA-2710 |  | Repair for irrigation Works | 2d | 2027-06-30 | 2027-07-01 | SDR-2-CON-IR-ZA-2700, SDR-2-CON-IR-ZA-2670 FF | 3d |
|  | 3 | **IRRIGATION WORKS IN ( PH2-G-MCG0 )** |  | 2027-05-13 | 2027-07-01 |  |  |
|  | 7 | **Pre install** |  | 2027-05-13 | 2027-06-09 |  |  |
| SDR-2-CON-IR-ZA-2720 |  | Pre Install for irrigation Works | 19d | 2027-05-13 | 2027-06-09 | SDR-2-CON-IR-ZA-2600 SS, SDR-2-CON-ST-ZA-6120 FS+0.8d | 5d |
|  | 8 | **install** |  | 2027-06-10 | 2027-06-24 |  |  |
| SDR-2-CON-IR-ZA-2730 |  | Installation of HDPE Pipe | 13d | 2027-06-10 | 2027-06-24 | SDR-2-CON-IR-ZA-2720, SDR-2-TC-CW-1010 | 5d |
|  | 9 | **Finishing** |  | 2027-06-16 | 2027-06-29 |  |  |
| SDR-2-CON-IR-ZA-2740 |  | Finishing Works for irrigation | 12d | 2027-06-16 | 2027-06-29 | SDR-2-CON-IR-ZA-2730 SS+5d | 5d |
|  | 10 | **Repairs** |  | 2027-06-30 | 2027-07-01 |  |  |
| SDR-2-CON-IR-ZA-2750 |  | Repair for irrigation Works | 2d | 2027-06-30 | 2027-07-01 | SDR-2-CON-IR-ZA-2740 SS, SDR-2-CON-IR-ZA-2710 FF | 3d |
|  | 13 | **Irrigation Controllers** |  | 2027-05-11 | 2027-07-01 |  |  |
|  | 1 | **Pre install** |  | 2027-05-11 | 2027-06-10 |  |  |
| SDR-2-CON-IR-ZA-2870 |  | Pre Install of Irrigation controllers | 21d | 2027-05-11 | 2027-06-10 | SDR-2-CON-IR-ZA-2520 SS | 6.7d |
|  | 2 | **install** |  | 2027-06-10 | 2027-06-28 |  |  |
| SDR-2-CON-IR-ZA-2880 |  | Install Irrigation controllers | 15d | 2027-06-10 | 2027-06-28 | SDR-2-CON-IR-ZA-2870 | 6.7d |
|  | 3 | **Finishing** |  | 2027-06-17 | 2027-06-27 |  |  |
| SDR-2-CON-IR-ZA-2890 |  | Finishing of Irrigation controllers | 8d | 2027-06-17 | 2027-06-27 | SDR-2-CON-IR-ZA-2880 SS+6d | 7.7d |
|  | 4 | **Repairs** |  | 2027-06-30 | 2027-07-01 |  |  |
| SDR-2-CON-IR-ZA-2900 |  | Repairs of Irrigation controllers | 2d | 2027-06-30 | 2027-07-01 | SDR-2-CON-IR-ZA-2890 SS, SDR-2-CON-IR-ZA-2750 FF | 3d |
|  | 14 | **Decoder Cable & Conduit Works** |  | 2027-05-11 | 2027-07-01 |  |  |
|  | 1 | **Pre install** |  | 2027-05-11 | 2027-06-10 |  |  |
| SDR-2-CON-IR-ZA-2910 |  | Pre Install of Decoder Cable & Conduits Works | 21d | 2027-05-11 | 2027-06-10 | SDR-2-CON-IR-ZA-2520 SS | 6.7d |
|  | 2 | **install** |  | 2027-06-10 | 2027-06-28 |  |  |
| SDR-2-CON-IR-ZA-2920 |  | Install of Decoder Cable & Conduits Works | 15d | 2027-06-10 | 2027-06-28 | SDR-2-CON-IR-ZA-2910, SDR-2-CON-IR-ZA-2910 FF | 6.7d |
|  | 3 | **Finishing** |  | 2027-06-15 | 2027-06-26 |  |  |
| SDR-2-CON-IR-ZA-2930 |  | Finishing of Decoder Cable & Conduits Works | 9d | 2027-06-15 | 2027-06-26 | SDR-2-CON-IR-ZA-2920 SS+4d | 8.7d |
|  | 4 | **Repairs** |  | 2027-07-01 | 2027-07-01 |  |  |
| SDR-2-CON-IR-ZA-2940 |  | Repair of Decoder Cable & Conduits Works | 1d | 2027-07-01 | 2027-07-01 | SDR-2-CON-IR-ZA-2930 SS, SDR-2-CON-IR-ZA-2900 FF | 3d |
|  | 15 | **Solar Power System Installation** |  | 2027-05-11 | 2027-06-28 |  |  |
|  | 1 | **Pre install** |  | 2027-05-11 | 2027-06-10 |  |  |
| SDR-2-CON-IR-ZA-2950 |  | Pre Install of Solar Power System Installation | 21d | 2027-05-11 | 2027-06-10 | SDR-2-CON-IR-ZA-2520 SS | 6.7d |
|  | 2 | **install** |  | 2027-06-10 | 2027-06-28 |  |  |
| SDR-2-CON-IR-ZA-2960 |  | Install of Pre Install of Solar Power System Installation | 15d | 2027-06-10 | 2027-06-28 | SDR-2-CON-IR-ZA-2950 | 6.7d |
|  | 3 | **Finishing** |  | 2027-06-16 | 2027-06-24 |  |  |
| SDR-2-CON-IR-ZA-2970 |  | Finishing of Pre Install of Solar Power System Installation | 7d | 2027-06-16 | 2027-06-24 | SDR-2-CON-IR-ZA-2960 SS+5d | 9.7d |
|  | 4 | **Repairs** |  | 2027-06-16 | 2027-06-20 |  |  |
| SDR-2-CON-IR-ZA-2980 |  | Repair of Solar Power System Installation | 3d | 2027-06-16 | 2027-06-20 | SDR-2-CON-IR-ZA-2970 SS | 13.7d |
|  | 1 | **Landscape Works** |  | 2027-05-22 | 2027-07-04 |  |  |
|  | 1 | **GROUND COVER** |  | 2027-05-22 | 2027-06-22 |  |  |
| SDR-2-CON-LS-ZG-1000 |  | Clearing & grubbing of landscape areas | 15d | 2027-05-22 | 2027-06-07 | SDR-2-CON-LS-ZA-1000 SS, SDR-2-CON-IR-ZA-2520 SS | 1d |
| SDR-2-CON-LS-ZG-1010 |  | Grass laying | 13d | 2027-06-08 | 2027-06-22 | SDR-2-CON-LS-ZG-1000, SDR-2-CON-ST-ZA-5220, SDR-2-CON-ST-ZA-5070 | 1d |
|  | 2 | **Trees** |  | 2027-06-14 | 2027-07-04 |  |  |
| SDR-2-CON-LS-ZG-1020 |  | Albizia lebbeck tress planting. | 18d | 2027-06-14 | 2027-07-04 | SDR-2-CON-LS-ZG-1010 SS+5d | 1d |
| SDR-2-CON-LS-ZG-1030 |  | Tabopia tress planting. | 18d | 2027-06-14 | 2027-07-04 | SDR-2-CON-LS-ZG-1020 SS | 1d |
| SDR-2-CON-LS-ZG-1040 |  | Plumeria alba tress planting. | 18d | 2027-06-14 | 2027-07-04 | SDR-2-CON-LS-ZG-1030 SS | 1d |
| SDR-2-CON-LS-ZG-1050 |  | Cassia glauca tress planting. | 18d | 2027-06-14 | 2027-07-04 | SDR-2-CON-LS-ZG-1040 SS | 1d |
|  | 3 | **Miscellaneous landscaping items** |  | 2027-06-14 | 2027-07-04 |  |  |
| SDR-2-CON-LS-ZG-1060 |  | Gravel/Stone mulch: 75mm thick Hard, durable stone, washed free of loam, sand, clay, | 18d | 2027-06-14 | 2027-07-04 | SDR-2-CON-LS-ZG-1050 SS | 1d |
|  | CC | **CCTV Works** |  | 2026-07-25 | 2027-05-24 |  |  |
|  | ZA | **ZONE A** |  | 2026-07-25 | 2027-05-24 |  |  |

| ID | WBS | Task | Duration | Start | Finish | Predecessors | Complete | Total float |
| --- | --- | --- | --- | --- | --- | --- | --- | --- |
|  | 1 | **Poles 1st and 2nd Fix Works** |  | 2026-07-25 | 2027-01-21 |  |  |  |
|  | 1 | **Excavation** |  | 2026-07-25 | 2027-01-02 |  |  |  |
| SDR-2-CON-CC-ZA-1000 |  | Excavation 1Sst & 2nd Fix Works | 10d | 2026-07-25 A | 2027-01-02 | SDR-2-CON-ST-ZA-6190, SDR-2-CON-MV-ZA-1000 FF, SDR-2-PRO-DEL-E-1130 FF, SDR-2-PRO-DEL-M-1070 FF, SDR-2-PRO-DEL-M-1060 FF, SDR-2-PRO-DEL-E-1100 FF, SDR-2-CON-ST-ZA-6280 FF, SDR-2-PRO-ST-E-1140 FF, SDR-2-PRO-ST-E-1170 FF | 50% | 9d |
|  | 2 | **Install Footings** |  | 2026-09-03 | 2027-01-12 |  |  |  |
| SDR-2-CON-CC-ZA-1030 |  | Install Footings | 7d | 2026-09-03 A | 2027-01-12 | SDR-2-CON-CC-ZA-1000 FF, SDR-2-PRO-DEL-E-1120 FF, SDR-2-PRO-DEL-E-1110 FF, SDR-2-PRO-DEL-E-1140 FF, SDR-2-PRO-DEL-E-1080 FF | 30% | 0d |
|  | 3 | **Backfilling** |  | 2027-01-13 | 2027-01-20 |  |  |  |
| SDR-2-CON-CC-ZA-1050 |  | Backfilling 1Sst & 2nd Fix Works | 7d | 2027-01-13 | 2027-01-20 | SDR-2-CON-CC-ZA-1030 SS, SDR-2-CON-CC-ZA-1030 |  | 0d |
|  | 4 | **Install pole** |  | 2027-01-13 | 2027-01-21 |  |  |  |
| SDR-2-CON-CC-ZA-1060 |  | Install Pole | 8d | 2027-01-13 | 2027-01-21 | SDR-2-PRO-DEL-E-1150, SDR-2-CON-CC-ZA-1050 SS |  | 0d |
|  | 2 | **25m Pole Package** |  | 2026-08-01 | 2027-04-29 |  |  |  |
|  | 1 | **Excavation** |  | 2026-08-01 | 2027-01-23 |  |  |  |
| SDR-2-CON-CC-ZA-1080 |  | 25 Meters Pole Excavation | 21d | 2026-08-01 A | 2027-01-23 | SDR-2-PRO-ST-E-1090, SDR-2-PRO-MAS-C-1090, SDR-2-PRO-DEL-E-1150 FF, SDR-2-PRO-ST-C-1080 FF, SDR-2-CON-CC-ZA-1060 FF, SDR-2-PRO-ST-E-1160 FF, SDR-2-PRO-ST-E-1150 FF, SDR-2-PRO-MAS-E-1030 | 50% | 0d |
|  | 2 | **Install Footings** |  | 2026-09-03 | 2027-01-23 |  |  |  |
| SDR-2-CON-CC-ZA-1090 |  | 25 Meters pole installation Footings | 20d | 2026-09-03 A | 2027-01-23 | SDR-2-PRO-MAL-E-1110, SDR-2-CON-CC-ZA-1080 FF, SDR-2-PRO-DEL-E-1160 FF, SDR-2-PRO-DEL-E-1190 FF, SDR-2-PRO-DEL-E-1180 FF, SDR-2-PRO-DEL-E-1170 FF, SDR-2-PRO-ST-C-1090 FF | 30% | 50d |
|  | 3 | **Backfilling** |  | 2027-03-31 | 2027-04-24 |  |  |  |
| SDR-2-CON-CC-ZA-1100 |  | 25 Meters pole Backfilling | 21d | 2027-03-31 | 2027-04-24 | SDR-2-CON-SL-ZA-1400, SDR-2-CON-SL-ZA-2890, SDR-2-CON-SL-ZA-1100, SDR-2-CON-TE-ZA-1050, SDR-2-CON-CC-ZA-1090 FS+8d |  | 5d |
|  | 4 | **Install pole** |  | 2027-04-06 | 2027-04-29 |  |  |  |
| SDR-2-CON-CC-ZA-1110 |  | 25 Meters pole installation | 21d | 2027-04-06 | 2027-04-29 | SDR-2-CON-CC-ZA-1100 SS+5d |  | 5d |
|  | 3 | **7m Pole Package** |  | 2026-08-01 | 2027-03-27 |  |  |  |
|  | 1 | **Excavation** |  | 2026-08-01 | 2027-01-23 |  |  |  |
| SDR-2-CON-CC-ZA-1240 |  | 7m Meters Pole Excavation | 21d | 2026-08-01 A | 2027-01-23 | SDR-2-CON-CC-ZA-1080 FF, SDR-2-CON-ST-ZA-6330 FF, SDR-2-PRO-ST-E-1190 FF | 50% | 0d |
|  | 2 | **Install Footings** |  | 2026-09-03 | 2027-01-23 |  |  |  |
| SDR-2-CON-CC-ZA-1250 |  | 7m Meters pole installation Footings | 21d | 2026-09-03 A | 2027-01-23 | SDR-2-CON-CC-ZA-1240 FF | 30% | 34d |
|  | 3 | **Backfilling** |  | 2027-01-31 | 2027-02-24 |  |  |  |
| SDR-2-CON-CC-ZA-1260 |  | 7m Meters pole Backfilling | 21d | 2027-01-31 | 2027-02-24 | SDR-2-CON-RW-ZG-2500, SDR-2-CON-TE-ZA-1050, SDR-2-CON-CC-ZA-1250 FS+7d |  | 34d |
|  | 4 | **Install pole** |  | 2027-02-27 | 2027-03-27 |  |  |  |
| SDR-2-CON-CC-ZA-1270 |  | 7 Meters pole Installation | 21d | 2027-02-27 | 2027-03-27 | SDR-2-CON-RW-ZG-1960, SDR-2-CON-CC-ZA-1260 FS+1d |  | 34d |
|  | 4 | **35m Pole Package** |  | 2026-08-01 | 2027-05-24 |  |  |  |
|  | 1 | **Excavation** |  | 2026-08-01 | 2027-01-23 |  |  |  |
| SDR-2-CON-CC-ZA-1380 |  | 35m Meters Pole Excavation | 18d | 2026-08-01 A | 2027-01-23 | SDR-2-CON-CC-ZA-1240 FF, SDR-2-PRO-ST-E-1180 FF, SDR-2-PRO-ST-E-1210 FF, SDR-2-PRO-ST-E-1220 FF, SDR-2-PRO-ST-E-1230 FF | 50% | 0d |
|  | 2 | **Install Footings** |  | 2026-09-03 | 2027-01-23 |  |  |  |
| SDR-2-CON-CC-ZA-1390 |  | 35m Meters pole installation Footings | 15d | 2026-09-03 A | 2027-01-23 | SDR-2-CON-CC-ZA-1380 FF, SDR-2-CON-SL-ZA-3100 FF | 30% | 91d |
|  | 3 | **Backfilling** |  | 2027-04-06 | 2027-04-25 |  |  |  |
| SDR-2-CON-CC-ZA-1400 |  | 35m Meters pole Backfilling | 17d | 2027-04-06 | 2027-04-25 | SDR-2-CON-MV-ZA-1300, SDR-2-CON-SL-ZA-3580, SDR-2-CON-SL-ZA-3550, SDR-2-CON-SL-ZA-3520, SDR-2-CON-SL-ZA-2860, SDR-2-CON-SL-ZA-2840, SDR-2-CON-SL-ZA-2800, SDR-2-CON-TE-ZA-3280, SDR-2-CON-CC-ZA-1390 |  | 36d |
|  | 4 | **Install pole** |  | 2027-04-26 | 2027-05-24 |  |  |  |
| SDR-2-CON-CC-ZA-1410 |  | 35 Meters pole Installation | 20d | 2027-04-26 | 2027-05-24 | SDR-2-PRO-DEL-E-1200 SS, SDR-2-CON-SL-ZA-2820, SDR-2-CON-CC-ZA-1400 |  | 36d |
|  | 5 | **Control Room** |  | 2027-02-09 | 2027-03-04 |  |  |  |
| SDR-2-CON-CC-ZA-1500 |  | Existing Control Room Preparation to accomodate the new equipment | 6d | 2027-02-09 | 2027-02-15 | SDR-2-PRO-ST-E-1240, SDR-2-CON-CC-ZA-1380 FS+15d |  | 0d |
| SDR-2-CON-CC-ZA-1510 |  | VMS Server | 4d | 2027-02-09 | 2027-02-13 | SDR-2-CON-MV-ZA-1300, SDR-2-CON-SL-ZA-1400, SDR-2-CON-CC-ZA-1500 SS |  | 0d |
| SDR-2-CON-CC-ZA-1520 |  | Surveillance-optimized server for recording CCTV support simultaneous cameras stream and recording at high resolution | 4d | 2027-02-10 | 2027-02-14 | SDR-2-CON-CC-ZA-1510 SS+1d |  | 0d |
| SDR-2-CON-CC-ZA-1530 |  | Video analytic computing hardware | 4d | 2027-02-11 | 2027-02-15 | SDR-2-CON-SL-ZA-1400, SDR-2-CON-CC-ZA-1520 SS+1d |  | 0d |
| SDR-2-CON-CC-ZA-1540 |  | Workstation | 8d | 2027-02-13 | 2027-02-21 | SDR-2-CON-CC-ZA-1530 SS+1d, SDR-2-PRO-MAL-E-1150 |  | 0d |
| SDR-2-CON-CC-ZA-1550 |  | Professional LED screen 32 inch for workstations | 4d | 2027-02-14 | 2027-02-17 | SDR-2-CON-CC-ZA-1540 SS+1d |  | 0d |
| SDR-2-CON-CC-ZA-1560 |  | Professional 55" video wall cube | 4d | 2027-02-16 | 2027-02-20 | SDR-2-CON-SL-ZA-1400, SDR-2-CON-CC-ZA-1550 SS+2d, SDR-2-PRO-MAL-E-1160 |  | 0d |
| SDR-2-CON-CC-ZA-1570 |  | Industrial Rack-Mount Managed Modular Gigabit Ethernet PoE Switch (24-Port) for outdoor application | 8d | 2027-02-23 | 2027-03-03 | SDR-2-CON-CC-ZA-1560 FS+1d, SDR-2-PRO-MAL-E-1140 |  | 0d |
| SDR-2-CON-CC-ZA-1580 |  | SFP 1000Base-X SM | 7d | 2027-02-23 | 2027-03-02 | SDR-2-CON-CC-ZA-1570 SS |  | 0d |
| SDR-2-CON-CC-ZA-1590 |  | Professional joystick for accurate control of PTZ and PT Thermal Cameras. | 4d | 2027-02-24 | 2027-02-28 | SDR-2-CON-CC-ZA-1580 SS+1d |  | 0d |
| SDR-2-CON-CC-ZA-1600 |  | Fiber patch panel including all related accessories | 7d | 2027-02-25 | 2027-03-04 | SDR-2-CON-CC-ZA-1590 SS+1d |  | 0d |
| SDR-2-CON-CC-ZA-1610 |  | UPS 5000VA to power for all servers, monitor, and switch in the cabinet | 4d | 2027-02-25 | 2027-03-01 | SDR-2-CON-CC-ZA-1600 SS, SDR-2-PRO-MAL-E-1190 |  | 0d |
| SDR-2-CON-CC-ZA-1620 |  | Outdoor Carrier Class Shielded Ethernet Cable for P-to-P access points 305 meter | 7d | 2027-02-25 | 2027-03-04 | SDR-2-CON-CC-ZA-1610 SS |  | 21d |
|  | 6 | **Licenses,Documentation,Testing and Training** |  | 2027-03-01 | 2027-03-07 |  |  |  |
| SDR-2-CON-CC-ZA-1630 |  | VMS Lifetime Licenses | 6d | 2027-03-01 | 2027-03-07 | SDR-2-CON-CC-ZA-1590 |  | 49d |
| SDR-2-CON-CC-ZA-1640 |  | Camera-Interlink License | 6d | 2027-03-01 | 2027-03-07 | SDR-2-CON-CC-ZA-1630 SS, SDR-2-CON-SL-ZA-1400 |  | 49d |
| SDR-2-CON-CC-ZA-1650 |  | Video analytics license package | 4d | 2027-03-01 | 2027-03-04 | SDR-2-CON-SL-ZA-3170, SDR-2-CON-SL-ZA-3090, SDR-2-CON-CC-ZA-1640 SS |  | 49d |
| SDR-2-CON-CC-ZA-1660 |  | Video analytics license for ANPR | 4d | 2027-03-01 | 2027-03-04 | SDR-2-CON-CC-ZA-1650 SS |  | 49d |
|  | ZG | **ZONE G** |  | 2026-07-30 | 2027-04-29 |  |  |  |
|  | 1 | **Poles 1st and 2nd Fix Works** |  | 2026-07-30 | 2026-11-26 |  |  |  |
|  | 1 | **Excavation** |  | 2026-07-30 | 2026-11-09 |  |  |  |
| SDR-2-CON-CC-ZA-1670 |  | Excavation 1Sst & 2nd Fix Works | 7d | 2026-07-30 A | 2026-11-09 | SDR-2-CON-MV-ZA-1000 FF | 50% | 0d |
|  | 2 | **Install Footings** |  | 2026-09-03 | 2026-11-09 |  |  |  |
| SDR-2-CON-CC-ZA-1700 |  | Install Footings | 7d | 2026-09-03 A | 2026-11-09 | SDR-2-CON-CC-ZA-1670 FF | 30% | 0d |
|  | 3 | **Backfilling** |  | 2026-11-10 | 2026-11-17 |  |  |  |
| SDR-2-CON-CC-ZA-1720 |  | Backfilling 1Sst & 2nd Fix Works | 7d | 2026-11-10 | 2026-11-17 | SDR-2-CON-CC-ZA-1700 |  | 0d |
|  | 4 | **Install pole** |  | 2026-11-18 | 2026-11-26 |  |  |  |
| SDR-2-CON-CC-ZA-1730 |  | Install Pole | 8d | 2026-11-18 | 2026-11-26 | SDR-2-CON-CC-ZA-1720 |  | 0d |
|  | 2 | **25m Pole Package** |  | 2026-09-03 | 2027-02-18 |  |  |  |
|  | 1 | **Excavation** |  | 2026-09-03 | 2026-11-26 |  |  |  |
| SDR-2-CON-CC-ZA-1750 |  | 25 Meters Pole Excavation | 20d | 2026-09-03 A | 2026-11-26 | SDR-2-CON-CC-ZA-1730 FF | 50% | 0d |
|  | 2 | **Install Footings** |  | 2026-11-28 | 2026-12-21 |  |  |  |
| SDR-2-CON-CC-ZA-1760 |  | 25 Meters pole installation Footings | 21d | 2026-11-28 | 2026-12-21 | SDR-2-CON-CC-ZA-1750 |  | 0d |

| ID | WBS | Task | Duration | Start | Finish | Predecessors | Complete | Total float |
| --- | --- | --- | --- | --- | --- | --- | --- | --- |
|  | 3 | **Backfilling** |  | 2026-12-22 | 2027-01-13 |  |  |  |
| SDR-2-CON-CC-ZA-1770 |  | 25 Meters pole Backfilling | 20d | 2026-12-22 | 2027-01-13 | SDR-2-CON-CC-ZA-1760 |  | 0d |
|  | 4 | **Install pole** |  | 2027-01-26 | 2027-02-18 |  |  |  |
| SDR-2-CON-CC-ZA-1780 |  | 25 Meters pole installation | 21d | 2027-01-26 | 2027-02-18 | SDR-2-CON-CC-ZA-1770 FS+10d |  | 0d |
|  | 3 | **7m Pole Package** |  | 2026-09-03 | 2027-04-06 |  |  |  |
|  | 1 | **Excavation** |  | 2026-09-03 | 2026-11-26 |  |  |  |
| SDR-2-CON-CC-ZA-1790 |  | 7m Meters Pole Excavation | 20d | 2026-09-03 A | 2026-11-26 | SDR-2-CON-CC-ZA-1750 FF | 50% | 4d |
|  | 2 | **Install Footings** |  | 2026-11-28 | 2026-12-20 |  |  |  |
| SDR-2-CON-CC-ZA-1800 |  | 7m Meters pole installation Footings | 20d | 2026-11-28 | 2026-12-20 | SDR-2-CON-CC-ZA-1790 |  | 36d |
|  | 3 | **Backfilling** |  | 2026-12-21 | 2027-01-12 |  |  |  |
| SDR-2-CON-CC-ZA-1810 |  | 7m Meters pole Backfilling | 20d | 2026-12-21 | 2027-01-12 | SDR-2-CON-CC-ZA-1800 |  | 36d |
|  | 4 | **Install pole** |  | 2027-03-14 | 2027-04-06 |  |  |  |
| SDR-2-CON-CC-ZA-1820 |  | 7 Meters pole Installation | 21d | 2027-03-14 | 2027-04-06 | SDR-2-CON-SL-ZA-3050 SS, SDR-2-CON-SL-ZA-3010, SDR-2-CON-SL-ZA-2970, SDR-2-CON-SL-ZA-1400, SDR-2-CON-CC-ZA-1810 FS+11d |  | 1d |
|  | 4 | **35m Pole Package** |  | 2026-09-03 | 2027-01-25 |  |  |  |
|  | 1 | **Excavation** |  | 2026-09-03 | 2026-11-26 |  |  |  |
| SDR-2-CON-CC-ZA-1830 |  | 35m Meters Pole Excavation | 21d | 2026-09-03 A | 2026-11-26 | SDR-2-CON-CC-ZA-1790 FF | 50% | 21d |
|  | 2 | **Install Footings** |  | 2026-11-28 | 2026-12-20 |  |  |  |
| SDR-2-CON-CC-ZA-1840 |  | 35m Meters pole installation Footings | 20d | 2026-11-28 | 2026-12-20 | SDR-2-CON-CC-ZA-1830 |  | 21d |
|  | 3 | **Backfilling** |  | 2026-12-01 | 2026-12-23 |  |  |  |
| SDR-2-CON-CC-ZA-1850 |  | 35m Meters pole Backfilling | 20d | 2026-12-01 | 2026-12-23 | SDR-2-CON-CC-ZA-1840 SS+3d |  | 21d |
|  | 4 | **Install pole** |  | 2027-01-04 | 2027-01-25 |  |  |  |
| SDR-2-CON-CC-ZA-1860 |  | 35 Meters pole Installation | 19d | 2027-01-04 | 2027-01-25 | SDR-2-CON-CC-ZA-1850 FS+9d |  | 21d |
|  | 5 | **Control Room** |  | 2026-11-28 | 2027-01-25 |  |  |  |
| SDR-2-CON-CC-ZG-1500 |  | Existing Control Room Preparation to accomodate the new equipments | 4d | 2026-11-28 | 2026-12-01 | SDR-2-CON-CC-ZA-1790 |  | 5d |
| SDR-2-CON-CC-ZG-1540 |  | Workstation | 12d | 2026-11-28 | 2026-12-10 | SDR-2-CON-CC-ZA-1790 |  | 4d |
| SDR-2-CON-CC-ZG-1550 |  | Professional LED screen 32 inch for workstations | 4d | 2026-11-28 | 2026-12-01 | SDR-2-CON-CC-ZG-1540 SS |  | 4d |
| SDR-2-CON-CC-ZG-1510 |  | VMS Server | 5d | 2026-12-02 | 2026-12-07 | SDR-2-CON-CC-ZG-1500 |  | 5d |
| SDR-2-CON-CC-ZG-1560 |  | Professional 55" video wall cube | 4d | 2026-12-02 | 2026-12-06 | SDR-2-CON-CC-ZG-1550 |  | 4d |
| SDR-2-CON-CC-ZG-1570 |  | Industrial Rack-Mount Managed Modular Gigabit Ethernet PoE Switch (24-Port) for outdoor application | 9d | 2026-12-05 | 2026-12-14 | SDR-2-CON-CC-ZG-1560 SS+2d |  | 4d |
| SDR-2-CON-CC-ZG-1580 |  | SFP 1000Base-X SM | 4d | 2026-12-05 | 2026-12-08 | SDR-2-CON-CC-ZG-1570 SS |  | 4d |
| SDR-2-CON-CC-ZG-1520 |  | Surveillance-optimized server for recording CCTV support simultaneous cameras stream and recording at high resolution | 4d | 2026-12-08 | 2026-12-12 | SDR-2-CON-CC-ZG-1510 |  | 5d |
| SDR-2-CON-CC-ZG-1590 |  | Professional joystick for accurate control of PTZ and PT Thermal Cameras. | 4d | 2026-12-09 | 2026-12-13 | SDR-2-CON-CC-ZG-1580 |  | 4d |
| SDR-2-CON-CC-ZG-1530 |  | Video analytic computing hardware | 4d | 2026-12-13 | 2026-12-16 | SDR-2-CON-CC-ZG-1520 |  | 10d |
| SDR-2-CON-CC-ZG-1600 |  | Fiber patch panel including all related accessories | 4d | 2026-12-14 | 2026-12-17 | SDR-2-CON-CC-ZG-1590 |  | 4d |
| SDR-2-CON-CC-ZG-1610 |  | UPS 5000VA to power for all servers, monitor, and switch in the cabinet | 6d | 2026-12-20 | 2026-12-26 | SDR-2-CON-CC-ZG-1600 SS+5d, SDR-2-CON-CC-ZG-1520 FS+5d |  | 4d |
| SDR-2-CON-CC-ZG-1620 |  | Outdoor Carrier Class Shielded Ethernet Cable for P-to-P access points 305 meter | 4d | 2027-01-21 | 2027-01-25 | SDR-2-CON-CC-ZG-1610 SS+2d, SDR-2-CON-CC-ZA-1860 FF, SDR-2-CON-CC-ZG-1530 FS+6d, SDR-2-CON-CC-ZG-1520 |  | 21d |
|  | 6 | **Licenses,Documentation,Testing and Training** |  | 2026-12-17 | 2027-04-29 |  |  |  |
| SDR-2-CON-CC-ZG-1630 |  | VMS Lifetime Licenses | 2d | 2026-12-17 | 2026-12-19 | SDR-2-CON-CC-ZG-1530 |  | 10d |
| SDR-2-CON-CC-ZG-1640 |  | Camera-Interlink License | 1d | 2026-12-20 | 2026-12-20 | SDR-2-CON-CC-ZG-1630 |  | 10d |
| SDR-2-CON-CC-ZG-1650 |  | Video analytics license package | 1d | 2026-12-20 | 2026-12-20 | SDR-2-CON-CC-ZG-1640 SS |  | 10d |
| SDR-2-CON-CC-ZG-1660 |  | Video analytics license for ANPR | 1d | 2027-04-29 | 2027-04-29 | SDR-2-CON-CC-ZG-1650 SS, SDR-2-CON-CC-ZA-1620 FF, SDR-2-CON-CC-ZA-1270 FF, SDR-2-CON-CC-ZA-1110 FF |  | 5d |
|  | TC | **Testing & Commissioning** |  | 2027-02-25 | 2027-07-05 |  |  |  |
|  | 1 | **Civil Works** |  | 2027-05-15 | 2027-05-24 |  |  |  |
| SDR-2-TC-CW-1010 |  | Testing & Commissioning of road works | 4d | 2027-05-15 | 2027-05-24 | SDR-2-CON-RW-ZA-1710, SDR-2-CON-RW-ZA-1130, SDR-2-CON-RW-ZA-1430 |  | 5d |
|  | 2 | **Storm Water Drainage Network** |  | 2027-03-21 | 2027-04-03 |  |  |  |
| SDR-2-TC-SWDN-1020 |  | Testing & Commissioning of network work | 12d | 2027-03-21 | 2027-04-03 | SDR-2-CON-ST-ZA-5670, SDR-2-PRO-ST-E-1170, SDR-2-PRO-ST-E-1190, SDR-2-PRO-ST-E-1200, SDR-2-PRO-ST-E-1210, SDR-2-PRO-ST-E-1220, SDR-2-CON-ST-ZA-4020 SS, SDR-2-CON-ST-ZA-4020 |  | 57d |
|  | 3 | **Sewerage Network** |  | 2027-05-23 | 2027-06-05 |  |  |  |
| SDR-2-TC-SN-1030 |  | Testing & Commissioning of Sewage Network | 12d | 2027-05-23 | 2027-06-05 | SDR-2-CON-SE-ZA-2440, SDR-2-CON-SE-ZA-2430, SDR-2-CON-SE-ZA-2690, SDR-2-CON-SE-ZA-1050 FS+10d, SDR-2-CON-SE-ZA-1440, SDR-2-CON-SE-ZA-1430, SDR-2-CON-SE-ZA-1530, SDR-2-CON-SE-ZA-1630, SDR-2-CLO-AS-E-1010, SDR-2-CON-SE-ZA-1540 |  | 13d |
|  | 4 | **TSE Network** |  | 2027-06-21 | 2027-07-05 |  |  |  |
| SDR-2-TC-TSE-1040 |  | Testing & Commissioning of TSE Network | 13d | 2027-06-21 | 2027-07-05 | SDR-2-CON-TS-ZA-2640, SDR-2-CON-TS-ZA-2090, SDR-2-CON-TS-ZA-2290, SDR-2-CON-TS-ZA-1930, SDR-2-CON-TS-ZA-1950, SDR-2-CON-TS-ZA-2740, SDR-2-CON-TS-ZA-1070 FF, SDR-2-CON-TS-ZA-2840, SDR-2-CON-TS-ZA-1990, SDR-2-CON-TS-ZA-2390, SDR-2-CON-TS-ZA-2440, SDR-2-CON-TS-ZA-2940, SDR-2-CON-TS-ZA-3040, SDR-2-CON-TS-ZA-2540, SDR-2-CON-TS-ZA-3140, SDR-2-CON-TS-ZA-2540 FF, SDR-2-CON-TS-ZA-2540 SS, SDR-2-CON-TS-ZA-1060 FS+8.5d, SDR-2-TC-SN-1030, SDR-2-CON-TS-ZA-2260, SDR-2-CON-TS-ZA-2590, SDR-2-CON-TS-ZA-3090, SDR-2-CON-TS-ZA-2990, SDR-2-CON-TS-ZA-2490, SDR-2-CON-TS-ZA-2360, SDR-2-CON-TS-ZA-3190, SDR-2-CON-TS-ZA-2190, SDR-2-CON-TS-ZA-2140, SDR-2-CON-TS-ZA-1970, SDR-2-CON-TS-ZA-2890, SDR-2-CON-TS-ZA-2790, SDR-2-CON-TS-ZA-2690, SDR-2-CON-TS-ZA-2090 SS, SDR-2-CON-TS-ZA-1070, SDR-2-CON-TS-ZA-1910 |  | 0d |
|  | 5 | **Portable Water** |  | 2027-06-21 | 2027-06-30 |  |  |  |
| SDR-2-TC-PW-1050 |  | Testing & Commissioning of Potable Network | 9d | 2027-06-21 | 2027-06-30 | SDR-2-CON-PW-ZA-2650, SDR-2-CON-PW-ZA-1070 SS, SDR-2-CON-PW-ZA-2320, SDR-2-CON-PW-ZA-2620, SDR-2-CON-PW-ZA-3200, SDR-2-CON-PW-ZA-3100, SDR-2-CON-PW-ZA-3000, SDR-2-CON-PW-ZA-3700, SDR-2-CON-PW-ZA-2520, SDR-2-CON-PW-ZA-2420, SDR-2-CON-PW-ZA-2900, SDR-2-CON-PW-ZA-3650, SDR-2-CON-PW-ZA-3550, SDR-2-CON-PW-ZA-3450, SDR-2-CON-PW-ZA-3350, SDR-2-CON-PW-ZA-3250, SDR-2-CON-PW-ZA-2800, SDR-2-CON-PW-ZA-2700, SDR-2-CON-PW-ZA-1070, SDR-2-CON-PW-ZA-2750, SDR-2-CON-PW-ZA-2250, SDR-2-CON-PW-ZA-3300, SDR-2-CON-PW-ZA-2550 |  | 0d |
|  | 6 | **Electrical Works** |  | 2027-05-01 | 2027-05-08 |  |  |  |
| SDR-2-TC-EW-1060 |  | Testing & Commissioning of Electrical Network | 7d | 2027-05-01 | 2027-05-08 | SDR-2-CON-SL-ZA-2930, SDR-2-CON-SL-ZA-2970, SDR-2-CON-CC-ZA-1820, SDR-2-CON-CC-ZG-1660 |  | 8d |
|  | 7 | **Landscape & Irrigation Works** |  | 2027-06-21 | 2027-06-27 |  |  |  |
| SDR-2-TC-LIW-1070 |  | Testing & Commissioning of Landscape & Irrigation Network | 6d | 2027-06-21 | 2027-06-27 | SDR-2-TC-CCTV-1080, SDR-2-CON-IR-ZA-1010 SS |  | 7d |
|  | 8 | **CCTV Works** |  | 2027-02-25 | 2027-03-08 |  |  |  |
| SDR-2-TC-CCTV-1080 |  | Testing & Commissioning of medium voltage works | 10d | 2027-02-25 | 2027-03-08 | SDR-2-CON-CC-ZA-1860, SDR-2-CON-CC-ZA-1610 SS, SDR-2-CON-CC-ZG-1520 |  | 0d |
|  | CO | **Close Out** |  | 2027-05-01 | 2027-07-05 |  |  |  |
|  | 1 | **As Built Drawings** |  | 2027-05-01 | 2027-06-19 |  |  |  |
|  | 1 | **Civil** |  | 2027-05-05 | 2027-05-24 |  |  |  |
| SDR-2-CLO-AS-C-1000 |  | Civil As-Built Drawing Submission | 7d | 2027-05-05 | 2027-05-12 | SDR-2-CON-RW-ZA-1710, SDR-2-CON-CC-ZG-1660, SDR-2-TC-CCTV-1080 SS, SDR-2-CON-CC-ZA-1660, SDR-2-CON-CC-ZA-1820, SDR-2-CON-CC-ZA-1780, SDR-2-CON-TE-ZA-4530, SDR-2-CON-TE-ZA-4540, SDR-2-CON-TE-ZA-4440, SDR-2-CON-TE-ZA-4450, SDR-2-CON-TE-ZA-4350, SDR-2-CON-TE-ZA-4360, SDR-2-CON-TE-ZA-4260, SDR-2-CON-TE-ZA-4270, SDR-2-CON-MV-ZA-1340, SDR-2-CON-MV-ZA-1300, SDR-2-CON-SL-ZA-3580, SDR-2-CON-SL-ZA-3550, SDR-2-CON-SL-ZA-3520, SDR-2-CON-SL-ZA-3490, SDR-2-CON-SL-ZA-3460, SDR-2-CON-SL-ZA-3410, SDR-2-CON-SL-ZA-3370, SDR-2-CON-SL-ZA-3330, SDR-2-CON-SL-ZA-3290, SDR-2-CON-SL-ZA-3250, SDR-2-CON-TE-ZA-4170, SDR-2-CON-TE-ZA-4180, SDR-2-CON-TE-ZA-4080, SDR-2-CON-TE-ZA-4090, SDR-2-CON-TE-ZA-3990, SDR-2-CON-TE-ZA-4000, SDR-2-CON-TE-ZA-3900, SDR-2-CON-TE-ZA-3910, SDR-2-CON-TE-ZA-3810, SDR-2-CON-TE-ZA-3820, SDR-2-CON-TE-ZA-3720, SDR-2-CON-TE-ZA-3730, SDR-2-CON-TE-ZA-3630, SDR-2-CON-TE-ZA-3640, SDR-2-CON-TE-ZA-3540, SDR-2-CON-TE-ZA-3550, SDR-2-CON-TE-ZA-3450, SDR-2-CON-TE-ZA-3460, SDR-2-CON-TE-ZA-3360, SDR-2-CON-TE-ZA-3370, SDR-2-CON-TE-ZA-3270, SDR-2-CON-TE-ZA-3280, SDR-2-CON-TE-ZA-1060, SDR-2-CON-TE-ZA-1840, SDR-2-CON-MV-ZA-1260, SDR-2-CON-MV-ZA-1220, SDR-2-CON-MV-ZA-1180, SDR-2-CON-MV-ZA-1100, SDR-2-CON-SL-ZA-2860, SDR-2-CON-SL-ZA-2840, SDR-2-CON-SL-ZA-2820, SDR-2-CON-SL-ZA-2800, SDR-2-CON-SL-ZA-2780, SDR-2-CON-SL-ZA-2930, SDR-2-CON-SL-ZA-3210, SDR-2-CON-SL-ZA-3170, SDR-2-CON-SL-ZA-3130, SDR-2-CON-SL-ZA-3090, SDR-2-CON-SL-ZA-3050, SDR-2-CON-SL-ZA-3010, SDR-2-CON-SL-ZA-2970, SDR-2-CON-SL-ZA-1400, SDR-2-CON-SL-ZA-2890, SDR-2-CON-SL-ZA-1100 |  | 1d |
| SDR-2-CLO-AS-C-1010 |  | Civil As-Built Drawing Approvals | 5d | 2027-05-13 | 2027-05-24 | SDR-2-TC-EW-1060 SS, SDR-2-CLO-AS-C-1000, SDR-2-CON-CC-ZG-1660 |  | 1d |
|  | 2 | **Mechanical** |  | 2027-06-01 | 2027-06-19 |  |  |  |
| SDR-2-CLO-AS-M-1000 |  | Mechanical As-Built Drawing Submission | 8d | 2027-06-01 | 2027-06-09 | SDR-2-CON-PW-ZA-3350, SDR-2-CON-PW-ZA-2320, SDR-2-TC-SWDN-1020 SS, SDR-2-CLO-AS-E-1010 SS+7d |  | 0d |
| SDR-2-CLO-AS-M-1010 |  | Mechanical As-Built Drawing Approvals | 8d | 2027-06-10 | 2027-06-19 | SDR-2-CLO-AS-M-1000, SDR-2-CON-ST-ZA-5480 FS+13d, SDR-2-CON-ST-ZA-4730 FS+3d, SDR-2-CON-ST-ZA-4580 |  | 0d |
|  | 3 | **Electrical** |  | 2027-05-01 | 2027-05-22 |  |  |  |
| SDR-2-CLO-AS-E-1000 |  | Electrical As-Built Drawing Submission | 7d | 2027-05-01 | 2027-05-08 | SDR-2-CON-CC-ZG-1620, SDR-2-TC-EW-1060 SS, SDR-2-CON-ST-ZA-6080, SDR-2-CON-ST-ZA-5630 FS+10d |  | 8d |
| SDR-2-CLO-AS-E-1010 |  | Electrical As-Built Drawing Approvals | 7d | 2027-05-09 | 2027-05-22 | SDR-2-CLO-AS-E-1000 |  | 8d |
|  | 2 | **Training and Manuals** |  | 2027-06-20 | 2027-07-05 |  |  |  |

| ID | WBS | Task | Duration | Start | Finish | Predecessors | Total float |
| --- | --- | --- | --- | --- | --- | --- | --- |
| SDR-2-CLO-TM-1000 |  | Training and Manuals | 14d | 2027-06-20 | 2027-07-05 | SDR-2-CLO-AS-M-1010, SDR-2-CLO-AS-E-1010 SS, SDR-2-CON-IR-ZA-2130 FS+1d | 0d |
|  | 3 | **Demobilize Manpower** |  | 2027-06-20 | 2027-07-05 |  |  |
| SDR-2-CLO-DM-1000 |  | Manpower Demobilize | 14d | 2027-06-20 | 2027-07-05 | SDR-2-CLO-TM-1000 SS | 0d |
|  | 4 | **Demobilize Equipment** |  | 2027-06-20 | 2027-07-05 |  |  |
| SDR-2-CLO-DE-1000 |  | Equipments Demobilize | 14d | 2027-06-20 | 2027-07-05 | SDR-2-CLO-DM-1000 SS | 0d |
|  | 5 | **Removal of Site Offices and Structures** |  | 2027-06-20 | 2027-07-05 |  |  |
| SDR-2-CLO-RO-1000 |  | Site Office Removal | 14d | 2027-06-20 | 2027-07-05 | SDR-2-CLO-DE-1000 SS | 0d |
|  | 6 | **Handover** |  | 2027-06-28 | 2027-07-05 |  |  |
| SDR-2-CLO-HO-1000 |  | Project Handover | 7d | 2027-06-28 | 2027-07-05 | SDR-2-ENG-APP-M-1010, SDR-2-PREL-1100, SDR-2-CON-SE-ZA-1610, SDR-2-CON-IR-ZA-2980 FF, SDR-2-TC-LIW-1070 FF, SDR-2-CLO-DE-1000 SS, SDR-2-CLO-RO-1000 SS, SDR-2-CON-RW-ZA-1150, SDR-2-CON-RW-ZA-1290, SDR-2-CON-ST-ZA-3310, SDR-2-CON-TS-ZA-1080, SDR-2-CON-TS-ZA-1260, SDR-2-CON-TS-ZA-1710, SDR-2-CON-TS-ZA-1800, SDR-2-CON-TE-ZA-1020, SDR-2-CON-TE-ZA-1060, SDR-2-CON-LS-ZA-1060 SS, SDR-2-CON-CC-ZA-1620, SDR-2-CON-CC-ZA-1660, SDR-2-CON-CC-ZG-1660, SDR-2-TC-CCTV-1080, SDR-2-CON-LS-ZG-1060 SS, SDR-2-CON-PW-ZA-1080, SDR-2-PRO-MAS-C-1100, SDR-2-PRO-MAL-M-1060, SDR-2-PRO-MAL-M-1070, SDR-2-CON-SL-ZA-2690 SS, SDR-2-PRO-MAS-E-1000, SDR-2-PRO-MAL-E-1030, SDR-2-PRO-MAL-E-1130, SDR-2-PRO-MAL-E-1120, SDR-2-CON-CC-ZA-1110 SS, SDR-2-PRO-MAL-E-1170, SDR-2-CON-CC-ZA-1270, SDR-2-CON-CC-ZA-1410 SS, SDR-2-CON-IR-ZA-1030 FF, SDR-2-PRO-MAS-E-1020, SDR-2-CON-SL-ZA-1110, SDR-2-PRO-MAS-C-1080, SDR-2-CON-MV-ZA-1150, SDR-2-PRO-MAL-M-1030, SDR-2-PRO-MAL-M-1040, SDR-2-PRO-MAL-E-1010, SDR-2-PRO-MAL-E-1020, SDR-2-PRO-MAL-E-1180, SDR-2-PRO-MAL-E-1060, SDR-2-CON-RW-ZA-1050, SDR-2-CON-RW-ZA-1200, SDR-2-CON-RW-ZA-1340, SDR-2-CON-RW-ZA-1430, SDR-2-CON-RW-ZA-1480, SDR-2-CON-RW-ZA-1570, SDR-2-CON-RW-ZA-1620, SDR-2-CON-RW-ZA-1710, SDR-2-CON-RW-ZA-1760, SDR-2-CON-RW-ZA-1850, SDR-2-CON-RW-ZA-1900, SDR-2-CON-RW-ZA-1990, SDR-2-CON-RW-ZA-2040, SDR-2-CON-RW-ZA-2130, SDR-2-CON-RW-ZA-2180, SDR-2-CON-RW-ZA-2270, SDR-2-CON-RW-ZA-2320, SDR-2-CON-RW-ZA-2410, SDR-2-CON-RW-ZA-2460, SDR-2-CON-RW-ZA-2550, SDR-2-CON-RW-ZA-2600, SDR-2-CON-RW-ZA-2690, SDR-2-CON-RW-ZA-2740, SDR-2-CON-RW-ZA-2830, SDR-2-CON-RW-ZG-1060, SDR-2-CON-RW-ZG-1210, SDR-2-CON-RW-ZG-1310, SDR-2-CON-RW-ZG-1360, SDR-2-CON-RW-ZG-1460, SDR-2-CON-RW-ZG-1510, SDR-2-CON-RW-ZG-1610, SDR-2-CON-RW-ZG-1660, SDR-2-CON-RW-ZG-1760, SDR-2-CON-RW-ZG-1810, SDR-2-CON-RW-ZG-1910, SDR-2-CON-RW-ZG-1960, SDR-2-CON-RW-ZG-2060, SDR-2-CON-RW-ZG-2110, SDR-2-CON-RW-ZG-2210, SDR-2-CON-ST-ZA-3760, SDR-2-CON-ST-ZA-4130, SDR-2-CON-ST-ZA-4280, SDR-2-CON-ST-ZA-4430, SDR-2-CON-ST-ZA-4580, SDR-2-CON-ST-ZA-4730, SDR-2-CON-ST-ZA-4880, SDR-2-CON-ST-ZA-5030, SDR-2-CON-ST-ZA-5070, SDR-2-CON-ST-ZA-5180, SDR-2-CON-ST-ZA-5220, SDR-2-CON-ST-ZA-5930, SDR-2-CON-ST-ZA-5970, SDR-2-CON-ST-ZA-5480, SDR-2-CON-ST-ZA-5630, SDR-2-CON-ST-ZA-6000, SDR-2-CON-ST-ZA-6080, SDR-2-CON-SE-ZA-1440, SDR-2-CON-SE-ZA-1540, SDR-2-CON-SE-ZA-1740, SDR-2-CON-SE-ZA-1840, SDR-2-CON-SE-ZA-1940, SDR-2-CON-SE-ZA-2040, SDR-2-CON-SE-ZA-2140, SDR-2-CON-SE-ZA-2240, SDR-2-CON-SE-ZA-2340, SDR-2-CON-SE-ZA-2440, SDR-2-CON-TS-ZA-1910, SDR-2-CON-TS-ZA-1070, SDR-2-CON-TS-ZA-2260, SDR-2-CON-TS-ZA-2040, SDR-2-CON-TS-ZA-2090, SDR-2-CON-TS-ZA-2690, SDR-2-CON-TS-ZA-2890, SDR-2-CON-TS-ZA-1960, SDR-2-CON-TS-ZA-1970, SDR-2-CON-TS-ZA-2140, SDR-2-CON-TS-ZA-1980, SDR-2-CON-TS-ZA-2190, SDR-2-CON-TS-ZA-3190, SDR-2-CON-TS-ZA-2360, SDR-2-CON-TS-ZA-2490, SDR-2-CON-TS-ZA-2990, SDR-2-CON-TS-ZA-3090, SDR-2-CON-TS-ZA-2590, SDR-2-CON-PW-ZA-2320, SDR-2-CON-PW-ZA-2700, SDR-2-CON-PW-ZA-2800, SDR-2-CON-PW-ZA-3250, SDR-2-CON-PW-ZA-3350, SDR-2-CON-PW-ZA-3450, SDR-2-CON-PW-ZA-3550, SDR-2-CON-PW-ZA-3650, SDR-2-CON-PW-ZA-2900, SDR-2-CON-PW-ZA-2420, SDR-2-CON-PW-ZA-2520, SDR-2-CON-PW-ZA-3700, SDR-2-CON-PW-ZA-3000, SDR-2-CON-PW-ZA-3100, SDR-2-CON-PW-ZA-3200, SDR-2-CON-PW-ZA-2620, SDR-2-CON-SL-ZA-1100, SDR-2-CON-SL-ZA-2890, SDR-2-CON-SL-ZA-1400, SDR-2-CON-SL-ZA-2970, SDR-2-CON-SL-ZA-3010, SDR-2-CON-SL-ZA-3050, SDR-2-CON-SL-ZA-3090, SDR-2-CON-SL-ZA-3130, SDR-2-CON-SL-ZA-3170, SDR-2-CON-SL-ZA-3210, SDR-2-CON-SL-ZA-2930, SDR-2-CON-SL-ZA-2780, SDR-2-CON-SL-ZA-2800, SDR-2-CON-SL-ZA-2820, SDR-2-CON-SL-ZA-2840, SDR-2-CON-SL-ZA-2860, SDR-2-CON-MV-ZA-1100, SDR-2-CON-MV-ZA-1180, SDR-2-CON-MV-ZA-1220, SDR-2-CON-MV-ZA-1260, SDR-2-CON-TE-ZA-1840, SDR-2-CON-TE-ZA-3280, SDR-2-CON-TE-ZA-3270, SDR-2-CON-TE-ZA-3370, SDR-2-CON-TE-ZA-3360, SDR-2-CON-TE-ZA-3460, SDR-2-CON-TE-ZA-3450, SDR-2-CON-TE-ZA-3550, SDR-2-CON-TE-ZA-3540, SDR-2-CON-TE-ZA-3640, SDR-2-CON-TE-ZA-3630, SDR-2-CON-TE-ZA-3730, SDR-2-CON-TE-ZA-3720, SDR-2-CON-TE-ZA-3820, SDR-2-CON-TE-ZA-3810, SDR-2-CON-TE-ZA-3910, SDR-2-CON-TE-ZA-3900, SDR-2-CON-TE-ZA-4000, SDR-2-CON-TE-ZA-3990, SDR-2-CON-TE-ZA-4090, SDR-2-CON-TE-ZA-4080, SDR-2-CON-TE-ZA-4180, SDR-2-CON-TE-ZA-4170, SDR-2-CON-SL-ZA-3250, SDR-2-CON-SL-ZA-3290, SDR-2-CON-SL-ZA-3330, SDR-2-CON-SL-ZA-3370, SDR-2-CON-SL-ZA-3410, SDR-2-CON-SL-ZA-3460, SDR-2-CON-SL-ZA-3490, SDR-2-CON-SL-ZA-3520, SDR-2-CON-SL-ZA-3550, SDR-2-CON-SL-ZA-3580, SDR-2-CON-MV-ZA-1300, SDR-2-CON-MV-ZA-1340, SDR-2-CON-TE-ZA-4270, SDR-2-CON-TE-ZA-4260, SDR-2-CON-TE-ZA-4360, SDR-2-CON-TE-ZA-4350, SDR-2-CON-TE-ZA-4450, SDR-2-CON-TE-ZA-4440, SDR-2-CON-TE-ZA-4540, SDR-2-CON-TE-ZA-4530, SDR-2-CON-IR-ZA-2150 FF, SDR-2-CON-IR-ZA-2190 SS | 0d |

## Version 9 (data date 2026-11-16, saved 2026-11-19, file Sudair 2 Pat2 16-11-26.xer)

Last finish 2027-07-05 → 2027-12-05 (+153d). Complete tasks 823 → 898.

Added:

| ID | Task | Start | Finish |
| --- | --- | --- | --- |
| 17 | **STORM WATER LINE IN From MH - A2 / 2 TO STA-A2/10** | 2026-07-01 | 2027-04-06 |
| 9 | **TSE NETWORK IN ( PH2-ART-MC00 )** | 2026-09-07 | 2027-09-15 |

Removed: STORM WATER LINE IN ( PH2-A-MCI0 ); TSE NETWORK IN ( PH2-ART-MCA0 )

Changed:

| ID | Task | Start | Finish | Total float | Other |
| --- | --- | --- | --- | --- | --- |
| M | **Milestones** |  | 2027-07-05 → 2027-12-05 (+153d) |  |  |
| SDR-2-MILS-1080 | Completion of finishing works in the project | 2027-07-05 → 2027-12-04 (+152d) | 2027-07-05 → 2027-12-04 (+152d) | 0.7d → -131d |  |
| 1 | **Major Milestone** |  | 2027-07-05 → 2027-12-05 (+153d) |  |  |
| SDR-2-MILS-1010 | Project Finish Milstone | 2027-07-05 → 2027-12-05 (+153d) | 2027-07-05 → 2027-12-05 (+153d) | 0d → -132d |  |
| 3 | **Contractual Milestone** | 2026-04-06 → 2026-02-05 (-60d) | 2027-07-05 → 2027-09-30 (+87d) |  |  |
| SDR-2-MILS-1030 | Execution Plan and Baseline Submission Finish Milestone | 2026-04-06 A → 2026-02-05 A (-60d) | 2026-04-06 A → 2026-02-05 A (-60d) |  |  |
| SDR-2-MILS-1040 | Submission and approval of plans and materials Finish Milestone | 2026-07-25 A → 2026-03-05 A (-142d) | 2026-07-25 A → 2026-03-05 A (-142d) |  |  |
| SDR-2-MILS-1060 | Completion of medium voltage works | 2027-03-04 → 2027-04-29 (+56d) | 2027-03-04 → 2027-04-29 (+56d) | 21d → -29d |  |
| SDR-2-MILS-1050 | Completion of road works | 2027-05-05 → 2027-06-03 (+29d) | 2027-05-05 → 2027-06-03 (+29d) | 7d → -19d |  |
| SDR-2-MILS-1070 | Completion of All Network work | 2027-05-05 → 2027-09-30 (+148d) | 2027-05-05 → 2027-09-30 (+148d) | 47d → -76d |  |
| 2 | **Phases Milestone** | 2026-11-09 → 2026-11-16 (+7d) | 2027-07-05 → 2027-12-05 (+153d) |  |  |
| SDR-2-MILS-1090 | Engineering Phase Finish Milestone | 2026-11-09 → 2026-11-16 (+7d) | 2026-11-09 → 2026-11-16 (+7d) | 80d → -9.8d |  |
| SDR-2-MILS-1100 | Procurment Phase Finish Milestone | 2027-01-12 → 2027-02-01 (+20d) | 2027-01-12 → 2027-02-01 (+20d) | 18d → 25d |  |
| SDR-2-MILS-1110 | Construction Phase Finish Milestone | 2027-07-05 → 2027-12-05 (+153d) | 2027-07-05 → 2027-12-05 (+153d) | 0d → -132d |  |
| MB | **Mobilization** |  | 2026-04-06 → 2026-02-05 (-60d) |  |  |
| 2 | **Preliminary Submittals** |  | 2026-04-06 → 2026-02-05 (-60d) |  |  |
| 1 | **HSSE Plan** |  | 2026-02-28 → 2026-02-05 (-23d) |  |  |
| SDR-2-PREL-1010 | Project HSSE Plan Approval |  | 2026-02-28 A → 2026-02-05 A (-23d) |  |  |
| 2 | **Quality Control Plan** |  | 2026-03-05 → 2026-02-05 (-28d) |  |  |
| SDR-2-PREL-1030 | Project Quality Plan Approval |  | 2026-03-05 A → 2026-02-05 A (-28d) |  |  |
| 4 | **Risk Managment Plan** |  | 2026-02-07 → 2026-02-03 (-4d) |  |  |
| SDR-2-PREL-1060 | Project Risk Managment Plan Submission |  | 2026-02-07 A → 2026-02-03 A (-4d) |  |  |
| 5 | **Project Execution Plan** |  | 2026-02-07 → 2026-02-05 (-2d) |  |  |
| SDR-2-PREL-1080 | Project Execution Plan Submission |  | 2026-02-07 A → 2026-02-03 A (-4d) |  |  |
| SDR-2-PREL-1090 | Project Execution Plan Approvals | 2026-02-07 A → 2026-02-03 A (-4d) | 2026-02-07 A → 2026-02-05 A (-2d) |  |  |
| 6 | **Project Schedule** |  | 2026-04-06 → 2026-02-05 (-60d) |  |  |
| SDR-2-PREL-1110 | Project Schedule Approvals |  | 2026-04-06 A → 2026-02-05 A (-60d) |  |  |
| EN | **Engineering** |  | 2026-11-21 → 2026-11-28 (+7d) |  |  |
| 1 | **Shop Drawings Stage** |  | 2026-11-21 → 2026-11-28 (+7d) |  |  |
| SDR-2-ENG-SUB-C-1000 | DEMOLISH WORKS OVERALL PLAN Submission |  |  |  | resources SIC- Cost [12338.8]; Civil Drafman [138.93 h]; Design Engineer [138.93 h] → SIC- Cost; Civil Drafman [138.93 h]; Design Engineer [138.93 h] |
| SDR-2-ENG-SUB-C-1010 | ROAD ZONES LAYOUT PLAN Submission |  |  |  | resources SIC- Cost [1.25]; Civil Drafman [138.93 h]; Design Engineer [138.93 h] → SIC- Cost; Civil Drafman [138.93 h]; Design Engineer [138.93 h] |
| SDR-2-ENG-SUB-C-1020 | ROAD LAYOUT PLAN Submission |  |  |  | resources SIC- Cost [1.25]; Civil Drafman [138.93 h]; Design Engineer [138.93 h] → SIC- Cost; Civil Drafman [138.93 h]; Design Engineer [138.93 h] |
| SDR-2-ENG-SUB-C-1030 | TYPICAL ROAD CROSS SECTIONS Submission |  |  |  | resources SIC- Cost [1.25]; Civil Drafman [138.93 h]; Design Engineer [138.93 h] → SIC- Cost; Civil Drafman [138.93 h]; Design Engineer [138.93 h] |
| SDR-2-ENG-SUB-C-1040 | GRADING TYPICAL CROSS SECTIONS Submission |  |  |  | resources SIC- Cost [1.25]; Civil Drafman [138.94 h]; Design Engineer [138.94 h] → SIC- Cost; Civil Drafman [138.94 h]; Design Engineer [138.94 h] |
| SDR-2-ENG-SUB-C-1050 | ZONE A ROAD SETTING OUT PLAN Submission |  |  |  | resources SIC- Cost [1.25]; Civil Drafman [138.93 h]; Design Engineer [138.93 h] → SIC- Cost; Civil Drafman [138.93 h]; Design Engineer [138.93 h] |
| SDR-2-ENG-SUB-C-1060 | ZONE G ROAD SETTING OUT PLAN Submission |  |  |  | resources SIC- Cost [1.25]; Civil Drafman [138.93 h]; Design Engineer [138.93 h] → SIC- Cost; Civil Drafman [138.93 h]; Design Engineer [138.93 h] |
| SDR-2-ENG-SUB-C-1070 | TYPICAL PAVEMENT DETAILS Submission |  |  |  | resources SIC- Cost [1.25]; Civil Drafman [138.93 h]; Design Engineer [138.93 h] → SIC- Cost; Civil Drafman [138.93 h]; Design Engineer [138.93 h] |
| SDR-2-ENG-SUB-C-1080 | TYPICAL JUNCTION DETAIL LOCAL-1 & LOCAL-1 (40M ROW) Submission |  |  |  | resources SIC- Cost [1.25]; Civil Drafman [138.93 h]; Design Engineer [138.93 h] → SIC- Cost; Civil Drafman [138.93 h]; Design Engineer [138.93 h] |
| SDR-2-ENG-SUB-C-1100 | ROAD PROFILES (ZONE G) Submission |  |  |  | resources SIC- Cost [1.25]; Civil Drafman [138.93 h]; Design Engineer [138.93 h] → SIC- Cost; Civil Drafman [138.93 h]; Design Engineer [138.93 h] |
| SDR-2-ENG-SUB-C-1110 | Overall Kerbing and Pavement Layout Submission |  |  |  | resources SIC- Cost [1.25]; Civil Drafman [138.93 h]; Design Engineer [138.93 h] → SIC- Cost; Civil Drafman [138.93 h]; Design Engineer [138.93 h] |
| SDR-2-ENG-SUB-C-1090 | ROAD PROFILES (ZONE A) Submission |  |  |  | resources SIC- Cost [1.25]; Civil Drafman [138.93 h]; Design Engineer [138.93 h] → SIC- Cost; Civil Drafman [138.93 h]; Design Engineer [138.93 h] |
| SDR-2-ENG-SUB-C-1120 | Typical Concrete Kerb Details Submission |  |  |  | resources SIC- Cost [1.25]; Civil Drafman [138.94 h]; Design Engineer [138.94 h] → SIC- Cost; Civil Drafman [138.94 h]; Design Engineer [138.94 h] |
| SDR-2-ENG-SUB-C-1130 | Typical Pavement Details Submission |  |  |  | resources SIC- Cost [1.25]; Civil Drafman [138.93 h]; Design Engineer [138.93 h] → SIC- Cost; Civil Drafman [138.93 h]; Design Engineer [138.93 h] |
| SDR-2-ENG-SUB-C-1140 | Road Marking Layout Submission |  |  |  | resources SIC- Cost [1.25]; Civil Drafman [138.93 h]; Design Engineer [138.93 h] → SIC- Cost; Civil Drafman [138.93 h]; Design Engineer [138.93 h] |
| SDR-2-ENG-SUB-C-1150 | Road Marking Details Submission |  |  |  | resources SIC- Cost [1.25]; Civil Drafman [138.94 h]; Design Engineer [138.94 h] → SIC- Cost; Civil Drafman [138.94 h]; Design Engineer [138.94 h] |
| SDR-2-ENG-SUB-C-1160 | Road Marking And Signage Typical Standard Details Submission |  |  |  | resources SIC- Cost [1.25]; Civil Drafman [138.93 h]; Design Engineer [138.93 h] → SIC- Cost; Civil Drafman [138.93 h]; Design Engineer [138.93 h] |
| SDR-2-ENG-SUB-C-1170 | Standard Details Submission |  |  |  | resources SIC- Cost [1.25]; Civil Drafman [138.93 h]; Design Engineer [138.93 h] → SIC- Cost; Civil Drafman [138.93 h]; Design Engineer [138.93 h] |
| SDR-2-ENG-SUB-C-1180 | Site Safety Notice Board Submission |  |  |  | resources SIC- Cost [1.25]; Civil Drafman [138.93 h]; Design Engineer [138.93 h] → SIC- Cost; Civil Drafman [138.93 h]; Design Engineer [138.93 h] |
| SDR-2-ENG-SUB-C-1190 | Location Plan For Traffic Signage Submission |  |  |  | resources SIC- Cost [1.25]; Civil Drafman [138.93 h]; Design Engineer [138.93 h] → SIC- Cost; Civil Drafman [138.93 h]; Design Engineer [138.93 h] |
| SDR-2-ENG-SUB-M-1000 | Storm Drainage Master Plan Submission |  |  |  | resources SIC- Cost [1.25]; Mechanical Drafman [138.93 h]; Design Engineer [138.93 h] → SIC- Cost; Mechanical Drafman [138.93 h]; Design Engineer [138.93 h] |
| SDR-2-ENG-SUB-M-1010 | Storm Drainage Layout Submission |  |  |  | resources SIC- Cost [1.25]; Mechanical Drafman [138.93 h]; Design Engineer [138.93 h] → SIC- Cost; Mechanical Drafman [138.93 h]; Design Engineer [138.93 h] |
| SDR-2-ENG-SUB-M-1020 | Storm Network Profile Submission |  |  |  | resources SIC- Cost [2.5]; Mechanical Drafman [138.93 h]; Design Engineer [138.93 h] → SIC- Cost; Mechanical Drafman [138.93 h]; Design Engineer [138.93 h] |
| SDR-2-ENG-SUB-M-1030 | Storm Network Standard Details Submission |  |  |  | resources SIC- Cost [2.5]; Mechanical Drafman [138.93 h]; Design Engineer [138.93 h] → SIC- Cost; Mechanical Drafman [138.93 h]; Design Engineer [138.93 h] |
| SDR-2-ENG-SUB-M-1040 | Storm Network Section Submission |  |  |  | resources SIC- Cost [2.5]; Mechanical Drafman [138.93 h]; Design Engineer [138.93 h] → SIC- Cost; Mechanical Drafman [138.93 h]; Design Engineer [138.93 h] |
| SDR-2-ENG-SUB-M-1050 | POND A LAYOUT AND PROFILE Submission |  |  |  | resources SIC- Cost [1.25]; Mechanical Drafman [138.93 h]; Design Engineer [138.93 h] → SIC- Cost; Mechanical Drafman [138.93 h]; Design Engineer [138.93 h] |
| SDR-2-ENG-SUB-M-1060 | TYPICAL ENERGY DISSAPATION DETAILS Submission |  |  |  | resources SIC- Cost [1.25]; Mechanical Drafman [138.93 h]; Design Engineer [138.93 h] → SIC- Cost; Mechanical Drafman [138.93 h]; Design Engineer [138.93 h] |
| SDR-2-ENG-SUB-M-1070 | STORM WATER POND SIPHON PIPE DETAILS Submission |  |  |  | resources SIC- Cost [1.25]; Mechanical Drafman [138.93 h]; Design Engineer [138.93 h] → SIC- Cost; Mechanical Drafman [138.93 h]; Design Engineer [138.93 h] |
| SDR-2-ENG-SUB-M-1080 | REINFORCEMENT CONCRETE WEIR AND GABION WALL DETAILS Submission |  |  |  | resources SIC- Cost [1.25]; Mechanical Drafman [138.93 h]; Design Engineer [138.93 h] → SIC- Cost; Mechanical Drafman [138.93 h]; Design Engineer [138.93 h] |
| SDR-2-ENG-SUB-M-1090 | TYPICAL TRENCH AND PIPE BEDDING DETAILS Submission |  |  |  | resources SIC- Cost [1.25]; Mechanical Drafman [138.93 h]; Design Engineer [138.93 h] → SIC- Cost; Mechanical Drafman [138.93 h]; Design Engineer [138.93 h] |
| SDR-2-ENG-SUB-M-1100 | FLUSH AND KERB INLET MANHOLE DETAILS Submission |  |  |  | resources SIC- Cost [1.25]; Mechanical Drafman [138.93 h]; Design Engineer [138.93 h] → SIC- Cost; Mechanical Drafman [138.93 h]; Design Engineer [138.93 h] |
| SDR-2-ENG-SUB-M-1110 | BOX PIPE CONNECTION AND BOX PIPE WIDENING DETAILS Submission |  |  |  | resources SIC- Cost [1.25]; Mechanical Drafman [138.93 h]; Design Engineer [138.93 h] → SIC- Cost; Mechanical Drafman [138.93 h]; Design Engineer [138.93 h] |
| SDR-2-ENG-SUB-M-1120 | TYPICAL BOX PIPE JUNCTION DETAILS Submission |  |  |  | resources SIC- Cost [1.25]; Mechanical Drafman [138.93 h]; Design Engineer [138.93 h] → SIC- Cost; Mechanical Drafman [138.93 h]; Design Engineer [138.93 h] |
| SDR-2-ENG-SUB-M-1130 | TYPICAL JUNCTION CHAMBER REINFORCEMENT DETAILS Submission |  |  |  | resources SIC- Cost [1.25]; Mechanical Drafman [138.93 h]; Design Engineer [138.93 h] → SIC- Cost; Mechanical Drafman [138.93 h]; Design Engineer [138.93 h] |
| SDR-2-ENG-SUB-M-1140 | DEPRESSED KERB TO SWALE/MANHOLE DETAILS Submission |  |  |  | resources SIC- Cost [1.25]; Mechanical Drafman [138.93 h]; Design Engineer [138.93 h] → SIC- Cost; Mechanical Drafman [138.93 h]; Design Engineer [138.93 h] |
| SDR-2-ENG-SUB-M-1150 | BOX PIPE AND SWALE CONNECTION DETAILS Submission |  |  |  | resources SIC- Cost [1.25]; Mechanical Drafman [138.93 h]; Design Engineer [138.93 h] → SIC- Cost; Mechanical Drafman [138.93 h]; Design Engineer [138.93 h] |
| SDR-2-ENG-SUB-M-1160 | Sewage Layout Master Plan Submission |  |  |  | resources SIC- Cost [1.25]; Mechanical Drafman [138.93 h]; Design Engineer [138.93 h] → SIC- Cost; Mechanical Drafman [138.93 h]; Design Engineer [138.93 h] |
| SDR-2-ENG-SUB-M-1170 | Sewage Network Profile Submission |  |  |  | resources SIC- Cost [1.25]; Mechanical Drafman [138.93 h]; Design Engineer [138.93 h] → SIC- Cost; Mechanical Drafman [138.93 h]; Design Engineer [138.93 h] |
| SDR-2-ENG-SUB-M-1180 | Sewage Network Standard Details Submission |  |  |  | resources SIC- Cost [2.5]; Mechanical Drafman [138.93 h]; Design Engineer [138.93 h] → SIC- Cost; Mechanical Drafman [138.93 h]; Design Engineer [138.93 h] |
| SDR-2-ENG-SUB-M-1190 | Sewage Network Section Submission |  |  |  | resources SIC- Cost [2.5]; Mechanical Drafman [138.93 h]; Design Engineer [138.93 h] → SIC- Cost; Mechanical Drafman [138.93 h]; Design Engineer [138.93 h] |
| SDR-2-ENG-SUB-M-1210 | TSE Network Profile Submission |  |  |  | resources SIC- Cost [1.25]; Mechanical Drafman [138.93 h]; Design Engineer [138.93 h] → SIC- Cost; Mechanical Drafman [138.93 h]; Design Engineer [138.93 h] |

| ID | Task | Finish | Other |
| --- | --- | --- | --- |
| SDR-2-ENG-SUB-M-1220 | TSE Network Standard Details Submission |  | resources SIC- Cost [2.5]; Mechanical Drafman [138.93 h]; Design Engineer [138.93 h] → SIC- Cost; Mechanical Drafman [138.93 h]; Design Engineer [138.93 h] |
| SDR-2-ENG-SUB-M-1230 | TSE Network Section Submission |  | resources SIC- Cost [2.5]; Mechanical Drafman [138.93 h]; Design Engineer [138.93 h] → SIC- Cost; Mechanical Drafman [138.93 h]; Design Engineer [138.93 h] |
| SDR-2-ENG-SUB-M-1200 | TSE Layout Master Plan Submission |  | resources SIC- Cost [1.25]; Mechanical Drafman [138.93 h]; Design Engineer [138.93 h] → SIC- Cost; Mechanical Drafman [138.93 h]; Design Engineer [138.93 h] |
| SDR-2-ENG-SUB-M-1240 | Potable Water Piping Layout Master Plan Submission |  | resources SIC- Cost [1.25]; Mechanical Drafman [138.93 h]; Design Engineer [138.93 h] → SIC- Cost; Mechanical Drafman [138.93 h]; Design Engineer [138.93 h] |
| SDR-2-ENG-SUB-M-1250 | Potable Water Piping Layout Submission |  | resources SIC- Cost [1.25]; Mechanical Drafman [138.93 h]; Design Engineer [138.93 h] → SIC- Cost; Mechanical Drafman [138.93 h]; Design Engineer [138.93 h] |
| SDR-2-ENG-SUB-M-1260 | Potable Water Standard Details Submission |  | resources SIC- Cost [2.5]; Mechanical Drafman [138.93 h]; Design Engineer [138.93 h] → SIC- Cost; Mechanical Drafman [138.93 h]; Design Engineer [138.93 h] |
| SDR-2-ENG-SUB-M-1270 | Potable Water Section Submission |  | resources SIC- Cost [1.25]; Mechanical Drafman [138.93 h]; Design Engineer [138.93 h] → SIC- Cost; Mechanical Drafman [138.93 h]; Design Engineer [138.93 h] |
| SDR-2-ENG-SUB-E-1000 | MV Network Layout Submission |  | resources SIC- Cost [1.25]; Electrical Drafman [138.93 h]; Design Engineer [138.93 h] → SIC- Cost; Electrical Drafman [138.93 h]; Design Engineer [138.93 h] |
| SDR-2-ENG-SUB-E-1080 | Street Lighting Layout Submission |  | resources SIC- Cost [1.25]; Electrical Drafman [138.93 h]; Design Engineer [138.93 h] → SIC- Cost; Electrical Drafman [138.93 h]; Design Engineer [138.93 h] |
| SDR-2-ENG-SUB-E-1090 | Single Line Diagram for Street Lighting Submission |  | resources SIC- Cost [1.25]; Electrical Drafman [138.93 h]; Design Engineer [138.93 h] → SIC- Cost; Electrical Drafman [138.93 h]; Design Engineer [138.93 h] |
| SDR-2-ENG-SUB-E-1170 | Telecom Overall Layout Submission |  | resources SIC- Cost [1.25]; Electrical Drafman [138.93 h]; Design Engineer [138.93 h] → SIC- Cost; Electrical Drafman [138.93 h]; Design Engineer [138.93 h] |
| SDR-2-ENG-SUB-E-1010 | MV Single Line Diagram Submission |  | resources SIC- Cost [1.25]; Electrical Drafman [138.93 h]; Design Engineer [138.93 h] → SIC- Cost; Electrical Drafman [138.93 h]; Design Engineer [138.93 h] |
| SDR-2-ENG-SUB-E-1100 | Voltage Drop Calculations Submission |  | resources SIC- Cost [1.25]; Electrical Drafman [138.93 h]; Design Engineer [138.93 h] → SIC- Cost; Electrical Drafman [138.93 h]; Design Engineer [138.93 h] |
| SDR-2-ENG-SUB-E-1180 | Typical Trenches Detail Submission |  | resources SIC- Cost [1.25]; Electrical Drafman [138.93 h]; Design Engineer [138.93 h] → SIC- Cost; Electrical Drafman [138.93 h]; Design Engineer [138.93 h] |
| SDR-2-ENG-SUB-E-1020 | Design Of MV Loops Submission |  | resources SIC- Cost [1.25]; Electrical Drafman [138.93 h]; Design Engineer [138.93 h] → SIC- Cost; Electrical Drafman [138.93 h]; Design Engineer [138.93 h] |
| SDR-2-ENG-SUB-E-1030 | Loads For Plots Submission |  | resources SIC- Cost [1.25]; Electrical Drafman [138.93 h]; Design Engineer [138.93 h] → SIC- Cost; Electrical Drafman [138.93 h]; Design Engineer [138.93 h] |
| SDR-2-ENG-SUB-E-1040 | Distribution Substation Submission |  | resources SIC- Cost [1.25]; Electrical Drafman [138.93 h]; Design Engineer [138.93 h] → SIC- Cost; Electrical Drafman [138.93 h]; Design Engineer [138.93 h] |
| SDR-2-ENG-SUB-E-1050 | MV Trench Configuration Details Submission |  | resources SIC- Cost [1.25]; Electrical Drafman [138.93 h]; Design Engineer [138.93 h] → SIC- Cost; Electrical Drafman [138.93 h]; Design Engineer [138.93 h] |
| SDR-2-ENG-SUB-E-1060 | MV Electrical Duct Banks Details Submission |  | resources SIC- Cost [1.25]; Electrical Drafman [138.93 h]; Design Engineer [138.93 h] → SIC- Cost; Electrical Drafman [138.93 h]; Design Engineer [138.93 h] |
| SDR-2-ENG-SUB-E-1070 | Distribution Transformers Submission |  | resources SIC- Cost [1.25]; Electrical Drafman [138.93 h]; Design Engineer [138.93 h] → SIC- Cost; Electrical Drafman [138.93 h]; Design Engineer [138.93 h] |
| SDR-2-ENG-SUB-E-1110 | Construction Details Lighting Poles Submission |  | resources SIC- Cost [1.25]; Electrical Drafman [138.93 h]; Design Engineer [138.93 h] → SIC- Cost; Electrical Drafman [138.93 h]; Design Engineer [138.93 h] |
| SDR-2-ENG-SUB-E-1120 | Base Plate Construction Details Submission |  | resources SIC- Cost [1.25]; Electrical Drafman [138.93 h]; Design Engineer [138.93 h] → SIC- Cost; Electrical Drafman [138.93 h]; Design Engineer [138.93 h] |
| SDR-2-ENG-SUB-E-1190 | Typical Trenches Crossing Detail Submission |  | resources SIC- Cost [1.25]; Electrical Drafman [138.93 h]; Design Engineer [138.93 h] → SIC- Cost; Electrical Drafman [138.93 h]; Design Engineer [138.93 h] |
| SDR-2-ENG-SUB-E-1200 | Manholes,Hand-Holes Details Submission |  | resources SIC- Cost [1.25]; Electrical Drafman [138.93 h]; Design Engineer [138.93 h] → SIC- Cost; Electrical Drafman [138.93 h]; Design Engineer [138.93 h] |
| SDR-2-ENG-SUB-E-1210 | Typical Details Of Pock Out Ducts Submission |  | resources SIC- Cost [1.25]; Electrical Drafman [138.93 h]; Design Engineer [138.93 h] → SIC- Cost; Electrical Drafman [138.93 h]; Design Engineer [138.93 h] |
| SDR-2-ENG-SUB-E-1130 | Lighting Pole Identification Submission |  | resources SIC- Cost [1.25]; Electrical Drafman [138.93 h]; Design Engineer [138.93 h] → SIC- Cost; Electrical Drafman [138.93 h]; Design Engineer [138.93 h] |
| SDR-2-ENG-SUB-E-1140 | Typical Feeder Pillar and Timer Switch Details Submission |  | resources SIC- Cost [1.25]; Electrical Drafman [138.93 h]; Design Engineer [138.93 h] → SIC- Cost; Electrical Drafman [138.93 h]; Design Engineer [138.93 h] |
| SDR-2-ENG-SUB-E-1150 | Public Lighting Draw-Pit Construction Details Submission |  | resources SIC- Cost [1.25]; Electrical Drafman [138.93 h]; Design Engineer [138.93 h] → SIC- Cost; Electrical Drafman [138.93 h]; Design Engineer [138.93 h] |
| SDR-2-ENG-SUB-E-1160 | Concrete Earth Pit Construction Details Submission |  | resources SIC- Cost [1.25]; Electrical Drafman [138.93 h]; Design Engineer [138.93 h] → SIC- Cost; Electrical Drafman [138.93 h]; Design Engineer [138.93 h] |
| SDR-2-ENG-SUB-E-1220 | CCTV Overall Layout Submission |  | resources SIC- Cost [1.25]; Electrical Drafman [138.93 h]; Design Engineer [138.93 h] → SIC- Cost; Electrical Drafman [138.93 h]; Design Engineer [138.93 h] |
| SDR-2-ENG-SUB-E-1230 | CCTV Control Room Layout Submission |  | resources SIC- Cost [1.25]; Electrical Drafman [138.93 h]; Design Engineer [138.93 h] → SIC- Cost; Electrical Drafman [138.93 h]; Design Engineer [138.93 h] |
| SDR-2-ENG-SUB-E-1240 | CCTV System Schematic Drawing Submission |  | resources SIC- Cost [1.25]; Electrical Drafman [138.93 h]; Design Engineer [138.93 h] → SIC- Cost; Electrical Drafman [138.93 h]; Design Engineer [138.93 h] |
| SDR-2-ENG-SUB-E-1250 | CCTV System 7 MTR Pole Installation Detail Submission |  | resources SIC- Cost [1.25]; Electrical Drafman [138.93 h]; Design Engineer [138.93 h] → SIC- Cost; Electrical Drafman [138.93 h]; Design Engineer [138.93 h] |
| SDR-2-ENG-SUB-E-1260 | CCTV System 25 MTR Pole Installation Detail Submission |  | resources SIC- Cost [1.25]; Electrical Drafman [138.93 h]; Design Engineer [138.93 h] → SIC- Cost; Electrical Drafman [138.93 h]; Design Engineer [138.93 h] |
| SDR-2-ENG-SUB-E-1270 | CCTV System 35 MTR Pole Installation Detail Submission |  | resources SIC- Cost [1.25]; Electrical Drafman [138.93 h]; Design Engineer [138.93 h] → SIC- Cost; Electrical Drafman [138.93 h]; Design Engineer [138.93 h] |
| SDR-2-ENG-SUB-E-1280 | Typical Solar Panel Installation Detail Submission |  | resources SIC- Cost [1.25]; Electrical Drafman [138.93 h]; Design Engineer [138.93 h] → SIC- Cost; Electrical Drafman [138.93 h]; Design Engineer [138.93 h] |
| SDR-2-ENG-SUB-M-1280 | Irrigation Layout Master Plan Submission |  | resources SIC- Cost [1.25]; Mechanical Drafman [138.93 h]; Design Engineer [138.93 h] → SIC- Cost; Mechanical Drafman [138.93 h]; Design Engineer [138.93 h] |
| SDR-2-ENG-SUB-M-1290 | Irrigation Network Profile Submission |  | resources SIC- Cost [1.25]; Mechanical Drafman [138.93 h]; Design Engineer [138.93 h] → SIC- Cost; Mechanical Drafman [138.93 h]; Design Engineer [138.93 h] |
| SDR-2-ENG-SUB-M-1300 | Irrigation Network Standard Details Submission |  | resources SIC- Cost [1]; Mechanical Drafman [138.93 h]; Design Engineer [138.93 h] → SIC- Cost; Mechanical Drafman [138.93 h]; Design Engineer [138.93 h] |
| SDR-2-ENG-SUB-M-1310 | Irrigation Network Section Submission |  | resources SIC- Cost [1]; Mechanical Drafman [138.93 h]; Design Engineer [138.93 h] → SIC- Cost; Mechanical Drafman [138.93 h]; Design Engineer [138.93 h] |
| SDR-2-ENG-SUB-M-1320 | Landscape Layout Master Plan Submission |  | resources SIC- Cost [1]; Mechanical Drafman [138.93 h]; Design Engineer [138.93 h] → SIC- Cost; Mechanical Drafman [138.93 h]; Design Engineer [138.93 h] |
| 4 | **Approvals** | 2026-11-21 → 2026-11-28 (+7d) |  |
| SDR-2-ENG-APP-C-1000 | DEMOLISH WORKS OVERALL PLAN Approval |  | resources SIC- Cost [3.75]; Project Coordinator [416.8 h] → SIC- Cost; Project Coordinator [416.8 h] |
| SDR-2-ENG-APP-C-1010 | ROAD ZONES LAYOUT PLAN Approval |  | resources SIC- Cost [3.75]; Project Coordinator [416.8 h] → SIC- Cost; Project Coordinator [416.8 h] |
| SDR-2-ENG-APP-C-1030 | TYPICAL ROAD CROSS SECTIONS Approval |  | resources SIC- Cost [3.75]; Project Coordinator [416.8 h] → SIC- Cost; Project Coordinator [416.8 h] |
| SDR-2-ENG-APP-C-1020 | ROAD LAYOUT PLAN Approval |  | resources SIC- Cost [3.75]; Project Coordinator [416.8 h] → SIC- Cost; Project Coordinator [416.8 h] |
| SDR-2-ENG-APP-C-1040 | GRADING TYPICAL CROSS SECTIONS Approval |  | resources SIC- Cost [3.75]; Project Coordinator [416.8 h] → SIC- Cost; Project Coordinator [416.8 h] |
| SDR-2-ENG-APP-C-1050 | ZONE A ROAD SETTING OUT PLAN Approval |  | resources SIC- Cost [3.75]; Project Coordinator [416.8 h] → SIC- Cost; Project Coordinator [416.8 h] |
| SDR-2-ENG-APP-C-1060 | ZONE G ROAD SETTING OUT PLAN Approval |  | resources SIC- Cost [3.75]; Project Coordinator [416.8 h] → SIC- Cost; Project Coordinator [416.8 h] |
| SDR-2-ENG-APP-C-1070 | TYPICAL PAVEMENT DETAILS Approval |  | resources SIC- Cost [3.75]; Project Coordinator [416.8 h] → SIC- Cost; Project Coordinator [416.8 h] |
| SDR-2-ENG-APP-C-1080 | TYPICAL JUNCTION DETAIL LOCAL-1 & LOCAL-1 (40M ROW) Approval |  | resources SIC- Cost [3.75]; Project Coordinator [416.8 h] → SIC- Cost; Project Coordinator [416.8 h] |
| SDR-2-ENG-APP-C-1090 | ROAD PROFILES (ZONE A) Approval |  | resources SIC- Cost [3.75]; Project Coordinator [416.8 h] → SIC- Cost; Project Coordinator [416.8 h] |
| SDR-2-ENG-APP-C-1100 | ROAD PROFILES (ZONE G) Approval |  | resources SIC- Cost [3.75]; Project Coordinator [416.8 h] → SIC- Cost; Project Coordinator [416.8 h] |
| SDR-2-ENG-APP-C-1110 | Overall Kerbing and Pavement Layout Approval |  | resources SIC- Cost [3.75]; Project Coordinator [416.8 h] → SIC- Cost; Project Coordinator [416.8 h] |
| SDR-2-ENG-APP-C-1120 | Typical Concrete Kerb Details Approval |  | resources SIC- Cost [3.75]; Project Coordinator [416.8 h] → SIC- Cost; Project Coordinator [416.8 h] |
| SDR-2-ENG-APP-C-1130 | Typical Pavement Details Approval |  | resources SIC- Cost [3.75]; Project Coordinator [416.8 h] → SIC- Cost; Project Coordinator [416.8 h] |
| SDR-2-ENG-APP-C-1140 | Road Marking Layout Approval |  | resources SIC- Cost [3.75]; Project Coordinator [416.8 h] → SIC- Cost; Project Coordinator [416.8 h] |
| SDR-2-ENG-APP-C-1150 | Road Marking Details Approval |  | resources SIC- Cost [3.75]; Project Coordinator [416.8 h] → SIC- Cost; Project Coordinator [416.8 h] |
| SDR-2-ENG-APP-C-1160 | Road Marking And Signage Typical Standard Details Approval |  | resources SIC- Cost [3.75]; Project Coordinator [416.8 h] → SIC- Cost; Project Coordinator [416.8 h] |
| SDR-2-ENG-APP-C-1170 | Standard Details Approval |  | resources SIC- Cost [3.75]; Project Coordinator [416.8 h] → SIC- Cost; Project Coordinator [416.8 h] |
| SDR-2-ENG-APP-C-1180 | Site Safety Notice Board Approval |  | resources SIC- Cost [3.75]; Project Coordinator [416.8 h] → SIC- Cost; Project Coordinator [416.8 h] |
| SDR-2-ENG-APP-C-1190 | Location Plan For Traffic Signage Approval |  | resources SIC- Cost [3.75]; Project Coordinator [416.8 h] → SIC- Cost; Project Coordinator [416.8 h] |
| SDR-2-ENG-APP-M-1000 | Storm Drainage Master Plan Approval |  | resources SIC- Cost [3.75]; Project Coordinator [416.8 h] → SIC- Cost; Project Coordinator [416.8 h] |
| SDR-2-ENG-APP-M-1010 | Storm Drainage Layout Approval |  | resources SIC- Cost [3.75]; Project Coordinator [416.8 h] → SIC- Cost; Project Coordinator [416.8 h] |
| SDR-2-ENG-APP-M-1020 | Storm Network Profile Approval |  | resources SIC- Cost [3.75]; Project Coordinator [416.8 h] → SIC- Cost; Project Coordinator [416.8 h] |
| SDR-2-ENG-APP-M-1050 | POND A LAYOUT AND PROFILE Approval |  | resources SIC- Cost [4]; Project Coordinator [416.8 h] → SIC- Cost; Project Coordinator [416.8 h] |
| SDR-2-ENG-APP-M-1030 | Storm Network Standard Details Approval |  | resources SIC- Cost [3.75]; Project Coordinator [416.8 h] → SIC- Cost; Project Coordinator [416.8 h] |
| SDR-2-ENG-APP-M-1040 | Storm Network Section Approval |  | resources SIC- Cost [3.75]; Project Coordinator [416.8 h] → SIC- Cost; Project Coordinator [416.8 h] |
| SDR-2-ENG-APP-M-1060 | TYPICAL ENERGY DISSAPATION DETAILS Approval |  | resources SIC- Cost [3.75]; Project Coordinator [416.8 h] → SIC- Cost; Project Coordinator [416.8 h] |
| SDR-2-ENG-APP-M-1070 | STORM WATER POND SIPHON PIPE DETAILS SApproval |  | resources SIC- Cost [3.75]; Project Coordinator [416.8 h] → SIC- Cost; Project Coordinator [416.8 h] |

| ID | Task | Start | Finish | Total float | Predecessors | Other |
| --- | --- | --- | --- | --- | --- | --- |
| SDR-2-ENG-APP-M-1080 | REINFORCEMENT CONCRETE WEIR AND GABION WALL DETAILS Approval |  |  |  |  | resources SIC- Cost [3.75]; Project Coordinator [416.8 h] → SIC- Cost; Project Coordinator [416.8 h] |
| SDR-2-ENG-APP-M-1090 | TYPICAL TRENCH AND PIPE BEDDING DETAILS Approval |  |  |  |  | resources SIC- Cost [3.75]; Project Coordinator [416.8 h] → SIC- Cost; Project Coordinator [416.8 h] |
| SDR-2-ENG-APP-M-1100 | FLUSH AND KERB INLET MANHOLE DETAILS Approval |  |  |  |  | resources SIC- Cost [3.75]; Project Coordinator [416.8 h] → SIC- Cost; Project Coordinator [416.8 h] |
| SDR-2-ENG-APP-M-1110 | BOX PIPE CONNECTION AND BOX PIPE WIDENING DETAILS Approval |  |  |  |  | resources SIC- Cost [3.75]; Project Coordinator [416.8 h] → SIC- Cost; Project Coordinator [416.8 h] |
| SDR-2-ENG-APP-M-1120 | TYPICAL BOX PIPE JUNCTION DETAILS Approval |  |  |  |  | resources SIC- Cost [3.75]; Project Coordinator [416.8 h] → SIC- Cost; Project Coordinator [416.8 h] |
| SDR-2-ENG-APP-M-1130 | TYPICAL JUNCTION CHAMBER REINFORCEMENT DETAILS Approval |  |  |  |  | resources SIC- Cost [3.75]; Project Coordinator [416.8 h] → SIC- Cost; Project Coordinator [416.8 h] |
| SDR-2-ENG-APP-M-1140 | DEPRESSED KERB TO SWALE/MANHOLE DETAILS Approval |  |  |  |  | resources SIC- Cost [3.75]; Project Coordinator [416.8 h] → SIC- Cost; Project Coordinator [416.8 h] |
| SDR-2-ENG-APP-M-1150 | BOX PIPE AND SWALE CONNECTION DETAILS Approval |  |  |  |  | resources SIC- Cost [3.75]; Project Coordinator [416.8 h] → SIC- Cost; Project Coordinator [416.8 h] |
| SDR-2-ENG-APP-M-1160 | Sewage Layout Master Plan Approval |  |  |  |  | resources SIC- Cost [3.75]; Project Coordinator [416.8 h] → SIC- Cost; Project Coordinator [416.8 h] |
| SDR-2-ENG-APP-M-1170 | Sewage Network Profile Approval |  |  |  |  | resources SIC- Cost [3.75]; Project Coordinator [416.8 h] → SIC- Cost; Project Coordinator [416.8 h] |
| SDR-2-ENG-APP-M-1180 | Sewage Network Standard Details Approval |  |  |  |  | resources SIC- Cost [3.75]; Project Coordinator [416.8 h] → SIC- Cost; Project Coordinator [416.8 h] |
| SDR-2-ENG-APP-M-1190 | Sewage Network Section Approval |  |  |  |  | resources SIC- Cost [3.75]; Project Coordinator [416.8 h] → SIC- Cost; Project Coordinator [416.8 h] |
| SDR-2-ENG-APP-M-1210 | TSE Network Profile Approval |  |  |  |  | resources SIC- Cost [4]; Project Coordinator [416.8 h] → SIC- Cost; Project Coordinator [416.8 h] |
| SDR-2-ENG-APP-M-1220 | TSE Network Standard Details Approval |  |  |  |  | resources SIC- Cost [4]; Project Coordinator [416.8 h] → SIC- Cost; Project Coordinator [416.8 h] |
| SDR-2-ENG-APP-M-1230 | TSE Network Section Approval |  |  |  |  | resources SIC- Cost [4]; Project Coordinator [416.8 h] → SIC- Cost; Project Coordinator [416.8 h] |
| SDR-2-ENG-APP-M-1200 | TSE Layout Master Plan Approval |  |  |  |  | resources SIC- Cost [4]; Project Coordinator [416.8 h] → SIC- Cost; Project Coordinator [416.8 h] |
| SDR-2-ENG-APP-M-1240 | Potable Water Piping Layout Master Plan Approval |  |  |  |  | resources SIC- Cost [3.75]; Project Coordinator [416.8 h] → SIC- Cost; Project Coordinator [416.8 h] |
| SDR-2-ENG-APP-M-1250 | Potable Water Piping Layout Approval |  |  |  |  | resources SIC- Cost [3.75]; Project Coordinator [416.8 h] → SIC- Cost; Project Coordinator [416.8 h] |
| SDR-2-ENG-APP-M-1270 | Potable Water Section Approval |  |  |  |  | resources SIC- Cost [3.75]; Project Coordinator [416.8 h] → SIC- Cost; Project Coordinator [416.8 h] |
| SDR-2-ENG-APP-M-1260 | Potable Water Standard Details Approval |  |  |  |  | resources SIC- Cost [3.75]; Project Coordinator [416.8 h] → SIC- Cost; Project Coordinator [416.8 h] |
| 9 | **Electrical** |  | 2026-11-21 → 2026-11-28 (+7d) |  |  |  |
| SDR-2-ENG-APP-E-1080 | Street Lighting Layout Approval |  |  |  |  | resources SIC- Cost [3.75]; Project Coordinator [416.8 h] → SIC- Cost; Project Coordinator [416.8 h] |
| SDR-2-ENG-APP-E-1090 | Single Line Diagram for Street Lighting Approval |  |  |  |  | resources SIC- Cost [3.75]; Project Coordinator [416.8 h] → SIC- Cost; Project Coordinator [416.8 h] |
| SDR-2-ENG-APP-E-1170 | Telecom Overall Layout Approval |  |  |  |  | resources SIC- Cost [3.75]; Project Coordinator [416.8 h] → SIC- Cost; Project Coordinator [416.8 h] |
| SDR-2-ENG-APP-E-1100 | Voltage Drop Calculations Approval |  |  |  |  | resources SIC- Cost [3.75]; Project Coordinator [416.8 h] → SIC- Cost; Project Coordinator [416.8 h] |
| SDR-2-ENG-APP-E-1180 | Typical Trenches Detail Approval |  |  |  |  | resources SIC- Cost [3.75]; Project Coordinator [416.8 h] → SIC- Cost; Project Coordinator [416.8 h] |
| SDR-2-ENG-APP-E-1190 | Typical Trenches Crossing Detail Approval |  |  |  |  | resources SIC- Cost [3.75]; Project Coordinator [416.8 h] → SIC- Cost; Project Coordinator [416.8 h] |
| SDR-2-ENG-APP-E-1200 | Manholes,Hand-Holes Details Approval |  |  |  |  | resources SIC- Cost [3.75]; Project Coordinator [416.8 h] → SIC- Cost; Project Coordinator [416.8 h] |
| SDR-2-ENG-APP-E-1210 | Typical Details Of Pock Out Ducts Approval |  |  |  |  | resources SIC- Cost [3.75]; Project Coordinator [416.8 h] → SIC- Cost; Project Coordinator [416.8 h] |
| SDR-2-ENG-APP-E-1110 | Construction Details Lighting Poles Approval |  |  |  |  | resources SIC- Cost [3.75]; Project Coordinator [416.8 h] → SIC- Cost; Project Coordinator [416.8 h] |
| SDR-2-ENG-APP-E-1120 | Base Plate Construction Details Approval |  |  |  |  | resources SIC- Cost [3.75]; Project Coordinator [416.8 h] → SIC- Cost; Project Coordinator [416.8 h] |
| SDR-2-ENG-APP-E-1130 | Lighting Pole Identification Approval |  |  |  |  | resources SIC- Cost [3.75]; Project Coordinator [416.8 h] → SIC- Cost; Project Coordinator [416.8 h] |
| SDR-2-ENG-APP-E-1140 | Typical Feeder Pillar and Timer Switch Details Approval |  |  |  |  | resources SIC- Cost [3.75]; Project Coordinator [416.8 h] → SIC- Cost; Project Coordinator [416.8 h] |
| SDR-2-ENG-APP-E-1150 | Public Lighting Draw-Pit Construction Details Approval |  |  |  |  | resources SIC- Cost [3.75]; Project Coordinator [416.8 h] → SIC- Cost; Project Coordinator [416.8 h] |
| SDR-2-ENG-APP-E-1160 | Concrete Earth Pit Construction Details Approval |  |  |  |  | resources SIC- Cost [3.75]; Project Coordinator [416.8 h] → SIC- Cost; Project Coordinator [416.8 h] |
| SDR-2-ENG-APP-E-1000 | MV Network Layout Approval | 2026-11-09 → 2026-11-16 (+7d) | 2026-11-21 → 2026-11-28 (+7d) | 0d → -75d |  | resources SIC- Cost [3.75]; Project Coordinator [416.8 h] → SIC- Cost; Project Coordinator [416.8 h] |
| SDR-2-ENG-APP-E-1010 | MV Single Line Diagram Approval | 2026-11-09 → 2026-11-16 (+7d) | 2026-11-21 → 2026-11-28 (+7d) | 0d → -75d |  | resources SIC- Cost [3.75]; Project Coordinator [416.8 h] → SIC- Cost; Project Coordinator [416.8 h] |
| SDR-2-ENG-APP-E-1020 | Design Of MV Loops Approval | 2026-11-09 → 2026-11-16 (+7d) | 2026-11-21 → 2026-11-28 (+7d) | 0d → -75d |  | resources SIC- Cost [3.75]; Project Coordinator [416.8 h] → SIC- Cost; Project Coordinator [416.8 h] |
| SDR-2-ENG-APP-E-1030 | Loads For Plots Approval | 2026-11-09 → 2026-11-16 (+7d) | 2026-11-21 → 2026-11-28 (+7d) | 0d → -75d |  | resources SIC- Cost [3.75]; Project Coordinator [416.8 h] → SIC- Cost; Project Coordinator [416.8 h] |
| SDR-2-ENG-APP-E-1040 | Distribution Substation Approval | 2026-11-09 → 2026-11-16 (+7d) | 2026-11-21 → 2026-11-28 (+7d) | 0d → -132d |  | resources SIC- Cost [3.75]; Project Coordinator [416.8 h] → SIC- Cost; Project Coordinator [416.8 h] |
| SDR-2-ENG-APP-E-1050 | MV Trench Configuration Details Approval | 2026-11-09 → 2026-11-16 (+7d) | 2026-11-21 → 2026-11-28 (+7d) | 0d → -75d |  | resources SIC- Cost [3.75]; Project Coordinator [416.8 h] → SIC- Cost; Project Coordinator [416.8 h] |
| SDR-2-ENG-APP-E-1060 | MV Electrical Duct Banks Details Approval | 2026-11-09 → 2026-11-16 (+7d) | 2026-11-21 → 2026-11-28 (+7d) | 0d → -91d |  | resources SIC- Cost [3.75]; Project Coordinator [416.8 h] → SIC- Cost; Project Coordinator [416.8 h] |
| SDR-2-ENG-APP-E-1070 | Distribution Transformers Approval | 2026-11-09 → 2026-11-16 (+7d) | 2026-11-21 → 2026-11-28 (+7d) | 0d → -132d |  | resources SIC- Cost [3.75]; Project Coordinator [416.8 h] → SIC- Cost; Project Coordinator [416.8 h] |
| 11 | **CCTV** |  | 2026-11-21 → 2026-11-28 (+7d) |  |  |  |
| SDR-2-ENG-APP-E-1250 | CCTV System 7 MTR Pole Installation Detail Approval |  |  |  |  | resources SIC- Cost [3.75]; Project Coordinator [416.8 h] → SIC- Cost; Project Coordinator [416.8 h] |
| SDR-2-ENG-APP-E-1260 | CCTV System 25 MTR Pole Installation Detail Approval |  |  |  |  | resources SIC- Cost [3.75]; Project Coordinator [416.8 h] → SIC- Cost; Project Coordinator [416.8 h] |
| SDR-2-ENG-APP-E-1270 | CCTV System 35 MTR Pole Installation Detail Approval |  |  |  |  | resources SIC- Cost [3.75]; Project Coordinator [416.8 h] → SIC- Cost; Project Coordinator [416.8 h] |
| SDR-2-ENG-APP-E-1220 | CCTV Overall Layout Approval |  |  |  |  | resources SIC- Cost [3.75]; Project Coordinator [416.8 h] → SIC- Cost; Project Coordinator [416.8 h] |
| SDR-2-ENG-APP-E-1230 | CCTV Control Room Layout Approval |  |  |  |  | resources SIC- Cost [3.75]; Project Coordinator [416.8 h] → SIC- Cost; Project Coordinator [416.8 h] |
| SDR-2-ENG-APP-E-1240 | CCTV System Schematic Drawing Approval |  |  |  |  | resources SIC- Cost [3.75]; Project Coordinator [416.8 h] → SIC- Cost; Project Coordinator [416.8 h] |
| SDR-2-ENG-APP-E-1280 | Typical Solar Panel Installation Detail Approval | 2026-11-09 → 2026-11-16 (+7d) | 2026-11-21 → 2026-11-28 (+7d) | 0d → -75d |  | resources SIC- Cost [3.75]; Project Coordinator [416.8 h] → SIC- Cost; Project Coordinator [416.8 h] |
| SDR-2-ENG-APP-M-1280 | Irrigation Layout Master Plan Approval |  |  |  |  | resources SIC- Cost [4]; Project Coordinator [416.8 h] → SIC- Cost; Project Coordinator [416.8 h] |
| SDR-2-ENG-APP-M-1300 | Irrigation Network Standard Details Approval |  |  |  |  | resources SIC- Cost [4]; Project Coordinator [416.8 h] → SIC- Cost; Project Coordinator [416.8 h] |
| SDR-2-ENG-APP-M-1310 | Irrigation Network Section Approval |  |  |  |  | resources SIC- Cost [4]; Project Coordinator [416.8 h] → SIC- Cost; Project Coordinator [416.8 h] |
| SDR-2-ENG-APP-M-1290 | Irrigation Network Profile Approval |  |  |  |  | resources SIC- Cost [4]; Project Coordinator [416.8 h] → SIC- Cost; Project Coordinator [416.8 h] |
| SDR-2-ENG-APP-M-1320 | Landscape Layout Master Plan Approval |  |  |  |  | resources SIC- Cost [4]; Project Coordinator [416.8 h] → SIC- Cost; Project Coordinator [416.8 h] |
| 3 | **Materials** |  | 2026-11-11 → 2026-11-18 (+7d) |  |  |  |
| SDR-2-PRO-MSS-C-1000 | Earth works material submission |  |  |  |  | resources SIC- Cost [2.5] → SIC- Cost |
| SDR-2-PRO-MSS-C-1010 | Ready mix concrete submission |  |  |  |  | resources SIC- Cost [2.5] → SIC- Cost |
| SDR-2-PRO-MSS-C-1040 | Kerbstone submission |  |  |  |  | resources SIC- Cost [2.5] → SIC- Cost |
| SDR-2-PRO-MSS-C-1020 | Asphalt Mix submission |  |  |  |  | resources SIC- Cost [2.5] → SIC- Cost |
| SDR-2-PRO-MSS-C-1030 | Road Marking submission |  |  |  |  | resources SIC- Cost [2.5] → SIC- Cost |
| SDR-2-PRO-MSS-C-1050 | Interlock Tiles submission |  |  |  |  | resources SIC- Cost [2.5] → SIC- Cost |
| SDR-2-PRO-MSS-C-1060 | Traffic Signage submission |  |  |  |  | resources SIC- Cost [2.5] → SIC- Cost |
| SDR-2-PRO-MSS-C-1070 | Construction material submission |  |  |  |  | resources SIC- Cost [2.5] → SIC- Cost |
| SDR-2-PRO-MSS-C-1090 | Protection Bollards for CCTV Pole submission |  |  |  |  | resources SIC- Cost [2.5] → SIC- Cost |
| SDR-2-PRO-MSS-C-1100 | Protection (Guard rail) for Fire hydrant submission |  |  |  |  | resources SIC- Cost [2.5] → SIC- Cost |
| SDR-2-PRO-MSS-C-1080 | Fence for Electrical works submission |  |  |  |  | resources SIC- Cost [2.5] → SIC- Cost |
| SDR-2-PRO-MSS-E-1000 | Termination Kits & Joints submission |  |  |  |  | resources SIC- Cost [2.5] → SIC- Cost |
| SDR-2-PRO-MSS-E-1010 | UPVC Ducts & HDPE Ducts for Telecom network submission |  |  |  | SDR-2-ENG-APP-E-1010 SS → SDR-2-ENG-APP-E-1010 | resources SIC- Cost [2.5] → SIC- Cost |

| ID | Task | Start | Finish | Total float | Predecessors | Other |
| --- | --- | --- | --- | --- | --- | --- |
| SDR-2-PRO-MSS-E-1020 | Grounding System submission |  |  |  | SDR-2-ENG-APP-E-1000 SS → SDR-2-ENG-APP-E-1000 | resources SIC- Cost [2.5] → SIC- Cost |
| SDR-2-PRO-MSS-E-1030 | PECD Ducts for CCTV network submission |  |  |  |  | resources SIC- Cost [2.5] → SIC- Cost |
| SDR-2-PRO-MSL-M-1000 | GRP Pipes & UPVC Pipes &Fittings submission |  |  |  |  | resources SIC- Cost [2.5] → SIC- Cost |
| SDR-2-PRO-MSL-M-1010 | HDPE Pipes & Fittings submission |  |  |  |  | resources SIC- Cost [2.5] → SIC- Cost |
| SDR-2-PRO-MSL-M-1020 | Valves submission |  |  |  |  | resources SIC- Cost [2.5] → SIC- Cost |
| SDR-2-PRO-MSL-M-1030 | Manhole submission |  |  |  |  | resources SIC- Cost [2.5] → SIC- Cost |
| SDR-2-PRO-MSL-M-1040 | Catch Basin submission |  |  |  |  | resources SIC- Cost [2.5] → SIC- Cost |
| SDR-2-PRO-MSL-M-1050 | Manhole, Catch basin and Valve box Cover submission |  |  |  |  | resources SIC- Cost [2.5] → SIC- Cost |
| SDR-2-PRO-MSL-M-1060 | Fire Hydrant submission |  |  |  |  | resources SIC- Cost [2.5] → SIC- Cost |
| SDR-2-PRO-MSL-M-1070 | Valve of Fire Hydrant submission |  |  |  |  | resources SIC- Cost [2.5] → SIC- Cost |
| SDR-2-PRO-MSL-E-1000 | MV Cables submission |  |  |  | SDR-2-ENG-APP-E-1000 SS, SDR-2-ENG-APP-E-1020 SS, SDR-2-ENG-APP-E-1050 SS → SDR-2-ENG-APP-E-1000, SDR-2-ENG-APP-E-1020, SDR-2-ENG-APP-E-1050 | resources SIC- Cost [2.5] → SIC- Cost |
| SDR-2-PRO-MSL-E-1010 | LV Cables submission |  |  |  | SDR-2-ENG-APP-E-1100, SDR-2-ENG-APP-E-1160, SDR-2-ENG-APP-E-1170, SDR-2-ENG-APP-E-1190, SDR-2-ENG-APP-E-1210, SDR-2-ENG-APP-E-1040 SS, SDR-2-ENG-APP-E-1030 SS → SDR-2-ENG-APP-E-1040, SDR-2-ENG-APP-E-1030, SDR-2-ENG-APP-E-1100, SDR-2-ENG-APP-E-1160, SDR-2-ENG-APP-E-1170, SDR-2-ENG-APP-E-1190, SDR-2-ENG-APP-E-1210 | resources SIC- Cost [2.5] → SIC- Cost |
| SDR-2-PRO-MSL-E-1020 | Street Lighting Poles submission |  |  |  |  | resources SIC- Cost [2.5] → SIC- Cost |
| SDR-2-PRO-MSL-E-1030 | Street Lighting Fixtures submission |  |  |  |  | resources SIC- Cost [2.5] → SIC- Cost |
| SDR-2-PRO-MSL-E-1040 | DrawPits for Lighting submission |  |  |  |  | resources SIC- Cost [2.5] → SIC- Cost |
| SDR-2-PRO-MSL-E-1050 | Concrete Manholes & DrawPits for Telecom Network submission |  |  |  |  | resources SIC- Cost [2.5] → SIC- Cost |
| SDR-2-PRO-MSL-E-1180 | CCTV Wireless P2P bridges submission |  |  |  |  | resources SIC- Cost [2.5] → SIC- Cost |
| SDR-2-PRO-MSL-E-1060 | Switchgears - (RMUs) submission |  |  |  | SDR-2-ENG-APP-E-1040 SS → SDR-2-ENG-APP-E-1040 | resources SIC- Cost [2.5] → SIC- Cost |
| SDR-2-PRO-MSL-E-1070 | Unit Substation submission |  |  |  | SDR-2-ENG-APP-E-1040 SS, SDR-2-ENG-APP-E-1070 SS → SDR-2-ENG-APP-E-1040, SDR-2-ENG-APP-E-1070 | resources SIC- Cost [2.5] → SIC- Cost |
| SDR-2-PRO-MSL-E-1080 | Lighting Panels submission |  |  |  |  | resources SIC- Cost [2.5] → SIC- Cost |
| SDR-2-PRO-MSL-E-1090 | KWH Meter with mounting frame submission |  |  |  |  | resources SIC- Cost [2.5] → SIC- Cost |
| SDR-2-PRO-MSL-E-1100 | Main Feeder Pillar submission |  |  |  |  | resources SIC- Cost [2.5] → SIC- Cost |
| SDR-2-PRO-MSL-E-1190 | CCTV UPS submission |  |  |  |  | resources SIC- Cost [2.5] → SIC- Cost |
| SDR-2-PRO-MSL-E-1110 | CCTV Poles including all hardwares submission |  |  |  |  | resources SIC- Cost [2.5] → SIC- Cost |
| SDR-2-PRO-MSL-E-1120 | CCTV Cables "Power" submission |  |  |  | SDR-2-ENG-APP-E-1220, SDR-2-ENG-APP-E-1270, SDR-2-ENG-APP-E-1060 SS → SDR-2-ENG-APP-E-1220, SDR-2-ENG-APP-E-1270, SDR-2-ENG-APP-E-1060 | resources SIC- Cost [2.5] → SIC- Cost |
| SDR-2-PRO-MSL-E-1130 | CCTV Cables "CAT6" submission |  |  |  |  | resources SIC- Cost [2.5] → SIC- Cost |
| SDR-2-PRO-MSL-E-1200 | CCTV Solar System submission |  |  |  | SDR-2-ENG-APP-E-1280 SS → SDR-2-ENG-APP-E-1280 | resources SIC- Cost [2.5] → SIC- Cost |
| SDR-2-PRO-MSL-E-1140 | Racks and Patch panels submission |  |  |  | SDR-2-ENG-APP-E-1280 SS → SDR-2-ENG-APP-E-1280 | resources SIC- Cost [2.5] → SIC- Cost |
| SDR-2-PRO-MSL-E-1150 | CCTV System,Servers & WorkStations submission |  |  |  |  | resources SIC- Cost [2.5] → SIC- Cost |
| SDR-2-PRO-MSL-E-1160 | Professional 55" Video wall at control room submission |  |  |  |  | resources SIC- Cost [2.5] → SIC- Cost |
| SDR-2-PRO-MSL-E-1170 | CCTV Switches submission |  |  |  |  | resources SIC- Cost [3.12] → SIC- Cost |
| 6 | **Materials Approval** |  | 2026-11-11 → 2026-11-18 (+7d) |  |  |  |
| 2 | **Short Lead Items** |  | 2026-11-11 → 2026-11-18 (+7d) |  |  |  |
| 1 | **Civil** |  | 2026-11-11 → 2026-11-18 (+7d) |  |  |  |
| SDR-2-PRO-MAS-C-1000 | Earth works material Approve |  |  |  |  | resources SIC- Cost [3.75] → SIC- Cost |
| SDR-2-PRO-MAS-C-1010 | Ready mix concrete Approve |  |  |  |  | resources SIC- Cost [3.75] → SIC- Cost |
| SDR-2-PRO-MAS-C-1040 | Kerbstone Approve |  |  |  |  | resources SIC- Cost [3.75] → SIC- Cost |
| SDR-2-PRO-MAS-C-1020 | Asphalt Mix Approve |  |  |  |  | resources SIC- Cost [3.75] → SIC- Cost |
| SDR-2-PRO-MAS-C-1050 | Interlock Tiles Approve |  |  |  |  | resources SIC- Cost [3.75] → SIC- Cost |
| SDR-2-PRO-MAS-C-1070 | Construction material Approve |  |  |  |  | resources SIC- Cost [3.75] → SIC- Cost |
| SDR-2-PRO-MAS-C-1090 | Protection Bollards for CCTV Pole Approve |  |  |  |  | resources SIC- Cost [3.75] → SIC- Cost |
| SDR-2-PRO-MAS-C-1100 | Protection (Guard rail) for Fire hydrant Approve |  |  |  |  | resources SIC- Cost [3.75] → SIC- Cost |
| SDR-2-PRO-MAS-C-1080 | Fence for Electrical works Approve |  |  |  |  | resources SIC- Cost [3.75] → SIC- Cost |
| SDR-2-PRO-MAS-C-1030 | Road Marking Approve | 2026-11-09 → 2026-11-16 (+7d) | 2026-11-11 → 2026-11-18 (+7d) | 0d → -101d |  | resources SIC- Cost [3.75] → SIC- Cost |
| SDR-2-PRO-MAS-C-1060 | Traffic Signage Approve | 2026-11-09 → 2026-11-16 (+7d) | 2026-11-11 → 2026-11-18 (+7d) | 0d → -67d |  | resources SIC- Cost [3.75] → SIC- Cost |
| SDR-2-PRO-MAS-E-1000 | Termination Kits & Joints Approve |  |  |  |  | resources SIC- Cost [3.75] → SIC- Cost |
| SDR-2-PRO-MAS-E-1010 | UPVC Ducts & HDPE Ducts for Telecom network Approve |  |  |  |  | resources SIC- Cost [3.75] → SIC- Cost |
| SDR-2-PRO-MAS-E-1020 | Grounding System Approve |  |  |  |  | resources SIC- Cost [3.75] → SIC- Cost |
| SDR-2-PRO-MAS-E-1030 | PECD Ducts for CCTV network Approve |  |  |  |  | resources SIC- Cost [3.75] → SIC- Cost |
| SDR-2-PRO-MAL-M-1000 | GRP Pipes & UPVC Pipes & Fittings Approve |  |  |  |  | resources SIC- Cost [3.75] → SIC- Cost |
| SDR-2-PRO-MAL-M-1010 | HDPE Pipes & Fittings Approve |  |  |  |  | resources SIC- Cost [3.75] → SIC- Cost |
| SDR-2-PRO-MAL-M-1020 | Valves Approve |  |  |  |  | resources SIC- Cost [3.75] → SIC- Cost |
| SDR-2-PRO-MAL-M-1030 | Manhole Approve |  |  |  |  | resources SIC- Cost [3.75] → SIC- Cost |
| SDR-2-PRO-MAL-M-1040 | Catch Basin Approve |  |  |  |  | resources SIC- Cost [3.75] → SIC- Cost |
| SDR-2-PRO-MAL-M-1050 | Manhole, Catch basin and Valve box Cover Approve |  |  |  |  | resources SIC- Cost [3.75] → SIC- Cost |
| SDR-2-PRO-MAL-M-1060 | Fire Hydrant Approve |  |  |  |  | resources SIC- Cost [3.75] → SIC- Cost |
| SDR-2-PRO-MAL-M-1070 | Valve of Fire Hydrant Approve |  |  |  |  | resources SIC- Cost [3.75] → SIC- Cost |
| SDR-2-PRO-MAL-E-1000 | MV Cables Approve |  |  |  |  | resources SIC- Cost [3.75] → SIC- Cost |
| SDR-2-PRO-MAL-E-1010 | LV Cables Approve |  |  |  |  | resources SIC- Cost [3.75] → SIC- Cost |
| SDR-2-PRO-MAL-E-1020 | Street Lighting Poles Approve |  |  |  |  | resources SIC- Cost [3.75] → SIC- Cost |
| SDR-2-PRO-MAL-E-1030 | Street Lighting Fixtures Approve |  |  |  |  | resources SIC- Cost [3.75] → SIC- Cost |
| SDR-2-PRO-MAL-E-1040 | DrawPits for Lighting Approve |  |  |  |  | resources SIC- Cost [3.75] → SIC- Cost |
| SDR-2-PRO-MAL-E-1050 | Concrete Manholes & DrawPits for Telecom Network Approve |  |  |  |  | resources SIC- Cost [3.75] → SIC- Cost |
| SDR-2-PRO-MAL-E-1060 | Switchgears - (RMUs) Approve |  |  |  |  | resources SIC- Cost [3.75] → SIC- Cost |
| SDR-2-PRO-MAL-E-1070 | Unit Substation Approve |  |  |  |  | resources SIC- Cost [3.75] → SIC- Cost |
| SDR-2-PRO-MAL-E-1080 | Lighting Panels Approve |  |  |  |  | resources SIC- Cost [3.75] → SIC- Cost |
| SDR-2-PRO-MAL-E-1090 | KWH Meter with mounting frame Approve |  |  |  |  | resources SIC- Cost [3.75] → SIC- Cost |
| SDR-2-PRO-MAL-E-1100 | Main Feeder Pillar Approve |  |  |  |  | resources SIC- Cost [3.75] → SIC- Cost |
| SDR-2-PRO-MAL-E-1130 | CCTV Cables "CAT6" Approve |  |  |  |  | resources SIC- Cost [3.75] → SIC- Cost |
| SDR-2-PRO-MAL-E-1140 | Racks and Patch panels Approve Approve |  |  |  |  | resources SIC- Cost [3.75] → SIC- Cost |

| ID | Task | Start | Finish | Duration | Complete | Total float | Predecessors | Other |
| --- | --- | --- | --- | --- | --- | --- | --- | --- |
| SDR-2-PRO-MAL-E-1150 | CCTV System,Servers & WorkStations Approve |  |  |  |  |  |  | resources SIC- Cost [3.75] → SIC- Cost |
| SDR-2-PRO-MAL-E-1160 | Professional 55" Video wall at control room Approve |  |  |  |  |  |  | resources SIC- Cost [3.75] → SIC- Cost |
| SDR-2-PRO-MAL-E-1170 | CCTV Switches Approve |  |  |  |  |  |  | resources SIC- Cost [3.75] → SIC- Cost |
| SDR-2-PRO-MAL-E-1180 | CCTV Wireless P2P bridges Approve |  |  |  |  |  |  | resources SIC- Cost [3.75] → SIC- Cost |
| SDR-2-PRO-MAL-E-1190 | CCTV UPS Approve |  |  |  |  |  |  | resources SIC- Cost [3.75] → SIC- Cost |
| SDR-2-PRO-MAL-E-1200 | CCTV Solar System Approve |  |  |  |  |  |  | resources SIC- Cost [3.75] → SIC- Cost |
| SDR-2-PRO-MAL-E-1110 | CCTV Poles including all hardwares Approve |  |  |  |  |  |  | resources SIC- Cost [3.75] → SIC- Cost |
| SDR-2-PRO-MAL-E-1120 | CCTV Cables "Power" Approve |  |  |  |  |  |  | resources SIC- Cost [3.75] → SIC- Cost |
| PR | **Procurement** |  | 2027-03-20 → 2027-04-26 (+37d) |  |  |  |  |  |
| 3 | **Purchase Order** |  | 2026-11-23 → 2026-12-13 (+20d) |  |  |  |  |  |
| 1 | **Civil** |  | 2026-11-23 → 2026-12-05 (+12d) |  |  |  |  |  |
| SDR-2-PRO-PO-C-1020 | Asphalt Mix PO |  |  |  |  |  | SDR-2-PRO-MAS-C-1020, SDR-2-MILS-1040, SDR-2-MILS-1090 FF → SDR-2-PRO-MAS-C-1020, SDR-2-MILS-1040, SDR-2-MILS-1090 |  |
| SDR-2-PRO-PO-C-1080 | Fence for Electrical works PO | 2026-11-09 → 2026-11-16 (+7d) | 2026-11-23 → 2026-11-30 (+7d) |  |  | 6d → -61d |  |  |
| SDR-2-PRO-PO-C-1090 | Protection Bollards for CCTV Pole PO | 2026-11-09 → 2026-11-16 (+7d) | 2026-11-23 → 2026-11-30 (+7d) |  |  | 80d → -20d |  |  |
| SDR-2-PRO-PO-C-1100 | Protection (Guard rail) for Fire hydrant PO | 2026-11-09 → 2026-11-16 (+7d) | 2026-11-16 → 2026-11-30 (+14d) | 7d → 13d |  | 0d → -72d | SDR-2-PRO-MAS-C-1100, SDR-2-MILS-1000 FS+100d → SDR-2-PRO-MAS-C-1100, SDR-2-MILS-1000 FS+103d |  |
| SDR-2-PRO-PO-C-1040 | Road Marking PO | 2026-11-09 → 2026-11-19 (+10d) | 2026-11-23 → 2026-12-05 (+12d) | 13d → 14d |  | 6d → -101d | SDR-2-MILS-1000 FS+73d, SDR-2-PRO-MAS-C-1030 FF → SDR-2-PRO-MAS-C-1030, SDR-2-MILS-1000 FS+73d |  |
| SDR-2-PRO-PO-C-1060 | Traffic Signage PO | 2026-11-09 → 2026-11-19 (+10d) | 2026-11-23 → 2026-12-03 (+10d) |  |  | 5d → -46d | SDR-2-MILS-1000 FS+92d, SDR-2-PRO-MAS-C-1060 FF → SDR-2-PRO-MAS-C-1060, SDR-2-MILS-1000 FS+92d |  |
| 3 | **Electrical** |  | 2026-11-23 → 2026-12-13 (+20d) |  |  |  |  |  |
| SDR-2-PRO-PO-E-1120 | KWH Meter with mounting frame PO | 2026-11-09 → 2026-11-16 (+7d) | 2026-11-23 → 2026-11-30 (+7d) |  |  | 2d → -103d |  |  |
| SDR-2-PRO-PO-E-1100 | Unit Substation PO | 2026-11-09 → 2026-11-29 (+20d) | 2026-11-23 → 2026-12-13 (+20d) |  |  | 10d → -132d | SDR-2-PRO-MAL-E-1070, SDR-2-MILS-1000 FS+80d → SDR-2-PRO-MAL-E-1070, SDR-2-MILS-1000 FS+87d |  |
| 1 | **Delivery to Site** |  | 2027-03-16 → 2027-04-22 (+37d) |  |  |  |  |  |
| 2 | **Short Lead Items Delivery** |  | 2027-03-16 → 2027-04-22 (+37d) |  |  |  |  |  |
| 1 | **Civil** |  | 2027-03-16 → 2027-04-22 (+37d) |  |  |  |  |  |
| SDR-2-PRO-DES-C-1070 | Construction material Delivery |  |  |  |  |  |  | resources SIC- Cost [6.25]; Delivery Team [2848.11 h] → SIC- Cost; Delivery Team [2848.11 h] |
| SDR-2-PRO-DES-C-1000 | Earth works material Delivery |  |  |  |  |  |  | resources SIC- Cost [3.75]; Delivery Team [2848.11 h] → SIC- Cost; Delivery Team [2848.11 h] |
| SDR-2-PRO-DES-C-1010 | Ready mix concrete Delivery |  |  |  |  |  |  | resources SIC- Cost [3.75]; Delivery Team [2848.11 h] → SIC- Cost; Delivery Team [2848.11 h] |
| SDR-2-PRO-DES-C-1020 | Asphalt Mix Delivery |  | 2027-01-26 → 2026-12-22 (-35d) |  |  | 14.1d → -24.8d | SDR-2-PRO-PO-C-1020 FF → SDR-2-PRO-PO-C-1020 FS+72d | resources SIC- Cost [3.75]; Delivery Team [2848.11 h] → SIC- Cost; Delivery Team [2848.11 h] |
| SDR-2-PRO-DES-C-1030 | Kerbstone Delivery |  | 2026-12-19 → 2026-11-21 (-28d) |  |  | 0d → -81d | SDR-2-PRO-PO-C-1030 FF → SDR-2-PRO-PO-C-1030 FS+20d | resources SIC- Cost [16.25]; Delivery Team [2848.11 h] → SIC- Cost; Delivery Team [2848.11 h] |
| SDR-2-PRO-DES-C-1050 | Interlock Tiles Delivery |  | 2026-11-29 → 2026-11-21 (-8d) |  |  | 104.1d → 46d | SDR-2-PRO-PO-C-1050 FF → SDR-2-PRO-PO-C-1050 FS+8d | resources SIC- Cost [16.25]; Delivery Team [2848.11 h] → SIC- Cost; Delivery Team [2848.11 h] |
| SDR-2-PRO-DES-C-1090 | Protection Bollards for CCTV Pole Delivery | 2026-11-24 → 2026-12-01 (+7d) | 2026-12-10 → 2026-12-17 (+7d) |  |  | 93d → -23d |  | resources SIC- Cost [21.25]; Delivery Team [2848.11 h] → SIC- Cost; Delivery Team [2848.11 h] |
| SDR-2-PRO-DES-C-1100 | Protection (Guard rail) for Fire hydrant Delivery | 2026-11-24 → 2026-12-15 (+21d) | 2027-01-22 → 2027-02-12 (+21d) |  |  | 0d → -84d | SDR-2-PRO-PO-C-1100 FS+6d → SDR-2-PRO-PO-C-1100 FS+12d | resources SIC- Cost [65]; Delivery Team [2848.11 h] → SIC- Cost; Delivery Team [2848.11 h] |
| SDR-2-PRO-DES-C-1080 | Fence for Electrical works Delivery | 2026-12-13 → 2026-12-20 (+7d) | 2027-01-10 → 2027-01-17 (+7d) |  |  | 7d → -72d |  | resources SIC- Cost [25]; Delivery Team [2848.11 h] → SIC- Cost; Delivery Team [2848.11 h] |
| SDR-2-PRO-DES-C-1060 | Traffic Signage Manufacture and Delivery | 2026-12-18 → 2026-12-29 (+11d) | 2027-01-06 → 2027-01-17 (+11d) |  |  | 6d → -54d |  | resources SIC- Cost [15]; Delivery Team [2848.11 h] → SIC- Cost; Delivery Team [2848.11 h] |
| SDR-2-PRO-DES-C-1040 | Road Marking Delivery | 2026-12-11 → 2027-01-17 (+37d) | 2027-03-16 → 2027-04-22 (+37d) |  |  | 7d → -118d | SDR-2-PRO-PO-C-1040 FS+15d → SDR-2-PRO-PO-C-1040 FS+36d | resources SIC- Cost [17.5]; Delivery Team [2848.11 h] → SIC- Cost; Delivery Team [2848.11 h] |
| 3 | **Electrical** |  | 2026-12-15 → 2026-12-22 (+7d) |  |  |  |  |  |
| SDR-2-PRO-DES-E-1000 | UPVC Ducts & HDPE Ducts for Telecom network M Delivery |  |  |  |  |  |  | resources SIC- Cost [46.25]; Delivery Team [2848.11 h] → SIC- Cost; Delivery Team [2848.11 h] |
| SDR-2-PRO-DES-E-1010 | Grounding System Delivery |  |  |  |  |  |  | resources SIC- Cost [46.25]; Delivery Team [2848.11 h] → SIC- Cost; Delivery Team [2848.11 h] |
| SDR-2-PRO-DES-E-1020 | PECD Ducts for CCTV network Delivery | 2026-11-09 → 2026-11-16 (+7d) | 2026-12-15 → 2026-12-22 (+7d) |  |  | 1d → -85d | SDR-2-PRO-PO-E-1140 FF → SDR-2-PRO-PO-E-1140 FS+10d | resources SIC- Cost [46.25]; Delivery Team [2848.11 h] → SIC- Cost; Delivery Team [2848.11 h] |
| 5 | **Long Lead Items Delivery** |  | 2027-01-17 → 2027-02-24 (+38d) |  |  |  |  |  |
| 3 | **Electrical** |  | 2027-01-17 → 2027-02-24 (+38d) |  |  |  |  |  |
| SDR-2-PRO-DEL-E-1000 | MV Cables Delivery |  | 2026-09-10 A → 2026-11-29 (+80d) |  | 100% → 0% | none → -56d |  | resources SIC- Cost [87.5]; Delivery Team [2848.11 h] → SIC- Cost; Delivery Team [2848.11 h] |
| SDR-2-PRO-DEL-E-1060 | Switchgears - (RMUs) Delivery |  |  |  |  |  | SDR-2-PRO-PO-E-1090 → SDR-2-PRO-PO-E-1090 FS+8d | resources SIC- Cost [62.5]; Delivery Team [2848.11 h] → SIC- Cost; Delivery Team [2848.11 h] |
| SDR-2-PRO-DEL-E-1010 | LV Cables Delivery |  |  |  |  |  |  | resources SIC- Cost [87.5]; Delivery Team [2848.11 h] → SIC- Cost; Delivery Team [2848.11 h] |
| SDR-2-PRO-DEL-E-1050 | Concrete Manholes & DrawPits for Telecom Network Delivery |  |  |  |  |  |  | resources SIC- Cost [62.5]; Delivery Team [2848.11 h] → SIC- Cost; Delivery Team [2848.11 h] |
| SDR-2-PRO-DEL-E-1210 | Termination Kits & Joints Delivery |  |  |  |  |  |  | resources SIC- Cost [75]; Delivery Team [2848.11 h] → SIC- Cost; Delivery Team [2848.11 h] |
| SDR-2-PRO-DEL-E-1140 | Racks and Patch panels Delivery |  |  |  |  |  | SDR-2-PRO-PO-E-1180 FF → SDR-2-PRO-PO-E-1180 FS+8d | resources SIC- Cost [62.5]; Delivery Team [2848.11 h] → SIC- Cost; Delivery Team [2848.11 h] |
| SDR-2-PRO-DEL-E-1160 | Professional 55" Video wall at control room Delivery |  |  |  |  |  | SDR-2-PRO-PO-E-1200 FF → SDR-2-PRO-PO-E-1200 FS+8d | resources SIC- Cost [62.5]; Delivery Team [2848.11 h] → SIC- Cost; Delivery Team [2848.11 h] |
| SDR-2-PRO-DEL-E-1170 | CCTV Switches Delivery |  |  |  |  |  | SDR-2-PRO-PO-E-1210 FF → SDR-2-PRO-PO-E-1210 FS+8d | resources SIC- Cost [62.5]; Delivery Team [2848.11 h] → SIC- Cost; Delivery Team [2848.11 h] |
| SDR-2-PRO-DEL-E-1180 | CCTV Wireless P2P bridges Delivery |  |  |  |  |  | SDR-2-PRO-PO-E-1220 FF → SDR-2-PRO-PO-E-1220 FS+8d | resources SIC- Cost [62.5]; Delivery Team [2848.11 h] → SIC- Cost; Delivery Team [2848.11 h] |
| SDR-2-PRO-DEL-E-1190 | CCTV UPS Delivery |  |  |  |  |  | SDR-2-PRO-PO-E-1230 FF → SDR-2-PRO-PO-E-1230 | resources SIC- Cost [62.5]; Delivery Team [2848.11 h] → SIC- Cost; Delivery Team [2848.11 h] |
| SDR-2-PRO-DEL-E-1040 | DrawPits for Lighting Delivery |  |  |  |  |  |  | resources SIC- Cost [50]; Delivery Team [2848.11 h] → SIC- Cost; Delivery Team [2848.11 h] |
| SDR-2-PRO-DEL-E-1020 | Street Lighting Poles Delivery | 2026-11-09 → 2026-11-16 (+7d) | 2027-01-17 → 2027-01-24 (+7d) |  |  | 6d → -123d |  | resources SIC- Cost [87.5]; Delivery Team [2848.11 h] → SIC- Cost; Delivery Team [2848.11 h] |
| SDR-2-PRO-DEL-E-1030 | Street Lighting Fixtures Delivery | 2026-11-09 → 2026-11-16 (+7d) | 2027-01-17 → 2027-01-24 (+7d) |  |  | 6d → -123d |  | resources SIC- Cost [87.5]; Delivery Team [2848.11 h] → SIC- Cost; Delivery Team [2848.11 h] |
| SDR-2-PRO-DEL-E-1080 | Lighting Panels Delivery | 2026-11-09 → 2026-11-16 (+7d) | 2027-01-12 → 2027-01-19 (+7d) |  |  | 0d → -94d |  | resources SIC- Cost [62.5]; Delivery Team [2848.11 h] → SIC- Cost; Delivery Team [2848.11 h] |
| SDR-2-PRO-DEL-E-1100 | Main Feeder Pillar Manufacture and Delivery | 2026-11-09 → 2026-11-16 (+7d) | 2026-12-28 → 2027-01-04 (+7d) |  |  | 15d → -86d |  | resources SIC- Cost [62.5]; Delivery Team [2848.11 h] → SIC- Cost; Delivery Team [2848.11 h] |
| SDR-2-PRO-DEL-E-1110 | CCTV Poles including all hardwares Delivery | 2026-11-09 → 2026-11-16 (+7d) | 2027-01-12 → 2027-01-19 (+7d) |  |  | -1d → -94d | SDR-2-PRO-PO-E-1150 FF → SDR-2-PRO-PO-E-1150 FS+8d | resources SIC- Cost [62.5]; Delivery Team [2848.11 h] → SIC- Cost; Delivery Team [2848.11 h] |
| SDR-2-PRO-DEL-E-1130 | CCTV Cables "CAT6" Delivery | 2026-11-09 → 2026-11-16 (+7d) | 2026-12-23 → 2026-12-30 (+7d) |  |  | 1d → -91d | SDR-2-PRO-PO-E-1170 FF → SDR-2-PRO-PO-E-1170 | resources SIC- Cost [56.25]; Delivery Team [2848.11 h] → SIC- Cost; Delivery Team [2848.11 h] |
| SDR-2-PRO-DEL-E-1150 | CCTV System,Servers & WorkStations Delivery | 2026-11-09 → 2026-11-16 (+7d) | 2026-12-28 → 2027-01-04 (+7d) |  |  | 14d → -65d | SDR-2-PRO-PO-E-1190 FF → SDR-2-PRO-PO-E-1190 FS+8d | resources SIC- Cost [62.5]; Delivery Team [2848.11 h] → SIC- Cost; Delivery Team [2848.11 h] |
| SDR-2-PRO-DEL-E-1120 | CCTV Cables "Power" Delivery | 2026-11-09 → 2026-11-29 (+20d) | 2027-01-12 → 2027-02-01 (+20d) |  |  | -1d → -107d | SDR-2-PRO-PO-E-1160 FF → SDR-2-PRO-PO-E-1160 FS+8d | resources SIC- Cost [62.5]; Delivery Team [2848.11 h] → SIC- Cost; Delivery Team [2848.11 h] |
| SDR-2-PRO-DEL-E-1200 | CCTV Solar System Delivery | 2026-11-09 → 2026-11-29 (+20d) | 2027-01-02 → 2027-01-22 (+20d) |  |  | 21d → -51d | SDR-2-PRO-PO-E-1240 FF → SDR-2-PRO-PO-E-1240 FS+8d | resources SIC- Cost [75]; Delivery Team [2848.11 h] → SIC- Cost; Delivery Team [2848.11 h] |
| SDR-2-PRO-DEL-E-1090 | KWH Meter with mounting frame Delivery | 2026-11-09 → 2026-12-01 (+22d) | 2026-12-28 → 2027-01-19 (+22d) |  |  | 2d → -120d | SDR-2-PRO-PO-E-1120 SS → SDR-2-PRO-PO-E-1120 | resources SIC- Cost [62.5]; Delivery Team [2848.11 h] → SIC- Cost; Delivery Team [2848.11 h] |
| SDR-2-PRO-DEL-E-1070 | Unit Substation Delivery | 2026-11-09 → 2026-12-21 (+42d) | 2027-01-12 → 2027-02-24 (+43d) |  |  | 11d → -154d | SDR-2-PRO-PO-E-1100 SS → SDR-2-PRO-PO-E-1100 FS+6d | resources SIC- Cost [81.25]; Delivery Team [2848.11 h] → SIC- Cost; Delivery Team [2848.11 h] |
| 2 | **Mechanical** |  | 2026-10-01 → 2026-11-16 (+46d) |  |  |  |  |  |
| SDR-2-PRO-DEL-M-1000 | GRP Pipes & UPVC Pipes &Fittings Delivery |  |  |  |  |  |  | resources SIC- Cost [60]; Delivery Team [2848.11 h] → SIC- Cost; Delivery Team [2848.11 h] |
| SDR-2-PRO-DEL-M-1010 | HDPE Pipes & Fittings Delivery |  |  |  |  |  |  | resources SIC- Cost [50]; Delivery Team [2848.11 h] → SIC- Cost; Delivery Team [2848.11 h] |
| SDR-2-PRO-DEL-M-1030 | Manhole Delivery |  | 2026-09-12 A → 2026-11-16 (+65d) |  | 100% → 95% | none → 9d |  | resources SIC- Cost [60]; Delivery Team [2848.11 h] → SIC- Cost; Delivery Team [2848.11 h] |
| SDR-2-PRO-DEL-M-1050 | Manhole, Catch basin and Valve box Cover Delivery |  |  |  |  |  |  | resources SIC- Cost [50]; Delivery Team [2848.11 h] → SIC- Cost; Delivery Team [2848.11 h] |
| SDR-2-PRO-DEL-M-1060 | Fire Hydrant Delivery |  |  |  |  |  |  | resources SIC- Cost [93.75]; Delivery Team [2848.11 h] → SIC- Cost; Delivery Team [2848.11 h] |
| SDR-2-PRO-DEL-M-1070 | Valve of Fire Hydrant Delivery |  |  |  |  |  |  | resources SIC- Cost [93.75]; Delivery Team [2848.11 h] → SIC- Cost; Delivery Team [2848.11 h] |
| SDR-2-PRO-DEL-M-1020 | Valves Delivery |  |  |  |  |  |  | resources SIC- Cost [125]; Delivery Team [2848.11 h] → SIC- Cost; Delivery Team [2848.11 h] |

| ID | Task | Start | Finish | Duration | Total float | Predecessors | Other |
| --- | --- | --- | --- | --- | --- | --- | --- |
| SDR-2-PRO-DEL-M-1040 | Catch Basin Delivery |  |  |  |  |  | resources SIC- Cost [62.5]; Delivery Team [2848.11 h] → SIC- Cost; Delivery Team [2848.11 h] |
| 4 | **Materials Staging Time** |  | 2027-03-20 → 2027-04-26 (+37d) |  |  |  |  |
| 1 | **Civil** |  | 2027-03-20 → 2027-04-26 (+37d) |  |  |  |  |
| SDR-2-PRO-ST-C-1050 | Interlock Tiles staging |  | 2026-12-03 → 2026-11-27 (-6d) |  | 104.1d → 46d |  |  |
| SDR-2-PRO-ST-C-1030 | Kerbstone staging |  | 2026-12-19 → 2026-11-27 (-22d) |  | 68.1d → 73d | SDR-2-PRO-DES-C-1030 FF → SDR-2-PRO-DES-C-1030 |  |
| SDR-2-PRO-ST-C-1020 | Asphalt Mix staging |  | 2027-01-26 → 2026-12-04 (-53d) | 0d → 4d | 49.2d → -16d | SDR-2-PRO-DES-C-1020 FF → SDR-2-PRO-DES-C-1020 SS |  |
| SDR-2-PRO-ST-C-1090 | Protection Bollards for CCTV Pole staging | 2026-12-15 → 2026-12-22 (+7d) | 2026-12-18 → 2026-12-25 (+7d) |  | 93d → -23d |  |  |
| SDR-2-PRO-ST-C-1060 | Traffic Signage staging | 2027-01-07 → 2027-01-18 (+11d) | 2027-01-10 → 2027-01-21 (+11d) |  | 111d → 48d |  |  |
| SDR-2-PRO-ST-C-1080 | Fence for Electrical works staging | 2027-01-11 → 2027-01-18 (+7d) | 2027-01-14 → 2027-01-21 (+7d) |  | 7d → -72d |  |  |
| SDR-2-PRO-ST-C-1100 | Protection (Guard rail) for Fire hydrant staging | 2027-01-23 → 2027-02-13 (+21d) | 2027-01-26 → 2027-02-16 (+21d) |  | 0d → -84d |  |  |
| SDR-2-PRO-ST-C-1040 | Road Marking staging | 2027-03-17 → 2027-04-23 (+37d) | 2027-03-20 → 2027-04-26 (+37d) |  | 15d → -73d |  |  |
| SDR-2-PRO-ST-M-1050 | Manhole, Catch basin and Valve box Cover staging |  |  |  |  | SDR-2-PRO-DEL-M-1050 FF → SDR-2-PRO-DEL-M-1050 |  |
| SDR-2-PRO-ST-M-1030 | Manhole staging |  |  |  |  | SDR-2-PRO-DEL-M-1030 FF → SDR-2-PRO-DEL-M-1030 |  |
| SDR-2-PRO-ST-M-1020 | Valves staging |  |  |  |  | SDR-2-PRO-DEL-M-1020 FF → SDR-2-PRO-DEL-M-1020 |  |
| SDR-2-PRO-ST-M-1060 | Fire Hydrant staging |  |  |  |  | SDR-2-PRO-DEL-M-1060 FF → SDR-2-PRO-DEL-M-1060 |  |
| SDR-2-PRO-ST-M-1070 | Valve of Fire Hydrant staging |  |  |  |  | SDR-2-PRO-DEL-M-1070 FF → SDR-2-PRO-DEL-M-1070 |  |
| SDR-2-PRO-ST-M-1040 | Catch Basin staging |  |  |  |  | SDR-2-PRO-DEL-M-1040 FF → SDR-2-PRO-DEL-M-1040 |  |
| 3 | **Electrical** |  | 2027-01-22 → 2027-03-06 (+43d) |  |  |  |  |
| SDR-2-PRO-ST-E-1110 | Lighting Panels staging | 2026-11-09 → 2026-11-16 (+7d) | 2026-11-18 → 2026-11-25 (+7d) |  | 40d → -53d |  |  |
| SDR-2-PRO-ST-E-1130 | Main Feeder Pillar staging | 2026-11-11 → 2026-11-18 (+7d) | 2026-11-20 → 2026-11-27 (+7d) |  | 38d → -55d |  |  |
| SDR-2-PRO-ST-E-1140 | PECD Ducts for CCTV network staging | 2026-12-16 → 2026-12-23 (+7d) | 2026-12-25 → 2027-01-01 (+7d) |  | 18d → -83d |  |  |
| SDR-2-PRO-ST-E-1170 | CCTV Cables "CAT6" staging | 2026-12-24 → 2026-12-31 (+7d) | 2027-01-02 → 2027-01-09 (+7d) |  | 10d → -91d |  |  |
| SDR-2-PRO-ST-E-1190 | CCTV System,Servers & WorkStations staging | 2026-12-29 → 2027-01-05 (+7d) | 2027-01-07 → 2027-01-14 (+7d) |  | 14d → -65d |  |  |
| SDR-2-PRO-ST-E-1120 | KWH Meter with mounting frame staging | 2026-12-29 → 2027-01-20 (+22d) | 2027-01-07 → 2027-01-29 (+22d) |  | 2d → -117d |  |  |
| SDR-2-PRO-ST-E-1150 | CCTV Poles including all hardwares staging | 2027-01-13 → 2027-01-20 (+7d) | 2027-01-22 → 2027-01-29 (+7d) |  | -1d → -80d |  |  |
| SDR-2-PRO-ST-E-1240 | CCTV Solar System staging | 2027-01-03 → 2027-01-23 (+20d) | 2027-01-12 → 2027-02-01 (+20d) |  | 21d → -51d |  |  |
| SDR-2-PRO-ST-E-1030 | Street Lighting Poles staging | 2026-11-09 → 2027-01-25 (+77d) | 2026-11-18 → 2027-02-03 (+77d) |  | 20d → -123d | SDR-2-PRO-DEL-E-1020 SS → SDR-2-PRO-DEL-E-1020 |  |
| SDR-2-PRO-ST-E-1040 | Street Lighting Fixtures staging | 2026-11-09 → 2027-01-25 (+77d) | 2026-11-18 → 2027-02-03 (+77d) |  | 20d → -123d | SDR-2-PRO-DEL-E-1030 SS → SDR-2-PRO-DEL-E-1030 |  |
| SDR-2-PRO-ST-E-1160 | CCTV Cables "Power" staging | 2027-01-13 → 2027-02-02 (+20d) | 2027-01-22 → 2027-02-11 (+20d) |  | -1d → -93d |  |  |
| SDR-2-PRO-ST-E-1100 | Unit Substation staging | 2026-11-09 → 2027-02-25 (+108d) | 2026-11-18 → 2027-03-06 (+108d) |  | 82d → -151d | SDR-2-PRO-DEL-E-1070 SS → SDR-2-PRO-DEL-E-1070 |  |
| CON | **Construction** |  | 2027-07-05 → 2027-12-05 (+153d) |  |  |  |  |
| RO | **ROAD WORKS** |  | 2027-05-30 → 2027-09-14 (+107d) |  |  |  |  |
| ZA | **ZONE A** |  | 2027-05-30 → 2027-09-14 (+107d) |  |  |  |  |
| SDR-2-CON-RW-ZA-1000 | Cleaning and removal of organic materials in Zone A |  |  |  |  |  | resources SIC- Cost [19]; Excavator [428.42 h]; Excavator Operator [219.73 h]; Dumper Operator [219.73 h]; Dumper Truck [1498.7 h]; Grader [920 h]; Grader Operator [219.73 h]; Loader [698.42 h]; Loader Operator [219.73 h]; Un-Skilled Labor [219.73 h]; Supervisor [219.73 h]; Skilled Labor [219.73 h] → SIC- Cost [574627]; Excavator [428.42 h]; Excavator Operator [219.73 h]; Dumper Operator [219.73 h]; Dumper Truck [1498.7 h]; Grader [920 h]; Grader Operator [219.73 h]; Loader [698.42 h]; Loader Operator [219.73 h]; Un-Skilled Labor [219.73 h]; Supervisor [219.73 h]; Skilled Labor [219.73 h] |
| SDR-2-CON-RW-ZA-1010 | Surveying works Zone A |  |  |  |  | SDR-2-ENG-APP-M-1010 SS, SDR-2-PREL-1100, SDR-2-CON-RW-ZA-1000, SDR-2-PRO-MAS-C-1030 SS, SDR-2-PRO-MAS-C-1060 SS, SDR-2-PRO-MAL-E-1150, SDR-2-PRO-MAL-E-1140, SDR-2-PRO-MAL-E-1130, SDR-2-PRO-MAL-E-1120, SDR-2-PRO-MAL-E-1110, SDR-2-PRO-MAL-E-1000, SDR-2-PRO-MAL-E-1010, SDR-2-PRO-MAL-E-1020, SDR-2-PRO-MAL-E-1030, SDR-2-PRO-MAL-E-1040, SDR-2-PRO-MAL-E-1050, SDR-2-PRO-MAL-E-1180, SDR-2-PRO-MAL-E-1060, SDR-2-PRO-MAL-E-1070, SDR-2-PRO-MAL-E-1080, SDR-2-PRO-MAL-E-1090, SDR-2-PRO-MAL-E-1100, SDR-2-PRO-MAL-E-1190, SDR-2-PRO-MAL-M-1000, SDR-2-PRO-MAL-M-1010, SDR-2-PRO-MAL-M-1020, SDR-2-PRO-MAL-M-1030, SDR-2-PRO-MAL-M-1040, SDR-2-PRO-MAL-M-1050, SDR-2-PRO-MAL-M-1060, SDR-2-PRO-MAL-M-1070, SDR-2-PRO-MAS-E-1000, SDR-2-PRO-MAS-E-1010, SDR-2-PRO-MAS-E-1020, SDR-2-PRO-MAS-E-1030, SDR-2-PRO-MAS-C-1000, SDR-2-PRO-MAS-C-1010, SDR-2-PRO-MAS-C-1040, SDR-2-PRO-MAS-C-1020, SDR-2-PRO-MAS-C-1050, SDR-2-PRO-MAS-C-1070, SDR-2-PRO-MAS-C-1090, SDR-2-PRO-MAS-C-1100, SDR-2-PRO-MAS-C-1080 → SDR-2-CON-RW-ZA-1000, SDR-2-PRO-MAL-E-1150, SDR-2-PRO-MAL-E-1140, SDR-2-PRO-MAL-E-1130, SDR-2-PRO-MAL-E-1120, SDR-2-PRO-MAL-E-1110, SDR-2-PRO-MAL-E-1000, SDR-2-PRO-MAL-E-1010, SDR-2-PRO-MAL-E-1020, SDR-2-PRO-MAL-E-1030, SDR-2-PRO-MAL-E-1040, SDR-2-PRO-MAL-E-1050, SDR-2-PRO-MAL-E-1180, SDR-2-PRO-MAL-E-1060, SDR-2-PRO-MAL-E-1070, SDR-2-PRO-MAL-E-1080, SDR-2-PRO-MAL-E-1090, SDR-2-PRO-MAL-E-1100, SDR-2-PRO-MAL-E-1190, SDR-2-PRO-MAL-M-1000, SDR-2-PRO-MAL-M-1010, SDR-2-PRO-MAL-M-1020, SDR-2-PRO-MAL-M-1030, SDR-2-PRO-MAL-M-1040, SDR-2-PRO-MAL-M-1050, SDR-2-PRO-MAL-M-1060, SDR-2-PRO-MAL-M-1070, SDR-2-PRO-MAS-E-1000, SDR-2-PRO-MAS-E-1010, SDR-2-PRO-MAS-E-1020, SDR-2-PRO-MAS-E-1030, SDR-2-PRO-MAS-C-1000, SDR-2-PRO-MAS-C-1010, SDR-2-PRO-MAS-C-1040, SDR-2-PRO-MAS-C-1020, SDR-2-PRO-MAS-C-1030, SDR-2-PRO-MAS-C-1050, SDR-2-PRO-MAS-C-1060, SDR-2-PRO-MAS-C-1070, SDR-2-PRO-MAS-C-1090, SDR-2-PRO-MAS-C-1100, SDR-2-PRO-MAS-C-1080, SDR-2-ENG-APP-M-1010 SS, SDR-2-PREL-1100 | resources SIC- Cost [10]; Excavator [380.62 h]; Grader [410.62 h]; Un-Skilled Labor [191.07 h]; Surveyor [191.07 h]; Supervisor [95.54 h] → SIC- Cost [140299]; Excavator [380.62 h]; Grader [410.62 h]; Un-Skilled Labor [191.07 h]; Surveyor [191.07 h]; Supervisor [95.54 h] |
| 1 | **ROAD WORKS IN ( PH2-COL-MC10 )** |  | 2027-05-29 → 2027-07-18 (+50d) |  |  |  |  |
| SDR-2-CON-RW-ZA-1020 | Roadway Excavation and cuttings |  |  |  |  |  | resources SIC- Cost [15]; Excavator [20 h]; Excavator Operator [143.3 h]; Dumper Operator [143.3 h]; Dumper Truck [920 h]; Grader [300 h]; Grader Operator [143.3 h]; Loader [150 h]; Loader Operator [143.3 h]; Un-Skilled Labor [1433.04 h]; Supervisor [143.3 h]; Skilled Labor [1433.04 h] → SIC- Cost [23081.5]; Excavator [20 h]; Excavator Operator [143.3 h]; Dumper Operator [143.3 h]; Dumper Truck [920 h]; Grader [300 h]; Grader Operator [143.3 h]; Loader [150 h]; Loader Operator [143.3 h]; Un-Skilled Labor [1433.04 h]; Supervisor [143.3 h]; Skilled Labor [1433.04 h] |
| SDR-2-CON-RW-ZA-2860 | Embankments to the Road 1 Layer |  |  |  |  | SDR-2-CON-RW-ZA-1020 → SDR-2-CON-RW-ZA-1020 FS+5d | resources SIC- Cost; Compactor [345.95 h]; Excavator [12.5 h]; Excavator Operator [102.24 h]; Dumper Operator [203.01 h]; Dumper Truck [1275 h]; Grader [212.5 h]; Grader Operator [203.01 h]; Loader [94.4 h]; Loader Operator [112.32 h]; Un-Skilled Labor [176.31 h]; Supervisor [65.9 h]; Skilled Labor [176.31 h]; Water Tanker [412.22 h] → SIC- Cost [63450.9]; Compactor [345.95 h]; Excavator [12.5 h]; Excavator Operator [102.24 h]; Dumper Operator [203.01 h]; Dumper Truck [1275 h]; Grader [212.5 h]; Grader Operator [203.01 h]; Loader [94.4 h]; Loader Operator [112.32 h]; Un-Skilled Labor [176.31 h]; Supervisor [65.9 h]; Skilled Labor [176.31 h]; Water Tanker [412.22 h] |
| SDR-2-CON-RW-ZA-2870 | Embankments to the Road 2 Layer |  |  |  |  |  | resources SIC- Cost; Compactor [641.75 h]; Excavator [12.5 h]; Excavator Operator [112.32 h]; Dumper Operator [203.02 h]; Dumper Truck [1275 h]; Grader [212.5 h]; Grader Operator [203.02 h]; Loader [60.63 h]; Loader Operator [122.4 h]; Un-Skilled Labor [148.01 h]; Supervisor [33.8 h]; Skilled Labor [39.48 h]; Water Tanker [383.07 h] → SIC- Cost [72515.3]; Compactor [641.75 h]; Excavator [12.5 h]; Excavator Operator [112.32 h]; Dumper Operator [203.02 h]; Dumper Truck [1275 h]; Grader [212.5 h]; Grader Operator [203.02 h]; Loader [60.63 h]; Loader Operator [122.4 h]; Un-Skilled Labor [148.01 h]; Supervisor [33.8 h]; Skilled Labor [39.48 h]; Water Tanker [383.07 h] |
| SDR-2-CON-RW-ZA-2880 | Embankments to the Road 3 Layer |  |  |  |  |  | resources SIC- Cost; Compactor [360.48 h]; Excavator [12.5 h]; Excavator Operator [203.01 h]; Dumper Operator [203.01 h]; Dumper Truck [1275 h]; Grader [60 h]; Grader Operator [203.01 h]; Loader [40 h]; Loader Operator [203.01 h]; Un-Skilled Labor [192.65 h]; Supervisor [203.01 h]; Skilled Labor [192.65 h]; Water Tanker [182.81 h] → SIC- Cost [262868]; Compactor [360.48 h]; Excavator [12.5 h]; Excavator Operator [203.01 h]; Dumper Operator [203.01 h]; Dumper Truck [1275 h]; Grader [60 h]; Grader Operator [203.01 h]; Loader [40 h]; Loader Operator [203.01 h]; Un-Skilled Labor [192.65 h]; Supervisor [203.01 h]; Skilled Labor [192.65 h]; Water Tanker [182.81 h] |
| SDR-2-CON-RW-ZA-1030 | Embankments to the Road 4 Layer |  |  |  |  |  | resources SIC- Cost; Compactor [100 h]; Excavator [12.5 h]; Excavator Operator [203.01 h]; Dumper Operator [132.47 h]; Dumper Truck [1275 h]; Grader [180.36 h]; Grader Operator [203.01 h]; Loader [231.33 h]; Loader Operator [203.01 h]; Un-Skilled Labor [192.65 h]; Supervisor [203.01 h]; Skilled Labor [192.65 h]; Water Tanker [182.81 h] → SIC- Cost [507607]; Compactor [100 h]; Excavator [12.5 h]; Excavator Operator [203.01 h]; Dumper Operator [132.47 h]; Dumper Truck [1275 h]; Grader [180.36 h]; Grader Operator [203.01 h]; Loader [231.33 h]; Loader Operator [203.01 h]; Un-Skilled Labor [192.65 h]; Supervisor [203.01 h]; Skilled Labor [192.65 h]; Water Tanker [182.81 h] |
| SDR-2-CON-RW-ZA-1040 | Plot Excavation for cuttings (all types of soil) |  |  |  |  |  | resources SIC- Cost; Excavator [6 h]; Excavator Operator [81.48 h]; Dumper Operator [81.48 h]; Dumper Truck [550 h]; Grader [348.86 h]; Grader Operator [81.48 h]; Loader [474.67 h]; Loader Operator [81.48 h]; Un-Skilled Labor [38.53 h]; Supervisor [9.63 h]; Skilled Labor [38.53 h] → SIC- Cost [79092.6]; Excavator [6 h]; Excavator Operator [81.48 h]; Dumper Operator [81.48 h]; Dumper Truck [550 h]; Grader [348.86 h]; Grader Operator [81.48 h]; Loader [474.67 h]; Loader Operator [81.48 h]; Un-Skilled Labor [38.53 h]; Supervisor [9.63 h]; Skilled Labor [38.53 h] |
| SDR-2-CON-RW-ZA-2890 | Embankments to the Plot Layer 1 |  |  |  |  |  | resources SIC- Cost; Excavator [5.49 h]; Compactor [101.48 h]; Dum Truck Operator [48 h]; Excavator Operator [60.84 h]; Dumper Truck [678.66 h]; Grader [120 h]; Grader Operator [48 h]; Loader [40 h]; Loader Operator [48 h]; Un-Skilled Labor [48 h]; Supervisor [48 h]; Skilled Labor [48 h]; Water Tanker [76.11 h] → SIC- Cost [494995]; Excavator [5.49 h]; Compactor [101.48 h]; Dum Truck Operator [48 h]; Excavator Operator [60.84 h]; Dumper Truck [678.66 h]; Grader [120 h]; Grader Operator [48 h]; Loader [40 h]; Loader Operator [48 h]; Un-Skilled Labor [48 h]; Supervisor [48 h]; Skilled Labor [48 h]; Water Tanker [76.11 h] |
| SDR-2-CON-RW-ZA-2900 | Embankments to the Plot Layer 2 |  |  |  |  |  | resources SIC- Cost; Excavator [5.49 h]; Compactor [95.55 h]; Dum Truck Operator [48 h]; Excavator Operator [60.84 h]; Dumper Truck [179.27 h]; Grader [120 h]; Grader Operator [48 h]; Loader [40 h]; Loader Operator [48 h]; Un-Skilled Labor [48.01 h]; Supervisor [48.01 h]; Skilled Labor [48 h]; Water Tanker [130.28 h] → SIC- Cost [494995]; Excavator [5.49 h]; Compactor [95.55 h]; Dum Truck Operator [48 h]; Excavator Operator [60.84 h]; Dumper Truck [179.27 h]; Grader [120 h]; Grader Operator [48 h]; Loader [40 h]; Loader Operator [48 h]; Un-Skilled Labor [48.01 h]; Supervisor [48.01 h]; Skilled Labor [48 h]; Water Tanker [130.28 h] |
| SDR-2-CON-RW-ZA-1050 | Embankments to the Plot Layer 3 |  |  |  |  |  | resources SIC- Cost; Compactor [186.66 h]; Excavator [5.49 h]; Excavator Operator [60.84 h]; Dumper Operator [48 h]; Dumper Truck [178.66 h]; Grader [120 h]; Grader Operator [48 h]; Loader [235.57 h]; Loader Operator [48 h]; Un-Skilled Labor [48.01 h]; Supervisor [48.01 h]; Skilled Labor [48.01 h]; Water Tanker [162.5 h] → SIC- Cost [424281]; Compactor [186.66 h]; Excavator [5.49 h]; Excavator Operator [60.84 h]; Dumper Operator [48 h]; Dumper Truck [178.66 h]; Grader [120 h]; Grader Operator [48 h]; Loader [235.57 h]; Loader Operator [48 h]; Un-Skilled Labor [48.01 h]; Supervisor [48.01 h]; Skilled Labor [48.01 h]; Water Tanker [162.5 h] |
| SDR-2-CON-RW-ZA-1060 | Subgrade layer works |  |  |  |  |  | resources SIC- Cost; Compactor [150 h]; Excavator [21 h]; Excavator Operator [143.3 h]; Dumper Operator [143.3 h]; Dumper Truck [289 h]; Grader [120 h]; Grader Operator [143.3 h]; Loader [90.82 h]; Loader Operator [143.3 h]; Un-Skilled Labor [143.3 h]; Supervisor [143.3 h]; Skilled Labor [143.3 h]; Water Tanker [123 h]; Water Tanker Operator [143.3 h] → SIC- Cost [82090]; Compactor [150 h]; Excavator [21 h]; Excavator Operator [143.3 h]; Dumper Operator [143.3 h]; Dumper Truck [289 h]; Grader [120 h]; Grader Operator [143.3 h]; Loader [90.82 h]; Loader Operator [143.3 h]; Un-Skilled Labor [143.3 h]; Supervisor [143.3 h]; Skilled Labor [143.3 h]; Water Tanker [123 h]; Water Tanker Operator [143.3 h] |
| SDR-2-CON-RW-ZA-1070 | Aggregate base course layer |  |  |  |  |  | resources SIC- Cost; Compactor [441.57 h]; Dumper Operator [81.48 h]; Dumper Truck [550 h]; Grader [358.86 h]; Grader Operator [81.48 h]; Loader [300 h]; Loader Operator [19.26 h]; Un-Skilled Labor [38.53 h]; Supervisor [9.63 h]; Skilled Labor [38.53 h]; Water Tanker [60 h]; Water Tanker Operator [57.79 h] → SIC- Cost [120756]; Compactor [441.57 h]; Dumper Operator [81.48 h]; Dumper Truck [550 h]; Grader [358.86 h]; Grader Operator [81.48 h]; Loader [300 h]; Loader Operator [19.26 h]; Un-Skilled Labor [38.53 h]; Supervisor [9.63 h]; Skilled Labor [38.53 h]; Water Tanker [60 h]; Water Tanker Operator [57.79 h] |
| SDR-2-CON-RW-ZA-1080 | Milling of wearing course |  |  |  |  |  | resources SIC- Cost; Un-Skilled Labor [57.32 h]; Supervisor [57.32 h]; Skilled Labor [57.32 h]; Water Tanker [43 h]; Water Tanker Operator [57.32 h]; Road Milling Machine [60 h]; Road Milling Machine Operator [60 h]; Sweeper Machine [43 h]; Sweeper Machine Operator [57.32 h] → SIC- Cost [29076.2]; Un-Skilled Labor [57.32 h]; Supervisor [57.32 h]; Skilled Labor [57.32 h]; Water Tanker [43 h]; Water Tanker Operator [57.32 h]; Road Milling Machine [60 h]; Road Milling Machine Operator [60 h]; Sweeper Machine [43 h]; Sweeper Machine Operator [57.32 h] |
| 3 | **Asphalt Works** |  | 2027-02-20 → 2026-12-29 (-53d) |  |  |  |  |
| SDR-2-CON-RW-ZA-1090 | Asphalt works 2st Layer with RC-01 |  |  |  |  | SDR-2-PRO-DES-C-1020 FF, SDR-2-PRO-DES-C-1010, SDR-2-PRO-MAS-C-1020, SDR-2-CON-RW-ZA-1070, SDR-2-CON-RW-ZA-1080, SDR-2-PRO-ST-C-1020 → SDR-2-PRO-MAS-C-1020, SDR-2-CON-RW-ZA-1070, SDR-2-CON-RW-ZA-1080, SDR-2-PRO-DES-C-1020 FF, SDR-2-PRO-DES-C-1010 | resources SIC- Cost; Compactor [110 h]; Dumper Operator [105.09 h]; Dumper Truck [242.75 h]; Supervisor [105.09 h]; Sweeper Machine [41.38 h]; Sweeper Machine Operator [105.08 h]; Pneumatic Tire Roller [281.82 h]; Pneumatic Roller Operator [105.09 h]; Asphalt Paver [100 h]; Asphalt Paver Operator [105.09 h] → SIC- Cost [346676]; Compactor [110 h]; Dumper Operator [105.09 h]; Dumper Truck [242.75 h]; Supervisor [105.09 h]; Sweeper Machine [41.38 h]; Sweeper Machine Operator [105.08 h]; Pneumatic Tire Roller [281.82 h]; Pneumatic Roller Operator [105.09 h]; Asphalt Paver [100 h]; Asphalt Paver Operator [105.09 h] |
| SDR-2-CON-RW-ZA-1100 | Asphalt works 3nd layer with RC-02 |  | 2027-02-20 → 2026-12-29 (-53d) |  | 42.2d → -8.8d | SDR-2-PRO-DES-C-1020, SDR-2-CON-RW-ZA-1090 SS+10d → SDR-2-CON-RW-ZA-1090, SDR-2-PRO-DES-C-1020 | resources SIC- Cost; Compactor [80 h]; Dumper Operator [770.58 h]; Dumper Truck [60 h]; Supervisor [9.63 h]; Sweeper Machine [20 h]; Sweeper Machine Operator [19.26 h]; Pneumatic Tire Roller [40 h]; Pneumatic Roller Operator [57.79 h]; Asphalt Paver [40 h]; Asphalt Paver Operator [85.98 h] → SIC- Cost [299797]; Compactor [80 h]; Dumper Operator [770.58 h]; Dumper Truck [60 h]; Supervisor [9.63 h]; Sweeper Machine [20 h]; Sweeper Machine Operator [19.26 h]; Pneumatic Tire Roller [40 h]; Pneumatic Roller Operator [57.79 h]; Asphalt Paver [40 h]; Asphalt Paver Operator [85.98 h] |
| 4 | **Kerbstone Installation** |  | 2027-02-21 → 2027-03-14 (+21d) |  |  |  |  |
| SDR-2-CON-RW-ZA-3400 | Kerbstone Installation "all Types" Part1 |  | 2027-01-09 → 2026-12-13 (-27d) |  | 58.1d → 62d |  | resources SIC- Cost; Un-Skilled Labor [40.23 h]; Supervisor [40.23 h]; Skilled Labor [40.23 h] → SIC- Cost [32835.8]; Un-Skilled Labor [40.23 h]; Supervisor [40.23 h]; Skilled Labor [40.23 h] |
| SDR-2-CON-RW-ZA-1110 | Kerbstone Installation "all Types" Part2 | 2027-01-27 → 2027-02-13 (+17d) | 2027-02-21 → 2027-03-14 (+21d) |  | 42.2d → -47d | SDR-2-CON-CC-ZG-1610, SDR-2-CON-RW-ZA-1100 SS+15d, SDR-2-PRO-ST-C-1010, SDR-2-PRO-MAS-C-1010, SDR-2-PRO-MAS-C-1040, SDR-2-CON-RW-ZA-3400 → SDR-2-CON-RW-ZA-1100, SDR-2-PRO-ST-C-1010, SDR-2-PRO-MAS-C-1010, SDR-2-PRO-MAS-C-1040, SDR-2-CON-CC-ZG-1610 | resources SIC- Cost; Un-Skilled Labor [40.23 h]; Supervisor [40.23 h]; Skilled Labor [40.23 h] → SIC- Cost [254069]; Un-Skilled Labor [40.23 h]; Supervisor [40.23 h]; Skilled Labor [40.23 h] |
| 5 | **Interlock Installation** | 2027-03-17 → 2027-04-24 (+38d) | 2027-04-10 → 2027-05-23 (+43d) |  |  |  |  |
| SDR-2-CON-RW-ZA-1120 | Interlock Installation | 2027-03-17 → 2027-04-24 (+38d) | 2027-04-10 → 2027-05-23 (+43d) |  | 6d → -81d | SDR-2-CON-RW-ZA-1110 SS, SDR-2-PRO-ST-C-1050, SDR-2-PRO-MAS-C-1050, SDR-2-PRO-DES-C-1040 → SDR-2-CON-RW-ZA-1110, SDR-2-PRO-ST-C-1050, SDR-2-PRO-MAS-C-1050, SDR-2-PRO-DES-C-1040 | resources SIC- Cost; Un-Skilled Labor [40.23 h]; Supervisor [40.23 h]; Skilled Labor [40.23 h] → SIC- Cost [149309]; Un-Skilled Labor [40.23 h]; Supervisor [40.23 h]; Skilled Labor [40.23 h] |
| 6 | **Road Marking** | 2027-03-29 → 2027-05-24 (+56d) | 2027-04-29 → 2027-06-24 (+56d) |  |  |  |  |
| SDR-2-CON-RW-ZA-1130 | Retroreflective Thermoplastic White Traffic lines | 2027-03-29 → 2027-05-24 (+56d) | 2027-04-13 → 2027-06-08 (+56d) |  | 6d → -81d | SDR-2-CON-RW-ZA-1120 SS+10d, SDR-2-PRO-ST-C-1040, SDR-2-PRO-MAS-C-1030, SDR-2-CON-RW-ZA-1050 SS → SDR-2-CON-RW-ZA-1120, SDR-2-PRO-ST-C-1040, SDR-2-PRO-MAS-C-1030, SDR-2-CON-RW-ZA-1050 SS | resources SIC- Cost; Un-Skilled Labor [10.06 h]; Supervisor [10.06 h]; Skilled Labor [10.06 h] → SIC- Cost [12688.5]; Un-Skilled Labor [10.06 h]; Supervisor [10.06 h]; Skilled Labor [10.06 h] |
| SDR-2-CON-RW-ZA-1140 | Retroreflective Thermoplastic Yellow, Traffic lines | 2027-04-14 → 2027-06-09 (+56d) | 2027-04-29 → 2027-06-24 (+56d) |  | 6d → -81d |  |  |
| 7 | **Traffic Signage** | 2027-05-01 → 2027-06-26 (+56d) | 2027-05-29 → 2027-07-18 (+50d) |  |  |  |  |
| SDR-2-CON-RW-ZA-1150 | Single post-Traffic signs Installation | 2027-05-01 → 2027-06-26 (+56d) | 2027-05-29 → 2027-07-18 (+50d) |  | 6d → -81d |  | resources SIC- Cost [5283.72]; Un-Skilled Labor [19.11 h]; Supervisor [19.11 h]; Skilled Labor [19.11 h] → SIC- Cost [5283.73]; Un-Skilled Labor [19.11 h]; Supervisor [19.11 h]; Skilled Labor [19.11 h] |
| 8 | **ROAD WORKS IN ( PH2-COL-MC20 )** |  | 2027-05-30 → 2027-04-17 (-43d) |  |  |  |  |
| SDR-2-CON-RW-ZA-1160 | Roadway Excavation and cuttings |  |  |  |  |  | resources SIC- Cost; Excavator [150 h]; Excavator Operator [143.3 h]; Dumper Operator [143.3 h]; Dumper Truck [650 h]; Grader [150 h]; Grader Operator [143.3 h]; Loader [150 h]; Loader Operator [143.3 h]; Un-Skilled Labor [143.3 h]; Supervisor [143.3 h]; Skilled Labor [143.3 h] → SIC- Cost [23081.5]; Excavator [150 h]; Excavator Operator [143.3 h]; Dumper Operator [143.3 h]; Dumper Truck [650 h]; Grader [150 h]; Grader Operator [143.3 h]; Loader [150 h]; Loader Operator [143.3 h]; Un-Skilled Labor [143.3 h]; Supervisor [143.3 h]; Skilled Labor [143.3 h] |
| SDR-2-CON-RW-ZA-2910 | Embankments to the Road Layer 1 |  |  |  |  |  | resources SIC- Cost; Compactor [100 h]; Compactor Operator [25.14 h]; Excavator [5 h]; Excavator Operator [25.14 h]; Dumper Operator [203.01 h]; Dumper Truck [212.5 h]; Grader [246.19 h]; Grader Operator [203.01 h]; Loader [100 h]; Loader Operator [72 h]; Un-Skilled Labor [54.5 h]; Supervisor [23.6 h]; Skilled Labor [54.5 h]; Water Tanker [163.12 h] → SIC- Cost [98999.8]; Compactor [100 h]; Compactor Operator [25.14 h]; Excavator [5 h]; Excavator Operator [25.14 h]; Dumper Operator [203.01 h]; Dumper Truck [212.5 h]; Grader [246.19 h]; Grader Operator [203.01 h]; Loader [100 h]; Loader Operator [72 h]; Un-Skilled Labor [54.5 h]; Supervisor [23.6 h]; Skilled Labor [54.5 h]; Water Tanker [163.12 h] |
| SDR-2-CON-RW-ZA-2920 | Embankments to the Road Layer 2 |  |  |  |  |  | resources SIC- Cost; Compactor [365.71 h]; Compactor Operator [25.14 h]; Excavator [5 h]; Excavator Operator [25.14 h]; Dumper Operator [203.01 h]; Dumper Truck [212.5 h]; Grader [120 h]; Grader Operator [203.01 h]; Loader [80 h]; Loader Operator [82.08 h]; Un-Skilled Labor [120.24 h]; Supervisor [45.57 h]; Skilled Labor [45.57 h]; Water Tanker [200.48 h] → SIC- Cost [113142]; Compactor [365.71 h]; Compactor Operator [25.14 h]; Excavator [5 h]; Excavator Operator [25.14 h]; Dumper Operator [203.01 h]; Dumper Truck [212.5 h]; Grader [120 h]; Grader Operator [203.01 h]; Loader [80 h]; Loader Operator [82.08 h]; Un-Skilled Labor [120.24 h]; Supervisor [45.57 h]; Skilled Labor [45.57 h]; Water Tanker [200.48 h] |
| SDR-2-CON-RW-ZA-2930 | Embankments to the Road Layer 3 |  |  |  |  |  | resources SIC- Cost; Compactor [359.52 h]; Compactor Operator [25.14 h]; Excavator [5 h]; Excavator Operator [25.14 h]; Dumper Operator [203.01 h]; Dumper Truck [212.5 h]; Grader [120 h]; Grader Operator [203.01 h]; Loader [80 h]; Loader Operator [203.01 h]; Un-Skilled Labor [115.59 h]; Supervisor [38.53 h]; Skilled Labor [115.59 h]; Water Tanker [163.12 h] → SIC- Cost [410138]; Compactor [359.52 h]; Compactor Operator [25.14 h]; Excavator [5 h]; Excavator Operator [25.14 h]; Dumper Operator [203.01 h]; Dumper Truck [212.5 h]; Grader [120 h]; Grader Operator [203.01 h]; Loader [80 h]; Loader Operator [203.01 h]; Un-Skilled Labor [115.59 h]; Supervisor [38.53 h]; Skilled Labor [115.59 h]; Water Tanker [163.12 h] |
| SDR-2-CON-RW-ZA-1170 | Embankments to the Road Layer 4 |  |  |  |  |  | resources SIC- Cost; Compactor [100 h]; Compactor Operator [25.14 h]; Excavator [5 h]; Excavator Operator [25.14 h]; Dumper Operator [203.01 h]; Dumper Truck [212.5 h]; Grader [96.43 h]; Grader Operator [93.43 h]; Loader [80 h]; Loader Operator [77.06 h]; Un-Skilled Labor [115.59 h]; Supervisor [38.53 h]; Skilled Labor [115.59 h]; Water Tanker [163.12 h] → SIC- Cost [791991]; Compactor [100 h]; Compactor Operator [25.14 h]; Excavator [5 h]; Excavator Operator [25.14 h]; Dumper Operator [203.01 h]; Dumper Truck [212.5 h]; Grader [96.43 h]; Grader Operator [93.43 h]; Loader [80 h]; Loader Operator [77.06 h]; Un-Skilled Labor [115.59 h]; Supervisor [38.53 h]; Skilled Labor [115.59 h]; Water Tanker [163.12 h] |
| SDR-2-CON-RW-ZA-1180 | Subgrade layer works |  |  |  |  | SDR-2-CON-RW-ZA-1170 → SDR-2-CON-RW-ZA-1170 FS+5d | resources SIC- Cost; Compactor [414.29 h]; Excavator [6 h]; Excavator Operator [5.78 h]; Dumper Operator [81.48 h]; Dumper Truck [550 h]; Grader [160 h]; Grader Operator [57.79 h]; Loader [20 h]; Loader Operator [81.48 h]; Un-Skilled Labor [38.53 h]; Supervisor [9.63 h]; Skilled Labor [38.53 h]; Water Tanker [60 h]; Water Tanker Operator [57.79 h] → SIC- Cost [428831]; Compactor [414.29 h]; Excavator [6 h]; Excavator Operator [5.78 h]; Dumper Operator [81.48 h]; Dumper Truck [550 h]; Grader [160 h]; Grader Operator [57.79 h]; Loader [20 h]; Loader Operator [81.48 h]; Un-Skilled Labor [38.53 h]; Supervisor [9.63 h]; Skilled Labor [38.53 h]; Water Tanker [60 h]; Water Tanker Operator [57.79 h] |
| SDR-2-CON-RW-ZA-2940 | Embankments to the Plot 1 Layer |  |  |  |  |  | resources SIC- Cost; Excavator [5.33 h]; Excavator Operator [27.16 h]; Dumper Operator [27.16 h]; Dumper Truck [403.72 h]; Grader [60.22 h]; Grader Operator [27.16 h]; Loader [20.22 h]; Loader Operator [27.16 h]; Un-Skilled Labor [27.16 h]; Supervisor [27.16 h]; Skilled Labor [27.16 h]; Water Tanker [40.79 h] → SIC- Cost [176936]; Excavator [5.33 h]; Excavator Operator [27.16 h]; Dumper Operator [27.16 h]; Dumper Truck [403.72 h]; Grader [60.22 h]; Grader Operator [27.16 h]; Loader [20.22 h]; Loader Operator [27.16 h]; Un-Skilled Labor [27.16 h]; Supervisor [27.16 h]; Skilled Labor [27.16 h]; Water Tanker [40.79 h] |
| SDR-2-CON-RW-ZA-2950 | Embankments to the Plot 2 Layer |  |  |  |  |  | resources SIC- Cost; Excavator [5.33 h]; Excavator Operator [27.16 h]; Dumper Operator [27.16 h]; Dumper Truck [67.14 h]; Grader [68.48 h]; Grader Operator [27.16 h]; Loader [48.48 h]; Loader Operator [27.16 h]; Un-Skilled Labor [27.16 h]; Supervisor [27.16 h]; Skilled Labor [27.16 h]; Water Tanker [148.75 h] → SIC- Cost [176936]; Excavator [5.33 h]; Excavator Operator [27.16 h]; Dumper Operator [27.16 h]; Dumper Truck [67.14 h]; Grader [68.48 h]; Grader Operator [27.16 h]; Loader [48.48 h]; Loader Operator [27.16 h]; Un-Skilled Labor [27.16 h]; Supervisor [27.16 h]; Skilled Labor [27.16 h]; Water Tanker [148.75 h] |

| ID | Task | Start | Finish | Complete | Total float | Predecessors | Other |
| --- | --- | --- | --- | --- | --- | --- | --- |
| SDR-2-CON-RW-ZA-1200 | Embankments to the Plot 3 Layer |  |  |  |  |  | resources SIC- Cost; Excavator [5.33 h]; Excavator Operator [27.16 h]; Dumper Operator [27.16 h]; Dumper Truck [357.81 h]; Grader [120 h]; Grader Operator [27.16 h]; Loader [357.66 h]; Loader Operator [27.16 h]; Un-Skilled Labor [27.16 h]; Supervisor [27.16 h]; Skilled Labor [27.16 h]; Water Tanker [148.75 h] → SIC- Cost [172982]; Excavator [5.33 h]; Excavator Operator [27.16 h]; Dumper Operator [27.16 h]; Dumper Truck [357.81 h]; Grader [120 h]; Grader Operator [27.16 h]; Loader [357.66 h]; Loader Operator [27.16 h]; Un-Skilled Labor [27.16 h]; Supervisor [27.16 h]; Skilled Labor [27.16 h]; Water Tanker [148.75 h] |
| SDR-2-CON-RW-ZA-1190 | Plot Excavation for cuttings (all types of soil) |  |  |  |  | SDR-2-CON-RW-ZA-1160, SDR-2-CON-RW-ZA-1180 SS → SDR-2-CON-RW-ZA-1160, SDR-2-CON-RW-ZA-1180 FS+4d | resources SIC- Cost; Excavator [13 h]; Excavator Operator [95.54 h]; Dumper Operator [95.54 h]; Dumper Truck [450 h]; Grader [160 h]; Grader Operator [57.79 h]; Loader [118.12 h]; Loader Operator [19.26 h]; Un-Skilled Labor [38.53 h]; Supervisor [9.63 h]; Skilled Labor [38.53 h] → SIC- Cost [231344]; Excavator [13 h]; Excavator Operator [95.54 h]; Dumper Operator [95.54 h]; Dumper Truck [450 h]; Grader [160 h]; Grader Operator [57.79 h]; Loader [118.12 h]; Loader Operator [19.26 h]; Un-Skilled Labor [38.53 h]; Supervisor [9.63 h]; Skilled Labor [38.53 h] |
| SDR-2-CON-RW-ZA-1210 | Aggregate base course layer |  |  |  |  |  | resources SIC- Cost [20]; Compactor [160 h]; Dumper Operator [81.48 h]; Dumper Truck [250 h]; Grader [130 h]; Grader Operator [81.48 h]; Loader [41.75 h]; Loader Operator [81.48 h]; Un-Skilled Labor [81.48 h]; Supervisor [81.48 h]; Skilled Labor [81.48 h]; Water Tanker [160 h]; Water Tanker Operator [81.48 h] → SIC- Cost [120756]; Compactor [160 h]; Dumper Operator [81.48 h]; Dumper Truck [250 h]; Grader [130 h]; Grader Operator [81.48 h]; Loader [41.75 h]; Loader Operator [81.48 h]; Un-Skilled Labor [81.48 h]; Supervisor [81.48 h]; Skilled Labor [81.48 h]; Water Tanker [160 h]; Water Tanker Operator [81.48 h] |
| SDR-2-CON-RW-ZA-1220 | Milling of wearing course |  |  |  |  |  | resources SIC- Cost; Un-Skilled Labor [57.32 h]; Supervisor [57.32 h]; Skilled Labor [57.32 h]; Water Tanker [120 h]; Water Tanker Operator [57.32 h]; Road Milling Machine [100 h]; Road Milling Machine Operator [60 h]; Sweeper Machine [60 h]; Sweeper Machine Operator [57.32 h] → SIC- Cost [29076.6]; Un-Skilled Labor [57.32 h]; Supervisor [57.32 h]; Skilled Labor [57.32 h]; Water Tanker [120 h]; Water Tanker Operator [57.32 h]; Road Milling Machine [100 h]; Road Milling Machine Operator [60 h]; Sweeper Machine [60 h]; Sweeper Machine Operator [57.32 h] |
| 3 | **Asphalt Works** |  | 2026-12-21 → 2027-01-10 (+20d) |  |  |  |  |
| SDR-2-CON-RW-ZA-1230 | Asphalt works 1st Layer with MC-01 |  |  |  |  |  | resources SIC- Cost; Compactor [252.27 h]; Dumper Operator [57.28 h]; Dumper Truck [227.27 h]; Supervisor [57.32 h]; Sweeper Machine [140 h]; Sweeper Machine Operator [57.32 h]; Pneumatic Tire Roller [305.25 h]; Pneumatic Roller Operator [57.32 h]; Asphalt Paver [119.52 h]; Asphalt Paver Operator [57.32 h] → SIC- Cost [321276]; Compactor [252.27 h]; Dumper Operator [57.28 h]; Dumper Truck [227.27 h]; Supervisor [57.32 h]; Sweeper Machine [140 h]; Sweeper Machine Operator [57.32 h]; Pneumatic Tire Roller [305.25 h]; Pneumatic Roller Operator [57.32 h]; Asphalt Paver [119.52 h]; Asphalt Paver Operator [57.32 h] |
| SDR-2-CON-RW-ZA-1240 | Asphalt works 2nd layer with RC-01 | 2026-11-09 → 2026-11-29 (+20d) | 2026-11-29 → 2026-12-19 (+20d) |  | 49d → -7d |  | resources SIC- Cost; Compactor [60 h]; Dumper Operator [57.32 h]; Dumper Truck [60 h]; Supervisor [57.32 h]; Sweeper Machine [40 h]; Sweeper Machine Operator [57.32 h]; Pneumatic Tire Roller [40 h]; Pneumatic Roller Operator [57.32 h]; Asphalt Paver; Asphalt Paver Operator [57.32 h] → SIC- Cost [160638]; Compactor [60 h]; Dumper Operator [57.32 h]; Dumper Truck [60 h]; Supervisor [57.32 h]; Sweeper Machine [40 h]; Sweeper Machine Operator [57.32 h]; Pneumatic Tire Roller [40 h]; Pneumatic Roller Operator [57.32 h]; Asphalt Paver; Asphalt Paver Operator [57.32 h] |
| SDR-2-CON-RW-ZA-2840 | Asphalt Works 3 rd Layer with RC-02 | 2026-11-30 → 2026-12-20 (+20d) | 2026-12-21 → 2027-01-10 (+20d) |  | 49d → -7d |  | resources SIC- Cost; Compactor [40 h]; Dum Truck Operator [40.23 h]; Dumper Truck [40 h]; Supervisor [20.11 h]; Sweeper Machine [60 h]; Sweeper Machine Operator [30.17 h]; Pneumatic Tire Roller [97 h]; Pneumatic Roller Operator [40.23 h]; Asphalt Paver [23 h]; Asphalt Paver Operator [23.13 h] → SIC- Cost [321276]; Compactor [40 h]; Dum Truck Operator [40.23 h]; Dumper Truck [40 h]; Supervisor [20.11 h]; Sweeper Machine [60 h]; Sweeper Machine Operator [30.17 h]; Pneumatic Tire Roller [97 h]; Pneumatic Roller Operator [40.23 h]; Asphalt Paver [23 h]; Asphalt Paver Operator [23.13 h] |
| 4 | **Kerbstone Installation** | 2027-01-27 → 2027-01-11 (-16d) | 2027-03-18 → 2027-03-15 (-3d) |  |  |  |  |
| SDR-2-CON-RW-ZA-1250 | Kerbstone Installation "all Types" Part 2 | 2027-02-17 → 2027-01-11 (-37d) | 2027-03-18 → 2027-02-03 (-43d) |  | 0d → -7d | SDR-2-CON-RW-ZA-2840, SDR-2-CON-RW-ZA-3410 → SDR-2-CON-RW-ZA-2840 | resources SIC- Cost; Un-Skilled Labor [10.06 h]; Supervisor [10.06 h]; Skilled Labor [10.06 h] → SIC- Cost [254069]; Un-Skilled Labor [10.06 h]; Supervisor [10.06 h]; Skilled Labor [10.06 h] |
| SDR-2-CON-RW-ZA-3410 | Kerbstone Installation "all Types" Part 1 | 2027-01-27 → 2027-02-17 (+21d) | 2027-02-16 → 2027-03-15 (+27d) |  | 0d → -72d |  | resources SIC- Cost; Un-Skilled Labor [10.06 h]; Supervisor [10.06 h]; Skilled Labor [10.06 h] → SIC- Cost [32835.8]; Un-Skilled Labor [10.06 h]; Supervisor [10.06 h]; Skilled Labor [10.06 h] |
| 5 | **Interlock Installation** | 2027-03-20 → 2027-02-04 (-44d) | 2027-04-12 → 2027-03-01 (-42d) |  |  |  |  |
| SDR-2-CON-RW-ZA-1260 | Interlock Installation | 2027-03-20 → 2027-02-04 (-44d) | 2027-04-12 → 2027-03-01 (-42d) |  | 0d → -7d |  | resources SIC- Cost; Un-Skilled Labor [40.23 h]; Supervisor [40.23 h]; Skilled Labor [40.23 h] → SIC- Cost [149309]; Un-Skilled Labor [40.23 h]; Supervisor [40.23 h]; Skilled Labor [40.23 h] |
| 6 | **Road Marking** | 2027-04-13 → 2027-03-02 (-42d) | 2027-05-03 → 2027-03-27 (-37d) |  |  |  |  |
| SDR-2-CON-RW-ZA-1270 | Retroreflective Thermoplastic White Traffic lines | 2027-04-13 → 2027-03-02 (-42d) | 2027-04-25 → 2027-03-18 (-38d) |  | 0d → -7d |  | resources SIC- Cost; Un-Skilled Labor [10.06 h]; Supervisor [10.06 h]; Skilled Labor [10.06 h] → SIC- Cost [12688.5]; Un-Skilled Labor [10.06 h]; Supervisor [10.06 h]; Skilled Labor [10.06 h] |
| SDR-2-CON-RW-ZA-1280 | Retroreflective Thermoplastic Yellow, Traffic lines | 2027-04-26 → 2027-03-20 (-37d) | 2027-05-03 → 2027-03-27 (-37d) |  | 0d → -7d |  |  |
| 7 | **Traffic Signage** | 2027-05-04 → 2027-03-28 (-37d) | 2027-05-30 → 2027-04-17 (-43d) |  |  |  |  |
| SDR-2-CON-RW-ZA-1290 | Single post-Traffic signs Installation | 2027-05-04 → 2027-03-28 (-37d) | 2027-05-30 → 2027-04-17 (-43d) |  | 0d → -7d |  | resources SIC- Cost [5283.72]; Un-Skilled Labor [19.11 h]; Supervisor [19.11 h]; Skilled Labor [19.11 h] → SIC- Cost [5283.73]; Un-Skilled Labor [19.11 h]; Supervisor [19.11 h]; Skilled Labor [19.11 h] |
| 13 | **ROAD WORKS IN ( PH2-A-MCI0 )** |  | 2027-05-13 → 2027-09-14 (+124d) |  |  |  |  |
| SDR-2-CON-RW-ZA-1300 | Roadway Excavation and cuttings |  |  |  |  |  | resources SIC- Cost [1563524]; Excavator [20 h]; Excavator Operator [143.3 h]; Dumper Operator [143.3 h]; Dumper Truck [680 h]; Grader [500 h]; Grader Operator [143.3 h]; Loader [162 h]; Loader Operator [143.3 h]; Un-Skilled Labor [143.3 h]; Supervisor [143.3 h]; Skilled Labor [143.3 h] → SIC- Cost [23081.5]; Excavator [20 h]; Excavator Operator [143.3 h]; Dumper Operator [143.3 h]; Dumper Truck [680 h]; Grader [500 h]; Grader Operator [143.3 h]; Loader [162 h]; Loader Operator [143.3 h]; Un-Skilled Labor [143.3 h]; Supervisor [143.3 h]; Skilled Labor [143.3 h] |
| SDR-2-CON-RW-ZA-2960 | Embankments to the Road 1 Layer |  |  |  |  |  | resources SIC- Cost; Compactor [100 h]; Excavator [11.18 h]; Excavator Operator [92.16 h]; Dumper Operator [203.01 h]; Dumper Truck [208.25 h]; Grader [100 h]; Grader Operator [203.01 h]; Loader [42.02 h]; Loader Operator [203.02 h]; Un-Skilled Labor [15.83 h]; Supervisor [12.14 h]; Skilled Labor [15.83 h]; Water Tanker [138.75 h] → SIC- Cost [98998.9]; Compactor [100 h]; Excavator [11.18 h]; Excavator Operator [92.16 h]; Dumper Operator [203.01 h]; Dumper Truck [208.25 h]; Grader [100 h]; Grader Operator [203.01 h]; Loader [42.02 h]; Loader Operator [203.02 h]; Un-Skilled Labor [15.83 h]; Supervisor [12.14 h]; Skilled Labor [15.83 h]; Water Tanker [138.75 h] |
| SDR-2-CON-RW-ZA-2970 | Embankments to the Road 2 Layer |  |  |  |  |  | resources SIC- Cost; Compactor [100 h]; Excavator [11.18 h]; Excavator Operator [61.93 h]; Dumper Operator [203.01 h]; Dumper Truck [208.25 h]; Grader [100 h]; Grader Operator [203.01 h]; Loader [52.14 h]; Loader Operator [72 h]; Un-Skilled Labor [158.91 h]; Supervisor [61.94 h]; Skilled Labor [55.45 h]; Water Tanker [138.75 h] → SIC- Cost [113142]; Compactor [100 h]; Excavator [11.18 h]; Excavator Operator [61.93 h]; Dumper Operator [203.01 h]; Dumper Truck [208.25 h]; Grader [100 h]; Grader Operator [203.01 h]; Loader [52.14 h]; Loader Operator [72 h]; Un-Skilled Labor [158.91 h]; Supervisor [61.94 h]; Skilled Labor [55.45 h]; Water Tanker [138.75 h] |
| SDR-2-CON-RW-ZA-2980 | Embankments to the Road 3 Layer |  |  |  |  |  | resources SIC- Cost; Compactor [610 h]; Excavator [11.18 h]; Excavator Operator [203.01 h]; Dumper Operator [203.01 h]; Dumper Truck [208.25 h]; Grader [100 h]; Grader Operator [203.01 h]; Loader [80 h]; Loader Operator [77.06 h]; Un-Skilled Labor [115.59 h]; Supervisor [38.53 h]; Skilled Labor [115.59 h]; Water Tanker [138.75 h] → SIC- Cost [410138]; Compactor [610 h]; Excavator [11.18 h]; Excavator Operator [203.01 h]; Dumper Operator [203.01 h]; Dumper Truck [208.25 h]; Grader [100 h]; Grader Operator [203.01 h]; Loader [80 h]; Loader Operator [77.06 h]; Un-Skilled Labor [115.59 h]; Supervisor [38.53 h]; Skilled Labor [115.59 h]; Water Tanker [138.75 h] |
| SDR-2-CON-RW-ZA-1310 | Embankments to the Road 4 Layer |  |  |  |  |  | resources SIC- Cost; Compactor [100 h]; Excavator [11.18 h]; Excavator Operator [137.14 h]; Dumper Operator [203.01 h]; Dumper Truck [360.71 h]; Grader [100 h]; Grader Operator [203.01 h]; Loader [60 h]; Loader Operator [203.01 h]; Un-Skilled Labor [203.02 h]; Supervisor [203.02 h]; Skilled Labor [203.01 h]; Water Tanker [138.75 h] → SIC- Cost [791991]; Compactor [100 h]; Excavator [11.18 h]; Excavator Operator [137.14 h]; Dumper Operator [203.01 h]; Dumper Truck [360.71 h]; Grader [100 h]; Grader Operator [203.01 h]; Loader [60 h]; Loader Operator [203.01 h]; Un-Skilled Labor [203.02 h]; Supervisor [203.02 h]; Skilled Labor [203.01 h]; Water Tanker [138.75 h] |
| 11 | **Subgrade** |  | 2026-12-01 → 2026-11-01 (-30d) |  |  |  |  |
| SDR-2-CON-RW-ZA-1320 | Subgrade layer works |  | 2026-12-01 → 2026-11-01 A (-30d) | 50% → 100% | 5d → none |  | resources SIC- Cost; Excavator [6 h]; Excavator Operator [81.48 h]; Dumper Operator [81.48 h]; Dumper Truck [224 h]; Grader [125.8 h]; Grader Operator [57.79 h]; Loader [20 h]; Loader Operator [81.48 h]; Un-Skilled Labor [38.53 h]; Supervisor [9.63 h]; Skilled Labor [38.53 h]; Water Tanker [30 h]; Water Tanker Operator [28.9 h] → SIC- Cost [578084]; Excavator [6 h]; Excavator Operator [81.48 h]; Dumper Operator [81.48 h]; Dumper Truck [224 h]; Grader [125.8 h]; Grader Operator [57.79 h]; Loader [20 h]; Loader Operator [81.48 h]; Un-Skilled Labor [38.53 h]; Supervisor [9.63 h]; Skilled Labor [38.53 h]; Water Tanker [30 h]; Water Tanker Operator [28.9 h] |
| SDR-2-CON-RW-ZA-2990 | Embankments to the Plot 1 Layer |  |  |  |  | SDR-2-CON-RW-ZA-1310, SDR-2-CON-RW-ZA-1330 → SDR-2-CON-RW-ZA-1310, SDR-2-CON-RW-ZA-1330, SDR-2-CON-RW-ZA-3420 | resources SIC- Cost; Compactor [150 h]; Excavator [10 h]; Excavator Operator [40.74 h]; Dumper Operator [40.74 h]; Dumper Truck [58.89 h]; Grader [120 h]; Grader Operator [40.74 h]; Loader [29.74 h]; Loader Operator [40.74 h]; Un-Skilled Labor [40.74 h]; Supervisor [40.74 h]; Skilled Labor [40.74 h]; Water Tanker [64.64 h] → SIC- Cost [188800]; Compactor [150 h]; Excavator [10 h]; Excavator Operator [40.74 h]; Dumper Operator [40.74 h]; Dumper Truck [58.89 h]; Grader [120 h]; Grader Operator [40.74 h]; Loader [29.74 h]; Loader Operator [40.74 h]; Un-Skilled Labor [40.74 h]; Supervisor [40.74 h]; Skilled Labor [40.74 h]; Water Tanker [64.64 h] |
| SDR-2-CON-RW-ZA-1340 | Embankments to the Plot 2 Layer |  |  |  |  |  | resources SIC- Cost; Compactor [60 h]; Excavator [10 h]; Excavator Operator [40.74 h]; Dumper Operator [40.74 h]; Dumper Truck [300.72 h]; Grader [321.43 h]; Grader Operator [40.74 h]; Loader [100 h]; Loader Operator [40.74 h]; Un-Skilled Labor [40.74 h]; Supervisor [40.74 h]; Skilled Labor [40.74 h]; Water Tanker [658.62 h] → SIC- Cost [188800]; Compactor [60 h]; Excavator [10 h]; Excavator Operator [40.74 h]; Dumper Operator [40.74 h]; Dumper Truck [300.72 h]; Grader [321.43 h]; Grader Operator [40.74 h]; Loader [100 h]; Loader Operator [40.74 h]; Un-Skilled Labor [40.74 h]; Supervisor [40.74 h]; Skilled Labor [40.74 h]; Water Tanker [658.62 h] |
| SDR-2-CON-RW-ZA-1330 | Plot Excavation for cuttings (all types of soil) |  |  |  |  | SDR-2-CON-RW-ZA-1300 → SDR-2-CON-RW-ZA-1300, SDR-2-CON-RW-ZA-1320 | resources SIC- Cost [82090]; Excavator [12.6 h]; Excavator Operator [95.54 h]; Dumper Operator [95.54 h]; Dumper Truck [60 h]; Grader [60 h]; Grader Operator [81.48 h]; Loader [40 h]; Loader Operator [95.54 h]; Un-Skilled Labor [81.48 h]; Supervisor [81.48 h]; Skilled Labor [81.48 h] → SIC- Cost [231344]; Excavator [12.6 h]; Excavator Operator [95.54 h]; Dumper Operator [95.54 h]; Dumper Truck [60 h]; Grader [60 h]; Grader Operator [81.48 h]; Loader [40 h]; Loader Operator [95.54 h]; Un-Skilled Labor [81.48 h]; Supervisor [81.48 h]; Skilled Labor [81.48 h] |
| 2 | **Base Course** | 2026-12-02 → 2026-10-05 (-58d) | 2026-12-24 → 2026-11-01 (-53d) |  |  |  |  |
| SDR-2-CON-RW-ZA-1350 | Aggregate base course layer | 2026-12-02 → 2026-10-05 A (-58d) | 2026-12-24 → 2026-11-01 A (-53d) | 0% → 100% | 5d → none |  |  |
| 8 | **Demolition Work** | 2026-12-26 → 2026-11-14 (-42d) | 2026-12-30 → 2026-12-01 (-29d) |  |  |  |  |
| SDR-2-CON-RW-ZA-1360 | Milling of wearing course | 2026-12-26 → 2026-11-14 A (-42d) | 2026-12-30 → 2026-12-01 (-29d) | 0% → 10% | 5d → -11d |  | resources SIC- Cost; Un-Skilled Labor [57.32 h]; Supervisor [57.32 h]; Skilled Labor [57.32 h]; Water Tanker [60 h]; Water Tanker Operator [57.32 h]; Road Milling Machine [80 h]; Road Milling Machine Operator [30 h]; Sweeper Machine [30 h]; Sweeper Machine Operator [57.32 h] → SIC- Cost [29076.6]; Un-Skilled Labor [57.32 h]; Supervisor [57.32 h]; Skilled Labor [57.32 h]; Water Tanker [60 h]; Water Tanker Operator [57.32 h]; Road Milling Machine [80 h]; Road Milling Machine Operator [30 h]; Sweeper Machine [30 h]; Sweeper Machine Operator [57.32 h] |
| 3 | **Asphalt Works** | 2026-12-31 → 2026-12-05 (-26d) | 2027-01-30 → 2027-01-03 (-27d) |  |  |  |  |
| SDR-2-CON-RW-ZA-1370 | Asphalt works 1st Layer with MC-01 | 2026-12-31 → 2026-12-05 (-26d) | 2027-01-05 → 2026-12-09 (-27d) |  | 5d → -13d | SDR-2-CON-RW-ZA-1350, SDR-2-CON-RW-ZA-1360 → SDR-2-CON-RW-ZA-1350, SDR-2-CON-RW-ZA-1360, SDR-2-PRO-ST-C-1020 |  |
| SDR-2-CON-RW-ZA-1380 | Asphalt works 2nd layer with RC-02 | 2027-01-06 → 2026-12-10 (-27d) | 2027-01-30 → 2027-01-03 (-27d) |  | 5d → -13d |  | resources SIC- Cost [20]; Dumper Operator [85.98 h]; Dumper Truck [90 h]; Supervisor [20.11 h]; Sweeper Machine [90 h]; Sweeper Machine Operator [45.26 h]; Pneumatic Tire Roller [57.75 h]; Pneumatic Roller Operator [45.26 h]; Asphalt Paver [23.88 h]; Asphalt Paver Operator [45.26 h] → SIC- Cost [299797]; Dumper Operator [85.98 h]; Dumper Truck [90 h]; Supervisor [20.11 h]; Sweeper Machine [90 h]; Sweeper Machine Operator [45.26 h]; Pneumatic Tire Roller [57.75 h]; Pneumatic Roller Operator [45.26 h]; Asphalt Paver [23.88 h]; Asphalt Paver Operator [45.26 h] |
| 4 | **Kerbstone Installation** | 2026-11-09 → 2026-11-29 (+20d) | 2027-02-16 → 2027-01-27 (-20d) |  |  |  |  |
| SDR-2-CON-RW-ZA-3420 | Kerbstone Installation "all Types" Part 1 | 2026-11-09 → 2026-11-29 (+20d) | 2026-11-29 → 2026-12-19 (+20d) |  | 13d → -39d | SDR-2-CON-RW-ZA-1320 SS+6d → SDR-2-CON-RW-ZA-1320 | resources SIC- Cost; Un-Skilled Labor [20.11 h]; Supervisor [20.11 h]; Skilled Labor [60.34 h] → SIC- Cost [32835.8]; Un-Skilled Labor [20.11 h]; Supervisor [20.11 h]; Skilled Labor [60.34 h] |
| SDR-2-CON-RW-ZA-1390 | Kerbstone Installation "all Types" Part 2 | 2027-01-24 → 2027-01-04 (-20d) | 2027-02-16 → 2027-01-27 (-20d) |  | 5d → -13d | SDR-2-CON-RW-ZA-1380 SS+15d → SDR-2-CON-RW-ZA-1380 | resources SIC- Cost; Un-Skilled Labor [20.11 h]; Supervisor [20.11 h]; Skilled Labor [60.34 h] → SIC- Cost [254069]; Un-Skilled Labor [20.11 h]; Supervisor [20.11 h]; Skilled Labor [60.34 h] |
| 5 | **Interlock Installation** | 2027-02-17 → 2027-01-28 (-20d) | 2027-03-18 → 2027-02-21 (-25d) |  |  |  |  |
| SDR-2-CON-RW-ZA-1400 | Interlock Installation | 2027-02-17 → 2027-01-28 (-20d) | 2027-03-18 → 2027-02-21 (-25d) |  | 5d → -13d |  | resources SIC- Cost; Un-Skilled Labor [60.34 h]; Supervisor [40.23 h]; Skilled Labor [60.34 h] → SIC- Cost [149309]; Un-Skilled Labor [60.34 h]; Supervisor [40.23 h]; Skilled Labor [60.34 h] |
| 6 | **Road Marking** | 2027-03-20 → 2027-07-22 (+124d) | 2027-04-20 → 2027-08-22 (+124d) |  |  |  |  |
| SDR-2-CON-RW-ZA-1410 | Retroreflective Thermoplastic White Traffic lines | 2027-03-20 → 2027-07-22 (+124d) | 2027-04-04 → 2027-08-06 (+124d) |  | 5d → -132d | SDR-2-CON-RW-ZA-1400 → SDR-2-CON-RW-ZA-1400, SDR-2-CON-CC-ZG-1660 |  |
| SDR-2-CON-RW-ZA-1420 | Retroreflective Thermoplastic Yellow, Traffic lines | 2027-04-05 → 2027-08-07 (+124d) | 2027-04-20 → 2027-08-22 (+124d) |  | 5d → -132d |  |  |
| 7 | **Traffic Signage** | 2027-04-21 → 2027-08-23 (+124d) | 2027-05-13 → 2027-09-14 (+124d) |  |  |  |  |
| SDR-2-CON-RW-ZA-1430 | Single post-Traffic signs Installation | 2027-04-21 → 2027-08-23 (+124d) | 2027-05-13 → 2027-09-14 (+124d) |  | 5d → -132d |  | resources SIC- Cost [5283.72]; Un-Skilled Labor [19.11 h]; Supervisor [19.11 h]; Skilled Labor [19.11 h] → SIC- Cost [5283.73]; Un-Skilled Labor [19.11 h]; Supervisor [19.11 h]; Skilled Labor [19.11 h] |
| 2 | **ROAD WORKS IN ( PH2-A-MCA0 )** |  | 2027-05-10 → 2027-06-14 (+35d) |  |  |  |  |
| SDR-2-CON-RW-ZA-1440 | Roadway Excavation and cuttings |  |  |  |  |  | resources SIC- Cost [1563524]; Excavator [30 h]; Excavator Operator [143.3 h]; Dumper Operator [143.3 h]; Dumper Truck [310 h]; Grader [180 h]; Grader Operator [143.3 h]; Loader [433.8 h]; Loader Operator [143.3 h]; Un-Skilled Labor [128.98 h]; Supervisor [143.3 h]; Skilled Labor [128.98 h] → SIC- Cost [23081.5]; Excavator [30 h]; Excavator Operator [143.3 h]; Dumper Operator [143.3 h]; Dumper Truck [310 h]; Grader [180 h]; Grader Operator [143.3 h]; Loader [433.8 h]; Loader Operator [143.3 h]; Un-Skilled Labor [128.98 h]; Supervisor [143.3 h]; Skilled Labor [128.98 h] |
| SDR-2-CON-RW-ZA-3000 | Embankments to the Road 1 Layer |  |  |  |  |  | resources SIC- Cost; Compactor [100 h]; Excavator [8.68 h]; Excavator Operator [132.47 h]; Dumper Operator [203.01 h]; Dumper Truck [212.5 h]; Grader [100 h]; Grader Operator [203.01 h]; Loader [69.52 h]; Loader Operator [203.01 h]; Un-Skilled Labor [10.03 h]; Supervisor [10.03 h]; Skilled Labor [10.03 h]; Water Tanker [163.5 h] → SIC- Cost [109447]; Compactor [100 h]; Excavator [8.68 h]; Excavator Operator [132.47 h]; Dumper Operator [203.01 h]; Dumper Truck [212.5 h]; Grader [100 h]; Grader Operator [203.01 h]; Loader [69.52 h]; Loader Operator [203.01 h]; Un-Skilled Labor [10.03 h]; Supervisor [10.03 h]; Skilled Labor [10.03 h]; Water Tanker [163.5 h] |
| SDR-2-CON-RW-ZA-3010 | Embankments to the Road 2 Layer |  |  |  |  |  | resources SIC- Cost; Compactor [100 h]; Excavator [8.68 h]; Excavator Operator [82.09 h]; Dumper Operator [203.01 h]; Dumper Truck [212.5 h]; Grader [100 h]; Grader Operator [203.01 h]; Loader [74.29 h]; Loader Operator [72.24 h]; Un-Skilled Labor [116.81 h]; Supervisor [38.53 h]; Skilled Labor [79.89 h]; Water Tanker [163.5 h] → SIC- Cost [125082]; Compactor [100 h]; Excavator [8.68 h]; Excavator Operator [82.09 h]; Dumper Operator [203.01 h]; Dumper Truck [212.5 h]; Grader [100 h]; Grader Operator [203.01 h]; Loader [74.29 h]; Loader Operator [72.24 h]; Un-Skilled Labor [116.81 h]; Supervisor [38.53 h]; Skilled Labor [79.89 h]; Water Tanker [163.5 h] |
| SDR-2-CON-RW-ZA-3020 | Embankments to the Road 3 Layer |  |  |  |  |  | resources SIC- Cost; Compactor [100 h]; Excavator [8.68 h]; Excavator Operator [203.01 h]; Dumper Operator [203.01 h]; Dumper Truck [212.5 h]; Grader [100 h]; Grader Operator [203.01 h]; Loader [81.9 h]; Loader Operator [203.01 h]; Un-Skilled Labor [203.02 h]; Supervisor [203.02 h]; Skilled Labor [203.01 h]; Water Tanker [163.5 h] → SIC- Cost [453422]; Compactor [100 h]; Excavator [8.68 h]; Excavator Operator [203.01 h]; Dumper Operator [203.01 h]; Dumper Truck [212.5 h]; Grader [100 h]; Grader Operator [203.01 h]; Loader [81.9 h]; Loader Operator [203.01 h]; Un-Skilled Labor [203.02 h]; Supervisor [203.02 h]; Skilled Labor [203.01 h]; Water Tanker [163.5 h] |
| SDR-2-CON-RW-ZA-1450 | Embankments to the Road 4 Layer |  |  |  |  |  | resources SIC- Cost; Compactor [100 h]; Excavator [8.68 h]; Excavator Operator [203.01 h]; Dumper Operator [203.01 h]; Dumper Truck [212.5 h]; Grader [100 h]; Grader Operator [203.01 h]; Loader [100 h]; Loader Operator [203.01 h]; Un-Skilled Labor [203.01 h]; Supervisor [203.01 h]; Skilled Labor [203.01 h]; Water Tanker [163.5 h] → SIC- Cost [875574]; Compactor [100 h]; Excavator [8.68 h]; Excavator Operator [203.01 h]; Dumper Operator [203.01 h]; Dumper Truck [212.5 h]; Grader [100 h]; Grader Operator [203.01 h]; Loader [100 h]; Loader Operator [203.01 h]; Un-Skilled Labor [203.01 h]; Supervisor [203.01 h]; Skilled Labor [203.01 h]; Water Tanker [163.5 h] |
| 11 | **Subgrade** |  | 2026-11-12 → 2026-12-03 (+21d) |  |  |  |  |
| SDR-2-CON-RW-ZA-1460 | Subgrade layer works |  | 2026-11-12 → 2026-12-03 (+21d) | 75% → 80% | 12d → -39d |  | resources SIC- Cost; Compactor [150 h]; Excavator [6 h]; Excavator Operator [38.53 h]; Dumper Operator [60.68 h]; Dumper Truck [259 h]; Grader [160 h]; Grader Operator [57.79 h]; Loader [20 h]; Loader Operator [19.26 h]; Un-Skilled Labor [57.79 h]; Supervisor [9.63 h]; Skilled Labor [57.79 h]; Water Tanker [140 h]; Water Tanker Operator [38.53 h] → SIC- Cost [1025846]; Compactor [150 h]; Excavator [6 h]; Excavator Operator [38.53 h]; Dumper Operator [60.68 h]; Dumper Truck [259 h]; Grader [160 h]; Grader Operator [57.79 h]; Loader [20 h]; Loader Operator [19.26 h]; Un-Skilled Labor [57.79 h]; Supervisor [9.63 h]; Skilled Labor [57.79 h]; Water Tanker [140 h]; Water Tanker Operator [38.53 h] |
| 9 | **Earth Works Plot** |  | 2026-12-07 → 2026-12-26 (+19d) |  |  |  |  |
| SDR-2-CON-RW-ZA-3030 | Embankments to the Plot 1 Layer |  |  |  |  | SDR-2-CON-RW-ZA-1330 → SDR-2-CON-RW-ZA-1330, SDR-2-CON-RW-ZA-1470 | resources SIC- Cost; Compactor [81.43 h]; Excavator [14.7 h]; Excavator Operator [81.48 h]; Dumper Operator [81.48 h]; Dumper Truck [60 h]; Grader [60 h]; Grader Operator [81.48 h]; Loader [39.47 h]; Loader Operator [81.48 h]; Un-Skilled Labor [81.48 h]; Supervisor [81.48 h]; Skilled Labor [81.48 h]; Water Tanker [89.29 h] → SIC- Cost [39546.3]; Compactor [81.43 h]; Excavator [14.7 h]; Excavator Operator [81.48 h]; Dumper Operator [81.48 h]; Dumper Truck [60 h]; Grader [60 h]; Grader Operator [81.48 h]; Loader [39.47 h]; Loader Operator [81.48 h]; Un-Skilled Labor [81.48 h]; Supervisor [81.48 h]; Skilled Labor [81.48 h]; Water Tanker [89.29 h] |
| SDR-2-CON-RW-ZA-1470 | Plot Excavation for cuttings (all types of soil) |  | 2026-12-07 → 2026-11-01 A (-36d) | 70% → 100% | 18d → none |  |  |
| SDR-2-CON-RW-ZA-1480 | Embankments to the Plot 2 Layer | 2026-11-09 → 2026-11-13 A (+4d) | 2026-12-02 → 2026-12-26 (+24d) | 0% → 5% | 37d → 6d |  | resources SIC- Cost; Compactor [60 h]; Excavator [14.7 h]; Excavator Operator [81.48 h]; Dumper Operator [81.48 h]; Dumper Truck [301.84 h]; Grader [60 h]; Grader Operator [81.48 h]; Loader [100 h]; Loader Operator [81.48 h]; Un-Skilled Labor [81.48 h]; Supervisor [81.48 h]; Skilled Labor [81.48 h]; Water Tanker [648.2 h] → SIC- Cost [39546.3]; Compactor [60 h]; Excavator [14.7 h]; Excavator Operator [81.48 h]; Dumper Operator [81.48 h]; Dumper Truck [301.84 h]; Grader [60 h]; Grader Operator [81.48 h]; Loader [100 h]; Loader Operator [81.48 h]; Un-Skilled Labor [81.48 h]; Supervisor [81.48 h]; Skilled Labor [81.48 h]; Water Tanker [648.2 h] |
| 2 | **Base Course** |  | 2026-11-30 → 2026-12-19 (+19d) |  |  |  |  |
| SDR-2-CON-RW-ZA-1490 | Aggregate base course layer |  | 2026-11-30 → 2026-12-19 (+19d) | 30% → 40% | 12d → -39d |  | resources SIC- Cost [120756]; Compactor [140 h]; Dumper Operator [81.48 h]; Dumper Truck [60 h]; Grader [60 h]; Grader Operator [81.48 h]; Loader [60 h]; Loader Operator [81.48 h]; Un-Skilled Labor [81.48 h]; Supervisor [81.48 h]; Skilled Labor [81.48 h]; Water Tanker [121.43 h]; Water Tanker Operator [133.75 h] → SIC- Cost [120755]; Compactor [140 h]; Dumper Operator [81.48 h]; Dumper Truck [60 h]; Grader [60 h]; Grader Operator [81.48 h]; Loader [60 h]; Loader Operator [81.48 h]; Un-Skilled Labor [81.48 h]; Supervisor [81.48 h]; Skilled Labor [81.48 h]; Water Tanker [121.43 h]; Water Tanker Operator [133.75 h] |
| 8 | **Demolition Work** |  | 2026-12-05 → 2026-12-26 (+21d) |  |  |  |  |
| SDR-2-CON-RW-ZA-1500 | Milling of wearing course |  | 2026-12-05 → 2026-12-26 (+21d) |  | 12d → -39d |  | resources SIC- Cost [28300.2]; Un-Skilled Labor [57.32 h]; Supervisor [57.32 h]; Skilled Labor [57.32 h]; Water Tanker [20 h]; Water Tanker Operator [57.32 h]; Road Milling Machine [10 h]; Road Milling Machine Operator [60 h]; Sweeper Machine [290 h]; Sweeper Machine Operator [57.32 h] → SIC- Cost [29076.6]; Un-Skilled Labor [57.32 h]; Supervisor [57.32 h]; Skilled Labor [57.32 h]; Water Tanker [20 h]; Water Tanker Operator [57.32 h]; Road Milling Machine [10 h]; Road Milling Machine Operator [60 h]; Sweeper Machine [290 h]; Sweeper Machine Operator [57.32 h] |
| 3 | **Asphalt Works** |  | 2027-01-18 → 2027-02-01 (+14d) |  |  |  |  |
| SDR-2-CON-RW-ZA-1510 | Asphalt works 1st Layer with MC-01 |  | 2026-12-26 → 2027-01-09 (+14d) | 25% → 30% | 12d → -39d |  | resources SIC- Cost; Compactor [90 h]; Dumper Operator [85.98 h]; Dumper Truck [90 h]; Supervisor [85.98 h]; Sweeper Machine [307.11 h]; Sweeper Machine Operator [85.98 h]; Pneumatic Tire Roller [347.33 h]; Pneumatic Roller Operator [85.98 h]; Asphalt Paver [339.11 h]; Asphalt Paver Operator [85.98 h] → SIC- Cost [503392]; Compactor [90 h]; Dumper Operator [85.98 h]; Dumper Truck [90 h]; Supervisor [85.98 h]; Sweeper Machine [307.11 h]; Sweeper Machine Operator [85.98 h]; Pneumatic Tire Roller [347.33 h]; Pneumatic Roller Operator [85.98 h]; Asphalt Paver [339.11 h]; Asphalt Paver Operator [85.98 h] |
| SDR-2-CON-RW-ZA-1520 | Asphalt works 2nd layer with RC-02 | 2026-12-27 → 2027-01-10 (+14d) | 2027-01-18 → 2027-02-01 (+14d) |  | 12d → -39d |  |  |
| 4 | **Kerbstone Installation** | 2026-11-14 → 2026-12-05 (+21d) | 2027-02-11 → 2027-02-27 (+16d) |  |  |  |  |
| SDR-2-CON-RW-ZA-3440 | Kerbstone Installation "all Types" Part 1 | 2026-11-14 → 2026-12-05 (+21d) | 2026-12-07 → 2026-12-28 (+21d) |  | 48d → 28.3d |  | resources SIC- Cost; Un-Skilled Labor [40.23 h]; Supervisor [10.06 h]; Skilled Labor [40.23 h] → SIC- Cost [32835.8]; Un-Skilled Labor [40.23 h]; Supervisor [10.06 h]; Skilled Labor [40.23 h] |
| SDR-2-CON-RW-ZA-1530 | Kerbstone Installation "all Types" Part 2 | 2027-01-19 → 2027-02-02 (+14d) | 2027-02-11 → 2027-02-27 (+16d) |  | 12d → -39d | SDR-2-CON-RW-ZA-1520, SDR-2-CON-RW-ZA-3440 → SDR-2-CON-RW-ZA-1520 | resources SIC- Cost; Un-Skilled Labor [40.23 h]; Supervisor [10.06 h]; Skilled Labor [40.23 h] → SIC- Cost [254069]; Un-Skilled Labor [40.23 h]; Supervisor [10.06 h]; Skilled Labor [40.23 h] |
| 5 | **Interlock Installation** | 2027-02-13 → 2027-02-28 (+15d) | 2027-03-14 → 2027-03-28 (+14d) |  |  |  |  |
| SDR-2-CON-RW-ZA-1540 | Interlock Installation | 2027-02-13 → 2027-02-28 (+15d) | 2027-03-14 → 2027-03-28 (+14d) |  | 12d → -39d |  |  |

| ID | Task | Start | Finish | Complete | Total float | Predecessors | Other |
| --- | --- | --- | --- | --- | --- | --- | --- |
| 6 | **Road Marking** | 2027-03-15 → 2027-04-13 (+29d) | 2027-04-17 → 2027-05-22 (+35d) |  |  |  |  |
| SDR-2-CON-RW-ZA-1550 | Retroreflective Thermoplastic White Traffic lines | 2027-03-15 → 2027-04-13 (+29d) | 2027-03-30 → 2027-04-28 (+29d) |  | 12d → -52d |  |  |
| SDR-2-CON-RW-ZA-1560 | Retroreflective Thermoplastic Yellow, Traffic lines | 2027-03-31 → 2027-04-29 (+29d) | 2027-04-17 → 2027-05-22 (+35d) |  | 12d → -52d |  |  |
| 7 | **Traffic Signage** | 2027-04-18 → 2027-05-23 (+35d) | 2027-05-10 → 2027-06-14 (+35d) |  |  |  |  |
| SDR-2-CON-RW-ZA-1570 | Single post-Traffic signs Installation | 2027-04-18 → 2027-05-23 (+35d) | 2027-05-10 → 2027-06-14 (+35d) |  | 12d → -52d |  | resources SIC- Cost [5283.72]; Un-Skilled Labor [19.11 h]; Supervisor [19.11 h]; Skilled Labor [19.11 h] → SIC- Cost [5283.73]; Un-Skilled Labor [19.11 h]; Supervisor [19.11 h]; Skilled Labor [19.11 h] |
| 3 | **ROAD WORKS IN ( PH2-A-MCB0 )** |  | 2027-05-04 → 2027-06-03 (+30d) |  |  |  |  |
| SDR-2-CON-RW-ZA-1580 | Roadway Excavation and cuttings |  |  |  |  | SDR-2-CON-RW-ZA-1440 SS+4d → SDR-2-CON-RW-ZA-1440 SS+5d | resources SIC- Cost [1563524]; Excavator [20 h]; Excavator Operator [143.3 h]; Dumper Operator [143.3 h]; Dumper Truck [150 h]; Grader [220 h]; Grader Operator [143.3 h]; Loader [186 h]; Loader Operator [143.3 h]; Un-Skilled Labor [100.31 h]; Supervisor [100.31 h]; Skilled Labor [100.31 h] → SIC- Cost [23081.5]; Excavator [20 h]; Excavator Operator [143.3 h]; Dumper Operator [143.3 h]; Dumper Truck [150 h]; Grader [220 h]; Grader Operator [143.3 h]; Loader [186 h]; Loader Operator [143.3 h]; Un-Skilled Labor [100.31 h]; Supervisor [100.31 h]; Skilled Labor [100.31 h] |
| SDR-2-CON-RW-ZA-3040 | Embankments to the Road 1 Layer |  |  |  |  | SDR-2-CON-RW-ZA-1580 FS+2d → SDR-2-CON-RW-ZA-1580 FS+5d | resources SIC- Cost; Excavator [12.5 h]; Excavator Operator [142.55 h]; Dumper Operator [203.01 h]; Dumper Truck [199 h]; Grader [75 h]; Grader Operator [203.01 h]; Loader [42.02 h]; Loader Operator [152.63 h]; Un-Skilled Labor [52.57 h]; Supervisor [28.69 h]; Skilled Labor [32.11 h]; Water Tanker [183.67 h] → SIC- Cost [109447]; Excavator [12.5 h]; Excavator Operator [142.55 h]; Dumper Operator [203.01 h]; Dumper Truck [199 h]; Grader [75 h]; Grader Operator [203.01 h]; Loader [42.02 h]; Loader Operator [152.63 h]; Un-Skilled Labor [52.57 h]; Supervisor [28.69 h]; Skilled Labor [32.11 h]; Water Tanker [183.67 h] |
| SDR-2-CON-RW-ZA-3050 | Embankments to the Road 2 Layer |  |  |  |  |  | resources SIC- Cost; Excavator [12.5 h]; Excavator Operator [142.55 h]; Dumper Operator [203.01 h]; Dumper Truck [199 h]; Grader [75 h]; Grader Operator [203.01 h]; Loader [52.14 h]; Loader Operator [152.63 h]; Un-Skilled Labor [203.02 h]; Supervisor [132.47 h]; Skilled Labor [142.55 h]; Water Tanker [138.75 h] → SIC- Cost [125082]; Excavator [12.5 h]; Excavator Operator [142.55 h]; Dumper Operator [203.01 h]; Dumper Truck [199 h]; Grader [75 h]; Grader Operator [203.01 h]; Loader [52.14 h]; Loader Operator [152.63 h]; Un-Skilled Labor [203.02 h]; Supervisor [132.47 h]; Skilled Labor [142.55 h]; Water Tanker [138.75 h] |
| SDR-2-CON-RW-ZA-3060 | Embankments to the Road 3 Layer |  |  |  |  |  | resources SIC- Cost; Excavator [12.5 h]; Excavator Operator [203.01 h]; Dumper Operator [203.01 h]; Dumper Truck [199 h]; Grader [75 h]; Grader Operator [203.01 h]; Loader [80 h]; Loader Operator [77.06 h]; Un-Skilled Labor [115.59 h]; Supervisor [38.53 h]; Skilled Labor [115.59 h]; Water Tanker [138.75 h] → SIC- Cost [453422]; Excavator [12.5 h]; Excavator Operator [203.01 h]; Dumper Operator [203.01 h]; Dumper Truck [199 h]; Grader [75 h]; Grader Operator [203.01 h]; Loader [80 h]; Loader Operator [77.06 h]; Un-Skilled Labor [115.59 h]; Supervisor [38.53 h]; Skilled Labor [115.59 h]; Water Tanker [138.75 h] |
| SDR-2-CON-RW-ZA-1590 | Embankments to the Road 4 Layer |  |  |  |  |  | resources SIC- Cost; Excavator [12.5 h]; Excavator Operator [137.14 h]; Dumper Operator [203.01 h]; Dumper Truck [199 h]; Grader [75 h]; Grader Operator [203.01 h]; Loader [60 h]; Loader Operator [203.01 h]; Un-Skilled Labor [203.02 h]; Supervisor [203.02 h]; Skilled Labor [203.01 h]; Water Tanker [138.75 h] → SIC- Cost [875574]; Excavator [12.5 h]; Excavator Operator [137.14 h]; Dumper Operator [203.01 h]; Dumper Truck [199 h]; Grader [75 h]; Grader Operator [203.01 h]; Loader [60 h]; Loader Operator [203.01 h]; Un-Skilled Labor [203.02 h]; Supervisor [203.02 h]; Skilled Labor [203.01 h]; Water Tanker [138.75 h] |
| 11 | **Subgrade** |  | 2026-11-09 → 2026-12-05 (+26d) |  |  |  |  |
| SDR-2-CON-RW-ZA-1600 | Subgrade layer works |  | 2026-11-09 → 2026-12-05 (+26d) |  | 1d → -31d |  | resources SIC- Cost; Compactor [411.25 h]; Excavator [6 h]; Excavator Operator [5.78 h]; Dumper Operator [81.48 h]; Dumper Truck [60 h]; Grader [10 h]; Grader Operator [9.63 h]; Loader [20 h]; Loader Operator [81.48 h]; Un-Skilled Labor [38.53 h]; Supervisor [9.63 h]; Skilled Labor [38.53 h]; Water Tanker [60 h]; Water Tanker Operator [57.79 h] → SIC- Cost [1025846]; Compactor [411.25 h]; Excavator [6 h]; Excavator Operator [5.78 h]; Dumper Operator [81.48 h]; Dumper Truck [60 h]; Grader [10 h]; Grader Operator [9.63 h]; Loader [20 h]; Loader Operator [81.48 h]; Un-Skilled Labor [38.53 h]; Supervisor [9.63 h]; Skilled Labor [38.53 h]; Water Tanker [60 h]; Water Tanker Operator [57.79 h] |
| 9 | **Earth Works Plot** |  | 2026-11-09 → 2027-01-06 (+58d) |  |  |  |  |
| SDR-2-CON-RW-ZA-1610 | Plot Excavation for cuttings (all types of soil) |  | 2026-11-09 → 2026-10-16 A (-24d) | 85% → 100% | 24d → none | SDR-2-CON-RW-ZA-1580, SDR-2-CON-RW-ZA-1600 FF → SDR-2-CON-RW-ZA-1580, SDR-2-CON-RW-ZA-1600 |  |
| SDR-2-CON-RW-ZA-3070 | Embankments to the Plot 1 Layer |  |  |  |  | SDR-2-CON-RW-ZA-1610 SS → SDR-2-CON-RW-ZA-1610, SDR-2-CON-RW-ZA-3440 FS+2d, SDR-2-CON-RW-ZA-3420 | resources SIC- Cost; Excavator [10 h]; Excavator Operator [81.48 h]; Dumper Operator [81.48 h]; Dumper Truck [60 h]; Grader [60 h]; Grader Operator [81.48 h]; Loader [84.9 h]; Loader Operator [81.48 h]; Un-Skilled Labor [81.48 h]; Supervisor [81.48 h]; Skilled Labor [81.48 h] → SIC- Cost [39546.3]; Excavator [10 h]; Excavator Operator [81.48 h]; Dumper Operator [81.48 h]; Dumper Truck [60 h]; Grader [60 h]; Grader Operator [81.48 h]; Loader [84.9 h]; Loader Operator [81.48 h]; Un-Skilled Labor [81.48 h]; Supervisor [81.48 h]; Skilled Labor [81.48 h] |
| SDR-2-CON-RW-ZA-1620 | Embankments to the Plot 2 Layer |  | 2026-11-09 → 2027-01-06 (+58d) |  | 127d → 56d |  | resources SIC- Cost; Excavator [10 h]; Excavator Operator [81.48 h]; Dumper Operator [81.48 h]; Dumper Truck [177.71 h]; Grader [60 h]; Grader Operator [81.48 h]; Loader [331.38 h]; Loader Operator [81.48 h]; Un-Skilled Labor [81.48 h]; Supervisor [81.48 h]; Skilled Labor [81.48 h] → SIC- Cost [39546.3]; Excavator [10 h]; Excavator Operator [81.48 h]; Dumper Operator [81.48 h]; Dumper Truck [177.71 h]; Grader [60 h]; Grader Operator [81.48 h]; Loader [331.38 h]; Loader Operator [81.48 h]; Un-Skilled Labor [81.48 h]; Supervisor [81.48 h]; Skilled Labor [81.48 h] |
| 2 | **Base Course** |  | 2026-12-02 → 2026-12-19 (+17d) |  |  |  |  |
| SDR-2-CON-RW-ZA-1630 | Aggregate base course layer |  | 2026-12-02 → 2026-12-19 (+17d) | 25% → 30% | 1d → -31d |  |  |
| 8 | **Demolition Work** |  | 2026-12-06 → 2027-01-02 (+27d) |  |  |  |  |
| SDR-2-CON-RW-ZA-1640 | Milling of wearing course |  | 2026-12-06 → 2027-01-02 (+27d) | 25% → 30% | 1d → -31d |  | resources SIC- Cost [28300.2]; Un-Skilled Labor [57.32 h]; Supervisor [57.32 h]; Skilled Labor [57.32 h]; Water Tanker [20 h]; Water Tanker Operator [57.32 h]; Road Milling Machine [60 h]; Road Milling Machine Operator [60 h]; Sweeper Machine [40 h]; Sweeper Machine Operator [57.32 h] → SIC- Cost [29076.6]; Un-Skilled Labor [57.32 h]; Supervisor [57.32 h]; Skilled Labor [57.32 h]; Water Tanker [20 h]; Water Tanker Operator [57.32 h]; Road Milling Machine [60 h]; Road Milling Machine Operator [60 h]; Sweeper Machine [40 h]; Sweeper Machine Operator [57.32 h] |
| 3 | **Asphalt Works** | 2026-12-07 → 2026-11-07 (-30d) | 2027-01-13 → 2027-02-07 (+25d) |  |  |  |  |
| SDR-2-CON-RW-ZA-1650 | Asphalt works 1st Layer with MC-01 | 2026-12-07 → 2026-11-07 A (-30d) | 2026-12-30 → 2027-01-24 (+25d) | 0% → 25% | 1d → -31d |  |  |
| SDR-2-CON-RW-ZA-1660 | Asphalt works 2nd layer with RC-02 | 2026-12-31 → 2027-01-25 (+25d) | 2027-01-13 → 2027-02-07 (+25d) |  | 1d → -31d |  | resources SIC- Cost; Dumper Operator [45.26 h]; Dumper Truck [90 h]; Supervisor [20.11 h]; Sweeper Machine [90 h]; Sweeper Machine Operator [50.28 h]; Pneumatic Tire Roller [40 h]; Pneumatic Roller Operator [85.98 h]; Asphalt Paver [40 h]; Asphalt Paver Operator [45.26 h] → SIC- Cost [299797]; Dumper Operator [45.26 h]; Dumper Truck [90 h]; Supervisor [20.11 h]; Sweeper Machine [90 h]; Sweeper Machine Operator [50.28 h]; Pneumatic Tire Roller [40 h]; Pneumatic Roller Operator [85.98 h]; Asphalt Paver [40 h]; Asphalt Paver Operator [45.26 h] |
| 4 | **Kerbstone Installation** | 2026-11-10 → 2026-11-14 (+4d) | 2027-02-06 → 2027-03-03 (+25d) |  |  |  |  |
| SDR-2-CON-RW-ZA-3430 | Kerbstone Installation "all Types" Part 1 | 2026-11-10 → 2026-11-14 A (+4d) | 2026-12-02 → 2026-12-26 (+24d) | 0% → 10% | 37d → 2d |  | resources SIC- Cost [286905]; Un-Skilled Labor [40.23 h]; Supervisor [10.06 h]; Skilled Labor [40.23 h] → SIC- Cost [32835.8]; Un-Skilled Labor [40.23 h]; Supervisor [10.06 h]; Skilled Labor [40.23 h] |
| SDR-2-CON-RW-ZA-1670 | Kerbstone Installation "all Types" Part 2 | 2027-01-14 → 2027-02-08 (+25d) | 2027-02-06 → 2027-03-03 (+25d) |  | 1d → -31d |  | resources SIC- Cost [286905]; Un-Skilled Labor [40.23 h]; Supervisor [10.06 h]; Skilled Labor [40.23 h] → SIC- Cost [254069]; Un-Skilled Labor [40.23 h]; Supervisor [10.06 h]; Skilled Labor [40.23 h] |
| 5 | **Interlock Installation** | 2027-02-07 → 2027-03-04 (+25d) | 2027-03-03 → 2027-04-01 (+29d) |  |  |  |  |
| SDR-2-CON-RW-ZA-1680 | Interlock Installation | 2027-02-07 → 2027-03-04 (+25d) | 2027-03-03 → 2027-04-01 (+29d) |  | 1d → -31d |  | resources SIC- Cost; Un-Skilled Labor [40.23 h]; Supervisor [10.06 h]; Skilled Labor [40.23 h] → SIC- Cost [149309]; Un-Skilled Labor [40.23 h]; Supervisor [10.06 h]; Skilled Labor [40.23 h] |
| 6 | **Road Marking** | 2027-03-04 → 2027-04-03 (+30d) | 2027-04-11 → 2027-05-05 (+24d) |  |  |  |  |
| SDR-2-CON-RW-ZA-1690 | Retroreflective Thermoplastic White Traffic lines | 2027-03-04 → 2027-04-03 (+30d) | 2027-03-25 → 2027-04-19 (+25d) |  | 1d → -31d |  |  |
| SDR-2-CON-RW-ZA-1700 | Retroreflective Thermoplastic Yellow, Traffic lines | 2027-03-27 → 2027-04-20 (+24d) | 2027-04-11 → 2027-05-05 (+24d) |  | 1d → -31d |  |  |
| 7 | **Traffic Signage** | 2027-04-12 → 2027-05-06 (+24d) | 2027-05-04 → 2027-06-03 (+30d) |  |  |  |  |
| SDR-2-CON-RW-ZA-1710 | Single post-Traffic signs Installation | 2027-04-12 → 2027-05-06 (+24d) | 2027-05-04 → 2027-06-03 (+30d) |  | 1d → -31d |  | resources SIC- Cost [5283.72]; Un-Skilled Labor [19.11 h]; Supervisor [19.11 h]; Skilled Labor [19.11 h] → SIC- Cost [5283.73]; Un-Skilled Labor [19.11 h]; Supervisor [19.11 h]; Skilled Labor [19.11 h] |
| 7 | **ROAD WORKS IN ( PH2-A-MCC0 )** |  | 2027-04-24 → 2027-06-08 (+45d) |  |  |  |  |
| SDR-2-CON-RW-ZA-1720 | Roadway Excavation and cuttings |  |  |  |  |  | resources SIC- Cost [1563524]; Excavator [20 h]; Excavator Operator [143.3 h]; Dumper Operator [143.3 h]; Dumper Truck [150 h]; Grader [50 h]; Grader Operator [143.3 h]; Loader [476.36 h]; Loader Operator [143.3 h]; Un-Skilled Labor [71.65 h]; Supervisor [71.65 h]; Skilled Labor [71.65 h] → SIC- Cost [23081.5]; Excavator [20 h]; Excavator Operator [143.3 h]; Dumper Operator [143.3 h]; Dumper Truck [150 h]; Grader [50 h]; Grader Operator [143.3 h]; Loader [476.36 h]; Loader Operator [143.3 h]; Un-Skilled Labor [71.65 h]; Supervisor [71.65 h]; Skilled Labor [71.65 h] |
| SDR-2-CON-RW-ZA-3080 | Embankments to the Road 1 Layer |  |  |  |  |  | resources SIC- Cost; Excavator [17.5 h]; Excavator Operator [122.4 h]; Dumper Operator [203.01 h]; Dumper Truck [187.92 h]; Grader [75 h]; Grader Operator [203.01 h]; Loader [43.01 h]; Loader Operator [132.48 h]; Un-Skilled Labor [71.91 h]; Supervisor [109.3 h]; Skilled Labor [37.51 h]; Water Tanker [192.75 h] → SIC- Cost [109447]; Excavator [17.5 h]; Excavator Operator [122.4 h]; Dumper Operator [203.01 h]; Dumper Truck [187.92 h]; Grader [75 h]; Grader Operator [203.01 h]; Loader [43.01 h]; Loader Operator [132.48 h]; Un-Skilled Labor [71.91 h]; Supervisor [109.3 h]; Skilled Labor [37.51 h]; Water Tanker [192.75 h] |
| SDR-2-CON-RW-ZA-3090 | Embankments to the Road 2 Layer |  |  |  |  |  | resources SIC- Cost; Excavator [17.5 h]; Excavator Operator [203.01 h]; Dumper Operator [203.01 h]; Dumper Truck [187.92 h]; Grader [75 h]; Grader Operator [203.01 h]; Loader [40 h]; Loader Operator [172.78 h]; Un-Skilled Labor [203.02 h]; Supervisor [152.64 h]; Skilled Labor [162.7 h]; Water Tanker [138.75 h] → SIC- Cost [125082]; Excavator [17.5 h]; Excavator Operator [203.01 h]; Dumper Operator [203.01 h]; Dumper Truck [187.92 h]; Grader [75 h]; Grader Operator [203.01 h]; Loader [40 h]; Loader Operator [172.78 h]; Un-Skilled Labor [203.02 h]; Supervisor [152.64 h]; Skilled Labor [162.7 h]; Water Tanker [138.75 h] |
| SDR-2-CON-RW-ZA-3100 | Embankments to the Road 3 Layer |  |  |  |  | SDR-2-CON-RW-ZA-3090, SDR-2-PRO-DEL-M-1050 SS, SDR-2-PRO-DEL-M-1030 SS → SDR-2-CON-RW-ZA-3090, SDR-2-PRO-DEL-M-1050, SDR-2-PRO-DEL-M-1030 FS+3d | resources SIC- Cost; Excavator [17.5 h]; Excavator Operator [17.34 h]; Dumper Operator [203.01 h]; Dumper Truck [187.92 h]; Grader [75 h]; Grader Operator [203.01 h]; Loader [82.5 h]; Loader Operator [79.95 h]; Un-Skilled Labor [115.59 h]; Supervisor [38.53 h]; Skilled Labor [115.59 h]; Water Tanker [138.75 h] → SIC- Cost [453422]; Excavator [17.5 h]; Excavator Operator [17.34 h]; Dumper Operator [203.01 h]; Dumper Truck [187.92 h]; Grader [75 h]; Grader Operator [203.01 h]; Loader [82.5 h]; Loader Operator [79.95 h]; Un-Skilled Labor [115.59 h]; Supervisor [38.53 h]; Skilled Labor [115.59 h]; Water Tanker [138.75 h] |
| SDR-2-CON-RW-ZA-1730 | Embankments to the Road 4 Layer |  |  |  |  |  | resources SIC- Cost; Excavator [17.5 h]; Excavator Operator [203.01 h]; Dumper Operator [203.01 h]; Dumper Truck [102.62 h]; Grader [75 h]; Grader Operator [203.01 h]; Loader [72.78 h]; Loader Operator [203.01 h]; Un-Skilled Labor [203.01 h]; Supervisor [203.01 h]; Skilled Labor [203.01 h]; Water Tanker [198.75 h] → SIC- Cost [875574]; Excavator [17.5 h]; Excavator Operator [203.01 h]; Dumper Operator [203.01 h]; Dumper Truck [102.62 h]; Grader [75 h]; Grader Operator [203.01 h]; Loader [72.78 h]; Loader Operator [203.01 h]; Un-Skilled Labor [203.01 h]; Supervisor [203.01 h]; Skilled Labor [203.01 h]; Water Tanker [198.75 h] |
| 9 | **Earth Works Plot** |  | 2026-11-10 → 2027-01-13 (+64d) |  |  |  |  |
| SDR-2-CON-RW-ZA-1750 | Plot Excavation for cuttings (all types of soil) |  | 2026-11-09 A | 85% → 100% | 67d → none | SDR-2-CON-RW-ZA-1720, SDR-2-CON-RW-ZA-1740, SDR-2-PRO-DEL-E-1160 FF → SDR-2-CON-RW-ZA-1720, SDR-2-CON-RW-ZA-1740 FS+5d, SDR-2-PRO-DEL-E-1160 |  |
| SDR-2-CON-RW-ZA-3110 | Embankments to the Plot 1 Layer |  | 2026-11-05 A → 2026-09-15 A (-51d) |  |  | SDR-2-CON-RW-ZA-1750 → SDR-2-CON-RW-ZA-1470 FF+3d, SDR-2-CON-RW-ZA-1750, SDR-2-CON-RW-ZA-3450 | resources SIC- Cost; Excavator [8.76 h]; Excavator Operator [81.48 h]; Dumper Operator [81.48 h]; Dumper Truck [60 h]; Grader [60 h]; Grader Operator [81.48 h]; Loader [60 h]; Loader Operator [81.48 h]; Un-Skilled Labor [38.53 h]; Supervisor [9.63 h]; Skilled Labor [38.53 h] → SIC- Cost [39546.3]; Excavator [8.76 h]; Excavator Operator [81.48 h]; Dumper Operator [81.48 h]; Dumper Truck [60 h]; Grader [60 h]; Grader Operator [81.48 h]; Loader [60 h]; Loader Operator [81.48 h]; Un-Skilled Labor [38.53 h]; Supervisor [9.63 h]; Skilled Labor [38.53 h] |
| SDR-2-CON-RW-ZA-1760 | Embankments to the Plot 2 Layer |  | 2026-11-10 → 2027-01-13 (+64d) |  | 105d → 28.3d |  | resources SIC- Cost; Excavator [8.76 h]; Excavator Operator [81.48 h]; Dumper Operator [81.48 h]; Dumper Truck [120.33 h]; Grader [60 h]; Grader Operator [57.79 h]; Loader [42.67 h]; Loader Operator [40.46 h]; Un-Skilled Labor [38.53 h]; Supervisor [9.63 h]; Skilled Labor [38.53 h] → SIC- Cost [39546.3]; Excavator [8.76 h]; Excavator Operator [81.48 h]; Dumper Operator [81.48 h]; Dumper Truck [120.33 h]; Grader [60 h]; Grader Operator [57.79 h]; Loader [42.67 h]; Loader Operator [40.46 h]; Un-Skilled Labor [38.53 h]; Supervisor [9.63 h]; Skilled Labor [38.53 h] |
| SDR-2-CON-RW-ZA-1770 | Aggregate base course layer |  |  |  |  | SDR-2-CON-RW-ZA-1740 → SDR-2-CON-RW-ZA-1740 FS+10d | resources SIC- Cost; Dumper Operator [95.54 h]; Dumper Truck [60 h]; Grader [60 h]; Grader Operator [95.54 h]; Loader [20 h]; Loader Operator [95.54 h]; Un-Skilled Labor [38.53 h]; Supervisor [9.63 h]; Skilled Labor [48.16 h]; Water Tanker [40 h]; Water Tanker Operator [38.53 h] → SIC- Cost [120756]; Dumper Operator [95.54 h]; Dumper Truck [60 h]; Grader [60 h]; Grader Operator [95.54 h]; Loader [20 h]; Loader Operator [95.54 h]; Un-Skilled Labor [38.53 h]; Supervisor [9.63 h]; Skilled Labor [48.16 h]; Water Tanker [40 h]; Water Tanker Operator [38.53 h] |
| SDR-2-CON-RW-ZA-1780 | Milling of wearing course |  |  |  |  |  | resources SIC- Cost [28300.2]; Un-Skilled Labor [57.32 h]; Supervisor [57.32 h]; Skilled Labor [57.32 h]; Water Tanker [40 h]; Water Tanker Operator [57.32 h]; Road Milling Machine [312 h]; Road Milling Machine Operator [60 h]; Sweeper Machine [40 h]; Sweeper Machine Operator [57.32 h] → SIC- Cost [29076.6]; Un-Skilled Labor [57.32 h]; Supervisor [57.32 h]; Skilled Labor [57.32 h]; Water Tanker [40 h]; Water Tanker Operator [57.32 h]; Road Milling Machine [312 h]; Road Milling Machine Operator [60 h]; Sweeper Machine [40 h]; Sweeper Machine Operator [57.32 h] |
| 3 | **Asphalt Works** |  | 2027-01-04 → 2027-02-13 (+40d) |  |  |  |  |
| SDR-2-CON-RW-ZA-1790 | Asphalt works 1st Layer with MC-01 |  |  |  |  |  | resources SIC- Cost; Dumper Operator [85.98 h]; Dumper Truck [90 h]; Supervisor [20.11 h]; Sweeper Machine [90 h]; Sweeper Machine Operator [50.28 h]; Pneumatic Tire Roller [40 h]; Pneumatic Roller Operator [50.28 h]; Asphalt Paver [23.3 h]; Asphalt Paver Operator [46.26 h] → SIC- Cost [503392]; Dumper Operator [85.98 h]; Dumper Truck [90 h]; Supervisor [20.11 h]; Sweeper Machine [90 h]; Sweeper Machine Operator [50.28 h]; Pneumatic Tire Roller [40 h]; Pneumatic Roller Operator [50.28 h]; Asphalt Paver [23.3 h]; Asphalt Paver Operator [46.26 h] |
| SDR-2-CON-RW-ZA-1800 | Asphalt works 2nd layer with RC-02 | 2026-12-23 → 2027-02-01 (+40d) | 2027-01-04 → 2027-02-13 (+40d) |  | 26d → -47d |  | resources SIC- Cost; Dumper Operator [50.28 h]; Dumper Truck [90 h]; Supervisor [20.11 h]; Sweeper Machine [40 h]; Sweeper Machine Operator [50.28 h]; Pneumatic Tire Roller [40 h]; Pneumatic Roller Operator [85.98 h]; Asphalt Paver [40 h]; Asphalt Paver Operator [45.26 h] → SIC- Cost [299797]; Dumper Operator [50.28 h]; Dumper Truck [90 h]; Supervisor [20.11 h]; Sweeper Machine [40 h]; Sweeper Machine Operator [50.28 h]; Pneumatic Tire Roller [40 h]; Pneumatic Roller Operator [85.98 h]; Asphalt Paver [40 h]; Asphalt Paver Operator [45.26 h] |
| 4 | **Kerbstone Installation** | 2026-11-09 → 2026-11-14 (+5d) | 2027-01-27 → 2027-03-14 (+46d) |  |  |  |  |
| SDR-2-CON-RW-ZA-3450 | Kerbstone Installation "all Types" Part 1 | 2026-11-09 → 2026-11-14 A (+5d) | 2026-11-29 → 2026-12-16 (+17d) | 0% → 10% | 67d → 11d |  | resources SIC- Cost; Un-Skilled Labor [60.34 h]; Supervisor [10.06 h]; Skilled Labor [60.34 h] → SIC- Cost [32835.8]; Un-Skilled Labor [60.34 h]; Supervisor [10.06 h]; Skilled Labor [60.34 h] |
| SDR-2-CON-RW-ZA-1810 | Kerbstone Installation "all Types" Part 2 | 2027-01-05 → 2027-02-14 (+40d) | 2027-01-27 → 2027-03-14 (+46d) |  | 26d → -47d |  | resources SIC- Cost; Un-Skilled Labor [60.34 h]; Supervisor [10.06 h]; Skilled Labor [60.34 h] → SIC- Cost [254069]; Un-Skilled Labor [60.34 h]; Supervisor [10.06 h]; Skilled Labor [60.34 h] |
| 5 | **Interlock Installation** | 2027-01-28 → 2027-03-15 (+46d) | 2027-02-21 → 2027-04-07 (+45d) |  |  |  |  |
| SDR-2-CON-RW-ZA-1820 | Interlock Installation | 2027-01-28 → 2027-03-15 (+46d) | 2027-02-21 → 2027-04-07 (+45d) |  | 26d → -47d |  | resources SIC- Cost; Un-Skilled Labor [60.34 h]; Supervisor [10.06 h]; Skilled Labor [60.34 h] → SIC- Cost [149309]; Un-Skilled Labor [60.34 h]; Supervisor [10.06 h]; Skilled Labor [60.34 h] |
| 6 | **Road Marking** | 2027-02-23 → 2027-04-08 (+44d) | 2027-03-31 → 2027-05-10 (+40d) |  |  |  |  |
| SDR-2-CON-RW-ZA-1830 | Retroreflective Thermoplastic White Traffic lines | 2027-02-23 → 2027-04-08 (+44d) | 2027-03-15 → 2027-04-24 (+40d) |  | 26d → -47d |  |  |
| SDR-2-CON-RW-ZA-1840 | Retroreflective Thermoplastic Yellow, Traffic lines | 2027-03-16 → 2027-04-25 (+40d) | 2027-03-31 → 2027-05-10 (+40d) |  | 26d → -47d |  |  |
| 7 | **Traffic Signage** | 2027-04-01 → 2027-05-11 (+40d) | 2027-04-24 → 2027-06-08 (+45d) |  |  |  |  |
| SDR-2-CON-RW-ZA-1850 | Single post-Traffic signs Installation | 2027-04-01 → 2027-05-11 (+40d) | 2027-04-24 → 2027-06-08 (+45d) |  | 26d → -47d |  | resources SIC- Cost [5283.72]; Un-Skilled Labor [19.11 h]; Supervisor [19.11 h]; Skilled Labor [19.11 h] → SIC- Cost [5283.73]; Un-Skilled Labor [19.11 h]; Supervisor [19.11 h]; Skilled Labor [19.11 h] |
| 4 | **ROAD WORKS IN ( PH2-A-MCD0 )** |  | 2027-05-04 → 2027-05-03 (-1d) |  |  |  |  |
| SDR-2-CON-RW-ZA-1860 | Roadway Excavation and cuttings |  |  |  |  |  | resources SIC- Cost; Excavator; Excavator Operator; Dumper Operator; Dumper Truck; Grader; Grader Operator; Loader; Loader Operator; Un-Skilled Labor; Supervisor; Skilled Labor → SIC- Cost [23081.5]; Excavator; Excavator Operator; Dumper Operator; Dumper Truck; Grader; Grader Operator; Loader; Loader Operator; Un-Skilled Labor; Supervisor; Skilled Labor |
| SDR-2-CON-RW-ZA-3120 | Embankments to the Road 1 Layer |  |  |  |  |  | resources SIC- Cost [23081.5]; Excavator [70 h]; Excavator Operator [89.69 h]; Dumper Operator [543.17 h]; Dumper Truck [746 h]; Grader [400 h]; Grader Operator [543.17 h]; Loader [76.85 h]; Loader Operator [543.17 h]; Un-Skilled Labor [154.88 h]; Supervisor [52.9 h]; Skilled Labor [154.88 h] → SIC- Cost [109447]; Excavator [70 h]; Excavator Operator [89.69 h]; Dumper Operator [543.17 h]; Dumper Truck [746 h]; Grader [400 h]; Grader Operator [543.17 h]; Loader [76.85 h]; Loader Operator [543.17 h]; Un-Skilled Labor [154.88 h]; Supervisor [52.9 h]; Skilled Labor [154.88 h] |
| SDR-2-CON-RW-ZA-3130 | Embankments to the Road 2 Layer |  |  |  |  |  | resources SIC- Cost [23081.5]; Excavator [70 h]; Excavator Operator [67.43 h]; Dumper Operator [543.17 h]; Dumper Truck [471 h]; Grader [60 h]; Grader Operator [57.79 h]; Loader [40 h]; Loader Operator [38.53 h]; Un-Skilled Labor [105.44 h]; Supervisor [38.66 h]; Skilled Labor [44.76 h] → SIC- Cost [125082]; Excavator [70 h]; Excavator Operator [67.43 h]; Dumper Operator [543.17 h]; Dumper Truck [471 h]; Grader [60 h]; Grader Operator [57.79 h]; Loader [40 h]; Loader Operator [38.53 h]; Un-Skilled Labor [105.44 h]; Supervisor [38.66 h]; Skilled Labor [44.76 h] |
| SDR-2-CON-RW-ZA-3140 | Embankments to the Road 3 Layer |  |  |  |  |  | resources SIC- Cost [23081.5]; Excavator [70 h]; Excavator Operator [67.43 h]; Dumper Operator [543.17 h]; Dumper Truck [746 h]; Grader [400 h]; Grader Operator [385.29 h]; Loader [111.41 h]; Loader Operator [107.88 h]; Un-Skilled Labor [192.65 h]; Supervisor [57.79 h]; Skilled Labor [192.65 h] → SIC- Cost [453422]; Excavator [70 h]; Excavator Operator [67.43 h]; Dumper Operator [543.17 h]; Dumper Truck [746 h]; Grader [400 h]; Grader Operator [385.29 h]; Loader [111.41 h]; Loader Operator [107.88 h]; Un-Skilled Labor [192.65 h]; Supervisor [57.79 h]; Skilled Labor [192.65 h] |
| SDR-2-CON-RW-ZA-1870 | Embankments to the Road 4 Layer |  |  |  |  |  | resources SIC- Cost [23081.5]; Excavator [70 h]; Excavator Operator [254.21 h]; Dumper Operator [543.17 h]; Dumper Truck [446 h]; Grader [120 h]; Grader Operator [543.17 h]; Loader [60 h]; Loader Operator [543.17 h]; Un-Skilled Labor [543.17 h]; Supervisor [543.17 h]; Skilled Labor [543.17 h] → SIC- Cost [875574]; Excavator [70 h]; Excavator Operator [254.21 h]; Dumper Operator [543.17 h]; Dumper Truck [446 h]; Grader [120 h]; Grader Operator [543.17 h]; Loader [60 h]; Loader Operator [543.17 h]; Un-Skilled Labor [543.17 h]; Supervisor [543.17 h]; Skilled Labor [543.17 h] |
| SDR-2-CON-RW-ZA-1880 | Subgrade layer works |  |  |  |  | SDR-2-PRO-DES-C-1070, SDR-2-CON-RW-ZA-1870 → SDR-2-CON-RW-ZA-1870, SDR-2-PRO-DEL-E-1100, SDR-2-PRO-DES-C-1070 | resources SIC- Cost; Excavator [6 h]; Excavator Operator [95.54 h]; Dumper Operator [95.54 h]; Dumper Truck [60 h]; Grader [60 h]; Grader Operator [95.54 h]; Loader [20 h]; Loader Operator [19.26 h]; Un-Skilled Labor [38.53 h]; Supervisor [9.63 h]; Skilled Labor [38.53 h]; Water Tanker [40 h]; Water Tanker Operator [38.53 h] → SIC- Cost [428831]; Excavator [6 h]; Excavator Operator [95.54 h]; Dumper Operator [95.54 h]; Dumper Truck [60 h]; Grader [60 h]; Grader Operator [95.54 h]; Loader [20 h]; Loader Operator [19.26 h]; Un-Skilled Labor [38.53 h]; Supervisor [9.63 h]; Skilled Labor [38.53 h]; Water Tanker [40 h]; Water Tanker Operator [38.53 h] |
| SDR-2-CON-RW-ZA-3150 | Embankments to the Plot 1 Layer |  |  |  |  | SDR-2-CON-RW-ZA-1890 SS → SDR-2-CON-RW-ZA-1890 | resources SIC- Cost; Excavator [18.85 h]; Excavator Operator [40.74 h]; Dumper Operator [40.74 h]; Dumper Truck [30 h]; Grader [30 h]; Grader Operator [40.74 h]; Loader [40 h]; Loader Operator [40.74 h]; Un-Skilled Labor [40.74 h]; Supervisor [40.74 h]; Skilled Labor [40.74 h] → SIC- Cost [39546.3]; Excavator [18.85 h]; Excavator Operator [40.74 h]; Dumper Operator [40.74 h]; Dumper Truck [30 h]; Grader [30 h]; Grader Operator [40.74 h]; Loader [40 h]; Loader Operator [40.74 h]; Un-Skilled Labor [40.74 h]; Supervisor [40.74 h]; Skilled Labor [40.74 h] |
| SDR-2-CON-RW-ZA-1890 | Plot Excavation for cuttings (all types of soil) |  |  |  |  |  | resources SIC- Cost [82090]; Excavator [60 h]; Excavator Operator [95.54 h]; Dumper Operator [95.54 h]; Dumper Truck [60 h]; Grader [60 h]; Grader Operator [95.54 h]; Loader [25.51 h]; Loader Operator [95.54 h]; Un-Skilled Labor [95.54 h]; Supervisor [95.54 h]; Skilled Labor [95.54 h] → SIC- Cost [679105]; Excavator [60 h]; Excavator Operator [95.54 h]; Dumper Operator [95.54 h]; Dumper Truck [60 h]; Grader [60 h]; Grader Operator [95.54 h]; Loader [25.51 h]; Loader Operator [95.54 h]; Un-Skilled Labor [95.54 h]; Supervisor [95.54 h]; Skilled Labor [95.54 h] |
| SDR-2-CON-RW-ZA-1900 | Embankments to the Plot 2 Layer |  |  |  |  |  | resources SIC- Cost; Excavator [18.85 h]; Excavator Operator [40.74 h]; Dumper Operator [40.74 h]; Dumper Truck [309.32 h]; Grader [30 h]; Grader Operator [40.74 h]; Loader [41.14 h]; Loader Operator [40.74 h]; Un-Skilled Labor [40.74 h]; Supervisor [40.74 h]; Skilled Labor [40.74 h] → SIC- Cost [39546.3]; Excavator [18.85 h]; Excavator Operator [40.74 h]; Dumper Operator [40.74 h]; Dumper Truck [309.32 h]; Grader [30 h]; Grader Operator [40.74 h]; Loader [41.14 h]; Loader Operator [40.74 h]; Un-Skilled Labor [40.74 h]; Supervisor [40.74 h]; Skilled Labor [40.74 h] |
| SDR-2-CON-RW-ZA-1910 | Aggregate base course layer |  |  |  |  |  | resources SIC- Cost; Dumper Operator [95.54 h]; Dumper Truck [60 h]; Grader [60 h]; Grader Operator [95.54 h]; Loader [25 h]; Loader Operator [95.54 h]; Un-Skilled Labor [95.54 h]; Supervisor [95.54 h]; Skilled Labor [95.54 h]; Water Tanker [26.55 h]; Water Tanker Operator [95.54 h] → SIC- Cost [120756]; Dumper Operator [95.54 h]; Dumper Truck [60 h]; Grader [60 h]; Grader Operator [95.54 h]; Loader [25 h]; Loader Operator [95.54 h]; Un-Skilled Labor [95.54 h]; Supervisor [95.54 h]; Skilled Labor [95.54 h]; Water Tanker [26.55 h]; Water Tanker Operator [95.54 h] |

| ID | Task | Start | Finish | Complete | Total float | Predecessors | Other |
| --- | --- | --- | --- | --- | --- | --- | --- |
| SDR-2-CON-RW-ZA-1920 | Milling of wearing course |  |  |  |  |  | resources SIC- Cost; Un-Skilled Labor [57.32 h]; Supervisor [57.32 h]; Skilled Labor [57.32 h]; Water Tanker [90 h]; Water Tanker Operator [57.32 h]; Road Milling Machine [60 h]; Road Milling Machine Operator [60 h]; Sweeper Machine [60 h]; Sweeper Machine Operator [57.32 h] → SIC- Cost [29076.6]; Un-Skilled Labor [57.32 h]; Supervisor [57.32 h]; Skilled Labor [57.32 h]; Water Tanker [90 h]; Water Tanker Operator [57.32 h]; Road Milling Machine [60 h]; Road Milling Machine Operator [60 h]; Sweeper Machine [60 h]; Sweeper Machine Operator [57.32 h] |
| 3 | **Asphalt Works** |  | 2027-01-13 → 2027-01-12 (-1d) |  |  |  |  |
| SDR-2-CON-RW-ZA-1940 | Asphalt works 2nd layer with RC-02 | 2027-01-06 → 2027-01-05 (-1d) | 2027-01-13 → 2027-01-12 (-1d) |  | 17d → -21d |  |  |
| 4 | **Kerbstone Installation** |  | 2027-02-07 → 2027-02-06 (-1d) |  |  |  |  |
| SDR-2-CON-RW-ZA-3460 | Kerbstone Installation "all Types" Part 1 |  | 2026-11-29 → 2027-01-09 (+41d) |  | 56d → -21d |  | resources SIC- Cost [286905]; Un-Skilled Labor [60.34 h]; Supervisor [10.06 h]; Skilled Labor [60.34 h] → SIC- Cost [32835.8]; Un-Skilled Labor [60.34 h]; Supervisor [10.06 h]; Skilled Labor [60.34 h] |
| SDR-2-CON-RW-ZA-1950 | Kerbstone Installation "all Types" Part 2 | 2027-01-14 → 2027-01-13 (-1d) | 2027-02-07 → 2027-02-06 (-1d) |  | 17d → -21d | SDR-2-CON-RW-ZA-1940, SDR-2-CON-RW-ZA-3460 → SDR-2-CON-RW-ZA-1940 | resources SIC- Cost [286905]; Un-Skilled Labor [60.34 h]; Supervisor [10.06 h]; Skilled Labor [60.34 h] → SIC- Cost [254069]; Un-Skilled Labor [60.34 h]; Supervisor [10.06 h]; Skilled Labor [60.34 h] |
| 5 | **Interlock Installation** | 2027-02-08 → 2027-02-07 (-1d) | 2027-03-04 → 2027-03-03 (-1d) |  |  |  |  |
| SDR-2-CON-RW-ZA-1960 | Interlock Installation | 2027-02-08 → 2027-02-07 (-1d) | 2027-03-04 → 2027-03-03 (-1d) |  | 17d → -21d |  |  |
| 6 | **Road Marking** | 2027-03-06 → 2027-03-04 (-2d) | 2027-04-11 → 2027-04-10 (-1d) |  |  |  |  |
| SDR-2-CON-RW-ZA-1970 | Retroreflective Thermoplastic White Traffic lines | 2027-03-06 → 2027-03-04 (-2d) | 2027-03-25 → 2027-03-24 (-1d) |  | 17d → -21d |  |  |
| SDR-2-CON-RW-ZA-1980 | Retroreflective Thermoplastic Yellow, Traffic lines | 2027-03-27 → 2027-03-25 (-2d) | 2027-04-11 → 2027-04-10 (-1d) |  | 17d → -21d |  |  |
| 7 | **Traffic Signage** | 2027-04-12 → 2027-04-11 (-1d) | 2027-05-04 → 2027-05-03 (-1d) |  |  |  |  |
| SDR-2-CON-RW-ZA-1990 | Single post-Traffic signs Installation | 2027-04-12 → 2027-04-11 (-1d) | 2027-05-04 → 2027-05-03 (-1d) |  | 17d → -21d |  | resources SIC- Cost [5283.72]; Un-Skilled Labor [19.11 h]; Supervisor [19.11 h]; Skilled Labor [19.11 h] → SIC- Cost [5283.73]; Un-Skilled Labor [19.11 h]; Supervisor [19.11 h]; Skilled Labor [19.11 h] |
| 5 | **ROAD WORKS IN ( PH2-A-MCE0 )** |  | 2027-04-20 → 2027-06-07 (+48d) |  |  |  |  |
| SDR-2-CON-RW-ZA-2000 | Roadway Excavation and cuttings |  |  |  |  |  | resources SIC- Cost [1563524]; Excavator [30 h]; Excavator Operator [72.76 h]; Dumper Operator [143.3 h]; Dumper Truck [150 h]; Grader [75 h]; Grader Operator [143.3 h]; Loader [112 h]; Loader Operator [143.3 h]; Un-Skilled Labor [28.66 h]; Supervisor [28.66 h]; Skilled Labor [18.18 h] → SIC- Cost [23081.5]; Excavator [30 h]; Excavator Operator [72.76 h]; Dumper Operator [143.3 h]; Dumper Truck [150 h]; Grader [75 h]; Grader Operator [143.3 h]; Loader [112 h]; Loader Operator [143.3 h]; Un-Skilled Labor [28.66 h]; Supervisor [28.66 h]; Skilled Labor [18.18 h] |
| SDR-2-CON-RW-ZA-3160 | Embankments to the Road 1 Layer |  |  |  |  |  | resources SIC- Cost; Excavator [17.5 h]; Excavator Operator [65.25 h]; Dumper Operator [135.79 h]; Dumper Truck [93.49 h]; Grader [100 h]; Grader Operator [135.79 h]; Loader [60.12 h]; Loader Operator [75.33 h]; Un-Skilled Labor [90.22 h]; Supervisor [65.25 h]; Skilled Labor [48.56 h] → SIC- Cost [109447]; Excavator [17.5 h]; Excavator Operator [65.25 h]; Dumper Operator [135.79 h]; Dumper Truck [93.49 h]; Grader [100 h]; Grader Operator [135.79 h]; Loader [60.12 h]; Loader Operator [75.33 h]; Un-Skilled Labor [90.22 h]; Supervisor [65.25 h]; Skilled Labor [48.56 h] |
| SDR-2-CON-RW-ZA-3170 | Embankments to the Road 2 Layer |  |  |  |  |  | resources SIC- Cost; Excavator [17.5 h]; Excavator Operator [135.79 h]; Dumper Operator [135.79 h]; Dumper Truck [93.49 h]; Grader [68.57 h]; Grader Operator [135.79 h]; Loader [43.85 h]; Loader Operator [135.79 h]; Un-Skilled Labor [135.79 h]; Supervisor [135.79 h]; Skilled Labor [135.79 h] → SIC- Cost [125082]; Excavator [17.5 h]; Excavator Operator [135.79 h]; Dumper Operator [135.79 h]; Dumper Truck [93.49 h]; Grader [68.57 h]; Grader Operator [135.79 h]; Loader [43.85 h]; Loader Operator [135.79 h]; Un-Skilled Labor [135.79 h]; Supervisor [135.79 h]; Skilled Labor [135.79 h] |
| SDR-2-CON-RW-ZA-3180 | Embankments to the Road 3 Layer |  |  |  |  |  | resources SIC- Cost; Excavator [17.5 h]; Excavator Operator [135.79 h]; Dumper Operator [135.79 h]; Dumper Truck [93.49 h]; Grader [100 h]; Grader Operator [135.79 h]; Loader [87.74 h]; Loader Operator [84.76 h]; Un-Skilled Labor [57.79 h]; Supervisor [38.53 h]; Skilled Labor [57.79 h] → SIC- Cost [453422]; Excavator [17.5 h]; Excavator Operator [135.79 h]; Dumper Operator [135.79 h]; Dumper Truck [93.49 h]; Grader [100 h]; Grader Operator [135.79 h]; Loader [87.74 h]; Loader Operator [84.76 h]; Un-Skilled Labor [57.79 h]; Supervisor [38.53 h]; Skilled Labor [57.79 h] |
| SDR-2-CON-RW-ZA-2010 | Embankments to the Road 4 Layer |  |  |  |  | SDR-2-CON-RW-ZA-3180, SDR-2-CON-RW-ZA-3180 FF → SDR-2-CON-RW-ZA-3180, SDR-2-CON-RW-ZA-3180 FF, SDR-2-PRO-DEL-E-1100 | resources SIC- Cost; Excavator [17.5 h]; Excavator Operator [59.22 h]; Dumper Operator [135.79 h]; Dumper Truck [93.49 h]; Grader [100 h]; Grader Operator [135.79 h]; Loader [35.24 h]; Loader Operator [135.79 h]; Un-Skilled Labor [135.82 h]; Supervisor [135.82 h]; Skilled Labor [135.82 h] → SIC- Cost [875574]; Excavator [17.5 h]; Excavator Operator [59.22 h]; Dumper Operator [135.79 h]; Dumper Truck [93.49 h]; Grader [100 h]; Grader Operator [135.79 h]; Loader [35.24 h]; Loader Operator [135.79 h]; Un-Skilled Labor [135.82 h]; Supervisor [135.82 h]; Skilled Labor [135.82 h] |
| 11 | **Subgrade** |  | 2026-12-01 → 2027-01-10 (+40d) |  |  |  |  |
| SDR-2-CON-RW-ZA-2020 | Subgrade layer works |  | 2026-12-01 → 2027-01-10 (+40d) | 75% → 90% | 26d → -47d |  | resources SIC- Cost; Excavator [13 h]; Excavator Operator [12.52 h]; Dumper Operator [85.98 h]; Dumper Truck [90 h]; Grader [60 h]; Grader Operator [85.98 h]; Loader [20 h]; Loader Operator [85.98 h]; Un-Skilled Labor [38.53 h]; Supervisor [9.63 h]; Skilled Labor [38.53 h]; Water Tanker [47 h]; Water Tanker Operator [45.27 h] → SIC- Cost [1025846]; Excavator [13 h]; Excavator Operator [12.52 h]; Dumper Operator [85.98 h]; Dumper Truck [90 h]; Grader [60 h]; Grader Operator [85.98 h]; Loader [20 h]; Loader Operator [85.98 h]; Un-Skilled Labor [38.53 h]; Supervisor [9.63 h]; Skilled Labor [38.53 h]; Water Tanker [47 h]; Water Tanker Operator [45.27 h] |
| 9 | **Earth Works Plot** |  | 2026-12-01 → 2027-01-17 (+47d) |  |  |  |  |
| SDR-2-CON-RW-ZA-3190 | Embankments to the Plot 1 Layer | 2026-07-13 A → 2026-06-14 A (-29d) | 2026-10-26 A → 2027-01-17 (+83d) | 100% → 85% | none → 12d | SDR-2-CON-RW-ZA-3110, SDR-2-CON-RW-ZA-2040 FF → SDR-2-CON-RW-ZA-2030 | resources SIC- Cost; Excavator [7.88 h]; Excavator Operator [40.74 h]; Dumper Operator [40.74 h]; Dumper Truck [390.14 h]; Grader [30 h]; Grader Operator [40.74 h]; Loader [50.04 h]; Loader Operator [40.74 h]; Un-Skilled Labor [40.74 h]; Supervisor [40.74 h]; Skilled Labor [40.74 h] → SIC- Cost [39546.3]; Excavator [7.88 h]; Excavator Operator [40.74 h]; Dumper Operator [40.74 h]; Dumper Truck [30 h]; Grader [30 h]; Grader Operator [40.74 h]; Loader [40 h]; Loader Operator [40.74 h]; Un-Skilled Labor [40.74 h]; Supervisor [40.74 h]; Skilled Labor [40.74 h] |
| SDR-2-CON-RW-ZA-2030 | Plot Excavation for cuttings (all types of soil) |  | 2026-12-01 → 2026-11-01 A (-30d) | 80% → 100% | 35d → none | SDR-2-CON-RW-ZA-2000, SDR-2-CON-RW-ZA-2020 FF → SDR-2-CON-RW-ZA-2000, SDR-2-CON-RW-ZA-2020 |  |
| SDR-2-CON-RW-ZA-2040 | Embankments to the Plot 2 Layer | 2026-06-14 A → 2026-07-13 A (+29d) | 2026-12-01 → 2026-10-26 A (-36d) | 85% → 100% | 74d → none | SDR-2-CON-RW-ZA-2030 FF → SDR-2-CON-RW-ZA-3190 FS+1d, SDR-2-CON-RW-ZA-3110 | resources SIC- Cost; Excavator [7.88 h]; Excavator Operator [40.74 h]; Dumper Operator [40.74 h]; Dumper Truck [30 h]; Grader [30 h]; Grader Operator [40.74 h]; Loader [40 h]; Loader Operator [40.74 h]; Un-Skilled Labor [40.74 h]; Supervisor [40.74 h]; Skilled Labor [40.74 h] → SIC- Cost [39546.3]; Excavator [7.88 h]; Excavator Operator [40.74 h]; Dumper Operator [40.74 h]; Dumper Truck [390.14 h]; Grader [30 h]; Grader Operator [40.74 h]; Loader [50.04 h]; Loader Operator [40.74 h]; Un-Skilled Labor [40.74 h]; Supervisor [40.74 h]; Skilled Labor [40.74 h] |
| 8 | **Demolition Work** | 2026-12-02 → 2026-09-16 (-77d) | 2026-12-03 → 2026-09-30 (-64d) |  |  |  |  |
| SDR-2-CON-RW-ZA-2060 | Milling of wearing course | 2026-12-02 → 2026-09-16 A (-77d) | 2026-12-03 → 2026-09-30 A (-64d) | 0% → 100% | 29d → none |  | resources SIC- Cost [28300.2]; Un-Skilled Labor [57.32 h]; Supervisor [57.32 h]; Skilled Labor [57.32 h]; Water Tanker [40 h]; Water Tanker Operator [57.32 h]; Road Milling Machine [60 h]; Road Milling Machine Operator [60 h]; Sweeper Machine [40 h]; Sweeper Machine Operator [57.32 h] → SIC- Cost [29076.6]; Un-Skilled Labor [57.32 h]; Supervisor [57.32 h]; Skilled Labor [57.32 h]; Water Tanker [40 h]; Water Tanker Operator [57.32 h]; Road Milling Machine [60 h]; Road Milling Machine Operator [60 h]; Sweeper Machine [40 h]; Sweeper Machine Operator [57.32 h] |
| 3 | **Asphalt Works** |  | 2026-12-30 → 2027-02-10 (+42d) |  |  |  |  |
| SDR-2-CON-RW-ZA-2070 | Asphalt works 1st Layer with MC-01 |  | 2026-12-15 → 2027-01-26 (+42d) |  | 29d → -46d |  |  |
| SDR-2-CON-RW-ZA-2080 | Asphalt works 2nd layer with RC-02 | 2026-12-16 → 2027-01-27 (+42d) | 2026-12-30 → 2027-02-10 (+42d) |  | 29d → -46d |  |  |
| 4 | **Kerbstone Installation** | 2026-12-02 → 2027-01-11 (+40d) | 2027-01-24 → 2027-03-08 (+43d) |  |  |  |  |
| SDR-2-CON-RW-ZA-3470 | Kerbstone Installation "all Types" Part 1 | 2026-12-02 → 2027-01-11 (+40d) | 2026-12-22 → 2027-01-31 (+40d) |  | 26d → -47d |  | resources SIC- Cost; Un-Skilled Labor [60.34 h]; Supervisor [10.06 h]; Skilled Labor [60.34 h] → SIC- Cost [32835.8]; Un-Skilled Labor [60.34 h]; Supervisor [10.06 h]; Skilled Labor [60.34 h] |
| SDR-2-CON-RW-ZA-2090 | Kerbstone Installation "all Types" Part 2 | 2026-12-31 → 2027-02-11 (+42d) | 2027-01-24 → 2027-03-08 (+43d) |  | 29d → -46d |  | resources SIC- Cost; Un-Skilled Labor [60.34 h]; Supervisor [10.06 h]; Skilled Labor [60.34 h] → SIC- Cost [254069]; Un-Skilled Labor [60.34 h]; Supervisor [10.06 h]; Skilled Labor [60.34 h] |
| 5 | **Interlock Installation** | 2027-01-25 → 2027-03-14 (+48d) | 2027-02-17 → 2027-04-06 (+48d) |  |  |  |  |
| SDR-2-CON-RW-ZA-2100 | Interlock Installation | 2027-01-25 → 2027-03-14 (+48d) | 2027-02-17 → 2027-04-06 (+48d) |  | 29d → -46d |  | resources SIC- Cost; Un-Skilled Labor [60.34 h]; Supervisor [10.06 h]; Skilled Labor [60.34 h] → SIC- Cost [149309]; Un-Skilled Labor [60.34 h]; Supervisor [10.06 h]; Skilled Labor [60.34 h] |
| 6 | **Road Marking** | 2027-02-18 → 2027-04-07 (+48d) | 2027-03-28 → 2027-05-09 (+42d) |  |  |  |  |
| SDR-2-CON-RW-ZA-2110 | Retroreflective Thermoplastic White Traffic lines | 2027-02-18 → 2027-04-07 (+48d) | 2027-03-07 → 2027-04-22 (+46d) |  | 29d → -46d |  |  |
| SDR-2-CON-RW-ZA-2120 | Retroreflective Thermoplastic Yellow, Traffic lines | 2027-03-08 → 2027-04-24 (+47d) | 2027-03-28 → 2027-05-09 (+42d) |  | 29d → -46d |  |  |
| 7 | **Traffic Signage** | 2027-03-29 → 2027-05-10 (+42d) | 2027-04-20 → 2027-06-07 (+48d) |  |  |  |  |
| SDR-2-CON-RW-ZA-2130 | Single post-Traffic signs Installation | 2027-03-29 → 2027-05-10 (+42d) | 2027-04-20 → 2027-06-07 (+48d) |  | 29d → -46d | SDR-2-CON-RW-ZA-2120, SDR-2-CON-RW-ZA-3190 → SDR-2-CON-RW-ZA-2120, SDR-2-CON-RW-ZA-2040 | resources SIC- Cost [5283.72]; Un-Skilled Labor [19.11 h]; Supervisor [19.11 h]; Skilled Labor [19.11 h] → SIC- Cost [5283.73]; Un-Skilled Labor [19.11 h]; Supervisor [19.11 h]; Skilled Labor [19.11 h] |
| 6 | **ROAD WORKS IN ( PH2-A-MCF0 )** |  | 2027-04-17 → 2027-05-30 (+43d) |  |  |  |  |
| SDR-2-CON-RW-ZA-2140 | Roadway Excavation and cuttings |  |  |  |  | SDR-2-PRO-DES-C-1000, SDR-2-CON-RW-ZA-2000 SS+3d → SDR-2-CON-RW-ZA-2000, SDR-2-PRO-DES-C-1000 | resources SIC- Cost [1563524]; Excavator [73 h]; Excavator Operator [82.84 h]; Dumper Operator [143.3 h]; Dumper Truck [150 h]; Grader [137 h]; Grader Operator [143.3 h]; Loader [82 h]; Loader Operator [143.3 h]; Un-Skilled Labor [10.03 h]; Supervisor [10.03 h]; Skilled Labor [10.03 h] → SIC- Cost [23081.5]; Excavator [73 h]; Excavator Operator [82.84 h]; Dumper Operator [143.3 h]; Dumper Truck [150 h]; Grader [137 h]; Grader Operator [143.3 h]; Loader [82 h]; Loader Operator [143.3 h]; Un-Skilled Labor [10.03 h]; Supervisor [10.03 h]; Skilled Labor [10.03 h] |
| SDR-2-CON-RW-ZA-3200 | Embankments to the Road 1 Layer |  |  |  |  | SDR-2-CON-RW-ZA-2140 → SDR-2-CON-RW-ZA-2140 FS+6d | resources SIC- Cost; Excavator [20 h]; Excavator Operator [65.32 h]; Dumper Operator [186.25 h]; Dumper Truck [170.75 h]; Grader [75 h]; Grader Operator [186.25 h]; Loader [80 h]; Loader Operator [80.22 h]; Un-Skilled Labor [150.16 h]; Supervisor [70.15 h]; Skilled Labor [70.15 h] → SIC- Cost [109447]; Excavator [20 h]; Excavator Operator [65.32 h]; Dumper Operator [186.25 h]; Dumper Truck [170.75 h]; Grader [75 h]; Grader Operator [186.25 h]; Loader [80 h]; Loader Operator [80.22 h]; Un-Skilled Labor [150.16 h]; Supervisor [70.15 h]; Skilled Labor [70.15 h] |
| SDR-2-CON-RW-ZA-3210 | Embankments to the Road 2 Layer |  |  |  |  |  | resources SIC- Cost; Excavator [20 h]; Excavator Operator [186.25 h]; Dumper Operator [163.75 h]; Dumper Truck [170.75 h]; Grader [75 h]; Grader Operator [186.25 h]; Loader [51.46 h]; Loader Operator [50.09 h]; Un-Skilled Labor [57.79 h]; Supervisor [38.53 h]; Skilled Labor [57.79 h] → SIC- Cost [125082]; Excavator [20 h]; Excavator Operator [186.25 h]; Dumper Operator [163.75 h]; Dumper Truck [170.75 h]; Grader [75 h]; Grader Operator [186.25 h]; Loader [51.46 h]; Loader Operator [50.09 h]; Un-Skilled Labor [57.79 h]; Supervisor [38.53 h]; Skilled Labor [57.79 h] |
| SDR-2-CON-RW-ZA-3220 | Embankments to the Road 3 Layer |  |  |  |  |  | resources SIC- Cost; Excavator [20 h]; Excavator Operator [186.19 h]; Dumper Operator [186.25 h]; Dumper Truck [170.75 h]; Grader [75 h]; Grader Operator [186.19 h]; Loader [40 h]; Loader Operator [191.07 h]; Un-Skilled Labor [191.08 h]; Supervisor [191.08 h]; Skilled Labor [191.08 h] → SIC- Cost [453422]; Excavator [20 h]; Excavator Operator [186.19 h]; Dumper Operator [186.25 h]; Dumper Truck [170.75 h]; Grader [75 h]; Grader Operator [186.19 h]; Loader [40 h]; Loader Operator [191.07 h]; Un-Skilled Labor [191.08 h]; Supervisor [191.08 h]; Skilled Labor [191.08 h] |
| SDR-2-CON-RW-ZA-2150 | Embankments to the Road 4 Layer |  |  |  |  |  | resources SIC- Cost; Excavator [20 h]; Excavator Operator [60.1 h]; Dumper Operator [186.19 h]; Dumper Truck [73.16 h]; Grader [75 h]; Grader Operator [186.25 h]; Loader [43.16 h]; Loader Operator [191.07 h]; Un-Skilled Labor [191.08 h]; Supervisor [191.08 h]; Skilled Labor [191.08 h] → SIC- Cost [875574]; Excavator [20 h]; Excavator Operator [60.1 h]; Dumper Operator [186.19 h]; Dumper Truck [73.16 h]; Grader [75 h]; Grader Operator [186.25 h]; Loader [43.16 h]; Loader Operator [191.07 h]; Un-Skilled Labor [191.08 h]; Supervisor [191.08 h]; Skilled Labor [191.08 h] |
| SDR-2-CON-RW-ZA-2160 | Subgrade layer works |  |  |  |  |  | resources SIC- Cost; Excavator [6 h]; Excavator Operator [85.98 h]; Dumper Operator [85.98 h]; Dumper Truck [90 h]; Grader [90 h]; Grader Operator [85.98 h]; Loader [20 h]; Loader Operator [85.98 h]; Un-Skilled Labor [38.53 h]; Supervisor [9.63 h]; Skilled Labor [38.53 h]; Water Tanker [40 h]; Water Tanker Operator [38.53 h] → SIC- Cost [1025846]; Excavator [6 h]; Excavator Operator [85.98 h]; Dumper Operator [85.98 h]; Dumper Truck [90 h]; Grader [90 h]; Grader Operator [85.98 h]; Loader [20 h]; Loader Operator [85.98 h]; Un-Skilled Labor [38.53 h]; Supervisor [9.63 h]; Skilled Labor [38.53 h]; Water Tanker [40 h]; Water Tanker Operator [38.53 h] |
| SDR-2-CON-RW-ZA-3230 | Embankments to the Plot 1 Layer |  |  |  |  |  | resources SIC- Cost; Excavator [15 h]; Excavator Operator [40.74 h]; Dumper Operator [40.74 h]; Dumper Truck [30 h]; Grader [30 h]; Grader Operator [40.74 h]; Loader [88.4 h]; Loader Operator [40.74 h]; Un-Skilled Labor [40.74 h]; Supervisor [40.74 h]; Skilled Labor [40.74 h] → SIC- Cost [39546.3]; Excavator [15 h]; Excavator Operator [40.74 h]; Dumper Operator [40.74 h]; Dumper Truck [30 h]; Grader [30 h]; Grader Operator [40.74 h]; Loader [88.4 h]; Loader Operator [40.74 h]; Un-Skilled Labor [40.74 h]; Supervisor [40.74 h]; Skilled Labor [40.74 h] |
| SDR-2-CON-RW-ZA-2170 | Plot Excavation for cuttings (all types of soil) |  |  |  |  | SDR-2-CON-RW-ZA-2140 → SDR-2-CON-RW-ZA-2140, SDR-2-CON-RW-ZA-2160, SDR-2-CON-RW-ZA-3460 |  |
| SDR-2-CON-RW-ZA-2180 | Embankments to the Plot 2 Layer |  |  |  |  | SDR-2-CON-RW-ZA-3230 FS+1d, SDR-2-CON-RW-ZA-3110, SDR-2-CON-RW-ZA-1900 SS → SDR-2-CON-RW-ZA-3230 FS+1d, SDR-2-CON-RW-ZA-1900, SDR-2-CON-RW-ZA-3110 | resources SIC- Cost; Excavator [15 h]; Excavator Operator [40.74 h]; Dumper Operator [40.74 h]; Dumper Truck [292 h]; Grader [30 h]; Grader Operator [40.74 h]; Loader [21.14 h]; Loader Operator [40.74 h]; Un-Skilled Labor [40.74 h]; Supervisor [40.74 h]; Skilled Labor [40.74 h] → SIC- Cost [39546.3]; Excavator [15 h]; Excavator Operator [40.74 h]; Dumper Operator [40.74 h]; Dumper Truck [292 h]; Grader [30 h]; Grader Operator [40.74 h]; Loader [21.14 h]; Loader Operator [40.74 h]; Un-Skilled Labor [40.74 h]; Supervisor [40.74 h]; Skilled Labor [40.74 h] |
| 8 | **Demolition Work** | 2026-12-02 → 2027-01-11 (+40d) | 2026-12-03 → 2027-01-12 (+40d) |  |  |  |  |
| SDR-2-CON-RW-ZA-2200 | Milling of wearing course | 2026-12-02 → 2027-01-11 (+40d) | 2026-12-03 → 2027-01-12 (+40d) |  | 32d → -39d |  | resources SIC- Cost [28300.2]; Un-Skilled Labor [57.32 h]; Supervisor [57.32 h]; Skilled Labor [57.32 h]; Water Tanker [40 h]; Water Tanker Operator [57.32 h]; Road Milling Machine [60 h]; Road Milling Machine Operator [60 h]; Sweeper Machine [40 h]; Sweeper Machine Operator [57.32 h] → SIC- Cost [29076.6]; Un-Skilled Labor [57.32 h]; Supervisor [57.32 h]; Skilled Labor [57.32 h]; Water Tanker [40 h]; Water Tanker Operator [57.32 h]; Road Milling Machine [60 h]; Road Milling Machine Operator [60 h]; Sweeper Machine [40 h]; Sweeper Machine Operator [57.32 h] |
| 3 | **Asphalt Works** |  | 2026-12-27 → 2027-02-02 (+37d) |  |  |  |  |
| SDR-2-CON-RW-ZA-2210 | Asphalt works 1st Layer with MC-01 |  | 2026-12-13 → 2027-01-19 (+37d) |  | 32d → -39d |  |  |
| SDR-2-CON-RW-ZA-2220 | Asphalt works 2nd layer with RC-02 | 2026-12-14 → 2027-01-20 (+37d) | 2026-12-27 → 2027-02-02 (+37d) |  | 32d → -39d |  |  |
| 4 | **Kerbstone Installation** | 2026-11-09 → 2026-11-29 (+20d) | 2027-01-20 → 2027-02-28 (+39d) |  |  |  |  |
| SDR-2-CON-RW-ZA-3480 | Kerbstone Installation "all Types" Part 1 | 2026-11-09 → 2026-11-29 (+20d) | 2026-11-29 → 2026-12-19 (+20d) |  | 36d → -7d |  | resources SIC- Cost; Un-Skilled Labor [60.34 h]; Supervisor [10.06 h]; Skilled Labor [60.34 h] → SIC- Cost [32835.8]; Un-Skilled Labor [60.34 h]; Supervisor [10.06 h]; Skilled Labor [60.34 h] |
| SDR-2-CON-RW-ZA-2230 | Kerbstone Installation "all Types" Part 2 | 2026-12-28 → 2027-02-03 (+37d) | 2027-01-20 → 2027-02-28 (+39d) |  | 32d → -39d |  | resources SIC- Cost; Un-Skilled Labor [60.34 h]; Supervisor [10.06 h]; Skilled Labor [60.34 h] → SIC- Cost [254069]; Un-Skilled Labor [60.34 h]; Supervisor [10.06 h]; Skilled Labor [60.34 h] |
| 5 | **Interlock Installation** | 2027-01-21 → 2027-03-01 (+39d) | 2027-02-14 → 2027-03-29 (+43d) |  |  |  |  |
| SDR-2-CON-RW-ZA-2240 | Interlock Installation | 2027-01-21 → 2027-03-01 (+39d) | 2027-02-14 → 2027-03-29 (+43d) |  | 32d → -39d |  |  |
| 6 | **Road Marking** | 2027-02-15 → 2027-03-30 (+43d) | 2027-03-24 → 2027-05-01 (+38d) |  |  |  |  |
| SDR-2-CON-RW-ZA-2250 | Retroreflective Thermoplastic White Traffic lines | 2027-02-15 → 2027-03-30 (+43d) | 2027-03-03 → 2027-04-14 (+42d) |  | 32d → -39d |  |  |
| SDR-2-CON-RW-ZA-2260 | Retroreflective Thermoplastic Yellow, Traffic lines | 2027-03-04 → 2027-04-15 (+42d) | 2027-03-24 → 2027-05-01 (+38d) |  | 32d → -39d |  |  |
| 7 | **Traffic Signage** | 2027-03-25 → 2027-05-02 (+38d) | 2027-04-17 → 2027-05-30 (+43d) |  |  |  |  |
| SDR-2-CON-RW-ZA-2270 | Single post-Traffic signs Installation | 2027-03-25 → 2027-05-02 (+38d) | 2027-04-17 → 2027-05-30 (+43d) |  | 32d → -39d |  | resources SIC- Cost [5283.72]; Un-Skilled Labor [19.11 h]; Supervisor [19.11 h]; Skilled Labor [19.11 h] → SIC- Cost [5283.73]; Un-Skilled Labor [19.11 h]; Supervisor [19.11 h]; Skilled Labor [19.11 h] |
| 9 | **ROAD WORKS IN ( PH2-A-MCG0 )** |  | 2027-03-14 → 2027-05-12 (+59d) |  |  |  |  |
| SDR-2-CON-RW-ZA-2280 | Roadway Excavation and cuttings |  |  |  |  | SDR-2-CON-RW-ZA-2140 SS → SDR-2-CON-RW-ZA-2140 SS+4d | resources SIC- Cost [1563524]; Excavator [20 h]; Excavator Operator [82.84 h]; Dumper Operator [143.3 h]; Dumper Truck [150 h]; Grader [70 h]; Grader Operator [143.3 h]; Loader [82 h]; Loader Operator [143.3 h]; Un-Skilled Labor [10.03 h]; Supervisor [10.03 h]; Skilled Labor [10.03 h] → SIC- Cost [23081.5]; Excavator [20 h]; Excavator Operator [82.84 h]; Dumper Operator [143.3 h]; Dumper Truck [150 h]; Grader [70 h]; Grader Operator [143.3 h]; Loader [82 h]; Loader Operator [143.3 h]; Un-Skilled Labor [10.03 h]; Supervisor [10.03 h]; Skilled Labor [10.03 h] |
| SDR-2-CON-RW-ZA-3240 | Embankments to the Road 1 Layer |  |  |  |  | SDR-2-CON-RW-ZA-2280 → SDR-2-CON-RW-ZA-2280 FS+1d | resources SIC- Cost; Excavator [20 h]; Excavator Operator [193.45 h]; Dumper Operator [193.45 h]; Dumper Truck [170.75 h]; Grader [75 h]; Grader Operator [193.45 h]; Loader [80 h]; Loader Operator [72.53 h]; Un-Skilled Labor [193.45 h]; Supervisor [62.45 h]; Skilled Labor [62.45 h] → SIC- Cost [109447]; Excavator [20 h]; Excavator Operator [193.45 h]; Dumper Operator [193.45 h]; Dumper Truck [170.75 h]; Grader [75 h]; Grader Operator [193.45 h]; Loader [80 h]; Loader Operator [72.53 h]; Un-Skilled Labor [193.45 h]; Supervisor [62.45 h]; Skilled Labor [62.45 h] |
| SDR-2-CON-RW-ZA-3250 | Embankments to the Road 2 Layer |  |  |  |  |  | resources SIC- Cost; Excavator [20 h]; Excavator Operator [19.26 h]; Dumper Operator [193.45 h]; Dumper Truck [170.75 h]; Grader [75 h]; Grader Operator [72.24 h]; Loader [49.9 h]; Loader Operator [48.16 h]; Un-Skilled Labor [57.79 h]; Supervisor [19.26 h]; Skilled Labor [57.79 h] → SIC- Cost [125082]; Excavator [20 h]; Excavator Operator [19.26 h]; Dumper Operator [193.45 h]; Dumper Truck [170.75 h]; Grader [75 h]; Grader Operator [72.24 h]; Loader [49.9 h]; Loader Operator [48.16 h]; Un-Skilled Labor [57.79 h]; Supervisor [19.26 h]; Skilled Labor [57.79 h] |
| SDR-2-CON-RW-ZA-2290 | Embankments to the Road 4 Layer |  |  |  |  |  | resources SIC- Cost; Excavator [20 h]; Excavator Operator [79.07 h]; Dumper Operator [193.45 h]; Dumper Truck [72.27 h]; Grader [79.57 h]; Grader Operator [193.45 h]; Loader [42.27 h]; Loader Operator [193.45 h]; Un-Skilled Labor [193.45 h]; Supervisor [193.45 h]; Skilled Labor [193.45 h] → SIC- Cost [875574]; Excavator [20 h]; Excavator Operator [79.07 h]; Dumper Operator [193.45 h]; Dumper Truck [72.27 h]; Grader [79.57 h]; Grader Operator [193.45 h]; Loader [42.27 h]; Loader Operator [193.45 h]; Un-Skilled Labor [193.45 h]; Supervisor [193.45 h]; Skilled Labor [193.45 h] |

| ID | Task | Start | Finish | Complete | Total float | Predecessors | Other |
| --- | --- | --- | --- | --- | --- | --- | --- |
| SDR-2-CON-RW-ZA-3260 | Embankments to the Road 3 Layer |  |  |  |  |  | resources SIC- Cost; Excavator [20 h]; Excavator Operator [19.26 h]; Dumper Operator [163.75 h]; Dumper Truck [170.75 h]; Grader [75 h]; Grader Operator [72.24 h]; Loader [40 h]; Loader Operator [38.53 h]; Un-Skilled Labor [77.06 h]; Supervisor [38.53 h]; Skilled Labor [77.06 h] → SIC- Cost [453422]; Excavator [20 h]; Excavator Operator [19.26 h]; Dumper Operator [163.75 h]; Dumper Truck [170.75 h]; Grader [75 h]; Grader Operator [72.24 h]; Loader [40 h]; Loader Operator [38.53 h]; Un-Skilled Labor [77.06 h]; Supervisor [38.53 h]; Skilled Labor [77.06 h] |
| SDR-2-CON-RW-ZA-2300 | Subgrade layer works |  |  |  |  |  | resources SIC- Cost; Excavator [13 h]; Excavator Operator [12.52 h]; Dumper Operator [67.43 h]; Dumper Truck [70 h]; Grader [50 h]; Grader Operator [48.16 h]; Loader [20 h]; Loader Operator [19.26 h]; Un-Skilled Labor [38.53 h]; Supervisor [9.63 h]; Skilled Labor [38.53 h]; Water Tanker [90 h]; Water Tanker Operator [85.98 h] → SIC- Cost [1025846]; Excavator [13 h]; Excavator Operator [12.52 h]; Dumper Operator [67.43 h]; Dumper Truck [70 h]; Grader [50 h]; Grader Operator [48.16 h]; Loader [20 h]; Loader Operator [19.26 h]; Un-Skilled Labor [38.53 h]; Supervisor [9.63 h]; Skilled Labor [38.53 h]; Water Tanker [90 h]; Water Tanker Operator [85.98 h] |
| SDR-2-CON-RW-ZA-3270 | Embankments to the Plot 1 Layer |  |  |  |  | SDR-2-CON-RW-ZA-2310 SS → SDR-2-CON-RW-ZA-2310 | resources SIC- Cost; Excavator [22.43 h]; Excavator Operator [22.15 h]; Dumper Operator [57.79 h]; Dumper Truck [60 h]; Grader [60 h]; Grader Operator [57.79 h]; Loader [36.57 h]; Loader Operator [34.68 h]; Un-Skilled Labor [38.53 h]; Supervisor [9.63 h]; Skilled Labor [38.53 h] → SIC- Cost [39546.3]; Excavator [22.43 h]; Excavator Operator [22.15 h]; Dumper Operator [57.79 h]; Dumper Truck [60 h]; Grader [60 h]; Grader Operator [57.79 h]; Loader [36.57 h]; Loader Operator [34.68 h]; Un-Skilled Labor [38.53 h]; Supervisor [9.63 h]; Skilled Labor [38.53 h] |
| SDR-2-CON-RW-ZA-2310 | Plot Excavation for cuttings (all types of soil) |  |  |  |  | SDR-2-CON-RW-ZA-2280, SDR-2-CON-RW-ZA-2300 FF → SDR-2-CON-RW-ZA-2280, SDR-2-CON-RW-ZA-2300 FS+5d |  |
| SDR-2-CON-RW-ZA-2320 | Embankments to the Plot 2 Layer |  |  |  |  | SDR-2-CON-RW-ZA-3270, SDR-2-CON-RW-ZA-3270 FF, SDR-2-CON-RW-ZA-3230, SDR-2-CON-RW-ZA-2040 FF → SDR-2-CON-RW-ZA-3270 FS+5d, SDR-2-CON-RW-ZA-3270 FF, SDR-2-CON-RW-ZA-3230, SDR-2-CON-RW-ZA-3190 | resources SIC- Cost; Excavator [16.75 h]; Excavator Operator [21.19 h]; Dumper Operator [57.79 h]; Dumper Truck [60 h]; Grader [60 h]; Grader Operator [57.79 h]; Loader [22.29 h]; Loader Operator [22.15 h]; Un-Skilled Labor [38.53 h]; Supervisor [9.63 h]; Skilled Labor [38.53 h] → SIC- Cost [39546.3]; Excavator [16.75 h]; Excavator Operator [21.19 h]; Dumper Operator [57.79 h]; Dumper Truck [60 h]; Grader [60 h]; Grader Operator [57.79 h]; Loader [22.29 h]; Loader Operator [22.15 h]; Un-Skilled Labor [38.53 h]; Supervisor [9.63 h]; Skilled Labor [38.53 h] |
| 8 | **Demolition Work** | 2026-11-09 → 2026-11-29 (+20d) | 2026-11-10 → 2026-11-30 (+20d) |  |  |  |  |
| SDR-2-CON-RW-ZA-2340 | Milling of wearing course | 2026-11-09 → 2026-11-29 (+20d) | 2026-11-10 → 2026-11-30 (+20d) |  | 36d → 13d |  | resources SIC- Cost [28300.2]; Un-Skilled Labor [57.32 h]; Supervisor [57.32 h]; Skilled Labor [57.32 h]; Water Tanker [40 h]; Water Tanker Operator [57.32 h]; Road Milling Machine [60 h]; Road Milling Machine Operator [60 h]; Sweeper Machine [40 h]; Sweeper Machine Operator [57.32 h] → SIC- Cost [29076.6]; Un-Skilled Labor [57.32 h]; Supervisor [57.32 h]; Skilled Labor [57.32 h]; Water Tanker [40 h]; Water Tanker Operator [57.32 h]; Road Milling Machine [60 h]; Road Milling Machine Operator [60 h]; Sweeper Machine [40 h]; Sweeper Machine Operator [57.32 h] |
| 3 | **Asphalt Works** |  | 2026-11-23 → 2027-01-21 (+59d) |  |  |  |  |
| SDR-2-CON-RW-ZA-2360 | Asphalt works 2nd layer with RC-02 | 2026-11-11 → 2027-01-10 (+60d) | 2026-11-23 → 2027-01-21 (+59d) |  | 51d → -5d |  |  |
| 4 | **Kerbstone Installation** | 2026-11-09 → 2026-11-14 (+5d) | 2026-12-17 → 2027-02-15 (+60d) |  |  |  |  |
| SDR-2-CON-RW-ZA-3490 | Kerbstone Installation "all Types" Part 1 | 2026-11-09 → 2026-11-14 A (+5d) | 2026-11-29 → 2026-12-16 (+17d) | 0% → 12% | 20d → -1d |  | resources SIC- Cost [286905]; Un-Skilled Labor [60.34 h]; Supervisor [10.06 h]; Skilled Labor [60.34 h] → SIC- Cost [32835.8]; Un-Skilled Labor [60.34 h]; Supervisor [10.06 h]; Skilled Labor [60.34 h] |
| SDR-2-CON-RW-ZA-2370 | Kerbstone Installation "all Types" Part 2 | 2026-11-24 → 2027-01-23 (+60d) | 2026-12-17 → 2027-02-15 (+60d) |  | 51d → -5d |  | resources SIC- Cost [286905]; Un-Skilled Labor [60.34 h]; Supervisor [10.06 h]; Skilled Labor [60.34 h] → SIC- Cost [254069]; Un-Skilled Labor [60.34 h]; Supervisor [10.06 h]; Skilled Labor [60.34 h] |
| 5 | **Interlock Installation** | 2026-12-19 → 2027-02-16 (+59d) | 2027-01-11 → 2027-03-17 (+65d) |  |  |  |  |
| SDR-2-CON-RW-ZA-2380 | Interlock Installation | 2026-12-19 → 2027-02-16 (+59d) | 2027-01-11 → 2027-03-17 (+65d) |  | 52d → -5d |  |  |
| 6 | **Road Marking** | 2027-01-12 → 2027-03-18 (+65d) | 2027-02-13 → 2027-04-19 (+65d) |  |  |  |  |
| SDR-2-CON-RW-ZA-2390 | Retroreflective Thermoplastic White Traffic lines | 2027-01-12 → 2027-03-18 (+65d) | 2027-01-27 → 2027-04-03 (+66d) |  | 52d → -5d |  |  |
| SDR-2-CON-RW-ZA-2400 | Retroreflective Thermoplastic Yellow, Traffic lines | 2027-01-28 → 2027-04-04 (+66d) | 2027-02-13 → 2027-04-19 (+65d) |  | 52d → -5d |  |  |
| 7 | **Traffic Signage** | 2027-02-14 → 2027-04-20 (+65d) | 2027-03-14 → 2027-05-12 (+59d) |  |  |  |  |
| SDR-2-CON-RW-ZA-2410 | Single post-Traffic signs Installation | 2027-02-14 → 2027-04-20 (+65d) | 2027-03-14 → 2027-05-12 (+59d) |  | 52d → -5d |  | resources SIC- Cost [5283.72]; Un-Skilled Labor [19.11 h]; Supervisor [19.11 h]; Skilled Labor [19.11 h] → SIC- Cost [5283.73]; Un-Skilled Labor [19.11 h]; Supervisor [19.11 h]; Skilled Labor [19.11 h] |
| 10 | **ROAD WORKS IN ( PH2-A-MCH0 )** |  | 2027-04-25 → 2027-05-23 (+28d) |  |  |  |  |
| SDR-2-CON-RW-ZA-2420 | Roadway Excavation and cuttings |  |  |  |  | SDR-2-CON-RW-ZA-2280 SS → SDR-2-CON-RW-ZA-2280 SS+2d | resources SIC- Cost [1563524]; Excavator [20 h]; Excavator Operator [92.92 h]; Dumper Operator [143.3 h]; Dumper Truck [150 h]; Grader [70 h]; Grader Operator [143.3 h]; Loader [82 h]; Loader Operator [143.3 h]; Un-Skilled Labor [10.03 h]; Supervisor [10.03 h]; Skilled Labor [10.03 h] → SIC- Cost [23081.5]; Excavator [20 h]; Excavator Operator [92.92 h]; Dumper Operator [143.3 h]; Dumper Truck [150 h]; Grader [70 h]; Grader Operator [143.3 h]; Loader [82 h]; Loader Operator [143.3 h]; Un-Skilled Labor [10.03 h]; Supervisor [10.03 h]; Skilled Labor [10.03 h] |
| SDR-2-CON-RW-ZA-3280 | Embankments to the Road 1 Layer |  |  |  |  | SDR-2-CON-RW-ZA-2420 → SDR-2-CON-RW-ZA-2420 FS+3d | resources SIC- Cost; Excavator [70 h]; Excavator Operator [543.17 h]; Dumper Operator [543.17 h]; Dumper Truck [356.67 h]; Grader [193.33 h]; Grader Operator [543.17 h]; Loader [80 h]; Loader Operator [140.08 h]; Un-Skilled Labor [434.23 h]; Supervisor [59.46 h]; Skilled Labor [69.53 h] → SIC- Cost [109447]; Excavator [70 h]; Excavator Operator [543.17 h]; Dumper Operator [543.17 h]; Dumper Truck [356.67 h]; Grader [193.33 h]; Grader Operator [543.17 h]; Loader [80 h]; Loader Operator [140.08 h]; Un-Skilled Labor [434.23 h]; Supervisor [59.46 h]; Skilled Labor [69.53 h] |
| SDR-2-CON-RW-ZA-3290 | Embankments to the Road 2 Layer |  |  |  |  |  | resources SIC- Cost; Excavator [70 h]; Excavator Operator [67.43 h]; Dumper Operator [543.17 h]; Dumper Truck [356.67 h]; Grader [117.14 h]; Grader Operator [113.66 h]; Loader [75.39 h]; Loader Operator [72.24 h]; Un-Skilled Labor [115.59 h]; Supervisor [57.79 h]; Skilled Labor [115.59 h] → SIC- Cost [125082]; Excavator [70 h]; Excavator Operator [67.43 h]; Dumper Operator [543.17 h]; Dumper Truck [356.67 h]; Grader [117.14 h]; Grader Operator [113.66 h]; Loader [75.39 h]; Loader Operator [72.24 h]; Un-Skilled Labor [115.59 h]; Supervisor [57.79 h]; Skilled Labor [115.59 h] |
| SDR-2-CON-RW-ZA-3300 | Embankments to the Road 3 Layer |  |  |  |  |  | resources SIC- Cost; Excavator [70 h]; Excavator Operator [543.17 h]; Dumper Operator [543.17 h]; Dumper Truck [356.67 h]; Grader [250 h]; Grader Operator [543.17 h]; Loader [40 h]; Loader Operator [543.17 h]; Un-Skilled Labor [543.17 h]; Supervisor [543.17 h]; Skilled Labor [543.17 h] → SIC- Cost [453422]; Excavator [70 h]; Excavator Operator [543.17 h]; Dumper Operator [543.17 h]; Dumper Truck [356.67 h]; Grader [250 h]; Grader Operator [543.17 h]; Loader [40 h]; Loader Operator [543.17 h]; Un-Skilled Labor [543.17 h]; Supervisor [543.17 h]; Skilled Labor [543.17 h] |
| SDR-2-CON-RW-ZA-2430 | Embankments to the Road 4 Layer |  |  |  |  |  | resources SIC- Cost; Excavator [70 h]; Excavator Operator [350.53 h]; Dumper Operator [543.17 h]; Dumper Truck [156.67 h]; Grader [62.38 h]; Grader Operator [543.17 h]; Loader [23.81 h]; Loader Operator [543.17 h]; Un-Skilled Labor [543.17 h]; Supervisor [543.17 h]; Skilled Labor [543.17 h] → SIC- Cost [875574]; Excavator [70 h]; Excavator Operator [350.53 h]; Dumper Operator [543.17 h]; Dumper Truck [156.67 h]; Grader [62.38 h]; Grader Operator [543.17 h]; Loader [23.81 h]; Loader Operator [543.17 h]; Un-Skilled Labor [543.17 h]; Supervisor [543.17 h]; Skilled Labor [543.17 h] |
| 11 | **Subgrade** |  | 2026-11-17 → 2026-12-05 (+18d) |  |  |  |  |
| SDR-2-CON-RW-ZA-2440 | Subgrade layer works |  | 2026-11-17 → 2026-12-05 (+18d) |  | 8d → -24d |  |  |
| 9 | **Earth Works Plot** |  | 2026-12-03 → 2026-12-19 (+16d) |  |  |  |  |
| SDR-2-CON-RW-ZA-2450 | Plot Excavation for cuttings (all types of soil) |  |  |  |  | SDR-2-CON-RW-ZA-2420 → SDR-2-CON-RW-ZA-2420, SDR-2-CON-RW-ZA-2440 |  |
| SDR-2-CON-RW-ZA-3310 | Embankments to the Plot 1 Layer |  | 2026-11-09 → 2026-12-12 (+33d) |  | 32d → 6d |  | resources SIC- Cost; Excavator [14.24 h]; Excavator Operator [95.54 h]; Dumper Operator [95.54 h]; Dumper Truck [50 h]; Grader [50 h]; Grader Operator [95.54 h]; Loader [50 h]; Loader Operator [95.54 h]; Un-Skilled Labor [67.9 h]; Supervisor [67.9 h]; Skilled Labor [67.9 h] → SIC- Cost [39546.3]; Excavator [14.24 h]; Excavator Operator [95.54 h]; Dumper Operator [95.54 h]; Dumper Truck [50 h]; Grader [50 h]; Grader Operator [95.54 h]; Loader [50 h]; Loader Operator [95.54 h]; Un-Skilled Labor [67.9 h]; Supervisor [67.9 h]; Skilled Labor [67.9 h] |
| SDR-2-CON-RW-ZA-2460 | Embankments to the Plot 2 Layer |  | 2026-12-03 → 2026-12-19 (+16d) |  | 32d → 21d |  | resources SIC- Cost; Excavator [10.27 h]; Excavator Operator [14.45 h]; Dumper Operator [48.16 h]; Dumper Truck [50 h]; Grader [318.57 h]; Grader Operator [48.16 h]; Loader [22.11 h]; Loader Operator [21.19 h]; Un-Skilled Labor [38.53 h]; Supervisor [9.63 h]; Skilled Labor [38.53 h] → SIC- Cost [39546.3]; Excavator [10.27 h]; Excavator Operator [14.45 h]; Dumper Operator [48.16 h]; Dumper Truck [50 h]; Grader [318.57 h]; Grader Operator [48.16 h]; Loader [22.11 h]; Loader Operator [21.19 h]; Un-Skilled Labor [38.53 h]; Supervisor [9.63 h]; Skilled Labor [38.53 h] |
| 2 | **Base Course** | 2026-11-18 → 2026-12-12 (+24d) | 2026-12-05 → 2026-12-28 (+23d) |  |  |  |  |
| SDR-2-CON-RW-ZA-2470 | Aggregate base course layer | 2026-11-18 → 2026-12-12 (+24d) | 2026-12-05 → 2026-12-28 (+23d) |  | 9d → -24d | SDR-2-CON-RW-ZA-2440 → SDR-2-CON-RW-ZA-2440 FS+5d | resources SIC- Cost; Dumper Operator [85.98 h]; Dumper Truck [50 h]; Grader [50 h]; Grader Operator [48.16 h]; Loader [20 h]; Loader Operator [19.26 h]; Un-Skilled Labor [38.53 h]; Supervisor [9.63 h]; Skilled Labor [38.53 h]; Water Tanker [20 h]; Water Tanker Operator [19.26 h] → SIC- Cost [120756]; Dumper Operator [85.98 h]; Dumper Truck [50 h]; Grader [50 h]; Grader Operator [48.16 h]; Loader [20 h]; Loader Operator [19.26 h]; Un-Skilled Labor [38.53 h]; Supervisor [9.63 h]; Skilled Labor [38.53 h]; Water Tanker [20 h]; Water Tanker Operator [19.26 h] |
| 8 | **Demolition Work** | 2026-12-06 → 2026-12-29 (+23d) | 2026-12-07 → 2026-12-30 (+23d) |  |  |  |  |
| SDR-2-CON-RW-ZA-2480 | Milling of wearing course | 2026-12-06 → 2026-12-29 (+23d) | 2026-12-07 → 2026-12-30 (+23d) |  | 9d → -24d |  | resources SIC- Cost; Un-Skilled Labor [57.32 h]; Supervisor [57.32 h]; Skilled Labor [57.32 h]; Water Tanker [40 h]; Water Tanker Operator [38.53 h]; Road Milling Machine [60 h]; Road Milling Machine Operator [60 h]; Sweeper Machine [60 h]; Sweeper Machine Operator [57.32 h] → SIC- Cost [29076.6]; Un-Skilled Labor [57.32 h]; Supervisor [57.32 h]; Skilled Labor [57.32 h]; Water Tanker [40 h]; Water Tanker Operator [38.53 h]; Road Milling Machine [60 h]; Road Milling Machine Operator [60 h]; Sweeper Machine [60 h]; Sweeper Machine Operator [57.32 h] |
| 3 | **Asphalt Works** | 2026-12-09 → 2026-12-31 (+22d) | 2027-01-04 → 2027-01-26 (+22d) |  |  |  |  |
| SDR-2-CON-RW-ZA-2490 | Asphalt works 1st Layer with MC-01 | 2026-12-09 → 2026-12-31 (+22d) | 2026-12-22 → 2027-01-13 (+22d) |  | 8d → -24d |  |  |
| SDR-2-CON-RW-ZA-2500 | Asphalt works 2nd layer with RC-02 | 2026-12-23 → 2027-01-14 (+22d) | 2027-01-04 → 2027-01-26 (+22d) |  | 8d → -24d |  | resources SIC- Cost; Dumper Operator [60.34 h]; Dumper Truck [70 h]; Supervisor [10.06 h]; Sweeper Machine [40 h]; Sweeper Machine Operator; Pneumatic Tire Roller [40 h]; Pneumatic Roller Operator [66.88 h]; Asphalt Paver [35 h]; Asphalt Paver Operator [35.2 h] → SIC- Cost [299797]; Dumper Operator [60.34 h]; Dumper Truck [70 h]; Supervisor [10.06 h]; Sweeper Machine [40 h]; Sweeper Machine Operator; Pneumatic Tire Roller [40 h]; Pneumatic Roller Operator [66.88 h]; Asphalt Paver [35 h]; Asphalt Paver Operator [35.2 h] |
| 4 | **Kerbstone Installation** | 2026-11-18 → 2026-12-06 (+18d) | 2027-01-28 → 2027-02-20 (+23d) |  |  |  |  |
| SDR-2-CON-RW-ZA-3500 | Kerbstone Installation "all Types" Part 1 | 2026-11-18 → 2026-12-06 (+18d) | 2026-12-08 → 2026-12-26 (+18d) |  | 8d → -20d |  | resources SIC- Cost [286905]; Un-Skilled Labor [38.53 h]; Supervisor [10.06 h]; Skilled Labor [38.53 h] → SIC- Cost [32835.8]; Un-Skilled Labor [38.53 h]; Supervisor [10.06 h]; Skilled Labor [38.53 h] |
| SDR-2-CON-RW-ZA-2510 | Kerbstone Installation "all Types" Part 2 | 2027-01-05 → 2027-01-27 (+22d) | 2027-01-28 → 2027-02-20 (+23d) |  | 8d → -24d |  | resources SIC- Cost [286905]; Un-Skilled Labor [38.53 h]; Supervisor [10.06 h]; Skilled Labor [38.53 h] → SIC- Cost [254069]; Un-Skilled Labor [38.53 h]; Supervisor [10.06 h]; Skilled Labor [38.53 h] |
| 5 | **Interlock Installation** | 2027-01-30 → 2027-02-21 (+22d) | 2027-02-23 → 2027-03-22 (+27d) |  |  |  |  |
| SDR-2-CON-RW-ZA-2520 | Interlock Installation | 2027-01-30 → 2027-02-21 (+22d) | 2027-02-23 → 2027-03-22 (+27d) |  | 24d → -16d | SDR-2-CON-RW-ZA-3190, SDR-2-CON-RW-ZA-2510 → SDR-2-CON-RW-ZA-2510, SDR-2-CON-RW-ZA-2040 |  |
| 6 | **Road Marking** | 2027-02-24 → 2027-03-23 (+27d) | 2027-04-01 → 2027-04-24 (+23d) |  |  |  |  |
| SDR-2-CON-RW-ZA-2530 | Retroreflective Thermoplastic White Traffic lines | 2027-02-24 → 2027-03-23 (+27d) | 2027-03-16 → 2027-04-07 (+22d) |  | 24d → -16d |  |  |
| SDR-2-CON-RW-ZA-2540 | Retroreflective Thermoplastic Yellow, Traffic lines | 2027-03-17 → 2027-04-08 (+22d) | 2027-04-01 → 2027-04-24 (+23d) |  | 24d → -16d |  |  |
| 7 | **Traffic Signage** | 2027-04-03 → 2027-04-25 (+22d) | 2027-04-25 → 2027-05-23 (+28d) |  |  |  |  |
| SDR-2-CON-RW-ZA-2550 | Single post-Traffic signs Installation | 2027-04-03 → 2027-04-25 (+22d) | 2027-04-25 → 2027-05-23 (+28d) |  | 24d → -16d |  | resources SIC- Cost [5283.72]; Un-Skilled Labor [19.11 h]; Supervisor [19.11 h]; Skilled Labor [19.11 h] → SIC- Cost [5283.73]; Un-Skilled Labor [19.11 h]; Supervisor [19.11 h]; Skilled Labor [19.11 h] |
| 11 | **ROAD WORKS IN ( PH2-ART-MC00 )** |  | 2027-03-20 → 2027-04-14 (+25d) |  |  |  |  |
| SDR-2-CON-RW-ZA-2560 | Roadway Excavation and cuttings |  |  |  |  | SDR-2-CON-RW-ZA-2420 SS → SDR-2-CON-RW-ZA-2420 SS+2d | resources SIC- Cost [1563524]; Excavator [20 h]; Excavator Operator [92.92 h]; Dumper Operator [143.3 h]; Dumper Truck [150 h]; Grader [70 h]; Grader Operator [143.3 h]; Loader [82 h]; Loader Operator [143.3 h]; Un-Skilled Labor [10.03 h]; Supervisor [10.03 h]; Skilled Labor [10.03 h] → SIC- Cost [23081.5]; Excavator [20 h]; Excavator Operator [92.92 h]; Dumper Operator [143.3 h]; Dumper Truck [150 h]; Grader [70 h]; Grader Operator [143.3 h]; Loader [82 h]; Loader Operator [143.3 h]; Un-Skilled Labor [10.03 h]; Supervisor [10.03 h]; Skilled Labor [10.03 h] |
| SDR-2-CON-RW-ZA-3320 | Embankments to the Road 1 Layer |  |  |  |  | SDR-2-CON-RW-ZA-2560 → SDR-2-CON-RW-ZA-2560 FS+2d | resources SIC- Cost; Excavator [43.99 h]; Excavator Operator [67.9 h]; Dumper Operator [67.9 h]; Dumper Truck [50 h]; Grader [50 h]; Grader Operator [67.9 h]; Loader [50 h]; Loader Operator [67.9 h]; Un-Skilled Labor [67.9 h]; Supervisor [67.9 h]; Skilled Labor [67.9 h] → SIC- Cost [109447]; Excavator [43.99 h]; Excavator Operator [67.9 h]; Dumper Operator [67.9 h]; Dumper Truck [50 h]; Grader [50 h]; Grader Operator [67.9 h]; Loader [50 h]; Loader Operator [67.9 h]; Un-Skilled Labor [67.9 h]; Supervisor [67.9 h]; Skilled Labor [67.9 h] |
| SDR-2-CON-RW-ZA-3330 | Embankments to the Road 2 Layer |  |  |  |  |  | resources SIC- Cost; Excavator [43.99 h]; Excavator Operator [67.9 h]; Dumper Operator [67.9 h]; Dumper Truck [50 h]; Grader [50 h]; Grader Operator [67.9 h]; Loader [50 h]; Loader Operator [67.9 h]; Un-Skilled Labor [67.9 h]; Supervisor [67.9 h]; Skilled Labor [67.9 h] → SIC- Cost [125082]; Excavator [43.99 h]; Excavator Operator [67.9 h]; Dumper Operator [67.9 h]; Dumper Truck [50 h]; Grader [50 h]; Grader Operator [67.9 h]; Loader [50 h]; Loader Operator [67.9 h]; Un-Skilled Labor [67.9 h]; Supervisor [67.9 h]; Skilled Labor [67.9 h] |
| SDR-2-CON-RW-ZA-3340 | Embankments to the Road 3 Layer |  |  |  |  |  | resources SIC- Cost; Excavator [43.99 h]; Excavator Operator [67.9 h]; Dumper Operator [67.9 h]; Dumper Truck [50 h]; Grader [50 h]; Grader Operator [67.9 h]; Loader [50 h]; Loader Operator [67.9 h]; Un-Skilled Labor [67.9 h]; Supervisor [67.9 h]; Skilled Labor [67.9 h] → SIC- Cost [453422]; Excavator [43.99 h]; Excavator Operator [67.9 h]; Dumper Operator [67.9 h]; Dumper Truck [50 h]; Grader [50 h]; Grader Operator [67.9 h]; Loader [50 h]; Loader Operator [67.9 h]; Un-Skilled Labor [67.9 h]; Supervisor [67.9 h]; Skilled Labor [67.9 h] |
| SDR-2-CON-RW-ZA-2570 | Embankments to the Road 4 Layer |  |  |  |  |  | resources SIC- Cost; Excavator [43.99 h]; Excavator Operator [67.9 h]; Dumper Operator [67.9 h]; Dumper Truck [50 h]; Grader [50 h]; Grader Operator [67.9 h]; Loader [23 h]; Loader Operator [67.9 h]; Un-Skilled Labor [67.9 h]; Supervisor [67.9 h]; Skilled Labor [67.9 h] → SIC- Cost [875574]; Excavator [43.99 h]; Excavator Operator [67.9 h]; Dumper Operator [67.9 h]; Dumper Truck [50 h]; Grader [50 h]; Grader Operator [67.9 h]; Loader [23 h]; Loader Operator [67.9 h]; Un-Skilled Labor [67.9 h]; Supervisor [67.9 h]; Skilled Labor [67.9 h] |
| SDR-2-CON-RW-ZA-3350 | Embankments to the Plot 1 Layer |  |  |  |  |  | resources SIC- Cost; Excavator [14.43 h]; Excavator Operator [67.9 h]; Dumper Operator [95.54 h]; Dumper Truck [60 h]; Grader [60 h]; Grader Operator [67.9 h]; Loader [36.57 h]; Loader Operator [95.54 h]; Un-Skilled Labor [38.53 h]; Supervisor [38.53 h]; Skilled Labor [38.53 h] → SIC- Cost [39546.3]; Excavator [14.43 h]; Excavator Operator [67.9 h]; Dumper Operator [95.54 h]; Dumper Truck [60 h]; Grader [60 h]; Grader Operator [67.9 h]; Loader [36.57 h]; Loader Operator [95.54 h]; Un-Skilled Labor [38.53 h]; Supervisor [38.53 h]; Skilled Labor [38.53 h] |
| SDR-2-CON-RW-ZA-2600 | Embankments to the Plot 2 Layer |  |  |  |  |  | resources SIC- Cost; Excavator [9.2 h]; Excavator Operator [14.45 h]; Dumper Operator [57.79 h]; Dumper Truck [60 h]; Grader [60 h]; Grader Operator [57.79 h]; Loader [22.29 h]; Loader Operator [22.15 h]; Un-Skilled Labor [38.53 h]; Supervisor [9.63 h]; Skilled Labor [38.53 h] → SIC- Cost [39546.3]; Excavator [9.2 h]; Excavator Operator [14.45 h]; Dumper Operator [57.79 h]; Dumper Truck [60 h]; Grader [60 h]; Grader Operator [57.79 h]; Loader [22.29 h]; Loader Operator [22.15 h]; Un-Skilled Labor [38.53 h]; Supervisor [9.63 h]; Skilled Labor [38.53 h] |
| SDR-2-CON-RW-ZA-2620 | Milling of wearing course |  |  |  |  |  | resources SIC- Cost [28300.2]; Un-Skilled Labor [57.32 h]; Supervisor [57.32 h]; Skilled Labor [57.32 h]; Water Tanker [20 h]; Water Tanker Operator [57.32 h]; Road Milling Machine [308 h]; Road Milling Machine Operator [60 h]; Sweeper Machine [30 h]; Sweeper Machine Operator [57.32 h] → SIC- Cost [29076.6]; Un-Skilled Labor [57.32 h]; Supervisor [57.32 h]; Skilled Labor [57.32 h]; Water Tanker [20 h]; Water Tanker Operator [57.32 h]; Road Milling Machine [308 h]; Road Milling Machine Operator [60 h]; Sweeper Machine [30 h]; Sweeper Machine Operator [57.32 h] |
| 3 | **Asphalt Works** | 2026-10-13 → 2026-11-29 (+47d) | 2026-11-21 → 2026-12-24 (+33d) |  |  |  |  |
| SDR-2-CON-RW-ZA-2630 | Asphalt works 1st Layer with MC-01 | 2026-10-13 A → 2026-11-29 (+47d) | 2026-10-19 A → 2026-12-12 (+54d) | 100% → 0% | none → -5d |  |  |
| SDR-2-CON-RW-ZA-2640 | Asphalt works 2nd layer with RC-02 | 2026-10-20 A → 2026-12-13 (+54d) | 2026-11-21 → 2026-12-24 (+33d) | 50% → 0% | 22d → -5d |  |  |
| 4 | **Kerbstone Installation** |  | 2026-12-23 → 2027-01-18 (+26d) |  |  |  |  |
| SDR-2-CON-RW-ZA-3510 | Kerbstone Installation "all Types" Part 1 |  | 2026-11-29 → 2026-12-05 (+6d) |  | 15d → 24d |  | resources SIC- Cost; Un-Skilled Labor [38.53 h]; Supervisor [10.06 h]; Skilled Labor [38.53 h] → SIC- Cost [32835.8]; Un-Skilled Labor [38.53 h]; Supervisor [10.06 h]; Skilled Labor [38.53 h] |
| SDR-2-CON-RW-ZA-2650 | Kerbstone Installation "all Types" Part 2 | 2026-11-30 → 2026-12-26 (+26d) | 2026-12-23 → 2027-01-18 (+26d) |  | 15d → -5d | SDR-2-CON-RW-ZA-3310, SDR-2-CON-RW-ZA-2640, SDR-2-CON-RW-ZA-3510 → SDR-2-CON-RW-ZA-2640, SDR-2-CON-RW-ZA-3310 | resources SIC- Cost; Un-Skilled Labor [38.53 h]; Supervisor [10.06 h]; Skilled Labor [38.53 h] → SIC- Cost [254069]; Un-Skilled Labor [38.53 h]; Supervisor [10.06 h]; Skilled Labor [38.53 h] |
| 5 | **Interlock Installation** | 2026-12-24 → 2027-01-19 (+26d) | 2027-01-17 → 2027-02-11 (+25d) |  |  |  |  |
| SDR-2-CON-RW-ZA-2660 | Interlock Installation | 2026-12-24 → 2027-01-19 (+26d) | 2027-01-17 → 2027-02-11 (+25d) |  | 15d → -5d |  |  |
| 6 | **Road Marking** | 2027-01-18 → 2027-02-13 (+26d) | 2027-02-24 → 2027-03-27 (+31d) |  |  |  |  |
| SDR-2-CON-RW-ZA-2670 | Retroreflective Thermoplastic White Traffic lines | 2027-01-18 → 2027-02-13 (+26d) | 2027-02-06 → 2027-03-04 (+26d) |  | 15d → -5d |  |  |
| SDR-2-CON-RW-ZA-2680 | Retroreflective Thermoplastic Yellow, Traffic lines | 2027-02-07 → 2027-03-06 (+27d) | 2027-02-24 → 2027-03-27 (+31d) |  | 15d → -5d |  |  |
| 7 | **Traffic Signage** | 2027-02-25 → 2027-03-28 (+31d) | 2027-03-20 → 2027-04-14 (+25d) |  |  |  |  |
| SDR-2-CON-RW-ZA-2690 | Single post-Traffic signs Installation | 2027-02-25 → 2027-03-28 (+31d) | 2027-03-20 → 2027-04-14 (+25d) |  | 15d → -5d |  | resources SIC- Cost [5283.72]; Un-Skilled Labor [23.88 h]; Supervisor [23.88 h]; Skilled Labor [23.88 h] → SIC- Cost [5283.73]; Un-Skilled Labor [23.88 h]; Supervisor [23.88 h]; Skilled Labor [23.88 h] |

| ID | Task | Start | Finish | Complete | Total float | Predecessors | Other |
| --- | --- | --- | --- | --- | --- | --- | --- |
| 12 | **ROAD WORKS IN ( PH2-ART-MC10 )** |  | 2027-03-30 → 2027-04-19 (+20d) |  |  |  |  |
| SDR-2-CON-RW-ZA-2700 | Roadway Excavation and cuttings |  |  |  |  | SDR-2-CON-RW-ZA-2560 SS → SDR-2-CON-RW-ZA-2560 SS+2d | resources SIC- Cost [1563524]; Excavator [20 h]; Excavator Operator [82.84 h]; Dumper Operator [143.3 h]; Dumper Truck [150 h]; Grader [50 h]; Grader Operator [143.3 h]; Loader [82 h]; Loader Operator [143.3 h]; Un-Skilled Labor [10.03 h]; Supervisor [10.03 h]; Skilled Labor [10.03 h] → SIC- Cost [23081.5]; Excavator [20 h]; Excavator Operator [82.84 h]; Dumper Operator [143.3 h]; Dumper Truck [150 h]; Grader [50 h]; Grader Operator [143.3 h]; Loader [82 h]; Loader Operator [143.3 h]; Un-Skilled Labor [10.03 h]; Supervisor [10.03 h]; Skilled Labor [10.03 h] |
| SDR-2-CON-RW-ZA-3360 | Embankments to the Road 1 Layer |  |  |  |  | SDR-2-CON-RW-ZA-2700 → SDR-2-CON-RW-ZA-2700 FS+4d | resources SIC- Cost; Excavator [62.71 h]; Excavator Operator [95.54 h]; Dumper Operator [95.54 h]; Dumper Truck [100 h]; Grader [100 h]; Grader Operator [95.54 h]; Loader [86.67 h]; Loader Operator [95.54 h]; Un-Skilled Labor [80.09 h]; Supervisor [95.54 h]; Skilled Labor [95.54 h] → SIC- Cost [109447]; Excavator [62.71 h]; Excavator Operator [95.54 h]; Dumper Operator [95.54 h]; Dumper Truck [100 h]; Grader [100 h]; Grader Operator [95.54 h]; Loader [86.67 h]; Loader Operator [95.54 h]; Un-Skilled Labor [80.09 h]; Supervisor [95.54 h]; Skilled Labor [95.54 h] |
| SDR-2-CON-RW-ZA-3370 | Embankments to the Road 2 Layer |  |  |  |  |  | resources SIC- Cost; Excavator [62.71 h]; Excavator Operator [95.54 h]; Dumper Operator [95.54 h]; Dumper Truck [100 h]; Grader [100 h]; Grader Operator [95.54 h]; Loader [62.86 h]; Loader Operator [95.54 h]; Un-Skilled Labor [57.79 h]; Supervisor [38.53 h]; Skilled Labor [57.79 h] → SIC- Cost [125082]; Excavator [62.71 h]; Excavator Operator [95.54 h]; Dumper Operator [95.54 h]; Dumper Truck [100 h]; Grader [100 h]; Grader Operator [95.54 h]; Loader [62.86 h]; Loader Operator [95.54 h]; Un-Skilled Labor [57.79 h]; Supervisor [38.53 h]; Skilled Labor [57.79 h] |
| SDR-2-CON-RW-ZA-3380 | Embankments to the Road 3 Layer |  |  |  |  |  | resources SIC- Cost; Excavator [62.71 h]; Excavator Operator [95.54 h]; Dumper Operator [95.54 h]; Dumper Truck [100 h]; Grader [100 h]; Grader Operator [95.54 h]; Loader [40 h]; Loader Operator [95.54 h]; Un-Skilled Labor [95.54 h]; Supervisor [95.54 h]; Skilled Labor [95.54 h] → SIC- Cost [453422]; Excavator [62.71 h]; Excavator Operator [95.54 h]; Dumper Operator [95.54 h]; Dumper Truck [100 h]; Grader [100 h]; Grader Operator [95.54 h]; Loader [40 h]; Loader Operator [95.54 h]; Un-Skilled Labor [95.54 h]; Supervisor [95.54 h]; Skilled Labor [95.54 h] |
| SDR-2-CON-RW-ZA-2710 | Embankments to the Road 4 Layer |  |  |  |  |  | resources SIC- Cost; Excavator [62.71 h]; Excavator Operator [95.54 h]; Dumper Operator [95.54 h]; Dumper Truck [100 h]; Grader [60 h]; Grader Operator [95.54 h]; Loader [20 h]; Loader Operator [95.54 h]; Un-Skilled Labor [95.54 h]; Supervisor [95.54 h]; Skilled Labor [95.54 h] → SIC- Cost [875574]; Excavator [62.71 h]; Excavator Operator [95.54 h]; Dumper Operator [95.54 h]; Dumper Truck [100 h]; Grader [60 h]; Grader Operator [95.54 h]; Loader [20 h]; Loader Operator [95.54 h]; Un-Skilled Labor [95.54 h]; Supervisor [95.54 h]; Skilled Labor [95.54 h] |
| SDR-2-CON-RW-ZA-2730 | Plot Excavation for cuttings (all types of soil) |  |  |  |  | SDR-2-CON-RW-ZA-2700 → SDR-2-CON-RW-ZA-2700, SDR-2-CON-RW-ZA-2720 |  |
| SDR-2-CON-RW-ZA-3390 | Embankments to the Plot 1 Layer |  |  |  |  | SDR-2-CON-RW-ZA-2730, SDR-2-CON-RW-ZA-2590 → SDR-2-CON-RW-ZA-2730, SDR-2-CON-RW-ZA-3510 FS+2d, SDR-2-CON-RW-ZA-2590 | resources SIC- Cost; Excavator [14.36 h]; Excavator Operator [67.9 h]; Dumper Operator [67.9 h]; Dumper Truck [50 h]; Grader [50 h]; Grader Operator [67.9 h]; Loader [41.9 h]; Loader Operator [95.54 h]; Un-Skilled Labor [95.54 h]; Supervisor [95.54 h]; Skilled Labor [95.54 h] → SIC- Cost [39546.3]; Excavator [14.36 h]; Excavator Operator [67.9 h]; Dumper Operator [67.9 h]; Dumper Truck [50 h]; Grader [50 h]; Grader Operator [67.9 h]; Loader [41.9 h]; Loader Operator [95.54 h]; Un-Skilled Labor [95.54 h]; Supervisor [95.54 h]; Skilled Labor [95.54 h] |
| SDR-2-CON-RW-ZA-2740 | Embankments to the Plot 2 Layer |  |  |  |  |  | resources SIC- Cost; Excavator [11.06 h]; Excavator Operator [14.45 h]; Dumper Operator [48.16 h]; Dumper Truck [50 h]; Grader [50 h]; Grader Operator [48.16 h]; Loader [22.67 h]; Loader Operator [22.15 h]; Un-Skilled Labor [38.53 h]; Supervisor [9.63 h]; Skilled Labor [38.53 h] → SIC- Cost [39546.3]; Excavator [11.06 h]; Excavator Operator [14.45 h]; Dumper Operator [48.16 h]; Dumper Truck [50 h]; Grader [50 h]; Grader Operator [48.16 h]; Loader [22.67 h]; Loader Operator [22.15 h]; Un-Skilled Labor [38.53 h]; Supervisor [9.63 h]; Skilled Labor [38.53 h] |
| 8 | **Demolition Work** |  | 2026-11-10 → 2026-12-05 (+25d) |  |  |  |  |
| SDR-2-CON-RW-ZA-2760 | Milling of wearing course |  | 2026-11-10 → 2026-12-05 (+25d) |  | 47d → 15d |  | resources SIC- Cost [28300.2]; Un-Skilled Labor [57.32 h]; Supervisor [57.32 h]; Skilled Labor [57.32 h]; Water Tanker [20 h]; Water Tanker Operator [57.32 h]; Road Milling Machine [276 h]; Road Milling Machine Operator [50 h]; Sweeper Machine [30 h]; Sweeper Machine Operator [57.32 h] → SIC- Cost [29076.6]; Un-Skilled Labor [57.32 h]; Supervisor [57.32 h]; Skilled Labor [57.32 h]; Water Tanker [20 h]; Water Tanker Operator [57.32 h]; Road Milling Machine [276 h]; Road Milling Machine Operator [50 h]; Sweeper Machine [30 h]; Sweeper Machine Operator [57.32 h] |
| 3 | **Asphalt Works** |  | 2027-01-02 → 2027-01-21 (+19d) |  |  |  |  |
| SDR-2-CON-RW-ZA-2770 | Asphalt works 1st Layer with MC-01 |  | 2026-11-22 → 2026-12-12 (+20d) |  | 47d → 15d |  | resources SIC- Cost; Dumper Operator [44.58 h]; Dumper Truck [46.66 h]; Supervisor [44.58 h]; Sweeper Machine [46.66 h]; Sweeper Machine Operator [44.58 h]; Pneumatic Tire Roller [46.66 h]; Pneumatic Roller Operator [44.58 h]; Asphalt Paver [20 h]; Asphalt Paver Operator [44.58 h] → SIC- Cost [321276]; Dumper Operator [44.58 h]; Dumper Truck [46.66 h]; Supervisor [44.58 h]; Sweeper Machine [46.66 h]; Sweeper Machine Operator [44.58 h]; Pneumatic Tire Roller [46.66 h]; Pneumatic Roller Operator [44.58 h]; Asphalt Paver [20 h]; Asphalt Paver Operator [44.58 h] |
| SDR-2-CON-RW-ZA-2780 | Asphalt works 2nd layer with RC-02 | 2026-11-23 → 2026-12-13 (+20d) | 2026-12-08 → 2026-12-28 (+20d) |  | 47d → 15d |  | resources SIC- Cost; Dumper Operator [30.17 h]; Dumper Truck [46.66 h]; Supervisor [9.63 h]; Sweeper Machine [46.66 h]; Sweeper Machine Operator [44.59 h]; Pneumatic Tire Roller [46.66 h]; Pneumatic Roller Operator [30.17 h]; Asphalt Paver [20 h]; Asphalt Paver Operator [24.14 h] → SIC- Cost [321276]; Dumper Operator [30.17 h]; Dumper Truck [46.66 h]; Supervisor [9.63 h]; Sweeper Machine [46.66 h]; Sweeper Machine Operator [44.59 h]; Pneumatic Tire Roller [46.66 h]; Pneumatic Roller Operator [30.17 h]; Asphalt Paver [20 h]; Asphalt Paver Operator [24.14 h] |
| SDR-2-CON-RW-ZA-2850 | Asphalt Works 3 rd Layer with RC-02 | 2026-12-09 → 2026-12-29 (+20d) | 2027-01-02 → 2027-01-21 (+19d) |  | 47d → 15d |  | resources SIC- Cost; Dump Truck [46.66 h]; Dum Truck Operator [30.17 h]; Supervisor [10.06 h]; Sweeper Machine [46.66 h]; Sweeper Machine Operator [30.17 h]; Pneumatic Tire Roller [46.66 h]; Pneumatic Roller Operator [44.58 h]; Asphalt Paver [22 h]; Asphalt Paver Operator [22.13 h] → SIC- Cost [160638]; Dum Truck [46.66 h]; Dum Truck Operator [30.17 h]; Supervisor [10.06 h]; Sweeper Machine [46.66 h]; Sweeper Machine Operator [30.17 h]; Pneumatic Tire Roller [46.66 h]; Pneumatic Roller Operator [44.58 h]; Asphalt Paver [22 h]; Asphalt Paver Operator [22.13 h] |
| 4 | **Kerbstone Installation** | 2026-11-09 → 2026-11-29 (+20d) | 2027-01-26 → 2027-02-15 (+20d) |  |  |  |  |
| SDR-2-CON-RW-ZA-3520 | Kerbstone Installation "all Types" Part 1 | 2026-11-09 → 2026-11-29 (+20d) | 2026-11-29 → 2026-12-19 (+20d) |  | 60d → 37d |  | resources SIC- Cost [286905]; Un-Skilled Labor [50.28 h]; Supervisor [10.06 h]; Skilled Labor [50.28 h] → SIC- Cost [32835.8]; Un-Skilled Labor [50.28 h]; Supervisor [10.06 h]; Skilled Labor [50.28 h] |
| SDR-2-CON-RW-ZA-2790 | Kerbstone Installation "all Types" Part 2 | 2027-01-03 → 2027-01-23 (+20d) | 2027-01-26 → 2027-02-15 (+20d) |  | 47d → 15d | SDR-2-CON-RW-ZA-3190 FS+2d, SDR-2-CON-RW-ZA-2850, SDR-2-CON-RW-ZA-2850 FF → SDR-2-CON-RW-ZA-2850, SDR-2-CON-RW-ZA-2850 FF, SDR-2-CON-RW-ZA-2040 FS+2d | resources SIC- Cost [286905]; Un-Skilled Labor [50.28 h]; Supervisor [10.06 h]; Skilled Labor [50.28 h] → SIC- Cost [254069]; Un-Skilled Labor [50.28 h]; Supervisor [10.06 h]; Skilled Labor [50.28 h] |
| 5 | **Interlock Installation** | 2027-01-27 → 2027-02-16 (+20d) | 2027-02-20 → 2027-03-17 (+25d) |  |  |  |  |
| SDR-2-CON-RW-ZA-2800 | Interlock Installation | 2027-01-27 → 2027-02-16 (+20d) | 2027-02-20 → 2027-03-17 (+25d) |  | 47d → 15d |  | resources SIC- Cost; Un-Skilled Labor [28.9 h]; Supervisor [10.06 h]; Skilled Labor [28.9 h] → SIC- Cost [149309]; Un-Skilled Labor [28.9 h]; Supervisor [10.06 h]; Skilled Labor [28.9 h] |
| 6 | **Road Marking** | 2027-02-21 → 2027-03-18 (+25d) | 2027-03-16 → 2027-04-05 (+20d) |  |  |  |  |
| SDR-2-CON-RW-ZA-2810 | Retroreflective Thermoplastic White Traffic lines | 2027-02-21 → 2027-03-18 (+25d) | 2027-03-02 → 2027-03-27 (+25d) |  | 47d → 15d |  |  |
| SDR-2-CON-RW-ZA-2820 | Retroreflective Thermoplastic Yellow, Traffic lines | 2027-03-03 → 2027-03-28 (+25d) | 2027-03-16 → 2027-04-05 (+20d) |  | 47d → 15d |  |  |
| 7 | **Traffic Signage** | 2027-03-17 → 2027-04-06 (+20d) | 2027-03-30 → 2027-04-19 (+20d) |  |  |  |  |
| SDR-2-CON-RW-ZA-2830 | Single post-Traffic signs Installation | 2027-03-17 → 2027-04-06 (+20d) | 2027-03-30 → 2027-04-19 (+20d) |  | 47d → 15d |  | resources SIC- Cost [5283.72]; Un-Skilled Labor [19.11 h]; Supervisor [19.11 h]; Skilled Labor [19.11 h] → SIC- Cost [5283.73]; Un-Skilled Labor [19.11 h]; Supervisor [19.11 h]; Skilled Labor [19.11 h] |
| ZG | **ZONE G** |  | 2027-05-05 → 2027-06-28 (+54d) |  |  |  |  |
| SDR-2-CON-RW-ZG-1000 | Cleaning and removal of organic materials in Zone G |  |  |  |  |  | resources SIC- Cost [15]; Surveyor [114.64 h]; Helper [114.64 h]; Loader [260 h]; Loader Operator [248.39 h]; Grader Operator [477.68 h]; Grader [890 h] → SIC- Cost [537313]; Surveyor [114.64 h]; Helper [114.64 h]; Loader [260 h]; Grader Operator [477.68 h]; Loader Operator [248.39 h]; Grader [890 h] |
| SDR-2-CON-RW-ZG-1010 | Surveying works Zone G |  |  |  |  |  | resources SIC- Cost [9]; Surveyor [68.79 h]; Helper [68.79 h]; Grader [389.5 h] → SIC- Cost [102955]; Surveyor [68.79 h]; Helper [68.79 h]; Grader [389.5 h] |
| 5 | **ROAD WORKS IN ( PH2-COL-MC50 )** |  | 2027-05-05 → 2027-03-18 (-48d) |  |  |  |  |
| SDR-2-CON-RW-ZG-1020 | Roadway Excavation and cuttings |  |  |  |  |  | resources SIC- Cost [1563524]; Excavator [260 h]; Excavator Operator [143.3 h]; Dumper Operator [143.3 h]; Dumper Truck [650 h]; Grader [150 h]; Grader Operator [143.3 h]; Loader [150 h]; Loader Operator [143.3 h]; Un-Skilled Labor [143.3 h]; Supervisor [143.3 h]; Skilled Labor [143.3 h] → SIC- Cost [23081.5]; Excavator [260 h]; Excavator Operator [143.3 h]; Dumper Operator [143.3 h]; Dumper Truck [650 h]; Grader [150 h]; Grader Operator [143.3 h]; Loader [150 h]; Loader Operator [143.3 h]; Un-Skilled Labor [143.3 h]; Supervisor [143.3 h]; Skilled Labor [143.3 h] |
| SDR-2-CON-RW-ZG-2220 | Embankments to the Road 1 Layer |  |  |  |  |  | resources SIC- Cost; Excavator [83.67 h]; Excavator Operator [95.54 h]; Dumper Operator [95.54 h]; Dumper Truck [100 h]; Grader [100 h]; Grader Operator [95.54 h]; Loader [72.86 h]; Loader Operator [95.54 h]; Un-Skilled Labor [95.54 h]; Supervisor [95.54 h]; Skilled Labor [95.54 h] → SIC- Cost [115530]; Excavator [83.67 h]; Excavator Operator [95.54 h]; Dumper Operator [95.54 h]; Dumper Truck [100 h]; Grader [100 h]; Grader Operator [95.54 h]; Loader [72.86 h]; Loader Operator [95.54 h]; Un-Skilled Labor [95.54 h]; Supervisor [95.54 h]; Skilled Labor [95.54 h] |
| SDR-2-CON-RW-ZG-2230 | Embankments to the Road 2 Layer |  |  |  |  |  | resources SIC- Cost; Excavator [83.67 h]; Excavator Operator [95.54 h]; Dumper Operator [95.54 h]; Dumper Truck [100 h]; Grader [100 h]; Grader Operator [95.54 h]; Loader [48.1 h]; Loader Operator [95.54 h]; Un-Skilled Labor [28.23 h]; Supervisor [28.23 h]; Skilled Labor [95.54 h] → SIC- Cost [173295]; Excavator [83.67 h]; Excavator Operator [95.54 h]; Dumper Operator [95.54 h]; Dumper Truck [100 h]; Grader [100 h]; Grader Operator [95.54 h]; Loader [48.1 h]; Loader Operator [95.54 h]; Un-Skilled Labor [28.23 h]; Supervisor [28.23 h]; Skilled Labor [95.54 h] |
| SDR-2-CON-RW-ZG-2240 | Embankments to the Road 3 Layer |  |  |  |  |  | resources SIC- Cost; Excavator [83.67 h]; Excavator Operator [95.54 h]; Dumper Operator [95.54 h]; Dumper Truck [100 h]; Grader [100 h]; Grader Operator [95.54 h]; Loader [40 h]; Loader Operator [95.54 h]; Un-Skilled Labor [57.79 h]; Supervisor [28.9 h]; Skilled Labor [57.79 h] → SIC- Cost [433236]; Excavator [83.67 h]; Excavator Operator [95.54 h]; Dumper Operator [95.54 h]; Dumper Truck [100 h]; Grader [100 h]; Grader Operator [95.54 h]; Loader [40 h]; Loader Operator [95.54 h]; Un-Skilled Labor [57.79 h]; Supervisor [28.9 h]; Skilled Labor [57.79 h] |
| SDR-2-CON-RW-ZG-1030 | Embankments to the Road 4 Layer |  |  |  |  |  | resources SIC- Cost; Excavator [83.67 h]; Excavator Operator [95.54 h]; Dumper Operator [95.54 h]; Dumper Truck [338.1 h]; Grader [60 h]; Grader Operator [95.54 h]; Loader [40 h]; Loader Operator [95.54 h]; Un-Skilled Labor [57.79 h]; Supervisor [38.53 h]; Skilled Labor [57.79 h] → SIC- Cost [722061]; Excavator [83.67 h]; Excavator Operator [95.54 h]; Dumper Operator [95.54 h]; Dumper Truck [338.1 h]; Grader [60 h]; Grader Operator [95.54 h]; Loader [40 h]; Loader Operator [95.54 h]; Un-Skilled Labor [57.79 h]; Supervisor [38.53 h]; Skilled Labor [57.79 h] |
| SDR-2-CON-RW-ZG-1040 | Subgrade layer works |  |  |  |  |  | resources SIC- Cost [1025846]; Excavator [10.31 h]; Excavator Operator [152.86 h]; Dumper Operator [152.86 h]; Dumper Truck [350 h]; Grader [110 h]; Grader Operator [152.86 h]; Loader [43 h]; Loader Operator [152.86 h]; Un-Skilled Labor [152.86 h]; Supervisor [152.86 h]; Skilled Labor [152.86 h]; Water Tanker [63 h]; Water Tanker Operator [152.86 h] → SIC- Cost [331816]; Excavator [10.31 h]; Excavator Operator [152.86 h]; Dumper Operator [152.86 h]; Dumper Truck [350 h]; Grader [110 h]; Grader Operator [152.86 h]; Loader [43 h]; Loader Operator [152.86 h]; Un-Skilled Labor [152.86 h]; Supervisor [152.86 h]; Skilled Labor [152.86 h]; Water Tanker [63 h]; Water Tanker Operator [152.86 h] |
| SDR-2-CON-RW-ZG-1050 | Plot Excavation for cuttings (all types of soil) |  |  |  |  | SDR-2-CON-RW-ZG-1020, SDR-2-CON-RW-ZG-1040 FF → SDR-2-CON-RW-ZG-1020, SDR-2-CON-RW-ZG-1040 | resources SIC- Cost [82090]; Excavator [12 h]; Excavator Operator [54.77 h]; Dumper Operator [143.3 h]; Dumper Truck [340 h]; Grader [77 h]; Grader Operator [143.3 h]; Loader [99.33 h]; Loader Operator [143.3 h]; Un-Skilled Labor [143.3 h]; Supervisor [143.3 h]; Skilled Labor [143.3 h] → SIC- Cost [380598]; Excavator [12 h]; Excavator Operator [54.77 h]; Dumper Operator [143.3 h]; Dumper Truck [340 h]; Grader [77 h]; Grader Operator [143.3 h]; Loader [99.33 h]; Loader Operator [143.3 h]; Un-Skilled Labor [143.3 h]; Supervisor [143.3 h]; Skilled Labor [143.3 h] |
| SDR-2-CON-RW-ZG-2250 | Embankments to the Plot 1 Layer |  |  |  |  | SDR-2-CON-RW-ZG-1050 SS → SDR-2-CON-RW-ZG-1050 | resources SIC- Cost; Excavator [14 h]; Excavator Operator [95.54 h]; Dumper Operator [95.54 h]; Dumper Truck [118 h]; Grader [60 h]; Grader Operator [95.54 h]; Loader [20 h]; Loader Operator [95.54 h]; Un-Skilled Labor [95.54 h]; Supervisor [95.54 h]; Skilled Labor [95.54 h] → SIC- Cost [176936]; Excavator [14 h]; Excavator Operator [95.54 h]; Dumper Operator [95.54 h]; Dumper Truck [118 h]; Grader [60 h]; Grader Operator [95.54 h]; Loader [20 h]; Loader Operator [95.54 h]; Un-Skilled Labor [95.54 h]; Supervisor [95.54 h]; Skilled Labor [95.54 h] |
| SDR-2-CON-RW-ZG-2260 | Embankments to the Plot 2 Layer |  |  |  |  | SDR-2-CON-RW-ZG-2250, SDR-2-CON-RW-ZA-3520 FF → SDR-2-CON-RW-ZG-2250, SDR-2-CON-RW-ZA-3520 | resources SIC- Cost; Excavator [14 h]; Excavator Operator [95.54 h]; Dumper Operator [95.54 h]; Dumper Truck [118 h]; Grader [82.24 h]; Grader Operator [95.54 h]; Loader [42.24 h]; Loader Operator [95.54 h]; Un-Skilled Labor [95.54 h]; Supervisor [95.54 h]; Skilled Labor [95.54 h] → SIC- Cost [27682.4]; Excavator [14 h]; Excavator Operator [95.54 h]; Dumper Operator [95.54 h]; Dumper Truck [118 h]; Grader [82.24 h]; Grader Operator [95.54 h]; Loader [42.24 h]; Loader Operator [95.54 h]; Un-Skilled Labor [95.54 h]; Supervisor [95.54 h]; Skilled Labor [95.54 h] |
| SDR-2-CON-RW-ZG-1060 | Embankments to the Plot 3 Layer |  |  |  |  | SDR-2-CON-RW-ZG-2260 FF → SDR-2-CON-RW-ZG-2260 | resources SIC- Cost; Excavator [14 h]; Excavator Operator [134.85 h]; Dumper Operator [95.54 h]; Dumper Truck [118 h]; Grader [120 h]; Grader Operator [95.54 h]; Loader [436.02 h]; Loader Operator [95.54 h]; Un-Skilled Labor [38.53 h]; Supervisor [9.63 h]; Skilled Labor [38.53 h] → SIC- Cost [23727.8]; Excavator [14 h]; Excavator Operator [134.85 h]; Dumper Operator [95.54 h]; Dumper Truck [118 h]; Grader [120 h]; Grader Operator [95.54 h]; Loader [436.02 h]; Loader Operator [95.54 h]; Un-Skilled Labor [38.53 h]; Supervisor [9.63 h]; Skilled Labor [38.53 h] |
| SDR-2-CON-RW-ZG-1070 | Aggregate base course layer |  |  |  |  | SDR-2-CON-RW-ZG-1040 FF → SDR-2-CON-RW-ZG-1040 |  |
| 8 | **Demolition Work** |  | 2026-11-18 → 2026-11-04 (-14d) |  |  |  |  |
| SDR-2-CON-RW-ZG-1090 | Milling of wearing course |  | 2026-11-18 → 2026-11-04 A (-14d) | 50% → 100% | 16d → none |  | resources SIC- Cost; Un-Skilled Labor [66.88 h]; Supervisor [9.63 h]; Skilled Labor [28.9 h]; Water Tanker [20 h]; Water Tanker Operator [66.88 h]; Road Milling Machine [50 h]; Road Milling Machine Operator [50 h]; Sweeper Machine [50 h]; Sweeper Machine Operator [48.16 h] → SIC- Cost [28300.2]; Un-Skilled Labor [66.88 h]; Supervisor [9.63 h]; Skilled Labor [28.9 h]; Water Tanker [20 h]; Water Tanker Operator [66.88 h]; Road Milling Machine [50 h]; Road Milling Machine Operator [50 h]; Sweeper Machine [50 h]; Sweeper Machine Operator [48.16 h] |
| 3 | **Asphalt Works** | 2026-10-05 → 2026-10-03 (-2d) | 2027-01-14 → 2026-11-04 (-71d) |  |  |  |  |
| SDR-2-CON-RW-ZG-1110 | Asphalt works 2nd layer with RC-02 | 2026-12-22 → 2026-10-03 A (-80d) | 2027-01-14 → 2026-11-04 A (-71d) | 0% → 100% | 7d → none |  | resources SIC- Cost; Dumper Operator [60.34 h]; Dumper Truck [50 h]; Supervisor [10.06 h]; Sweeper Machine [50 h]; Sweeper Machine Operator [50.28 h]; Pneumatic Tire Roller [50 h]; Pneumatic Roller Operator [76.43 h]; Asphalt Paver [40 h]; Asphalt Paver Operator [40.23 h] → SIC- Cost [299797]; Dumper Operator [60.34 h]; Dumper Truck [50 h]; Supervisor [10.06 h]; Sweeper Machine [50 h]; Sweeper Machine Operator [50.28 h]; Pneumatic Tire Roller [50 h]; Pneumatic Roller Operator [76.43 h]; Asphalt Paver [40 h]; Asphalt Paver Operator [40.23 h] |
| SDR-2-CON-RW-ZG-1100 | Asphalt works 1st Layer with MC-01 |  | 2026-12-21 → 2026-11-04 A (-47d) | 50% → 100% | 7d → none |  |  |
| 4 | **Kerbstone Installation** | 2026-11-09 → 2026-11-01 (-8d) | 2027-02-08 → 2026-12-22 (-48d) |  |  |  |  |
| SDR-2-CON-RW-ZG-2550 | Kerbstone Installation "all Types" Part 1 | 2026-11-09 → 2026-11-01 A (-8d) | 2026-11-29 → 2026-11-14 A (-15d) | 0% → 100% | 7d → none |  | resources SIC- Cost [286905]; Un-Skilled Labor [50.28 h]; Supervisor [10.06 h]; Skilled Labor [50.28 h] → SIC- Cost [32835.8]; Un-Skilled Labor [50.28 h]; Supervisor [10.06 h]; Skilled Labor [50.28 h] |
| SDR-2-CON-RW-ZG-1120 | Kerbstone Installation "all Types" Part 2 | 2027-01-16 → 2026-11-29 (-48d) | 2027-02-08 → 2026-12-22 (-48d) |  | 7d → 34d |  | resources SIC- Cost [286905]; Un-Skilled Labor [50.28 h]; Supervisor [10.06 h]; Skilled Labor [50.28 h] → SIC- Cost [254069]; Un-Skilled Labor [50.28 h]; Supervisor [10.06 h]; Skilled Labor [50.28 h] |
| 5 | **Interlock Installation** | 2027-02-09 → 2026-12-23 (-48d) | 2027-03-06 → 2027-01-16 (-49d) |  |  |  |  |
| SDR-2-CON-RW-ZG-1130 | Interlock Installation | 2027-02-09 → 2026-12-23 (-48d) | 2027-03-06 → 2027-01-16 (-49d) |  | 7d → 34d |  | resources SIC- Cost [149309]; Un-Skilled Labor [50.28 h]; Supervisor [10.06 h]; Skilled Labor [50.28 h] → SIC- Cost [149303]; Un-Skilled Labor [50.28 h]; Supervisor [10.06 h]; Skilled Labor [50.28 h] |
| 6 | **Road Marking** | 2027-03-07 → 2027-01-17 (-49d) | 2027-04-12 → 2027-02-17 (-54d) |  |  |  |  |
| SDR-2-CON-RW-ZG-1140 | Retroreflective Thermoplastic White Traffic lines | 2027-03-07 → 2027-01-17 (-49d) | 2027-03-27 → 2027-02-01 (-54d) |  | 7d → 34d |  |  |
| SDR-2-CON-RW-ZG-1150 | Retroreflective Thermoplastic Yellow, Traffic lines | 2027-03-28 → 2027-02-02 (-54d) | 2027-04-12 → 2027-02-17 (-54d) |  | 7d → 34d |  |  |
| 7 | **Traffic Signage** | 2027-04-13 → 2027-02-18 (-54d) | 2027-05-05 → 2027-03-18 (-48d) |  |  |  |  |
| SDR-2-CON-RW-ZG-1160 | Single post-Traffic signs Installation | 2027-04-13 → 2027-02-18 (-54d) | 2027-05-05 → 2027-03-18 (-48d) |  | 7d → 34d |  | resources SIC- Cost [5283.72]; Un-Skilled Labor [19.11 h]; Supervisor [19.11 h]; Skilled Labor [19.11 h] → SIC- Cost [5283.73]; Un-Skilled Labor [19.11 h]; Supervisor [19.11 h]; Skilled Labor [19.11 h] |
| 1 | **ROAD WORKS IN ( PH2-G-MCA0 )** |  | 2027-04-01 → 2027-06-15 (+75d) |  |  |  |  |
| SDR-2-CON-RW-ZG-1320 | Roadway Excavation and cuttings |  |  |  |  |  | resources SIC- Cost [1563524]; Excavator [30 h]; Excavator Operator [143.3 h]; Dumper Operator [143.3 h]; Dumper Truck [150 h]; Grader [30 h]; Grader Operator [143.3 h]; Loader [156.57 h]; Loader Operator [143.3 h]; Un-Skilled Labor [143.3 h]; Supervisor [143.3 h]; Skilled Labor [143.3 h] → SIC- Cost [23081.5]; Excavator [30 h]; Excavator Operator [143.3 h]; Dumper Operator [143.3 h]; Dumper Truck [150 h]; Grader [30 h]; Grader Operator [143.3 h]; Loader [156.57 h]; Loader Operator [143.3 h]; Un-Skilled Labor [143.3 h]; Supervisor [143.3 h]; Skilled Labor [143.3 h] |
| SDR-2-CON-RW-ZG-2310 | Embankments to the Road 1 Layer |  |  |  |  |  | resources SIC- Cost; Excavator [20 h]; Excavator Operator [95.54 h]; Dumper Operator [95.54 h]; Dumper Truck [100 h]; Grader [20 h]; Grader Operator [95.54 h]; Loader [100 h]; Loader Operator [95.54 h]; Un-Skilled Labor [95.54 h]; Supervisor [95.54 h]; Skilled Labor [95.54 h] → SIC- Cost [125082]; Excavator [20 h]; Excavator Operator [95.54 h]; Dumper Operator [95.54 h]; Dumper Truck [100 h]; Grader [20 h]; Grader Operator [95.54 h]; Loader [100 h]; Loader Operator [95.54 h]; Un-Skilled Labor [95.54 h]; Supervisor [95.54 h]; Skilled Labor [95.54 h] |
| SDR-2-CON-RW-ZG-2320 | Embankments to the Road 2 Layer |  |  |  |  |  | resources SIC- Cost; Excavator [20 h]; Excavator Operator [95.54 h]; Dumper Operator [95.54 h]; Dumper Truck [100 h]; Grader [20 h]; Grader Operator [95.54 h]; Loader [100 h]; Loader Operator [95.54 h]; Un-Skilled Labor [10.03 h]; Supervisor [10.03 h]; Skilled Labor [10.03 h] → SIC- Cost [187623]; Excavator [20 h]; Excavator Operator [95.54 h]; Dumper Operator [95.54 h]; Dumper Truck [100 h]; Grader [20 h]; Grader Operator [95.54 h]; Loader [100 h]; Loader Operator [95.54 h]; Un-Skilled Labor [10.03 h]; Supervisor [10.03 h]; Skilled Labor [10.03 h] |
| SDR-2-CON-RW-ZG-2330 | Embankments to the Road 3 Layer |  |  |  |  |  | resources SIC- Cost; Excavator [20 h]; Excavator Operator [95.54 h]; Dumper Operator [95.54 h]; Dumper Truck [100 h]; Grader [20 h]; Grader Operator [95.54 h]; Loader [100 h]; Loader Operator [95.54 h]; Un-Skilled Labor [57.79 h]; Supervisor [38.53 h]; Skilled Labor [57.79 h] → SIC- Cost [469057]; Excavator [20 h]; Excavator Operator [95.54 h]; Dumper Operator [95.54 h]; Dumper Truck [100 h]; Grader [20 h]; Grader Operator [95.54 h]; Loader [100 h]; Loader Operator [95.54 h]; Un-Skilled Labor [57.79 h]; Supervisor [38.53 h]; Skilled Labor [57.79 h] |
| SDR-2-CON-RW-ZG-1330 | Embankments to the Road 4 Layer |  |  |  |  | SDR-2-CON-RW-ZG-2330 FS+6d, SDR-2-PRO-DEL-E-1010 → SDR-2-CON-RW-ZG-2330 FS+6d, SDR-2-PRO-DEL-E-1100, SDR-2-PRO-DEL-E-1020, SDR-2-PRO-DEL-E-1010 | resources SIC- Cost; Excavator [20 h]; Excavator Operator [95.54 h]; Dumper Operator [95.54 h]; Dumper Truck [100 h]; Grader [20 h]; Grader Operator [95.54 h]; Loader [78.57 h]; Loader Operator [95.54 h]; Un-Skilled Labor [95.54 h]; Supervisor [95.54 h]; Skilled Labor [95.54 h] → SIC- Cost [781762]; Excavator [20 h]; Excavator Operator [95.54 h]; Dumper Operator [95.54 h]; Dumper Truck [100 h]; Grader [20 h]; Grader Operator [95.54 h]; Loader [78.57 h]; Loader Operator [95.54 h]; Un-Skilled Labor [95.54 h]; Supervisor [95.54 h]; Skilled Labor [95.54 h] |
| SDR-2-CON-RW-ZG-1340 | Subgrade layer works |  |  |  |  |  | resources SIC- Cost; Excavator [6 h]; Excavator Operator [67.9 h]; Dumper Operator [67.9 h]; Dumper Truck [50 h]; Grader [15 h]; Grader Operator [67.9 h]; Loader [20 h]; Loader Operator [19.26 h]; Un-Skilled Labor [67.9 h]; Supervisor [67.9 h]; Skilled Labor [67.9 h]; Water Tanker [40 h]; Water Tanker Operator [38.53 h] → SIC- Cost [1025846]; Excavator [6 h]; Excavator Operator [67.9 h]; Dumper Operator [67.9 h]; Dumper Truck [50 h]; Grader [15 h]; Grader Operator [67.9 h]; Loader [20 h]; Loader Operator [19.26 h]; Un-Skilled Labor [67.9 h]; Supervisor [67.9 h]; Skilled Labor [67.9 h]; Water Tanker [40 h]; Water Tanker Operator [38.53 h] |
| SDR-2-CON-RW-ZG-2340 | Embankments to the Plot 1 Layer |  |  |  |  |  | resources SIC- Cost; Excavator [15 h]; Excavator Operator [95.54 h]; Dumper Operator [67.9 h]; Dumper Truck [50 h]; Grader [20 h]; Grader Operator [67.9 h]; Loader [20.86 h]; Loader Operator [67.9 h]; Un-Skilled Labor [67.9 h]; Supervisor [67.9 h]; Skilled Labor [67.9 h] → SIC- Cost [39546.3]; Excavator [15 h]; Excavator Operator [95.54 h]; Dumper Operator [67.9 h]; Dumper Truck [50 h]; Grader [20 h]; Grader Operator [67.9 h]; Loader [20.86 h]; Loader Operator [67.9 h]; Un-Skilled Labor [67.9 h]; Supervisor [67.9 h]; Skilled Labor [67.9 h] |
| SDR-2-CON-RW-ZG-1360 | Embankments to the Plot 2 Layer |  |  |  |  |  | resources SIC- Cost; Excavator [15 h]; Excavator Operator [95.54 h]; Dumper Operator [67.9 h]; Dumper Truck [50 h]; Grader [20 h]; Grader Operator [67.9 h]; Loader [24.86 h]; Loader Operator [67.9 h]; Un-Skilled Labor [28.9 h]; Supervisor [9.63 h]; Skilled Labor [28.9 h] → SIC- Cost [39546.3]; Excavator [15 h]; Excavator Operator [95.54 h]; Dumper Operator [67.9 h]; Dumper Truck [50 h]; Grader [20 h]; Grader Operator [67.9 h]; Loader [24.86 h]; Loader Operator [67.9 h]; Un-Skilled Labor [28.9 h]; Supervisor [9.63 h]; Skilled Labor [28.9 h] |
| 8 | **Demolition Work** | 2026-11-09 → 2026-11-01 (-8d) | 2026-11-26 → 2027-01-31 (+66d) |  |  |  |  |
| SDR-2-CON-RW-ZG-1380 | Removal of curbstone | 2026-11-09 → 2026-11-01 A (-8d) | 2026-11-18 → 2027-01-31 (+74d) | 0% → 50% | 23d → -40d |  |  |
| SDR-2-CON-RW-ZG-1390 | Milling of wearing course | 2026-11-19 → 2026-11-05 A (-14d) | 2026-11-26 → 2026-11-14 A (-12d) | 0% → 100% | 23d → none |  |  |
| 3 | **Asphalt Works** |  | 2026-12-13 → 2027-02-20 (+69d) |  |  |  |  |
| SDR-2-CON-RW-ZG-1400 | Asphalt works 1st Layer with MC-01 |  | 2026-11-22 → 2027-01-30 (+69d) | 75% → 90% | 36d → -35d |  |  |
| SDR-2-CON-RW-ZG-1410 | Asphalt works 2nd layer with RC-02 | 2026-11-23 → 2027-01-31 (+69d) | 2026-12-13 → 2027-02-20 (+69d) |  | 36d → -35d |  |  |

| ID | Task | Start | Finish | Complete | Total float | Predecessors | Other |
| --- | --- | --- | --- | --- | --- | --- | --- |
| 4 | **Kerbstone Installation** | 2026-11-30 → 2027-01-25 (+56d) | 2027-01-06 → 2027-03-22 (+75d) |  |  |  |  |
| SDR-2-CON-RW-ZG-2570 | Kerbstone Installation "all Types" Part 1 | 2026-11-30 → 2027-01-25 (+56d) | 2026-12-20 → 2027-02-14 (+56d) |  | 9d → -46d |  | resources SIC- Cost [286905]; Un-Skilled Labor [28.9 h]; Supervisor [10.06 h]; Skilled Labor [28.9 h] → SIC- Cost [32835.8]; Un-Skilled Labor [28.9 h]; Supervisor [10.06 h]; Skilled Labor [28.9 h] |
| SDR-2-CON-RW-ZG-1420 | Kerbstone Installation "all Types" Part 2 | 2026-12-14 → 2027-02-21 (+69d) | 2027-01-06 → 2027-03-22 (+75d) |  | 36d → -35d |  | resources SIC- Cost [286905]; Un-Skilled Labor [28.9 h]; Supervisor [10.06 h]; Skilled Labor [28.9 h] → SIC- Cost [254069]; Un-Skilled Labor [28.9 h]; Supervisor [10.06 h]; Skilled Labor [28.9 h] |
| 5 | **Interlock Installation** | 2027-01-07 → 2027-03-23 (+75d) | 2027-01-30 → 2027-04-14 (+74d) |  |  |  |  |
| SDR-2-CON-RW-ZG-1430 | Interlock Installation | 2027-01-07 → 2027-03-23 (+75d) | 2027-01-30 → 2027-04-14 (+74d) |  | 36d → -35d |  |  |
| 6 | **Road Marking** | 2027-01-31 → 2027-04-15 (+74d) | 2027-03-04 → 2027-05-23 (+80d) |  |  |  |  |
| SDR-2-CON-RW-ZG-1440 | Retroreflective Thermoplastic White Traffic lines | 2027-01-31 → 2027-04-15 (+74d) | 2027-02-15 → 2027-05-01 (+75d) |  | 36d → -35d |  |  |
| SDR-2-CON-RW-ZG-1450 | Retroreflective Thermoplastic Yellow, Traffic lines | 2027-02-16 → 2027-05-02 (+75d) | 2027-03-04 → 2027-05-23 (+80d) |  | 36d → -35d |  |  |
| 7 | **Traffic Signage** | 2027-03-06 → 2027-05-24 (+79d) | 2027-04-01 → 2027-06-15 (+75d) |  |  |  |  |
| SDR-2-CON-RW-ZG-1460 | Single post-Traffic signs Installation | 2027-03-06 → 2027-05-24 (+79d) | 2027-04-01 → 2027-06-15 (+75d) |  | 36d → -35d |  | resources SIC- Cost [5283.72]; Un-Skilled Labor [19.11 h]; Supervisor [19.11 h]; Skilled Labor [19.11 h] → SIC- Cost [5283.73]; Un-Skilled Labor [19.11 h]; Supervisor [19.11 h]; Skilled Labor [19.11 h] |
| 6 | **ROAD WORKS IN ( PH2-ART-MC00 )** |  | 2027-04-12 → 2027-03-29 (-14d) |  |  |  |  |
| SDR-2-CON-RW-ZG-1170 | Roadway Excavation and cuttings |  |  |  |  |  | resources SIC- Cost [1563524]; Excavator [20 h]; Excavator Operator [143.3 h]; Dumper Operator [143.3 h]; Dumper Truck [150 h]; Grader [40 h]; Grader Operator [143.3 h]; Loader [103 h]; Loader Operator [143.3 h]; Un-Skilled Labor [143.3 h]; Supervisor [143.3 h]; Skilled Labor [143.3 h] → SIC- Cost [23081.5]; Excavator [20 h]; Excavator Operator [143.3 h]; Dumper Operator [143.3 h]; Dumper Truck [150 h]; Grader [40 h]; Grader Operator [143.3 h]; Loader [103 h]; Loader Operator [143.3 h]; Un-Skilled Labor [143.3 h]; Supervisor [143.3 h]; Skilled Labor [143.3 h] |
| SDR-2-CON-RW-ZG-2270 | Embankments to the Road 1 Layer |  |  |  |  |  | resources SIC- Cost; Excavator [85.11 h]; Excavator Operator [95.54 h]; Dumper Operator [95.54 h]; Dumper Truck [100 h]; Grader [100 h]; Grader Operator [95.54 h]; Loader [87.14 h]; Loader Operator [95.54 h]; Un-Skilled Labor [95.54 h]; Supervisor [95.54 h]; Skilled Labor [95.54 h] → SIC- Cost [125082]; Excavator [85.11 h]; Excavator Operator [95.54 h]; Dumper Operator [95.54 h]; Dumper Truck [100 h]; Grader [100 h]; Grader Operator [95.54 h]; Loader [87.14 h]; Loader Operator [95.54 h]; Un-Skilled Labor [95.54 h]; Supervisor [95.54 h]; Skilled Labor [95.54 h] |
| SDR-2-CON-RW-ZG-2280 | Embankments to the Road 2 Layer |  |  |  |  |  | resources SIC- Cost; Excavator [85.11 h]; Excavator Operator [95.54 h]; Dumper Operator [95.54 h]; Dumper Truck [100 h]; Grader [100 h]; Grader Operator [95.54 h]; Loader [100 h]; Loader Operator [95.54 h]; Un-Skilled Labor [19.13 h]; Supervisor [19.13 h]; Skilled Labor [19.13 h] → SIC- Cost [187623]; Excavator [85.11 h]; Excavator Operator [95.54 h]; Dumper Operator [95.54 h]; Dumper Truck [100 h]; Grader [100 h]; Grader Operator [95.54 h]; Loader [100 h]; Loader Operator [95.54 h]; Un-Skilled Labor [19.13 h]; Supervisor [19.13 h]; Skilled Labor [19.13 h] |
| SDR-2-CON-RW-ZG-1180 | Embankments to the Road 4 Layer |  |  |  |  |  | resources SIC- Cost; Excavator [85.11 h]; Excavator Operator [95.54 h]; Dumper Operator [95.54 h]; Dumper Truck [100 h]; Grader [100 h]; Grader Operator [95.54 h]; Loader [67.14 h]; Loader Operator [95.54 h]; Un-Skilled Labor [95.54 h]; Supervisor [95.54 h]; Skilled Labor [95.54 h] → SIC- Cost [781762]; Excavator [85.11 h]; Excavator Operator [95.54 h]; Dumper Operator [95.54 h]; Dumper Truck [100 h]; Grader [100 h]; Grader Operator [95.54 h]; Loader [67.14 h]; Loader Operator [95.54 h]; Un-Skilled Labor [95.54 h]; Supervisor [95.54 h]; Skilled Labor [95.54 h] |
| SDR-2-CON-RW-ZG-2290 | Embankments to the Road 3 Layer |  |  |  |  |  | resources SIC- Cost; Excavator [85.11 h]; Excavator Operator [95.54 h]; Dumper Operator [95.54 h]; Dumper Truck [100 h]; Grader [100 h]; Grader Operator [95.54 h]; Loader [40 h]; Loader Operator [95.54 h]; Un-Skilled Labor [57.79 h]; Supervisor [38.53 h]; Skilled Labor [57.79 h] → SIC- Cost [469057]; Excavator [85.11 h]; Excavator Operator [95.54 h]; Dumper Operator [95.54 h]; Dumper Truck [100 h]; Grader [100 h]; Grader Operator [95.54 h]; Loader [40 h]; Loader Operator [95.54 h]; Un-Skilled Labor [57.79 h]; Supervisor [38.53 h]; Skilled Labor [57.79 h] |
| SDR-2-CON-RW-ZG-1190 | Subgrade layer works |  |  |  |  |  | resources SIC- Cost; Excavator [6 h]; Excavator Operator [5.78 h]; Dumper Operator [57.79 h]; Dumper Truck [60 h]; Grader [25 h]; Grader Operator [24.08 h]; Loader [20 h]; Loader Operator [19.26 h]; Un-Skilled Labor [38.53 h]; Supervisor [9.63 h]; Skilled Labor [38.53 h]; Water Tanker [40 h]; Water Tanker Operator [38.53 h] → SIC- Cost [428831]; Excavator [6 h]; Excavator Operator [5.78 h]; Dumper Operator [57.79 h]; Dumper Truck [60 h]; Grader [25 h]; Grader Operator [24.08 h]; Loader [20 h]; Loader Operator [19.26 h]; Un-Skilled Labor [38.53 h]; Supervisor [9.63 h]; Skilled Labor [38.53 h]; Water Tanker [40 h]; Water Tanker Operator [38.53 h] |
| SDR-2-CON-RW-ZG-1200 | Plot Excavation for cuttings (all types of soil) |  |  |  |  |  | resources SIC- Cost [82090]; Excavator [12 h]; Excavator Operator [67.9 h]; Dumper Operator [67.9 h]; Dumper Truck [50 h]; Grader [50 h]; Grader Operator [67.9 h]; Loader [50 h]; Loader Operator [67.9 h]; Un-Skilled Labor [67.9 h]; Supervisor [67.9 h]; Skilled Labor [67.9 h] → SIC- Cost [380598]; Excavator [12 h]; Excavator Operator [67.9 h]; Dumper Operator [67.9 h]; Dumper Truck [50 h]; Grader [50 h]; Grader Operator [67.9 h]; Loader [50 h]; Loader Operator [67.9 h]; Un-Skilled Labor [67.9 h]; Supervisor [67.9 h]; Skilled Labor [67.9 h] |
| SDR-2-CON-RW-ZG-2300 | Embankments to the Plot 1 Layer |  |  |  |  | SDR-2-CON-RW-ZG-1200 FS+4d, SDR-2-CON-RW-ZG-1050 SS → SDR-2-CON-RW-ZG-1050 FS+9d, SDR-2-CON-RW-ZG-1200 FS+4d | resources SIC- Cost; Excavator [0.3 h]; Excavator Operator [67.9 h]; Dumper Operator [67.9 h]; Dumper Truck [50 h]; Grader [30 h]; Grader Operator [67.9 h]; Loader [50 h]; Loader Operator [95.54 h]; Un-Skilled Labor [95.54 h]; Supervisor [95.54 h]; Skilled Labor [95.54 h] → SIC- Cost [338054]; Excavator [0.3 h]; Excavator Operator [67.9 h]; Dumper Operator [67.9 h]; Dumper Truck [50 h]; Grader [30 h]; Grader Operator [67.9 h]; Loader [50 h]; Loader Operator [95.54 h]; Un-Skilled Labor [95.54 h]; Supervisor [95.54 h]; Skilled Labor [95.54 h] |
| SDR-2-CON-RW-ZG-1210 | Embankments to the Plot 2 Layer |  |  |  |  |  | resources SIC- Cost; Excavator [0.3 h]; Excavator Operator [67.9 h]; Dumper Operator [67.9 h]; Dumper Truck [50 h]; Grader [30 h]; Grader Operator [67.9 h]; Loader [24.05 h]; Loader Operator [95.54 h]; Un-Skilled Labor [38.53 h]; Supervisor [9.63 h]; Skilled Labor [38.53 h] → SIC- Cost [39546.3]; Excavator [0.3 h]; Excavator Operator [67.9 h]; Dumper Operator [67.9 h]; Dumper Truck [50 h]; Grader [30 h]; Grader Operator [67.9 h]; Loader [24.05 h]; Loader Operator [95.54 h]; Un-Skilled Labor [38.53 h]; Supervisor [9.63 h]; Skilled Labor [38.53 h] |
| 3 | **Asphalt Works** |  | 2026-12-23 → 2026-12-09 (-14d) |  |  |  |  |
| SDR-2-CON-RW-ZG-1260 | Asphalt works 2nd layer with RC-02 | 2026-11-30 → 2026-11-16 (-14d) | 2026-12-23 → 2026-12-09 (-14d) |  | 36d → 13d |  |  |
| 4 | **Kerbstone Installation** |  | 2027-01-16 → 2027-01-02 (-14d) |  |  |  |  |
| SDR-2-CON-RW-ZG-2560 | Kerbstone Installation "all Types" Part 1 |  | 2026-11-29 → 2026-11-22 (-7d) |  | 9d → 8d |  | resources SIC- Cost [286905]; Un-Skilled Labor [66.88 h]; Supervisor [10.06 h]; Skilled Labor [66.88 h] → SIC- Cost [32835.8]; Un-Skilled Labor [66.88 h]; Supervisor [10.06 h]; Skilled Labor [66.88 h] |
| SDR-2-CON-RW-ZG-1270 | Kerbstone Installation "all Types" Part 2 | 2026-12-24 → 2026-12-10 (-14d) | 2027-01-16 → 2027-01-02 (-14d) |  | 36d → 13d |  | resources SIC- Cost [286905]; Un-Skilled Labor [66.88 h]; Supervisor [10.06 h]; Skilled Labor [66.88 h] → SIC- Cost [254069]; Un-Skilled Labor [66.88 h]; Supervisor [10.06 h]; Skilled Labor [66.88 h] |
| 5 | **Interlock Installation** | 2027-01-17 → 2027-01-03 (-14d) | 2027-02-09 → 2027-01-26 (-14d) |  |  |  |  |
| SDR-2-CON-RW-ZG-1280 | Interlock Installation | 2027-01-17 → 2027-01-03 (-14d) | 2027-02-09 → 2027-01-26 (-14d) |  | 36d → 13d |  |  |
| 6 | **Road Marking** | 2027-02-10 → 2027-01-27 (-14d) | 2027-03-20 → 2027-03-01 (-19d) |  |  |  |  |
| SDR-2-CON-RW-ZG-1290 | Retroreflective Thermoplastic White Traffic lines | 2027-02-10 → 2027-01-27 (-14d) | 2027-02-27 → 2027-02-11 (-16d) |  | 36d → 13d |  |  |
| SDR-2-CON-RW-ZG-1300 | Retroreflective Thermoplastic Yellow, Traffic lines | 2027-02-28 → 2027-02-13 (-15d) | 2027-03-20 → 2027-03-01 (-19d) |  | 36d → 13d |  |  |
| 7 | **Traffic Signage** | 2027-03-21 → 2027-03-02 (-19d) | 2027-04-12 → 2027-03-29 (-14d) |  |  |  |  |
| SDR-2-CON-RW-ZG-1310 | Single post-Traffic signs Installation | 2027-03-21 → 2027-03-02 (-19d) | 2027-04-12 → 2027-03-29 (-14d) |  | 36d → 13d |  | resources SIC- Cost [5283.72]; Un-Skilled Labor [19.11 h]; Supervisor [19.11 h]; Skilled Labor [19.11 h] → SIC- Cost [5283.73]; Un-Skilled Labor [19.11 h]; Supervisor [19.11 h]; Skilled Labor [19.11 h] |
| 8 | **ROAD WORKS IN ( PH2-G-MCE0 )** |  | 2027-05-03 → 2027-06-28 (+56d) |  |  |  |  |
| SDR-2-CON-RW-ZG-1470 | Roadway Excavation and cuttings |  |  |  |  |  | resources SIC- Cost [1563524]; Excavator [10 h]; Excavator Operator [143.3 h]; Dumper Operator [143.3 h]; Dumper Truck [150 h]; Grader [20 h]; Grader Operator [143.3 h]; Loader [167.14 h]; Loader Operator [143.3 h]; Un-Skilled Labor [143.3 h]; Supervisor [143.3 h]; Skilled Labor [143.3 h] → SIC- Cost [23081.5]; Excavator [10 h]; Excavator Operator [143.3 h]; Dumper Operator [143.3 h]; Dumper Truck [150 h]; Grader [20 h]; Grader Operator [143.3 h]; Loader [167.14 h]; Loader Operator [143.3 h]; Un-Skilled Labor [143.3 h]; Supervisor [143.3 h]; Skilled Labor [143.3 h] |
| SDR-2-CON-RW-ZG-2350 | Embankments to the Road 1 Layer |  |  |  |  |  | resources SIC- Cost; Excavator [85.11 h]; Excavator Operator [95.54 h]; Dumper Operator [95.54 h]; Dumper Truck [100 h]; Grader [100 h]; Grader Operator [95.54 h]; Loader [100 h]; Loader Operator [95.54 h]; Un-Skilled Labor [95.54 h]; Supervisor [82.82 h]; Skilled Labor [95.54 h] → SIC- Cost [125082]; Excavator [85.11 h]; Excavator Operator [95.54 h]; Dumper Operator [95.54 h]; Dumper Truck [100 h]; Grader [100 h]; Grader Operator [95.54 h]; Loader [100 h]; Loader Operator [95.54 h]; Un-Skilled Labor [95.54 h]; Supervisor [82.82 h]; Skilled Labor [95.54 h] |
| SDR-2-CON-RW-ZG-2360 | Embankments to the Road 2 Layer |  |  |  |  |  | resources SIC- Cost; Excavator [85.11 h]; Excavator Operator [95.54 h]; Dumper Operator [95.54 h]; Dumper Truck [100 h]; Grader [100 h]; Grader Operator [95.54 h]; Loader [100 h]; Loader Operator [95.54 h]; Un-Skilled Labor [10.03 h]; Supervisor [10.03 h]; Skilled Labor [10.03 h] → SIC- Cost [187623]; Excavator [85.11 h]; Excavator Operator [95.54 h]; Dumper Operator [95.54 h]; Dumper Truck [100 h]; Grader [100 h]; Grader Operator [95.54 h]; Loader [100 h]; Loader Operator [95.54 h]; Un-Skilled Labor [10.03 h]; Supervisor [10.03 h]; Skilled Labor [10.03 h] |
| SDR-2-CON-RW-ZG-2370 | Embankments to the Road 3 Layer |  |  |  |  |  | resources SIC- Cost; Excavator [85.11 h]; Excavator Operator [95.54 h]; Dumper Operator [95.54 h]; Dumper Truck [100 h]; Grader [100 h]; Grader Operator [95.54 h]; Loader [100 h]; Loader Operator [95.54 h]; Un-Skilled Labor [95.54 h]; Supervisor [95.54 h]; Skilled Labor [95.54 h] → SIC- Cost [469057]; Excavator [85.11 h]; Excavator Operator [95.54 h]; Dumper Operator [95.54 h]; Dumper Truck [100 h]; Grader [100 h]; Grader Operator [95.54 h]; Loader [100 h]; Loader Operator [95.54 h]; Un-Skilled Labor [95.54 h]; Supervisor [95.54 h]; Skilled Labor [95.54 h] |
| SDR-2-CON-RW-ZG-1480 | Embankments to the Road 4 Layer |  |  |  |  |  | resources SIC- Cost; Excavator [85.11 h]; Excavator Operator [95.54 h]; Dumper Operator [95.54 h]; Dumper Truck [100 h]; Grader [100 h]; Grader Operator [95.54 h]; Loader [71.9 h]; Loader Operator [95.54 h]; Un-Skilled Labor [95.54 h]; Supervisor [95.54 h]; Skilled Labor [95.54 h] → SIC- Cost [781762]; Excavator [85.11 h]; Excavator Operator [95.54 h]; Dumper Operator [95.54 h]; Dumper Truck [100 h]; Grader [100 h]; Grader Operator [95.54 h]; Loader [71.9 h]; Loader Operator [95.54 h]; Un-Skilled Labor [95.54 h]; Supervisor [95.54 h]; Skilled Labor [95.54 h] |
| SDR-2-CON-RW-ZG-1490 | Subgrade layer works |  |  |  |  |  | resources SIC- Cost; Excavator [6 h]; Excavator Operator [5.78 h]; Dumper Operator [48.16 h]; Dumper Truck [50 h]; Grader [15 h]; Grader Operator [67.9 h]; Loader [20 h]; Loader Operator [19.26 h]; Un-Skilled Labor [38.53 h]; Supervisor [9.63 h]; Skilled Labor [38.53 h]; Water Tanker [50 h]; Water Tanker Operator [48.16 h] → SIC- Cost [876592]; Excavator [6 h]; Excavator Operator [5.78 h]; Dumper Operator [48.16 h]; Dumper Truck [50 h]; Grader [15 h]; Grader Operator [67.9 h]; Loader [20 h]; Loader Operator [19.26 h]; Un-Skilled Labor [38.53 h]; Supervisor [9.63 h]; Skilled Labor [38.53 h]; Water Tanker [50 h]; Water Tanker Operator [48.16 h] |
| SDR-2-CON-RW-ZG-2380 | Embankments to the Plot 1 Layer |  |  |  |  |  | resources SIC- Cost; Excavator [15 h]; Excavator Operator [95.54 h]; Dumper Operator [67.9 h]; Dumper Truck [50 h]; Grader [15 h]; Grader Operator [67.9 h]; Loader [33.43 h]; Loader Operator [95.54 h]; Un-Skilled Labor [67.9 h]; Supervisor [67.9 h]; Skilled Labor [67.9 h] → SIC- Cost [39546.3]; Excavator [15 h]; Excavator Operator [95.54 h]; Dumper Operator [67.9 h]; Dumper Truck [50 h]; Grader [15 h]; Grader Operator [67.9 h]; Loader [33.43 h]; Loader Operator [95.54 h]; Un-Skilled Labor [67.9 h]; Supervisor [67.9 h]; Skilled Labor [67.9 h] |
| SDR-2-CON-RW-ZG-1510 | Embankments to the Plot 2 Layer |  |  |  |  |  | resources SIC- Cost; Excavator [15 h]; Excavator Operator [95.54 h]; Dumper Operator [67.9 h]; Dumper Truck [50 h]; Grader [274.14 h]; Grader Operator [67.9 h]; Loader [60 h]; Loader Operator [95.54 h]; Un-Skilled Labor [28.9 h]; Supervisor [9.63 h]; Skilled Labor [28.9 h] → SIC- Cost [39546.3]; Excavator [15 h]; Excavator Operator [95.54 h]; Dumper Operator [67.9 h]; Dumper Truck [50 h]; Grader [274.14 h]; Grader Operator [67.9 h]; Loader [60 h]; Loader Operator [95.54 h]; Un-Skilled Labor [28.9 h]; Supervisor [9.63 h]; Skilled Labor [28.9 h] |
| 8 | **Demolition Work** | 2026-11-09 → 2026-11-05 (-4d) | 2026-12-26 → 2026-11-12 (-44d) |  |  |  |  |
| SDR-2-CON-RW-ZG-1530 | Removal of curbstone | 2026-11-09 → 2026-11-05 A (-4d) | 2026-11-12 A | 0% → 100% | 41d → none |  |  |
| SDR-2-CON-RW-ZG-1540 | Milling of wearing course | 2026-12-21 → 2026-11-05 A (-46d) | 2026-12-26 → 2026-11-12 A (-44d) | 0% → 100% | 9d → none |  |  |
| 3 | **Asphalt Works** |  | 2027-01-12 → 2027-03-04 (+51d) |  |  |  |  |
| SDR-2-CON-RW-ZG-1560 | Asphalt works 2nd layer with RC-02 | 2026-12-27 → 2027-02-15 (+50d) | 2027-01-12 → 2027-03-04 (+51d) |  | 9d → -46d |  |  |
| 4 | **Kerbstone Installation** |  | 2027-02-06 → 2027-04-03 (+56d) |  |  |  |  |
| SDR-2-CON-RW-ZG-2580 | Kerbstone Installation "all Types" Part 1 | 2026-11-09 A | 2026-11-29 → 2026-12-12 (+13d) | 0% → 20% | 32d → 15d |  | resources SIC- Cost [286905]; Un-Skilled Labor [66.88 h]; Supervisor [10.06 h]; Skilled Labor [66.88 h] → SIC- Cost [32835.8]; Un-Skilled Labor [66.88 h]; Supervisor [10.06 h]; Skilled Labor [66.88 h] |
| SDR-2-CON-RW-ZG-1570 | Kerbstone Installation "all Types" Part 2 | 2027-01-13 → 2027-03-06 (+52d) | 2027-02-06 → 2027-04-03 (+56d) |  | 9d → -46d |  | resources SIC- Cost [286905]; Un-Skilled Labor [66.88 h]; Supervisor [10.06 h]; Skilled Labor [66.88 h] → SIC- Cost [254069]; Un-Skilled Labor [66.88 h]; Supervisor [10.06 h]; Skilled Labor [66.88 h] |
| 5 | **Interlock Installation** | 2027-02-07 → 2027-04-04 (+56d) | 2027-03-03 → 2027-04-27 (+55d) |  |  |  |  |
| SDR-2-CON-RW-ZG-1580 | Interlock Installation | 2027-02-07 → 2027-04-04 (+56d) | 2027-03-03 → 2027-04-27 (+55d) |  | 9d → -46d |  |  |
| 6 | **Road Marking** | 2027-03-04 → 2027-04-28 (+55d) | 2027-04-10 → 2027-06-05 (+56d) |  |  |  |  |
| SDR-2-CON-RW-ZG-1590 | Retroreflective Thermoplastic White Traffic lines | 2027-03-04 → 2027-04-28 (+55d) | 2027-03-24 → 2027-05-13 (+50d) |  | 9d → -46d |  |  |
| SDR-2-CON-RW-ZG-1600 | Retroreflective Thermoplastic Yellow, Traffic lines | 2027-03-25 → 2027-05-15 (+51d) | 2027-04-10 → 2027-06-05 (+56d) |  | 9d → -46d |  |  |
| 7 | **Traffic Signage** | 2027-04-11 → 2027-06-06 (+56d) | 2027-05-03 → 2027-06-28 (+56d) |  |  |  |  |
| SDR-2-CON-RW-ZG-1610 | Single post-Traffic signs Installation | 2027-04-11 → 2027-06-06 (+56d) | 2027-05-03 → 2027-06-28 (+56d) |  | 9d → -46d |  | resources SIC- Cost [5283.72]; Un-Skilled Labor [19.11 h]; Supervisor [19.11 h]; Skilled Labor [19.11 h] → SIC- Cost [5283.73]; Un-Skilled Labor [19.11 h]; Supervisor [19.11 h]; Skilled Labor [19.11 h] |
| 4 | **ROAD WORKS IN ( PH2-G-MCD0 )** |  | 2027-04-18 → 2027-04-05 (-13d) |  |  |  |  |
| SDR-2-CON-RW-ZG-1620 | Roadway Excavation and cuttings |  |  |  |  |  | resources SIC- Cost [1563524]; Excavator [20 h]; Excavator Operator [143.3 h]; Dumper Operator [143.3 h]; Dumper Truck [150 h]; Grader [30 h]; Grader Operator [143.3 h]; Loader [174 h]; Loader Operator [143.3 h]; Un-Skilled Labor [143.3 h]; Supervisor [143.3 h]; Skilled Labor [143.3 h] → SIC- Cost [23081.5]; Excavator [20 h]; Excavator Operator [143.3 h]; Dumper Operator [143.3 h]; Dumper Truck [150 h]; Grader [30 h]; Grader Operator [143.3 h]; Loader [174 h]; Loader Operator [143.3 h]; Un-Skilled Labor [143.3 h]; Supervisor [143.3 h]; Skilled Labor [143.3 h] |
| SDR-2-CON-RW-ZG-2390 | Embankments to the Road 1 Layer |  |  |  |  | SDR-2-CON-RW-ZG-1620 → SDR-2-CON-RW-ZG-1620 FS+3d | resources SIC- Cost; Excavator [10 h]; Excavator Operator [95.54 h]; Dumper Operator [95.54 h]; Dumper Truck [100 h]; Grader [100 h]; Grader Operator [95.54 h]; Loader [16 h]; Loader Operator [95.54 h]; Un-Skilled Labor [95.54 h]; Supervisor [73.72 h]; Skilled Labor [95.54 h] → SIC- Cost [125082]; Excavator [10 h]; Excavator Operator [95.54 h]; Dumper Operator [95.54 h]; Dumper Truck [100 h]; Grader [100 h]; Grader Operator [95.54 h]; Loader [16 h]; Loader Operator [95.54 h]; Un-Skilled Labor [95.54 h]; Supervisor [73.72 h]; Skilled Labor [95.54 h] |
| SDR-2-CON-RW-ZG-2400 | Embankments to the Road 2 Layer |  |  |  |  |  | resources SIC- Cost; Excavator [10 h]; Excavator Operator [95.54 h]; Dumper Operator [95.54 h]; Dumper Truck [100 h]; Grader [94.76 h]; Grader Operator [95.54 h]; Loader [16 h]; Loader Operator [95.54 h]; Un-Skilled Labor [19.13 h]; Supervisor [19.13 h]; Skilled Labor [19.13 h] → SIC- Cost [187623]; Excavator [10 h]; Excavator Operator [95.54 h]; Dumper Operator [95.54 h]; Dumper Truck [100 h]; Grader [94.76 h]; Grader Operator [95.54 h]; Loader [16 h]; Loader Operator [95.54 h]; Un-Skilled Labor [19.13 h]; Supervisor [19.13 h]; Skilled Labor [19.13 h] |
| SDR-2-CON-RW-ZG-2410 | Embankments to the Road 3 Layer |  |  |  |  |  | resources SIC- Cost; Excavator [10 h]; Excavator Operator [95.54 h]; Dumper Operator [95.54 h]; Dumper Truck [100 h]; Grader [100 h]; Grader Operator [95.54 h]; Loader [16 h]; Loader Operator [95.54 h]; Un-Skilled Labor [95.54 h]; Supervisor [95.54 h]; Skilled Labor [95.54 h] → SIC- Cost [469057]; Excavator [10 h]; Excavator Operator [95.54 h]; Dumper Operator [95.54 h]; Dumper Truck [100 h]; Grader [100 h]; Grader Operator [95.54 h]; Loader [16 h]; Loader Operator [95.54 h]; Un-Skilled Labor [95.54 h]; Supervisor [95.54 h]; Skilled Labor [95.54 h] |
| SDR-2-CON-RW-ZG-1630 | Embankments to the Road 4 Layer |  |  |  |  |  | resources SIC- Cost; Excavator [10 h]; Excavator Operator [95.54 h]; Dumper Operator [95.54 h]; Dumper Truck [100 h]; Grader [100 h]; Grader Operator [95.54 h]; Loader [16 h]; Loader Operator [95.54 h]; Un-Skilled Labor [95.54 h]; Supervisor [95.54 h]; Skilled Labor [95.54 h] → SIC- Cost [781762]; Excavator [10 h]; Excavator Operator [95.54 h]; Dumper Operator [95.54 h]; Dumper Truck [100 h]; Grader [100 h]; Grader Operator [95.54 h]; Loader [16 h]; Loader Operator [95.54 h]; Un-Skilled Labor [95.54 h]; Supervisor [95.54 h]; Skilled Labor [95.54 h] |
| SDR-2-CON-RW-ZG-1640 | Subgrade layer works |  |  |  |  |  | resources SIC- Cost; Excavator [6 h]; Excavator Operator [5.78 h]; Dumper Operator [57.79 h]; Dumper Truck [60 h]; Grader [10 h]; Grader Operator [114.64 h]; Loader [10 h]; Loader Operator [9.63 h]; Un-Skilled Labor [38.53 h]; Supervisor [9.63 h]; Skilled Labor [38.53 h]; Water Tanker [40 h]; Water Tanker Operator [38.53 h] → SIC- Cost [876592]; Excavator [6 h]; Excavator Operator [5.78 h]; Dumper Operator [57.79 h]; Dumper Truck [60 h]; Grader [10 h]; Grader Operator [114.64 h]; Loader [10 h]; Loader Operator [9.63 h]; Un-Skilled Labor [38.53 h]; Supervisor [9.63 h]; Skilled Labor [38.53 h]; Water Tanker [40 h]; Water Tanker Operator [38.53 h] |
| SDR-2-CON-RW-ZG-1650 | Plot Excavation for cuttings (all types of soil) |  |  |  |  | SDR-2-CON-RW-ZG-1640 FF, SDR-2-CON-RW-ZG-1620 → SDR-2-CON-RW-ZG-1620, SDR-2-CON-RW-ZG-1640 |  |
| SDR-2-CON-RW-ZG-2420 | Embankments to the Plot 1 Layer |  |  |  |  | SDR-2-CON-RW-ZG-1650 FF, SDR-2-CON-RW-ZG-2580 FF → SDR-2-CON-RW-ZG-1650, SDR-2-CON-RW-ZG-2580 | resources SIC- Cost; Excavator [10 h]; Excavator Operator [95.54 h]; Dumper Operator [95.54 h]; Dumper Truck [60 h]; Grader [20 h]; Grader Operator [95.54 h]; Loader [30.57 h]; Loader Operator [95.54 h]; Un-Skilled Labor [38.53 h]; Supervisor [9.63 h]; Skilled Labor [38.53 h] → SIC- Cost [39546.3]; Excavator [10 h]; Excavator Operator [95.54 h]; Dumper Operator [95.54 h]; Dumper Truck [60 h]; Grader [20 h]; Grader Operator [95.54 h]; Loader [30.57 h]; Loader Operator [95.54 h]; Un-Skilled Labor [38.53 h]; Supervisor [9.63 h]; Skilled Labor [38.53 h] |
| SDR-2-CON-RW-ZG-1660 | Embankments to the Plot 2 Layer |  |  |  |  | SDR-2-CON-RW-ZG-2380, SDR-2-CON-RW-ZG-2420 FF → SDR-2-CON-RW-ZG-2420 FS+3d, SDR-2-CON-RW-ZG-2380 | resources SIC- Cost; Excavator [10 h]; Excavator Operator [95.54 h]; Dumper Operator [95.54 h]; Dumper Truck [60 h]; Grader [20 h]; Grader Operator [95.54 h]; Loader [60 h]; Loader Operator [95.54 h]; Un-Skilled Labor [38.53 h]; Supervisor [9.63 h]; Skilled Labor [38.53 h] → SIC- Cost [39546.3]; Excavator [10 h]; Excavator Operator [95.54 h]; Dumper Operator [95.54 h]; Dumper Truck [60 h]; Grader [20 h]; Grader Operator [95.54 h]; Loader [60 h]; Loader Operator [95.54 h]; Un-Skilled Labor [38.53 h]; Supervisor [9.63 h]; Skilled Labor [38.53 h] |
| SDR-2-CON-RW-ZG-1690 | Milling of wearing course |  | 2026-11-14 A | 50% → 100% | 31d → none |  |  |
| 3 | **Asphalt Works** |  | 2026-12-29 → 2026-12-16 (-13d) |  |  |  |  |
| SDR-2-CON-RW-ZG-1700 | Asphalt works 1st Layer with MC-01 |  | 2026-12-05 → 2026-11-22 (-13d) |  | 31d → 6d |  |  |
| SDR-2-CON-RW-ZG-1710 | Asphalt works 2nd layer with RC-02 | 2026-12-06 → 2026-11-23 (-13d) | 2026-12-29 → 2026-12-16 (-13d) |  | 31d → 6d |  |  |

| ID | Task | Start | Finish | Complete | Total float | Predecessors | Other |
| --- | --- | --- | --- | --- | --- | --- | --- |
| 4 | **Kerbstone Installation** | 2026-11-09 → 2026-11-14 (+5d) | 2027-01-23 → 2027-01-10 (-13d) |  |  |  |  |
| SDR-2-CON-RW-ZG-2590 | Kerbstone Installation "all Types" Part 1 | 2026-11-09 → 2026-11-14 A (+5d) | 2026-11-29 → 2026-12-03 (+4d) | 0% → 20% | 4d → 1d |  | resources SIC- Cost [286905]; Un-Skilled Labor [28.9 h]; Supervisor [10.06 h]; Skilled Labor [28.9 h] → SIC- Cost [32835.8]; Un-Skilled Labor [28.9 h]; Supervisor [10.06 h]; Skilled Labor [28.9 h] |
| SDR-2-CON-RW-ZG-1720 | Kerbstone Installation "all Types" Part 2 | 2026-12-30 → 2026-12-17 (-13d) | 2027-01-23 → 2027-01-10 (-13d) |  | 31d → 6d |  | resources SIC- Cost [286905]; Un-Skilled Labor [28.9 h]; Supervisor [10.06 h]; Skilled Labor [28.9 h] → SIC- Cost [254069]; Un-Skilled Labor [28.9 h]; Supervisor [10.06 h]; Skilled Labor [28.9 h] |
| 5 | **Interlock Installation** | 2027-01-24 → 2027-01-11 (-13d) | 2027-02-15 → 2027-02-02 (-13d) |  |  |  |  |
| SDR-2-CON-RW-ZG-1730 | Interlock Installation | 2027-01-24 → 2027-01-11 (-13d) | 2027-02-15 → 2027-02-02 (-13d) |  | 31d → 6d |  |  |
| 6 | **Road Marking** | 2027-02-16 → 2027-02-03 (-13d) | 2027-03-25 → 2027-03-08 (-17d) |  |  |  |  |
| SDR-2-CON-RW-ZG-1740 | Retroreflective Thermoplastic White Traffic lines | 2027-02-16 → 2027-02-03 (-13d) | 2027-03-04 → 2027-02-18 (-14d) |  | 31d → 6d |  |  |
| SDR-2-CON-RW-ZG-1750 | Retroreflective Thermoplastic Yellow, Traffic lines | 2027-03-06 → 2027-02-20 (-14d) | 2027-03-25 → 2027-03-08 (-17d) |  | 31d → 6d |  |  |
| 7 | **Traffic Signage** | 2027-03-27 → 2027-03-14 (-13d) | 2027-04-18 → 2027-04-05 (-13d) |  |  |  |  |
| SDR-2-CON-RW-ZG-1760 | Single post-Traffic signs Installation | 2027-03-27 → 2027-03-14 (-13d) | 2027-04-18 → 2027-04-05 (-13d) |  | 31d → 6d |  | resources SIC- Cost [5283.72]; Un-Skilled Labor [19.11 h]; Supervisor [19.11 h]; Skilled Labor [19.11 h] → SIC- Cost [5283.73]; Un-Skilled Labor [19.11 h]; Supervisor [19.11 h]; Skilled Labor [19.11 h] |
| 2 | **ROAD WORKS IN ( PH2-G-MCF0 )** |  | 2027-04-21 → 2027-04-18 (-3d) |  |  |  |  |
| SDR-2-CON-RW-ZG-1770 | Roadway Excavation and cuttings |  |  |  |  |  | resources SIC- Cost [1563524]; Excavator [15 h]; Excavator Operator [143.3 h]; Dumper Operator [143.3 h]; Dumper Truck [150 h]; Grader [25 h]; Grader Operator [143.3 h]; Loader [184.29 h]; Loader Operator [143.3 h]; Un-Skilled Labor [143.3 h]; Supervisor [143.3 h]; Skilled Labor [143.3 h] → SIC- Cost [23081.5]; Excavator [15 h]; Excavator Operator [143.3 h]; Dumper Operator [143.3 h]; Dumper Truck [150 h]; Grader [25 h]; Grader Operator [143.3 h]; Loader [184.29 h]; Loader Operator [143.3 h]; Un-Skilled Labor [143.3 h]; Supervisor [143.3 h]; Skilled Labor [143.3 h] |
| SDR-2-CON-RW-ZG-2430 | Embankments to the Road 1 Layer |  |  |  |  | SDR-2-CON-RW-ZG-1770 → SDR-2-CON-RW-ZG-1770 FS+3d | resources SIC- Cost; Excavator [20 h]; Excavator Operator [134.24 h]; Dumper Operator [95.54 h]; Dumper Truck [100 h]; Grader [20 h]; Grader Operator [95.54 h]; Loader [100 h]; Loader Operator [95.54 h]; Un-Skilled Labor [55.53 h]; Supervisor [55.53 h]; Skilled Labor [55.53 h] → SIC- Cost [125082]; Excavator [20 h]; Excavator Operator [134.24 h]; Dumper Operator [95.54 h]; Dumper Truck [100 h]; Grader [20 h]; Grader Operator [95.54 h]; Loader [100 h]; Loader Operator [95.54 h]; Un-Skilled Labor [55.53 h]; Supervisor [55.53 h]; Skilled Labor [55.53 h] |
| SDR-2-CON-RW-ZG-2440 | Embankments to the Road 2 Layer |  |  |  |  |  | resources SIC- Cost; Excavator [20 h]; Excavator Operator [355.95 h]; Dumper Operator [95.54 h]; Dumper Truck [100 h]; Grader [20 h]; Grader Operator [95.54 h]; Loader [100 h]; Loader Operator [95.54 h]; Un-Skilled Labor [37.33 h]; Supervisor [37.33 h]; Skilled Labor [37.33 h] → SIC- Cost [187623]; Excavator [20 h]; Excavator Operator [355.95 h]; Dumper Operator [95.54 h]; Dumper Truck [100 h]; Grader [20 h]; Grader Operator [95.54 h]; Loader [100 h]; Loader Operator [95.54 h]; Un-Skilled Labor [37.33 h]; Supervisor [37.33 h]; Skilled Labor [37.33 h] |
| SDR-2-CON-RW-ZG-2450 | Embankments to the Road 3 Layer |  |  |  |  |  | resources SIC- Cost; Excavator [20 h]; Excavator Operator [859.82 h]; Dumper Operator [95.54 h]; Dumper Truck [100 h]; Grader [20 h]; Grader Operator [95.54 h]; Loader [100 h]; Loader Operator [95.54 h]; Un-Skilled Labor [95.54 h]; Supervisor [95.54 h]; Skilled Labor [95.54 h] → SIC- Cost [469057]; Excavator [20 h]; Excavator Operator [859.82 h]; Dumper Operator [95.54 h]; Dumper Truck [100 h]; Grader [20 h]; Grader Operator [95.54 h]; Loader [100 h]; Loader Operator [95.54 h]; Un-Skilled Labor [95.54 h]; Supervisor [95.54 h]; Skilled Labor [95.54 h] |
| SDR-2-CON-RW-ZG-1780 | Embankments to the Road 4 Layer |  |  |  |  |  | resources SIC- Cost; Excavator [20 h]; Excavator Operator [859.82 h]; Dumper Operator [95.54 h]; Dumper Truck [100 h]; Grader [20 h]; Grader Operator [95.54 h]; Loader [59.52 h]; Loader Operator [95.54 h]; Un-Skilled Labor [95.54 h]; Supervisor [95.54 h]; Skilled Labor [95.54 h] → SIC- Cost [781762]; Excavator [20 h]; Excavator Operator [859.82 h]; Dumper Operator [95.54 h]; Dumper Truck [100 h]; Grader [20 h]; Grader Operator [95.54 h]; Loader [59.52 h]; Loader Operator [95.54 h]; Un-Skilled Labor [95.54 h]; Supervisor [95.54 h]; Skilled Labor [95.54 h] |
| SDR-2-CON-RW-ZG-1790 | Subgrade layer works |  |  |  |  |  | resources SIC- Cost; Excavator [6 h]; Excavator Operator [5.78 h]; Dumper Operator [67.43 h]; Dumper Truck [70 h]; Grader [10 h]; Grader Operator [9.63 h]; Loader [20 h]; Loader Operator [19.26 h]; Un-Skilled Labor [38.53 h]; Supervisor [9.63 h]; Skilled Labor [38.53 h]; Water Tanker [10 h]; Water Tanker Operator [9.63 h] → SIC- Cost [1025846]; Excavator [6 h]; Excavator Operator [5.78 h]; Dumper Operator [67.43 h]; Dumper Truck [70 h]; Grader [10 h]; Grader Operator [9.63 h]; Loader [20 h]; Loader Operator [19.26 h]; Un-Skilled Labor [38.53 h]; Supervisor [9.63 h]; Skilled Labor [38.53 h]; Water Tanker [10 h]; Water Tanker Operator [9.63 h] |
| SDR-2-CON-RW-ZG-2460 | Embankments to the Plot1 Layer |  |  |  |  |  | resources SIC- Cost; Excavator [10 h]; Excavator Operator [95.54 h]; Dumper Operator [95.54 h]; Dumper Truck [60 h]; Grader [10 h]; Grader Operator [95.54 h]; Loader [46.1 h]; Loader Operator [95.54 h]; Un-Skilled Labor [95.54 h]; Supervisor [95.54 h]; Skilled Labor [95.54 h] → SIC- Cost [39546.3]; Excavator [10 h]; Excavator Operator [95.54 h]; Dumper Operator [95.54 h]; Dumper Truck [60 h]; Grader [10 h]; Grader Operator [95.54 h]; Loader [46.1 h]; Loader Operator [95.54 h]; Un-Skilled Labor [95.54 h]; Supervisor [95.54 h]; Skilled Labor [95.54 h] |
| SDR-2-CON-RW-ZG-1810 | Embankments to the Plot 2 Layer |  |  |  |  |  | resources SIC- Cost; Excavator [10 h]; Excavator Operator [95.54 h]; Dumper Operator [95.54 h]; Dumper Truck [60 h]; Grader [10 h]; Grader Operator [95.54 h]; Loader [60 h]; Loader Operator [95.54 h]; Un-Skilled Labor [28.9 h]; Supervisor [9.63 h]; Skilled Labor [28.9 h] → SIC- Cost [39546.3]; Excavator [10 h]; Excavator Operator [95.54 h]; Dumper Operator [95.54 h]; Dumper Truck [60 h]; Grader [10 h]; Grader Operator [95.54 h]; Loader [60 h]; Loader Operator [95.54 h]; Un-Skilled Labor [28.9 h]; Supervisor [9.63 h]; Skilled Labor [28.9 h] |
| 8 | **Demolition Work** | 2026-11-09 → 2026-10-24 (-16d) | 2026-12-07 → 2026-10-31 (-37d) |  |  |  |  |
| SDR-2-CON-RW-ZG-1830 | Removal of curbstone | 2026-11-09 → 2026-10-24 A (-16d) | 2026-11-16 → 2026-10-31 A (-16d) | 0% → 100% | 15d → none |  |  |
| SDR-2-CON-RW-ZG-1840 | Milling of wearing course | 2026-11-30 → 2026-10-24 A (-37d) | 2026-12-07 → 2026-10-31 A (-37d) | 0% → 100% | 4d → none |  |  |
| 3 | **Asphalt Works** |  | 2026-12-31 → 2026-12-28 (-3d) |  |  |  |  |
| SDR-2-CON-RW-ZG-1850 | Asphalt works 1st Layer with MC-01 |  |  |  |  | SDR-2-CON-RW-ZG-1820 FF, SDR-2-CON-RW-ZG-1840 FF → SDR-2-CON-RW-ZG-1820, SDR-2-CON-RW-ZG-1840 |  |
| SDR-2-CON-RW-ZG-1860 | Asphalt works 2nd layer with RC-02 | 2026-12-08 → 2026-12-05 (-3d) | 2026-12-31 → 2026-12-28 (-3d) |  | 4d → 1d | SDR-2-CON-RW-ZG-1850 → SDR-2-CON-RW-ZG-1850, SDR-2-CON-RW-ZG-1650 |  |
| 4 | **Kerbstone Installation** | 2026-11-09 → 2026-11-14 (+5d) | 2027-01-25 → 2027-01-21 (-4d) |  |  |  |  |
| SDR-2-CON-RW-ZG-2600 | Kerbstone Installation "all Types" Part 1 | 2026-11-09 → 2026-11-14 A (+5d) | 2026-11-29 → 2026-12-03 (+4d) | 0% → 20% | 2d → 0d |  | resources SIC- Cost [286905]; Un-Skilled Labor [66.88 h]; Supervisor [10.06 h]; Skilled Labor [66.88 h] → SIC- Cost [32835.8]; Un-Skilled Labor [66.88 h]; Supervisor [10.06 h]; Skilled Labor [66.88 h] |
| SDR-2-CON-RW-ZG-1870 | Kerbstone Installation "all Types" Part 2 | 2027-01-02 → 2026-12-29 (-4d) | 2027-01-25 → 2027-01-21 (-4d) |  | 4d → 1d |  | resources SIC- Cost [286905]; Un-Skilled Labor [66.88 h]; Supervisor [10.06 h]; Skilled Labor [66.88 h] → SIC- Cost [254069]; Un-Skilled Labor [66.88 h]; Supervisor [10.06 h]; Skilled Labor [66.88 h] |
| 5 | **Interlock Installation** | 2027-01-26 → 2027-01-23 (-3d) | 2027-02-18 → 2027-02-15 (-3d) |  |  |  |  |
| SDR-2-CON-RW-ZG-1880 | Interlock Installation | 2027-01-26 → 2027-01-23 (-3d) | 2027-02-18 → 2027-02-15 (-3d) |  | 4d → 1d |  |  |
| 6 | **Road Marking** | 2027-02-20 → 2027-02-16 (-4d) | 2027-03-29 → 2027-03-25 (-4d) |  |  |  |  |
| SDR-2-CON-RW-ZG-1890 | Retroreflective Thermoplastic White Traffic lines | 2027-02-20 → 2027-02-16 (-4d) | 2027-03-08 → 2027-03-04 (-4d) |  | 4d → 1d |  |  |
| SDR-2-CON-RW-ZG-1900 | Retroreflective Thermoplastic Yellow, Traffic lines | 2027-03-14 → 2027-03-06 (-8d) | 2027-03-29 → 2027-03-25 (-4d) |  | 4d → 1d |  |  |
| 7 | **Traffic Signage** | 2027-03-30 → 2027-03-27 (-3d) | 2027-04-21 → 2027-04-18 (-3d) |  |  |  |  |
| SDR-2-CON-RW-ZG-1910 | Single post-Traffic signs Installation | 2027-03-30 → 2027-03-27 (-3d) | 2027-04-21 → 2027-04-18 (-3d) |  | 4d → 1d |  | resources SIC- Cost [5283.72]; Un-Skilled Labor [19.11 h]; Supervisor [19.11 h]; Skilled Labor [19.11 h] → SIC- Cost [5283.73]; Un-Skilled Labor [19.11 h]; Supervisor [19.11 h]; Skilled Labor [19.11 h] |
| 3 | **ROAD WORKS IN ( PH2-G-MCG0 )** |  | 2027-04-24 → 2027-04-19 (-5d) |  |  |  |  |
| SDR-2-CON-RW-ZG-1920 | Roadway Excavation and cuttings |  |  |  |  |  | resources SIC- Cost [1563524]; Excavator [10 h]; Excavator Operator [143.3 h]; Dumper Operator [143.3 h]; Dumper Truck [150 h]; Grader [10 h]; Grader Operator [143.3 h]; Loader [60 h]; Loader Operator [143.3 h]; Un-Skilled Labor [143.3 h]; Supervisor [143.3 h]; Skilled Labor [143.3 h] → SIC- Cost [23081.5]; Excavator [10 h]; Excavator Operator [143.3 h]; Dumper Operator [143.3 h]; Dumper Truck [150 h]; Grader [10 h]; Grader Operator [143.3 h]; Loader [60 h]; Loader Operator [143.3 h]; Un-Skilled Labor [143.3 h]; Supervisor [143.3 h]; Skilled Labor [143.3 h] |
| SDR-2-CON-RW-ZG-2470 | Embankments to the Road 1 Layer |  |  |  |  |  | resources SIC- Cost; Excavator [10 h]; Excavator Operator [95.54 h]; Dumper Operator [95.54 h]; Dumper Truck [100 h]; Grader [10 h]; Grader Operator [95.54 h]; Loader [100 h]; Loader Operator [95.54 h]; Un-Skilled Labor [55.53 h]; Supervisor [55.53 h]; Skilled Labor [55.53 h] → SIC- Cost [125082]; Excavator [10 h]; Excavator Operator [95.54 h]; Dumper Operator [95.54 h]; Dumper Truck [100 h]; Grader [10 h]; Grader Operator [95.54 h]; Loader [100 h]; Loader Operator [95.54 h]; Un-Skilled Labor [55.53 h]; Supervisor [55.53 h]; Skilled Labor [55.53 h] |
| SDR-2-CON-RW-ZG-2480 | Embankments to the Road 2 Layer |  |  |  |  |  | resources SIC- Cost; Excavator [10 h]; Excavator Operator [95.54 h]; Dumper Operator [95.54 h]; Dumper Truck [100 h]; Grader [10 h]; Grader Operator [95.54 h]; Loader [80 h]; Loader Operator [95.54 h]; Un-Skilled Labor [37.33 h]; Supervisor [37.33 h]; Skilled Labor [37.33 h] → SIC- Cost [187623]; Excavator [10 h]; Excavator Operator [95.54 h]; Dumper Operator [95.54 h]; Dumper Truck [100 h]; Grader [10 h]; Grader Operator [95.54 h]; Loader [80 h]; Loader Operator [95.54 h]; Un-Skilled Labor [37.33 h]; Supervisor [37.33 h]; Skilled Labor [37.33 h] |
| SDR-2-CON-RW-ZG-2490 | Embankments to the Road 3 Layer |  |  |  |  |  | resources SIC- Cost; Excavator [10 h]; Excavator Operator [95.54 h]; Dumper Operator [95.54 h]; Dumper Truck [100 h]; Grader [10 h]; Grader Operator [95.54 h]; Loader [80 h]; Loader Operator [95.54 h]; Un-Skilled Labor [95.54 h]; Supervisor [95.54 h]; Skilled Labor [95.54 h] → SIC- Cost [469057]; Excavator [10 h]; Excavator Operator [95.54 h]; Dumper Operator [95.54 h]; Dumper Truck [100 h]; Grader [10 h]; Grader Operator [95.54 h]; Loader [80 h]; Loader Operator [95.54 h]; Un-Skilled Labor [95.54 h]; Supervisor [95.54 h]; Skilled Labor [95.54 h] |
| SDR-2-CON-RW-ZG-1930 | Embankments to the Road 4 Layer |  |  |  |  |  | resources SIC- Cost; Excavator [10 h]; Excavator Operator [95.54 h]; Dumper Operator [95.54 h]; Dumper Truck [100 h]; Grader [10 h]; Grader Operator [95.54 h]; Loader [60 h]; Loader Operator [95.54 h]; Un-Skilled Labor [95.54 h]; Supervisor [95.54 h]; Skilled Labor [95.54 h] → SIC- Cost [781762]; Excavator [10 h]; Excavator Operator [95.54 h]; Dumper Operator [95.54 h]; Dumper Truck [100 h]; Grader [10 h]; Grader Operator [95.54 h]; Loader [60 h]; Loader Operator [95.54 h]; Un-Skilled Labor [95.54 h]; Supervisor [95.54 h]; Skilled Labor [95.54 h] |
| SDR-2-CON-RW-ZG-1940 | Subgrade layer works |  |  |  |  |  | resources SIC- Cost; Excavator [6 h]; Excavator Operator [5.78 h]; Dumper Operator [48.16 h]; Dumper Truck [50 h]; Grader [10 h]; Grader Operator [9.63 h]; Loader [20 h]; Loader Operator [19.26 h]; Un-Skilled Labor [38.53 h]; Supervisor [9.63 h]; Skilled Labor [38.53 h]; Water Tanker [40 h]; Water Tanker Operator [38.53 h] → SIC- Cost [1025846]; Excavator [6 h]; Excavator Operator [5.78 h]; Dumper Operator [48.16 h]; Dumper Truck [50 h]; Grader [10 h]; Grader Operator [9.63 h]; Loader [20 h]; Loader Operator [19.26 h]; Un-Skilled Labor [38.53 h]; Supervisor [9.63 h]; Skilled Labor [38.53 h]; Water Tanker [40 h]; Water Tanker Operator [38.53 h] |
| 9 | **Earth Works Plot** |  | 2026-11-10 → 2026-11-28 (+18d) |  |  |  |  |
| SDR-2-CON-RW-ZG-1950 | Plot Excavation for cuttings (all types of soil) |  | 2026-11-09 → 2026-10-24 A (-16d) | 55% → 100% | 18d → none |  |  |
| SDR-2-CON-RW-ZG-2500 | Embankments to the Plot 1 Layer |  | 2026-11-09 → 2026-11-21 (+12d) | 80% → 90% | 54d → 20d | SDR-2-CON-RW-ZG-1950 FF → SDR-2-CON-RW-ZG-1950, SDR-2-CON-RW-ZG-1650 | resources SIC- Cost; Excavator [20 h]; Excavator Operator [95.54 h]; Dumper Operator [95.54 h]; Dumper Truck [60 h]; Grader [20 h]; Grader Operator [95.54 h]; Loader [31.1 h]; Loader Operator [95.54 h]; Un-Skilled Labor [95.54 h]; Supervisor [95.54 h]; Skilled Labor [95.54 h] → SIC- Cost [39546.3]; Excavator [20 h]; Excavator Operator [95.54 h]; Dumper Operator [95.54 h]; Dumper Truck [60 h]; Grader [20 h]; Grader Operator [95.54 h]; Loader [31.1 h]; Loader Operator [95.54 h]; Un-Skilled Labor [95.54 h]; Supervisor [95.54 h]; Skilled Labor [95.54 h] |
| SDR-2-CON-RW-ZG-1960 | Embankments to the Plot 2 Layer |  | 2026-11-10 → 2026-11-28 (+18d) |  | 70d → 39d | SDR-2-CON-RW-ZG-2500 → SDR-2-CON-RW-ZG-2500, SDR-2-CON-RW-ZG-2500 FF | resources SIC- Cost; Excavator [20 h]; Excavator Operator [95.54 h]; Dumper Operator [95.54 h]; Dumper Truck [60 h]; Grader [20 h]; Grader Operator [95.54 h]; Loader [60 h]; Loader Operator [95.54 h]; Un-Skilled Labor [28.9 h]; Supervisor [9.63 h]; Skilled Labor [28.9 h] → SIC- Cost [39546.3]; Excavator [20 h]; Excavator Operator [95.54 h]; Dumper Operator [95.54 h]; Dumper Truck [60 h]; Grader [20 h]; Grader Operator [95.54 h]; Loader [60 h]; Loader Operator [95.54 h]; Un-Skilled Labor [28.9 h]; Supervisor [9.63 h]; Skilled Labor [28.9 h] |
| 8 | **Demolition Work** | 2026-11-09 → 2026-10-18 (-22d) | 2026-12-15 → 2026-10-26 (-50d) |  |  |  |  |
| SDR-2-CON-RW-ZG-1980 | Removal of curbstone | 2026-11-09 → 2026-10-18 A (-22d) | 2026-11-17 → 2026-10-26 A (-22d) | 0% → 100% | 18d → none |  |  |
| SDR-2-CON-RW-ZG-1990 | Milling of wearing course | 2026-12-07 → 2026-10-18 A (-50d) | 2026-12-15 → 2026-10-26 A (-50d) | 0% → 100% | 2d → none |  |  |
| 3 | **Asphalt Works** |  | 2027-01-03 → 2026-12-29 (-5d) |  |  |  |  |
| SDR-2-CON-RW-ZG-2000 | Asphalt works 1st Layer with MC-01 |  |  |  |  | SDR-2-CON-RW-ZG-1970, SDR-2-CON-RW-ZG-1990 FF → SDR-2-CON-RW-ZG-1970, SDR-2-CON-RW-ZG-1990 |  |
| SDR-2-CON-RW-ZG-2010 | Asphalt works 2nd layer with RC-02 | 2026-12-16 → 2026-12-12 (-4d) | 2027-01-03 → 2026-12-29 (-5d) |  | 2d → 0d |  |  |
| 4 | **Kerbstone Installation** | 2026-11-09 → 2026-11-15 (+6d) | 2027-01-27 → 2027-01-23 (-4d) |  |  |  |  |
| SDR-2-CON-RW-ZG-2610 | Kerbstone Installation "all Types" Part 1 | 2026-11-09 → 2026-11-15 A (+6d) | 2026-11-29 → 2026-12-05 (+6d) | 0% → 20% | 8d → 5d |  | resources SIC- Cost [286905]; Un-Skilled Labor [28.9 h]; Supervisor [10.06 h]; Skilled Labor [28.9 h] → SIC- Cost [32835.8]; Un-Skilled Labor [28.9 h]; Supervisor [10.06 h]; Skilled Labor [28.9 h] |
| SDR-2-CON-RW-ZG-2020 | Kerbstone Installation "all Types" Part 2 | 2027-01-04 → 2026-12-30 (-5d) | 2027-01-27 → 2027-01-23 (-4d) |  | 2d → 0d |  | resources SIC- Cost [286905]; Un-Skilled Labor [28.9 h]; Supervisor [10.06 h]; Skilled Labor [28.9 h] → SIC- Cost [254069]; Un-Skilled Labor [28.9 h]; Supervisor [10.06 h]; Skilled Labor [28.9 h] |
| 5 | **Interlock Installation** | 2027-01-28 → 2027-01-24 (-4d) | 2027-02-21 → 2027-02-16 (-5d) |  |  |  |  |
| SDR-2-CON-RW-ZG-2030 | Interlock Installation | 2027-01-28 → 2027-01-24 (-4d) | 2027-02-21 → 2027-02-16 (-5d) |  | 2d → 0d |  |  |
| 6 | **Road Marking** | 2027-02-23 → 2027-02-17 (-6d) | 2027-03-31 → 2027-03-27 (-4d) |  |  |  |  |
| SDR-2-CON-RW-ZG-2040 | Retroreflective Thermoplastic White Traffic lines | 2027-02-23 → 2027-02-17 (-6d) | 2027-03-15 → 2027-03-06 (-9d) |  | 2d → 0d |  |  |
| SDR-2-CON-RW-ZG-2050 | Retroreflective Thermoplastic Yellow, Traffic lines | 2027-03-16 → 2027-03-07 (-9d) | 2027-03-31 → 2027-03-27 (-4d) |  | 2d → 0d |  |  |
| 7 | **Traffic Signage** | 2027-04-01 → 2027-03-28 (-4d) | 2027-04-24 → 2027-04-19 (-5d) |  |  |  |  |
| SDR-2-CON-RW-ZG-2060 | Single post-Traffic signs Installation | 2027-04-01 → 2027-03-28 (-4d) | 2027-04-24 → 2027-04-19 (-5d) |  | 2d → 0d |  | resources SIC- Cost [5283.72]; Un-Skilled Labor [19.11 h]; Supervisor [19.11 h]; Skilled Labor [19.11 h] → SIC- Cost [5283.73]; Un-Skilled Labor [19.11 h]; Supervisor [19.11 h]; Skilled Labor [19.11 h] |
| 7 | **ROAD WORKS IN ( PH2-G-MCZ0 )** |  | 2027-03-31 → 2027-05-15 (+45d) |  |  |  |  |
| SDR-2-CON-RW-ZG-2070 | Roadway Excavation and cuttings |  |  |  |  |  | resources SIC- Cost [1563524]; Excavator [10 h]; Excavator Operator [143.3 h]; Dumper Operator [143.3 h]; Dumper Truck [150 h]; Grader [10 h]; Grader Operator [143.3 h]; Loader [60 h]; Loader Operator [143.3 h]; Un-Skilled Labor [143.3 h]; Supervisor [143.3 h]; Skilled Labor [143.3 h] → SIC- Cost [23081.5]; Excavator [10 h]; Excavator Operator [143.3 h]; Dumper Operator [143.3 h]; Dumper Truck [150 h]; Grader [10 h]; Grader Operator [143.3 h]; Loader [60 h]; Loader Operator [143.3 h]; Un-Skilled Labor [143.3 h]; Supervisor [143.3 h]; Skilled Labor [143.3 h] |
| SDR-2-CON-RW-ZG-2510 | Embankments to the Road 1 Layer |  |  |  |  |  | resources SIC- Cost; Excavator [68.56 h]; Excavator Operator [95.54 h]; Dumper Operator [95.54 h]; Dumper Truck [100 h]; Grader [75.71 h]; Grader Operator [95.54 h]; Loader [55.71 h]; Loader Operator [95.54 h]; Un-Skilled Labor [55.53 h]; Supervisor [55.53 h]; Skilled Labor [55.53 h] → SIC- Cost [125082]; Excavator [68.56 h]; Excavator Operator [95.54 h]; Dumper Operator [95.54 h]; Dumper Truck [100 h]; Grader [75.71 h]; Grader Operator [95.54 h]; Loader [55.71 h]; Loader Operator [95.54 h]; Un-Skilled Labor [55.53 h]; Supervisor [55.53 h]; Skilled Labor [55.53 h] |
| SDR-2-CON-RW-ZG-2520 | Embankments to the Road 2 Layer |  |  |  |  |  | resources SIC- Cost; Excavator [68.56 h]; Excavator Operator [95.54 h]; Dumper Operator [95.54 h]; Dumper Truck [100 h]; Grader [80.48 h]; Grader Operator [95.54 h]; Loader [60.48 h]; Loader Operator [95.54 h]; Un-Skilled Labor [37.33 h]; Supervisor [37.33 h]; Skilled Labor [37.33 h] → SIC- Cost [187623]; Excavator [68.56 h]; Excavator Operator [95.54 h]; Dumper Operator [95.54 h]; Dumper Truck [100 h]; Grader [80.48 h]; Grader Operator [95.54 h]; Loader [60.48 h]; Loader Operator [95.54 h]; Un-Skilled Labor [37.33 h]; Supervisor [37.33 h]; Skilled Labor [37.33 h] |
| SDR-2-CON-RW-ZG-2530 | Embankments to the Road 3 Layer |  |  |  |  |  | resources SIC- Cost; Excavator [68.56 h]; Excavator Operator [95.54 h]; Dumper Operator [95.54 h]; Dumper Truck [100 h]; Grader [100 h]; Grader Operator [95.54 h]; Loader [100 h]; Loader Operator [95.54 h]; Un-Skilled Labor [95.54 h]; Supervisor [95.54 h]; Skilled Labor [95.54 h] → SIC- Cost [469057]; Excavator [68.56 h]; Excavator Operator [95.54 h]; Dumper Operator [95.54 h]; Dumper Truck [100 h]; Grader [100 h]; Grader Operator [95.54 h]; Loader [100 h]; Loader Operator [95.54 h]; Un-Skilled Labor [95.54 h]; Supervisor [95.54 h]; Skilled Labor [95.54 h] |
| SDR-2-CON-RW-ZG-2080 | Embankments to the Road 4 Layer |  |  |  |  |  | resources SIC- Cost; Excavator [68.56 h]; Excavator Operator [95.54 h]; Dumper Operator [95.54 h]; Dumper Truck [100 h]; Grader [80.48 h]; Grader Operator [95.54 h]; Loader [40.48 h]; Loader Operator [95.54 h]; Un-Skilled Labor [95.54 h]; Supervisor [95.54 h]; Skilled Labor [95.54 h] → SIC- Cost [781762]; Excavator [68.56 h]; Excavator Operator [95.54 h]; Dumper Operator [95.54 h]; Dumper Truck [100 h]; Grader [80.48 h]; Grader Operator [95.54 h]; Loader [40.48 h]; Loader Operator [95.54 h]; Un-Skilled Labor [95.54 h]; Supervisor [95.54 h]; Skilled Labor [95.54 h] |
| SDR-2-CON-RW-ZG-2090 | Subgrade layer works |  |  |  |  |  | resources SIC- Cost; Excavator [6 h]; Excavator Operator [5.78 h]; Dumper Operator [48.16 h]; Dumper Truck [50 h]; Grader [10 h]; Grader Operator [9.63 h]; Loader [20 h]; Loader Operator [19.26 h]; Un-Skilled Labor [38.53 h]; Supervisor [9.63 h]; Skilled Labor [38.53 h]; Water Tanker [40 h]; Water Tanker Operator [38.53 h] → SIC- Cost [1025846]; Excavator [6 h]; Excavator Operator [5.78 h]; Dumper Operator [48.16 h]; Dumper Truck [50 h]; Grader [10 h]; Grader Operator [9.63 h]; Loader [20 h]; Loader Operator [19.26 h]; Un-Skilled Labor [38.53 h]; Supervisor [9.63 h]; Skilled Labor [38.53 h]; Water Tanker [40 h]; Water Tanker Operator [38.53 h] |
| SDR-2-CON-RW-ZG-2540 | Embankments to the Plot 1 Layer |  |  |  |  |  | resources SIC- Cost; Excavator [10 h]; Excavator Operator [81.48 h]; Dumper Operator [81.48 h]; Dumper Truck [60 h]; Grader [10 h]; Grader Operator [81.48 h]; Loader [40 h]; Loader Operator [81.48 h]; Un-Skilled Labor [81.48 h]; Supervisor [81.48 h]; Skilled Labor [81.48 h] → SIC- Cost [39546.3]; Excavator [10 h]; Excavator Operator [81.48 h]; Dumper Operator [81.48 h]; Dumper Truck [60 h]; Grader [10 h]; Grader Operator [81.48 h]; Loader [40 h]; Loader Operator [81.48 h]; Un-Skilled Labor [81.48 h]; Supervisor [81.48 h]; Skilled Labor [81.48 h] |

| ID | Task | Start | Finish | Complete | Total float | Predecessors | Other |
| --- | --- | --- | --- | --- | --- | --- | --- |
| SDR-2-CON-RW-ZG-2110 | Embankments to the Plot 2 Layer |  |  |  |  |  | resources SIC- Cost; Excavator [10 h]; Excavator Operator [81.48 h]; Dumper Operator [81.48 h]; Dumper Truck [60 h]; Grader [10 h]; Grader Operator [81.48 h]; Loader [29.44 h]; Loader Operator [81.48 h]; Un-Skilled Labor [28.9 h]; Supervisor [9.63 h]; Skilled Labor [28.9 h] → SIC- Cost [39546.3]; Excavator [10 h]; Excavator Operator [81.48 h]; Dumper Operator [81.48 h]; Dumper Truck [60 h]; Grader [10 h]; Grader Operator [81.48 h]; Loader [29.44 h]; Loader Operator [81.48 h]; Un-Skilled Labor [28.9 h]; Supervisor [9.63 h]; Skilled Labor [28.9 h] |
| 8 | **Demolition Work** |  | 2026-11-25 → 2026-11-15 (-10d) |  |  |  |  |
| SDR-2-CON-RW-ZG-2130 | Removal of curbstone |  | 2026-11-14 → 2026-11-15 A (+1d) | 50% → 100% | 22d → none |  |  |
| SDR-2-CON-RW-ZG-2140 | Milling of wearing course | 2026-11-15 → 2026-11-02 A (-13d) | 2026-11-25 → 2026-11-15 A (-10d) | 0% → 100% | 22d → none |  |  |
| 3 | **Asphalt Works** |  | 2026-12-10 → 2027-01-24 (+45d) |  |  |  |  |
| SDR-2-CON-RW-ZG-2150 | Asphalt works 1st Layer with MC-01 |  |  |  |  | SDR-2-CON-RW-ZG-2120, SDR-2-CON-RW-ZG-2140 FF → SDR-2-CON-RW-ZG-2120, SDR-2-CON-RW-ZG-2140 |  |
| SDR-2-CON-RW-ZG-2160 | Asphalt works 2nd layer with RC-02 | 2026-11-26 → 2027-01-09 (+44d) | 2026-12-10 → 2027-01-24 (+45d) |  | 22d → -21.8d | SDR-2-CON-RW-ZG-2150 → SDR-2-CON-RW-ZG-2150, SDR-2-CON-RW-ZG-2620 |  |
| 4 | **Kerbstone Installation** | 2026-11-09 → 2026-11-12 (+3d) | 2027-01-04 → 2027-02-17 (+44d) |  |  |  |  |
| SDR-2-CON-RW-ZG-2620 | Kerbstone Installation "all Types" Part 1 | 2026-11-09 → 2026-11-12 A (+3d) | 2026-11-29 → 2027-01-09 (+41d) | 0% → 20% | 32d → -21.8d | SDR-2-CON-RW-ZG-2120 → SDR-2-CON-RW-ZG-2120, SDR-2-PRO-DES-C-1020 | resources SIC- Cost [286905]; Un-Skilled Labor [66.88 h]; Supervisor [10.06 h]; Skilled Labor [66.88 h] → SIC- Cost [32835.8]; Un-Skilled Labor [66.88 h]; Supervisor [10.06 h]; Skilled Labor [66.88 h] |
| SDR-2-CON-RW-ZG-2170 | Kerbstone Installation "all Types" Part 2 | 2026-12-12 → 2027-01-24 (+43d) | 2027-01-04 → 2027-02-17 (+44d) |  | 22d → -21.8d | SDR-2-CON-RW-ZG-2160, SDR-2-CON-RW-ZG-2620 → SDR-2-CON-RW-ZG-2160 | resources SIC- Cost [286905]; Un-Skilled Labor [66.88 h]; Supervisor [10.06 h]; Skilled Labor [66.88 h] → SIC- Cost [254069]; Un-Skilled Labor [66.88 h]; Supervisor [10.06 h]; Skilled Labor [66.88 h] |
| 5 | **Interlock Installation** | 2027-01-05 → 2027-02-17 (+43d) | 2027-01-28 → 2027-03-20 (+51d) |  |  |  |  |
| SDR-2-CON-RW-ZG-2180 | Interlock Installation | 2027-01-05 → 2027-02-17 (+43d) | 2027-01-28 → 2027-03-20 (+51d) |  | 22d → -21.8d |  |  |
| 6 | **Road Marking** | 2027-01-30 → 2027-03-20 (+49d) | 2027-03-03 → 2027-04-21 (+49d) |  |  |  |  |
| SDR-2-CON-RW-ZG-2190 | Retroreflective Thermoplastic White Traffic lines | 2027-01-30 → 2027-03-20 (+49d) | 2027-02-14 → 2027-04-05 (+50d) |  | 22d → -21.8d |  |  |
| SDR-2-CON-RW-ZG-2200 | Retroreflective Thermoplastic Yellow, Traffic lines | 2027-02-15 → 2027-04-05 (+49d) | 2027-03-03 → 2027-04-21 (+49d) |  | 22d → -21.8d |  |  |
| 7 | **Traffic Signage** | 2027-03-04 → 2027-04-21 (+48d) | 2027-03-31 → 2027-05-15 (+45d) |  |  |  |  |
| SDR-2-CON-RW-ZG-2210 | Single post-Traffic signs Installation | 2027-03-04 → 2027-04-21 (+48d) | 2027-03-31 → 2027-05-15 (+45d) |  | 22d → -21.8d |  | resources SIC- Cost [5283.72]; Un-Skilled Labor [19.11 h]; Supervisor [19.11 h]; Skilled Labor [19.11 h] → SIC- Cost [5283.73]; Un-Skilled Labor [19.11 h]; Supervisor [19.11 h]; Skilled Labor [19.11 h] |
| ST | **Storm Water Drainage Network** |  | 2027-06-01 → 2027-09-30 (+121d) |  |  |  |  |
| ZA | **ZONE A** |  | 2027-06-01 → 2027-09-30 (+121d) |  |  |  |  |
| 11 | **STORM WATER LINE IN ( PH2-A-MCB0 )** |  | 2027-03-20 → 2027-09-22 (+186d) |  |  |  |  |
| 8 | **Pipes Works** |  | 2027-02-23 → 2027-03-17 (+22d) |  |  |  |  |
| SDR-2-CON-ST-ZA-6900 | Excavation for GRP Pipes Section 1 |  |  |  |  | SDR-2-CON-RW-ZA-2870, SDR-2-ENG-APP-M-1130, SDR-2-PRO-MSS-C-1080 FS+2d, SDR-2-PRO-ST-M-1000, SDR-2-PRO-DEL-M-1040 SS, SDR-2-PRO-DES-C-1030 SS → SDR-2-CON-RW-ZA-2870, SDR-2-ENG-APP-M-1130, SDR-2-PRO-MSS-C-1080 FS+2d, SDR-2-PRO-DEL-M-1040, SDR-2-PRO-DES-C-1030, SDR-2-PRO-ST-M-1000 | resources SIC- Cost [9218]; Labor [44.81 h]; Excavator [38.8 h]; Excavator Operator [95.54 h] → SIC- Cost [37600.9]; Labor [44.81 h]; Excavator [38.8 h]; Excavator Operator [95.54 h] |
| SDR-2-CON-ST-ZA-6360 | Excavation for GRP Pipes Section 2 |  |  |  |  |  | resources SIC- Cost [9218]; Labor [44.81 h]; Excavator [38.8 h]; Excavator Operator [95.54 h] → SIC- Cost [37600.9]; Labor [44.81 h]; Excavator [38.8 h]; Excavator Operator [95.54 h] |
| SDR-2-CON-ST-ZA-1000 | Excavation for GRP Pipes Section 3 |  |  |  |  | SDR-2-CON-ST-ZA-6360, SDR-2-PRO-DES-C-1070, SDR-2-PRO-DEL-M-1020 SS → SDR-2-CON-ST-ZA-6360, SDR-2-PRO-DEL-M-1020, SDR-2-PRO-DES-C-1070 | resources SIC- Cost [9218]; Labor [44.81 h]; Excavator [38.8 h]; Excavator Operator [95.54 h] → SIC- Cost [37600.9]; Labor [44.81 h]; Excavator [38.8 h]; Excavator Operator [95.54 h] |
| SDR-2-CON-ST-ZA-3450 | Sand bedding for GRP Pipes |  |  |  |  |  | resources SIC- Cost; Labor [95.54 h]; Excavator [10 h]; Excavator Operator [9.63 h]; Loader [20 h] → SIC- Cost [28200.7]; Labor [95.54 h]; Excavator [10 h]; Excavator Operator [9.63 h]; Loader [20 h] |
| 2 | **Pipes Laying** |  | 2027-01-26 → 2026-12-30 (-27d) |  |  |  |  |
| SDR-2-CON-ST-ZA-1090 | Install ST GRP Pipes |  | 2027-01-26 → 2026-12-30 (-27d) | 75% → 80% | 12.1d → -10.8d | SDR-2-PRO-DES-C-1020 FF, SDR-2-CON-ST-ZA-3450 → SDR-2-CON-ST-ZA-3450, SDR-2-PRO-DES-C-1020 | resources Pipe Fitter [95.54 h]; SIC- Cost; Labor [95.54 h] → Pipe Fitter [95.54 h]; SIC- Cost [253806]; Labor [95.54 h] |
| 6 | **Testing** | 2027-01-26 → 2027-01-23 (-3d) | 2027-02-20 → 2027-02-15 (-5d) |  |  |  |  |
| SDR-2-CON-ST-ZA-3440 | Testing ST GRP Pipes | 2027-01-26 → 2027-01-23 (-3d) | 2027-02-20 → 2027-02-15 (-5d) |  | 12.1d → -30d |  | resources Pipe Fitter [60.34 h]; SIC- Cost; Labor [60.34 h] → Pipe Fitter [60.34 h]; SIC- Cost [56401.3]; Labor [60.34 h] |
| 3 | **Backfilling** | 2027-01-28 → 2027-02-16 (+19d) | 2027-02-23 → 2027-03-17 (+22d) |  |  |  |  |
| SDR-2-CON-ST-ZA-1140 | Backfilling ST GRP Pipes | 2027-01-28 → 2027-02-16 (+19d) | 2027-02-23 → 2027-03-17 (+22d) |  | 12.1d → -30d | SDR-2-CON-ST-ZA-3440 SS+2d → SDR-2-CON-ST-ZA-3440 | resources SIC- Cost; Labor [95.54 h]; Excavator [16.12 h]; Excavator Operator [95.54 h] → SIC- Cost [112803]; Labor [95.54 h]; Excavator [16.12 h]; Excavator Operator [95.54 h] |
| 4 | **Manholes** |  | 2027-03-03 → 2027-04-07 (+35d) |  |  |  |  |
| 1 | **Excavation** |  | 2026-12-28 → 2026-11-01 (-57d) |  |  |  |  |
| SDR-2-CON-ST-ZA-6910 | Excavation Manholes Section 1 |  |  |  |  | SDR-2-CON-ST-ZA-6900 SS, SDR-2-PRO-DEL-M-1030 SS, SDR-2-PRO-ST-M-1050 SS → SDR-2-CON-ST-ZA-6900 SS, SDR-2-PRO-DEL-M-1030, SDR-2-PRO-ST-M-1050 | resources SIC- Cost; Labor [6.4 h]; Excavator [20 h]; Excavator Operator [95.54 h] → SIC- Cost [21055]; Labor [6.4 h]; Excavator [20 h]; Excavator Operator [95.54 h] |
| SDR-2-CON-ST-ZA-6370 | Excavation Manholes Section 2 |  |  |  |  |  | resources SIC- Cost; Labor [6.4 h]; Excavator [20 h]; Excavator Operator [95.54 h] → SIC- Cost [21055]; Labor [6.4 h]; Excavator [20 h]; Excavator Operator [95.54 h] |
| SDR-2-CON-ST-ZA-1210 | Excavation Manholes Section 3 |  | 2026-12-28 → 2026-11-01 A (-57d) | 90% → 100% | 13d → none | SDR-2-CON-ST-ZA-6370, SDR-2-PRO-DEL-E-1090 FF → SDR-2-CON-ST-ZA-6370, SDR-2-PRO-DEL-E-1090 | resources SIC- Cost; Labor [6.4 h]; Excavator [20 h]; Excavator Operator [95.54 h] → SIC- Cost [21055]; Labor [6.4 h]; Excavator [20 h]; Excavator Operator [95.54 h] |
| 2 | **bedding Works** |  | 2027-01-06 → 2027-01-28 (+22d) |  |  |  |  |
| SDR-2-CON-ST-ZA-3520 | Sand bedding for Manholes |  | 2027-01-06 → 2027-01-28 (+22d) | 50% → 85% | 5d → -48d | SDR-2-PRO-DEL-E-1050, SDR-2-CON-ST-ZA-1210 FF, SDR-2-PRO-DES-C-1060 FF → SDR-2-CON-ST-ZA-1210, SDR-2-PRO-DEL-E-1050, SDR-2-PRO-DES-C-1060 | resources SIC- Cost [18560]; Labor [665.6 h]; Excavator [7.04 h]; Excavator Operator [7.71 h] → SIC- Cost [42110.2]; Labor [665.6 h]; Excavator [7.04 h]; Excavator Operator [7.71 h] |
| 3 | **Install Manholes** |  | 2027-01-06 → 2027-02-06 (+31d) |  |  |  |  |
| SDR-2-CON-ST-ZA-3600 | Manholes Installation |  | 2027-01-06 → 2027-02-06 (+31d) | 50% → 85% | 5d → -48d | SDR-2-CON-ST-ZA-3520 FF, SDR-2-PRO-DEL-M-1030 FF, SDR-2-PRO-DEL-M-1020 FF, SDR-2-PRO-ST-E-1070 FF, SDR-2-CON-RW-ZG-2600 FF → SDR-2-CON-ST-ZA-3520, SDR-2-PRO-DEL-M-1030, SDR-2-PRO-DEL-M-1020, SDR-2-PRO-ST-E-1070, SDR-2-CON-RW-ZG-2600 | resources Pipe Fitter [95.54 h]; SIC- Cost [18560]; Labor [95.54 h]; Excavator [11.71 h]; Excavator Operator [95.54 h] → Pipe Fitter [95.54 h]; SIC- Cost [189496]; Labor [95.54 h]; Excavator [11.71 h]; Excavator Operator [95.54 h] |
| 4 | **Testing** | 2027-01-13 → 2027-02-13 (+31d) | 2027-02-06 → 2027-03-14 (+36d) |  |  |  |  |
| SDR-2-CON-ST-ZA-3680 | Testing for Manholes | 2027-01-13 → 2027-02-13 (+31d) | 2027-02-06 → 2027-03-14 (+36d) |  | 5d → -48d |  | resources SIC- Cost [18560]; Labor [38.53 h]; Excavator [6 h]; Excavator Operator [6.03 h] → SIC- Cost [42110.9]; Labor [38.53 h]; Excavator [6 h]; Excavator Operator [6.03 h] |
| 5 | **Backfilling** | 2027-02-07 → 2027-03-15 (+36d) | 2027-03-03 → 2027-04-07 (+35d) |  |  |  |  |
| SDR-2-CON-ST-ZA-3760 | Backfilling for Manholes | 2027-02-07 → 2027-03-15 (+36d) | 2027-03-03 → 2027-04-07 (+35d) |  | 5d → -48d |  | resources SIC- Cost [18560]; Labor [1385.27 h]; Excavator [11.95 h]; Excavator Operator [277.05 h] → SIC- Cost [84220.4]; Labor [1385.27 h]; Excavator [11.95 h]; Excavator Operator [277.05 h] |
| 5 | **Catch basin** |  | 2027-03-20 → 2027-09-22 (+186d) |  |  |  |  |
| 1 | **Excavation** |  | 2026-12-03 → 2027-03-02 (+89d) |  |  |  |  |
| SDR-2-CON-ST-ZA-6930 | Excavation for Catch basin Section 1 |  | 2026-11-09 → 2027-02-14 (+97d) | 60% → 75% | 81d → -16d | SDR-2-CON-ST-ZA-6370, SDR-2-CON-ST-ZA-6910, SDR-2-PRO-ST-M-1040 FF → SDR-2-CON-ST-ZA-6370, SDR-2-CON-ST-ZA-6910, SDR-2-CON-ST-ZA-3600, SDR-2-CON-ST-ZA-3600 FF, SDR-2-PRO-ST-M-1040 | resources SIC- Cost [55598.8]; Labor [323.36 h]; Excavator [12 h]; Excavator Operator [334.38 h] → SIC- Cost [22241.6]; Labor [323.36 h]; Excavator [12 h]; Excavator Operator [334.38 h] |
| SDR-2-CON-ST-ZA-1300 | Excavation for Catch basin Section 2 |  | 2026-12-03 → 2027-03-02 (+89d) | 10% → 20% | 81d → -16d |  | resources SIC- Cost [55598.8]; Labor [1671.88 h]; Excavator [12 h]; Excavator Operator [334.38 h] → SIC- Cost [22241.6]; Labor [1671.88 h]; Excavator [12 h]; Excavator Operator [334.38 h] |
| 2 | **bedding Works** |  | 2026-12-28 → 2027-03-22 (+84d) |  |  |  |  |
| SDR-2-CON-ST-ZA-3840 | Sand Dedding for Catch basin |  | 2026-12-28 → 2027-03-22 (+84d) | 10% → 25% | 81d → -16d |  | resources SIC- Cost [69655.4]; Labor [1194.2 h]; Excavator [6.97 h]; Excavator Operator [238.84 h] → SIC- Cost [29655.5]; Labor [1194.2 h]; Excavator [6.97 h]; Excavator Operator [238.84 h] |
| 3 | **Install Catch basin** |  | 2027-01-21 → 2027-08-05 (+196d) |  |  |  |  |
| SDR-2-CON-ST-ZA-3900 | Install Catch basin |  | 2027-01-21 → 2027-08-05 (+196d) | 10% → 25% | 81d → -115d | SDR-2-CON-RW-ZA-2740, SDR-2-CON-ST-ZA-3840 → SDR-2-CON-ST-ZA-3840, SDR-2-CON-RW-ZA-2740, SDR-2-CON-CC-ZG-1660 | resources SIC- Cost [69655.4]; Labor [955.36 h]; Excavator [20 h]; Excavator Operator [191.07 h] → SIC- Cost [133450]; Labor [955.36 h]; Excavator [20 h]; Excavator Operator [191.07 h] |
| 4 | **Testing** | 2027-01-13 → 2027-08-06 (+205d) | 2027-02-06 → 2027-08-29 (+204d) |  |  |  |  |
| SDR-2-CON-ST-ZA-3960 | Testing for Catch basin pipe | 2027-01-13 → 2027-08-06 (+205d) | 2027-02-06 → 2027-08-29 (+204d) |  | 68d → -115d | SDR-2-CON-ST-ZA-3900 SS, SDR-2-MILS-1100 → SDR-2-CON-ST-ZA-3900, SDR-2-MILS-1100 | resources SIC- Cost [69655.4]; Labor [716.52 h]; Excavator [6 h]; Excavator Operator [143.3 h] → SIC- Cost [29655.5]; Labor [716.52 h]; Excavator [6 h]; Excavator Operator [143.3 h] |
| 5 | **Backfilling** | 2027-01-13 → 2027-08-30 (+229d) | 2027-03-20 → 2027-09-22 (+186d) |  |  |  |  |
| SDR-2-CON-ST-ZA-6940 | Backfilling for Catch basin Section 1 | 2027-01-13 → 2027-08-30 (+229d) | 2027-01-25 → 2027-09-11 (+229d) |  | 80d → -115d | SDR-2-CON-ST-ZA-3960 SS → SDR-2-CON-ST-ZA-3960 | resources SIC- Cost [69655.4]; Labor [123.27 h]; Excavator [9.33 h]; Excavator Operator [81.79 h] → SIC- Cost [29655.4]; Labor [123.27 h]; Excavator [9.33 h]; Excavator Operator [81.79 h] |
| SDR-2-CON-ST-ZA-4020 | Backfilling for Catch basin Section 2 | 2027-03-04 → 2027-09-12 (+192d) | 2027-03-20 → 2027-09-22 (+186d) |  | 47d → -115d | SDR-2-CON-ST-ZA-6940 SS, SDR-2-CON-RW-ZG-2210 SS → SDR-2-CON-ST-ZA-6940, SDR-2-CON-RW-ZG-2210 | resources SIC- Cost [69655.4]; Labor [82.96 h]; Excavator [40 h]; Excavator Operator [61.63 h] → SIC- Cost [29655.4]; Labor [82.96 h]; Excavator [40 h]; Excavator Operator [61.63 h] |
| 12 | **STORM WATER LINE IN ( PH2-A-MCD0 )** |  | 2027-05-05 → 2027-09-30 (+148d) |  |  |  |  |
| 8 | **Pipes Works** |  | 2026-12-28 → 2027-03-22 (+84d) |  |  |  |  |
| SDR-2-CON-ST-ZA-6950 | Excavation for GRP Pipes Section 1 |  |  |  |  | SDR-2-CON-ST-ZA-6900 SS+3d → SDR-2-CON-ST-ZA-6900 SS+3d, SDR-2-PRO-DEL-E-1090 | resources SIC- Cost; Labor [95.54 h]; Plumber [95.54 h]; Excavator; Excavator Operator [95.54 h] → SIC- Cost [43188.1]; Labor [95.54 h]; Plumber [95.54 h]; Excavator; Excavator Operator [95.54 h] |
| SDR-2-CON-ST-ZA-6390 | Excavation for GRP Pipes Section 2 |  |  |  |  |  | resources SIC- Cost; Labor [95.54 h]; Plumber [95.54 h]; Excavator; Excavator Operator [95.54 h] → SIC- Cost [43188.1]; Labor [95.54 h]; Plumber [95.54 h]; Excavator; Excavator Operator [95.54 h] |
| SDR-2-CON-ST-ZA-4030 | Excavation for GRP Pipes Section 3 |  |  |  |  |  | resources SIC- Cost; Labor [95.54 h]; Plumber [95.54 h]; Excavator; Excavator Operator [95.54 h] → SIC- Cost [43188.1]; Labor [95.54 h]; Plumber [95.54 h]; Excavator; Excavator Operator [95.54 h] |
| 7 | **bedding Works** |  | 2026-11-09 → 2026-11-01 (-8d) |  |  |  |  |
| SDR-2-CON-ST-ZA-4090 | Sand bedding for GRP Pipes |  | 2026-11-09 → 2026-11-01 A (-8d) | 80% → 100% | 58d → none |  | resources SIC- Cost; Labor [95.54 h]; Plumber [95.54 h]; Excavator [11.71 h]; Excavator Operator [95.54 h] → SIC- Cost [32391.1]; Labor [95.54 h]; Plumber [95.54 h]; Excavator [11.71 h]; Excavator Operator [95.54 h] |
| 2 | **Pipes Laying** |  | 2026-11-09 → 2027-01-26 (+78d) |  |  |  |  |
| SDR-2-CON-ST-ZA-4040 | Install ST GRP Pipes |  | 2026-11-09 → 2027-01-26 (+78d) |  | 58d → -36d | SDR-2-CON-ST-ZA-4090 FF → SDR-2-CON-ST-ZA-4090 | resources Pipe Fitter [95.54 h]; SIC- Cost; Labor [95.54 h]; Plumber [95.54 h]; Excavator [11.8 h]; Excavator Operator [95.54 h] → Pipe Fitter [95.54 h]; SIC- Cost [291520]; Labor [95.54 h]; Plumber [95.54 h]; Excavator [11.8 h]; Excavator Operator [95.54 h] |
| 6 | **Testing** | 2026-11-10 → 2027-01-27 (+78d) | 2026-12-03 → 2027-02-20 (+79d) |  |  |  |  |
| SDR-2-CON-ST-ZA-4080 | Testing ST GRP Pipes | 2026-11-10 → 2027-01-27 (+78d) | 2026-12-03 → 2027-02-20 (+79d) |  | 58d → -36d |  | resources Pipe Fitter [95.54 h]; SIC- Cost; Labor [12.8 h]; Plumber [95.54 h]; Excavator [5 h]; Excavator Operator [95.54 h] → Pipe Fitter [95.54 h]; SIC- Cost [64782.2]; Labor [12.8 h]; Plumber [95.54 h]; Excavator [5 h]; Excavator Operator [95.54 h] |
| 3 | **Backfilling** | 2026-12-05 → 2027-02-21 (+78d) | 2026-12-28 → 2027-03-22 (+84d) |  |  |  |  |
| SDR-2-CON-ST-ZA-4050 | Backfilling ST GRP Pipes | 2026-12-05 → 2027-02-21 (+78d) | 2026-12-28 → 2027-03-22 (+84d) |  | 58d → -36d |  | resources SIC- Cost; Labor [12.8 h]; Plumber [67.9 h]; Excavator [12 h]; Excavator Operator [67.9 h] → SIC- Cost [129564]; Labor [12.8 h]; Plumber [67.9 h]; Excavator [12 h]; Excavator Operator [67.9 h] |

| ID | Task | Start | Finish | Complete | Total float | Predecessors | Other |
| --- | --- | --- | --- | --- | --- | --- | --- |
| 4 | **Manholes** |  | 2026-12-29 → 2027-04-14 (+106d) |  |  |  |  |
| SDR-2-CON-ST-ZA-6960 | Excavation Manholes Section 1 |  |  |  |  | SDR-2-CON-ST-ZA-6950 SS → SDR-2-CON-ST-ZA-6950 SS, SDR-2-PRO-DES-C-1060, SDR-2-PRO-DES-C-1090, SDR-2-PRO-DES-C-1080 | resources SIC- Cost [18560]; Labor [6.4 h]; Plumber [267.5 h]; Excavator [20 h]; Excavator Operator [334.38 h] → SIC- Cost [21055.1]; Labor [6.4 h]; Plumber [267.5 h]; Excavator [20 h]; Excavator Operator [334.38 h] |
| SDR-2-CON-ST-ZA-6400 | Excavation Manholes Section 2 |  |  |  |  |  | resources SIC- Cost [18560]; Labor [6.4 h]; Plumber [267.5 h]; Excavator [20 h]; Excavator Operator [334.38 h] → SIC- Cost [21055.1]; Labor [6.4 h]; Plumber [267.5 h]; Excavator [20 h]; Excavator Operator [334.38 h] |
| SDR-2-CON-ST-ZA-4060 | Excavation Manholes Section 3 |  |  |  |  | SDR-2-CON-ST-ZA-6400 → SDR-2-CON-ST-ZA-6400, SDR-2-PRO-DES-C-1100 | resources SIC- Cost [18560]; Labor [6.4 h]; Plumber [267.5 h]; Excavator [20 h]; Excavator Operator [334.38 h] → SIC- Cost [21055.1]; Labor [6.4 h]; Plumber [267.5 h]; Excavator [20 h]; Excavator Operator [334.38 h] |
| 2 | **bedding Works** |  | 2026-11-09 → 2026-11-01 (-8d) |  |  |  |  |
| SDR-2-CON-ST-ZA-4100 | Sand bedding for Manholes |  | 2026-11-09 → 2026-11-01 A (-8d) | 75% → 100% | 92.91d → none |  | resources SIC- Cost [18560]; Labor [6.4 h]; Plumber [210.18 h]; Excavator [12 h]; Excavator Operator [262.72 h] → SIC- Cost [42110.2]; Labor [6.4 h]; Plumber [210.18 h]; Excavator [12 h]; Excavator Operator [262.72 h] |
| 3 | **Install Manholes** |  | 2026-11-10 → 2027-02-18 (+100d) |  |  |  |  |
| SDR-2-CON-ST-ZA-4110 | Manholes Installation |  | 2026-11-10 → 2027-02-18 (+100d) |  | 91d → -47d | SDR-2-CON-ST-ZA-4100 FF → SDR-2-CON-ST-ZA-4100 | resources SIC- Cost [18560]; Plumbing Helper [115.59 h]; Labor [6.4 h]; Plumber [115.59 h]; Excavator [10.42 h]; Excavator Operator [106.92 h] → SIC- Cost [189496]; Plumbing Helper [115.59 h]; Labor [6.4 h]; Plumber [115.59 h]; Excavator [10.42 h]; Excavator Operator [106.92 h] |
| 4 | **Testing** | 2026-11-11 → 2027-02-20 (+101d) | 2026-12-05 → 2027-03-21 (+106d) |  |  |  |  |
| SDR-2-CON-ST-ZA-4120 | Testing for Manholes | 2026-11-11 → 2027-02-20 (+101d) | 2026-12-05 → 2027-03-21 (+106d) |  | 92d → -31d |  | resources Pipe Fitter [133.75 h]; SIC- Cost [18560]; Labor [6.4 h]; Plumber [133.75 h]; Excavator [5 h]; Excavator Operator [167.19 h] → Pipe Fitter [133.75 h]; SIC- Cost [42110.9]; Labor [6.4 h]; Plumber [133.75 h]; Excavator [5 h]; Excavator Operator [167.19 h] |
| 5 | **Backfilling** | 2026-12-06 → 2027-03-22 (+106d) | 2026-12-29 → 2027-04-14 (+106d) |  |  |  |  |
| SDR-2-CON-ST-ZA-4130 | Backfilling for Manholes | 2026-12-06 → 2027-03-22 (+106d) | 2026-12-29 → 2027-04-14 (+106d) |  | 92d → -31d |  | resources SIC- Cost [18560]; Labor [6.4 h]; Plumber [248.39 h]; Excavator [12 h]; Excavator Operator [310.49 h] → SIC- Cost [84220.4]; Labor [6.4 h]; Plumber [248.39 h]; Excavator [12 h]; Excavator Operator [310.49 h] |
| 5 | **Catch basin** |  | 2027-05-05 → 2027-09-30 (+148d) |  |  |  |  |
| 1 | **Excavation** |  | 2026-12-27 → 2027-04-19 (+113d) |  |  |  |  |
| SDR-2-CON-ST-ZA-6970 | Excavation for Catch basin Section 1 |  | 2026-11-10 → 2027-02-27 (+109d) |  | 91d → -47d | SDR-2-CON-ST-ZA-4110 FF → SDR-2-CON-ST-ZA-4110 | resources SIC- Cost [55598.8]; Dump Truck [400 h]; Loader [80 h]; Labor [19.2 h]; Plumber [115.59 h]; Excavator [13 h]; Excavator Operator [12.52 h]; Grader [500 h] → SIC- Cost [14827.8]; Dum Truck [400 h]; Loader [80 h]; Labor [19.2 h]; Plumber [115.59 h]; Excavator [13 h]; Excavator Operator [12.52 h]; Grader [500 h] |
| SDR-2-CON-ST-ZA-6410 | Excavation for Catch basin Section 2 | 2026-11-11 → 2027-02-28 (+109d) | 2026-12-05 → 2027-03-28 (+113d) |  | 91d → -47d |  | resources SIC- Cost [55598.8]; Dump Truck [400 h]; Loader [80 h]; Labor [19.2 h]; Plumber [115.59 h]; Excavator [13 h]; Excavator Operator [12.52 h]; Grader [500 h] → SIC- Cost [14827.8]; Dum Truck [400 h]; Loader [80 h]; Labor [19.2 h]; Plumber [115.59 h]; Excavator [13 h]; Excavator Operator [12.52 h]; Grader [500 h] |
| SDR-2-CON-ST-ZA-4070 | Excavation for Catch basin Section 3 | 2026-12-06 → 2027-03-29 (+113d) | 2026-12-27 → 2027-04-19 (+113d) |  | 91d → -47d |  | resources SIC- Cost [55598.8]; Dump Truck [400 h]; Loader [162.11 h]; Labor [19.2 h]; Plumber [286.61 h]; Excavator [13 h]; Excavator Operator [358.26 h]; Grader [120 h] → SIC- Cost [14827.8]; Dum Truck [400 h]; Loader [162.11 h]; Labor [19.2 h]; Plumber [286.61 h]; Excavator [13 h]; Excavator Operator [358.26 h]; Grader [120 h] |
| 2 | **bedding Works** | 2027-01-26 → 2027-07-22 (+177d) | 2027-02-18 → 2027-08-14 (+177d) |  |  |  |  |
| SDR-2-CON-ST-ZA-4140 | Sand Dedding for Catch basin | 2027-01-26 → 2027-07-22 (+177d) | 2027-02-18 → 2027-08-14 (+177d) |  | 66d → -122d | SDR-2-CON-CC-ZG-1620, SDR-2-CON-ST-ZA-4070 → SDR-2-CON-ST-ZA-4070, SDR-2-CON-CC-ZG-1660, SDR-2-CON-CC-ZG-1620 | resources SIC- Cost [69655.4]; Labor [25.6 h]; Plumber [238.84 h]; Excavator [12 h]; Excavator Operator [298.55 h]; Dumper Truck [251.25 h]; Loader [268.55 h] → SIC- Cost [29655.5]; Labor [25.6 h]; Plumber [238.84 h]; Excavator [12 h]; Excavator Operator [298.55 h]; Dumper Truck [251.25 h]; Loader [268.55 h] |
| 3 | **Install Catch basin** | 2027-02-20 → 2027-08-15 (+176d) | 2027-03-21 → 2027-09-07 (+170d) |  |  |  |  |
| SDR-2-CON-ST-ZA-4150 | Install Catch basin | 2027-02-20 → 2027-08-15 (+176d) | 2027-03-21 → 2027-09-07 (+170d) |  | 66d → -122d |  | resources SIC- Cost [69655.4]; Plumbing Helper [191.07 h]; Labor [25.6 h]; Plumber [191.07 h]; Excavator [20 h]; Excavator Operator [238.84 h] → SIC- Cost [133450]; Plumbing Helper [191.07 h]; Labor [25.6 h]; Plumber [191.07 h]; Excavator [20 h]; Excavator Operator [238.84 h] |
| 4 | **Testing** | 2027-04-13 → 2027-09-08 (+148d) | 2027-04-24 → 2027-09-19 (+148d) |  |  |  |  |
| SDR-2-CON-ST-ZA-4160 | Testing for Catch basin pipe | 2027-04-13 → 2027-09-08 (+148d) | 2027-04-24 → 2027-09-19 (+148d) |  | 47d → -122d |  | resources SIC- Cost [69655.4]; Plumbing Helper [143.3 h]; Labor [25.6 h]; Plumber [83.12 h]; Excavator [5 h]; Excavator Operator [58.2 h] → SIC- Cost [29655.5]; Plumbing Helper [143.3 h]; Labor [25.6 h]; Plumber [83.12 h]; Excavator [5 h]; Excavator Operator [58.2 h] |
| 5 | **Backfilling** | 2027-04-25 → 2027-09-20 (+148d) | 2027-05-05 → 2027-09-30 (+148d) |  |  |  |  |
| SDR-2-CON-ST-ZA-4170 | Backfilling for Catch basin | 2027-04-25 → 2027-09-20 (+148d) | 2027-05-05 → 2027-09-30 (+148d) |  | 47d → -122d |  | resources SIC- Cost [69655.4]; Labor [25.6 h]; Plumber [40.13 h]; Excavator [8.96 h]; Excavator Operator [66.76 h] → SIC- Cost [59310.8]; Labor [25.6 h]; Plumber [40.13 h]; Excavator [8.96 h]; Excavator Operator [66.76 h] |
| 13 | **STORM WATER LINE IN ( PH2-A-MCE0 )** |  | 2027-04-19 → 2027-09-09 (+143d) |  |  |  |  |
| 8 | **Pipes Works** |  | 2026-12-28 → 2027-06-23 (+177d) |  |  |  |  |
| SDR-2-CON-ST-ZA-6980 | Excavation for GRP Pipes Section 1 |  |  |  |  | SDR-2-CON-ST-ZA-6950 SS+5d, SDR-2-PRO-DEL-E-1040, SDR-2-PRO-DEL-E-1000 → SDR-2-CON-ST-ZA-6950 SS+5d, SDR-2-PRO-DEL-E-1040, SDR-2-PRO-DEL-E-1070, SDR-2-PRO-DEL-E-1000 | resources SIC- Cost; Labor [44.81 h]; Plumber [95.54 h]; Excavator [20 h]; Excavator Operator [95.54 h] → SIC- Cost [24457.3]; Labor [44.81 h]; Plumber [95.54 h]; Excavator [20 h]; Excavator Operator [95.54 h] |
| SDR-2-CON-ST-ZA-6420 | Excavation for GRP Pipes Section 2 |  |  |  |  |  | resources SIC- Cost; Labor [44.81 h]; Plumber [95.54 h]; Excavator [20 h]; Excavator Operator [95.54 h] → SIC- Cost [24457.3]; Labor [44.81 h]; Plumber [95.54 h]; Excavator [20 h]; Excavator Operator [95.54 h] |
| SDR-2-CON-ST-ZA-4180 | Excavation for GRP Pipes Section 3 |  |  |  |  | SDR-2-CON-ST-ZA-6420 FS+4d → SDR-2-CON-ST-ZA-6420 FS+4d, SDR-2-PRO-DES-C-1060, SDR-2-PRO-DES-C-1080, SDR-2-PRO-DES-C-1040 | resources SIC- Cost; Labor [44.81 h]; Plumber [95.54 h]; Excavator [20 h]; Excavator Operator [95.54 h] → SIC- Cost [24457.3]; Labor [44.81 h]; Plumber [95.54 h]; Excavator [20 h]; Excavator Operator [95.54 h] |
| 7 | **bedding Works** |  | 2026-11-09 → 2026-11-01 (-8d) |  |  |  |  |
| SDR-2-CON-ST-ZA-4240 | Sand bedding for GRP Pipes |  | 2026-11-09 → 2026-11-01 A (-8d) | 75% → 100% | 55d → none |  | resources SIC- Cost; Labor [44.81 h]; Plumber [95.54 h]; Excavator [10 h]; Excavator Operator [40.74 h]; Dumper Truck [30 h]; Loader [25.71 h] → SIC- Cost [18343]; Labor [44.81 h]; Plumber [95.54 h]; Excavator [10 h]; Excavator Operator [40.74 h]; Dumper Truck [30 h]; Loader [25.71 h] |
| 2 | **Pipes Laying** |  | 2026-11-09 → 2027-04-29 (+171d) |  |  |  |  |
| SDR-2-CON-ST-ZA-4190 | Install ST GRP Pipes |  | 2026-11-09 → 2027-04-29 (+171d) |  | 55d → -102d | SDR-2-CON-ST-ZA-4240 FF, SDR-2-PRO-ST-M-1020 FF → SDR-2-CON-ST-ZA-4240, SDR-2-PRO-ST-M-1020 | resources Pipe Fitter [67.9 h]; SIC- Cost; Labor [51.21 h]; Plumber [67.9 h]; Excavator [10 h]; Excavator Operator [67.9 h] → Pipe Fitter [67.9 h]; SIC- Cost [165087]; Labor [51.21 h]; Plumber [67.9 h]; Excavator [10 h]; Excavator Operator [67.9 h] |
| 6 | **Testing** | 2026-11-10 → 2027-05-01 (+172d) | 2026-12-03 → 2027-05-30 (+178d) |  |  |  |  |
| SDR-2-CON-ST-ZA-4230 | Testing ST GRP Pipes | 2026-11-10 → 2027-05-01 (+172d) | 2026-12-03 → 2027-05-30 (+178d) |  | 55d → -102d |  | resources SIC- Cost; Plumbing Helper [40.74 h]; Labor [12.8 h]; Plumber [40.74 h]; Excavator [10 h]; Excavator Operator [40.74 h] → SIC- Cost [36686]; Plumbing Helper [40.74 h]; Labor [12.8 h]; Plumber [40.74 h]; Excavator [10 h]; Excavator Operator [40.74 h] |
| 3 | **Backfilling** | 2026-12-05 → 2027-05-31 (+177d) | 2026-12-28 → 2027-06-23 (+177d) |  |  |  |  |
| SDR-2-CON-ST-ZA-4200 | Backfilling ST GRP Pipes | 2026-12-05 → 2027-05-31 (+177d) | 2026-12-28 → 2027-06-23 (+177d) |  | 55d → -102d |  | resources SIC- Cost [9218]; Labor [1926.46 h]; Plumber [334.38 h]; Excavator [10 h]; Excavator Operator [417.97 h] → SIC- Cost [73371.9]; Labor [1926.46 h]; Plumber [334.38 h]; Excavator [10 h]; Excavator Operator [417.97 h] |
| 4 | **Manholes** |  | 2026-12-28 → 2027-04-26 (+119d) |  |  |  |  |
| SDR-2-CON-ST-ZA-6990 | Excavation Manholes Section 1 |  |  |  |  |  | resources SIC- Cost [18550]; Labor [6.4 h]; Plumber [238.84 h]; Excavator [30.89 h]; Excavator Operator [298.55 h] → SIC- Cost [21055.1]; Labor [6.4 h]; Plumber [238.84 h]; Excavator [30.89 h]; Excavator Operator [298.55 h] |
| SDR-2-CON-ST-ZA-6430 | Excavation Manholes Section 2 |  |  |  |  |  | resources SIC- Cost [18550]; Labor [6.4 h]; Plumber [238.84 h]; Excavator [30.89 h]; Excavator Operator [298.55 h] → SIC- Cost [21055.1]; Labor [6.4 h]; Plumber [238.84 h]; Excavator [30.89 h]; Excavator Operator [298.55 h] |
| SDR-2-CON-ST-ZA-4210 | Excavation Manholes Section 3 |  |  |  |  |  | resources SIC- Cost [18550]; Labor [6.4 h]; Plumber [238.84 h]; Excavator [30.89 h]; Excavator Operator [298.55 h] → SIC- Cost [21055.1]; Labor [6.4 h]; Plumber [238.84 h]; Excavator [30.89 h]; Excavator Operator [298.55 h] |
| 2 | **bedding Works** |  | 2026-11-09 → 2026-11-01 (-8d) |  |  |  |  |
| SDR-2-CON-ST-ZA-4250 | Sand bedding for Manholes |  | 2026-11-09 → 2026-11-01 A (-8d) | 50% → 100% | 79d → none |  | resources SIC- Cost; Labor [6.4 h]; Plumber [94.4 h]; Excavator [13.26 h]; Excavator Operator [13.49 h]; Dumper Truck [150 h]; Loader [20 h] → SIC- Cost [42110.2]; Labor [6.4 h]; Plumber [94.4 h]; Excavator [13.26 h]; Excavator Operator [13.49 h]; Dumper Truck [150 h]; Loader [20 h] |
| 3 | **Install Manholes** |  | 2026-11-09 → 2027-03-03 (+114d) |  |  |  |  |
| SDR-2-CON-ST-ZA-4260 | Manholes Installation |  | 2026-11-09 → 2027-03-03 (+114d) |  | 79d → -55d | SDR-2-CON-ST-ZA-4250 FF → SDR-2-CON-ST-ZA-4250 | resources SIC- Cost [18560]; Plumbing Helper [181.52 h]; Labor [6.4 h]; Plumber [181.52 h]; Excavator [13.05 h]; Excavator Operator [226.9 h] → SIC- Cost [189496]; Plumbing Helper [181.52 h]; Labor [6.4 h]; Plumber [181.52 h]; Excavator [13.05 h]; Excavator Operator [226.9 h] |
| 4 | **Testing** | 2026-11-10 → 2027-03-04 (+114d) | 2026-12-03 → 2027-04-01 (+119d) |  |  |  |  |
| SDR-2-CON-ST-ZA-4270 | Testing for Manholes | 2026-11-10 → 2027-03-04 (+114d) | 2026-12-03 → 2027-04-01 (+119d) |  | 79d → -55d |  | resources SIC- Cost [18560]; Plumbing Helper [152.86 h]; Labor [6.4 h]; Plumber [152.86 h]; Excavator [6 h]; Excavator Operator [6.03 h] → SIC- Cost [42110.9]; Plumbing Helper [152.86 h]; Labor [6.4 h]; Plumber [152.86 h]; Excavator [6 h]; Excavator Operator [6.03 h] |
| 5 | **Backfilling** | 2026-12-05 → 2027-04-03 (+119d) | 2026-12-28 → 2027-04-26 (+119d) |  |  |  |  |
| SDR-2-CON-ST-ZA-4280 | Backfilling for Manholes | 2026-12-05 → 2027-04-03 (+119d) | 2026-12-28 → 2027-04-26 (+119d) |  | 79d → -55d |  | resources SIC- Cost [18560]; Dump Truck [350 h]; Loader [80 h]; Labor [6.4 h]; Plumber [210.18 h]; Excavator [11.14 h]; Excavator Operator [262.72 h]; Grader [120 h] → SIC- Cost [84220.4]; Dum Truck [350 h]; Loader [80 h]; Labor [6.4 h]; Plumber [210.18 h]; Excavator [11.14 h]; Excavator Operator [262.72 h]; Grader [120 h] |
| 5 | **Catch basin** |  | 2027-04-19 → 2027-09-09 (+143d) |  |  |  |  |
| SDR-2-CON-ST-ZA-6440 | Excavation for Catch basin Section 1 |  |  |  |  | SDR-2-CON-ST-ZA-4260 FF → SDR-2-CON-ST-ZA-4260 | resources SIC- Cost [55598.8]; Labor [19.2 h]; Plumber [286.61 h]; Excavator [15 h]; Excavator Operator [14.45 h] → SIC- Cost [22241.6]; Labor [19.2 h]; Plumber [286.61 h]; Excavator [15 h]; Excavator Operator [14.45 h] |
| SDR-2-CON-ST-ZA-4220 | Excavation for Catch basin Section 2 |  |  |  |  |  | resources SIC- Cost [55598.8]; Labor [1926.46 h]; Plumber [286.61 h]; Excavator [15 h]; Excavator Operator [358.26 h] → SIC- Cost [22241.6]; Labor [1926.46 h]; Plumber [286.61 h]; Excavator [15 h]; Excavator Operator [358.26 h] |
| 2 | **bedding Works** |  | 2027-02-18 → 2027-07-28 (+160d) |  |  |  |  |
| SDR-2-CON-ST-ZA-4290 | Sand Dedding for Catch basin |  | 2027-02-18 → 2027-07-28 (+160d) |  | 21d → -97d | SDR-2-CON-CC-ZG-1620, SDR-2-CON-ST-ZA-4220 → SDR-2-CON-ST-ZA-4220, SDR-2-CON-CC-ZG-1620, SDR-2-CON-CC-ZG-1660 | resources SIC- Cost [69655.4]; Labor [25.6 h]; Plumber [152.86 h]; Excavator [9.43 h]; Excavator Operator [191.07 h]; Dumper Truck [165.71 h]; Loader [292.18 h] → SIC- Cost [29655.5]; Labor [25.6 h]; Plumber [152.86 h]; Excavator [9.43 h]; Excavator Operator [191.07 h]; Dumper Truck [165.71 h]; Loader [292.18 h] |
| 3 | **Install Catch basin** |  | 2027-03-21 → 2027-08-04 (+136d) |  |  |  |  |
| SDR-2-CON-ST-ZA-4300 | Install Catch basin |  | 2027-03-21 → 2027-08-04 (+136d) |  | 21d → -97d |  | resources SIC- Cost [69655.4]; Plumbing Helper [171.96 h]; Labor [25.6 h]; Plumber [171.96 h]; Excavator [10.75 h]; Excavator Operator [214.96 h] → SIC- Cost [133450]; Plumbing Helper [171.96 h]; Labor [25.6 h]; Plumber [171.96 h]; Excavator [10.75 h]; Excavator Operator [214.96 h] |
| 4 | **Testing** | 2027-03-28 → 2027-08-10 (+135d) | 2027-04-07 → 2027-08-21 (+136d) |  |  |  |  |
| SDR-2-CON-ST-ZA-4310 | Testing for Catch basin pipe | 2027-03-28 → 2027-08-10 (+135d) | 2027-04-07 → 2027-08-21 (+136d) |  | 21d → -97d |  | resources SIC- Cost [69655.4]; Plumbing Helper [143.3 h]; Labor [25.6 h]; Plumber [83.12 h]; Excavator [10.4 h]; Excavator Operator [68.28 h] → SIC- Cost [29655.5]; Plumbing Helper [143.3 h]; Labor [25.6 h]; Plumber [83.12 h]; Excavator [10.4 h]; Excavator Operator [68.28 h] |
| 5 | **Backfilling** | 2027-04-08 → 2027-08-30 (+144d) | 2027-04-19 → 2027-09-09 (+143d) |  |  |  |  |
| SDR-2-CON-ST-ZA-4320 | Backfilling for Catch basin | 2027-04-08 → 2027-08-30 (+144d) | 2027-04-19 → 2027-09-09 (+143d) |  | 21d → -104d |  | resources SIC- Cost [69655.4]; Labor [1086.35 h]; Plumber [40.13 h]; Excavator [6 h]; Excavator Operator [68.52 h] → SIC- Cost [59310.8]; Labor [1086.35 h]; Plumber [40.13 h]; Excavator [6 h]; Excavator Operator [68.52 h] |
| 14 | **STORM WATER LINE IN ( PH2-A-MCF0 )** |  | 2027-04-21 → 2027-06-07 (+47d) |  |  |  |  |
| 8 | **Pipes Works** |  | 2027-01-20 → 2027-04-26 (+96d) |  |  |  |  |
| SDR-2-CON-ST-ZA-7000 | Excavation for GRP Pipes Section 1 |  |  |  |  | SDR-2-CON-ST-ZA-6980 SS+4d, SDR-2-PRO-DEL-E-1050, SDR-2-PRO-DEL-E-1130 SS → SDR-2-CON-ST-ZA-6980 SS+4d, SDR-2-PRO-DEL-E-1130, SDR-2-PRO-DEL-E-1050 | resources SIC- Cost; Labor [44.81 h]; Plumber [95.54 h]; Excavator [20 h]; Excavator Operator [95.54 h] → SIC- Cost [24457.3]; Labor [44.81 h]; Plumber [95.54 h]; Excavator [20 h]; Excavator Operator [95.54 h] |
| SDR-2-CON-ST-ZA-6450 | Excavation for GRP Pipes Section 2 |  |  |  |  |  | resources SIC- Cost; Labor [44.81 h]; Plumber [95.54 h]; Excavator [20 h]; Excavator Operator [95.54 h] → SIC- Cost [24457.3]; Labor [44.81 h]; Plumber [95.54 h]; Excavator [20 h]; Excavator Operator [95.54 h] |
| SDR-2-CON-ST-ZA-4330 | Excavation for GRP Pipes Section 3 |  |  |  |  | SDR-2-CON-ST-ZA-6450 → SDR-2-CON-ST-ZA-6450, SDR-2-PRO-ST-E-1110 | resources SIC- Cost; Labor [44.81 h]; Plumber [95.54 h]; Excavator [20 h]; Excavator Operator [95.54 h] → SIC- Cost [24457.3]; Labor [44.81 h]; Plumber [95.54 h]; Excavator [20 h]; Excavator Operator [95.54 h] |
| 7 | **bedding Works** |  | 2026-12-02 → 2026-11-04 (-28d) |  |  |  |  |
| SDR-2-CON-ST-ZA-4390 | Sand bedding for GRP Pipes |  | 2026-12-02 → 2026-11-04 A (-28d) | 75% → 100% | 36d → none |  | resources SIC- Cost; Labor [44.81 h]; Plumber [95.54 h]; Excavator [13.03 h]; Excavator Operator [95.54 h]; Dumper Truck [100 h]; Loader [53.33 h] → SIC- Cost [18343]; Labor [44.81 h]; Plumber [95.54 h]; Excavator [13.03 h]; Excavator Operator [95.54 h]; Dumper Truck [100 h]; Loader [53.33 h] |
| 2 | **Pipes Laying** |  | 2026-12-02 → 2027-03-03 (+91d) |  |  |  |  |
| SDR-2-CON-ST-ZA-4340 | Install ST GRP Pipes |  | 2026-12-02 → 2027-03-03 (+91d) |  | 36d → -57d | SDR-2-CON-ST-ZA-4390 FF → SDR-2-CON-ST-ZA-4390 | resources Pipe Fitter [95.54 h]; SIC- Cost; Labor [51.21 h]; Plumber [95.54 h]; Excavator [8.3 h]; Excavator Operator [8.05 h] → Pipe Fitter [95.54 h]; SIC- Cost [165087]; Labor [51.21 h]; Plumber [95.54 h]; Excavator [8.3 h]; Excavator Operator [8.05 h] |

| ID | Task | Start | Finish | Complete | Total float | Predecessors | Other |
| --- | --- | --- | --- | --- | --- | --- | --- |
| 6 | **Testing** | 2026-12-03 → 2027-03-04 (+91d) | 2026-12-27 → 2027-04-01 (+95d) |  |  |  |  |
| SDR-2-CON-ST-ZA-4380 | Testing ST GRP Pipes | 2026-12-03 → 2027-03-04 (+91d) | 2026-12-27 → 2027-04-01 (+95d) |  | 36d → -57d |  | resources SIC- Cost; Plumbing Helper [40.74 h]; Labor [12.8 h]; Plumber [40.74 h]; Excavator [21.35 h]; Excavator Operator [40.74 h] → SIC- Cost [36686]; Plumbing Helper [40.74 h]; Labor [12.8 h]; Plumber [40.74 h]; Excavator [21.35 h]; Excavator Operator [40.74 h] |
| 3 | **Backfilling** | 2026-12-28 → 2027-04-03 (+96d) | 2027-01-20 → 2027-04-26 (+96d) |  |  |  |  |
| SDR-2-CON-ST-ZA-4350 | Backfilling ST GRP Pipes | 2026-12-28 → 2027-04-03 (+96d) | 2027-01-20 → 2027-04-26 (+96d) |  | 36d → -57d |  | resources SIC- Cost; Labor [1926.46 h]; Plumber [40.74 h]; Excavator [30 h]; Excavator Operator [40.74 h] → SIC- Cost [73371.9]; Labor [1926.46 h]; Plumber [40.74 h]; Excavator [30 h]; Excavator Operator [40.74 h] |
| 4 | **Manholes** |  | 2027-02-08 → 2027-04-19 (+70d) |  |  |  |  |
| 1 | **Excavation** |  | 2026-11-09 → 2026-11-04 (-5d) |  |  |  |  |
| SDR-2-CON-ST-ZA-6460 | Excavation Manholes Section 1 |  |  |  |  |  | resources SIC- Cost [18560]; Labor [6.4 h]; Plumber [238.84 h]; Excavator [20 h]; Excavator Operator [298.55 h] → SIC- Cost [31582.7]; Labor [6.4 h]; Plumber [238.84 h]; Excavator [20 h]; Excavator Operator [298.55 h] |
| SDR-2-CON-ST-ZA-4360 | Excavation Manholes Section 2 |  | 2026-11-09 → 2026-11-04 A (-5d) | 50% → 100% | 4d → none |  | resources SIC- Cost [18560]; Labor [6.4 h]; Plumber [238.84 h]; Excavator [20 h]; Excavator Operator [298.55 h] → SIC- Cost [31582.7]; Labor [6.4 h]; Plumber [238.84 h]; Excavator [20 h]; Excavator Operator [298.55 h] |
| 2 | **bedding Works** |  | 2026-12-03 → 2026-11-04 (-29d) |  |  |  |  |
| SDR-2-CON-ST-ZA-4400 | Sand bedding for Manholes |  | 2026-12-03 → 2026-11-04 A (-29d) | 50% → 100% | 4d → none |  | resources SIC- Cost [18560]; Labor [6.4 h]; Plumber [191.07 h]; Excavator [12 h]; Excavator Operator [238.84 h]; Dumper Truck [163.33 h]; Loader [46.37 h] → SIC- Cost [42110.2]; Labor [6.4 h]; Plumber [191.07 h]; Excavator [12 h]; Excavator Operator [238.84 h]; Dumper Truck [163.33 h]; Loader [46.37 h] |
| 3 | **Install Manholes** |  | 2026-12-28 → 2026-11-07 (-51d) |  |  |  |  |
| SDR-2-CON-ST-ZA-4410 | Manholes Installation |  | 2026-12-28 → 2026-11-07 A (-51d) | 50% → 100% | 4d → none |  | resources SIC- Cost [18560]; Plumbing Helper [152.86 h]; Labor [6.4 h]; Plumber [152.86 h]; Excavator [11.14 h]; Excavator Operator [11.06 h] → SIC- Cost [189496]; Plumbing Helper [152.86 h]; Labor [6.4 h]; Plumber [152.86 h]; Excavator [11.14 h]; Excavator Operator [11.06 h] |
| 4 | **Testing** | 2026-12-29 → 2027-02-25 (+58d) | 2027-01-21 → 2027-03-25 (+63d) |  |  |  |  |
| SDR-2-CON-ST-ZA-4420 | Testing for Manholes | 2026-12-29 → 2027-02-25 (+58d) | 2027-01-21 → 2027-03-25 (+63d) |  | 4d → -79d |  | resources SIC- Cost; Plumbing Helper [57.79 h]; Labor [6.4 h]; Plumber [57.79 h]; Excavator [6 h]; Excavator Operator [5.78 h] → SIC- Cost [42110.9]; Plumbing Helper [57.79 h]; Labor [6.4 h]; Plumber [57.79 h]; Excavator [6 h]; Excavator Operator [5.78 h] |
| 5 | **Backfilling** | 2027-01-16 → 2027-03-27 (+70d) | 2027-02-08 → 2027-04-19 (+70d) |  |  |  |  |
| SDR-2-CON-ST-ZA-4430 | Backfilling for Manholes | 2027-01-16 → 2027-03-27 (+70d) | 2027-02-08 → 2027-04-19 (+70d) |  | 4d → -79d | SDR-2-CON-ST-ZA-4420 SS+15d → SDR-2-CON-ST-ZA-4420 | resources SIC- Cost [18560]; Labor [678.97 h]; Plumber [678.97 h]; Excavator [15.3 h]; Excavator Operator [2987.46 h] → SIC- Cost [84220.4]; Labor [678.97 h]; Plumber [678.97 h]; Excavator [15.3 h]; Excavator Operator [2987.46 h] |
| 5 | **Catch basin** |  | 2027-04-21 → 2027-06-07 (+47d) |  |  |  |  |
| SDR-2-CON-ST-ZA-6470 | Excavation for Catch basin Section 1 |  |  |  |  | SDR-2-CON-ST-ZA-4410 FF → SDR-2-CON-ST-ZA-4410 | resources SIC- Cost; Labor [19.2 h]; Plumber [57.79 h]; Excavator [10 h]; Excavator Operator [9.63 h] → SIC- Cost [22241.6]; Labor [19.2 h]; Plumber [57.79 h]; Excavator [10 h]; Excavator Operator [9.63 h] |
| SDR-2-CON-ST-ZA-4370 | Excavation for Catch basin Section 2 |  |  |  |  |  | resources SIC- Cost [55598.8]; Labor [19.2 h]; Plumber [305.71 h]; Excavator [10 h]; Excavator Operator [382.14 h] → SIC- Cost [22241.6]; Labor [19.2 h]; Plumber [305.71 h]; Excavator [10 h]; Excavator Operator [382.14 h] |
| 2 | **bedding Works** |  | 2027-01-21 → 2027-03-03 (+41d) |  |  |  |  |
| SDR-2-CON-ST-ZA-4440 | Sand Dedding for Catch basin |  | 2027-01-21 → 2027-03-03 (+41d) |  | 19d → -6d |  | resources SIC- Cost [69655.4]; Labor [25.6 h]; Plumber [171.96 h]; Excavator [10 h]; Excavator Operator [214.96 h]; Dumper Truck [225 h]; Loader [40 h] → SIC- Cost [29655.5]; Labor [25.6 h]; Plumber [171.96 h]; Excavator [10 h]; Excavator Operator [214.96 h]; Dumper Truck [225 h]; Loader [40 h] |
| 3 | **Install Catch basin** |  | 2027-02-15 → 2027-03-15 (+28d) |  |  |  |  |
| SDR-2-CON-ST-ZA-4450 | Install Catch basin |  | 2027-02-15 → 2027-03-15 (+28d) |  | 19d → -6d |  | resources SIC- Cost [69655.4]; Plumbing Helper [191.07 h]; Labor [25.6 h]; Plumber [191.07 h]; Excavator [10 h]; Excavator Operator [238.84 h] → SIC- Cost [133450]; Plumbing Helper [191.07 h]; Labor [25.6 h]; Plumber [191.07 h]; Excavator [10 h]; Excavator Operator [238.84 h] |
| 4 | **Testing** | 2027-02-16 → 2027-03-16 (+28d) | 2027-03-17 → 2027-04-08 (+22d) |  |  |  |  |
| SDR-2-CON-ST-ZA-4460 | Testing for Catch basin pipe | 2027-02-16 → 2027-03-16 (+28d) | 2027-03-17 → 2027-04-08 (+22d) |  | 19d → -6d |  | resources SIC- Cost [69655.4]; Plumbing Helper [114.64 h]; Labor [25.6 h]; Plumber [114.64 h]; Excavator [10 h]; Excavator Operator [143.3 h] → SIC- Cost [29655.5]; Plumbing Helper [114.64 h]; Labor [25.6 h]; Plumber [114.64 h]; Excavator [10 h]; Excavator Operator [143.3 h] |
| 5 | **Backfilling** | 2027-03-18 → 2027-04-10 (+23d) | 2027-04-21 → 2027-06-07 (+47d) |  |  |  |  |
| SDR-2-CON-ST-ZA-7010 | Backfilling for Catch basin Section 1 | 2027-03-18 → 2027-04-10 (+23d) | 2027-04-04 → 2027-04-26 (+22d) |  | 19d → -6d |  | resources SIC- Cost [69655.4]; Labor [784.02 h]; Plumber [784.02 h]; Excavator [12.23 h]; Excavator Operator [794.1 h] → SIC- Cost [29655.4]; Labor [784.02 h]; Plumber [784.02 h]; Excavator [12.23 h]; Excavator Operator [794.1 h] |
| SDR-2-CON-ST-ZA-4470 | Backfilling for Catch basin Section 2 | 2027-04-05 → 2027-05-15 (+40d) | 2027-04-21 → 2027-06-07 (+47d) |  | 19d → -21.8d |  | resources SIC- Cost [69655.4]; Labor [108.83 h]; Plumber [40.13 h]; Excavator [8 h]; Excavator Operator [68.52 h] → SIC- Cost [29655.4]; Labor [108.83 h]; Plumber [40.13 h]; Excavator [8 h]; Excavator Operator [68.52 h] |
| 15 | **STORM WATER LINE IN ( PH2-A-MCG0 )** |  | 2027-05-11 → 2027-05-06 (-5d) |  |  |  |  |
| 8 | **Pipes Works** |  | 2027-02-14 → 2027-04-19 (+64d) |  |  |  |  |
| SDR-2-CON-ST-ZA-6480 | Excavation for GRP Pipes Section 1 |  |  |  |  | SDR-2-CON-ST-ZA-7000 SS+4d, SDR-2-PRO-DES-E-1020 SS → SDR-2-CON-ST-ZA-7000 SS+4d, SDR-2-PRO-DEL-E-1030, SDR-2-PRO-DES-E-1020 | resources SIC- Cost; Labor [44.81 h]; Plumber [95.54 h]; Excavator [20 h]; Excavator Operator [95.54 h] → SIC- Cost [47017.3]; Labor [44.81 h]; Plumber [95.54 h]; Excavator [20 h]; Excavator Operator [95.54 h] |
| SDR-2-CON-ST-ZA-4480 | Excavation for GRP Pipes Section 2 |  |  |  |  |  | resources SIC- Cost; Labor [44.81 h]; Plumber [95.54 h]; Excavator [20 h]; Excavator Operator [95.54 h] → SIC- Cost [47017.3]; Labor [44.81 h]; Plumber [95.54 h]; Excavator [20 h]; Excavator Operator [95.54 h] |
| 7 | **bedding Works** |  | 2026-12-02 → 2026-11-07 (-25d) |  |  |  |  |
| SDR-2-CON-ST-ZA-4540 | Sand bedding for GRP Pipes |  | 2026-12-02 → 2026-11-07 A (-25d) | 75% → 100% | 22d → none |  | resources SIC- Cost; Labor [44.81 h]; Plumber [238.84 h]; Excavator; Excavator Operator [95.54 h]; Dumper Truck [100 h]; Loader [40 h] → SIC- Cost [23508.7]; Labor [44.81 h]; Plumber [238.84 h]; Excavator; Excavator Operator [95.54 h]; Dumper Truck [100 h]; Loader [40 h] |
| 2 | **Pipes Laying** |  | 2026-12-27 → 2026-11-07 (-50d) |  |  |  |  |
| SDR-2-CON-ST-ZA-4490 | Install ST GRP Pipes |  | 2026-12-27 → 2026-11-07 A (-50d) | 75% → 100% | 22d → none |  | resources Pipe Fitter [95.54 h]; SIC- Cost; Labor [51.21 h]; Plumber [95.54 h]; Excavator [10.85 h]; Excavator Operator [10.06 h] → Pipe Fitter [95.54 h]; SIC- Cost [211578]; Labor [51.21 h]; Plumber [95.54 h]; Excavator [10.85 h]; Excavator Operator [10.06 h] |
| 6 | **Testing** | 2026-12-28 → 2027-02-25 (+59d) | 2027-01-20 → 2027-03-25 (+64d) |  |  |  |  |
| SDR-2-CON-ST-ZA-4530 | Testing ST GRP Pipes | 2026-12-28 → 2027-02-25 (+59d) | 2027-01-20 → 2027-03-25 (+64d) |  | 22d → -68d |  | resources SIC- Cost; Plumbing Helper [40.74 h]; Labor [12.8 h]; Plumber [67.9 h]; Excavator [10 h]; Excavator Operator [40.74 h] → SIC- Cost [47017.2]; Plumbing Helper [40.74 h]; Labor [12.8 h]; Plumber [67.9 h]; Excavator [10 h]; Excavator Operator [40.74 h] |
| 3 | **Backfilling** | 2027-01-21 → 2027-03-27 (+65d) | 2027-02-14 → 2027-04-19 (+64d) |  |  |  |  |
| SDR-2-CON-ST-ZA-4500 | Backfilling ST GRP Pipes | 2027-01-21 → 2027-03-27 (+65d) | 2027-02-14 → 2027-04-19 (+64d) |  | 22d → -68d |  | resources SIC- Cost; Labor [1926.46 h]; Plumber [81.48 h]; Excavator [10 h]; Excavator Operator [81.48 h] → SIC- Cost [94034.6]; Labor [1926.46 h]; Plumber [81.48 h]; Excavator [10 h]; Excavator Operator [81.48 h] |
| 4 | **Manholes** |  | 2027-02-15 → 2027-04-19 (+63d) |  |  |  |  |
| SDR-2-CON-ST-ZA-6490 | Excavation Manholes Section 1 |  |  |  |  |  | resources SIC- Cost [18560]; Labor [6.4 h]; Plumber [334.38 h]; Excavator [20 h]; Excavator Operator [417.97 h] → SIC- Cost [31582.7]; Labor [6.4 h]; Plumber [334.38 h]; Excavator [20 h]; Excavator Operator [417.97 h] |
| SDR-2-CON-ST-ZA-4510 | Excavation Manholes Section 2 |  | 2026-11-09 A | 75% → 100% | 10d → none |  | resources SIC- Cost [18560]; Labor [6.4 h]; Plumber [334.38 h]; Excavator [20 h]; Excavator Operator [417.97 h] → SIC- Cost [31582.7]; Labor [6.4 h]; Plumber [334.38 h]; Excavator [20 h]; Excavator Operator [417.97 h] |
| 2 | **bedding Works** |  | 2026-12-03 → 2026-11-09 (-24d) |  |  |  |  |
| SDR-2-CON-ST-ZA-4550 | Sand bedding for Manholes |  | 2026-12-03 → 2026-11-09 A (-24d) | 50% → 100% | 10d → none |  | resources SIC- Cost [18560]; Labor [6.4 h]; Plumber [238.84 h]; Excavator [12.85 h]; Excavator Operator [298.55 h]; Dumper Truck [212.5 h]; Loader [40 h] → SIC- Cost [42110.2]; Labor [6.4 h]; Plumber [238.84 h]; Excavator [12.85 h]; Excavator Operator [298.55 h]; Dumper Truck [212.5 h]; Loader [40 h] |
| 3 | **Install Manholes** |  | 2026-12-28 → 2026-11-09 (-49d) |  |  |  |  |
| SDR-2-CON-ST-ZA-4560 | Manholes Installation |  | 2026-12-28 → 2026-11-09 A (-49d) | 50% → 100% | 10d → none |  | resources SIC- Cost [18560]; Plumbing Helper [100.57 h]; Labor [6.4 h]; Plumber [100.57 h]; Excavator [8.67 h]; Excavator Operator [8.05 h] → SIC- Cost [189496]; Plumbing Helper [100.57 h]; Labor [6.4 h]; Plumber [100.57 h]; Excavator [8.67 h]; Excavator Operator [8.05 h] |
| 4 | **Testing** | 2026-12-29 → 2027-02-25 (+58d) | 2027-01-21 → 2027-03-25 (+63d) |  |  |  |  |
| SDR-2-CON-ST-ZA-4570 | Testing for Manholes | 2026-12-29 → 2027-02-25 (+58d) | 2027-01-21 → 2027-03-25 (+63d) |  | 18d → -68d |  | resources SIC- Cost; Plumbing Helper [57.79 h]; Labor [6.4 h]; Plumber [57.79 h]; Excavator [6 h]; Excavator Operator [5.78 h] → SIC- Cost [42110.9]; Plumbing Helper [57.79 h]; Labor [6.4 h]; Plumber [57.79 h]; Excavator [6 h]; Excavator Operator [5.78 h] |
| 5 | **Backfilling** | 2027-01-23 → 2027-03-27 (+63d) | 2027-02-15 → 2027-04-19 (+63d) |  |  |  |  |
| SDR-2-CON-ST-ZA-4580 | Backfilling for Manholes | 2027-01-23 → 2027-03-27 (+63d) | 2027-02-15 → 2027-04-19 (+63d) |  | 18d → -68d |  | resources SIC- Cost [18560]; Labor [6.4 h]; Plumber [286.61 h]; Excavator [13.44 h]; Excavator Operator [358.26 h] → SIC- Cost [84220.4]; Labor [6.4 h]; Plumber [286.61 h]; Excavator [13.44 h]; Excavator Operator [358.26 h] |
| 5 | **Catch basin** |  | 2027-05-11 → 2027-05-06 (-5d) |  |  |  |  |
| 1 | **Excavation** |  | 2027-01-21 → 2027-03-03 (+41d) |  |  |  |  |
| SDR-2-CON-ST-ZA-6500 | Excavation for Catch basin Section 1 |  |  |  |  | SDR-2-CON-ST-ZA-4560 FF → SDR-2-CON-ST-ZA-4560 | resources SIC- Cost [55598.8]; Labor [19.2 h]; Plumber [115.59 h]; Excavator [13.35 h]; Excavator Operator [13.49 h] → SIC- Cost [22241.6]; Labor [19.2 h]; Plumber [115.59 h]; Excavator [13.35 h]; Excavator Operator [13.49 h] |
| SDR-2-CON-ST-ZA-4520 | Excavation for Catch basin Section 2 |  | 2027-01-21 → 2027-03-03 (+41d) |  | 10d → 0d |  | resources SIC- Cost [55598.8]; Labor [1926.46 h]; Plumber [334.38 h]; Excavator [13.35 h]; Excavator Operator [417.97 h] → SIC- Cost [22241.6]; Labor [1926.46 h]; Plumber [334.38 h]; Excavator [13.35 h]; Excavator Operator [417.97 h] |
| 2 | **bedding Works** |  | 2027-02-15 → 2027-03-15 (+28d) |  |  |  |  |
| SDR-2-CON-ST-ZA-4590 | Sand Dedding for Catch basin |  | 2027-02-15 → 2027-03-15 (+28d) |  | 10d → 0d |  | was named Sand Bedding for Catch basin; resources SIC- Cost [69655.4]; Labor [678.97 h]; Plumber [678.97 h]; Excavator [7.09 h]; Excavator Operator [1513.17 h]; Dumper Truck [182.6 h]; Loader [58.46 h] → SIC- Cost [29655.5]; Labor [678.97 h]; Plumber [678.97 h]; Excavator [7.09 h]; Excavator Operator [1513.17 h]; Dumper Truck [182.6 h]; Loader [58.46 h] |
| 3 | **Install Catch basin** |  | 2027-03-17 → 2027-03-22 (+5d) |  |  |  |  |
| SDR-2-CON-ST-ZA-4600 | Install Catch basin |  | 2027-03-17 → 2027-03-22 (+5d) |  | 10d → 0d |  | resources SIC- Cost [69655.4]; Plumbing Helper [76.74 h]; Labor [76.74 h]; Plumber [76.74 h]; Excavator [7 h]; Excavator Operator [76.74 h] → SIC- Cost [133450]; Plumbing Helper [76.74 h]; Labor [76.74 h]; Plumber [76.74 h]; Excavator [7 h]; Excavator Operator [76.74 h] |
| 4 | **Testing** | 2027-03-18 → 2027-03-23 (+5d) | 2027-03-29 → 2027-04-03 (+5d) |  |  |  |  |
| SDR-2-CON-ST-ZA-4610 | Testing for Catch basin pipe | 2027-03-18 → 2027-03-23 (+5d) | 2027-03-29 → 2027-04-03 (+5d) |  | 10d → 0d |  | resources SIC- Cost [69655.4]; Plumbing Helper [95.54 h]; Labor [25.6 h]; Plumber [95.54 h]; Excavator [6 h]; Excavator Operator [119.42 h] → SIC- Cost [29655.5]; Plumbing Helper [95.54 h]; Labor [25.6 h]; Plumber [95.54 h]; Excavator [6 h]; Excavator Operator [119.42 h] |
| 5 | **Backfilling** | 2027-03-30 → 2027-04-04 (+5d) | 2027-05-11 → 2027-05-06 (-5d) |  |  |  |  |
| SDR-2-CON-ST-ZA-7020 | Backfilling for Catch basin Section 1 | 2027-03-30 → 2027-04-04 (+5d) | 2027-04-14 → 2027-04-19 (+5d) |  | 10d → 0d |  | resources SIC- Cost [69655.4]; Labor [763.87 h]; Plumber [743.72 h]; Excavator [14.13 h]; Excavator Operator [763.87 h] → SIC- Cost [29655.4]; Labor [763.87 h]; Plumber [743.72 h]; Excavator [14.13 h]; Excavator Operator [763.87 h] |
| SDR-2-CON-ST-ZA-4620 | Backfilling for Catch basin Section 2 | 2027-04-25 → 2027-04-20 (-5d) | 2027-05-11 → 2027-05-06 (-5d) |  | 2d → 0d |  | resources SIC- Cost [69655.4]; Labor [108.83 h]; Plumber [40.13 h]; Excavator [8 h]; Excavator Operator [68.52 h] → SIC- Cost [29655.5]; Labor [108.83 h]; Plumber [40.13 h]; Excavator [8 h]; Excavator Operator [68.52 h] |
| 16 | **STORM WATER LINE IN ( PH2-A-MCH0 )** |  | 2027-05-09 → 2027-08-28 (+111d) |  |  |  |  |
| 8 | **Pipes Works** |  | 2027-02-14 → 2027-05-11 (+86d) |  |  |  |  |
| SDR-2-CON-ST-ZA-6510 | Excavation for GRP Pipes Section 1 |  |  |  |  |  | resources SIC- Cost; Labor [44.81 h]; Plumber [40.74 h]; Excavator [24.78 h]; Excavator Operator [40.74 h] → SIC- Cost [41047.6]; Labor [44.81 h]; Plumber [40.74 h]; Excavator [24.78 h]; Excavator Operator [40.74 h] |
| SDR-2-CON-ST-ZA-4630 | Excavation for GRP Pipes Section 2 |  |  |  |  |  | resources SIC- Cost; Labor [44.81 h]; Plumber [40.74 h]; Excavator [24.78 h]; Excavator Operator [40.74 h] → SIC- Cost [41047.6]; Labor [44.81 h]; Plumber [40.74 h]; Excavator [24.78 h]; Excavator Operator [40.74 h] |
| 7 | **bedding Works** |  | 2026-12-02 → 2027-03-04 (+92d) |  |  |  |  |
| SDR-2-CON-ST-ZA-4690 | Sand bedding for GRP Pipes |  | 2026-12-02 → 2027-03-04 (+92d) | 30% → 75% | 1d → -91d |  | resources SIC- Cost; Labor [44.81 h]; Plumber [95.54 h]; Excavator [10 h]; Excavator Operator [95.54 h]; Dumper Truck [30 h]; Loader [30 h] → SIC- Cost [20523.8]; Labor [44.81 h]; Plumber [95.54 h]; Excavator [10 h]; Excavator Operator [95.54 h]; Dumper Truck [30 h]; Loader [30 h] |

| ID | Task | Start | Finish | Complete | Total float | Predecessors | Other |
| --- | --- | --- | --- | --- | --- | --- | --- |
| 2 | **Pipes Laying** |  | 2026-12-27 → 2027-03-23 (+86d) |  |  |  |  |
| SDR-2-CON-ST-ZA-4640 | Install ST GRP Pipes |  | 2026-12-27 → 2027-03-23 (+86d) | 30% → 45% | 1d → -91d |  | resources Pipe Fitter [40.74 h]; SIC- Cost; Labor [40.74 h]; Plumber [40.74 h]; Excavator [10 h]; Excavator Operator [40.74 h] → Pipe Fitter [40.74 h]; SIC- Cost [184714]; Labor [40.74 h]; Plumber [40.74 h]; Excavator [10 h]; Excavator Operator [40.74 h] |
| 6 | **Testing** | 2026-12-28 → 2027-03-24 (+86d) | 2027-01-20 → 2027-04-17 (+87d) |  |  |  |  |
| SDR-2-CON-ST-ZA-4680 | Testing ST GRP Pipes | 2026-12-28 → 2027-03-24 (+86d) | 2027-01-20 → 2027-04-17 (+87d) |  | 1d → -91d |  | resources SIC- Cost; Plumbing Helper [40.74 h]; Labor [12.8 h]; Plumber [40.74 h]; Excavator [12 h]; Excavator Operator [40.74 h] → SIC- Cost [41047.6]; Plumbing Helper [40.74 h]; Labor [12.8 h]; Plumber [40.74 h]; Excavator [12 h]; Excavator Operator [40.74 h] |
| 3 | **Backfilling** | 2027-01-21 → 2027-04-18 (+87d) | 2027-02-14 → 2027-05-11 (+86d) |  |  |  |  |
| SDR-2-CON-ST-ZA-4650 | Backfilling ST GRP Pipes | 2027-01-21 → 2027-04-18 (+87d) | 2027-02-14 → 2027-05-11 (+86d) |  | 1d → -91d |  | resources SIC- Cost [9218]; Labor [1926.46 h]; Plumber [81.48 h]; Excavator [12 h]; Excavator Operator [40.74 h] → SIC- Cost [82095.2]; Labor [1926.46 h]; Plumber [81.48 h]; Excavator [12 h]; Excavator Operator [40.74 h] |
| 4 | **Manholes** |  | 2027-02-15 → 2027-06-07 (+112d) |  |  |  |  |
| 1 | **Excavation** |  | 2026-11-09 → 2026-11-10 (+1d) |  |  |  |  |
| SDR-2-CON-ST-ZA-6520 | Excavation Manholes Section 1 |  |  |  |  |  | resources SIC- Cost [18560]; Labor [6.4 h]; Plumber [334.38 h]; Excavator [20 h]; Excavator Operator [417.97 h] → SIC- Cost [31582.7]; Labor [6.4 h]; Plumber [334.38 h]; Excavator [20 h]; Excavator Operator [417.97 h] |
| SDR-2-CON-ST-ZA-6350 | Excavation Manholes Section 2 |  | 2026-11-09 → 2026-11-10 A (+1d) | 60% → 100% | 5d → none |  | resources SIC- Cost [18560]; Labor [6.4 h]; Plumber [334.38 h]; Excavator [20 h]; Excavator Operator [417.97 h] → SIC- Cost [31582.7]; Labor [6.4 h]; Plumber [334.38 h]; Excavator [20 h]; Excavator Operator [417.97 h] |
| 2 | **bedding Works** | 2026-11-10 → 2026-11-12 (+2d) | 2026-12-03 → 2027-03-22 (+109d) |  |  |  |  |
| SDR-2-CON-ST-ZA-4700 | Sand bedding for Manholes | 2026-11-10 → 2026-11-12 A (+2d) | 2026-12-03 → 2027-03-22 (+109d) | 0% → 90% | 5d → -98d |  | resources SIC- Cost [18560]; Labor [6.4 h]; Plumber [248.39 h]; Excavator [12 h]; Excavator Operator [310.49 h]; Dumper Truck [10 h]; Loader [33.4 h] → SIC- Cost [42110.2]; Labor [6.4 h]; Plumber [248.39 h]; Excavator [12 h]; Excavator Operator [310.49 h]; Dumper Truck [10 h]; Loader [33.4 h] |
| 3 | **Install Manholes** | 2026-12-05 → 2026-11-08 (-27d) | 2026-12-28 → 2027-04-13 (+106d) |  |  |  |  |
| SDR-2-CON-ST-ZA-4710 | Manholes Installation | 2026-12-05 → 2026-11-08 A (-27d) | 2026-12-28 → 2027-04-13 (+106d) | 0% → 85% | 5d → -98d |  | resources SIC- Cost [18560]; Plumbing Helper [678.97 h]; Labor [678.97 h]; Plumber [678.97 h]; Excavator [12.47 h]; Excavator Operator [12.07 h] → SIC- Cost [189496]; Plumbing Helper [678.97 h]; Labor [678.97 h]; Plumber [678.97 h]; Excavator [12.47 h]; Excavator Operator [12.07 h] |
| 4 | **Testing** | 2026-12-29 → 2027-04-14 (+106d) | 2027-01-21 → 2027-05-08 (+107d) |  |  |  |  |
| SDR-2-CON-ST-ZA-4720 | Testing for Manholes | 2026-12-29 → 2027-04-14 (+106d) | 2027-01-21 → 2027-05-08 (+107d) |  | 12d → -98d |  | resources SIC- Cost; Plumbing Helper [57.79 h]; Labor [6.4 h]; Plumber [57.79 h]; Excavator [6.43 h]; Excavator Operator [6.74 h] → SIC- Cost [42110.9]; Plumbing Helper [57.79 h]; Labor [6.4 h]; Plumber [57.79 h]; Excavator [6.43 h]; Excavator Operator [6.74 h] |
| 5 | **Backfilling** | 2027-01-23 → 2027-05-09 (+106d) | 2027-02-15 → 2027-06-07 (+112d) |  |  |  |  |
| SDR-2-CON-ST-ZA-4730 | Backfilling for Manholes | 2027-01-23 → 2027-05-09 (+106d) | 2027-02-15 → 2027-06-07 (+112d) |  | 12d → -98d |  | resources SIC- Cost [18560]; Labor [6.4 h]; Plumber [267.5 h]; Excavator [12 h]; Excavator Operator [334.38 h] → SIC- Cost [84220.4]; Labor [6.4 h]; Plumber [267.5 h]; Excavator [12 h]; Excavator Operator [334.38 h] |
| 5 | **Catch basin** |  | 2027-05-09 → 2027-08-28 (+111d) |  |  |  |  |
| 1 | **Excavation** |  | 2027-01-21 → 2027-05-15 (+114d) |  |  |  |  |
| SDR-2-CON-ST-ZA-6530 | Excavation for Catch basin Section 1 |  | 2026-12-28 → 2027-04-20 (+113d) |  | 5d → -93d | SDR-2-CON-ST-ZA-4710 FF → SDR-2-CON-ST-ZA-4710 | resources SIC- Cost [55598.8]; Labor [19.2 h]; Plumber [334.38 h]; Excavator [14.44 h]; Excavator Operator [14.45 h] → SIC- Cost [22241.6]; Labor [19.2 h]; Plumber [334.38 h]; Excavator [14.44 h]; Excavator Operator [14.45 h] |
| SDR-2-CON-ST-ZA-4670 | Excavation for Catch basin Section 2 | 2026-12-29 → 2027-04-21 (+113d) | 2027-01-21 → 2027-05-15 (+114d) |  | 5d → -93d |  | resources SIC- Cost [55598.8]; Labor [19.2 h]; Plumber [334.38 h]; Excavator [14.44 h]; Excavator Operator [417.97 h] → SIC- Cost [22241.6]; Labor [19.2 h]; Plumber [334.38 h]; Excavator [14.44 h]; Excavator Operator [417.97 h] |
| 2 | **bedding Works** | 2027-01-23 → 2027-05-22 (+119d) | 2027-02-15 → 2027-06-14 (+119d) |  |  |  |  |
| SDR-2-CON-ST-ZA-4740 | Sand Dedding for Catch basin | 2027-01-23 → 2027-05-22 (+119d) | 2027-02-15 → 2027-06-14 (+119d) |  | 5d → -93d |  | resources SIC- Cost [69655.4]; Labor [678.97 h]; Plumber [678.97 h]; Excavator [12.64 h]; Excavator Operator [678.97 h]; Dumper Truck [554 h]; Loader [329.53 h] → SIC- Cost [29655.5]; Labor [678.97 h]; Plumber [678.97 h]; Excavator [12.64 h]; Excavator Operator [678.97 h]; Dumper Truck [554 h]; Loader [329.53 h] |
| 3 | **Install Catch basin** | 2027-02-23 → 2027-06-21 (+118d) | 2027-03-23 → 2027-07-14 (+113d) |  |  |  |  |
| SDR-2-CON-ST-ZA-4750 | Install Catch basin | 2027-02-23 → 2027-06-21 (+118d) | 2027-03-23 → 2027-07-14 (+113d) |  | 5d → -93d |  | resources SIC- Cost [69655.4]; Plumbing Helper [143.3 h]; Labor [25.6 h]; Plumber [143.3 h]; Excavator [14.4 h]; Excavator Operator [76.74 h] → SIC- Cost [133450]; Plumbing Helper [143.3 h]; Labor [25.6 h]; Plumber [143.3 h]; Excavator [14.4 h]; Excavator Operator [76.74 h] |
| 4 | **Testing** | 2027-03-24 → 2027-07-15 (+113d) | 2027-04-04 → 2027-07-26 (+113d) |  |  |  |  |
| SDR-2-CON-ST-ZA-4760 | Testing for Catch basin pipe | 2027-03-24 → 2027-07-15 (+113d) | 2027-04-04 → 2027-07-26 (+113d) |  | 5d → -93d |  | resources SIC- Cost [69655.4]; Plumbing Helper [95.54 h]; Labor [25.6 h]; Plumber [95.54 h]; Excavator [6 h]; Excavator Operator [119.42 h] → SIC- Cost [29655.5]; Plumbing Helper [95.54 h]; Labor [25.6 h]; Plumber [95.54 h]; Excavator [6 h]; Excavator Operator [119.42 h] |
| 5 | **Backfilling** | 2027-04-05 → 2027-07-27 (+113d) | 2027-05-09 → 2027-08-28 (+111d) |  |  |  |  |
| SDR-2-CON-ST-ZA-7030 | Backfilling for Catch basin Section 1 | 2027-04-05 → 2027-07-27 (+113d) | 2027-04-20 → 2027-08-10 (+112d) |  | 5d → -93d |  | resources SIC- Cost [69655.4]; Labor [773.95 h]; Plumber [743.72 h]; Excavator [24.88 h]; Excavator Operator [763.87 h] → SIC- Cost [29655.4]; Labor [773.95 h]; Plumber [743.72 h]; Excavator [24.88 h]; Excavator Operator [763.87 h] |
| SDR-2-CON-ST-ZA-4770 | Backfilling for Catch basin Section 2 | 2027-04-22 → 2027-08-11 (+111d) | 2027-05-09 → 2027-08-28 (+111d) |  | 4d → -93d |  | resources SIC- Cost [69655.4]; Labor [108.83 h]; Plumber [40.13 h]; Excavator [8 h]; Excavator Operator [68.52 h] → SIC- Cost [29655.4]; Labor [108.83 h]; Plumber [40.13 h]; Excavator [8 h]; Excavator Operator [68.52 h] |
| 1 | **STORM WATER LINE IN ( PH2-A-MCA0 )** |  | 2027-05-10 → 2027-03-17 (-54d) |  |  |  |  |
| 8 | **Pipes Works** |  | 2027-01-30 → 2027-02-01 (+2d) |  |  |  |  |
| SDR-2-CON-ST-ZA-6540 | Excavation for GRP Pipes Section 1 |  |  |  |  |  | resources SIC- Cost; Labor [44.81 h]; Plumber [95.54 h]; Excavator [20 h]; Excavator Operator [95.54 h] → SIC- Cost [249488]; Labor [44.81 h]; Plumber [95.54 h]; Excavator [20 h]; Excavator Operator [95.54 h] |
| SDR-2-CON-ST-ZA-4780 | Excavation for GRP Pipes Section 2 |  |  |  |  |  | resources SIC- Cost; Labor [44.81 h]; Plumber [95.54 h]; Excavator [20 h]; Excavator Operator [95.54 h] → SIC- Cost [249488]; Labor [44.81 h]; Plumber [95.54 h]; Excavator [20 h]; Excavator Operator [95.54 h] |
| 7 | **bedding Works** |  | 2026-12-02 → 2026-11-11 (-21d) |  |  |  |  |
| SDR-2-CON-ST-ZA-4840 | Sand bedding for GRP Pipes |  | 2026-12-02 → 2026-11-11 A (-21d) | 25% → 100% | 26d → none |  | resources SIC- Cost; Labor [44.81 h]; Plumber [95.54 h]; Excavator [14.4 h]; Excavator Operator [14.45 h]; Dumper Truck [100 h]; Loader [10 h] → SIC- Cost [124744]; Labor [44.81 h]; Plumber [95.54 h]; Excavator [14.4 h]; Excavator Operator [14.45 h]; Dumper Truck [100 h]; Loader [10 h] |
| 2 | **Pipes Laying** |  | 2026-12-02 → 2026-12-05 (+3d) |  |  |  |  |
| SDR-2-CON-ST-ZA-4790 | Install ST GRP Pipes |  | 2026-12-02 → 2026-12-05 (+3d) |  | 26d → 0d | SDR-2-CON-ST-ZA-4840 SS+15d → SDR-2-CON-ST-ZA-4840 | resources Pipe Fitter [95.54 h]; SIC- Cost; Labor [51.21 h]; Plumber [81.48 h]; Excavator [14.24 h]; Excavator Operator [14.08 h] → Pipe Fitter [95.54 h]; SIC- Cost [1122695]; Labor [51.21 h]; Plumber [81.48 h]; Excavator [14.24 h]; Excavator Operator [14.08 h] |
| 6 | **Testing** | 2026-12-03 → 2026-12-06 (+3d) | 2026-12-27 → 2026-12-29 (+2d) |  |  |  |  |
| SDR-2-CON-ST-ZA-4830 | Testing ST GRP Pipes | 2026-12-03 → 2026-12-06 (+3d) | 2026-12-27 → 2026-12-29 (+2d) |  | 26d → 0d |  | resources SIC- Cost; Plumbing Helper [40.74 h]; Labor [12.8 h]; Plumber [40.74 h]; Excavator [13.44 h]; Excavator Operator [40.74 h] → SIC- Cost [249488]; Plumbing Helper [40.74 h]; Labor [12.8 h]; Plumber [40.74 h]; Excavator [13.44 h]; Excavator Operator [40.74 h] |
| 3 | **Backfilling** | 2027-01-06 → 2027-01-09 (+3d) | 2027-01-30 → 2027-02-01 (+2d) |  |  |  |  |
| SDR-2-CON-ST-ZA-4800 | Backfilling ST GRP Pipes | 2027-01-06 → 2027-01-09 (+3d) | 2027-01-30 → 2027-02-01 (+2d) |  | 26d → 0d |  | resources SIC- Cost; Labor [12.8 h]; Plumber [67.9 h]; Excavator [15.28 h]; Excavator Operator [67.9 h]; Water Tanker [338.75 h] → SIC- Cost [498976]; Labor [12.8 h]; Plumber [67.9 h]; Excavator [15.28 h]; Excavator Operator [67.9 h]; Water Tanker [338.75 h] |
| 4 | **Manholes** |  | 2027-02-15 → 2027-01-30 (-16d) |  |  |  |  |
| 1 | **Excavation** |  | 2026-11-09 → 2026-11-11 (+2d) |  |  |  |  |
| SDR-2-CON-ST-ZA-6550 | Excavation Manholes Section 1 |  |  |  |  |  | resources SIC- Cost [18560]; Labor [6.4 h]; Plumber [334.38 h]; Excavator [20 h]; Excavator Operator [417.97 h] → SIC- Cost [31582.7]; Labor [6.4 h]; Plumber [334.38 h]; Excavator [20 h]; Excavator Operator [417.97 h] |
| SDR-2-CON-ST-ZA-4810 | Excavation Manholes Section 2 |  | 2026-11-09 → 2026-11-11 A (+2d) | 50% → 100% | 2d → none |  | resources SIC- Cost [18560]; Labor [6.4 h]; Plumber [334.38 h]; Excavator [20 h]; Excavator Operator [417.97 h] → SIC- Cost [31582.7]; Labor [6.4 h]; Plumber [334.38 h]; Excavator [20 h]; Excavator Operator [417.97 h] |
| 2 | **bedding Works** |  | 2026-12-03 → 2026-12-06 (+3d) |  |  |  |  |
| SDR-2-CON-ST-ZA-4850 | Sand bedding for Manholes |  | 2026-12-03 → 2026-12-06 (+3d) | 25% → 75% | 2d → -5d |  | resources SIC- Cost [18560]; Labor [6.4 h]; Plumber [210.18 h]; Excavator [6.54 h]; Excavator Operator [262.72 h]; Dumper Truck [175 h]; Loader [15.87 h] → SIC- Cost [42110.2]; Labor [6.4 h]; Plumber [210.18 h]; Excavator [6.54 h]; Excavator Operator [262.72 h]; Dumper Truck [175 h]; Loader [15.87 h] |
| 3 | **Install Manholes** |  | 2026-12-28 → 2026-12-12 (-16d) |  |  |  |  |
| SDR-2-CON-ST-ZA-4860 | Manholes Installation |  | 2026-12-28 → 2026-12-12 (-16d) | 25% → 90% | 2d → -5d |  | resources SIC- Cost [18560]; Plumbing Helper [191.07 h]; Labor [6.4 h]; Plumber [191.07 h]; Excavator [12.5 h]; Excavator Operator [238.84 h] → SIC- Cost [189496]; Plumbing Helper [191.07 h]; Labor [6.4 h]; Plumber [191.07 h]; Excavator [12.5 h]; Excavator Operator [238.84 h] |
| 4 | **Testing** | 2026-12-29 → 2026-12-13 (-16d) | 2027-01-21 → 2027-01-05 (-16d) |  |  |  |  |
| SDR-2-CON-ST-ZA-4870 | Testing for Manholes | 2026-12-29 → 2026-12-13 (-16d) | 2027-01-21 → 2027-01-05 (-16d) |  | 12d → -5d |  | resources SIC- Cost [18560]; Plumbing Helper [678.97 h]; Labor [678.97 h]; Plumber [678.97 h]; Excavator [6 h]; Excavator Operator [6.03 h] → SIC- Cost [42110.9]; Plumbing Helper [678.97 h]; Labor [678.97 h]; Plumber [678.97 h]; Excavator [6 h]; Excavator Operator [6.03 h] |
| 5 | **Backfilling** | 2027-01-23 → 2027-01-06 (-17d) | 2027-02-15 → 2027-01-30 (-16d) |  |  |  |  |
| SDR-2-CON-ST-ZA-4880 | Backfilling for Manholes | 2027-01-23 → 2027-01-06 (-17d) | 2027-02-15 → 2027-01-30 (-16d) |  | 12d → -5d |  | resources SIC- Cost [18560]; Dump Truck [370 h]; Loader [80 h]; Labor [678.97 h]; Plumber [678.97 h]; Excavator [11.95 h]; Excavator Operator [678.97 h]; Grader [120 h]; Water Tanker [476.25 h] → SIC- Cost [84220.4]; Dum Truck [370 h]; Loader [80 h]; Labor [678.97 h]; Plumber [678.97 h]; Excavator [11.95 h]; Excavator Operator [678.97 h]; Grader [120 h]; Water Tanker [476.25 h] |
| 5 | **Catch basin** |  | 2027-05-10 → 2027-03-17 (-54d) |  |  |  |  |
| 1 | **Excavation** |  | 2027-01-28 → 2027-01-07 (-21d) |  |  |  |  |
| SDR-2-CON-ST-ZA-6560 | Excavation for Catch basin Section 1 | 2026-10-21 A → 2026-10-20 A (-1d) | 2027-01-28 → 2026-12-23 (-36d) | 75% → 50% | 2d → 43d | SDR-2-CON-ST-ZA-4820 FS+6d → SDR-2-CON-ST-ZA-4860 | resources SIC- Cost [55598.8]; Labor [19.2 h]; Plumber [334.38 h]; Excavator [13.15 h]; Excavator Operator [417.97 h] → SIC- Cost [22241.6]; Labor [19.2 h]; Plumber [334.38 h]; Excavator [13.15 h]; Excavator Operator [14.45 h] |
| SDR-2-CON-ST-ZA-4820 | Excavation for Catch basin Section 2 | 2026-10-20 A → 2026-10-21 A (+1d) | 2026-12-28 → 2027-01-07 (+10d) | 25% → 85% | 2d → 43d | SDR-2-CON-ST-ZA-4860 FF → SDR-2-CON-ST-ZA-6560 FS+6d | resources SIC- Cost [55598.8]; Labor [19.2 h]; Plumber [334.38 h]; Excavator [13.15 h]; Excavator Operator [14.45 h] → SIC- Cost [22241.6]; Labor [19.2 h]; Plumber [334.38 h]; Excavator [13.15 h]; Excavator Operator [417.97 h] |
| 2 | **bedding Works** |  | 2027-02-23 → 2027-01-16 (-38d) |  |  |  |  |
| SDR-2-CON-ST-ZA-4890 | Sand Dedding for Catch basin |  | 2027-02-23 → 2027-01-16 (-38d) | 50% → 70% | 2d → 43d | SDR-2-CON-ST-ZA-6560 → SDR-2-CON-ST-ZA-4820 | resources SIC- Cost [69655.4]; Labor [25.6 h]; Plumber [191.07 h]; Excavator [7.38 h]; Excavator Operator [238.84 h]; Dumper Truck [137.24 h]; Loader [67.62 h]; Water Tanker [122.5 h] → SIC- Cost [29655.5]; Labor [25.6 h]; Plumber [191.07 h]; Excavator [7.38 h]; Excavator Operator [238.84 h]; Dumper Truck [137.24 h]; Loader [67.62 h]; Water Tanker [122.5 h] |
| 3 | **Install Catch basin** |  | 2027-03-24 → 2027-01-24 (-59d) |  |  |  |  |
| SDR-2-CON-ST-ZA-4900 | Install Catch basin |  | 2027-03-24 → 2027-01-24 (-59d) | 50% → 70% | 2d → 43d |  | resources SIC- Cost [69655.4]; Plumbing Helper [181.52 h]; Labor [25.6 h]; Plumber [181.52 h]; Excavator [15.2 h]; Excavator Operator [26.16 h] → SIC- Cost [133450]; Plumbing Helper [181.52 h]; Labor [25.6 h]; Plumber [181.52 h]; Excavator [15.2 h]; Excavator Operator [26.16 h] |
| 4 | **Testing** | 2027-03-25 → 2027-01-25 (-59d) | 2027-04-07 → 2027-02-07 (-59d) |  |  |  |  |
| SDR-2-CON-ST-ZA-4910 | Testing for Catch basin pipe | 2027-03-25 → 2027-01-25 (-59d) | 2027-04-07 → 2027-02-07 (-59d) |  | 2d → 43d |  | resources SIC- Cost [69655.4]; Plumbing Helper [95.54 h]; Loader [40 h]; Labor [25.6 h]; Plumber [95.54 h]; Excavator [6 h]; Excavator Operator [119.42 h] → SIC- Cost [29655.5]; Plumbing Helper [95.54 h]; Loader [40 h]; Labor [25.6 h]; Plumber [95.54 h]; Excavator [6 h]; Excavator Operator [119.42 h] |
| 5 | **Backfilling** | 2027-04-08 → 2027-02-08 (-59d) | 2027-05-10 → 2027-03-17 (-54d) |  |  |  |  |
| SDR-2-CON-ST-ZA-7040 | Backfilling for Catch basin Section 1 | 2027-04-08 → 2027-02-08 (-59d) | 2027-04-24 → 2027-02-24 (-59d) |  | 2d → 43d |  | resources SIC- Cost [69655.4]; Loader [128.51 h]; Labor [380.93 h]; Plumber [360.77 h]; Excavator [12.51 h]; Excavator Operator [380.93 h]; Grader [112.32 h] → SIC- Cost [29655.4]; Loader [128.51 h]; Labor [380.93 h]; Plumber [360.77 h]; Excavator [12.51 h]; Excavator Operator [380.93 h]; Grader [112.32 h] |
| SDR-2-CON-ST-ZA-4920 | Backfilling for Catch basin Section 2 | 2027-04-25 → 2027-02-25 (-59d) | 2027-05-10 → 2027-03-17 (-54d) |  | 2d → 43d |  | resources SIC- Cost [69655.4]; Loader [71.89 h]; Labor [280.15 h]; Plumber [40.13 h]; Excavator [41.38 h]; Excavator Operator [280.15 h]; Grader [53.97 h] → SIC- Cost [29655.4]; Loader [71.89 h]; Labor [280.15 h]; Plumber [40.13 h]; Excavator [41.38 h]; Excavator Operator [280.15 h]; Grader [53.97 h] |
| 8 | **Pipes Works** |  | 2027-02-14 → 2027-01-16 (-29d) |  |  |  |  |
| SDR-2-CON-ST-ZA-6570 | Excavation for GRP Pipes Section 1 |  |  |  |  |  | resources SIC- Cost [9218]; Labor [44.81 h]; Plumber [95.54 h]; Excavator [20 h]; Excavator Operator [95.54 h] → SIC- Cost [91070.9]; Labor [44.81 h]; Plumber [95.54 h]; Excavator [20 h]; Excavator Operator [95.54 h] |

| ID | Task | Start | Finish | Complete | Total float | Predecessors | Other |
| --- | --- | --- | --- | --- | --- | --- | --- |
| SDR-2-CON-ST-ZA-4930 | Excavation for GRP Pipes Section 2 |  |  |  |  |  | resources SIC- Cost [9218]; Labor [44.81 h]; Plumber [95.54 h]; Excavator [20 h]; Excavator Operator [95.54 h] → SIC- Cost [91070.9]; Labor [44.81 h]; Plumber [95.54 h]; Excavator [20 h]; Excavator Operator [95.54 h] |
| 7 | **bedding Works** |  | 2026-12-02 → 2026-11-12 (-20d) |  |  |  |  |
| SDR-2-CON-ST-ZA-4990 | Sand bedding for GRP Pipes |  | 2026-12-02 → 2026-11-12 A (-20d) | 50% → 100% | 13d → none |  | resources SIC- Cost [9218]; Labor [44.81 h]; Plumber [95.54 h]; Excavator [13.93 h]; Excavator Operator [67.9 h]; Dumper Truck [50 h]; Loader [17.14 h] → SIC- Cost [45535.5]; Labor [44.81 h]; Plumber [95.54 h]; Excavator [13.93 h]; Excavator Operator [67.9 h]; Dumper Truck [50 h]; Loader [17.14 h] |
| 2 | **Pipes Laying** |  | 2026-12-27 → 2026-11-12 (-45d) |  |  |  |  |
| SDR-2-CON-ST-ZA-4940 | Install ST GRP Pipes |  | 2026-12-27 → 2026-11-12 A (-45d) | 50% → 100% | 13d → none |  | resources Pipe Fitter [67.9 h]; SIC- Cost; Labor [51.21 h]; Plumber [67.9 h]; Excavator [12 h]; Excavator Operator [20.11 h] → Pipe Fitter [67.9 h]; SIC- Cost [409819]; Labor [51.21 h]; Plumber [67.9 h]; Excavator [12 h]; Excavator Operator [20.11 h] |
| 6 | **Testing** | 2026-12-28 → 2026-11-29 (-29d) | 2027-01-20 → 2026-12-22 (-29d) |  |  |  |  |
| SDR-2-CON-ST-ZA-4980 | Testing ST GRP Pipes | 2026-12-28 → 2026-11-29 (-29d) | 2027-01-20 → 2026-12-22 (-29d) |  | 13d → 14d |  | resources SIC- Cost; Plumbing Helper [40.74 h]; Labor [12.8 h]; Plumber [40.74 h]; Excavator [13.33 h]; Excavator Operator [40.74 h] → SIC- Cost [91070.9]; Plumbing Helper [40.74 h]; Labor [12.8 h]; Plumber [40.74 h]; Excavator [13.33 h]; Excavator Operator [40.74 h] |
| 3 | **Backfilling** | 2027-01-21 → 2026-12-23 (-29d) | 2027-02-14 → 2027-01-16 (-29d) |  |  |  |  |
| SDR-2-CON-ST-ZA-4950 | Backfilling ST GRP Pipes | 2027-01-21 → 2026-12-23 (-29d) | 2027-02-14 → 2027-01-16 (-29d) |  | 13d → 14d |  | resources SIC- Cost; Labor [12.8 h]; Plumber [40.74 h]; Excavator [12 h]; Excavator Operator [40.74 h]; Water Tanker [326.25 h] → SIC- Cost [182142]; Labor [12.8 h]; Plumber [40.74 h]; Excavator [12 h]; Excavator Operator [40.74 h]; Water Tanker [326.25 h] |
| 4 | **Manholes** |  | 2027-02-15 → 2027-02-09 (-6d) |  |  |  |  |
| 1 | **Excavation** |  | 2026-11-09 → 2026-11-12 (+3d) |  |  |  |  |
| SDR-2-CON-ST-ZA-6580 | Excavation Manholes Section 1 |  |  |  |  |  | resources SIC- Cost [18560]; Labor [6.4 h]; Plumber [238.84 h]; Excavator [20 h]; Excavator Operator [298.55 h] → SIC- Cost [12364.4]; Labor [6.4 h]; Plumber [238.84 h]; Excavator [20 h]; Excavator Operator [298.55 h] |
| SDR-2-CON-ST-ZA-4960 | Excavation Manholes Section 2 |  | 2026-11-09 → 2026-11-12 A (+3d) | 50% → 100% | 6d → none |  | resources SIC- Cost [18560]; Labor [6.4 h]; Plumber [238.84 h]; Excavator [20 h]; Excavator Operator [298.55 h] → SIC- Cost [12364.4]; Labor [6.4 h]; Plumber [238.84 h]; Excavator [20 h]; Excavator Operator [298.55 h] |
| 2 | **bedding Works** | 2026-11-10 → 2026-11-01 (-9d) | 2026-12-03 → 2026-11-12 (-21d) |  |  |  |  |
| SDR-2-CON-ST-ZA-5000 | Sand bedding for Manholes | 2026-11-10 → 2026-11-01 A (-9d) | 2026-12-03 → 2026-11-12 A (-21d) | 0% → 100% | 6d → none |  | resources SIC- Cost; Labor [6.4 h]; Plumber [96.32 h]; Excavator [9.62 h]; Excavator Operator [9.63 h]; Dumper Truck [275 h]; Loader [10 h] → SIC- Cost [16485.9]; Labor [6.4 h]; Plumber [96.32 h]; Excavator [9.62 h]; Excavator Operator [9.63 h]; Dumper Truck [275 h]; Loader [10 h] |
| 3 | **Install Manholes** | 2026-12-05 → 2026-11-29 (-6d) | 2026-12-28 → 2026-12-22 (-6d) |  |  |  |  |
| SDR-2-CON-ST-ZA-5010 | Manholes Installation | 2026-12-05 → 2026-11-29 (-6d) | 2026-12-28 → 2026-12-22 (-6d) |  | 6d → -7d |  | resources SIC- Cost [18560]; Plumbing Helper [191.07 h]; Labor [6.4 h]; Plumber [191.07 h]; Excavator [14.4 h]; Excavator Operator [238.84 h] → SIC- Cost [74186.4]; Plumbing Helper [191.07 h]; Labor [6.4 h]; Plumber [191.07 h]; Excavator [14.4 h]; Excavator Operator [238.84 h] |
| 4 | **Testing** | 2026-12-29 → 2026-12-23 (-6d) | 2027-01-21 → 2027-01-16 (-5d) |  |  |  |  |
| SDR-2-CON-ST-ZA-5020 | Testing for Manholes | 2026-12-29 → 2026-12-23 (-6d) | 2027-01-21 → 2027-01-16 (-5d) |  | 12d → -7d |  | resources SIC- Cost [18560]; Plumbing Helper [95.54 h]; Labor [6.4 h]; Plumber [95.54 h]; Excavator [6 h]; Excavator Operator [6.03 h] → SIC- Cost [16485.9]; Plumbing Helper [95.54 h]; Labor [6.4 h]; Plumber [95.54 h]; Excavator [6 h]; Excavator Operator [6.03 h] |
| 5 | **Backfilling** | 2027-01-23 → 2027-01-17 (-6d) | 2027-02-15 → 2027-02-09 (-6d) |  |  |  |  |
| SDR-2-CON-ST-ZA-5030 | Backfilling for Manholes | 2027-01-23 → 2027-01-17 (-6d) | 2027-02-15 → 2027-02-09 (-6d) |  | 12d → -7d |  | resources SIC- Cost [18560]; Dump Truck [380 h]; Loader [139.67 h]; Labor [678.97 h]; Plumber [678.97 h]; Excavator [12.32 h]; Excavator Operator [12.52 h]; Grader [120 h] → SIC- Cost [32971.8]; Dum Truck [380 h]; Loader [139.67 h]; Labor [678.97 h]; Plumber [678.97 h]; Excavator [12.32 h]; Excavator Operator [12.52 h]; Grader [120 h] |
| 5 | **Catch basin** |  | 2027-05-08 → 2027-04-06 (-32d) |  |  |  |  |
| 1 | **Excavation** |  | 2027-01-21 → 2026-12-29 (-23d) |  |  |  |  |
| SDR-2-CON-ST-ZA-4970 | Excavation for Catch basin Section 2 | 2026-10-22 A → 2026-10-20 A (-2d) | 2027-01-21 → 2026-10-26 A (-87d) | 20% → 100% | 6d → none | SDR-2-CON-ST-ZA-5010 → SDR-2-CON-ST-ZA-6590 FS+5d | resources SIC- Cost [55598.8]; Labor [19.2 h]; Plumber [286.61 h]; Excavator [14.44 h]; Excavator Operator [358.26 h] → SIC- Cost [22241.6]; Labor [19.2 h]; Plumber [286.61 h]; Excavator [14.44 h]; Excavator Operator [358.26 h] |
| SDR-2-CON-ST-ZA-6590 | Excavation for Catch basin Section 1 | 2026-10-20 A → 2026-10-22 A (+2d) | 2026-10-26 A → 2026-12-29 (+64d) | 100% → 20% | none → 38d | SDR-2-CON-ST-ZA-4970 FS+5d → SDR-2-CON-ST-ZA-5010 | resources SIC- Cost [55598.8]; Labor [19.2 h]; Plumber [286.61 h]; Excavator [14.44 h]; Excavator Operator [358.26 h] → SIC- Cost [22241.6]; Labor [19.2 h]; Plumber [286.61 h]; Excavator [14.44 h]; Excavator Operator [358.26 h] |
| 2 | **bedding Works** |  | 2027-02-21 → 2027-01-26 (-26d) |  |  |  |  |
| SDR-2-CON-ST-ZA-5040 | Sand Dedding for Catch basin |  | 2027-02-21 → 2027-01-26 (-26d) |  | 22d → 38d | SDR-2-CON-ST-ZA-6590 → SDR-2-CON-ST-ZA-4970 | resources SIC- Cost [69655.4]; Labor [25.6 h]; Plumber [191.07 h]; Excavator [12 h]; Excavator Operator [238.84 h]; Dumper Truck [929.05 h]; Loader [103.33 h]; Water Tanker [218.75 h] → SIC- Cost [29655.5]; Labor [25.6 h]; Plumber [191.07 h]; Excavator [12 h]; Excavator Operator [238.84 h]; Dumper Truck [929.05 h]; Loader [103.33 h]; Water Tanker [218.75 h] |
| 3 | **Install Catch basin** |  | 2027-03-23 → 2027-02-14 (-37d) |  |  |  |  |
| SDR-2-CON-ST-ZA-5050 | Install Catch basin |  | 2027-03-23 → 2027-02-14 (-37d) |  | 22d → 38d |  | resources SIC- Cost [69655.4]; Plumbing Helper [76.74 h]; Labor [76.74 h]; Plumber [76.74 h]; Excavator [20 h]; Excavator Operator [76.74 h] → SIC- Cost [133450]; Plumbing Helper [76.74 h]; Labor [76.74 h]; Plumber [76.74 h]; Excavator [20 h]; Excavator Operator [76.74 h] |
| 4 | **Testing** | 2027-03-24 → 2027-02-15 (-37d) | 2027-04-06 → 2027-03-01 (-36d) |  |  |  |  |
| SDR-2-CON-ST-ZA-5060 | Testing for Catch basin pipe | 2027-03-24 → 2027-02-15 (-37d) | 2027-04-06 → 2027-03-01 (-36d) |  | 22d → 38d |  | resources SIC- Cost [69655.4]; Plumbing Helper [95.54 h]; Loader [68.57 h]; Labor [25.6 h]; Plumber [95.54 h]; Excavator [6 h]; Excavator Operator [119.42 h]; Grader [60 h] → SIC- Cost [29655.5]; Plumbing Helper [95.54 h]; Loader [68.57 h]; Labor [25.6 h]; Plumber [95.54 h]; Excavator [6 h]; Excavator Operator [119.42 h]; Grader [60 h] |
| 5 | **Backfilling** | 2027-04-07 → 2027-03-02 (-36d) | 2027-05-08 → 2027-04-06 (-32d) |  |  |  |  |
| SDR-2-CON-ST-ZA-7050 | Backfilling for Catch basin Section 1 | 2027-04-07 → 2027-03-02 (-36d) | 2027-04-24 → 2027-03-23 (-32d) |  | 22d → 38d |  | resources SIC- Cost [69655.4]; Loader [32.53 h]; Labor [25.6 h]; Plumber [84.53 h]; Excavator [9.2 h]; Excavator Operator [108.18 h] → SIC- Cost [29655.4]; Loader [32.53 h]; Labor [25.6 h]; Plumber [84.53 h]; Excavator [9.2 h]; Excavator Operator [108.18 h] |
| SDR-2-CON-ST-ZA-5070 | Backfilling for Catch basin Section 2 | 2027-04-25 → 2027-03-24 (-32d) | 2027-05-08 → 2027-04-06 (-32d) |  | 22d → 38d |  | resources SIC- Cost [69655.4]; Loader [70 h]; Labor [25.6 h]; Plumber [40.13 h]; Excavator [49.5 h]; Excavator Operator [208.97 h] → SIC- Cost [29655.4]; Loader [70 h]; Labor [25.6 h]; Plumber [40.13 h]; Excavator [49.5 h]; Excavator Operator [208.97 h] |
| 18 | **STORM WATER LINE From STA-A2/10 TO STA-A2/1** |  | 2027-06-01 → 2027-08-31 (+91d) |  |  |  |  |
| 8 | **Pipes Works** |  | 2027-02-14 → 2027-02-02 (-12d) |  |  |  |  |
| SDR-2-CON-ST-ZA-6600 | Excavation for GRP Pipes Section 1 |  |  |  |  |  | resources SIC- Cost [100]; Labor [44.81 h]; Plumber [95.54 h]; Excavator [20 h]; Excavator Operator [95.54 h] → SIC- Cost [184936]; Labor [44.81 h]; Plumber [95.54 h]; Excavator [20 h]; Excavator Operator [95.54 h] |
| SDR-2-CON-ST-ZA-5080 | Excavation for GRP Pipes Section 2 |  |  |  |  |  | resources SIC- Cost [100]; Labor [44.81 h]; Plumber [95.54 h]; Excavator [20 h]; Excavator Operator [95.54 h] → SIC- Cost [184936]; Labor [44.81 h]; Plumber [95.54 h]; Excavator [20 h]; Excavator Operator [95.54 h] |
| SDR-2-CON-ST-ZA-5140 | Sand bedding for GRP Pipes |  |  |  | 1d → 18d |  | resources SIC- Cost [9218]; Labor [44.81 h]; Plumber [81.48 h]; Excavator [15.53 h]; Excavator Operator [95.54 h]; Dumper Truck [60 h]; Loader [26.57 h] → SIC- Cost [92467.9]; Labor [44.81 h]; Plumber [81.48 h]; Excavator [15.53 h]; Excavator Operator [95.54 h]; Dumper Truck [60 h]; Loader [26.57 h] |
| 2 | **Pipes Laying** |  | 2026-12-27 → 2026-12-15 (-12d) |  |  |  |  |
| SDR-2-CON-ST-ZA-5090 | Install ST GRP Pipes |  | 2026-12-27 → 2026-12-15 (-12d) |  | 1d → 18d |  | resources Pipe Fitter [40.74 h]; SIC- Cost [34153.9]; Labor [51.21 h]; Plumber [40.74 h]; Excavator [12.41 h]; Excavator Operator [12.07 h] → Pipe Fitter [40.74 h]; SIC- Cost [832211]; Labor [51.21 h]; Plumber [40.74 h]; Excavator [12.41 h]; Excavator Operator [12.07 h] |
| 6 | **Testing** | 2026-12-28 → 2026-12-16 (-12d) | 2027-01-20 → 2027-01-09 (-11d) |  |  |  |  |
| SDR-2-CON-ST-ZA-5130 | Testing ST GRP Pipes | 2026-12-28 → 2026-12-16 (-12d) | 2027-01-20 → 2027-01-09 (-11d) |  | 1d → 18d |  | resources SIC- Cost; Plumbing Helper [40.74 h]; Labor [12.8 h]; Plumber [40.74 h]; Excavator [15.5 h]; Excavator Operator [40.74 h] → SIC- Cost [184936]; Plumbing Helper [40.74 h]; Labor [12.8 h]; Plumber [40.74 h]; Excavator [15.5 h]; Excavator Operator [40.74 h] |
| 3 | **Backfilling** | 2027-01-21 → 2027-01-10 (-11d) | 2027-02-14 → 2027-02-02 (-12d) |  |  |  |  |
| SDR-2-CON-ST-ZA-5100 | Backfilling ST GRP Pipes | 2027-01-21 → 2027-01-10 (-11d) | 2027-02-14 → 2027-02-02 (-12d) |  | 1d → 18d |  | resources SIC- Cost; Labor [12.8 h]; Plumber [40.74 h]; Excavator [12 h]; Excavator Operator [40.74 h] → SIC- Cost [369871]; Labor [12.8 h]; Plumber [40.74 h]; Excavator [12 h]; Excavator Operator [40.74 h] |
| 4 | **Manholes** | 2026-11-09 → 2026-11-29 (+20d) | 2027-04-10 → 2027-04-29 (+19d) |  |  |  |  |
| 1 | **Excavation** | 2026-11-09 → 2026-11-29 (+20d) | 2026-12-27 → 2027-01-16 (+20d) |  |  |  |  |
| SDR-2-CON-ST-ZA-6610 | Excavation Manholes Section 1 | 2026-11-09 → 2026-11-29 (+20d) | 2026-12-02 → 2026-12-22 (+20d) |  | 8d → -75d |  | resources SIC- Cost [18560]; Labor [6.4 h]; Plumber [267.5 h]; Excavator [20 h]; Excavator Operator [19.26 h] → SIC- Cost [13188.5]; Labor [6.4 h]; Plumber [267.5 h]; Excavator [20 h]; Excavator Operator [19.26 h] |
| SDR-2-CON-ST-ZA-5110 | Excavation Manholes Section 2 | 2026-12-03 → 2026-12-23 (+20d) | 2026-12-27 → 2027-01-16 (+20d) |  | 8d → -75d |  | resources SIC- Cost [18560]; Labor [6.4 h]; Plumber [267.5 h]; Excavator [20 h]; Excavator Operator [334.38 h] → SIC- Cost [13188.5]; Labor [6.4 h]; Plumber [267.5 h]; Excavator [20 h]; Excavator Operator [334.38 h] |
| 2 | **bedding Works** | 2026-12-28 → 2027-01-17 (+20d) | 2027-01-20 → 2027-02-09 (+20d) |  |  |  |  |
| SDR-2-CON-ST-ZA-5150 | Sand bedding for Manholes | 2026-12-28 → 2027-01-17 (+20d) | 2027-01-20 → 2027-02-09 (+20d) |  | 8d → -75d |  | resources SIC- Cost; Labor [6.4 h]; Plumber [96.32 h]; Excavator [11.15 h]; Excavator Operator [11.56 h]; Dumper Truck [125 h]; Loader [10 h] → SIC- Cost [17584.8]; Labor [6.4 h]; Plumber [96.32 h]; Excavator [11.15 h]; Excavator Operator [11.56 h]; Dumper Truck [125 h]; Loader [10 h] |
| 3 | **Install Manholes** | 2027-01-21 → 2027-02-10 (+20d) | 2027-02-14 → 2027-03-07 (+21d) |  |  |  |  |
| SDR-2-CON-ST-ZA-5160 | Manholes Installation | 2027-01-21 → 2027-02-10 (+20d) | 2027-02-14 → 2027-03-07 (+21d) |  | 8d → -75d |  | resources SIC- Cost [18560]; Plumbing Helper [210.18 h]; Labor [6.4 h]; Plumber [210.18 h]; Excavator [15.15 h]; Excavator Operator [262.72 h] → SIC- Cost [79131.3]; Plumbing Helper [210.18 h]; Labor [6.4 h]; Plumber [210.18 h]; Excavator [15.15 h]; Excavator Operator [262.72 h] |
| 4 | **Testing** | 2027-02-15 → 2027-03-08 (+21d) | 2027-03-16 → 2027-04-05 (+20d) |  |  |  |  |
| SDR-2-CON-ST-ZA-5170 | Testing for Manholes | 2027-02-15 → 2027-03-08 (+21d) | 2027-03-16 → 2027-04-05 (+20d) |  | 8d → -55d |  | resources SIC- Cost [18560]; Plumbing Helper [95.54 h]; Labor [6.4 h]; Plumber [95.54 h]; Excavator [14.6 h]; Excavator Operator [119.42 h] → SIC- Cost [17584.8]; Plumbing Helper [95.54 h]; Labor [6.4 h]; Plumber [95.54 h]; Excavator [14.6 h]; Excavator Operator [119.42 h] |
| 5 | **Backfilling** | 2027-03-17 → 2027-04-06 (+20d) | 2027-04-10 → 2027-04-29 (+19d) |  |  |  |  |
| SDR-2-CON-ST-ZA-5180 | Backfilling for Manholes | 2027-03-17 → 2027-04-06 (+20d) | 2027-04-10 → 2027-04-29 (+19d) |  | 8d → -55d |  | resources SIC- Cost [18560]; Labor [6.4 h]; Plumber [248.39 h]; Excavator [12.47 h]; Excavator Operator [310.49 h] → SIC- Cost [35169.5]; Labor [6.4 h]; Plumber [248.39 h]; Excavator [12.47 h]; Excavator Operator [310.49 h] |
| 5 | **Catch basin** | 2027-01-23 → 2027-03-08 (+44d) | 2027-06-01 → 2027-08-31 (+91d) |  |  |  |  |
| 1 | **Excavation** | 2027-01-23 → 2027-03-08 (+44d) | 2027-03-17 → 2027-04-29 (+43d) |  |  |  |  |
| SDR-2-CON-ST-ZA-6620 | Excavation for Catch basin Section 1 | 2027-01-23 → 2027-03-08 (+44d) | 2027-02-15 → 2027-04-05 (+49d) |  | 6d → -75d | SDR-2-CON-ST-ZA-4970 → SDR-2-CON-ST-ZA-5160 | resources SIC- Cost [55598.8]; Labor [19.2 h]; Plumber [334.38 h]; Excavator [13 h]; Excavator Operator [417.97 h] → SIC- Cost [22241.6]; Labor [19.2 h]; Plumber [334.38 h]; Excavator [13 h]; Excavator Operator [417.97 h] |
| SDR-2-CON-ST-ZA-5120 | Excavation for Catch basin Section 2 | 2027-02-16 → 2027-04-06 (+49d) | 2027-03-17 → 2027-04-29 (+43d) |  | 6d → -75d |  | resources SIC- Cost [55598.8]; Labor [19.2 h]; Plumber [334.38 h]; Excavator [13 h]; Excavator Operator [417.97 h] → SIC- Cost [22241.6]; Labor [19.2 h]; Plumber [334.38 h]; Excavator [13 h]; Excavator Operator [417.97 h] |
| 2 | **bedding Works** | 2027-03-18 → 2027-05-01 (+44d) | 2027-04-11 → 2027-05-30 (+49d) |  |  |  |  |
| SDR-2-CON-ST-ZA-5190 | Sand Dedding for Catch basin | 2027-03-18 → 2027-05-01 (+44d) | 2027-04-11 → 2027-05-30 (+49d) |  | 6d → -75d |  | resources SIC- Cost [69655.4]; Labor [25.6 h]; Plumber [238.84 h]; Excavator [14.07 h]; Excavator Operator [298.55 h]; Dumper Truck [346.08 h]; Loader [80 h]; Water Tanker [243.75 h] → SIC- Cost [29655.5]; Labor [25.6 h]; Plumber [238.84 h]; Excavator [14.07 h]; Excavator Operator [298.55 h]; Dumper Truck [346.08 h]; Loader [80 h]; Water Tanker [243.75 h] |
| 3 | **Install Catch basin** | 2027-04-12 → 2027-06-24 (+73d) | 2027-05-05 → 2027-07-18 (+74d) |  |  |  |  |
| SDR-2-CON-ST-ZA-5200 | Install Catch basin | 2027-04-12 → 2027-06-24 (+73d) | 2027-05-05 → 2027-07-18 (+74d) |  | 6d → -96d |  | resources SIC- Cost [69655.4]; Plumbing Helper [9.43 h]; Labor [25.6 h]; Plumber [9.43 h]; Excavator [17.08 h]; Excavator Operator [61.99 h] → SIC- Cost [133450]; Plumbing Helper [9.43 h]; Labor [25.6 h]; Plumber [9.43 h]; Excavator [17.08 h]; Excavator Operator [61.99 h] |
| 4 | **Testing** | 2027-05-06 → 2027-07-19 (+74d) | 2027-05-25 → 2027-08-01 (+68d) |  |  |  |  |
| SDR-2-CON-ST-ZA-5210 | Testing for Catch basin pipe | 2027-05-06 → 2027-07-19 (+74d) | 2027-05-25 → 2027-08-01 (+68d) |  | 6d → -96d |  | resources SIC- Cost [69655.4]; Plumbing Helper [95.54 h]; Loader [65.71 h]; Labor [25.6 h]; Plumber [95.54 h]; Excavator [6 h]; Excavator Operator [119.42 h] → SIC- Cost [29655.5]; Plumbing Helper [95.54 h]; Loader [65.71 h]; Labor [25.6 h]; Plumber [95.54 h]; Excavator [6 h]; Excavator Operator [119.42 h] |
| 5 | **Backfilling** | 2027-05-11 → 2027-08-02 (+83d) | 2027-06-01 → 2027-08-31 (+91d) |  |  |  |  |
| SDR-2-CON-ST-ZA-7060 | Backfilling for Catch basin Section 1 | 2027-05-11 → 2027-08-02 (+83d) | 2027-05-31 → 2027-08-15 (+76d) |  | 6d → -96d | SDR-2-CON-ST-ZA-5210 SS+4d → SDR-2-CON-ST-ZA-5210 | resources SIC- Cost [69655.4]; Dump Truck [550 h]; Loader [36.27 h]; Labor [25.6 h]; Plumber [97.23 h]; Excavator [67.51 h]; Excavator Operator [119.02 h]; Grader [61.63 h] → SIC- Cost [29655.4]; Dum Truck [550 h]; Loader [36.27 h]; Labor [25.6 h]; Plumber [97.23 h]; Excavator [67.51 h]; Excavator Operator [119.02 h]; Grader [61.63 h] |
| SDR-2-CON-ST-ZA-5220 | Backfilling for Catch basin Section 2 | 2027-05-11 → 2027-08-16 (+97d) | 2027-06-01 → 2027-08-31 (+91d) |  | 6d → -96d | SDR-2-CON-ST-ZA-7060 SS → SDR-2-CON-ST-ZA-7060 | resources SIC- Cost [69655.4]; Dump Truck [150 h]; Loader [42.92 h]; Labor [25.6 h]; Plumber [40.13 h]; Excavator [47.72 h]; Excavator Operator [149.25 h]; Grader [62.19 h] → SIC- Cost [29655.4]; Dum Truck [150 h]; Loader [42.92 h]; Labor [25.6 h]; Plumber [40.13 h]; Excavator [47.72 h]; Excavator Operator [149.25 h]; Grader [62.19 h] |

| ID | Task | Start | Finish | Complete | Total float | Predecessors | Other |
| --- | --- | --- | --- | --- | --- | --- | --- |
| 19 | **STORM WATER LINE From IP A7 To Pond A** |  | 2027-05-08 → 2027-05-30 (+22d) |  |  |  |  |
| 8 | **Pipes Works** |  | 2027-02-15 → 2027-01-16 (-30d) |  |  |  |  |
| 1 | **Excavation** |  | 2026-11-09 → 2026-11-11 (+2d) |  |  |  |  |
| SDR-2-CON-ST-ZA-5830 | Excavation for GRP Pipes Section 2 |  | 2026-11-09 → 2026-11-11 A (+2d) | 90% → 100% | 0d → none | SDR-2-CON-ST-ZA-6630 FF → SDR-2-CON-ST-ZA-6630 FS+3d | resources SIC- Cost [9218]; Labor [44.81 h]; Plumber [382.14 h]; Excavator [20 h]; Excavator Operator [477.68 h] → SIC- Cost [184936]; Labor [44.81 h]; Plumber [382.14 h]; Excavator [20 h]; Excavator Operator [477.68 h] |
| SDR-2-CON-ST-ZA-6630 | Excavation for GRP Pipes Section 1 |  | 2026-11-09 → 2026-11-11 A (+2d) | 90% → 100% | 0d → none |  | resources SIC- Cost; Labor [44.81 h]; Plumber [115.59 h]; Excavator [20 h]; Excavator Operator [19.26 h] → SIC- Cost [184936]; Labor [44.81 h]; Plumber [115.59 h]; Excavator [20 h]; Excavator Operator [19.26 h] |
| 7 | **bedding Works** | 2026-11-10 → 2026-10-03 (-38d) | 2026-12-03 → 2026-11-13 (-20d) |  |  |  |  |
| SDR-2-CON-ST-ZA-5890 | Sand bedding for GRP Pipes | 2026-11-10 → 2026-10-03 A (-38d) | 2026-12-03 → 2026-11-13 A (-20d) | 0% → 100% | 0d → none |  | resources SIC- Cost; Labor [44.81 h]; Plumber [81.48 h]; Excavator [12.44 h]; Excavator Operator [12.52 h]; Dumper Truck [60 h]; Loader [10 h] → SIC- Cost [92467.9]; Labor [44.81 h]; Plumber [81.48 h]; Excavator [12.44 h]; Excavator Operator [12.52 h]; Dumper Truck [60 h]; Loader [10 h] |
| 2 | **Pipes Laying** | 2026-12-05 → 2026-10-03 (-63d) | 2026-12-28 → 2026-11-13 (-45d) |  |  |  |  |
| SDR-2-CON-ST-ZA-5840 | Install ST GRP Pipes | 2026-12-05 → 2026-10-03 A (-63d) | 2026-12-28 → 2026-11-13 A (-45d) | 0% → 100% | 0d → none |  | resources Pipe Fitter [81.48 h]; SIC- Cost; Labor [51.21 h]; Plumber [81.48 h]; Excavator [15.31 h]; Excavator Operator [81.48 h] → Pipe Fitter [81.48 h]; SIC- Cost [832211]; Labor [51.21 h]; Plumber [81.48 h]; Excavator [15.31 h]; Excavator Operator [81.48 h] |
| 6 | **Testing** | 2026-12-29 → 2026-11-29 (-30d) | 2027-01-21 → 2026-12-22 (-30d) |  |  |  |  |
| SDR-2-CON-ST-ZA-5880 | Testing ST GRP Pipes | 2026-12-29 → 2026-11-29 (-30d) | 2027-01-21 → 2026-12-22 (-30d) |  | 0d → 20d |  | resources SIC- Cost; Plumbing Helper [114.64 h]; Labor [12.8 h]; Plumber [114.64 h]; Excavator [13.83 h]; Excavator Operator [81.48 h] → SIC- Cost [184936]; Plumbing Helper [114.64 h]; Labor [12.8 h]; Plumber [114.64 h]; Excavator [13.83 h]; Excavator Operator [81.48 h] |
| 3 | **Backfilling** | 2027-01-23 → 2026-12-23 (-31d) | 2027-02-15 → 2027-01-16 (-30d) |  |  |  |  |
| SDR-2-CON-ST-ZA-5850 | Backfilling ST GRP Pipes | 2027-01-23 → 2026-12-23 (-31d) | 2027-02-15 → 2027-01-16 (-30d) |  | 0d → 20d |  | resources SIC- Cost; Labor [12.8 h]; Plumber [40.74 h]; Excavator [14.79 h]; Excavator Operator [40.74 h] → SIC- Cost [369871]; Labor [12.8 h]; Plumber [40.74 h]; Excavator [14.79 h]; Excavator Operator [40.74 h] |
| 4 | **Manholes** | 2026-11-09 → 2026-10-03 (-37d) | 2027-04-13 → 2027-01-16 (-87d) |  |  |  |  |
| 1 | **Excavation** | 2026-11-09 → 2026-10-03 (-37d) | 2026-12-30 → 2026-11-14 (-46d) |  |  |  |  |
| SDR-2-CON-ST-ZA-5860 | Excavation Manholes Section 2 | 2026-12-07 → 2026-10-03 A (-65d) | 2026-12-30 → 2026-11-14 A (-46d) | 0% → 100% | 5d → none |  | resources SIC- Cost [18560]; Labor [6.4 h]; Plumber [277.05 h]; Excavator [20 h]; Excavator Operator [346.32 h] → SIC- Cost [13188.5]; Labor [6.4 h]; Plumber [277.05 h]; Excavator [20 h]; Excavator Operator [346.32 h] |
| SDR-2-CON-ST-ZA-6640 | Excavation Manholes Section 1 | 2026-11-09 → 2026-10-03 A (-37d) | 2026-12-02 → 2026-11-14 A (-18d) | 0% → 100% | 5d → none |  | resources SIC- Cost; Labor [6.4 h]; Plumber [134.85 h]; Excavator [20 h]; Excavator Operator [19.26 h] → SIC- Cost [13188.5]; Labor [6.4 h]; Plumber [134.85 h]; Excavator [20 h]; Excavator Operator [19.26 h] |
| 2 | **bedding Works** | 2026-12-31 → 2026-10-06 (-86d) | 2027-01-24 → 2026-11-14 (-71d) |  |  |  |  |
| SDR-2-CON-ST-ZA-5900 | Sand bedding for Manholes | 2026-12-31 → 2026-10-06 A (-86d) | 2027-01-24 → 2026-11-14 A (-71d) | 0% → 100% | 5d → none |  | resources SIC- Cost [18560]; Labor [6.4 h]; Plumber [96.32 h]; Excavator [6.58 h]; Excavator Operator [6.74 h]; Dumper Truck [100 h]; Loader [10 h] → SIC- Cost [17584.8]; Labor [6.4 h]; Plumber [96.32 h]; Excavator [6.58 h]; Excavator Operator [6.74 h]; Dumper Truck [100 h]; Loader [10 h] |
| 3 | **Install Manholes** | 2027-01-25 → 2026-11-07 (-79d) | 2027-02-17 → 2026-11-14 (-95d) |  |  |  |  |
| SDR-2-CON-ST-ZA-5910 | Manholes Installation | 2027-01-25 → 2026-11-07 A (-79d) | 2027-02-17 → 2026-11-14 A (-95d) | 0% → 100% | 5d → none |  | resources SIC- Cost [18560]; Plumbing Helper [191.07 h]; Labor [6.4 h]; Plumber [191.07 h]; Excavator [12.5 h]; Excavator Operator [238.84 h] → SIC- Cost [79131.3]; Plumbing Helper [191.07 h]; Labor [6.4 h]; Plumber [191.07 h]; Excavator [12.5 h]; Excavator Operator [238.84 h] |
| 4 | **Testing** | 2027-02-18 → 2026-11-29 (-81d) | 2027-03-20 → 2026-12-22 (-88d) |  |  |  |  |
| SDR-2-CON-ST-ZA-5920 | Testing for Manholes | 2027-02-18 → 2026-11-29 (-81d) | 2027-03-20 → 2026-12-22 (-88d) |  | 5d → 20d |  | resources SIC- Cost [18560]; Plumbing Helper [95.54 h]; Labor [6.4 h]; Plumber [95.54 h]; Excavator [6 h]; Excavator Operator [6.03 h] → SIC- Cost [17584.8]; Plumbing Helper [95.54 h]; Labor [6.4 h]; Plumber [95.54 h]; Excavator [6 h]; Excavator Operator [6.03 h] |
| 5 | **Backfilling** | 2027-03-21 → 2026-12-23 (-88d) | 2027-04-13 → 2027-01-16 (-87d) |  |  |  |  |
| SDR-2-CON-ST-ZA-5930 | Backfilling for Manholes | 2027-03-21 → 2026-12-23 (-88d) | 2027-04-13 → 2027-01-16 (-87d) |  | 5d → 20d |  | resources SIC- Cost [18560]; Labor [6.4 h]; Plumber [267.5 h]; Excavator [5 h]; Excavator Operator [334.38 h] → SIC- Cost [35169.5]; Labor [6.4 h]; Plumber [267.5 h]; Excavator [5 h]; Excavator Operator [334.38 h] |
| 5 | **Catch basin** | 2026-12-05 → 2026-11-29 (-6d) | 2027-05-08 → 2027-05-30 (+22d) |  |  |  |  |
| 1 | **Excavation** | 2026-12-05 → 2026-11-29 (-6d) | 2027-01-21 → 2027-01-16 (-5d) |  |  |  |  |
| SDR-2-CON-ST-ZA-6650 | Excavation for Catch basin Section 1 | 2026-12-05 → 2026-11-29 (-6d) | 2026-12-28 → 2026-12-22 (-6d) |  | 20d → 19d | SDR-2-CON-ST-ZA-4820 SS → SDR-2-CON-ST-ZA-5910 | resources SIC- Cost [55598.8]; Labor [19.2 h]; Plumber [115.59 h]; Excavator [13.15 h]; Excavator Operator [13.49 h] → SIC- Cost [22241.6]; Labor [19.2 h]; Plumber [115.59 h]; Excavator [13.15 h]; Excavator Operator [13.49 h] |
| SDR-2-CON-ST-ZA-5870 | Excavation for Catch basin Section 2 | 2026-12-29 → 2026-12-23 (-6d) | 2027-01-21 → 2027-01-16 (-5d) |  | 20d → 19d |  | resources SIC- Cost [55598.8]; Labor [19.2 h]; Plumber [286.61 h]; Excavator [5 h]; Excavator Operator [358.26 h] → SIC- Cost [22241.6]; Labor [19.2 h]; Plumber [286.61 h]; Excavator [5 h]; Excavator Operator [358.26 h] |
| 2 | **bedding Works** | 2027-01-23 → 2027-01-17 (-6d) | 2027-02-15 → 2027-02-09 (-6d) |  |  |  |  |
| SDR-2-CON-ST-ZA-5940 | Sand Dedding for Catch basin | 2027-01-23 → 2027-01-17 (-6d) | 2027-02-15 → 2027-02-09 (-6d) |  | 20d → 19d |  | resources SIC- Cost [69655.4]; Labor [25.6 h]; Plumber [238.84 h]; Excavator [6.23 h]; Excavator Operator [298.55 h]; Dumper Truck [1129.42 h]; Loader [30.99 h] → SIC- Cost [29655.5]; Labor [25.6 h]; Plumber [238.84 h]; Excavator [6.23 h]; Excavator Operator [298.55 h]; Dumper Truck [1129.42 h]; Loader [30.99 h] |
| 3 | **Install Catch basin** | 2027-02-16 → 2027-02-10 (-6d) | 2027-03-17 → 2027-03-07 (-10d) |  |  |  |  |
| SDR-2-CON-ST-ZA-5950 | Install Catch basin | 2027-02-16 → 2027-02-10 (-6d) | 2027-03-17 → 2027-03-07 (-10d) |  | 20d → 19d |  | resources SIC- Cost [69655.4]; Plumbing Helper [229.29 h]; Labor [25.6 h]; Plumber [229.29 h]; Excavator [14.44 h]; Excavator Operator [286.61 h] → SIC- Cost [133450]; Plumbing Helper [229.29 h]; Labor [25.6 h]; Plumber [229.29 h]; Excavator [14.44 h]; Excavator Operator [286.61 h] |
| 4 | **Testing** | 2027-03-18 → 2027-03-08 (-10d) | 2027-03-27 → 2027-03-21 (-6d) |  |  |  |  |
| SDR-2-CON-ST-ZA-5960 | Testing for Catch basin pipe | 2027-03-18 → 2027-03-08 (-10d) | 2027-03-27 → 2027-03-21 (-6d) |  | 20d → 19d |  | resources SIC- Cost [69655.4]; Plumbing Helper [114.64 h]; Dump Truck [300 h]; Loader [40 h]; Labor [25.6 h]; Plumber [114.64 h]; Excavator [6 h]; Excavator Operator [143.3 h]; Grader [60 h] → SIC- Cost [29655.5]; Plumbing Helper [114.64 h]; Dum Truck [300 h]; Loader [40 h]; Labor [25.6 h]; Plumber [114.64 h]; Excavator [6 h]; Excavator Operator [143.3 h]; Grader [60 h] |
| 5 | **Backfilling** | 2027-04-14 → 2027-05-01 (+17d) | 2027-05-08 → 2027-05-30 (+22d) |  |  |  |  |
| SDR-2-CON-ST-ZA-5970 | Backfilling for Catch basin | 2027-04-14 → 2027-05-01 (+17d) | 2027-05-08 → 2027-05-30 (+22d) |  | 5d → -15d | SDR-2-CON-ST-ZA-5960, SDR-2-CON-ST-ZA-5930, SDR-2-CON-ST-ZA-5180 → SDR-2-CON-ST-ZA-5960, SDR-2-CON-ST-ZA-5930 FS+10d, SDR-2-CON-ST-ZA-5180 | resources SIC- Cost [69655.4]; Labor [25.6 h]; Plumber [191.07 h]; Excavator [8 h]; Excavator Operator [67.52 h] → SIC- Cost [59310.8]; Labor [25.6 h]; Plumber [191.07 h]; Excavator [8 h]; Excavator Operator [67.52 h] |
| 2 | **Concrete Box culverts** |  | 2027-01-05 → 2026-12-12 (-24d) |  |  |  |  |
| 6 | **For Pond A** |  | 2026-12-02 → 2026-10-31 (-32d) |  |  |  |  |
| SDR-2-CON-ST-ZA-3270 | Excavation for Box Culvert. |  |  |  |  |  | resources SIC- Cost [10]; Labor [51.21 h]; Plumber [76.43 h]; Excavator [20 h]; Excavator Operator [95.54 h] → SIC- Cost [12051.9]; Labor [51.21 h]; Plumber [76.43 h]; Excavator [20 h]; Excavator Operator [95.54 h] |
| SDR-2-CON-ST-ZA-3280 | Backfilling with common / suitable excavated material or with suitable imported material |  |  |  |  |  | resources SIC- Cost [5]; Labor [25.6 h]; Plumber [38.21 h]; Excavator [271.5 h]; Excavator Operator [47.77 h] → SIC- Cost [1573.66]; Labor [25.6 h]; Plumber [38.21 h]; Excavator [271.5 h]; Excavator Operator [47.77 h] |
| 3 | **Plain Concrete** | 2026-11-09 → 2026-10-03 (-37d) | 2026-11-15 → 2026-10-31 (-15d) |  |  |  |  |
| SDR-2-CON-ST-ZA-3290 | Plain Concrete for box culvert | 2026-11-09 → 2026-10-03 A (-37d) | 2026-11-15 → 2026-10-31 A (-15d) | 0% → 100% | 35d → none |  | resources SIC- Cost [5]; Labor [25.6 h]; Plumber [38.21 h]; Excavator [10 h]; Excavator Operator [47.77 h] → SIC- Cost [4964.84]; Labor [25.6 h]; Plumber [38.21 h]; Excavator [10 h]; Excavator Operator [47.77 h] |
| 4 | **Steel Reinforcement** | 2026-11-16 → 2026-10-03 (-44d) | 2026-11-24 → 2026-10-31 (-24d) |  |  |  |  |
| SDR-2-CON-ST-ZA-3300 | Steel Reinforcement for box culverts | 2026-11-16 → 2026-10-03 A (-44d) | 2026-11-24 → 2026-10-31 A (-24d) | 0% → 100% | 35d → none |  | resources SIC- Cost [10]; Labor [51.21 h]; Plumber [76.43 h]; Excavator [14 h]; Excavator Operator [95.54 h] → SIC- Cost [50961.5]; Labor [51.21 h]; Plumber [76.43 h]; Excavator [14 h]; Excavator Operator [95.54 h] |
| 5 | **Reinforced Concrete** | 2026-11-25 → 2026-10-01 (-55d) | 2026-12-02 → 2026-10-31 (-32d) |  |  |  |  |
| SDR-2-CON-ST-ZA-3310 | Reinforced Concrete for box culvert | 2026-11-25 → 2026-10-01 A (-55d) | 2026-12-02 → 2026-10-31 A (-32d) | 0% → 100% | 35d → none |  | resources SIC- Cost [9]; Labor [44.81 h]; Plumber [66.88 h]; Excavator [273.49 h]; Excavator Operator [83.59 h] → SIC- Cost [85585.3]; Labor [44.81 h]; Plumber [66.88 h]; Excavator [273.49 h]; Excavator Operator [83.59 h] |
| 7 | **For Pond B** |  | 2026-12-12 → 2026-11-15 (-27d) |  |  |  |  |
| SDR-2-CON-ST-ZA-6250 | Excavation for Box Culvert. |  |  |  |  | SDR-2-CON-RW-ZA-2870 → SDR-2-PRO-ST-E-1010 FF, SDR-2-CON-RW-ZA-2870 | resources SIC- Cost [10]; Labor [51.21 h]; Plumber [76.43 h]; Excavator [20 h]; Excavator Operator [95.54 h] → SIC- Cost [8034.6]; Labor [51.21 h]; Plumber [76.43 h]; Excavator [20 h]; Excavator Operator [95.54 h] |
| 2 | **Backfilling with common / suitable excavated material** | 2026-11-09 → 2026-10-04 (-36d) | 2026-11-17 → 2026-10-27 (-21d) |  |  |  |  |
| SDR-2-CON-ST-ZA-6260 | Backfilling with common / suitable excavated material or with suitable imported material | 2026-11-09 → 2026-10-04 A (-36d) | 2026-11-17 → 2026-10-27 A (-21d) | 0% → 100% | 14d → none |  | resources SIC- Cost [5]; Labor [25.6 h]; Plumber [38.21 h]; Excavator [14 h]; Excavator Operator [47.77 h] → SIC- Cost [1049.1]; Labor [25.6 h]; Plumber [38.21 h]; Excavator [14 h]; Excavator Operator [47.77 h] |
| 3 | **Plain Concrete** | 2026-11-18 → 2026-10-04 (-45d) | 2026-11-24 → 2026-10-28 (-27d) |  |  |  |  |
| SDR-2-CON-ST-ZA-6270 | Plain Concrete for box culvert | 2026-11-18 → 2026-10-04 A (-45d) | 2026-11-24 → 2026-10-28 A (-27d) | 0% → 100% | 14d → none |  | resources SIC- Cost [5]; Labor [25.6 h]; Plumber [38.21 h]; Excavator [14 h]; Excavator Operator [47.77 h] → SIC- Cost [3309.9]; Labor [25.6 h]; Plumber [38.21 h]; Excavator [14 h]; Excavator Operator [47.77 h] |
| 4 | **Steel Reinforcement** | 2026-11-25 → 2026-10-08 (-48d) | 2026-12-03 → 2026-11-15 (-18d) |  |  |  |  |
| SDR-2-CON-ST-ZA-6280 | Steel Reinforcement for box culverts | 2026-11-25 → 2026-10-08 A (-48d) | 2026-12-03 → 2026-11-15 A (-18d) | 0% → 100% | 14d → none |  | resources SIC- Cost [10]; Labor [51.21 h]; Plumber [76.43 h]; Excavator [15.55 h]; Excavator Operator [95.54 h] → SIC- Cost [33974.3]; Labor [51.21 h]; Plumber [76.43 h]; Excavator [15.55 h]; Excavator Operator [95.54 h] |
| 5 | **Reinforced Concrete** | 2026-12-05 → 2026-10-10 (-56d) | 2026-12-12 → 2026-10-29 (-44d) |  |  |  |  |
| SDR-2-CON-ST-ZA-6290 | Reinforced Concrete for box culvert | 2026-12-05 → 2026-10-10 A (-56d) | 2026-12-12 → 2026-10-29 A (-44d) | 0% → 100% | 14d → none |  | resources SIC- Cost [9]; Labor [44.81 h]; Plumber [66.88 h]; Excavator [6 h]; Excavator Operator [83.59 h] → SIC- Cost [57056.9]; Labor [44.81 h]; Plumber [66.88 h]; Excavator [6 h]; Excavator Operator [83.59 h] |
| 8 | **For Pond C** | 2026-11-12 → 2026-10-31 (-12d) | 2027-01-05 → 2026-12-12 (-24d) |  |  |  |  |
| 1 | **Excavation** | 2026-11-12 → 2026-10-31 (-12d) | 2026-11-23 → 2026-12-05 (+12d) |  |  |  |  |
| SDR-2-CON-ST-ZA-6300 | Excavation for Box Culvert. | 2026-11-12 → 2026-10-31 A (-12d) | 2026-11-23 → 2026-12-05 (+12d) | 0% → 50% | 17d → -27d |  | resources SIC- Cost [10]; Labor [51.21 h]; Plumber [76.43 h]; Excavator [14 h]; Excavator Operator [13.49 h] → SIC- Cost [6695.51]; Labor [51.21 h]; Plumber [76.43 h]; Excavator [14 h]; Excavator Operator [13.49 h] |
| 2 | **Backfilling with common / suitable excavated material** | 2026-11-24 → 2026-10-31 (-24d) | 2026-12-02 → 2026-12-12 (+10d) |  |  |  |  |
| SDR-2-CON-ST-ZA-6310 | Backfilling with common / suitable excavated material or with suitable imported material | 2026-11-24 → 2026-10-31 A (-24d) | 2026-12-02 → 2026-12-12 (+10d) | 0% → 50% | 17d → -27d |  | resources SIC- Cost [5]; Labor [25.6 h]; Plumber [38.21 h]; Excavator [14 h]; Excavator Operator [47.77 h] → SIC- Cost [874.25]; Labor [25.6 h]; Plumber [38.21 h]; Excavator [14 h]; Excavator Operator [47.77 h] |
| 3 | **Plain Concrete** | 2026-12-03 → 2026-11-01 (-32d) | 2026-12-09 → 2026-11-08 (-31d) |  |  |  |  |
| SDR-2-CON-ST-ZA-6320 | Plain Concrete for box culvert | 2026-12-03 → 2026-11-01 A (-32d) | 2026-12-09 → 2026-11-08 A (-31d) | 0% → 100% | 17d → none |  | resources SIC- Cost [5]; Labor [25.6 h]; Plumber [38.21 h]; Excavator [20 h]; Excavator Operator [47.77 h] → SIC- Cost [2758.25]; Labor [25.6 h]; Plumber [38.21 h]; Excavator [20 h]; Excavator Operator [47.77 h] |
| 4 | **Steel Reinforcement** | 2026-12-10 → 2026-11-03 (-37d) | 2026-12-19 → 2026-11-10 (-39d) |  |  |  |  |
| SDR-2-CON-ST-ZA-6330 | Steel Reinforcement for box culverts | 2026-12-10 → 2026-11-03 A (-37d) | 2026-12-19 → 2026-11-10 A (-39d) | 0% → 100% | 17d → none |  | resources SIC- Cost [10]; Labor [51.21 h]; Plumber [76.43 h]; Excavator [6 h]; Excavator Operator [95.54 h] → SIC- Cost [28311.9]; Labor [51.21 h]; Plumber [76.43 h]; Excavator [6 h]; Excavator Operator [95.54 h] |
| 5 | **Reinforced Concrete** | 2026-12-29 → 2026-11-05 (-54d) | 2027-01-05 → 2026-11-14 (-52d) |  |  |  |  |
| SDR-2-CON-ST-ZA-6340 | Reinforced Concrete for box culvert | 2026-12-29 → 2026-11-05 A (-54d) | 2027-01-05 → 2026-11-14 A (-52d) | 0% → 100% | 17d → none |  | resources SIC- Cost [9]; Labor [44.81 h]; Plumber [66.88 h]; Excavator [6 h]; Excavator Operator [83.59 h] → SIC- Cost [47547.4]; Labor [44.81 h]; Plumber [66.88 h]; Excavator [6 h]; Excavator Operator [83.59 h] |
| 3 | **Drainage works for ponds and open canals** |  | 2027-05-04 → 2027-07-10 (+67d) |  |  |  |  |
| 7 | **Pond A** |  | 2027-01-27 → 2026-11-14 (-74d) |  |  |  |  |

| ID | Task | Start | Finish | Complete | Total float | Predecessors | Other |
| --- | --- | --- | --- | --- | --- | --- | --- |
| SDR-2-CON-ST-ZA-6140 | Embankments with common / suitable excavated material |  |  |  |  |  | resources SIC- Cost [9]; Labor [44.81 h]; Plumber [57.32 h]; Excavator; Excavator Operator [71.65 h] → SIC- Cost [13884.6]; Labor [44.81 h]; Plumber [57.32 h]; Excavator; Excavator Operator [71.65 h] |
| SDR-2-CON-ST-ZA-6660 | Excavation for cutting material Section 1 |  |  |  |  |  | resources SIC- Cost [8]; Labor [38.41 h]; Plumber [57.32 h]; Excavator [20 h]; Excavator Operator [71.65 h] → SIC- Cost [147072]; Labor [38.41 h]; Plumber [57.32 h]; Excavator [20 h]; Excavator Operator [71.65 h] |
| SDR-2-CON-ST-ZA-6670 | Excavation for cutting material Section 2 |  |  |  |  |  | resources SIC- Cost [8]; Labor [38.41 h]; Plumber [57.32 h]; Excavator [20 h]; Excavator Operator [71.65 h] → SIC- Cost [196096]; Labor [38.41 h]; Plumber [57.32 h]; Excavator [20 h]; Excavator Operator [71.65 h] |
| SDR-2-CON-ST-ZA-6680 | Excavation for cutting material Section 3 |  |  |  |  |  | resources SIC- Cost [8]; Labor [38.41 h]; Plumber [57.32 h]; Excavator [20 h]; Excavator Operator [19.26 h] → SIC- Cost [294144]; Labor [38.41 h]; Plumber [57.32 h]; Excavator [20 h]; Excavator Operator [19.26 h] |
| SDR-2-CON-ST-ZA-6130 | Excavation for cutting material Section 4 |  |  |  |  |  | resources SIC- Cost [8]; Labor [38.41 h]; Plumber [57.32 h]; Excavator [20 h]; Excavator Operator [71.65 h] → SIC- Cost [343167]; Labor [38.41 h]; Plumber [57.32 h]; Excavator [20 h]; Excavator Operator [71.65 h] |
| 3 | **Sand lining for pond bed** |  | 2026-12-09 → 2026-11-14 (-25d) |  |  |  |  |
| SDR-2-CON-ST-ZA-6690 | Sand lining for pond bed Section 1 & Section 2 |  | 2026-11-11 → 2026-11-12 A (+1d) | 30% → 100% | 31d → none |  | resources SIC- Cost [6]; Labor [32 h]; Plumber [47.77 h]; Excavator [14 h]; Excavator Operator [59.71 h]; Dumper Truck [62.5 h]; Loader [38.45 h] → SIC- Cost [237419]; Labor [32 h]; Plumber [47.77 h]; Excavator [14 h]; Excavator Operator [59.71 h]; Dumper Truck [62.5 h]; Loader [38.45 h] |
| SDR-2-CON-ST-ZA-6150 | Sand lining for pond bed Section 3 & Section 4 | 2026-11-16 → 2026-09-01 A (-76d) | 2026-12-09 → 2026-11-14 A (-25d) | 0% → 100% | 31d → none |  | resources SIC- Cost [6]; Labor [32 h]; Plumber [47.77 h]; Excavator [14 h]; Excavator Operator [59.71 h]; Dumper Truck [62.5 h]; Loader [45.12 h] → SIC- Cost [237419]; Labor [32 h]; Plumber [47.77 h]; Excavator [14 h]; Excavator Operator [59.71 h]; Dumper Truck [62.5 h]; Loader [45.12 h] |
| 6 | **Pipe Encasements,** | 2026-12-10 → 2026-09-30 (-71d) | 2027-01-03 → 2026-11-14 (-50d) |  |  |  |  |
| SDR-2-CON-ST-ZA-6180 | Pipe encasement | 2026-12-10 → 2026-09-30 A (-71d) | 2027-01-03 → 2026-11-14 A (-50d) | 0% → 100% | 31d → none |  | resources SIC- Cost [10]; Labor [40.74 h]; Plumber [57.32 h]; Excavator [23.28 h]; Excavator Operator [40.74 h] → SIC- Cost [11538.1]; Labor [40.74 h]; Plumber [57.32 h]; Excavator [23.28 h]; Excavator Operator [40.74 h] |
| 5 | **Concrete Outfalls** | 2027-01-04 → 2026-09-30 (-96d) | 2027-01-27 → 2026-11-14 (-74d) |  |  |  |  |
| SDR-2-CON-ST-ZA-6170 | Concrete Outfall structure. | 2027-01-04 → 2026-09-30 A (-96d) | 2027-01-27 → 2026-11-14 A (-74d) | 0% → 100% | 31d → none |  | resources SIC- Cost [10]; Labor [51.21 h]; Plumber [47.77 h]; Excavator [13.97 h]; Excavator Operator [59.71 h] → SIC- Cost [25485.6]; Labor [51.21 h]; Plumber [47.77 h]; Excavator [13.97 h]; Excavator Operator [59.71 h] |
| SDR-2-CON-ST-ZA-6160 | Loose Riprap work |  |  |  |  |  | resources SIC- Cost [10]; Labor [51.21 h]; Plumber [47.77 h]; Excavator [18.74 h]; Excavator Operator [59.71 h]; Water Tanker [197.5 h] → SIC- Cost [1261760]; Labor [51.21 h]; Plumber [47.77 h]; Excavator [18.74 h]; Excavator Operator [59.71 h]; Water Tanker [197.5 h] |
| 8 | **Pond B** |  | 2027-05-04 → 2027-07-10 (+67d) |  |  |  |  |
| SDR-2-CON-ST-ZA-6200 | Embankments with common / suitable excavated material |  |  |  |  |  | resources SIC- Cost [9]; Labor [44.81 h]; Plumber [57.32 h]; Excavator [20 h]; Excavator Operator [71.65 h] → SIC- Cost [9256.42]; Labor [44.81 h]; Plumber [57.32 h]; Excavator [20 h]; Excavator Operator [71.65 h] |
| SDR-2-CON-ST-ZA-6700 | Excavation for cutting material. Section 1 |  |  |  |  |  | resources SIC- Cost [8]; Labor [38.41 h]; Plumber [57.32 h]; Excavator [20 h]; Excavator Operator [19.26 h] → SIC- Cost [163413]; Labor [38.41 h]; Plumber [57.32 h]; Excavator [20 h]; Excavator Operator [19.26 h] |
| SDR-2-CON-ST-ZA-6710 | Excavation for cutting material. Section 2 |  |  |  |  |  | resources SIC- Cost [8]; Labor [38.41 h]; Plumber [57.32 h]; Excavator [20 h]; Excavator Operator [71.65 h] → SIC- Cost [228778]; Labor [38.41 h]; Plumber [57.32 h]; Excavator [20 h]; Excavator Operator [71.65 h] |
| SDR-2-CON-ST-ZA-6190 | Excavation for cutting material. Section 3 |  |  |  |  |  | resources SIC- Cost [8]; Labor [38.41 h]; Plumber [57.32 h]; Excavator [20 h]; Excavator Operator [71.65 h] → SIC- Cost [261461]; Labor [38.41 h]; Plumber [57.32 h]; Excavator [20 h]; Excavator Operator [71.65 h] |
| 3 | **Sand lining for pond bed** |  | 2027-01-27 → 2027-01-10 (-17d) |  |  |  |  |
| SDR-2-CON-ST-ZA-6720 | Sand lining for pond bed Section 1 |  | 2027-01-05 → 2026-12-19 (-17d) |  | 25d → 3d | SDR-2-CON-ST-ZA-6190, SDR-2-CON-ST-ZA-6340 FF → SDR-2-CON-ST-ZA-6190, SDR-2-CON-ST-ZA-6340 SS+4d | resources SIC- Cost [6]; Labor [32 h]; Plumber [47.77 h]; Excavator [12.13 h]; Excavator Operator [59.71 h]; Dumper Truck [30 h]; Loader [30 h] → SIC- Cost [158279]; Labor [32 h]; Plumber [47.77 h]; Excavator [12.13 h]; Excavator Operator [59.71 h]; Dumper Truck [30 h]; Loader [30 h] |
| SDR-2-CON-ST-ZA-6210 | Sand lining for pond bed Section 2 | 2027-01-06 → 2026-12-20 (-17d) | 2027-01-27 → 2027-01-10 (-17d) |  | 25d → 3d |  | resources SIC- Cost [6]; Labor [32 h]; Plumber [47.77 h]; Excavator [12.13 h]; Excavator Operator [59.71 h]; Dumper Truck [30 h]; Loader [30 h] → SIC- Cost [158279]; Labor [32 h]; Plumber [47.77 h]; Excavator [12.13 h]; Excavator Operator [59.71 h]; Dumper Truck [30 h]; Loader [30 h] |
| 6 | **Pipe Encasements,** | 2027-01-28 → 2027-01-11 (-17d) | 2027-02-21 → 2027-02-03 (-18d) |  |  |  |  |
| SDR-2-CON-ST-ZA-6240 | Pipe encasement | 2027-01-28 → 2027-01-11 (-17d) | 2027-02-21 → 2027-02-03 (-18d) |  | 25d → 3d |  | resources SIC- Cost [10]; Labor [51.21 h]; Plumber [57.32 h]; Excavator [9.29 h]; Excavator Operator [40.74 h] → SIC- Cost [7692.04]; Labor [51.21 h]; Plumber [57.32 h]; Excavator [9.29 h]; Excavator Operator [40.74 h] |
| 5 | **Concrete Outfalls** | 2027-02-23 → 2027-02-04 (-19d) | 2027-03-23 → 2027-03-01 (-22d) |  |  |  |  |
| SDR-2-CON-ST-ZA-6230 | Concrete Outfall structure. | 2027-02-23 → 2027-02-04 (-19d) | 2027-03-23 → 2027-03-01 (-22d) |  | 25d → 3d |  | resources SIC- Cost [10]; Labor [51.21 h]; Plumber [47.77 h]; Excavator [12.39 h]; Excavator Operator [59.71 h]; Water Tanker [237.25 h] → SIC- Cost [16990.4]; Labor [51.21 h]; Plumber [47.77 h]; Excavator [12.39 h]; Excavator Operator [59.71 h]; Water Tanker [237.25 h] |
| 4 | **Loose Riprap** | 2027-04-11 → 2027-06-16 (+66d) | 2027-05-04 → 2027-07-10 (+67d) |  |  |  |  |
| SDR-2-CON-ST-ZA-6220 | Loose Riprap work | 2027-04-11 → 2027-06-16 (+66d) | 2027-05-04 → 2027-07-10 (+67d) |  | 10d → -79d | SDR-2-CON-ST-ZA-6230, SDR-2-CON-ST-ZA-5180, SDR-2-CON-ST-ZA-5030 FS+9d, SDR-2-CON-ST-ZA-4880 FS+14d, SDR-2-CON-ST-ZA-4730 FS+7d, SDR-2-CON-ST-ZA-4580 FS+5d, SDR-2-CON-ST-ZA-4280 FS+14d, SDR-2-CON-ST-ZA-4130, SDR-2-CON-ST-ZA-3760 FF → SDR-2-CON-ST-ZA-6230, SDR-2-CON-ST-ZA-5930 FS+14d, SDR-2-CON-ST-ZA-5180 FS+11d, SDR-2-CON-ST-ZA-5030 FS+9d, SDR-2-CON-ST-ZA-4880 FS+14d, SDR-2-CON-ST-ZA-4730 FS+7d, SDR-2-CON-ST-ZA-4580 FS+5d, SDR-2-CON-ST-ZA-4430, SDR-2-CON-ST-ZA-4280 FS+14d, SDR-2-CON-ST-ZA-4130, SDR-2-CON-ST-ZA-3760 FF | resources SIC- Cost [10]; Labor [51.21 h]; Plumber [47.77 h]; Excavator [13.59 h]; Excavator Operator [59.71 h] → SIC- Cost [841173]; Labor [51.21 h]; Plumber [47.77 h]; Excavator [13.59 h]; Excavator Operator [59.71 h] |
| 9 | **Pond C** |  | 2027-04-11 → 2027-02-24 (-46d) |  |  |  |  |
| SDR-2-CON-ST-ZA-3330 | Embankments with common / suitable excavated material |  |  |  |  |  | resources SIC- Cost [9]; Labor [44.81 h]; Plumber [57.32 h]; Excavator [282 h]; Excavator Operator [19.26 h] → SIC- Cost [544710]; Labor [44.81 h]; Plumber [57.32 h]; Excavator [282 h]; Excavator Operator [19.26 h] |
| 1 | **Excavation** |  | 2026-12-06 → 2026-11-04 (-32d) |  |  |  |  |
| SDR-2-CON-ST-ZA-6730 | Excavation for cutting material. Section 1 |  |  |  |  |  | resources SIC- Cost [8]; Labor [38.41 h]; Plumber [57.32 h]; Excavator [20 h]; Excavator Operator [71.65 h] → SIC- Cost [1928.42]; Labor [38.41 h]; Plumber [57.32 h]; Excavator [20 h]; Excavator Operator [71.65 h] |
| SDR-2-CON-ST-ZA-6740 | Excavation for cutting material. Section 2 |  | 2026-11-11 → 2026-11-04 A (-7d) | 25% → 100% | 0d → none | SDR-2-CON-ST-ZA-6730 → SDR-2-CON-ST-ZA-6730 FS+3d | resources SIC- Cost [8]; Labor [38.41 h]; Plumber [57.32 h]; Excavator [20 h]; Excavator Operator [71.65 h] → SIC- Cost [2699.79]; Labor [38.41 h]; Plumber [57.32 h]; Excavator [20 h]; Excavator Operator [71.65 h] |
| SDR-2-CON-ST-ZA-3320 | Excavation for cutting material. Section 3 | 2026-11-12 → 2026-09-28 A (-45d) | 2026-12-06 → 2026-11-04 A (-32d) | 0% → 100% | 0d → none | SDR-2-CON-ST-ZA-6740 → SDR-2-CON-ST-ZA-6740 FS+4d | resources SIC- Cost [8]; Labor [38.41 h]; Plumber [57.32 h]; Excavator [62.86 h]; Excavator Operator [71.65 h] → SIC- Cost [3085.48]; Labor [38.41 h]; Plumber [57.32 h]; Excavator [62.86 h]; Excavator Operator [71.65 h] |
| 3 | **Sand lining for pond bed** | 2026-12-07 → 2026-10-01 (-67d) | 2027-01-21 → 2026-12-12 (-40d) |  |  |  |  |
| SDR-2-CON-ST-ZA-6750 | Sand lining for pond bed Section 1 | 2026-12-07 → 2026-10-01 A (-67d) | 2026-12-29 → 2026-12-05 (-24d) | 0% → 50% | 0d → -5d |  | resources SIC- Cost [6]; Labor [32 h]; Plumber [47.77 h]; Excavator [12 h]; Excavator Operator [67.9 h]; Dumper Truck [50 h]; Loader [25.62 h] → SIC- Cost [131900]; Labor [32 h]; Plumber [47.77 h]; Excavator [12 h]; Excavator Operator [67.9 h]; Dumper Truck [50 h]; Loader [25.62 h] |
| SDR-2-CON-ST-ZA-3340 | Sand lining for pond bed Section 2 &Section 3 | 2026-12-30 → 2026-10-04 A (-87d) | 2027-01-21 → 2026-12-12 (-40d) | 0% → 50% | 0d → -5d |  | resources SIC- Cost [6]; Labor [32 h]; Plumber [47.77 h]; Excavator [12 h]; Excavator Operator [67.9 h]; Dumper Truck [295 h]; Loader [156.25 h] → SIC- Cost [131900]; Labor [32 h]; Plumber [47.77 h]; Excavator [12 h]; Excavator Operator [67.9 h]; Dumper Truck [295 h]; Loader [156.25 h] |
| 6 | **Pipe Encasements,** | 2027-01-23 → 2026-12-13 (-41d) | 2027-02-15 → 2027-01-05 (-41d) |  |  |  |  |
| SDR-2-CON-ST-ZA-3370 | Pipe encasement | 2027-01-23 → 2026-12-13 (-41d) | 2027-02-15 → 2027-01-05 (-41d) |  | 0d → -5d |  | resources SIC- Cost [10]; Labor [8146.59 h]; Plumber [57.32 h]; Excavator [264.21 h]; Excavator Operator [71.65 h] → SIC- Cost [6410.04]; Labor [8146.59 h]; Plumber [57.32 h]; Excavator [264.21 h]; Excavator Operator [71.65 h] |
| 5 | **Concrete Outfalls** | 2027-02-16 → 2027-01-06 (-41d) | 2027-03-17 → 2027-01-30 (-46d) |  |  |  |  |
| SDR-2-CON-ST-ZA-3360 | Concrete Outfall structure. | 2027-02-16 → 2027-01-06 (-41d) | 2027-03-17 → 2027-01-30 (-46d) |  | 0d → -5d |  | resources SIC- Cost [10]; Labor [8146.59 h]; Plumber [47.77 h]; Excavator [6.93 h]; Excavator Operator [59.71 h] → SIC- Cost [14158.7]; Labor [8146.59 h]; Plumber [47.77 h]; Excavator [6.93 h]; Excavator Operator [59.71 h] |
| 4 | **Loose Riprap** | 2027-03-18 → 2027-01-31 (-46d) | 2027-04-11 → 2027-02-24 (-46d) |  |  |  |  |
| SDR-2-CON-ST-ZA-3350 | Loose Riprap work | 2027-03-18 → 2027-01-31 (-46d) | 2027-04-11 → 2027-02-24 (-46d) |  | 0d → -5d |  | resources SIC- Cost [10]; Labor [51.21 h]; Plumber [47.77 h]; Excavator [7.43 h]; Excavator Operator [59.71 h] → SIC- Cost [700979]; Labor [51.21 h]; Plumber [47.77 h]; Excavator [7.43 h]; Excavator Operator [59.71 h] |
| ZG | **ZONE G** |  | 2026-11-18 → 2027-03-03 (+105d) |  |  |  |  |
| 11 | **STORM WATER LINE IN ( PH2-G-MCE0 )** |  | 2026-11-11 → 2027-03-03 (+112d) |  |  |  |  |
| SDR-2-CON-ST-ZA-6880 | Excavation for GRP Pipes Section 1 |  |  |  |  |  | resources SIC- Cost [9218]; Labor [44.81 h]; Plumber [382.14 h]; Excavator [20 h]; Excavator Operator [477.68 h] → SIC- Cost [19499.8]; Labor [44.81 h]; Plumber [382.14 h]; Excavator [20 h]; Excavator Operator [477.68 h] |
| SDR-2-CON-ST-ZA-6760 | Excavation for GRP Pipes Section 2 |  |  |  |  |  | resources SIC- Cost [9218]; Labor [44.81 h]; Plumber [382.14 h]; Excavator [20 h]; Excavator Operator [477.68 h] → SIC- Cost [19499.8]; Labor [44.81 h]; Plumber [382.14 h]; Excavator [20 h]; Excavator Operator [477.68 h] |
| SDR-2-CON-ST-ZA-5380 | Excavation for GRP Pipes Section 3 |  |  |  |  |  | resources SIC- Cost [9218]; Labor [44.81 h]; Plumber [382.14 h]; Excavator [20 h]; Excavator Operator [477.68 h] → SIC- Cost [19499.8]; Labor [44.81 h]; Plumber [382.14 h]; Excavator [20 h]; Excavator Operator [477.68 h] |
| SDR-2-CON-ST-ZA-5440 | Sand bedding for GRP Pipes |  |  |  |  |  | resources SIC- Cost; Labor [44.81 h]; Plumber [81.48 h]; Excavator [13.13 h]; Excavator Operator [13.49 h]; Dumper Truck [60 h]; Loader [10 h] → SIC- Cost [14624.9]; Labor [44.81 h]; Plumber [81.48 h]; Excavator [13.13 h]; Excavator Operator [13.49 h]; Dumper Truck [60 h]; Loader [10 h] |
| SDR-2-CON-ST-ZA-5390 | Install ST GRP Pipes |  |  |  |  |  | resources Pipe Fitter [67.9 h]; SIC- Cost; Labor [51.21 h]; Plumber [67.9 h]; Excavator [20 h]; Excavator Operator [67.9 h] → Pipe Fitter [67.9 h]; SIC- Cost [131624]; Labor [51.21 h]; Plumber [67.9 h]; Excavator [20 h]; Excavator Operator [67.9 h] |
| SDR-2-CON-ST-ZA-5430 | Testing ST GRP Pipes |  |  |  |  |  | resources SIC- Cost; Plumbing Helper [81.48 h]; Labor [12.8 h]; Plumber [81.48 h]; Excavator [6 h]; Excavator Operator [6.03 h] → SIC- Cost [29249.7]; Plumbing Helper [81.48 h]; Labor [12.8 h]; Plumber [81.48 h]; Excavator [6 h]; Excavator Operator [6.03 h] |
| SDR-2-CON-ST-ZA-5400 | Backfilling ST GRP Pipes |  |  |  |  |  | resources SIC- Cost; Labor [12.8 h]; Plumber [67.9 h]; Excavator [12.67 h]; Excavator Operator [67.9 h] → SIC- Cost [58499.5]; Labor [12.8 h]; Plumber [67.9 h]; Excavator [12.67 h]; Excavator Operator [67.9 h] |
| 4 | **Manholes** |  | 2026-11-11 → 2027-03-03 (+112d) |  |  |  |  |
| SDR-2-CON-ST-ZA-6890 | Excavation Manholes Section 1 |  |  |  |  |  | resources SIC- Cost [18560]; Labor [6.4 h]; Plumber [363.04 h]; Excavator [20 h]; Excavator Operator [453.8 h] → SIC- Cost [4021.91]; Labor [6.4 h]; Plumber [363.04 h]; Excavator [20 h]; Excavator Operator [453.8 h] |
| SDR-2-CON-ST-ZA-6770 | Excavation Manholes Section 2 |  |  |  |  |  | resources SIC- Cost [18560]; Labor [6.4 h]; Plumber [363.04 h]; Excavator [20 h]; Excavator Operator [453.8 h] → SIC- Cost [4021.91]; Labor [6.4 h]; Plumber [363.04 h]; Excavator [20 h]; Excavator Operator [453.8 h] |
| SDR-2-CON-ST-ZA-5410 | Excavation Manholes Section 3 |  |  |  |  |  | resources SIC- Cost [18560]; Labor [6.4 h]; Plumber [363.04 h]; Excavator [20 h]; Excavator Operator [453.8 h] → SIC- Cost [4021.91]; Labor [6.4 h]; Plumber [363.04 h]; Excavator [20 h]; Excavator Operator [453.8 h] |
| SDR-2-CON-ST-ZA-5450 | Sand bedding for Manholes |  |  |  |  |  | resources SIC- Cost [18560]; Labor [6.4 h]; Plumber [96.32 h]; Excavator [6 h]; Excavator Operator [5.78 h]; Dumper Truck [187.5 h]; Loader [10 h] → SIC- Cost [8043.85]; Labor [6.4 h]; Plumber [96.32 h]; Excavator [6 h]; Excavator Operator [5.78 h]; Dumper Truck [187.5 h]; Loader [10 h] |
| SDR-2-CON-ST-ZA-5460 | Manholes Installation Section 2 |  |  |  |  |  | resources SIC- Cost [18560]; Plumbing Helper [238.84 h]; Labor [6.4 h]; Plumber [238.84 h]; Excavator [14.89 h]; Excavator Operator [298.55 h] → SIC- Cost [18098.7]; Plumbing Helper [238.84 h]; Labor [6.4 h]; Plumber [238.84 h]; Excavator [14.89 h]; Excavator Operator [298.55 h] |
| SDR-2-CON-ST-ZA-6780 | Manholes Installation Section 1 |  |  |  |  |  | resources SIC- Cost [18560]; Plumbing Helper [238.84 h]; Labor [6.4 h]; Plumber [238.84 h]; Excavator [14.89 h]; Excavator Operator [298.55 h] → SIC- Cost [18098.7]; Plumbing Helper [238.84 h]; Labor [6.4 h]; Plumber [238.84 h]; Excavator [14.89 h]; Excavator Operator [298.55 h] |
| 4 | **Testing** |  | 2026-11-11 → 2027-03-03 (+112d) |  |  |  |  |
| SDR-2-CON-ST-ZA-5470 | Testing for Manholes |  | 2026-11-11 → 2027-03-03 (+112d) |  | 142d → 10d |  | resources SIC- Cost [18560]; Plumbing Helper [124.2 h]; Labor [6.4 h]; Plumber [124.2 h]; Excavator [20 h]; Excavator Operator [20.11 h] → SIC- Cost [8043.85]; Plumbing Helper [124.2 h]; Labor [6.4 h]; Plumber [124.2 h]; Excavator [20 h]; Excavator Operator [20.11 h] |
| SDR-2-CON-ST-ZA-5480 | Backfilling for Manholes |  |  |  |  | SDR-2-CON-ST-ZA-5470 SS → SDR-2-CON-ST-ZA-5470 | resources SIC- Cost [18560]; Labor [6.4 h]; Plumber [277.05 h]; Excavator [12.47 h]; Excavator Operator [45.21 h] → SIC- Cost [16087.7]; Labor [6.4 h]; Plumber [277.05 h]; Excavator [12.47 h]; Excavator Operator [45.21 h] |
| SDR-2-CON-ST-ZA-5420 | Excavation for Catch basin Section 2 |  |  |  |  |  | resources SIC- Cost [55598.8]; Labor [19.2 h]; Plumber [305.71 h]; Excavator [14.44 h]; Excavator Operator [382.14 h] → SIC- Cost [22241.6]; Labor [19.2 h]; Plumber [305.71 h]; Excavator [14.44 h]; Excavator Operator [382.14 h] |
| SDR-2-CON-ST-ZA-6790 | Excavation for Catch basin Section 1 |  |  |  |  |  | resources SIC- Cost [55598.8]; Labor [19.2 h]; Plumber [305.71 h]; Excavator [14.44 h]; Excavator Operator [382.14 h] → SIC- Cost [22241.6]; Labor [19.2 h]; Plumber [305.71 h]; Excavator [14.44 h]; Excavator Operator [382.14 h] |
| SDR-2-CON-ST-ZA-5490 | Sand Dedding for Catch basin |  |  |  |  |  | resources SIC- Cost [69655.4]; Labor [25.6 h]; Plumber [191.07 h]; Excavator [12 h]; Excavator Operator [38.1 h]; Dumper Truck [50 h]; Loader [60 h] → SIC- Cost [29655.5]; Labor [25.6 h]; Plumber [191.07 h]; Excavator [12 h]; Excavator Operator [38.1 h]; Dumper Truck [50 h]; Loader [60 h] |
| SDR-2-CON-ST-ZA-5500 | Install Catch basin |  |  |  |  |  | resources SIC- Cost [69655.4]; Plumbing Helper [200.63 h]; Labor [25.6 h]; Plumber [200.63 h]; Excavator [16.06 h]; Excavator Operator [250.78 h] → SIC- Cost [133450]; Plumbing Helper [200.63 h]; Labor [25.6 h]; Plumber [200.63 h]; Excavator [16.06 h]; Excavator Operator [250.78 h] |
| SDR-2-CON-ST-ZA-5510 | Testing for Catch basin pipe |  |  |  |  | SDR-2-CON-ST-ZA-5500 → SDR-2-CON-ST-ZA-5500, SDR-2-CON-ST-ZA-6220 | resources SIC- Cost [69655.4]; Plumbing Helper [114.64 h]; Labor [25.6 h]; Plumber [114.64 h]; Excavator [6 h]; Excavator Operator [143.3 h] → SIC- Cost [29655.5]; Plumbing Helper [114.64 h]; Labor [25.6 h]; Plumber [114.64 h]; Excavator [6 h]; Excavator Operator [143.3 h] |
| SDR-2-CON-ST-ZA-5520 | Backfilling for Catch basin Part 2 |  |  |  |  |  | resources SIC- Cost [69655.4]; Labor [14126.7 h]; Plumber [11447.6 h]; Excavator [92.81 h]; Excavator Operator [238.84 h]; Dumper Truck [1599 h]; Grader [104 h]; Loader [595 h] → SIC- Cost [29655.4]; Labor [14126.7 h]; Plumber [11447.6 h]; Excavator [92.81 h]; Excavator Operator [238.84 h]; Dumper Truck [1599 h]; Grader [104 h]; Loader [595 h] |
| SDR-2-CON-ST-ZA-6870 | Backfilling for Catch basin Part 1 |  |  |  |  |  | resources SIC- Cost [69655.4]; Labor [129.06 h]; Plumber [444.16 h]; Excavator [8 h]; Excavator Operator [67.52 h]; Dumper Truck [1150 h]; Grader [40 h]; Loader [340 h] → SIC- Cost [29655.4]; Labor [129.06 h]; Plumber [444.16 h]; Excavator [8 h]; Excavator Operator [67.52 h]; Dumper Truck [1150 h]; Grader [40 h]; Loader [340 h] |
| 12 | **STORM WATER LINE IN ( PH2-G-MCF0 )** |  | 2026-11-11 → 2027-03-03 (+112d) |  |  |  |  |
| SDR-2-CON-ST-ZA-6800 | Excavation for GRP Pipes Section 1 |  |  |  |  |  | resources SIC- Cost [9218]; Labor [44.81 h]; Plumber [334.38 h]; Excavator [20 h]; Excavator Operator [417.97 h] → SIC- Cost [56409.8]; Labor [44.81 h]; Plumber [334.38 h]; Excavator [20 h]; Excavator Operator [417.97 h] |

| ID | Task | Start | Finish | Total float | Predecessors | Other |
| --- | --- | --- | --- | --- | --- | --- |
| SDR-2-CON-ST-ZA-5530 | Excavation for GRP Pipes Section 2 |  |  |  |  | resources SIC- Cost [9218]; Labor [44.81 h]; Plumber [334.38 h]; Excavator [20 h]; Excavator Operator [417.97 h] → SIC- Cost [56409.8]; Labor [44.81 h]; Plumber [334.38 h]; Excavator [20 h]; Excavator Operator [417.97 h] |
| SDR-2-CON-ST-ZA-5590 | Sand bedding for GRP Pipes |  |  |  |  | resources SIC- Cost; Labor [44.81 h]; Plumber [248.39 h]; Excavator [12 h]; Excavator Operator [81.48 h]; Dumper Truck [60 h]; Loader [21.43 h] → SIC- Cost [28204.9]; Labor [44.81 h]; Plumber [248.39 h]; Excavator [12 h]; Excavator Operator [81.48 h]; Dumper Truck [60 h]; Loader [21.43 h] |
| SDR-2-CON-ST-ZA-5540 | Install ST GRP Pipes |  |  |  |  | resources Pipe Fitter [81.48 h]; SIC- Cost; Labor [51.21 h]; Plumber [81.48 h]; Excavator [14.07 h]; Excavator Operator [81.48 h] → Pipe Fitter [81.48 h]; SIC- Cost [253844]; Labor [51.21 h]; Plumber [81.48 h]; Excavator [14.07 h]; Excavator Operator [81.48 h] |
| SDR-2-CON-ST-ZA-5580 | Testing ST GRP Pipes |  |  |  |  | resources SIC- Cost; Plumbing Helper [67.9 h]; Labor [12.8 h]; Plumber [67.9 h]; Excavator [10.5 h]; Excavator Operator [10.06 h] → SIC- Cost [56409.9]; Plumbing Helper [67.9 h]; Labor [12.8 h]; Plumber [67.9 h]; Excavator [10.5 h]; Excavator Operator [10.06 h] |
| SDR-2-CON-ST-ZA-5550 | Backfilling ST GRP Pipes |  |  |  |  | resources SIC- Cost; Labor [12.8 h]; Plumber [67.9 h]; Excavator [14.05 h]; Excavator Operator [67.9 h] → SIC- Cost [112820]; Labor [12.8 h]; Plumber [67.9 h]; Excavator [14.05 h]; Excavator Operator [67.9 h] |
| 4 | **Manholes** |  | 2026-11-11 → 2027-03-03 (+112d) |  |  |  |
| SDR-2-CON-ST-ZA-6810 | Excavation Manholes Section 1 |  |  |  |  | resources SIC- Cost [18560]; Labor [6.4 h]; Plumber [267.5 h]; Excavator [20 h]; Excavator Operator [334.38 h] → SIC- Cost [6032.88]; Labor [6.4 h]; Plumber [267.5 h]; Excavator [20 h]; Excavator Operator [334.38 h] |
| SDR-2-CON-ST-ZA-5560 | Excavation Manholes Section 2 |  |  |  |  | resources SIC- Cost [18560]; Labor [6.4 h]; Plumber [267.5 h]; Excavator [20 h]; Excavator Operator [334.38 h] → SIC- Cost [6032.88]; Labor [6.4 h]; Plumber [267.5 h]; Excavator [20 h]; Excavator Operator [334.38 h] |
| SDR-2-CON-ST-ZA-5600 | Sand bedding for Manholes |  |  |  | SDR-2-CON-ST-ZA-5560 → SDR-2-CON-ST-ZA-5560, SDR-2-PRO-ST-E-1110 | resources SIC- Cost [18560]; Labor [6.4 h]; Plumber [115.59 h]; Excavator [12 h]; Excavator Operator [11.56 h]; Dumper Truck [175 h]; Loader [10 h] → SIC- Cost [8043.85]; Labor [6.4 h]; Plumber [115.59 h]; Excavator [12 h]; Excavator Operator [11.56 h]; Dumper Truck [175 h]; Loader [10 h] |
| SDR-2-CON-ST-ZA-5610 | Manholes Installation |  |  |  |  | resources SIC- Cost [18560]; Plumbing Helper [229.29 h]; Labor [6.4 h]; Plumber [229.29 h]; Excavator [12 h]; Excavator Operator [20.11 h] → SIC- Cost [36197.3]; Plumbing Helper [229.29 h]; Labor [6.4 h]; Plumber [229.29 h]; Excavator [12 h]; Excavator Operator [20.11 h] |
| 4 | **Testing** |  | 2026-11-11 → 2027-03-03 (+112d) |  |  |  |
| SDR-2-CON-ST-ZA-5620 | Testing for Manholes |  | 2026-11-11 → 2027-03-03 (+112d) | 79d → -25d |  | resources SIC- Cost [18560]; Plumbing Helper [114.64 h]; Labor [6.4 h]; Plumber [114.64 h]; Excavator [15.5 h]; Excavator Operator [143.3 h] → SIC- Cost [8043.85]; Plumbing Helper [114.64 h]; Labor [6.4 h]; Plumber [114.64 h]; Excavator [15.5 h]; Excavator Operator [143.3 h] |
| SDR-2-CON-ST-ZA-5630 | Backfilling for Manholes |  |  |  | SDR-2-CON-ST-ZA-5620 SS → SDR-2-CON-ST-ZA-5620 | resources SIC- Cost [18560]; Labor [6.4 h]; Plumber [219.73 h]; Excavator [13.31 h]; Excavator Operator [274.67 h] → SIC- Cost [16087.7]; Labor [6.4 h]; Plumber [219.73 h]; Excavator [13.31 h]; Excavator Operator [274.67 h] |
| SDR-2-CON-ST-ZA-6820 | Excavation for Catch basin Section 1 |  |  |  |  | resources SIC- Cost [55598.8]; Labor [19.2 h]; Plumber [334.38 h]; Excavator [14.44 h]; Excavator Operator [417.97 h] → SIC- Cost [22241.6]; Labor [19.2 h]; Plumber [334.38 h]; Excavator [14.44 h]; Excavator Operator [417.97 h] |
| SDR-2-CON-ST-ZA-5570 | Excavation for Catch basin Section 2 |  |  |  |  | resources SIC- Cost [55598.8]; Labor [19.2 h]; Plumber [334.38 h]; Excavator [14.44 h]; Excavator Operator [417.97 h] → SIC- Cost [22241.6]; Labor [19.2 h]; Plumber [334.38 h]; Excavator [14.44 h]; Excavator Operator [417.97 h] |
| SDR-2-CON-ST-ZA-5640 | Sand Dedding for Catch basin |  |  |  |  | resources SIC- Cost [69655.4]; Labor [25.6 h]; Plumber [219.73 h]; Excavator [13.57 h]; Excavator Operator [274.67 h]; Dumper Truck [328.75 h]; Loader [52.17 h] → SIC- Cost [29655.5]; Labor [25.6 h]; Plumber [219.73 h]; Excavator [13.57 h]; Excavator Operator [274.67 h]; Dumper Truck [328.75 h]; Loader [52.17 h] |
| SDR-2-CON-ST-ZA-6830 | Install Catch basin Section 1 |  |  |  |  | resources SIC- Cost [69655.4]; Plumbing Helper [248.39 h]; Labor [25.6 h]; Plumber [248.39 h]; Excavator [20 h]; Excavator Operator [310.49 h] → SIC- Cost [66724.9]; Plumbing Helper [248.39 h]; Labor [25.6 h]; Plumber [248.39 h]; Excavator [20 h]; Excavator Operator [310.49 h] |
| SDR-2-CON-ST-ZA-5650 | Install Catch basin Section 2 |  |  |  | SDR-2-CON-ST-ZA-6830, SDR-2-CON-ST-ZA-5640, SDR-2-CON-ST-ZA-5400 FS+4d, SDR-2-CON-ST-ZA-5550 → SDR-2-CON-ST-ZA-5640, SDR-2-CON-ST-ZA-4200, SDR-2-CON-ST-ZA-4350, SDR-2-CON-ST-ZA-4500, SDR-2-CON-ST-ZA-4650, SDR-2-CON-ST-ZA-4800, SDR-2-CON-ST-ZA-4950, SDR-2-CON-ST-ZA-5100, SDR-2-CON-ST-ZA-5850, SDR-2-CON-ST-ZA-5400 FS+4d, SDR-2-CON-ST-ZA-5550, SDR-2-CON-ST-ZA-6830 | resources SIC- Cost [69655.4]; Plumbing Helper [248.39 h]; Labor [25.6 h]; Plumber [248.39 h]; Excavator [20 h]; Excavator Operator [310.49 h] → SIC- Cost [66724.9]; Plumbing Helper [248.39 h]; Labor [25.6 h]; Plumber [248.39 h]; Excavator [20 h]; Excavator Operator [310.49 h] |
| SDR-2-CON-ST-ZA-5660 | Testing for Catch basin pipe |  |  |  |  | resources SIC- Cost [69655.4]; Plumbing Helper [114.64 h]; Labor [25.6 h]; Plumber [114.64 h]; Excavator [7.17 h]; Excavator Operator [82.84 h] → SIC- Cost [29655.5]; Plumbing Helper [114.64 h]; Labor [25.6 h]; Plumber [114.64 h]; Excavator [7.17 h]; Excavator Operator [82.84 h] |
| SDR-2-CON-ST-ZA-5670 | Backfilling for Catch basin |  |  |  |  | resources SIC- Cost [69655.4]; Labor [25.6 h]; Plumber [238.84 h]; Excavator [393.52 h]; Excavator Operator [298.55 h] → SIC- Cost [59310.8]; Labor [25.6 h]; Plumber [238.84 h]; Excavator [393.52 h]; Excavator Operator [298.55 h] |
| 13 | **STORM WATER LINE IN ( PH2-G-MCG0 )** |  | 2026-11-18 → 2027-03-03 (+105d) |  |  |  |
| SDR-2-CON-ST-ZA-6840 | Excavation for GRP Pipes Section 1 |  |  |  |  | resources SIC- Cost [9218]; Labor [44.81 h]; Plumber [439.47 h]; Excavator [20 h]; Excavator Operator [549.33 h] → SIC- Cost [56409.8]; Labor [44.81 h]; Plumber [439.47 h]; Excavator [20 h]; Excavator Operator [549.33 h] |
| SDR-2-CON-ST-ZA-5980 | Excavation for GRP Pipes Section 2 |  |  |  |  | resources SIC- Cost [9218]; Labor [44.81 h]; Plumber [439.47 h]; Excavator [20 h]; Excavator Operator [549.33 h] → SIC- Cost [56409.8]; Labor [44.81 h]; Plumber [439.47 h]; Excavator [20 h]; Excavator Operator [549.33 h] |
| SDR-2-CON-ST-ZA-6040 | Sand bedding for GRP Pipes |  |  |  |  | resources SIC- Cost; Labor [44.81 h]; Plumber [81.48 h]; Excavator [12 h]; Excavator Operator [81.48 h]; Dumper Truck [60 h]; Loader [27.14 h] → SIC- Cost [28204.9]; Labor [44.81 h]; Plumber [81.48 h]; Excavator [12 h]; Excavator Operator [81.48 h]; Dumper Truck [60 h]; Loader [27.14 h] |
| SDR-2-CON-ST-ZA-5990 | Install ST GRP Pipes |  |  |  |  | resources Pipe Fitter [67.9 h]; SIC- Cost; Labor [51.21 h]; Plumber [67.9 h]; Excavator [13.15 h]; Excavator Operator [67.9 h] → Pipe Fitter [67.9 h]; SIC- Cost [253844]; Labor [51.21 h]; Plumber [67.9 h]; Excavator [13.15 h]; Excavator Operator [67.9 h] |
| SDR-2-CON-ST-ZA-6030 | Testing ST GRP Pipes |  |  |  |  | resources SIC- Cost; Plumbing Helper [81.48 h]; Labor [12.8 h]; Plumber [81.48 h]; Excavator [10.5 h]; Excavator Operator [10.06 h] → SIC- Cost [56409.9]; Plumbing Helper [81.48 h]; Labor [12.8 h]; Plumber [81.48 h]; Excavator [10.5 h]; Excavator Operator [10.06 h] |
| SDR-2-CON-ST-ZA-6000 | Backfilling ST GRP Pipes |  |  |  |  | resources SIC- Cost; Labor [12.8 h]; Plumber [67.9 h]; Excavator [8.27 h]; Excavator Operator [67.9 h] → SIC- Cost [112820]; Labor [12.8 h]; Plumber [67.9 h]; Excavator [8.27 h]; Excavator Operator [67.9 h] |
| 4 | **Manholes** |  | 2026-11-18 → 2027-03-03 (+105d) |  |  |  |
| SDR-2-CON-ST-ZA-6850 | Excavation Manholes Section 1 |  |  |  |  | resources SIC- Cost; Labor [6.4 h]; Plumber [67.9 h]; Excavator [20 h]; Excavator Operator [67.9 h] → SIC- Cost [6032.88]; Labor [6.4 h]; Plumber [67.9 h]; Excavator [20 h]; Excavator Operator [67.9 h] |
| SDR-2-CON-ST-ZA-6010 | Excavation Manholes Section 2 |  |  |  |  | resources SIC- Cost; Labor [6.4 h]; Plumber [67.9 h]; Excavator [20 h]; Excavator Operator [67.9 h] → SIC- Cost [6032.88]; Labor [6.4 h]; Plumber [67.9 h]; Excavator [20 h]; Excavator Operator [67.9 h] |
| SDR-2-CON-ST-ZA-6050 | Sand bedding for Manholes |  |  |  | SDR-2-CON-ST-ZA-6010, SDR-2-PRO-DEL-E-1160 SS → SDR-2-CON-ST-ZA-6010, SDR-2-PRO-ST-E-1110, SDR-2-PRO-DEL-E-1160 | resources SIC- Cost [18560]; Labor [6.4 h]; Plumber [210.18 h]; Excavator [9.36 h]; Excavator Operator [262.72 h]; Dumper Truck [175 h]; Loader [23.1 h] → SIC- Cost [8043.85]; Labor [6.4 h]; Plumber [210.18 h]; Excavator [9.36 h]; Excavator Operator [262.72 h]; Dumper Truck [175 h]; Loader [23.1 h] |
| SDR-2-CON-ST-ZA-6060 | Manholes Installation |  |  |  |  | resources SIC- Cost [18560]; Plumbing Helper [219.73 h]; Labor [6.4 h]; Plumber [219.73 h]; Excavator [14.49 h]; Excavator Operator [274.67 h] → SIC- Cost [36197.3]; Plumbing Helper [219.73 h]; Labor [6.4 h]; Plumber [219.73 h]; Excavator [14.49 h]; Excavator Operator [274.67 h] |
| 4 | **Testing** |  | 2026-11-18 → 2027-03-03 (+105d) |  |  |  |
| SDR-2-CON-ST-ZA-6070 | Testing for Manholes |  | 2026-11-18 → 2027-03-03 (+105d) | 79d → -25d |  | resources SIC- Cost [18560]; Plumbing Helper [114.64 h]; Labor [6.4 h]; Plumber [114.64 h]; Excavator [8.83 h]; Excavator Operator [8.05 h] → SIC- Cost [8043.85]; Plumbing Helper [114.64 h]; Labor [6.4 h]; Plumber [114.64 h]; Excavator [8.83 h]; Excavator Operator [8.05 h] |
| SDR-2-CON-ST-ZA-6080 | Backfilling for Manholes |  |  |  | SDR-2-CON-ST-ZA-6070 SS → SDR-2-CON-ST-ZA-6070 | resources SIC- Cost [18560]; Labor [6.4 h]; Plumber [334.38 h]; Excavator [10.1 h]; Excavator Operator [417.97 h] → SIC- Cost [16087.7]; Labor [6.4 h]; Plumber [334.38 h]; Excavator [10.1 h]; Excavator Operator [417.97 h] |
| SDR-2-CON-ST-ZA-6860 | Excavation for Catch basin Section 1 |  |  |  |  | resources SIC- Cost [55598.8]; Labor [19.2 h]; Plumber [429.91 h]; Excavator [13 h]; Excavator Operator [537.39 h] → SIC- Cost [22241.6]; Labor [19.2 h]; Plumber [429.91 h]; Excavator [13 h]; Excavator Operator [537.39 h] |
| SDR-2-CON-ST-ZA-6020 | Excavation for Catch basin Section 2 |  |  |  |  | resources SIC- Cost [55598.8]; Labor [19.2 h]; Plumber [429.91 h]; Excavator [5 h]; Excavator Operator [537.39 h] → SIC- Cost [22241.6]; Labor [19.2 h]; Plumber [429.91 h]; Excavator [5 h]; Excavator Operator [537.39 h] |
| SDR-2-CON-ST-ZA-6090 | Sand Dedding for Catch basin |  |  |  |  | resources SIC- Cost [69655.4]; Labor [25.6 h]; Plumber [57.21 h]; Excavator [11.44 h]; Excavator Operator [21.32 h]; Dumper Truck [11.76 h]; Loader [71.01 h] → SIC- Cost [29655.5]; Labor [25.6 h]; Plumber [57.21 h]; Excavator [11.44 h]; Excavator Operator [21.32 h]; Dumper Truck [11.76 h]; Loader [71.01 h] |
| SDR-2-CON-ST-ZA-6100 | Install Catch basin |  |  |  |  | resources SIC- Cost [69655.4]; Plumbing Helper [219.73 h]; Labor [25.6 h]; Plumber [219.73 h]; Excavator [12.17 h]; Excavator Operator [274.67 h] → SIC- Cost [133450]; Plumbing Helper [219.73 h]; Labor [25.6 h]; Plumber [219.73 h]; Excavator [12.17 h]; Excavator Operator [274.67 h] |
| SDR-2-CON-ST-ZA-6110 | Testing for Catch basin pipe |  |  |  |  | resources SIC- Cost [69655.4]; Plumbing Helper [124.2 h]; Labor [25.6 h]; Plumber [124.2 h]; Excavator [6 h]; Excavator Operator [155.25 h] → SIC- Cost [29655.5]; Plumbing Helper [124.2 h]; Labor [25.6 h]; Plumber [124.2 h]; Excavator [6 h]; Excavator Operator [155.25 h] |
| SDR-2-CON-ST-ZA-6120 | Backfilling for Catch basin |  |  |  |  | resources SIC- Cost [69655.4]; Labor [25.6 h]; Plumber [248.39 h]; Excavator [9.51 h]; Excavator Operator [119.02 h] → SIC- Cost [59310.8]; Labor [25.6 h]; Plumber [248.39 h]; Excavator [9.51 h]; Excavator Operator [119.02 h] |
| SN | **Sewerage Network** |  | 2027-05-05 → 2027-06-06 (+32d) |  |  |  |
| ZA | **ZONE A** |  | 2027-05-05 → 2027-06-06 (+32d) |  |  |  |
| 3 | **LINE 1 ( PH2-A-MCA0 )** |  | 2026-12-05 → 2027-04-01 (+117d) |  |  |  |
| 7 | **Pipes Work** |  | 2026-12-05 → 2027-02-17 (+74d) |  |  |  |
| SDR-2-CON-SE-ZA-2460 | Excavation for GRP Pipe 200mm Diameter Section 1 |  |  |  |  | resources SIC- Cost; Surveyor [64.01 h]; Labor [64.01 h]; Plumber [81.48 h]; Excavator [12 h]; Excavator Operator [11.56 h] → SIC- Cost [38752.2]; Surveyor [64.01 h]; Labor [64.01 h]; Plumber [81.48 h]; Excavator [12 h]; Excavator Operator [11.56 h] |
| SDR-2-CON-SE-ZA-1000 | Excavation for GRP Pipe 200mm Diameter Section 2 |  |  |  | SDR-2-CON-SE-ZA-2460 FS+3d, SDR-2-PRO-DEL-E-1190 SS, SDR-2-PRO-DEL-E-1180 SS, SDR-2-PRO-DEL-E-1170 SS, SDR-2-PRO-DES-C-1020 SS → SDR-2-CON-SE-ZA-2460 FS+3d, SDR-2-PRO-DEL-E-1190, SDR-2-PRO-DEL-E-1180, SDR-2-PRO-DEL-E-1170, SDR-2-PRO-DES-C-1020 | resources SIC- Cost; Surveyor [64.01 h]; Labor [64.01 h]; Plumber [81.48 h]; Excavator [12 h]; Excavator Operator [67.9 h] → SIC- Cost [38752.2]; Surveyor [64.01 h]; Labor [64.01 h]; Plumber [81.48 h]; Excavator [12 h]; Excavator Operator [67.9 h] |
| SDR-2-CON-SE-ZA-1420 | Sand bedding for GRP Pipe 200mm Diameter |  |  |  |  | resources SIC- Cost; Surveyor [64.01 h]; Labor [64.01 h]; Plumber [67.9 h]; Excavator [12.43 h]; Excavator Operator [12.07 h] → SIC- Cost [19376.1]; Surveyor [64.01 h]; Labor [64.01 h]; Plumber [67.9 h]; Excavator [12.43 h]; Excavator Operator [12.07 h] |
| 2 | **Pipes Laying** |  | 2026-11-09 → 2026-12-29 (+50d) |  |  |  |
| SDR-2-CON-SE-ZA-1010 | 200 mm GRP Pipe Laying |  | 2026-11-09 → 2026-12-29 (+50d) | 106d → 44.2d |  | resources SIC- Cost; Surveyor [96.01 h]; Compactor [197.14 h]; Labor [96.01 h]; Plumber [67.9 h]; Excavator [6 h]; Excavator Operator [67.9 h] → SIC- Cost [174385]; Surveyor [96.01 h]; Compactor [197.14 h]; Labor [96.01 h]; Plumber [67.9 h]; Excavator [6 h]; Excavator Operator [67.9 h] |
| 3 | **Testing** |  | 2026-11-10 → 2027-01-24 (+75d) |  |  |  |
| SDR-2-CON-SE-ZA-1020 | Testing of 200 mm GRP Pipe. |  | 2026-11-10 → 2027-01-24 (+75d) | 105d → 28.3d | SDR-2-CON-SE-ZA-1010 FF, SDR-2-CON-RW-ZA-1760 FF → SDR-2-CON-SE-ZA-1010, SDR-2-CON-RW-ZA-1760 FS+3d | resources SIC- Cost [77504.4]; Surveyor [12.8 h]; Labor [12.8 h]; Plumber [57.32 h]; Excavator [6 h]; Excavator Operator [71.65 h] → SIC- Cost [38752.2]; Surveyor [12.8 h]; Labor [12.8 h]; Plumber [57.32 h]; Excavator [6 h]; Excavator Operator [71.65 h] |
| 6 | **Backfilling** | 2026-11-11 → 2027-01-24 (+74d) | 2026-12-05 → 2027-02-17 (+74d) |  |  |  |
| SDR-2-CON-SE-ZA-1430 | Backfilling of 200 mm GRP Pipe. | 2026-11-11 → 2027-01-24 (+74d) | 2026-12-05 → 2027-02-17 (+74d) | 105d → 28.3d |  | resources SIC- Cost; Surveyor [12.8 h]; Labor [12.8 h]; Plumber [67.9 h]; Excavator [15.38 h]; Excavator Operator [67.9 h] → SIC- Cost [77504.4]; Surveyor [12.8 h]; Labor [12.8 h]; Plumber [67.9 h]; Excavator [15.38 h]; Excavator Operator [67.9 h] |
| 4 | **Manholes** |  | 2026-12-03 → 2027-04-01 (+119d) |  |  |  |
| SDR-2-CON-SE-ZA-2470 | Excavation for manhole. Section 1 |  |  |  |  | resources SIC- Cost [25529.9]; Surveyor [51.21 h]; Labor [51.21 h]; Plumber [257.95 h]; Excavator [12 h]; Excavator Operator [11.56 h] → SIC- Cost [19147.4]; Surveyor [51.21 h]; Labor [51.21 h]; Plumber [257.95 h]; Excavator [12 h]; Excavator Operator [11.56 h] |
| SDR-2-CON-SE-ZA-1030 | Excavation for manhole. Section 2 |  |  |  | SDR-2-CON-SE-ZA-2470, SDR-2-CON-RW-ZA-1040 → SDR-2-CON-SE-ZA-2470, SDR-2-CON-RW-ZA-3400, SDR-2-CON-RW-ZA-1040 | resources SIC- Cost [25529.9]; Surveyor [51.21 h]; Labor [51.21 h]; Plumber [257.95 h]; Excavator [267.36 h]; Excavator Operator [322.43 h] → SIC- Cost [19147.1]; Surveyor [51.21 h]; Labor [51.21 h]; Plumber [257.95 h]; Excavator [267.36 h]; Excavator Operator [322.43 h] |
| SDR-2-CON-SE-ZA-1450 | Sand bedding for manhole. |  |  |  | SDR-2-CON-SE-ZA-1030 → SDR-2-CON-SE-ZA-1030, SDR-2-CON-RW-ZA-2480 |  |
| SDR-2-CON-SE-ZA-1040 | Manhole Installation |  |  |  | SDR-2-CON-RW-ZA-3110, SDR-2-CON-SE-ZA-1030, SDR-2-PRO-MAS-C-1070, SDR-2-PRO-ST-M-1030 FF, SDR-2-CON-SE-ZA-1450 → SDR-2-CON-SE-ZA-1030, SDR-2-PRO-ST-M-1030, SDR-2-PRO-MAS-C-1070, SDR-2-CON-SE-ZA-1450, SDR-2-CON-RW-ZA-3110 | resources SIC- Cost [204239]; Surveyor [76.81 h]; Compactor [221.43 h]; Labor [76.81 h]; Plumber [152.86 h]; Excavator [20 h]; Excavator Operator [191.07 h] → SIC- Cost [114884]; Surveyor [76.81 h]; Compactor [221.43 h]; Labor [76.81 h]; Plumber [152.86 h]; Excavator [20 h]; Excavator Operator [191.07 h] |
| 4 | **Testing** |  | 2026-11-09 → 2027-01-06 (+58d) |  |  |  |
| SDR-2-CON-SE-ZA-1050 | Testing |  | 2026-11-09 → 2027-01-06 (+58d) | 109d → 47d | SDR-2-CON-RW-ZA-2900 → SDR-2-CON-SE-ZA-1040, SDR-2-CON-SE-ZA-1040 FF, SDR-2-CON-RW-ZA-2900 |  |
| 5 | **Backfilling** | 2026-11-10 → 2027-03-04 (+114d) | 2026-12-03 → 2027-04-01 (+119d) |  |  |  |
| SDR-2-CON-SE-ZA-1440 | Backfilling | 2026-11-10 → 2027-03-04 (+114d) | 2026-12-03 → 2027-04-01 (+119d) | 109d → 0d |  | resources SIC- Cost [25529.9]; Surveyor [38.41 h]; Labor [38.41 h]; Plumber [200.63 h]; Excavator [11.14 h]; Excavator Operator [250.78 h] → SIC- Cost [51059.7]; Surveyor [38.41 h]; Labor [38.41 h]; Plumber [200.63 h]; Excavator [11.14 h]; Excavator Operator [250.78 h] |
| 4 | **LINE 2 AND LINE 3 ( PH2-A-MCC0 )** |  | 2027-03-16 → 2027-04-07 (+22d) |  |  |  |
| 7 | **Pipes Work** |  | 2027-03-16 → 2027-04-07 (+22d) |  |  |  |
| SDR-2-CON-SE-ZA-2480 | Excavation for GRP Pipe 200mm Diameter Section 1 |  |  |  |  | resources SIC- Cost; Surveyor [64.01 h]; Labor [64.01 h]; Plumber [67.9 h]; Excavator [14.89 h]; Excavator Operator [67.9 h] → SIC- Cost [38752.2]; Surveyor [64.01 h]; Labor [64.01 h]; Plumber [67.9 h]; Excavator [14.89 h]; Excavator Operator [67.9 h] |
| SDR-2-CON-SE-ZA-1460 | Excavation for GRP Pipe 200mm Diameter Section 2 |  |  |  | SDR-2-CON-SE-ZA-2480 FS+7d → SDR-2-CON-SE-ZA-2480 FS+7d, SDR-2-CON-RW-ZA-3420 | resources SIC- Cost; Surveyor [64.01 h]; Labor [64.01 h]; Plumber [67.9 h]; Excavator [14.89 h]; Excavator Operator [67.9 h] → SIC- Cost [38752.2]; Surveyor [64.01 h]; Labor [64.01 h]; Plumber [67.9 h]; Excavator [14.89 h]; Excavator Operator [67.9 h] |
| SDR-2-CON-SE-ZA-1520 | Sand bedding for GRP Pipe 200mm Diameter |  |  |  |  | resources SIC- Cost; Surveyor [64.01 h]; Labor [64.01 h]; Plumber [67.9 h]; Excavator [10.79 h]; Excavator Operator [10.06 h] → SIC- Cost [19376.1]; Surveyor [64.01 h]; Labor [64.01 h]; Plumber [67.9 h]; Excavator [10.79 h]; Excavator Operator [10.06 h] |
| 2 | **Pipes Laying** |  | 2026-11-29 → 2026-12-26 (+27d) |  |  |  |
| SDR-2-CON-SE-ZA-1470 | 200 mm GRP Pipe Laying |  | 2026-11-29 → 2026-12-26 (+27d) | 92d → 57d | SDR-2-CON-SE-ZA-1460, SDR-2-CON-SE-ZA-1520, SDR-2-CON-RW-ZG-2260 FF → SDR-2-CON-SE-ZA-1460, SDR-2-CON-SE-ZA-1520, SDR-2-CON-RW-ZG-2260 FS+3d | resources SIC- Cost; Surveyor [67.9 h]; Compactor [300 h]; Labor [67.9 h]; Grader Operator [301.71 h]; Plumber [67.9 h]; Excavator [5 h]; Excavator Operator [67.9 h] → SIC- Cost [174385]; Surveyor [67.9 h]; Compactor [300 h]; Labor [67.9 h]; Grader Operator [301.71 h]; Plumber [67.9 h]; Excavator [5 h]; Excavator Operator [67.9 h] |

| ID | Task | Start | Finish | Total float | Predecessors | Other |
| --- | --- | --- | --- | --- | --- | --- |
| 3 | **Testing** |  | 2027-02-14 → 2027-03-14 (+28d) |  |  |  |
| SDR-2-CON-SE-ZA-1480 | Testing of 200 mm GRP Pipe. |  | 2027-02-14 → 2027-03-14 (+28d) | 26d → 1d | SDR-2-CON-ST-ZA-5550, SDR-2-CON-RW-ZA-1050 FS+2d, SDR-2-CON-SE-ZA-1470 FF, SDR-2-CON-ST-ZA-5100 FF, SDR-2-CON-ST-ZA-1300 FF → SDR-2-CON-SE-ZA-1470, SDR-2-CON-ST-ZA-5550, SDR-2-CON-ST-ZA-5100, SDR-2-CON-ST-ZA-1300, SDR-2-CON-RW-ZA-1050 FS+2d | resources SIC- Cost; Surveyor [12.8 h]; Compactor [300 h]; Labor [12.8 h]; Plumber [76.43 h]; Excavator [6 h]; Excavator Operator [81.48 h]; Grader [376.76 h] → SIC- Cost [38752.2]; Surveyor [12.8 h]; Compactor [300 h]; Labor [12.8 h]; Plumber [76.43 h]; Excavator [6 h]; Excavator Operator [81.48 h]; Grader [376.76 h] |
| 6 | **Backfilling** | 2027-02-15 → 2027-03-15 (+28d) | 2027-03-16 → 2027-04-07 (+22d) |  |  |  |
| SDR-2-CON-SE-ZA-1530 | Backfilling of 200 mm GRP Pipe. | 2027-02-15 → 2027-03-15 (+28d) | 2027-03-16 → 2027-04-07 (+22d) | 26d → 1d |  | resources SIC- Cost; Surveyor [12.8 h]; Compactor [370 h]; Labor [12.8 h]; Plumber [67.9 h]; Excavator [11.95 h]; Excavator Operator [67.9 h]; Grader [120 h] → SIC- Cost [77504.4]; Surveyor [12.8 h]; Compactor [370 h]; Labor [12.8 h]; Plumber [67.9 h]; Excavator [11.95 h]; Excavator Operator [67.9 h]; Grader [120 h] |
| 4 | **Manholes** |  | 2026-12-23 → 2027-04-01 (+99d) |  |  |  |
| SDR-2-CON-SE-ZA-2490 | Excavation for manhole. Section 1 |  |  |  |  | resources SIC- Cost [25529.9]; Surveyor [51.21 h]; Labor [51.21 h]; Plumber [191.07 h]; Excavator [14.89 h]; Excavator Operator [238.84 h] → SIC- Cost [19147.4]; Surveyor [51.21 h]; Labor [51.21 h]; Plumber [191.07 h]; Excavator [14.89 h]; Excavator Operator [238.84 h] |
| SDR-2-CON-SE-ZA-1490 | Excavation for manhole. Section 2 |  |  |  | SDR-2-CON-SE-ZA-2490 FS+3d → SDR-2-CON-SE-ZA-2490 FS+3d, SDR-2-CON-RW-ZA-3420 | resources SIC- Cost [25529.9]; Surveyor [51.21 h]; Labor [51.21 h]; Plumber [191.07 h]; Excavator [14.89 h]; Excavator Operator [238.84 h] → SIC- Cost [19147.4]; Surveyor [51.21 h]; Labor [51.21 h]; Plumber [191.07 h]; Excavator [14.89 h]; Excavator Operator [238.84 h] |
| SDR-2-CON-SE-ZA-1500 | Manhole Installation |  |  |  | SDR-2-CON-SE-ZA-1490, SDR-2-CON-SE-ZA-1550, SDR-2-CON-RW-ZG-2500 FF → SDR-2-CON-SE-ZA-1490, SDR-2-CON-SE-ZA-1550, SDR-2-CON-RW-ZG-2500 | resources SIC- Cost [204239]; Surveyor [76.81 h]; Labor [76.81 h]; Plumber [171.96 h]; Excavator [5.54 h]; Excavator Operator [214.96 h] → SIC- Cost [114884]; Surveyor [76.81 h]; Labor [76.81 h]; Plumber [171.96 h]; Excavator [5.54 h]; Excavator Operator [214.96 h] |
| 4 | **Testing** |  | 2026-11-29 → 2027-03-03 (+94d) |  |  |  |
| SDR-2-CON-SE-ZA-1510 | Testing |  | 2026-11-29 → 2027-03-03 (+94d) | 92d → 6d | SDR-2-CON-ST-ZA-5550, SDR-2-CON-ST-ZA-5400, SDR-2-CON-RW-ZG-1060 FF → SDR-2-CON-SE-ZA-1500, SDR-2-CON-SE-ZA-1500 FF, SDR-2-CON-ST-ZA-5550, SDR-2-CON-ST-ZA-5400, SDR-2-CON-RW-ZG-1060 FS+3d |  |
| 5 | **Backfilling** | 2026-11-30 → 2027-03-04 (+94d) | 2026-12-23 → 2027-04-01 (+99d) |  |  |  |
| SDR-2-CON-SE-ZA-1540 | Backfilling | 2026-11-30 → 2027-03-04 (+94d) | 2026-12-23 → 2027-04-01 (+99d) | 92d → 6d |  | resources SIC- Cost [25529.9]; Surveyor [38.41 h]; Labor [38.41 h]; Plumber [200.63 h]; Excavator [13.32 h]; Excavator Operator [250.78 h] → SIC- Cost [51059.7]; Surveyor [38.41 h]; Labor [38.41 h]; Plumber [200.63 h]; Excavator [13.32 h]; Excavator Operator [250.78 h] |
| 5 | **LINE 4 AND LINE 5 ( PH2-A-MCD0 )** |  | 2027-05-05 → 2027-05-26 (+21d) |  |  |  |
| 7 | **Pipes Work** |  | 2027-03-16 → 2027-05-26 (+71d) |  |  |  |
| SDR-2-CON-SE-ZA-2500 | Excavation for GRP Pipe 200mm Diameter Section 1 |  |  |  | SDR-2-CON-ST-ZA-4030 FS+10d, SDR-2-CON-ST-ZA-6190 → SDR-2-CON-ST-ZA-4030 FS+10d, SDR-2-CON-ST-ZA-6190, SDR-2-CON-ST-ZA-6290 | resources SIC- Cost; Surveyor [64.01 h]; Labor [64.01 h]; Plumber [81.48 h]; Excavator [14.89 h]; Excavator Operator [81.48 h] → SIC- Cost [38752.2]; Surveyor [64.01 h]; Labor [64.01 h]; Plumber [81.48 h]; Excavator [14.89 h]; Excavator Operator [81.48 h] |
| SDR-2-CON-SE-ZA-1560 | Excavation for GRP Pipe 200mm Diameter Section 2 |  |  |  |  | resources SIC- Cost; Surveyor [64.01 h]; Labor [64.01 h]; Plumber [81.48 h]; Excavator [14.89 h]; Excavator Operator [81.48 h] → SIC- Cost [38752.2]; Surveyor [64.01 h]; Labor [64.01 h]; Plumber [81.48 h]; Excavator [14.89 h]; Excavator Operator [81.48 h] |
| SDR-2-CON-SE-ZA-1620 | Sand bedding for GRP Pipe 200mm Diameter |  |  |  |  | resources SIC- Cost; Surveyor [64.01 h]; Labor [64.01 h]; Plumber [81.48 h]; Excavator [20 h]; Excavator Operator [81.48 h] → SIC- Cost [19376.1]; Surveyor [64.01 h]; Labor [64.01 h]; Plumber [81.48 h]; Excavator [20 h]; Excavator Operator [81.48 h] |
| 2 | **Pipes Laying** |  | 2026-11-09 → 2027-01-26 (+78d) |  |  |  |
| SDR-2-CON-SE-ZA-1570 | 200 mm GRP Pipe Laying |  | 2026-11-09 → 2027-01-26 (+78d) | 109d → 30d |  | resources SIC- Cost; Surveyor [96.01 h]; Labor [96.01 h]; Plumber [81.48 h]; Excavator [5 h]; Excavator Operator [81.48 h] → SIC- Cost [174385]; Surveyor [96.01 h]; Labor [96.01 h]; Plumber [81.48 h]; Excavator [5 h]; Excavator Operator [81.48 h] |
| 3 | **Testing** |  | 2027-02-14 → 2027-04-26 (+71d) |  |  |  |
| SDR-2-CON-SE-ZA-1580 | Testing of 200 mm GRP Pipe. |  | 2027-02-14 → 2027-04-26 (+71d) | 26d → -36d | SDR-2-CON-ST-ZA-6160, SDR-2-CON-SE-ZA-1570 FF, SDR-2-CON-ST-ZA-4500 FF → SDR-2-CON-SE-ZA-1570, SDR-2-CON-ST-ZA-6160, SDR-2-CON-ST-ZA-4500 | resources SIC- Cost; Surveyor [12.8 h]; Labor [12.8 h]; Plumber [76.43 h]; Excavator [6 h]; Excavator Operator [95.54 h] → SIC- Cost [38752.2]; Surveyor [12.8 h]; Labor [12.8 h]; Plumber [76.43 h]; Excavator [6 h]; Excavator Operator [95.54 h] |
| 6 | **Backfilling** | 2027-02-15 → 2027-04-27 (+71d) | 2027-03-16 → 2027-05-26 (+71d) |  |  |  |
| SDR-2-CON-SE-ZA-1630 | Backfilling of 200 mm GRP Pipe. | 2027-02-15 → 2027-04-27 (+71d) | 2027-03-16 → 2027-05-26 (+71d) | 26d → -36d |  | resources SIC- Cost; Surveyor [12.8 h]; Labor [1020.55 h]; Plumber [67.9 h]; Excavator [11.95 h]; Excavator Operator [67.9 h] → SIC- Cost [77504.4]; Surveyor [12.8 h]; Labor [1020.55 h]; Plumber [67.9 h]; Excavator [11.95 h]; Excavator Operator [67.9 h] |
| 4 | **Manholes** |  | 2027-05-05 → 2027-05-26 (+21d) |  |  |  |
| SDR-2-CON-SE-ZA-2510 | Excavation for manhole. Section 1 |  |  |  | SDR-2-CON-SE-ZA-2500 → SDR-2-CON-SE-ZA-2500, SDR-2-CON-ST-ZA-3310 | resources SIC- Cost [25529.9]; Surveyor [51.21 h]; Labor [51.21 h]; Plumber [81.48 h]; Excavator [14.89 h]; Excavator Operator [81.48 h] → SIC- Cost [19147.4]; Surveyor [51.21 h]; Labor [51.21 h]; Plumber [81.48 h]; Excavator [14.89 h]; Excavator Operator [81.48 h] |
| SDR-2-CON-SE-ZA-1590 | Excavation for manhole. Section 2 |  |  |  |  | resources SIC- Cost [25529.9]; Surveyor [51.21 h]; Labor [51.21 h]; Plumber [81.48 h]; Excavator [14.89 h]; Excavator Operator [81.48 h] → SIC- Cost [19147.4]; Surveyor [51.21 h]; Labor [51.21 h]; Plumber [81.48 h]; Excavator [14.89 h]; Excavator Operator [81.48 h] |
| SDR-2-CON-SE-ZA-1600 | Manhole Installation |  |  |  | SDR-2-CON-ST-ZA-6160, SDR-2-CON-SE-ZA-1590, SDR-2-CON-SE-ZA-1650, SDR-2-CON-ST-ZA-4500 FF → SDR-2-CON-SE-ZA-1590, SDR-2-CON-SE-ZA-1650, SDR-2-CON-ST-ZA-6160, SDR-2-CON-ST-ZA-4500 | resources SIC- Cost [204239]; Surveyor [76.81 h]; Labor [76.81 h]; Plumber [171.96 h]; Excavator [14.07 h]; Excavator Operator [214.96 h] → SIC- Cost [114884]; Surveyor [76.81 h]; Labor [76.81 h]; Plumber [171.96 h]; Excavator [14.07 h]; Excavator Operator [214.96 h] |
| 4 | **Testing** |  | 2027-02-15 → 2027-04-26 (+70d) |  |  |  |
| SDR-2-CON-SE-ZA-1610 | Testing |  | 2027-02-15 → 2027-04-26 (+70d) | 43d → -36d | SDR-2-CON-SE-ZA-1600 FF → SDR-2-CON-SE-ZA-1600 |  |
| 5 | **Backfilling** | 2027-04-12 → 2027-04-27 (+15d) | 2027-05-05 → 2027-05-26 (+21d) |  |  |  |
| SDR-2-CON-SE-ZA-2690 | Backfilling | 2027-04-12 → 2027-04-27 (+15d) | 2027-05-05 → 2027-05-26 (+21d) | 0d → -36d |  | resources SIC- Cost; Surveyor [38.4 h]; Labor [38.4 h]; Plumber [200.62 h]; Excavator [4.32 h]; Excavator Operator [180.24 h] → SIC- Cost [51059.7]; Surveyor [38.4 h]; Labor [38.4 h]; Plumber [200.62 h]; Excavator [4.32 h]; Excavator Operator [180.24 h] |
| 6 | **LINE 6 AND LINE 7 ( PH2-A-MCE0 )** |  | 2027-03-17 → 2027-06-06 (+81d) |  |  |  |
| 7 | **Pipes Work** |  | 2027-03-17 → 2027-06-06 (+81d) |  |  |  |
| SDR-2-CON-SE-ZA-2520 | Excavation for GRP Pipe 200mm Diameter Section 1 |  |  |  |  | resources SIC- Cost; Surveyor [64.01 h]; Labor [64.01 h]; Plumber [81.48 h]; Excavator [14.89 h]; Excavator Operator [81.48 h] → SIC- Cost [38752.2]; Surveyor [64.01 h]; Labor [64.01 h]; Plumber [81.48 h]; Excavator [14.89 h]; Excavator Operator [81.48 h] |
| SDR-2-CON-SE-ZA-1660 | Excavation for GRP Pipe 200mm Diameter Section 2 |  |  |  | SDR-2-CON-SE-ZA-2520 FS+3d → SDR-2-CON-SE-ZA-2520 FS+3d, SDR-2-CON-ST-ZA-3310 | resources SIC- Cost; Surveyor [64.01 h]; Labor [64.01 h]; Plumber [81.48 h]; Excavator [14.89 h]; Excavator Operator [81.48 h] → SIC- Cost [38752.2]; Surveyor [64.01 h]; Labor [64.01 h]; Plumber [81.48 h]; Excavator [14.89 h]; Excavator Operator [81.48 h] |
| SDR-2-CON-SE-ZA-1720 | Sand bedding for GRP Pipe 200mm Diameter |  |  |  |  | resources SIC- Cost [77504.4]; Surveyor [64.01 h]; Labor [64.01 h]; Plumber [81.48 h]; Excavator [12.69 h]; Excavator Operator [12.07 h] → SIC- Cost [19376.1]; Surveyor [64.01 h]; Labor [64.01 h]; Plumber [81.48 h]; Excavator [12.69 h]; Excavator Operator [12.07 h] |
| 2 | **Pipes Laying** |  | 2027-01-02 → 2027-04-29 (+117d) |  |  |  |
| SDR-2-CON-SE-ZA-1670 | 200 mm GRP Pipe Laying |  | 2027-01-02 → 2027-04-29 (+117d) | 70d → -38d | SDR-2-CON-SE-ZA-1660, SDR-2-CON-SE-ZA-1720, SDR-2-CON-RW-ZA-2850 FF → SDR-2-CON-SE-ZA-1660, SDR-2-CON-SE-ZA-1720, SDR-2-CON-RW-ZA-2850 | resources SIC- Cost [232513]; Surveyor [96.01 h]; Labor [67.9 h]; Plumber [67.9 h]; Excavator [13.64 h]; Excavator Operator [67.9 h] → SIC- Cost [174385]; Surveyor [96.01 h]; Labor [67.9 h]; Plumber [67.9 h]; Excavator [13.64 h]; Excavator Operator [67.9 h] |
| 3 | **Testing** |  | 2027-02-15 → 2027-05-06 (+80d) |  |  |  |
| SDR-2-CON-SE-ZA-1680 | Testing of 200 mm GRP Pipe. |  | 2027-02-15 → 2027-05-06 (+80d) | 32d → -38d | SDR-2-CON-SE-ZA-1670 FF, SDR-2-CON-ST-ZA-4580 FF → SDR-2-CON-SE-ZA-1670, SDR-2-CON-ST-ZA-4580 | resources SIC- Cost [77504.4]; Surveyor [12.8 h]; Labor [12.8 h]; Plumber [76.43 h]; Excavator [6 h]; Excavator Operator [67.9 h] → SIC- Cost [38752.2]; Surveyor [12.8 h]; Labor [12.8 h]; Plumber [76.43 h]; Excavator [6 h]; Excavator Operator [67.9 h] |
| 6 | **Backfilling** | 2027-02-16 → 2027-05-08 (+81d) | 2027-03-17 → 2027-06-06 (+81d) |  |  |  |
| SDR-2-CON-SE-ZA-1730 | Backfilling of 200 mm GRP Pipe. | 2027-02-16 → 2027-05-08 (+81d) | 2027-03-17 → 2027-06-06 (+81d) | 32d → -38d |  |  |
| 4 | **Manholes** |  | 2027-01-17 → 2027-06-05 (+139d) |  |  |  |
| SDR-2-CON-SE-ZA-2530 | Excavation for manhole. Section 1 |  |  |  |  | resources SIC- Cost [25529.9]; Surveyor [51.21 h]; Labor [51.21 h]; Plumber [191.07 h]; Excavator [13.5 h]; Excavator Operator [238.84 h] → SIC- Cost [19147.4]; Surveyor [51.21 h]; Labor [51.21 h]; Plumber [191.07 h]; Excavator [13.5 h]; Excavator Operator [238.84 h] |
| SDR-2-CON-SE-ZA-1690 | Excavation for manhole.Section 2 |  |  |  |  | resources SIC- Cost [25529.9]; Surveyor [51.21 h]; Labor [51.21 h]; Plumber [191.07 h]; Excavator [13.5 h]; Excavator Operator [238.84 h] → SIC- Cost [19147.4]; Surveyor [51.21 h]; Labor [51.21 h]; Plumber [191.07 h]; Excavator [13.5 h]; Excavator Operator [238.84 h] |
| SDR-2-CON-SE-ZA-1700 | Manhole Installation |  |  |  |  | resources SIC- Cost [204239]; Surveyor [76.81 h]; Labor [76.81 h]; Plumber [143.3 h]; Excavator [9.6 h]; Excavator Operator [9.05 h] → SIC- Cost [114884]; Surveyor [76.81 h]; Labor [76.81 h]; Plumber [143.3 h]; Excavator [9.6 h]; Excavator Operator [9.05 h] |
| 4 | **Testing** |  | 2026-12-17 → 2027-04-29 (+133d) |  |  |  |
| SDR-2-CON-SE-ZA-1710 | Testing |  | 2026-12-17 → 2027-04-29 (+133d) | 78d → -37d | SDR-2-CON-ST-ZA-1300 FF, SDR-2-CON-RW-ZA-2370 FF → SDR-2-CON-SE-ZA-1700, SDR-2-CON-SE-ZA-1700 FF, SDR-2-CON-ST-ZA-1300, SDR-2-CON-RW-ZA-2370 |  |
| 5 | **Backfilling** | 2026-12-24 → 2027-05-06 (+133d) | 2027-01-17 → 2027-06-05 (+139d) |  |  |  |
| SDR-2-CON-SE-ZA-1740 | Backfilling | 2026-12-24 → 2027-05-06 (+133d) | 2027-01-17 → 2027-06-05 (+139d) | 78d → -37d |  | resources SIC- Cost [25529.9]; Surveyor [38.41 h]; Labor [1046.16 h]; Plumber [152.86 h]; Excavator [6.88 h]; Excavator Operator [191.07 h] → SIC- Cost [51059.7]; Surveyor [38.41 h]; Labor [1046.16 h]; Plumber [152.86 h]; Excavator [6.88 h]; Excavator Operator [191.07 h] |
| 7 | **LINE 8 AND LINE 9 ( PH2-A-MCF0 )** |  | 2026-12-09 → 2027-04-22 (+134d) |  |  |  |
| 7 | **Pipes Work** |  | 2026-12-03 → 2027-04-08 (+126d) |  |  |  |
| SDR-2-CON-SE-ZA-2540 | Excavation for GRP Pipe 200mm Diameter Section 1 |  |  |  |  | resources SIC- Cost [77504.4]; Surveyor [64.01 h]; Labor [64.01 h]; Plumber [81.48 h]; Excavator [14.89 h]; Excavator Operator [81.48 h] → SIC- Cost [38752.2]; Surveyor [64.01 h]; Labor [64.01 h]; Plumber [81.48 h]; Excavator [14.89 h]; Excavator Operator [81.48 h] |
| SDR-2-CON-SE-ZA-1760 | Excavation for GRP Pipe 200mm Diameter Section 2 |  |  |  | SDR-2-CON-SE-ZA-2540 FS+3d → SDR-2-CON-SE-ZA-2540 FS+3d, SDR-2-CON-RW-ZA-2480 | resources SIC- Cost [77504.4]; Surveyor [64.01 h]; Labor [64.01 h]; Plumber [81.48 h]; Excavator [14.89 h]; Excavator Operator [81.48 h] → SIC- Cost [38752.2]; Surveyor [64.01 h]; Labor [64.01 h]; Plumber [81.48 h]; Excavator [14.89 h]; Excavator Operator [81.48 h] |
| SDR-2-CON-SE-ZA-1820 | Sand bedding for GRP Pipe 200mm Diameter |  |  |  | SDR-2-CON-SE-ZA-1760, SDR-2-CON-RW-ZG-1950 SS → SDR-2-CON-SE-ZA-1760, SDR-2-CON-RW-ZG-1950 | resources SIC- Cost [77504.4]; Surveyor [64.01 h]; Labor [64.01 h]; Plumber [81.48 h]; Excavator [12.93 h]; Excavator Operator [12.07 h] → SIC- Cost [19376.1]; Surveyor [64.01 h]; Labor [64.01 h]; Plumber [81.48 h]; Excavator [12.93 h]; Excavator Operator [12.07 h] |
| 2 | **Pipes Laying** |  | 2026-11-09 → 2027-03-03 (+114d) |  |  |  |
| SDR-2-CON-SE-ZA-1770 | 200 mm GRP Pipe Laying |  | 2026-11-09 → 2027-03-03 (+114d) | 109d → 0d | SDR-2-CON-SE-ZA-1760, SDR-2-CON-SE-ZA-1820, SDR-2-CON-RW-ZG-2500 FF → SDR-2-CON-SE-ZA-1760, SDR-2-CON-SE-ZA-1820, SDR-2-CON-RW-ZG-2500 | resources SIC- Cost [232513]; Surveyor [67.9 h]; Labor [67.9 h]; Plumber [67.9 h]; Excavator [5 h]; Excavator Operator [67.9 h] → SIC- Cost [174385]; Surveyor [67.9 h]; Labor [67.9 h]; Plumber [67.9 h]; Excavator [5 h]; Excavator Operator [67.9 h] |
| 3 | **Testing** |  | 2026-11-09 → 2027-03-15 (+126d) |  |  |  |
| SDR-2-CON-SE-ZA-1780 | Testing of 200 mm GRP Pipe. |  | 2026-11-09 → 2027-03-15 (+126d) | 109d → 0d | SDR-2-CON-SE-ZA-1770 FF → SDR-2-CON-SE-ZA-1770 | resources SIC- Cost [77504.4]; Surveyor [12.8 h]; Labor [4707.37 h]; Plumber [76.43 h]; Excavator [6 h]; Excavator Operator [95.54 h] → SIC- Cost [38752.2]; Surveyor [12.8 h]; Labor [4707.37 h]; Plumber [76.43 h]; Excavator [6 h]; Excavator Operator [95.54 h] |
| 6 | **Backfilling** | 2026-11-10 → 2027-03-16 (+126d) | 2026-12-03 → 2027-04-08 (+126d) |  |  |  |
| SDR-2-CON-SE-ZA-1830 | Backfilling of 200 mm GRP Pipe. | 2026-11-10 → 2027-03-16 (+126d) | 2026-12-03 → 2027-04-08 (+126d) | 109d → 0d |  |  |
| 4 | **Manholes** |  | 2026-12-09 → 2027-04-22 (+134d) |  |  |  |
| SDR-2-CON-SE-ZA-2550 | Excavation for manhole. Section 1 |  |  |  |  | resources SIC- Cost [25529.9]; Surveyor [51.21 h]; Labor [51.21 h]; Plumber [171.96 h]; Excavator [14.89 h]; Excavator Operator [214.96 h] → SIC- Cost [19147.4]; Surveyor [51.21 h]; Labor [51.21 h]; Plumber [171.96 h]; Excavator [14.89 h]; Excavator Operator [214.96 h] |
| SDR-2-CON-SE-ZA-1790 | Excavation for manhole. Section 2 |  |  |  | SDR-2-CON-SE-ZA-2550 FS+3d → SDR-2-CON-SE-ZA-2550 FS+3d, SDR-2-CON-RW-ZA-3410 | resources SIC- Cost [25529.9]; Surveyor [51.21 h]; Labor [51.21 h]; Plumber [171.96 h]; Excavator [14.89 h]; Excavator Operator [214.96 h] → SIC- Cost [19147.4]; Surveyor [51.21 h]; Labor [51.21 h]; Plumber [171.96 h]; Excavator [14.89 h]; Excavator Operator [214.96 h] |
| SDR-2-CON-SE-ZA-1800 | Manhole Installation |  |  |  |  | resources SIC- Cost [204239]; Surveyor [76.81 h]; Labor [76.81 h]; Plumber [143.3 h]; Excavator [12 h]; Excavator Operator [179.13 h] → SIC- Cost [114884]; Surveyor [76.81 h]; Labor [76.81 h]; Plumber [143.3 h]; Excavator [12 h]; Excavator Operator [179.13 h] |
| 4 | **Testing** |  | 2026-11-09 → 2027-03-22 (+133d) |  |  |  |
| SDR-2-CON-SE-ZA-1810 | Testing |  | 2026-11-09 → 2027-03-22 (+133d) | 111d → -5d | SDR-2-CON-SE-ZA-1800 FF → SDR-2-CON-SE-ZA-1800, SDR-2-CON-SE-ZA-1800 FF |  |
| 5 | **Backfilling** | 2026-11-19 → 2027-04-03 (+135d) | 2026-12-09 → 2027-04-22 (+134d) |  |  |  |
| SDR-2-CON-SE-ZA-1840 | Backfilling | 2026-11-19 → 2027-04-03 (+135d) | 2026-12-09 → 2027-04-22 (+134d) | 111d → -5d |  | resources SIC- Cost [25529.9]; Surveyor [38.41 h]; Labor [1046.16 h]; Plumber [171.96 h]; Excavator [10.79 h]; Excavator Operator [214.96 h] → SIC- Cost [51059.7]; Surveyor [38.41 h]; Labor [1046.16 h]; Plumber [171.96 h]; Excavator [10.79 h]; Excavator Operator [214.96 h] |
| 8 | **LINE 10 AND LINE 11 ( PH2-A-MCG0 )** |  | 2027-03-06 → 2027-04-13 (+38d) |  |  |  |

| ID | Task | Start | Finish | Total float | Predecessors | Other |
| --- | --- | --- | --- | --- | --- | --- |
| 7 | **Pipes Work** |  | 2027-02-21 → 2027-04-08 (+46d) |  |  |  |
| SDR-2-CON-SE-ZA-2560 | Excavation for GRP Pipe 200mm Diameter Section 1 |  |  |  |  | resources SIC- Cost [77504.4]; Surveyor [64.01 h]; Labor [64.01 h]; Plumber [81.48 h]; Excavator [14.89 h]; Excavator Operator [81.48 h] → SIC- Cost [38752.2]; Surveyor [64.01 h]; Labor [64.01 h]; Plumber [81.48 h]; Excavator [14.89 h]; Excavator Operator [81.48 h] |
| SDR-2-CON-SE-ZA-1860 | Excavation for GRP Pipe 200mm Diameter Section 2 |  |  |  |  | resources SIC- Cost [77504.4]; Surveyor [64.01 h]; Labor [64.01 h]; Plumber [81.48 h]; Excavator [14.89 h]; Excavator Operator [81.48 h] → SIC- Cost [38752.2]; Surveyor [64.01 h]; Labor [64.01 h]; Plumber [81.48 h]; Excavator [14.89 h]; Excavator Operator [81.48 h] |
| SDR-2-CON-SE-ZA-1920 | Sand bedding for GRP Pipe 200mm Diameter |  |  |  | SDR-2-CON-SE-ZA-1860, SDR-2-CON-RW-ZG-1950 SS → SDR-2-CON-SE-ZA-1860, SDR-2-CON-RW-ZG-1950 | resources SIC- Cost [77504.4]; Surveyor [64.01 h]; Labor [64.01 h]; Plumber [81.48 h]; Excavator [15.46 h]; Excavator Operator [81.48 h] → SIC- Cost [19376.1]; Surveyor [64.01 h]; Labor [64.01 h]; Plumber [81.48 h]; Excavator [15.46 h]; Excavator Operator [81.48 h] |
| 2 | **Pipes Laying** |  | 2026-11-09 → 2027-03-03 (+114d) |  |  |  |
| SDR-2-CON-SE-ZA-1870 | 200 mm GRP Pipe Laying |  | 2026-11-09 → 2027-03-03 (+114d) | 106d → -10d |  | resources SIC- Cost [232513]; Surveyor [96.01 h]; Labor [96.01 h]; Plumber [143.3 h]; Excavator [14.79 h]; Excavator Operator [81.48 h] → SIC- Cost [174385]; Surveyor [96.01 h]; Labor [96.01 h]; Plumber [143.3 h]; Excavator [14.79 h]; Excavator Operator [81.48 h] |
| 3 | **Testing** |  | 2027-01-28 → 2027-03-15 (+46d) |  |  |  |
| SDR-2-CON-SE-ZA-1880 | Testing of 200 mm GRP Pipe. |  | 2027-01-28 → 2027-03-15 (+46d) | 38d → -10d | SDR-2-CON-ST-ZA-6160, SDR-2-CON-RW-ZA-2740, SDR-2-CON-SE-ZA-1870 FF → SDR-2-CON-SE-ZA-1870, SDR-2-CON-ST-ZA-6160, SDR-2-CON-RW-ZA-2740 | resources SIC- Cost [77504.4]; Surveyor [12.8 h]; Labor [12.8 h]; Plumber [67.9 h]; Excavator [7.17 h]; Excavator Operator [67.9 h] → SIC- Cost [38752.2]; Surveyor [12.8 h]; Labor [12.8 h]; Plumber [67.9 h]; Excavator [7.17 h]; Excavator Operator [67.9 h] |
| 6 | **Backfilling** | 2027-01-28 → 2027-03-16 (+47d) | 2027-02-21 → 2027-04-08 (+46d) |  |  |  |
| SDR-2-CON-SE-ZA-1930 | Backfilling of 200 mm GRP Pipe. | 2027-01-28 → 2027-03-16 (+47d) | 2027-02-21 → 2027-04-08 (+46d) | 38d → -10d |  | resources SIC- Cost; Surveyor [12.8 h]; Labor [12.8 h]; Plumber [81.48 h]; Excavator [10.19 h]; Excavator Operator [81.48 h] → SIC- Cost [77504.4]; Surveyor [12.8 h]; Labor [12.8 h]; Plumber [81.48 h]; Excavator [10.19 h]; Excavator Operator [81.48 h] |
| 4 | **Manholes** |  | 2027-03-06 → 2027-04-13 (+38d) |  |  |  |
| SDR-2-CON-SE-ZA-2570 | Excavation for manhole. Section 1 |  |  |  |  | resources SIC- Cost [25529.9]; Surveyor [51.21 h]; Labor [51.21 h]; Plumber [191.07 h]; Excavator [13.5 h]; Excavator Operator [238.84 h] → SIC- Cost [19147.4]; Surveyor [51.21 h]; Labor [51.21 h]; Plumber [191.07 h]; Excavator [13.5 h]; Excavator Operator [238.84 h] |
| SDR-2-CON-SE-ZA-1890 | Excavation for manhole. Section 2 |  |  |  |  | resources SIC- Cost [25529.9]; Surveyor [51.21 h]; Labor [51.21 h]; Plumber [191.07 h]; Excavator [13.5 h]; Excavator Operator [238.84 h] → SIC- Cost [19147.4]; Surveyor [51.21 h]; Labor [51.21 h]; Plumber [191.07 h]; Excavator [13.5 h]; Excavator Operator [238.84 h] |
| SDR-2-CON-SE-ZA-1900 | Manhole Installation |  |  |  |  | resources SIC- Cost [204239]; Surveyor [76.81 h]; Labor [76.81 h]; Plumber [171.96 h]; Excavator [12 h]; Excavator Operator [214.96 h] → SIC- Cost [114884]; Surveyor [76.81 h]; Labor [76.81 h]; Plumber [171.96 h]; Excavator [12 h]; Excavator Operator [214.96 h] |
| 4 | **Testing** |  | 2027-01-28 → 2027-03-03 (+34d) |  |  |  |
| SDR-2-CON-SE-ZA-1910 | Testing |  | 2027-01-28 → 2027-03-03 (+34d) | 31d → -4d | SDR-2-CON-ST-ZA-6160 → SDR-2-CON-SE-ZA-1900, SDR-2-CON-SE-ZA-1900 FF, SDR-2-CON-ST-ZA-6160 |  |
| 5 | **Backfilling** | 2027-02-09 → 2027-03-21 (+40d) | 2027-03-06 → 2027-04-13 (+38d) |  |  |  |
| SDR-2-CON-SE-ZA-1940 | Backfilling | 2027-02-09 → 2027-03-21 (+40d) | 2027-03-06 → 2027-04-13 (+38d) | 31d → -4d |  | resources SIC- Cost [25529.9]; Surveyor [38.41 h]; Labor [1036.07 h]; Plumber [191.07 h]; Excavator [10.32 h]; Excavator Operator [238.84 h] → SIC- Cost [51059.7]; Surveyor [38.41 h]; Labor [1036.07 h]; Plumber [191.07 h]; Excavator [10.32 h]; Excavator Operator [238.84 h] |
| 9 | **LINE 12 AND LINE 13 ( PH2-A-MCH0 )** |  | 2026-12-28 → 2027-05-10 (+133d) |  |  |  |
| 7 | **Pipes Work** |  | 2026-12-28 → 2027-05-10 (+133d) |  |  |  |
| SDR-2-CON-SE-ZA-2580 | Excavation for GRP Pipe 200mm Diameter Section 1 |  |  |  |  | resources SIC- Cost [77504.4]; Surveyor [64.01 h]; Labor [64.01 h]; Plumber [81.48 h]; Excavator [14.89 h]; Excavator Operator [334.38 h] → SIC- Cost [38752.2]; Surveyor [64.01 h]; Labor [64.01 h]; Plumber [81.48 h]; Excavator [14.89 h]; Excavator Operator [334.38 h] |
| SDR-2-CON-SE-ZA-1960 | Excavation for GRP Pipe 200mm Diameter Section 2 |  |  |  | SDR-2-CON-SE-ZA-2580 FS+3d, SDR-2-CON-RW-ZA-1330 → SDR-2-CON-SE-ZA-2580 FS+3d, SDR-2-CON-RW-ZA-3420, SDR-2-CON-RW-ZA-1330, SDR-2-CON-RW-ZA-3410 | resources SIC- Cost [77504.4]; Surveyor [64.01 h]; Labor [64.01 h]; Plumber [81.48 h]; Excavator [14.89 h]; Excavator Operator [334.38 h] → SIC- Cost [38752.2]; Surveyor [64.01 h]; Labor [64.01 h]; Plumber [81.48 h]; Excavator [14.89 h]; Excavator Operator [334.38 h] |
| SDR-2-CON-SE-ZA-2020 | Sand bedding for GRP Pipe 200mm Diameter |  |  |  |  | resources SIC- Cost [77504.4]; Surveyor [64.01 h]; Labor [64.01 h]; Plumber [81.48 h]; Excavator [15 h]; Excavator Operator [16.09 h] → SIC- Cost [19376.1]; Surveyor [64.01 h]; Labor [64.01 h]; Plumber [81.48 h]; Excavator [15 h]; Excavator Operator [16.09 h] |
| 2 | **Pipes Laying** |  | 2026-11-09 → 2027-03-22 (+133d) |  |  |  |
| SDR-2-CON-SE-ZA-1970 | 200 mm GRP Pipe Laying |  | 2026-11-09 → 2027-03-22 (+133d) | 99d → -44d |  | resources SIC- Cost [232513]; Surveyor [96.01 h]; Labor [96.01 h]; Plumber [81.48 h]; Excavator [8.2 h]; Excavator Operator [81.48 h] → SIC- Cost [174385]; Surveyor [96.01 h]; Labor [96.01 h]; Plumber [81.48 h]; Excavator [8.2 h]; Excavator Operator [81.48 h] |
| 3 | **Testing** | 2026-11-10 → 2027-03-23 (+133d) | 2026-12-03 → 2027-04-15 (+133d) |  |  |  |
| SDR-2-CON-SE-ZA-1980 | Testing of 200 mm GRP Pipe. | 2026-11-10 → 2027-03-23 (+133d) | 2026-12-03 → 2027-04-15 (+133d) | 99d → -44d |  | resources SIC- Cost [77504.4]; Surveyor [12.8 h]; Labor [12.8 h]; Plumber [81.48 h]; Excavator [6 h]; Excavator Operator [81.48 h] → SIC- Cost [38752.2]; Surveyor [12.8 h]; Labor [12.8 h]; Plumber [81.48 h]; Excavator [6 h]; Excavator Operator [81.48 h] |
| 6 | **Backfilling** | 2026-12-05 → 2027-04-17 (+133d) | 2026-12-28 → 2027-05-10 (+133d) |  |  |  |
| SDR-2-CON-SE-ZA-2030 | Backfilling of 200 mm GRP Pipe. | 2026-12-05 → 2027-04-17 (+133d) | 2026-12-28 → 2027-05-10 (+133d) | 99d → -44d |  |  |
| 4 | **Manholes** |  | 2026-12-21 → 2027-04-13 (+113d) |  |  |  |
| SDR-2-CON-SE-ZA-2590 | Excavation for manhole. Section 1 |  |  |  |  | resources SIC- Cost [25529.9]; Surveyor [51.21 h]; Labor [51.21 h]; Plumber [171.96 h]; Excavator [14.89 h]; Excavator Operator [214.96 h] → SIC- Cost [19147.4]; Surveyor [51.21 h]; Labor [51.21 h]; Plumber [171.96 h]; Excavator [14.89 h]; Excavator Operator [214.96 h] |
| SDR-2-CON-SE-ZA-1990 | Excavation for manhole. Section 2 |  |  |  |  | resources SIC- Cost [25529.9]; Surveyor [51.21 h]; Labor [51.21 h]; Plumber [171.96 h]; Excavator [14.89 h]; Excavator Operator [214.96 h] → SIC- Cost [19147.4]; Surveyor [51.21 h]; Labor [51.21 h]; Plumber [171.96 h]; Excavator [14.89 h]; Excavator Operator [214.96 h] |
| SDR-2-CON-SE-ZA-2000 | Manhole Installation |  |  |  |  | resources SIC- Cost [204239]; Surveyor [76.81 h]; Labor [76.81 h]; Plumber [152.86 h]; Excavator [14.56 h]; Excavator Operator [191.07 h] → SIC- Cost [114884]; Surveyor [76.81 h]; Labor [76.81 h]; Plumber [152.86 h]; Excavator [14.56 h]; Excavator Operator [191.07 h] |
| 4 | **Testing** | 2026-11-09 → 2027-02-25 (+108d) | 2026-12-02 → 2027-03-25 (+113d) |  |  |  |
| SDR-2-CON-SE-ZA-2010 | Testing | 2026-11-09 → 2027-02-25 (+108d) | 2026-12-02 → 2027-03-25 (+113d) | 101d → 3d |  |  |
| 5 | **Backfilling** | 2026-12-03 → 2027-03-27 (+114d) | 2026-12-21 → 2027-04-13 (+113d) |  |  |  |
| SDR-2-CON-SE-ZA-2040 | Backfilling | 2026-12-03 → 2027-03-27 (+114d) | 2026-12-21 → 2027-04-13 (+113d) | 101d → 3d |  | resources SIC- Cost [25529.9]; Surveyor [38.41 h]; Labor [1046.15 h]; Plumber [171.96 h]; Excavator [11.95 h]; Excavator Operator [214.96 h] → SIC- Cost [51059.7]; Surveyor [38.41 h]; Labor [1046.15 h]; Plumber [171.96 h]; Excavator [11.95 h]; Excavator Operator [214.96 h] |
| ZG | **ZONE G** |  | 2027-02-07 → 2027-03-03 (+24d) |  |  |  |
| 3 | **LINE 49 AND LINE 51 ( PH2-G-MCE0 )** |  | 2026-11-18 → 2027-03-03 (+105d) |  |  |  |
| SDR-2-CON-SE-ZA-2600 | Excavation for GRP Pipe 200mm Diameter Section 1 |  |  |  |  | resources SIC- Cost [77504.4]; Surveyor [64.01 h]; Labor [64.01 h]; Plumber [67.9 h]; Excavator [14.89 h]; Excavator Operator [67.9 h] → SIC- Cost [38752.2]; Surveyor [64.01 h]; Labor [64.01 h]; Plumber [67.9 h]; Excavator [14.89 h]; Excavator Operator [67.9 h] |
| SDR-2-CON-SE-ZA-2060 | Excavation for GRP Pipe 200mm Diameter Section 2 |  |  |  |  | resources SIC- Cost [77504.4]; Surveyor [64.01 h]; Labor [64.01 h]; Plumber [67.9 h]; Excavator [14.89 h]; Excavator Operator [67.9 h] → SIC- Cost [38752.2]; Surveyor [64.01 h]; Labor [64.01 h]; Plumber [67.9 h]; Excavator [14.89 h]; Excavator Operator [67.9 h] |
| SDR-2-CON-SE-ZA-2120 | Sand bedding for GRP Pipe 200mm Diameter |  |  |  |  | resources SIC- Cost [77504.4]; Surveyor [64.01 h]; Labor [64.01 h]; Plumber [81.48 h]; Excavator [9.13 h]; Excavator Operator [10.06 h] → SIC- Cost [19376.1]; Surveyor [64.01 h]; Labor [64.01 h]; Plumber [81.48 h]; Excavator [9.13 h]; Excavator Operator [10.06 h] |
| SDR-2-CON-SE-ZA-2070 | 200 mm GRP Pipe Laying |  |  |  |  | resources SIC- Cost [232513]; Surveyor [67.9 h]; Labor [67.9 h]; Plumber [81.48 h]; Excavator [5.97 h]; Excavator Operator [67.9 h] → SIC- Cost [174385]; Surveyor [67.9 h]; Labor [67.9 h]; Plumber [81.48 h]; Excavator [5.97 h]; Excavator Operator [67.9 h] |
| SDR-2-CON-SE-ZA-2080 | Testing of 200 mm GRP Pipe. |  |  |  | SDR-2-CON-SE-ZA-2070 → SDR-2-CON-SE-ZA-2070, SDR-2-CON-ST-ZA-1300 | resources SIC- Cost [77504.4]; Surveyor [12.8 h]; Labor [12.8 h]; Plumber [76.43 h]; Excavator [6 h]; Excavator Operator [95.54 h] → SIC- Cost [38752.2]; Surveyor [12.8 h]; Labor [12.8 h]; Plumber [76.43 h]; Excavator [6 h]; Excavator Operator [95.54 h] |
| SDR-2-CON-SE-ZA-2130 | Backfilling of 200 mm GRP Pipe. |  |  |  | SDR-2-CON-SE-ZA-2080 → SDR-2-CON-SE-ZA-2080, SDR-2-CON-CC-ZG-1620 | resources SIC- Cost; Surveyor [12.8 h]; Labor [1020.55 h]; Plumber [81.48 h]; Excavator [12.67 h]; Excavator Operator [81.48 h] → SIC- Cost [77504.4]; Surveyor [12.8 h]; Labor [1020.55 h]; Plumber [81.48 h]; Excavator [12.67 h]; Excavator Operator [81.48 h] |
| 4 | **Manholes** |  | 2026-11-18 → 2027-03-03 (+105d) |  |  |  |
| SDR-2-CON-SE-ZA-2610 | Excavation for manhole. Section 1 |  |  |  |  | resources SIC- Cost [25529.9]; Surveyor [51.21 h]; Labor [51.21 h]; Plumber [200.63 h]; Excavator [14.89 h]; Excavator Operator [250.78 h] → SIC- Cost [19147.4]; Surveyor [51.21 h]; Labor [51.21 h]; Plumber [200.63 h]; Excavator [14.89 h]; Excavator Operator [250.78 h] |
| SDR-2-CON-SE-ZA-2090 | Excavation for manhole. Section 2 |  |  |  |  | resources SIC- Cost [25529.9]; Surveyor [51.21 h]; Labor [51.21 h]; Plumber [200.63 h]; Excavator [14.89 h]; Excavator Operator [250.78 h] → SIC- Cost [19147.4]; Surveyor [51.21 h]; Labor [51.21 h]; Plumber [200.63 h]; Excavator [14.89 h]; Excavator Operator [250.78 h] |
| SDR-2-CON-SE-ZA-2100 | Manhole Installation |  |  |  |  | resources SIC- Cost [204239]; Surveyor [76.81 h]; Labor [76.81 h]; Plumber [162.41 h]; Excavator [5 h]; Excavator Operator [203.01 h] → SIC- Cost [114884]; Surveyor [76.81 h]; Labor [76.81 h]; Plumber [162.41 h]; Excavator [5 h]; Excavator Operator [203.01 h] |
| 4 | **Testing** |  | 2026-11-18 → 2027-03-03 (+105d) |  |  |  |
| SDR-2-CON-SE-ZA-2110 | Testing |  | 2026-11-18 → 2027-03-03 (+105d) | 128d → 19d |  |  |
| SDR-2-CON-SE-ZA-2140 | Backfilling |  |  |  | SDR-2-CON-SE-ZA-2110 SS → SDR-2-CON-SE-ZA-2110 FS+5d | resources SIC- Cost [25529.9]; Surveyor [38.41 h]; Labor [1046.15 h]; Plumber [181.52 h]; Excavator [12.67 h]; Excavator Operator [226.9 h] → SIC- Cost [51059.7]; Surveyor [38.41 h]; Labor [1046.15 h]; Plumber [181.52 h]; Excavator [12.67 h]; Excavator Operator [226.9 h] |
| 4 | **LINE 50 ( PH2-G-MCD0 )** |  | 2027-02-07 → 2027-03-03 (+24d) |  |  |  |
| 7 | **Pipes Work** |  | 2027-02-07 → 2027-03-03 (+24d) |  |  |  |
| SDR-2-CON-SE-ZA-2620 | Excavation for GRP Pipe 200mm Diameter Section 1 |  |  |  |  | resources SIC- Cost [77504.4]; Surveyor [64.01 h]; Labor [64.01 h]; Plumber [81.48 h]; Excavator [14.89 h]; Excavator Operator [81.48 h] → SIC- Cost [38752.2]; Surveyor [64.01 h]; Labor [64.01 h]; Plumber [81.48 h]; Excavator [14.89 h]; Excavator Operator [81.48 h] |
| SDR-2-CON-SE-ZA-2160 | Excavation for GRP Pipe 200mm Diameter Section 2 |  |  |  |  | resources SIC- Cost [77504.4]; Surveyor [64.01 h]; Labor [64.01 h]; Plumber [81.48 h]; Excavator [14.89 h]; Excavator Operator [81.48 h] → SIC- Cost [38752.2]; Surveyor [64.01 h]; Labor [64.01 h]; Plumber [81.48 h]; Excavator [14.89 h]; Excavator Operator [81.48 h] |
| SDR-2-CON-SE-ZA-2220 | Sand bedding for GRP Pipe 200mm Diameter |  |  |  |  | resources SIC- Cost [77504.4]; Surveyor [64.01 h]; Labor [64.01 h]; Plumber [81.48 h]; Excavator [6.54 h]; Excavator Operator [6.03 h] → SIC- Cost [19376.1]; Surveyor [64.01 h]; Labor [64.01 h]; Plumber [81.48 h]; Excavator [6.54 h]; Excavator Operator [6.03 h] |
| SDR-2-CON-SE-ZA-2170 | 200 mm GRP Pipe Laying |  |  |  |  | resources SIC- Cost [232513]; Surveyor [96.01 h]; Labor [96.01 h]; Plumber [81.48 h]; Excavator [5 h]; Excavator Operator [81.48 h] → SIC- Cost [174385]; Surveyor [96.01 h]; Labor [96.01 h]; Plumber [81.48 h]; Excavator [5 h]; Excavator Operator [81.48 h] |
| 3 | **Testing** |  | 2027-02-07 → 2027-03-03 (+24d) |  |  |  |
| SDR-2-CON-SE-ZA-2180 | Testing of 200 mm GRP Pipe. |  | 2027-02-07 → 2027-03-03 (+24d) | 59d → 24d |  | resources SIC- Cost [77504.4]; Surveyor [12.8 h]; Labor [12.8 h]; Plumber [76.43 h]; Excavator [6 h]; Excavator Operator [95.54 h] → SIC- Cost [38752.2]; Surveyor [12.8 h]; Labor [12.8 h]; Plumber [76.43 h]; Excavator [6 h]; Excavator Operator [95.54 h] |
| SDR-2-CON-SE-ZA-2230 | Backfilling of 200 mm GRP Pipe. |  |  |  | SDR-2-CON-SE-ZA-2180 SS → SDR-2-CON-SE-ZA-2180 | resources SIC- Cost; Surveyor [12.8 h]; Labor [1020.55 h]; Plumber [67.9 h]; Excavator [12.32 h]; Excavator Operator [67.9 h] → SIC- Cost [77504.4]; Surveyor [12.8 h]; Labor [1020.55 h]; Plumber [67.9 h]; Excavator [12.32 h]; Excavator Operator [67.9 h] |
| 4 | **Manholes** |  | 2026-11-18 → 2027-03-03 (+105d) |  |  |  |
| SDR-2-CON-SE-ZA-2630 | Excavation for manhole. Section 1 |  |  |  |  | resources SIC- Cost; Surveyor [19.26 h]; Labor [51.21 h]; Plumber [238.84 h]; Excavator [14.89 h]; Excavator Operator [14.45 h] → SIC- Cost [19147.4]; Surveyor [19.26 h]; Labor [51.21 h]; Plumber [238.84 h]; Excavator [14.89 h]; Excavator Operator [14.45 h] |
| SDR-2-CON-SE-ZA-2190 | Excavation for manhole. Section 2 |  |  |  |  | resources SIC- Cost [25529.9]; Surveyor [51.21 h]; Labor [51.21 h]; Plumber [238.84 h]; Excavator [14.89 h]; Excavator Operator [298.55 h] → SIC- Cost [19147.4]; Surveyor [51.21 h]; Labor [51.21 h]; Plumber [238.84 h]; Excavator [14.89 h]; Excavator Operator [298.55 h] |
| SDR-2-CON-SE-ZA-2200 | Manhole Installation |  |  |  |  | resources SIC- Cost [204239]; Surveyor [76.81 h]; Labor [76.81 h]; Plumber [143.3 h]; Excavator [5 h]; Excavator Operator [179.13 h] → SIC- Cost [114884]; Surveyor [76.81 h]; Labor [76.81 h]; Plumber [143.3 h]; Excavator [5 h]; Excavator Operator [179.13 h] |
| 4 | **Testing** |  | 2026-11-18 → 2027-03-03 (+105d) |  |  |  |
| SDR-2-CON-SE-ZA-2210 | Testing |  | 2026-11-18 → 2027-03-03 (+105d) | 123d → 13d |  |  |
| SDR-2-CON-SE-ZA-2240 | Backfilling |  |  |  | SDR-2-CON-SE-ZA-2210 SS → SDR-2-CON-SE-ZA-2210 FS+5d | resources SIC- Cost [25529.9]; Surveyor [38.41 h]; Labor [1046.15 h]; Plumber [171.96 h]; Excavator [10.71 h]; Excavator Operator [214.96 h] → SIC- Cost [51059.7]; Surveyor [38.41 h]; Labor [1046.15 h]; Plumber [171.96 h]; Excavator [10.71 h]; Excavator Operator [214.96 h] |
| 5 | **LINE 52 AND LINE 53 ( PH2-G-MCF0 )** |  | 2026-11-18 → 2027-03-03 (+105d) |  |  |  |
| SDR-2-CON-SE-ZA-2640 | Excavation for GRP Pipe 200mm Diameter Section 1 |  |  |  | SDR-2-CON-ST-ZA-5530 → SDR-2-CON-ST-ZA-5530, SDR-2-CON-ST-ZA-6290 | resources SIC- Cost [77504.4]; Surveyor [64.01 h]; Labor [64.01 h]; Plumber [81.48 h]; Excavator [20 h]; Excavator Operator [81.48 h] → SIC- Cost [38752.2]; Surveyor [64.01 h]; Labor [64.01 h]; Plumber [81.48 h]; Excavator [20 h]; Excavator Operator [81.48 h] |

| ID | Task | Start | Finish | Complete | Total float | Predecessors | Other |
| --- | --- | --- | --- | --- | --- | --- | --- |
| SDR-2-CON-SE-ZA-2260 | Excavation for GRP Pipe 200mm Diameter Section 2 |  |  |  |  |  | resources SIC- Cost [77504.4]; Surveyor [64.01 h]; Labor [64.01 h]; Plumber [81.48 h]; Excavator [20 h]; Excavator Operator [81.48 h] → SIC- Cost [38752.2]; Surveyor [64.01 h]; Labor [64.01 h]; Plumber [81.48 h]; Excavator [20 h]; Excavator Operator [81.48 h] |
| SDR-2-CON-SE-ZA-2320 | Sand bedding for GRP Pipe 200mm Diameter |  |  |  |  |  | resources SIC- Cost [77504.4]; Surveyor [64.01 h]; Labor [64.01 h]; Plumber [81.48 h]; Excavator [11.31 h]; Excavator Operator [12.07 h] → SIC- Cost [19376.1]; Surveyor [64.01 h]; Labor [64.01 h]; Plumber [81.48 h]; Excavator [11.31 h]; Excavator Operator [12.07 h] |
| SDR-2-CON-SE-ZA-2270 | 200 mm GRP Pipe Laying |  |  |  |  |  | resources SIC- Cost [232513]; Surveyor [96.01 h]; Labor [96.01 h]; Plumber [81.48 h]; Excavator [20 h]; Excavator Operator [81.48 h] → SIC- Cost [174385]; Surveyor [96.01 h]; Labor [96.01 h]; Plumber [81.48 h]; Excavator [20 h]; Excavator Operator [81.48 h] |
| SDR-2-CON-SE-ZA-2280 | Testing of 200 mm GRP Pipe. |  |  |  |  |  | resources SIC- Cost [77504.4]; Surveyor [12.8 h]; Labor [12.8 h]; Plumber [76.43 h]; Excavator [6 h]; Excavator Operator [95.54 h] → SIC- Cost [38752.2]; Surveyor [12.8 h]; Labor [12.8 h]; Plumber [76.43 h]; Excavator [6 h]; Excavator Operator [95.54 h] |
| SDR-2-CON-SE-ZA-2330 | Backfilling of 200 mm GRP Pipe. |  |  |  |  |  | resources SIC- Cost; Surveyor [12.8 h]; Labor [12.8 h]; Plumber [81.48 h]; Excavator [12.32 h]; Excavator Operator [81.48 h] → SIC- Cost [77504.4]; Surveyor [12.8 h]; Labor [12.8 h]; Plumber [81.48 h]; Excavator [12.32 h]; Excavator Operator [81.48 h] |
| 4 | **Manholes** |  | 2026-11-18 → 2027-03-03 (+105d) |  |  |  |  |
| SDR-2-CON-SE-ZA-2650 | Excavation for manhole. Section 1 |  |  |  |  |  | resources SIC- Cost [25529.9]; Surveyor [51.21 h]; Labor [51.21 h]; Plumber [248.39 h]; Excavator [14.89 h]; Excavator Operator [310.49 h] → SIC- Cost [19147.4]; Surveyor [51.21 h]; Labor [51.21 h]; Plumber [248.39 h]; Excavator [14.89 h]; Excavator Operator [310.49 h] |
| SDR-2-CON-SE-ZA-2290 | Excavation for manhole. Section 2 |  |  |  |  |  | resources SIC- Cost [25529.9]; Surveyor [51.21 h]; Labor [51.21 h]; Plumber [248.39 h]; Excavator [14.89 h]; Excavator Operator [310.49 h] → SIC- Cost [19147.4]; Surveyor [51.21 h]; Labor [51.21 h]; Plumber [248.39 h]; Excavator [14.89 h]; Excavator Operator [310.49 h] |
| SDR-2-CON-SE-ZA-2300 | Manhole Installation |  |  |  |  |  | resources SIC- Cost [204239]; Surveyor [76.81 h]; Labor [76.81 h]; Plumber [143.3 h]; Excavator [13.13 h]; Excavator Operator [179.13 h] → SIC- Cost [114884]; Surveyor [76.81 h]; Labor [76.81 h]; Plumber [143.3 h]; Excavator [13.13 h]; Excavator Operator [179.13 h] |
| 4 | **Testing** |  | 2026-11-18 → 2027-03-03 (+105d) |  |  |  |  |
| SDR-2-CON-SE-ZA-2310 | Testing |  | 2026-11-18 → 2027-03-03 (+105d) |  | 121d → 14d |  |  |
| SDR-2-CON-SE-ZA-2340 | Backfilling |  |  |  |  | SDR-2-CON-SE-ZA-2310 SS → SDR-2-CON-SE-ZA-2310 FS+3d | resources SIC- Cost [25529.9]; Surveyor [38.41 h]; Labor [38.41 h]; Plumber [18.99 h]; Excavator [11.95 h]; Excavator Operator [73.92 h] → SIC- Cost [51059.7]; Surveyor [38.41 h]; Labor [38.41 h]; Plumber [18.99 h]; Excavator [11.95 h]; Excavator Operator [73.92 h] |
| 6 | **LINE 54 AND LINE 55 ( PH2-G-MCG0 )** |  | 2026-11-18 → 2027-03-03 (+105d) |  |  |  |  |
| SDR-2-CON-SE-ZA-2660 | Excavation for GRP Pipe 200mm Diameter Section 1 |  |  |  |  |  | resources SIC- Cost [77504.4]; Surveyor [64.01 h]; Labor [64.01 h]; Plumber [81.48 h]; Excavator [14.89 h]; Excavator Operator [81.48 h] → SIC- Cost [38752.2]; Surveyor [64.01 h]; Labor [64.01 h]; Plumber [81.48 h]; Excavator [14.89 h]; Excavator Operator [81.48 h] |
| SDR-2-CON-SE-ZA-2360 | Excavation for GRP Pipe 200mm Diameter Section 2 |  |  |  |  |  | resources SIC- Cost [77504.4]; Surveyor [64.01 h]; Labor [64.01 h]; Plumber [81.48 h]; Excavator [14.89 h]; Excavator Operator [81.48 h] → SIC- Cost [38752.2]; Surveyor [64.01 h]; Labor [64.01 h]; Plumber [81.48 h]; Excavator [14.89 h]; Excavator Operator [81.48 h] |
| SDR-2-CON-SE-ZA-2420 | Sand bedding for GRP Pipe 200mm Diameter |  |  |  |  |  | resources SIC- Cost [77504.4]; Surveyor [64.01 h]; Labor [64.01 h]; Plumber [81.48 h]; Excavator [20 h]; Excavator Operator [20.11 h] → SIC- Cost [19376.1]; Surveyor [64.01 h]; Labor [64.01 h]; Plumber [81.48 h]; Excavator [20 h]; Excavator Operator [20.11 h] |
| SDR-2-CON-SE-ZA-2370 | 200 mm GRP Pipe Laying |  |  |  |  |  | resources SIC- Cost [232513]; Surveyor [67.9 h]; Labor [67.9 h]; Plumber [67.9 h]; Excavator [7.18 h]; Excavator Operator [67.9 h] → SIC- Cost [174385]; Surveyor [67.9 h]; Labor [67.9 h]; Plumber [67.9 h]; Excavator [7.18 h]; Excavator Operator [67.9 h] |
| SDR-2-CON-SE-ZA-2380 | Testing of 200 mm GRP Pipe. |  |  |  |  | SDR-2-CON-SE-ZA-2370, SDR-2-CON-RW-ZG-1060 SS → SDR-2-CON-SE-ZA-2370, SDR-2-CON-RW-ZG-1060 | resources SIC- Cost [77504.4]; Surveyor [12.8 h]; Labor [12.8 h]; Plumber [76.43 h]; Excavator [6 h]; Excavator Operator [95.54 h] → SIC- Cost [38752.2]; Surveyor [12.8 h]; Labor [12.8 h]; Plumber [76.43 h]; Excavator [6 h]; Excavator Operator [95.54 h] |
| 4 | **Manholes** |  | 2026-11-18 → 2027-03-03 (+105d) |  |  |  |  |
| SDR-2-CON-SE-ZA-2670 | Excavation for manhole. Section 1 |  |  |  |  |  | resources SIC- Cost [25529.9]; Surveyor [51.21 h]; Labor [51.21 h]; Plumber [229.29 h]; Excavator [14.89 h]; Excavator Operator [286.61 h] → SIC- Cost [19147.4]; Surveyor [51.21 h]; Labor [51.21 h]; Plumber [229.29 h]; Excavator [14.89 h]; Excavator Operator [286.61 h] |
| SDR-2-CON-SE-ZA-2390 | Excavation for manhole. Section 2 |  |  |  |  |  | resources SIC- Cost [25529.9]; Surveyor [51.21 h]; Labor [51.21 h]; Plumber [229.29 h]; Excavator [14.89 h]; Excavator Operator [286.61 h] → SIC- Cost [19147.4]; Surveyor [51.21 h]; Labor [51.21 h]; Plumber [229.29 h]; Excavator [14.89 h]; Excavator Operator [286.61 h] |
| SDR-2-CON-SE-ZA-2400 | Manhole Installation |  |  |  |  |  | resources SIC- Cost [204239]; Surveyor [76.81 h]; Labor [76.81 h]; Plumber [133.75 h]; Excavator [7.28 h]; Excavator Operator [167.19 h] → SIC- Cost [114884]; Surveyor [76.81 h]; Labor [76.81 h]; Plumber [133.75 h]; Excavator [7.28 h]; Excavator Operator [167.19 h] |
| 4 | **Testing** |  | 2026-11-18 → 2027-03-03 (+105d) |  |  |  |  |
| SDR-2-CON-SE-ZA-2410 | Testing |  | 2026-11-18 → 2027-03-03 (+105d) |  | 134d → 21d |  |  |
| SDR-2-CON-SE-ZA-2440 | Backfilling |  |  |  |  | SDR-2-CON-SE-ZA-2410 SS → SDR-2-CON-SE-ZA-2410 FS+9d | resources SIC- Cost [25529.9]; Surveyor [38.41 h]; Labor [1046.16 h]; Plumber [162.41 h]; Excavator [10.19 h]; Excavator Operator [203.01 h] → SIC- Cost [51059.7]; Surveyor [38.41 h]; Labor [1046.16 h]; Plumber [162.41 h]; Excavator [10.19 h]; Excavator Operator [203.01 h] |
| TSE | **TSE Network** |  | 2027-06-20 → 2027-10-30 (+132d) |  |  |  |  |
| ZA | **ZONE A** |  | 2027-05-30 → 2027-10-09 (+132d) |  |  |  |  |
| 1 | **TSE NETWORK IN ( PH2-COL-MC10 )** |  | 2027-05-12 → 2027-08-26 (+106d) |  |  |  |  |
| 6 | **Pipes Work** |  | 2027-05-12 → 2027-08-26 (+106d) |  |  |  |  |
| 1 | **Excavation** |  | 2026-12-20 → 2027-03-07 (+77d) |  |  |  |  |
| SDR-2-CON-TS-ZA-3200 | Excavation for TSE HDPE Pipes 225 mm Section 1 |  | 2026-11-26 → 2027-02-09 (+75d) | 65% → 75% | 23d → -40d | SDR-2-CON-SE-ZA-1000, SDR-2-PRO-ST-M-1010, SDR-2-PRO-ST-E-1060, SDR-2-CON-RW-ZG-1390 FF, SDR-2-CON-RW-ZA-2350 FF → SDR-2-CON-SE-ZA-1000, SDR-2-CON-RW-ZG-1390, SDR-2-CON-RW-ZA-2350, SDR-2-PRO-ST-M-1010, SDR-2-PRO-ST-E-1060 | resources SIC- Cost [43139.2]; Plumbing Helper [81.48 h]; Labor [51.21 h]; Plumber [81.48 h]; Excavator [12.45 h]; Excavator Operator [81.48 h] → SIC- Cost [21569.6]; Plumbing Helper [81.48 h]; Labor [51.21 h]; Plumber [81.48 h]; Excavator [12.45 h]; Excavator Operator [81.48 h] |
| SDR-2-CON-TS-ZA-1000 | Excavation for TSE HDPE Pipes 225 mm Section 2 | 2026-11-28 → 2027-02-11 (+75d) | 2026-12-20 → 2027-03-07 (+77d) |  | 10d → -37d | SDR-2-CON-RW-ZG-2300, SDR-2-CON-TS-ZA-3200 FF, SDR-2-CON-CC-ZG-1650 FF → SDR-2-CON-TS-ZA-3200 FS+1d, SDR-2-CON-CC-ZG-1650, SDR-2-CON-RW-ZG-2300, SDR-2-CON-RW-ZG-1110 | resources SIC- Cost [43139.2]; Plumbing Helper [81.48 h]; Labor [51.21 h]; Plumber [81.48 h]; Excavator [12.45 h]; Excavator Operator [81.48 h] → SIC- Cost [21569.6]; Plumbing Helper [81.48 h]; Labor [51.21 h]; Plumber [81.48 h]; Excavator [12.45 h]; Excavator Operator [81.48 h] |
| 6 | **bedding Works** | 2026-12-21 → 2027-03-17 (+86d) | 2027-01-13 → 2027-04-10 (+87d) |  |  |  |  |
| SDR-2-CON-TS-ZA-1900 | Sand bedding for TSE HDPE Pipes 225 mm | 2026-12-21 → 2027-03-17 (+86d) | 2027-01-13 → 2027-04-10 (+87d) |  | 46d → -33d | SDR-2-CON-RW-ZG-1210 FS+4d, SDR-2-CON-TS-ZA-1000 → SDR-2-CON-TS-ZA-1000 FS+4d, SDR-2-CON-RW-ZG-1210 FS+4d | resources SIC- Cost [43139.2]; Plumbing Helper [81.48 h]; Labor [51.21 h]; Plumber [67.9 h]; Excavator [6.35 h]; Excavator Operator [67.9 h] → SIC- Cost [10784.8]; Plumbing Helper [81.48 h]; Labor [51.21 h]; Plumber [67.9 h]; Excavator [6.35 h]; Excavator Operator [67.9 h] |
| 2 | **Pipes Laying** | 2027-03-14 → 2027-06-24 (+102d) | 2027-04-06 → 2027-07-18 (+103d) |  |  |  |  |
| SDR-2-CON-TS-ZA-1010 | Install TSE 225 mm HDPE Pipe | 2027-03-14 → 2027-06-24 (+102d) | 2027-04-06 → 2027-07-18 (+103d) |  | 1d → -92d | SDR-2-CON-ST-ZA-4200, SDR-2-CON-CC-ZA-1820 SS, SDR-2-CON-TS-ZA-1000, SDR-2-PRO-MAL-M-1010, SDR-2-CON-TS-ZA-1900 → SDR-2-CON-TS-ZA-1000, SDR-2-PRO-MAL-M-1010, SDR-2-CON-TS-ZA-1900, SDR-2-CON-ST-ZA-4200, SDR-2-CON-CC-ZA-1820 | resources SIC- Cost; Plumbing Helper [67.9 h]; Labor [96.01 h]; Plumber [67.9 h]; Excavator [263.64 h]; Excavator Operator [67.9 h] → SIC- Cost [97063.1]; Plumbing Helper [67.9 h]; Labor [96.01 h]; Plumber [67.9 h]; Excavator [263.64 h]; Excavator Operator [67.9 h] |
| 5 | **Testing** | 2027-04-07 → 2027-07-19 (+103d) | 2027-04-22 → 2027-08-03 (+103d) |  |  |  |  |
| SDR-2-CON-TS-ZA-1080 | Testing of TSE HDPE Pipe 225 mm. | 2027-04-07 → 2027-07-19 (+103d) | 2027-04-22 → 2027-08-03 (+103d) |  | 1d → -92d |  | resources SIC- Cost [32354.4]; Plumbing Helper [76.43 h]; Labor [1609.51 h]; Plumber [76.43 h]; Excavator [520 h]; Excavator Operator [95.54 h] → SIC- Cost [21569.6]; Plumbing Helper [76.43 h]; Labor [1609.51 h]; Plumber [76.43 h]; Excavator [520 h]; Excavator Operator [95.54 h] |
| 7 | **Backfilling** | 2027-04-19 → 2027-08-04 (+107d) | 2027-05-12 → 2027-08-26 (+106d) |  |  |  |  |
| SDR-2-CON-TS-ZA-1910 | Backfilling of TSE HDPE Pipe 225 mm. | 2027-04-19 → 2027-08-04 (+107d) | 2027-05-12 → 2027-08-26 (+106d) |  | 1d → -92d | SDR-2-CON-TS-ZA-1080 SS+10d → SDR-2-CON-TS-ZA-1080 | resources SIC- Cost [32354.4]; Plumbing Helper [210.18 h]; Labor [1039.75 h]; Plumber [150.23 h]; Excavator [15.37 h]; Excavator Operator [262.72 h] → SIC- Cost [43139.2]; Plumbing Helper [210.18 h]; Labor [1039.75 h]; Plumber [150.23 h]; Excavator [15.37 h]; Excavator Operator [262.72 h] |
| 3 | **Valve Chambers & Valves** | 2026-11-30 → 2027-02-01 (+63d) | 2027-04-20 → 2027-07-21 (+92d) |  |  |  |  |
| 3 | **Excavation** | 2026-11-30 → 2027-02-01 (+63d) | 2027-01-14 → 2027-03-24 (+69d) |  |  |  |  |
| SDR-2-CON-TS-ZA-3210 | Excavation for Valve Chambers Section 1 | 2026-11-30 → 2027-02-01 (+63d) | 2026-12-22 → 2027-02-24 (+64d) |  | 20d → -40d |  | resources SIC- Cost [43105.5]; Plumbing Helper [267.5 h]; Labor [44.81 h]; Plumber [267.5 h]; Excavator [14.1 h]; Excavator Operator [334.38 h] → SIC- Cost [5842.24]; Plumbing Helper [267.5 h]; Labor [44.81 h]; Plumber [267.5 h]; Excavator [14.1 h]; Excavator Operator [334.38 h] |
| SDR-2-CON-TS-ZA-1040 | Excavation for Valve Chambers Section 2 | 2026-12-23 → 2027-02-25 (+64d) | 2027-01-14 → 2027-03-24 (+69d) |  | 20d → -40d |  | resources SIC- Cost [43105.5]; Plumbing Helper [267.5 h]; Labor [44.81 h]; Plumber [267.5 h]; Excavator [14.1 h]; Excavator Operator [334.38 h] → SIC- Cost [5842.06]; Plumbing Helper [267.5 h]; Labor [44.81 h]; Plumber [267.5 h]; Excavator [14.1 h]; Excavator Operator [334.38 h] |
| 1 | **bedding Works** | 2027-01-16 → 2027-04-18 (+92d) | 2027-02-08 → 2027-05-11 (+92d) |  |  |  |  |
| SDR-2-CON-TS-ZA-1020 | Sand bedding for Valve Chambers | 2027-01-16 → 2027-04-18 (+92d) | 2027-02-08 → 2027-05-11 (+92d) |  | 20d → -60d | SDR-2-CON-RW-ZG-1060, SDR-2-PRO-MAL-M-1020, SDR-2-CON-TS-ZA-1040 → SDR-2-PRO-MAL-M-1020, SDR-2-CON-TS-ZA-1040, SDR-2-CON-TE-ZA-1840, SDR-2-CON-RW-ZG-1060 | resources SIC- Cost [9271.88]; Plumbing Helper [143.3 h]; Labor [51.21 h]; Plumber [143.3 h]; Excavator [5.9 h]; Excavator Operator [179.13 h] → SIC- Cost [7789.66]; Plumbing Helper [143.3 h]; Labor [51.21 h]; Plumber [143.3 h]; Excavator [5.9 h]; Excavator Operator [179.13 h] |
| 4 | **Install Chambers & Valves** | 2027-02-09 → 2027-05-12 (+92d) | 2027-03-06 → 2027-06-10 (+96d) |  |  |  |  |
| SDR-2-CON-TS-ZA-1050 | Valve Chambers & Valves Installation | 2027-02-09 → 2027-05-12 (+92d) | 2027-03-06 → 2027-06-10 (+96d) |  | 20d → -60d |  | resources SIC- Cost [13106.5]; Plumbing Helper [171.96 h]; Labor [5059.73 h]; Plumber [171.96 h]; Excavator [12 h]; Excavator Operator [214.96 h] → SIC- Cost [35053.4]; Plumbing Helper [171.96 h]; Labor [5059.73 h]; Plumber [171.96 h]; Excavator [12 h]; Excavator Operator [214.96 h] |
| 5 | **Testing** | 2027-03-07 → 2027-06-12 (+97d) | 2027-03-27 → 2027-06-27 (+92d) |  |  |  |  |
| SDR-2-CON-TS-ZA-1060 | Testing Chambers & Valves Installation | 2027-03-07 → 2027-06-12 (+97d) | 2027-03-27 → 2027-06-27 (+92d) |  | 20d → -60d |  | resources SIC- Cost [1806.63]; Plumbing Helper [76.43 h]; Labor [10279.8 h]; Plumber [76.43 h]; Excavator [12 h]; Excavator Operator [95.54 h] → SIC- Cost [7789.66]; Plumbing Helper [76.43 h]; Labor [10279.8 h]; Plumber [76.43 h]; Excavator [12 h]; Excavator Operator [95.54 h] |
| 6 | **Backfilling** | 2027-03-28 → 2027-06-28 (+92d) | 2027-04-20 → 2027-07-21 (+92d) |  |  |  |  |
| SDR-2-CON-TS-ZA-1070 | Backfilling Chambers & Valves Installation | 2027-03-28 → 2027-06-28 (+92d) | 2027-04-20 → 2027-07-21 (+92d) |  | 20d → -60d |  | resources SIC- Cost [1334.15]; Plumbing Helper [191.07 h]; Labor [44.81 h]; Plumber [191.07 h]; Excavator [12 h]; Excavator Operator [158.22 h] → SIC- Cost [15579.3]; Plumbing Helper [191.07 h]; Labor [44.81 h]; Plumber [191.07 h]; Excavator [12 h]; Excavator Operator [158.22 h] |
| 2 | **TSE NETWORK IN ( PH2-COL-MC20 )** |  | 2027-05-13 → 2027-07-01 (+49d) |  |  |  |  |
| 6 | **Pipes Work** |  | 2027-05-09 → 2027-05-29 (+20d) |  |  |  |  |
| 1 | **Excavation** |  | 2027-02-10 → 2027-03-20 (+38d) |  |  |  |  |
| SDR-2-CON-TS-ZA-3220 | Excavation for TSE HDPE Pipes 225 mm Section 1 |  | 2027-01-18 → 2027-02-18 (+31d) |  | 4d → -43d |  | resources SIC- Cost [43139.2]; Plumbing Helper [81.48 h]; Labor [51.21 h]; Plumber [81.48 h]; Excavator [12 h]; Excavator Operator [81.48 h] → SIC- Cost [21569.6]; Plumbing Helper [81.48 h]; Labor [51.21 h]; Plumber [81.48 h]; Excavator [12 h]; Excavator Operator [81.48 h] |
| SDR-2-CON-TS-ZA-2200 | Excavation for TSE HDPE Pipes 225 mm Section 2 | 2027-01-19 → 2027-02-20 (+32d) | 2027-02-10 → 2027-03-20 (+38d) |  | 4d → -14d |  | resources SIC- Cost [43139.2]; Plumbing Helper [81.48 h]; Labor [51.21 h]; Plumber [81.48 h]; Excavator [5 h]; Excavator Operator [81.48 h] → SIC- Cost [21569.6]; Plumbing Helper [81.48 h]; Labor [51.21 h]; Plumber [81.48 h]; Excavator [5 h]; Excavator Operator [81.48 h] |
| 6 | **bedding Works** | 2027-02-11 → 2027-03-21 (+38d) | 2027-03-08 → 2027-04-13 (+36d) |  |  |  |  |
| SDR-2-CON-TS-ZA-2280 | Sand bedding for TSE HDPE Pipes 225 mm | 2027-02-11 → 2027-03-21 (+38d) | 2027-03-08 → 2027-04-13 (+36d) |  | 4d → -14d |  | resources SIC- Cost [43139.2]; Plumbing Helper [67.9 h]; Labor [51.21 h]; Plumber [67.9 h]; Excavator [14.6 h]; Excavator Operator [67.9 h] → SIC- Cost [10784.8]; Plumbing Helper [67.9 h]; Labor [51.21 h]; Plumber [67.9 h]; Excavator [14.6 h]; Excavator Operator [67.9 h] |
| 2 | **Pipes Laying** |  | 2027-04-06 → 2027-04-20 (+14d) |  |  |  |  |
| SDR-2-CON-TS-ZA-2210 | Install TSE 225 mm HDPE Pipe |  | 2027-04-06 → 2027-04-20 (+14d) |  | 4d → -14d |  | resources SIC- Cost; Plumbing Helper [81.48 h]; Labor [96.01 h]; Plumber [81.48 h]; Excavator [12 h]; Excavator Operator [81.48 h] → SIC- Cost [97063.1]; Plumbing Helper [81.48 h]; Labor [96.01 h]; Plumber [81.48 h]; Excavator [12 h]; Excavator Operator [81.48 h] |
| 5 | **Testing** | 2027-04-07 → 2027-04-21 (+14d) | 2027-04-18 → 2027-05-02 (+14d) |  |  |  |  |
| SDR-2-CON-TS-ZA-2270 | Testing of TSE HDPE Pipe 225 mm. | 2027-04-07 → 2027-04-21 (+14d) | 2027-04-18 → 2027-05-02 (+14d) |  | 4d → -14d |  | resources SIC- Cost [32354.4]; Plumbing Helper [76.43 h]; Labor [32 h]; Plumber [76.43 h]; Excavator [12 h]; Excavator Operator [95.54 h] → SIC- Cost [21569.6]; Plumbing Helper [76.43 h]; Labor [32 h]; Plumber [76.43 h]; Excavator [12 h]; Excavator Operator [95.54 h] |
| 7 | **Backfilling** | 2027-04-19 → 2027-05-03 (+14d) | 2027-05-09 → 2027-05-29 (+20d) |  |  |  |  |
| SDR-2-CON-TS-ZA-2290 | Backfilling of TSE HDPE Pipe 225 mm. | 2027-04-19 → 2027-05-03 (+14d) | 2027-05-09 → 2027-05-29 (+20d) |  | 4d → -14d |  | resources SIC- Cost [32354.4]; Plumbing Helper [59.24 h]; Labor [32 h]; Plumber [59.24 h]; Excavator [12 h]; Excavator Operator [63.79 h] → SIC- Cost [43139.2]; Plumbing Helper [59.24 h]; Labor [32 h]; Plumber [59.24 h]; Excavator [12 h]; Excavator Operator [63.79 h] |
| 3 | **Valve Chambers & Valves** | 2026-12-27 → 2027-02-13 (+48d) | 2027-05-13 → 2027-07-01 (+49d) |  |  |  |  |
| 3 | **Excavation** | 2026-12-27 → 2027-02-13 (+48d) | 2027-02-10 → 2027-04-05 (+54d) |  |  |  |  |
| SDR-2-CON-TS-ZA-3230 | Excavation for Valve Chambers Section 1 | 2026-12-27 → 2027-02-13 (+48d) | 2027-01-18 → 2027-03-08 (+49d) |  | 4d → -43d |  | resources SIC- Cost [43105.5]; Plumbing Helper [124.2 h]; Labor [44.81 h]; Plumber [124.2 h]; Excavator [12 h]; Excavator Operator [155.25 h] → SIC- Cost [5842.24]; Plumbing Helper [124.2 h]; Labor [44.81 h]; Plumber [124.2 h]; Excavator [12 h]; Excavator Operator [155.25 h] |
| SDR-2-CON-TS-ZA-2230 | Excavation for Valve Chambers Section 2 | 2027-01-19 → 2027-03-14 (+54d) | 2027-02-10 → 2027-04-05 (+54d) |  | 4d → -43d |  | resources SIC- Cost [43105.5]; Plumbing Helper [124.2 h]; Labor [44.81 h]; Plumber [124.2 h]; Excavator [5 h]; Excavator Operator [155.25 h] → SIC- Cost [5842.24]; Plumbing Helper [124.2 h]; Labor [44.81 h]; Plumber [124.2 h]; Excavator [5 h]; Excavator Operator [155.25 h] |
| 1 | **bedding Works** | 2027-02-16 → 2027-04-06 (+49d) | 2027-03-17 → 2027-04-29 (+43d) |  |  |  |  |

| ID | Task | Start | Finish | Duration | Complete | Total float | Predecessors | Other |
| --- | --- | --- | --- | --- | --- | --- | --- | --- |
| SDR-2-CON-TS-ZA-2220 | Sand bedding for Valve Chambers | 2027-02-16 → 2027-04-06 (+49d) | 2027-03-17 → 2027-04-29 (+43d) |  |  | 0d → -43d | SDR-2-CON-ST-ZA-6000, SDR-2-CON-ST-ZA-5850, SDR-2-CON-TS-ZA-2230 → SDR-2-CON-TS-ZA-2230, SDR-2-CON-ST-ZA-6000, SDR-2-CON-ST-ZA-5930, SDR-2-CON-ST-ZA-5850 | resources SIC- Cost [9271.88]; Plumbing Helper [133.75 h]; Labor [51.21 h]; Plumber [133.75 h]; Excavator [12 h]; Excavator Operator [167.19 h] → SIC- Cost [7789.66]; Plumbing Helper [133.75 h]; Labor [51.21 h]; Plumber [133.75 h]; Excavator [12 h]; Excavator Operator [167.19 h] |
| 4 | **Install Chambers & Valves** | 2027-03-18 → 2027-05-01 (+44d) | 2027-04-11 → 2027-05-30 (+49d) |  |  |  |  |  |
| SDR-2-CON-TS-ZA-2240 | Valve Chambers & Valves Installation | 2027-03-18 → 2027-05-01 (+44d) | 2027-04-11 → 2027-05-30 (+49d) |  |  | 0d → -43d |  | resources SIC- Cost [13106.5]; Plumbing Helper [152.86 h]; Labor [44.81 h]; Plumber [152.86 h]; Excavator [12 h]; Excavator Operator [191.07 h] → SIC- Cost [35053.4]; Plumbing Helper [152.86 h]; Labor [44.81 h]; Plumber [152.86 h]; Excavator [12 h]; Excavator Operator [191.07 h] |
| 5 | **Testing** | 2027-04-12 → 2027-05-31 (+49d) | 2027-04-22 → 2027-06-10 (+49d) |  |  |  |  |  |
| SDR-2-CON-TS-ZA-2250 | Testing Chambers & Valves Installation | 2027-04-12 → 2027-05-31 (+49d) | 2027-04-22 → 2027-06-10 (+49d) |  |  | 0d → -43d |  | resources SIC- Cost [1806.63]; Plumbing Helper [76.43 h]; Labor [44.81 h]; Plumber [76.43 h]; Excavator [12 h]; Excavator Operator [95.54 h] → SIC- Cost [7789.66]; Plumbing Helper [76.43 h]; Labor [44.81 h]; Plumber [76.43 h]; Excavator [12 h]; Excavator Operator [95.54 h] |
| 6 | **Backfilling** | 2027-04-24 → 2027-06-12 (+49d) | 2027-05-13 → 2027-07-01 (+49d) |  |  |  |  |  |
| SDR-2-CON-TS-ZA-2260 | Backfilling Chambers & Valves Installation | 2027-04-24 → 2027-06-12 (+49d) | 2027-05-13 → 2027-07-01 (+49d) |  |  | 0d → -43d |  | resources SIC- Cost [1334.15]; Plumbing Helper [50.75 h]; Labor [44.81 h]; Plumber [50.75 h]; Excavator [8 h]; Excavator Operator [67.52 h] → SIC- Cost [15579.3]; Plumbing Helper [50.75 h]; Labor [44.81 h]; Plumber [50.75 h]; Excavator [8 h]; Excavator Operator [67.52 h] |
| 3 | **TSE NETWORK IN ( PH2-A-MCC0 )** |  | 2027-05-10 → 2027-07-04 (+55d) |  |  |  |  |  |
| 6 | **Pipes Work** |  | 2027-02-13 → 2027-02-08 (-5d) |  |  |  |  |  |
| 1 | **Excavation** |  | 2026-11-09 → 2026-12-26 (+47d) |  |  |  |  |  |
| SDR-2-CON-TS-ZA-1180 | Excavation for TSE HDPE Pipes 125 mm Section 2 | 2026-10-04 A → 2026-09-24 A (-10d) | 2026-11-09 → 2026-10-01 A (-39d) |  | 75% → 100% | 45.3d → none | SDR-2-CON-SE-ZA-1460 FS+1d → SDR-2-CON-TS-ZA-3240 FS+3d, SDR-2-CON-RW-ZG-1060 | resources SIC- Cost [31428.1]; Plumbing Helper [81.48 h]; Labor [51.21 h]; Plumber [81.48 h]; Excavator [14.27 h]; Excavator Operator [81.48 h] → SIC- Cost [15714]; Plumbing Helper [81.48 h]; Labor [51.21 h]; Plumber [81.48 h]; Excavator [5 h]; Excavator Operator [81.48 h] |
| SDR-2-CON-TS-ZA-3240 | Excavation for TSE HDPE Pipes 125 mm Section 1 | 2026-09-24 A → 2026-10-04 A (+10d) | 2026-10-01 A → 2026-12-26 (+86d) |  | 100% → 75% | none → 4.3d | SDR-2-CON-TS-ZA-1180 FS+3d, SDR-2-CON-RW-ZG-1060 → SDR-2-CON-SE-ZA-1460 FS+1d | resources SIC- Cost [31428.1]; Plumbing Helper [81.48 h]; Labor [51.21 h]; Plumber [81.48 h]; Excavator [5 h]; Excavator Operator [81.48 h] → SIC- Cost [15714]; Plumbing Helper [81.48 h]; Labor [51.21 h]; Plumber [81.48 h]; Excavator [14.27 h]; Excavator Operator [81.48 h] |
| 3 | **bedding Works** |  | 2026-12-23 → 2027-01-05 (+13d) |  |  |  |  |  |
| SDR-2-CON-TS-ZA-1920 | Sand bedding for TSE HDPE Pipes 125 mm |  | 2026-12-23 → 2027-01-05 (+13d) |  |  | 72d → 70d | SDR-2-CON-TS-ZA-3240 → SDR-2-CON-TS-ZA-1180 | resources SIC- Cost [31428.1]; Plumbing Helper [81.48 h]; Labor [51.21 h]; Plumber [81.48 h]; Excavator [6 h]; Excavator Operator [81.48 h] → SIC- Cost [7857.01]; Plumbing Helper [81.48 h]; Labor [51.21 h]; Plumber [81.48 h]; Excavator [6 h]; Excavator Operator [81.48 h] |
| 2 | **Pipes Laying** |  | 2027-01-17 → 2027-01-12 (-5d) |  |  |  |  |  |
| SDR-2-CON-TS-ZA-1190 | Install TSE 125 mm HDPE Pipe |  | 2027-01-17 → 2027-01-12 (-5d) |  |  | 72d → 70d | SDR-2-CON-TS-ZA-3240, SDR-2-CON-TS-ZA-1920 → SDR-2-CON-TS-ZA-1180, SDR-2-CON-TS-ZA-1920 | resources SIC- Cost; Plumbing Helper [81.48 h]; Labor [96.01 h]; Plumber [81.48 h]; Excavator [11.45 h]; Excavator Operator [81.48 h] → SIC- Cost [70713.1]; Plumbing Helper [81.48 h]; Labor [96.01 h]; Plumber [81.48 h]; Excavator [11.45 h]; Excavator Operator [81.48 h] |
| 5 | **Testing** | 2027-01-18 → 2027-01-13 (-5d) | 2027-01-28 → 2027-01-24 (-4d) |  |  |  |  |  |
| SDR-2-CON-TS-ZA-1260 | Testing of TSE HDPE Pipe 125 mm. | 2027-01-18 → 2027-01-13 (-5d) | 2027-01-28 → 2027-01-24 (-4d) |  |  | 72d → 70d |  | resources SIC- Cost [23571]; Plumbing Helper [76.43 h]; Labor [25.6 h]; Plumber [76.43 h]; Excavator [9.8 h]; Excavator Operator [95.54 h] → SIC- Cost [15714]; Plumbing Helper [76.43 h]; Labor [25.6 h]; Plumber [76.43 h]; Excavator [9.8 h]; Excavator Operator [95.54 h] |
| 4 | **Backfilling** | 2027-01-30 → 2027-01-25 (-5d) | 2027-02-13 → 2027-02-08 (-5d) |  |  |  |  |  |
| SDR-2-CON-TS-ZA-1930 | Backfilling of TSE HDPE Pipe 125 mm. | 2027-01-30 → 2027-01-25 (-5d) | 2027-02-13 → 2027-02-08 (-5d) |  |  | 72d → 70d |  | resources SIC- Cost [23571]; Plumbing Helper [40.13 h]; Labor [25.6 h]; Plumber [40.13 h]; Excavator [8 h]; Excavator Operator [67.52 h] → SIC- Cost [31428.1]; Plumbing Helper [40.13 h]; Labor [25.6 h]; Plumber [40.13 h]; Excavator [8 h]; Excavator Operator [67.52 h] |
| 3 | **Valve Chambers & Valves** | 2026-11-09 → 2026-12-20 (+41d) | 2027-05-10 → 2027-07-04 (+55d) |  |  |  |  |  |
| 3 | **Excavation** | 2026-11-09 → 2026-12-20 (+41d) | 2026-12-23 → 2027-02-02 (+41d) |  |  |  |  |  |
| SDR-2-CON-TS-ZA-3250 | Excavation for Valve Chambers Section 1 | 2026-11-09 → 2026-12-20 (+41d) | 2026-12-02 → 2027-01-12 (+41d) |  |  | 45.3d → 4.3d | SDR-2-CON-TS-ZA-1180 SS → SDR-2-CON-TS-ZA-3240 SS | resources SIC- Cost [43105.5]; Plumbing Helper [210.18 h]; Labor [44.81 h]; Plumber [210.18 h]; Excavator [12 h]; Excavator Operator [262.72 h] → SIC- Cost [5842.24]; Plumbing Helper [210.18 h]; Labor [44.81 h]; Plumber [210.18 h]; Excavator [12 h]; Excavator Operator [262.72 h] |
| SDR-2-CON-TS-ZA-2010 | Excavation for Valve Chambers Section 2 | 2026-12-03 → 2027-01-13 (+41d) | 2026-12-23 → 2027-02-02 (+41d) |  |  | 45.3d → 4.3d |  | resources SIC- Cost [43105.5]; Plumbing Helper [210.18 h]; Labor [44.81 h]; Plumber [210.18 h]; Excavator [5 h]; Excavator Operator [262.72 h] → SIC- Cost [5842.24]; Plumbing Helper [210.18 h]; Labor [44.81 h]; Plumber [210.18 h]; Excavator [5 h]; Excavator Operator [262.72 h] |
| 1 | **bedding Works** | 2026-12-24 → 2027-02-03 (+41d) | 2027-01-17 → 2027-02-28 (+42d) |  |  |  |  |  |
| SDR-2-CON-TS-ZA-2000 | Sand bedding for Valve Chambers | 2026-12-24 → 2027-02-03 (+41d) | 2027-01-17 → 2027-02-28 (+42d) |  |  | 45.3d → 4.3d |  | resources SIC- Cost [9271.88]; Plumbing Helper [105.09 h]; Labor [51.21 h]; Plumber [105.09 h]; Excavator [12 h]; Excavator Operator [131.36 h] → SIC- Cost [7789.66]; Plumbing Helper [105.09 h]; Labor [51.21 h]; Plumber [105.09 h]; Excavator [12 h]; Excavator Operator [131.36 h] |
| 4 | **Install Chambers & Valves** | 2027-03-14 → 2027-05-02 (+49d) | 2027-04-06 → 2027-05-31 (+55d) |  |  |  |  |  |
| SDR-2-CON-TS-ZA-2020 | Valve Chambers & Valves Installation | 2027-03-14 → 2027-05-02 (+49d) | 2027-04-06 → 2027-05-31 (+55d) |  |  | 3.3d → -44.7d |  | resources SIC- Cost [13106.5]; Plumbing Helper [124.2 h]; Labor [44.81 h]; Plumber [124.2 h]; Excavator [17.6 h]; Excavator Operator [155.25 h] → SIC- Cost [35053.4]; Plumbing Helper [124.2 h]; Labor [44.81 h]; Plumber [124.2 h]; Excavator [17.6 h]; Excavator Operator [155.25 h] |
| 5 | **Testing** | 2027-04-07 → 2027-06-01 (+55d) | 2027-04-14 → 2027-06-08 (+55d) |  |  |  |  |  |
| SDR-2-CON-TS-ZA-2030 | Testing Chambers & Valves Installation | 2027-04-07 → 2027-06-01 (+55d) | 2027-04-14 → 2027-06-08 (+55d) |  |  | 3.3d → -44.7d |  | resources SIC- Cost [1806.63]; Plumbing Helper [66.88 h]; Labor [44.81 h]; Plumber [66.88 h]; Excavator [6 h]; Excavator Operator [83.59 h] → SIC- Cost [7789.66]; Plumbing Helper [66.88 h]; Labor [44.81 h]; Plumber [66.88 h]; Excavator [6 h]; Excavator Operator [83.59 h] |
| 6 | **Backfilling** | 2027-04-15 → 2027-06-09 (+55d) | 2027-05-10 → 2027-07-04 (+55d) |  |  |  |  |  |
| SDR-2-CON-TS-ZA-2040 | Backfilling Chambers & Valves Installation | 2027-04-15 → 2027-06-09 (+55d) | 2027-05-10 → 2027-07-04 (+55d) |  |  | 3.3d → -44.7d |  | resources SIC- Cost [1334.15]; Plumbing Helper [73.39 h]; Labor [44.81 h]; Plumber [73.39 h]; Excavator [8.04 h]; Excavator Operator [61.93 h] → SIC- Cost [15579.3]; Plumbing Helper [73.39 h]; Labor [44.81 h]; Plumber [73.39 h]; Excavator [8.04 h]; Excavator Operator [61.93 h] |
| 4 | **TSE NETWORK IN ( PH2-A-MCD0 )** |  | 2027-05-15 → 2027-07-08 (+54d) |  |  |  |  |  |
| 6 | **Pipes Work** |  | 2027-05-13 → 2027-06-20 (+38d) |  |  |  |  |  |
| 1 | **Excavation** |  | 2026-11-09 → 2027-01-26 (+78d) |  |  |  |  |  |
| SDR-2-CON-TS-ZA-1270 | Excavation for TSE HDPE Pipes 90 mm Section 2 | 2026-10-04 A → 2026-09-07 A (-27d) | 2026-11-09 → 2026-10-01 A (-39d) | 20d → 19d | 50% → 100% | 55d → none | SDR-2-CON-SE-ZA-1560 → SDR-2-CON-TS-ZA-3260 | resources SIC- Cost; Plumbing Helper [81.48 h]; Labor [51.21 h]; Plumber [81.48 h]; Excavator [16.05 h]; Excavator Operator [81.48 h] → SIC- Cost [3488.37]; Plumbing Helper [81.48 h]; Labor [51.21 h]; Plumber [81.48 h]; Excavator [5 h]; Excavator Operator [81.48 h] |
| SDR-2-CON-TS-ZA-3260 | Excavation for TSE HDPE Pipes 90 mm Section 1 | 2026-09-07 A → 2026-10-04 A (+27d) | 2026-10-01 A → 2027-01-26 (+117d) | 19d → 20d | 100% → 50% | none → -22d | SDR-2-CON-TS-ZA-1270 → SDR-2-CON-SE-ZA-1560 | resources SIC- Cost; Plumbing Helper [81.48 h]; Labor [51.21 h]; Plumber [81.48 h]; Excavator [5 h]; Excavator Operator [81.48 h] → SIC- Cost [3488.37]; Plumbing Helper [81.48 h]; Labor [51.21 h]; Plumber [81.48 h]; Excavator [16.05 h]; Excavator Operator [81.48 h] |
| 3 | **bedding Works** |  | 2026-11-29 → 2027-02-02 (+65d) |  |  |  |  |  |
| SDR-2-CON-TS-ZA-1940 | Sand bedding for TSE HDPE Pipes 90 mm |  | 2026-11-29 → 2027-02-02 (+65d) |  |  | 84d → 37d | SDR-2-CON-TS-ZA-3260 → SDR-2-CON-TS-ZA-1270 | resources SIC- Cost; Plumbing Helper [81.48 h]; Labor [51.21 h]; Plumber [81.48 h]; Excavator [6 h]; Excavator Operator [81.48 h] → SIC- Cost [1744.18]; Plumbing Helper [81.48 h]; Labor [51.21 h]; Plumber [81.48 h]; Excavator [6 h]; Excavator Operator [81.48 h] |
| 2 | **Pipes Laying** |  | 2027-04-06 → 2027-05-08 (+32d) |  |  |  |  |  |
| SDR-2-CON-TS-ZA-1280 | Install TSE 90 mm HDPE Pipe |  | 2027-04-06 → 2027-05-08 (+32d) |  |  | 0d → -33d |  | resources SIC- Cost; Plumbing Helper [81.48 h]; Labor [96.01 h]; Plumber [81.48 h]; Excavator [12 h]; Excavator Operator [81.48 h] → SIC- Cost [15697.6]; Plumbing Helper [81.48 h]; Labor [96.01 h]; Plumber [81.48 h]; Excavator [12 h]; Excavator Operator [81.48 h] |
| 5 | **Testing** | 2027-04-07 → 2027-05-09 (+32d) | 2027-04-19 → 2027-05-26 (+37d) |  |  |  |  |  |
| SDR-2-CON-TS-ZA-1350 | Testing of TSE HDPE Pipe 90 mm. | 2027-04-07 → 2027-05-09 (+32d) | 2027-04-19 → 2027-05-26 (+37d) |  |  | 0d → -33d |  | resources SIC- Cost [5232.55]; Plumbing Helper [76.43 h]; Labor [19.2 h]; Plumber [76.43 h]; Excavator [6 h]; Excavator Operator [95.54 h] → SIC- Cost [3488.37]; Plumbing Helper [76.43 h]; Labor [19.2 h]; Plumber [76.43 h]; Excavator [6 h]; Excavator Operator [95.54 h] |
| 4 | **Backfilling** | 2027-04-20 → 2027-05-27 (+37d) | 2027-05-13 → 2027-06-20 (+38d) |  |  |  |  |  |
| SDR-2-CON-TS-ZA-1950 | Backfilling of TSE HDPE Pipe 90 mm. | 2027-04-20 → 2027-05-27 (+37d) | 2027-05-13 → 2027-06-20 (+38d) |  |  | 0d → -33d |  | resources SIC- Cost [5232.55]; Plumbing Helper [85.63 h]; Labor [1026.96 h]; Plumber [191.07 h]; Excavator [12.57 h]; Excavator Operator [77.6 h] → SIC- Cost [6976.73]; Plumbing Helper [85.63 h]; Labor [1026.96 h]; Plumber [191.07 h]; Excavator [12.57 h]; Excavator Operator [77.6 h] |
| 3 | **Valve Chambers & Valves** | 2026-11-09 → 2027-01-20 (+72d) | 2027-05-15 → 2027-07-08 (+54d) |  |  |  |  |  |
| 3 | **Excavation** | 2026-11-09 → 2027-01-20 (+72d) | 2026-12-23 → 2027-03-07 (+74d) |  |  |  |  |  |
| SDR-2-CON-TS-ZA-3270 | Excavation for Valve Chambers Section 1 | 2026-11-09 → 2027-01-20 (+72d) | 2026-12-01 → 2027-02-11 (+72d) |  |  | 55d → -22d | SDR-2-CON-TS-ZA-1270 SS → SDR-2-CON-TS-ZA-3260 SS | resources SIC- Cost [43105.5]; Plumbing Helper [229.29 h]; Labor [44.81 h]; Plumber [229.29 h]; Excavator [18 h]; Excavator Operator [286.61 h] → SIC- Cost [5842.24]; Plumbing Helper [229.29 h]; Labor [44.81 h]; Plumber [229.29 h]; Excavator [18 h]; Excavator Operator [286.61 h] |
| SDR-2-CON-TS-ZA-2060 | Excavation for Valve Chambers Section 2 | 2026-12-02 → 2027-02-13 (+73d) | 2026-12-23 → 2027-03-07 (+74d) |  |  | 55d → -22d |  | resources SIC- Cost [43105.5]; Plumbing Helper [229.29 h]; Labor [44.81 h]; Plumber [229.29 h]; Excavator [5 h]; Excavator Operator [286.61 h] → SIC- Cost [5842.24]; Plumbing Helper [229.29 h]; Labor [44.81 h]; Plumber [229.29 h]; Excavator [5 h]; Excavator Operator [286.61 h] |
| 1 | **bedding Works** | 2026-12-24 → 2027-03-08 (+74d) | 2027-01-11 → 2027-03-30 (+78d) |  |  |  |  |  |
| SDR-2-CON-TS-ZA-2050 | Sand bedding for Valve Chambers | 2026-12-24 → 2027-03-08 (+74d) | 2027-01-11 → 2027-03-30 (+78d) |  |  | 55d → -22d |  | resources SIC- Cost [9271.88]; Plumbing Helper [105.09 h]; Labor [51.21 h]; Plumber [105.09 h]; Excavator [6 h]; Excavator Operator [131.36 h] → SIC- Cost [7789.66]; Plumbing Helper [105.09 h]; Labor [51.21 h]; Plumber [105.09 h]; Excavator [6 h]; Excavator Operator [131.36 h] |
| 4 | **Install Chambers & Valves** | 2027-03-14 → 2027-05-02 (+49d) | 2027-04-06 → 2027-05-31 (+55d) |  |  |  |  |  |
| SDR-2-CON-TS-ZA-2070 | Valve Chambers & Valves Installation | 2027-03-14 → 2027-05-02 (+49d) | 2027-04-06 → 2027-05-31 (+55d) |  |  | 8d → -49d |  | resources SIC- Cost [13106.5]; Plumbing Helper [143.3 h]; Labor [44.81 h]; Plumber [143.3 h]; Excavator [12 h]; Excavator Operator [179.13 h] → SIC- Cost [35053.4]; Plumbing Helper [143.3 h]; Labor [44.81 h]; Plumber [143.3 h]; Excavator [12 h]; Excavator Operator [179.13 h] |
| 5 | **Testing** | 2027-04-07 → 2027-06-01 (+55d) | 2027-04-22 → 2027-06-16 (+55d) |  |  |  |  |  |
| SDR-2-CON-TS-ZA-2080 | Testing Chambers & Valves Installation | 2027-04-07 → 2027-06-01 (+55d) | 2027-04-22 → 2027-06-16 (+55d) |  |  | 8d → -49d |  | resources SIC- Cost [1806.63]; Plumbing Helper [76.43 h]; Labor [44.81 h]; Plumber [76.43 h]; Excavator [12 h]; Excavator Operator [95.54 h] → SIC- Cost [7789.66]; Plumbing Helper [76.43 h]; Labor [44.81 h]; Plumber [76.43 h]; Excavator [12 h]; Excavator Operator [95.54 h] |
| 6 | **Backfilling** | 2027-04-24 → 2027-06-17 (+54d) | 2027-05-15 → 2027-07-08 (+54d) |  |  |  |  |  |
| SDR-2-CON-TS-ZA-2090 | Backfilling Chambers & Valves Installation | 2027-04-24 → 2027-06-17 (+54d) | 2027-05-15 → 2027-07-08 (+54d) |  |  | 8d → -49d |  | resources SIC- Cost [1334.15]; Plumbing Helper [65.78 h]; Labor [44.81 h]; Plumber [65.78 h]; Excavator [8 h]; Excavator Operator [61.93 h] → SIC- Cost [15579.3]; Plumbing Helper [65.78 h]; Labor [44.81 h]; Plumber [65.78 h]; Excavator [8 h]; Excavator Operator [61.93 h] |
| 5 | **TSE NETWORK IN ( PH2-A-MCE0 )** |  | 2027-05-30 → 2027-08-31 (+93d) |  |  |  |  |  |
| 6 | **Pipes Work** |  | 2027-05-30 → 2027-06-16 (+17d) |  |  |  |  |  |
| SDR-2-CON-TS-ZA-3280 | Excavation for TSE HDPE Pipes 90 mm Section 1 |  |  |  |  |  |  | resources SIC- Cost; Plumbing Helper [67.9 h]; Labor [51.21 h]; Plumber [67.9 h]; Excavator [12 h]; Excavator Operator [67.9 h] → SIC- Cost [3488.37]; Plumbing Helper [67.9 h]; Labor [51.21 h]; Plumber [67.9 h]; Excavator [12 h]; Excavator Operator [67.9 h] |
| SDR-2-CON-TS-ZA-2600 | Excavation for TSE HDPE Pipes 90 mm Section 2 |  |  |  |  |  |  | resources SIC- Cost; Plumbing Helper [67.9 h]; Labor [51.21 h]; Plumber [67.9 h]; Excavator [5 h]; Excavator Operator [67.9 h] → SIC- Cost [3488.37]; Plumbing Helper [67.9 h]; Labor [51.21 h]; Plumber [67.9 h]; Excavator [5 h]; Excavator Operator [67.9 h] |
| 3 | **bedding Works** |  | 2027-04-05 → 2027-04-29 (+24d) |  |  |  |  |  |
| SDR-2-CON-TS-ZA-2630 | Sand bedding for TSE HDPE Pipes 90 mm |  | 2027-04-05 → 2027-04-29 (+24d) |  |  | 18d → -30d |  | resources SIC- Cost; Plumbing Helper [67.9 h]; Labor [51.21 h]; Plumber [67.9 h]; Excavator [15.17 h]; Excavator Operator [67.9 h] → SIC- Cost [1744.18]; Plumbing Helper [67.9 h]; Labor [51.21 h]; Plumber [67.9 h]; Excavator [15.17 h]; Excavator Operator [67.9 h] |
| 2 | **Pipes Laying** |  | 2027-04-26 → 2027-05-06 (+10d) |  |  |  |  |  |
| SDR-2-CON-TS-ZA-2610 | Install TSE 90 mm HDPE Pipe |  | 2027-04-26 → 2027-05-06 (+10d) |  |  | 18d → -30d |  | resources SIC- Cost [22674.4]; Plumbing Helper [191.07 h]; Labor [96.01 h]; Plumber [191.07 h]; Excavator [16 h]; Excavator Operator [67.91 h] → SIC- Cost [15697.6]; Plumbing Helper [191.07 h]; Labor [96.01 h]; Plumber [191.07 h]; Excavator [16 h]; Excavator Operator [67.91 h] |
| 5 | **Testing** | 2027-04-27 → 2027-05-08 (+11d) | 2027-05-08 → 2027-05-24 (+16d) |  |  |  |  |  |
| SDR-2-CON-TS-ZA-2620 | Testing of TSE HDPE Pipe 90 mm. | 2027-04-27 → 2027-05-08 (+11d) | 2027-05-08 → 2027-05-24 (+16d) |  |  | 18d → -30d |  | resources SIC- Cost [5232.55]; Plumbing Helper [57.32 h]; Labor [19.2 h]; Plumber [57.32 h]; Excavator [12 h]; Excavator Operator [71.65 h] → SIC- Cost [3488.37]; Plumbing Helper [57.32 h]; Labor [19.2 h]; Plumber [57.32 h]; Excavator [12 h]; Excavator Operator [71.65 h] |
| 4 | **Backfilling** | 2027-05-02 → 2027-05-25 (+23d) | 2027-05-30 → 2027-06-16 (+17d) |  |  |  |  |  |
| SDR-2-CON-TS-ZA-2640 | Backfilling of TSE HDPE Pipe 90 mm. | 2027-05-02 → 2027-05-25 (+23d) | 2027-05-30 → 2027-06-16 (+17d) |  |  | 18d → -30d | SDR-2-CON-TS-ZA-2620 SS+4d → SDR-2-CON-TS-ZA-2620 | resources SIC- Cost [5232.55]; Plumbing Helper [63.06 h]; Labor [19.2 h]; Plumber [63.06 h]; Excavator [8 h]; Excavator Operator [70.14 h] → SIC- Cost [6976.73]; Plumbing Helper [63.06 h]; Labor [19.2 h]; Plumber [63.06 h]; Excavator [8 h]; Excavator Operator [70.14 h] |
| 3 | **Valve Chambers & Valves** | 2026-11-09 → 2027-04-24 (+166d) | 2027-03-20 → 2027-08-31 (+164d) |  |  |  |  |  |

| ID | Task | Start | Finish | Complete | Total float | Predecessors | Other |
| --- | --- | --- | --- | --- | --- | --- | --- |
| 3 | **Excavation** | 2026-11-09 → 2027-04-24 (+166d) | 2026-12-24 → 2027-06-14 (+172d) |  |  |  |  |
| SDR-2-CON-TS-ZA-3290 | Excavation for Valve Chambers Section 1 | 2026-11-09 → 2027-04-24 (+166d) | 2026-12-02 → 2027-05-23 (+172d) |  | 47d → -96d |  | resources SIC- Cost [43105.5]; Plumbing Helper [171.96 h]; Labor [44.81 h]; Plumber [171.96 h]; Excavator [12 h]; Excavator Operator [214.96 h] → SIC- Cost [5842.24]; Plumbing Helper [171.96 h]; Labor [44.81 h]; Plumber [171.96 h]; Excavator [12 h]; Excavator Operator [214.96 h] |
| SDR-2-CON-TS-ZA-2660 | Excavation for Valve Chambers Section 2 | 2026-12-03 → 2027-05-24 (+172d) | 2026-12-24 → 2027-06-14 (+172d) |  | 47d → -96d |  | resources SIC- Cost [43105.5]; Plumbing Helper [171.96 h]; Labor [44.81 h]; Plumber [171.96 h]; Excavator [5 h]; Excavator Operator [214.96 h] → SIC- Cost [5842.24]; Plumbing Helper [171.96 h]; Labor [44.81 h]; Plumber [171.96 h]; Excavator [5 h]; Excavator Operator [214.96 h] |
| 1 | **bedding Works** | 2026-12-26 → 2027-06-15 (+171d) | 2027-01-17 → 2027-07-07 (+171d) |  |  |  |  |
| SDR-2-CON-TS-ZA-2650 | Sand bedding for Valve Chambers | 2026-12-26 → 2027-06-15 (+171d) | 2027-01-17 → 2027-07-07 (+171d) |  | 47d → -96d |  | resources SIC- Cost [9271.88]; Plumbing Helper [76.43 h]; Labor [51.21 h]; Plumber [76.43 h]; Excavator [12 h]; Excavator Operator [95.54 h] → SIC- Cost [7789.66]; Plumbing Helper [76.43 h]; Labor [51.21 h]; Plumber [76.43 h]; Excavator [12 h]; Excavator Operator [95.54 h] |
| 4 | **Install Chambers & Valves** | 2027-01-18 → 2027-07-08 (+171d) | 2027-02-10 → 2027-08-01 (+172d) |  |  |  |  |
| SDR-2-CON-TS-ZA-2670 | Valve Chambers & Valves Installation | 2027-01-18 → 2027-07-08 (+171d) | 2027-02-10 → 2027-08-01 (+172d) |  | 47d → -96d |  | resources SIC- Cost [13106.5]; Plumbing Helper [114.64 h]; Labor [44.81 h]; Plumber [114.64 h]; Excavator [12 h]; Excavator Operator [143.3 h] → SIC- Cost [35053.4]; Plumbing Helper [114.64 h]; Labor [44.81 h]; Plumber [114.64 h]; Excavator [12 h]; Excavator Operator [143.3 h] |
| 5 | **Testing** | 2027-02-11 → 2027-08-02 (+172d) | 2027-02-18 → 2027-08-08 (+171d) |  |  |  |  |
| SDR-2-CON-TS-ZA-2680 | Testing Chambers & Valves Installation | 2027-02-11 → 2027-08-02 (+172d) | 2027-02-18 → 2027-08-08 (+171d) |  | 47d → -96d |  | resources SIC- Cost [1806.63]; Plumbing Helper [76.43 h]; Labor [44.81 h]; Plumber [76.43 h]; Excavator [12 h]; Excavator Operator [95.54 h] → SIC- Cost [7789.66]; Plumbing Helper [76.43 h]; Labor [44.81 h]; Plumber [76.43 h]; Excavator [12 h]; Excavator Operator [95.54 h] |
| 6 | **Backfilling** | 2027-02-20 → 2027-08-09 (+170d) | 2027-03-20 → 2027-08-31 (+164d) |  |  |  |  |
| SDR-2-CON-TS-ZA-2690 | Backfilling Chambers & Valves Installation | 2027-02-20 → 2027-08-09 (+170d) | 2027-03-20 → 2027-08-31 (+164d) |  | 47d → -96d |  | resources SIC- Cost [1334.15]; Plumbing Helper [46.82 h]; Labor [44.81 h]; Plumber [46.82 h]; Excavator [12 h]; Excavator Operator [76.49 h] → SIC- Cost [15579.3]; Plumbing Helper [46.82 h]; Labor [44.81 h]; Plumber [46.82 h]; Excavator [12 h]; Excavator Operator [76.49 h] |
| 6 | **TSE NETWORK IN ( PH2-A-MCF0 )** |  | 2027-04-28 → 2027-08-30 (+124d) |  |  |  |  |
| 6 | **Pipes Work** |  | 2027-01-30 → 2027-04-21 (+81d) |  |  |  |  |
| SDR-2-CON-TS-ZA-3300 | Excavation for TSE HDPE Pipes 90 mm Section 1 |  |  |  |  |  | resources SIC- Cost; Plumbing Helper [81.48 h]; Labor [51.21 h]; Plumber [81.48 h]; Excavator [12 h]; Excavator Operator [81.48 h] → SIC- Cost [3488.37]; Plumbing Helper [81.48 h]; Labor [51.21 h]; Plumber [81.48 h]; Excavator [12 h]; Excavator Operator [81.48 h] |
| SDR-2-CON-TS-ZA-2700 | Excavation for TSE HDPE Pipes 90 mm Section 2 |  |  |  |  |  | resources SIC- Cost; Plumbing Helper [81.48 h]; Labor [51.21 h]; Plumber [81.48 h]; Excavator [5.26 h]; Excavator Operator [81.48 h] → SIC- Cost [3488.37]; Plumbing Helper [81.48 h]; Labor [51.21 h]; Plumber [81.48 h]; Excavator [5.26 h]; Excavator Operator [81.48 h] |
| 3 | **bedding Works** |  | 2026-12-01 → 2027-03-03 (+92d) |  |  |  |  |
| SDR-2-CON-TS-ZA-2730 | Sand bedding for TSE HDPE Pipes 90 mm |  | 2026-12-01 → 2027-03-03 (+92d) |  | 84d → 13d |  | resources SIC- Cost [6976.73]; Plumbing Helper [67.9 h]; Labor [51.21 h]; Plumber [67.9 h]; Excavator [9.82 h]; Excavator Operator [67.9 h] → SIC- Cost [1744.18]; Plumbing Helper [67.9 h]; Labor [51.21 h]; Plumber [67.9 h]; Excavator [9.82 h]; Excavator Operator [67.9 h] |
| 2 | **Pipes Laying** |  | 2026-12-23 → 2027-03-15 (+82d) |  |  |  |  |
| SDR-2-CON-TS-ZA-2710 | Install TSE 90 mm HDPE Pipe |  | 2026-12-23 → 2027-03-15 (+82d) |  | 84d → 13d |  | resources SIC- Cost [22674.4]; Plumbing Helper [171.96 h]; Labor [96.01 h]; Plumber [171.96 h]; Excavator [12 h]; Excavator Operator [214.96 h] → SIC- Cost [15697.6]; Plumbing Helper [171.96 h]; Labor [96.01 h]; Plumber [171.96 h]; Excavator [12 h]; Excavator Operator [214.96 h] |
| 5 | **Testing** | 2026-12-24 → 2027-03-16 (+82d) | 2027-01-05 → 2027-03-28 (+82d) |  |  |  |  |
| SDR-2-CON-TS-ZA-2720 | Testing of TSE HDPE Pipe 90 mm. | 2026-12-24 → 2027-03-16 (+82d) | 2027-01-05 → 2027-03-28 (+82d) |  | 84d → 13d |  | resources SIC- Cost [5232.55]; Plumbing Helper [76.43 h]; Labor [19.2 h]; Plumber [76.43 h]; Excavator [6 h]; Excavator Operator [95.54 h] → SIC- Cost [3488.37]; Plumbing Helper [76.43 h]; Labor [19.2 h]; Plumber [76.43 h]; Excavator [6 h]; Excavator Operator [95.54 h] |
| 4 | **Backfilling** | 2027-01-06 → 2027-03-29 (+82d) | 2027-01-30 → 2027-04-21 (+81d) |  |  |  |  |
| SDR-2-CON-TS-ZA-2740 | Backfilling of TSE HDPE Pipe 90 mm. | 2027-01-06 → 2027-03-29 (+82d) | 2027-01-30 → 2027-04-21 (+81d) |  | 84d → 13d |  | resources SIC- Cost [5232.55]; Plumbing Helper [78.8 h]; Labor [19.2 h]; Plumber [78.8 h]; Excavator [8.94 h]; Excavator Operator [72.01 h] → SIC- Cost [6976.73]; Plumbing Helper [78.8 h]; Labor [19.2 h]; Plumber [78.8 h]; Excavator [8.94 h]; Excavator Operator [72.01 h] |
| 3 | **Valve Chambers & Valves** | 2026-11-09 → 2027-02-25 (+108d) | 2027-04-28 → 2027-08-30 (+124d) |  |  |  |  |
| 3 | **Excavation** | 2026-11-09 → 2027-02-25 (+108d) | 2027-01-30 → 2027-04-17 (+77d) |  |  |  |  |
| SDR-2-CON-TS-ZA-3310 | Excavation for Valve Chambers Section 1 | 2026-11-09 → 2027-02-25 (+108d) | 2026-12-01 → 2027-03-24 (+113d) |  | 65d → -54d |  | resources SIC- Cost [43105.5]; Plumbing Helper [191.07 h]; Labor [44.81 h]; Plumber [191.07 h]; Excavator [12 h]; Excavator Operator [238.84 h] → SIC- Cost [5842.24]; Plumbing Helper [191.07 h]; Labor [44.81 h]; Plumber [191.07 h]; Excavator [12 h]; Excavator Operator [238.84 h] |
| SDR-2-CON-TS-ZA-2760 | Excavation for Valve Chambers Section 2 | 2027-01-07 → 2027-03-25 (+77d) | 2027-01-30 → 2027-04-17 (+77d) |  | 34d → -54d |  | resources SIC- Cost [43105.5]; Plumbing Helper [191.07 h]; Labor [44.81 h]; Plumber [191.07 h]; Excavator [5.24 h]; Excavator Operator [238.84 h] → SIC- Cost [5842.24]; Plumbing Helper [191.07 h]; Labor [44.81 h]; Plumber [191.07 h]; Excavator [5.24 h]; Excavator Operator [238.84 h] |
| 1 | **bedding Works** | 2027-01-31 → 2027-04-18 (+77d) | 2027-02-20 → 2027-05-08 (+77d) |  |  |  |  |
| SDR-2-CON-TS-ZA-2750 | Sand bedding for Valve Chambers | 2027-01-31 → 2027-04-18 (+77d) | 2027-02-20 → 2027-05-08 (+77d) |  | 34d → -54d |  | resources SIC- Cost [9271.88]; Plumbing Helper [76.43 h]; Labor [51.21 h]; Plumber [76.43 h]; Excavator [16 h]; Excavator Operator [95.54 h] → SIC- Cost [7789.66]; Plumbing Helper [76.43 h]; Labor [51.21 h]; Plumber [76.43 h]; Excavator [16 h]; Excavator Operator [95.54 h] |
| 4 | **Install Chambers & Valves** | 2027-02-21 → 2027-05-09 (+77d) | 2027-03-22 → 2027-06-07 (+77d) |  |  |  |  |
| SDR-2-CON-TS-ZA-2770 | Valve Chambers & Valves Installation | 2027-02-21 → 2027-05-09 (+77d) | 2027-03-22 → 2027-06-07 (+77d) |  | 34d → -54d |  | resources SIC- Cost [13106.5]; Plumbing Helper [114.64 h]; Labor [44.81 h]; Plumber [114.64 h]; Excavator [12 h]; Excavator Operator [143.3 h] → SIC- Cost [35053.4]; Plumbing Helper [114.64 h]; Labor [44.81 h]; Plumber [114.64 h]; Excavator [12 h]; Excavator Operator [143.3 h] |
| 5 | **Testing** | 2027-03-23 → 2027-06-08 (+77d) | 2027-04-04 → 2027-06-20 (+77d) |  |  |  |  |
| SDR-2-CON-TS-ZA-2780 | Testing Chambers & Valves Installation | 2027-03-23 → 2027-06-08 (+77d) | 2027-04-04 → 2027-06-20 (+77d) |  | 34d → -54d |  | resources SIC- Cost [1806.63]; Plumbing Helper [66.88 h]; Labor [44.81 h]; Plumber [66.88 h]; Excavator [14 h]; Excavator Operator [83.59 h] → SIC- Cost [7789.66]; Plumbing Helper [66.88 h]; Labor [44.81 h]; Plumber [66.88 h]; Excavator [14 h]; Excavator Operator [83.59 h] |
| 6 | **Backfilling** | 2027-04-05 → 2027-08-07 (+124d) | 2027-04-28 → 2027-08-30 (+124d) |  |  |  |  |
| SDR-2-CON-TS-ZA-2790 | Backfilling Chambers & Valves Installation | 2027-04-05 → 2027-08-07 (+124d) | 2027-04-28 → 2027-08-30 (+124d) |  | 40d → -95d | SDR-2-CON-TS-ZA-2780 → SDR-2-CON-TS-ZA-2780, SDR-2-CLO-AS-E-1010 | resources SIC- Cost [1334.15]; Plumbing Helper [71.98 h]; Labor [44.81 h]; Plumber [71.98 h]; Excavator [9.08 h]; Excavator Operator [76.49 h] → SIC- Cost [15579.3]; Plumbing Helper [71.98 h]; Labor [44.81 h]; Plumber [71.98 h]; Excavator [9.08 h]; Excavator Operator [76.49 h] |
| 7 | **TSE NETWORK IN ( PH2-A-MCG0 )** | 2026-11-09 → 2026-11-05 (-4d) | 2027-04-03 → 2027-09-06 (+156d) |  |  |  |  |
| 6 | **Pipes Work** | 2026-11-09 → 2026-11-05 (-4d) | 2027-03-23 → 2027-06-09 (+78d) |  |  |  |  |
| 1 | **Excavation** | 2026-11-09 → 2026-11-08 (-1d) | 2026-12-24 → 2027-04-01 (+98d) |  |  |  |  |
| SDR-2-CON-TS-ZA-3320 | Excavation for TSE HDPE Pipes 90 mm Section 1 | 2026-11-09 → 2026-11-08 A (-1d) | 2026-12-01 → 2027-03-16 (+105d) | 0% → 95% | 18d → -63d |  | resources SIC- Cost [6976.73]; Plumbing Helper [81.48 h]; Labor [51.21 h]; Plumber [81.48 h]; Excavator [22.55 h]; Excavator Operator [81.48 h] → SIC- Cost [3488.37]; Plumbing Helper [81.48 h]; Labor [51.21 h]; Plumber [81.48 h]; Excavator [22.55 h]; Excavator Operator [81.48 h] |
| SDR-2-CON-TS-ZA-2800 | Excavation for TSE HDPE Pipes 90 mm Section 2 | 2026-12-02 → 2026-11-09 A (-23d) | 2026-12-24 → 2027-04-01 (+98d) | 0% → 95% | 36d → -32d |  | resources SIC- Cost [6976.73]; Plumbing Helper [81.48 h]; Labor [51.21 h]; Plumber [81.48 h]; Excavator [22.55 h]; Excavator Operator [81.48 h] → SIC- Cost [3488.37]; Plumbing Helper [81.48 h]; Labor [51.21 h]; Plumber [81.48 h]; Excavator [22.55 h]; Excavator Operator [81.48 h] |
| 3 | **bedding Works** | 2026-12-26 → 2026-11-05 (-51d) | 2027-01-14 → 2027-04-12 (+88d) |  |  |  |  |
| SDR-2-CON-TS-ZA-2830 | Sand bedding for TSE HDPE Pipes 90 mm | 2026-12-26 → 2026-11-05 A (-51d) | 2027-01-14 → 2027-04-12 (+88d) | 0% → 90% | 36d → -32d |  | resources SIC- Cost [6976.73]; Plumbing Helper [95.54 h]; Labor [51.21 h]; Plumber [95.54 h]; Excavator [6 h]; Excavator Operator [119.42 h] → SIC- Cost [1744.18]; Plumbing Helper [95.54 h]; Labor [51.21 h]; Plumber [95.54 h]; Excavator [6 h]; Excavator Operator [119.42 h] |
| 2 | **Pipes Laying** | 2027-01-16 → 2026-11-07 (-70d) | 2027-02-08 → 2027-04-27 (+78d) |  |  |  |  |
| SDR-2-CON-TS-ZA-2810 | Install TSE 90 mm HDPE Pipe | 2027-01-16 → 2026-11-07 A (-70d) | 2027-02-08 → 2027-04-27 (+78d) | 0% → 70% | 36d → -32d |  | resources SIC- Cost; Plumbing Helper [81.48 h]; Labor [96.01 h]; Plumber [81.48 h]; Excavator [20 h]; Excavator Operator [81.48 h] → SIC- Cost [15697.6]; Plumbing Helper [81.48 h]; Labor [96.01 h]; Plumber [81.48 h]; Excavator [20 h]; Excavator Operator [81.48 h] |
| 5 | **Testing** | 2027-02-09 → 2027-04-28 (+78d) | 2027-02-24 → 2027-05-12 (+77d) |  |  |  |  |
| SDR-2-CON-TS-ZA-2820 | Testing of TSE HDPE Pipe 90 mm. | 2027-02-09 → 2027-04-28 (+78d) | 2027-02-24 → 2027-05-12 (+77d) |  | 36d → -32d |  | resources SIC- Cost [5232.55]; Plumbing Helper [57.32 h]; Labor [19.2 h]; Plumber [57.32 h]; Excavator [13.64 h]; Excavator Operator [71.65 h] → SIC- Cost [3488.37]; Plumbing Helper [57.32 h]; Labor [19.2 h]; Plumber [57.32 h]; Excavator [13.64 h]; Excavator Operator [71.65 h] |
| 4 | **Backfilling** | 2027-02-25 → 2027-05-13 (+77d) | 2027-03-23 → 2027-06-09 (+78d) |  |  |  |  |
| SDR-2-CON-TS-ZA-2840 | Backfilling of TSE HDPE Pipe 90 mm. | 2027-02-25 → 2027-05-13 (+77d) | 2027-03-23 → 2027-06-09 (+78d) |  | 36d → -32d |  | resources SIC- Cost [5232.55]; Plumbing Helper [181.52 h]; Labor [19.2 h]; Plumber [181.52 h]; Excavator [12 h]; Excavator Operator [226.9 h] → SIC- Cost [6976.73]; Plumbing Helper [181.52 h]; Labor [19.2 h]; Plumber [181.52 h]; Excavator [12 h]; Excavator Operator [226.9 h] |
| 3 | **Valve Chambers & Valves** | 2026-11-09 → 2027-02-25 (+108d) | 2027-04-03 → 2027-09-06 (+156d) |  |  |  |  |
| 3 | **Excavation** | 2026-11-09 → 2027-02-25 (+108d) | 2026-12-24 → 2027-04-17 (+114d) |  |  |  |  |
| SDR-2-CON-TS-ZA-3330 | Excavation for Valve Chambers Section 1 | 2026-11-09 → 2027-02-25 (+108d) | 2026-12-01 → 2027-03-24 (+113d) |  | 35d → -63d |  | resources SIC- Cost [43105.5]; Plumbing Helper [210.18 h]; Labor [44.81 h]; Plumber [210.18 h]; Excavator [12 h]; Excavator Operator [262.72 h] → SIC- Cost [5842.24]; Plumbing Helper [210.18 h]; Labor [44.81 h]; Plumber [210.18 h]; Excavator [12 h]; Excavator Operator [262.72 h] |
| SDR-2-CON-TS-ZA-2860 | Excavation for Valve Chambers Section 2 | 2026-12-02 → 2027-03-25 (+113d) | 2026-12-24 → 2027-04-17 (+114d) |  | 35d → -63d |  | resources SIC- Cost [43105.5]; Plumbing Helper [210.18 h]; Labor [44.81 h]; Plumber [210.18 h]; Excavator [12 h]; Excavator Operator [262.72 h] → SIC- Cost [5842.24]; Plumbing Helper [210.18 h]; Labor [44.81 h]; Plumber [210.18 h]; Excavator [12 h]; Excavator Operator [262.72 h] |
| 1 | **bedding Works** | 2026-12-26 → 2027-06-07 (+163d) | 2027-01-16 → 2027-06-28 (+163d) |  |  |  |  |
| SDR-2-CON-TS-ZA-2850 | Sand bedding for Valve Chambers | 2026-12-26 → 2027-06-07 (+163d) | 2027-01-16 → 2027-06-28 (+163d) |  | 35d → -101d | SDR-2-CON-TS-ZA-2860 → SDR-2-CON-TS-ZA-2860, SDR-2-CON-SL-ZA-2780 | resources SIC- Cost [9271.88]; Plumbing Helper [76.43 h]; Labor [51.21 h]; Plumber [76.43 h]; Excavator [5 h]; Excavator Operator [95.54 h] → SIC- Cost [7789.66]; Plumbing Helper [76.43 h]; Labor [51.21 h]; Plumber [76.43 h]; Excavator [5 h]; Excavator Operator [95.54 h] |
| 4 | **Install Chambers & Valves** | 2027-01-17 → 2027-06-29 (+163d) | 2027-02-09 → 2027-07-22 (+163d) |  |  |  |  |
| SDR-2-CON-TS-ZA-2870 | Valve Chambers & Valves Installation | 2027-01-17 → 2027-06-29 (+163d) | 2027-02-09 → 2027-07-22 (+163d) |  | 35d → -101d |  | resources SIC- Cost [13106.5]; Plumbing Helper [143.3 h]; Labor [44.81 h]; Plumber [143.3 h]; Excavator [12 h]; Excavator Operator [179.13 h] → SIC- Cost [35053.4]; Plumbing Helper [143.3 h]; Labor [44.81 h]; Plumber [143.3 h]; Excavator [12 h]; Excavator Operator [179.13 h] |
| 5 | **Testing** | 2027-02-10 → 2027-07-24 (+164d) | 2027-03-06 → 2027-08-14 (+161d) |  |  |  |  |
| SDR-2-CON-TS-ZA-2880 | Testing Chambers & Valves Installation | 2027-02-10 → 2027-07-24 (+164d) | 2027-03-06 → 2027-08-14 (+161d) |  | 35d → -101d |  | resources SIC- Cost [1806.63]; Plumbing Helper [66.88 h]; Labor [44.81 h]; Plumber [66.88 h]; Excavator [12 h]; Excavator Operator [83.59 h] → SIC- Cost [7789.66]; Plumbing Helper [66.88 h]; Labor [44.81 h]; Plumber [66.88 h]; Excavator [12 h]; Excavator Operator [83.59 h] |
| 6 | **Backfilling** | 2027-03-07 → 2027-08-15 (+161d) | 2027-04-03 → 2027-09-06 (+156d) |  |  |  |  |
| SDR-2-CON-TS-ZA-2890 | Backfilling Chambers & Valves Installation | 2027-03-07 → 2027-08-15 (+161d) | 2027-04-03 → 2027-09-06 (+156d) |  | 35d → -101d |  | resources SIC- Cost [1334.15]; Plumbing Helper [100.32 h]; Labor [44.81 h]; Plumber [100.32 h]; Excavator [8.97 h]; Excavator Operator [94.03 h] → SIC- Cost [15579.3]; Plumbing Helper [100.32 h]; Labor [44.81 h]; Plumber [100.32 h]; Excavator [8.97 h]; Excavator Operator [94.03 h] |
| 8 | **TSE NETWORK IN ( PH2-A-MCH0 )** | 2026-11-09 → 2027-05-27 (+199d) | 2027-05-12 → 2027-10-09 (+150d) |  |  |  |  |
| 6 | **Pipes Work** | 2026-11-09 → 2027-05-27 (+199d) | 2027-05-06 → 2027-10-03 (+150d) |  |  |  |  |
| 1 | **Excavation** | 2026-11-09 → 2027-05-27 (+199d) | 2027-02-06 → 2027-07-12 (+156d) |  |  |  |  |
| SDR-2-CON-TS-ZA-3340 | Excavation for TSE HDPE Pipes 250 mm Section 1 | 2026-11-09 → 2027-05-27 (+199d) | 2026-12-01 → 2027-06-19 (+200d) |  | 38d → -129d | SDR-2-CON-SE-ZA-1960 → SDR-2-CON-SE-ZA-1960, SDR-2-CON-SL-ZA-2860, SDR-2-CON-SL-ZA-2840 | resources SIC- Cost [32483.7]; Plumbing Helper [38.41 h]; Labor [38.41 h]; Plumber [38.41 h]; Excavator [12 h]; Excavator Operator [67.9 h] → SIC- Cost [16244.5]; Plumbing Helper [38.41 h]; Labor [38.41 h]; Plumber [38.41 h]; Excavator [12 h]; Excavator Operator [67.9 h] |
| SDR-2-CON-TS-ZA-1630 | Excavation for TSE HDPE Pipes 250 mm Section 2 | 2027-01-14 → 2027-06-20 (+157d) | 2027-02-06 → 2027-07-12 (+156d) |  | 1d → -129d | SDR-2-CON-TS-ZA-3340, SDR-2-CON-MV-ZA-1220, SDR-2-CON-MV-ZA-1180, SDR-2-CON-SL-ZA-2940 → SDR-2-CON-TS-ZA-3340, SDR-2-CON-MV-ZA-1220, SDR-2-CON-MV-ZA-1180, SDR-2-CON-SL-ZA-2820, SDR-2-CON-SL-ZA-2940 | resources SIC- Cost [32483.7]; Plumbing Helper [38.41 h]; Labor [38.41 h]; Plumber [38.41 h]; Excavator [12 h]; Excavator Operator [67.9 h] → SIC- Cost [16244.5]; Plumbing Helper [38.41 h]; Labor [38.41 h]; Plumber [38.41 h]; Excavator [12 h]; Excavator Operator [67.9 h] |
| 7 | **bedding Works** | 2027-02-07 → 2027-07-13 (+156d) | 2027-03-03 → 2027-08-05 (+155d) |  |  |  |  |
| SDR-2-CON-TS-ZA-1960 | Sand bedding for TSE HDPE Pipes 250 mm | 2027-02-07 → 2027-07-13 (+156d) | 2027-03-03 → 2027-08-05 (+155d) |  | 6d → -124d |  | resources SIC- Cost [32483.7]; Plumbing Helper [38.41 h]; Labor [38.41 h]; Plumber [38.41 h]; Excavator [6.82 h]; Excavator Operator [81.48 h] → SIC- Cost [8122.24]; Plumbing Helper [38.41 h]; Labor [38.41 h]; Plumber [38.41 h]; Excavator [6.82 h]; Excavator Operator [81.48 h] |
| 2 | **Pipes Laying** | 2027-03-04 → 2027-08-06 (+155d) | 2027-04-01 → 2027-08-29 (+150d) |  |  |  |  |
| SDR-2-CON-TS-ZA-1640 | Install TSE 250 mm HDPE Pipe | 2027-03-04 → 2027-08-06 (+155d) | 2027-04-01 → 2027-08-29 (+150d) |  | 6d → -124d |  | resources SIC- Cost; Plumbing Helper [76.81 h]; Labor [76.81 h]; Plumber [76.81 h]; Excavator [12 h]; Excavator Operator [81.48 h] → SIC- Cost [73100.1]; Plumbing Helper [76.81 h]; Labor [76.81 h]; Plumber [76.81 h]; Excavator [12 h]; Excavator Operator [81.48 h] |
| 5 | **Testing** | 2027-04-03 → 2027-08-30 (+149d) | 2027-04-20 → 2027-09-16 (+149d) |  |  |  |  |

| ID | Task | Start | Finish | Complete | Total float | Predecessors | Other |
| --- | --- | --- | --- | --- | --- | --- | --- |
| SDR-2-CON-TS-ZA-1710 | Testing of TSE HDPE Pipe 250 mm. | 2027-04-03 → 2027-08-30 (+149d) | 2027-04-20 → 2027-09-16 (+149d) |  | 6d → -124d |  | resources SIC- Cost [24362.8]; Plumbing Helper [19.2 h]; Labor [19.2 h]; Plumber [19.2 h]; Excavator [12 h]; Excavator Operator [95.54 h] → SIC- Cost [16244.5]; Plumbing Helper [19.2 h]; Labor [19.2 h]; Plumber [19.2 h]; Excavator [12 h]; Excavator Operator [95.54 h] |
| 8 | **Backfilling** | 2027-04-21 → 2027-09-18 (+150d) | 2027-05-06 → 2027-10-03 (+150d) |  |  |  |  |
| SDR-2-CON-TS-ZA-1970 | Backfilling of TSE HDPE Pipe 250 mm. | 2027-04-21 → 2027-09-18 (+150d) | 2027-05-06 → 2027-10-03 (+150d) |  | 6d → -124d |  | resources SIC- Cost [24362.8]; Plumbing Helper [19.2 h]; Labor [19.2 h]; Plumber [19.2 h]; Excavator [8 h]; Excavator Operator [76.84 h] → SIC- Cost [32488.9]; Plumbing Helper [19.2 h]; Labor [19.2 h]; Plumber [19.2 h]; Excavator [8 h]; Excavator Operator [76.84 h] |
| 3 | **Valve Chambers & Valves** | 2026-11-09 → 2027-05-27 (+199d) | 2027-05-12 → 2027-10-09 (+150d) |  |  |  |  |
| 3 | **Excavation** | 2026-11-09 → 2027-05-27 (+199d) | 2027-02-06 → 2027-07-12 (+156d) |  |  |  |  |
| SDR-2-CON-TS-ZA-3350 | Excavation for Valve Chambers Section 1 | 2026-11-09 → 2027-05-27 (+199d) | 2026-12-01 → 2027-06-19 (+200d) |  | 38d → -129d |  | resources SIC- Cost [43105.5]; Plumbing Helper [277.05 h]; Labor [44.81 h]; Plumber [277.05 h]; Excavator [16 h]; Excavator Operator [346.32 h] → SIC- Cost [5842.24]; Plumbing Helper [277.05 h]; Labor [44.81 h]; Plumber [277.05 h]; Excavator [16 h]; Excavator Operator [346.32 h] |
| SDR-2-CON-TS-ZA-2110 | Excavation for Valve Chambers Section 2 | 2027-01-14 → 2027-06-20 (+157d) | 2027-02-06 → 2027-07-12 (+156d) |  | 1d → -129d |  | resources SIC- Cost [43105.5]; Plumbing Helper [277.05 h]; Labor [44.81 h]; Plumber [277.05 h]; Excavator [10.9 h]; Excavator Operator [346.32 h] → SIC- Cost [5842.24]; Plumbing Helper [277.05 h]; Labor [44.81 h]; Plumber [277.05 h]; Excavator [10.9 h]; Excavator Operator [346.32 h] |
| 1 | **bedding Works** | 2027-02-07 → 2027-07-13 (+156d) | 2027-03-03 → 2027-08-05 (+155d) |  |  |  |  |
| SDR-2-CON-TS-ZA-2100 | Sand bedding for Valve Chambers | 2027-02-07 → 2027-07-13 (+156d) | 2027-03-03 → 2027-08-05 (+155d) |  | 1d → -129d |  | resources SIC- Cost [9271.88]; Plumbing Helper [76.43 h]; Labor [51.21 h]; Plumber [76.43 h]; Excavator [9.89 h]; Excavator Operator [95.54 h] → SIC- Cost [7789.66]; Plumbing Helper [76.43 h]; Labor [51.21 h]; Plumber [76.43 h]; Excavator [9.89 h]; Excavator Operator [95.54 h] |
| 4 | **Install Chambers & Valves** | 2027-03-04 → 2027-08-06 (+155d) | 2027-04-01 → 2027-08-29 (+150d) |  |  |  |  |
| SDR-2-CON-TS-ZA-2120 | Valve Chambers & Valves Installation | 2027-03-04 → 2027-08-06 (+155d) | 2027-04-01 → 2027-08-29 (+150d) |  | 1d → -129d |  | resources SIC- Cost [13106.5]; Plumbing Helper [114.64 h]; Labor [44.81 h]; Plumber [114.64 h]; Excavator [12 h]; Excavator Operator [143.3 h] → SIC- Cost [35053.4]; Plumbing Helper [114.64 h]; Labor [44.81 h]; Plumber [114.64 h]; Excavator [12 h]; Excavator Operator [143.3 h] |
| 5 | **Testing** | 2027-04-03 → 2027-08-30 (+149d) | 2027-04-19 → 2027-09-15 (+149d) |  |  |  |  |
| SDR-2-CON-TS-ZA-2130 | Testing Chambers & Valves Installation | 2027-04-03 → 2027-08-30 (+149d) | 2027-04-19 → 2027-09-15 (+149d) |  | 1d → -129d |  | resources SIC- Cost [1806.63]; Plumbing Helper [76.43 h]; Labor [44.81 h]; Plumber [76.43 h]; Excavator [16 h]; Excavator Operator [95.54 h] → SIC- Cost [7789.66]; Plumbing Helper [76.43 h]; Labor [44.81 h]; Plumber [76.43 h]; Excavator [16 h]; Excavator Operator [95.54 h] |
| 6 | **Backfilling** | 2027-04-20 → 2027-09-16 (+149d) | 2027-05-12 → 2027-10-09 (+150d) |  |  |  |  |
| SDR-2-CON-TS-ZA-2140 | Backfilling Chambers & Valves Installation | 2027-04-20 → 2027-09-16 (+149d) | 2027-05-12 → 2027-10-09 (+150d) |  | 1d → -129d |  | resources SIC- Cost [1334.15]; Plumbing Helper [95.07 h]; Labor [44.81 h]; Plumber [95.07 h]; Excavator [8.28 h]; Excavator Operator [76.84 h] → SIC- Cost [15579.3]; Plumbing Helper [95.07 h]; Labor [44.81 h]; Plumber [95.07 h]; Excavator [8.28 h]; Excavator Operator [76.84 h] |
| 6 | **Pipes Work** |  | 2027-03-30 → 2027-04-12 (+13d) |  |  |  |  |
| 1 | **Excavation** |  | 2026-12-24 → 2027-02-08 (+46d) |  |  |  |  |
| SDR-2-CON-TS-ZA-3360 | Excavation for TSE HDPE Pipes 450 mm Section 1 |  |  |  |  | SDR-2-CON-TS-ZA-3320 → SDR-2-CON-TS-ZA-3200 SS+5d | resources SIC- Cost [148888]; Plumbing Helper [38.41 h]; Labor [38.41 h]; Plumber [38.41 h]; Excavator [12 h]; Excavator Operator [81.48 h] → SIC- Cost [74446.6]; Plumbing Helper [38.41 h]; Labor [38.41 h]; Plumber [38.41 h]; Excavator [12 h]; Excavator Operator [81.48 h] |
| SDR-2-CON-TS-ZA-1720 | Excavation for TSE HDPE Pipes 450 mm Section 2 |  | 2026-12-24 → 2027-02-08 (+46d) | 50% → 80% | 38d → 21d |  | resources SIC- Cost [148888]; Plumbing Helper [38.41 h]; Labor [38.41 h]; Plumber [38.41 h]; Excavator [9.17 h]; Excavator Operator [81.48 h] → SIC- Cost [74446.6]; Plumbing Helper [38.41 h]; Labor [38.41 h]; Plumber [38.41 h]; Excavator [9.17 h]; Excavator Operator [81.48 h] |
| 7 | **bedding Works** |  | 2027-01-18 → 2027-02-16 (+29d) |  |  |  |  |
| SDR-2-CON-TS-ZA-1980 | Sand bedding for TSE HDPE Pipes 450 mm |  | 2027-01-18 → 2027-02-16 (+29d) | 20% → 75% | 38d → 21d |  | resources SIC- Cost [148888]; Plumbing Helper [38.41 h]; Labor [38.41 h]; Plumber [38.41 h]; Excavator [12 h]; Excavator Operator [67.9 h] → SIC- Cost [37223.3]; Plumbing Helper [38.41 h]; Labor [38.41 h]; Plumber [38.41 h]; Excavator [12 h]; Excavator Operator [67.9 h] |
| 2 | **Pipes Laying** |  | 2027-02-11 → 2027-02-25 (+14d) |  |  |  |  |
| SDR-2-CON-TS-ZA-1730 | Install TSE 450 mm HDPE Pipe |  | 2027-02-11 → 2027-02-25 (+14d) | 20% → 75% | 38d → 21d |  | resources SIC- Cost [483886]; Plumbing Helper [76.81 h]; Labor [76.81 h]; Plumber [76.81 h]; Excavator [12 h]; Excavator Operator [81.48 h] → SIC- Cost [335040]; Plumbing Helper [76.81 h]; Labor [76.81 h]; Plumber [76.81 h]; Excavator [12 h]; Excavator Operator [81.48 h] |
| 5 | **Testing** | 2027-02-13 → 2027-02-27 (+14d) | 2027-03-02 → 2027-03-20 (+18d) |  |  |  |  |
| SDR-2-CON-TS-ZA-1800 | Testing of TSE HDPE Pipe 450 mm. | 2027-02-13 → 2027-02-27 (+14d) | 2027-03-02 → 2027-03-20 (+18d) |  | 38d → 21d |  | resources SIC- Cost [111666]; Plumbing Helper [19.2 h]; Labor [19.2 h]; Plumber [19.2 h]; Excavator [12 h]; Excavator Operator [67.9 h] → SIC- Cost [74446.6]; Plumbing Helper [19.2 h]; Labor [19.2 h]; Plumber [19.2 h]; Excavator [12 h]; Excavator Operator [67.9 h] |
| 8 | **Backfilling** | 2027-03-03 → 2027-03-21 (+18d) | 2027-03-30 → 2027-04-12 (+13d) |  |  |  |  |
| SDR-2-CON-TS-ZA-1990 | Backfilling of TSE HDPE Pipe 450 mm. | 2027-03-03 → 2027-03-21 (+18d) | 2027-03-30 → 2027-04-12 (+13d) |  | 38d → 21d |  | resources SIC- Cost [111666]; Plumbing Helper [19.2 h]; Labor [19.2 h]; Plumber [19.2 h]; Excavator [8.28 h]; Excavator Operator [81.33 h] → SIC- Cost [148893]; Plumbing Helper [19.2 h]; Labor [19.2 h]; Plumber [19.2 h]; Excavator [8.28 h]; Excavator Operator [81.33 h] |
| 3 | **Valve Chambers & Valves** | 2026-12-02 → 2027-02-01 (+61d) | 2027-04-22 → 2027-09-15 (+146d) |  |  |  |  |
| 3 | **Excavation** | 2026-12-02 → 2027-02-01 (+61d) | 2027-01-17 → 2027-03-24 (+66d) |  |  |  |  |
| SDR-2-CON-TS-ZA-3370 | Excavation for Valve Chambers Section 1 | 2026-12-02 → 2027-02-01 (+61d) | 2026-12-24 → 2027-02-24 (+62d) |  | 18d → -40d |  | resources SIC- Cost [43105.5]; Plumbing Helper [238.84 h]; Labor [44.81 h]; Plumber [238.84 h]; Excavator [16 h]; Excavator Operator [298.55 h] → SIC- Cost [5842.24]; Plumbing Helper [238.84 h]; Labor [44.81 h]; Plumber [238.84 h]; Excavator [16 h]; Excavator Operator [298.55 h] |
| SDR-2-CON-TS-ZA-2160 | Excavation for Valve Chambers Section 2 | 2026-12-26 → 2027-02-25 (+61d) | 2027-01-17 → 2027-03-24 (+66d) |  | 18d → -40d |  | resources SIC- Cost [43105.5]; Plumbing Helper [238.84 h]; Labor [44.81 h]; Plumber [238.84 h]; Excavator [8.96 h]; Excavator Operator [298.55 h] → SIC- Cost [5842.24]; Plumbing Helper [238.84 h]; Labor [44.81 h]; Plumber [238.84 h]; Excavator [8.96 h]; Excavator Operator [298.55 h] |
| 1 | **bedding Works** | 2027-01-18 → 2027-03-25 (+66d) | 2027-02-10 → 2027-04-18 (+67d) |  |  |  |  |
| SDR-2-CON-TS-ZA-2150 | Sand bedding for Valve Chambers | 2027-01-18 → 2027-03-25 (+66d) | 2027-02-10 → 2027-04-18 (+67d) |  | 18d → -40d |  | resources SIC- Cost [9271.88]; Plumbing Helper [114.64 h]; Labor [51.21 h]; Plumber [114.64 h]; Excavator [12 h]; Excavator Operator [143.3 h] → SIC- Cost [7789.66]; Plumbing Helper [114.64 h]; Labor [51.21 h]; Plumber [114.64 h]; Excavator [12 h]; Excavator Operator [143.3 h] |
| 4 | **Install Chambers & Valves** | 2027-02-11 → 2027-04-19 (+67d) | 2027-03-08 → 2027-05-12 (+65d) |  |  |  |  |
| SDR-2-CON-TS-ZA-2170 | Valve Chambers & Valves Installation | 2027-02-11 → 2027-04-19 (+67d) | 2027-03-08 → 2027-05-12 (+65d) |  | 18d → -40d |  | resources SIC- Cost [13106.5]; Plumbing Helper [152.86 h]; Labor [44.81 h]; Plumber [152.86 h]; Excavator [12 h]; Excavator Operator [191.07 h] → SIC- Cost [35053.4]; Plumbing Helper [152.86 h]; Labor [44.81 h]; Plumber [152.86 h]; Excavator [12 h]; Excavator Operator [191.07 h] |
| 5 | **Testing** | 2027-03-14 → 2027-08-07 (+146d) | 2027-03-30 → 2027-08-23 (+146d) |  |  |  |  |
| SDR-2-CON-TS-ZA-2180 | Testing Chambers & Valves Installation | 2027-03-14 → 2027-08-07 (+146d) | 2027-03-30 → 2027-08-23 (+146d) |  | 18d → -109d | SDR-2-CON-TS-ZA-2170 → SDR-2-CON-TS-ZA-2170, SDR-2-CLO-AS-E-1010 | resources SIC- Cost [1806.63]; Plumbing Helper [76.43 h]; Labor [44.81 h]; Plumber [76.43 h]; Excavator [12 h]; Excavator Operator [95.54 h] → SIC- Cost [7789.66]; Plumbing Helper [76.43 h]; Labor [44.81 h]; Plumber [76.43 h]; Excavator [12 h]; Excavator Operator [95.54 h] |
| 6 | **Backfilling** | 2027-03-31 → 2027-08-24 (+146d) | 2027-04-22 → 2027-09-15 (+146d) |  |  |  |  |
| SDR-2-CON-TS-ZA-2190 | Backfilling Chambers & Valves Installation | 2027-03-31 → 2027-08-24 (+146d) | 2027-04-22 → 2027-09-15 (+146d) |  | 18d → -109d |  | resources SIC- Cost [1334.15]; Plumbing Helper [94.59 h]; Labor [44.81 h]; Plumber [94.59 h]; Excavator [8.28 h]; Excavator Operator [85.82 h] → SIC- Cost [15579.3]; Plumbing Helper [94.59 h]; Labor [44.81 h]; Plumber [94.59 h]; Excavator [8.28 h]; Excavator Operator [85.82 h] |
| 10 | **TSE NETWORK IN ( PH2-ART-MC10 )** |  | 2027-04-12 → 2027-08-19 (+129d) |  |  |  |  |
| 6 | **Pipes Work** |  | 2027-01-11 → 2027-08-19 (+220d) |  |  |  |  |
| SDR-2-CON-TS-ZA-3380 | Excavation for TSE HDPE Pipes 450 mm Section 1 |  |  |  |  | SDR-2-CON-TS-ZA-3360 → SDR-2-CON-SE-ZA-1560 | resources SIC- Cost [148888]; Plumbing Helper [38.41 h]; Labor [38.41 h]; Plumber [38.41 h]; Excavator [16.05 h]; Excavator Operator [81.48 h] → SIC- Cost [74446.6]; Plumbing Helper [38.41 h]; Labor [38.41 h]; Plumber [38.41 h]; Excavator [16.05 h]; Excavator Operator [81.48 h] |
| SDR-2-CON-TS-ZA-3100 | Excavation for TSE HDPE Pipes 450 mm Section 2 |  |  |  |  | SDR-2-CON-TS-ZA-3380, SDR-2-CON-SL-ZA-3170 FF → SDR-2-CON-TS-ZA-3380, SDR-2-CON-SL-ZA-3170 | resources SIC- Cost [148888]; Plumbing Helper [38.41 h]; Labor [38.41 h]; Plumber [38.41 h]; Excavator [5 h]; Excavator Operator [81.48 h] → SIC- Cost [74446.6]; Plumbing Helper [38.41 h]; Labor [38.41 h]; Plumber [38.41 h]; Excavator [5 h]; Excavator Operator [81.48 h] |
| 7 | **bedding Works** |  | 2027-01-11 → 2027-05-09 (+118d) |  |  |  |  |
| SDR-2-CON-TS-ZA-3130 | Sand bedding for TSE HDPE Pipes 450 mm |  | 2027-01-11 → 2027-05-09 (+118d) |  | 100d → -20d | SDR-2-CON-TS-ZA-3100 FF → SDR-2-CON-TS-ZA-3100 | resources SIC- Cost [148888]; Plumbing Helper [38.41 h]; Labor [38.41 h]; Plumber [38.41 h]; Excavator [6 h]; Excavator Operator [81.48 h] → SIC- Cost [37223.3]; Plumbing Helper [38.41 h]; Labor [38.41 h]; Plumber [38.41 h]; Excavator [6 h]; Excavator Operator [81.48 h] |
| 2 | **Pipes Laying** |  | 2027-01-11 → 2027-05-22 (+131d) |  |  |  |  |
| SDR-2-CON-TS-ZA-3110 | Install TSE 450 mm HDPE Pipe |  | 2027-01-11 → 2027-05-22 (+131d) |  | 100d → -20d | SDR-2-CON-TS-ZA-3100 FF, SDR-2-CON-TS-ZA-3130 FF → SDR-2-CON-TS-ZA-3100, SDR-2-CON-TS-ZA-3130 | resources SIC- Cost [483886]; Plumbing Helper [67.9 h]; Labor [67.9 h]; Plumber [67.9 h]; Excavator [12 h]; Excavator Operator [67.9 h] → SIC- Cost [335040]; Plumbing Helper [67.9 h]; Labor [67.9 h]; Plumber [67.9 h]; Excavator [12 h]; Excavator Operator [67.9 h] |
| 5 | **Testing** |  | 2027-01-11 → 2027-08-12 (+213d) |  |  |  |  |
| SDR-2-CON-TS-ZA-3120 | Testing of TSE HDPE Pipe 450 mm. |  | 2027-01-11 → 2027-08-12 (+213d) |  | 100d → -86d | SDR-2-CON-TS-ZA-3110 FF → SDR-2-CON-TS-ZA-3110, SDR-2-CLO-AS-E-1010 | resources SIC- Cost [111666]; Plumbing Helper [19.2 h]; Labor [19.2 h]; Plumber [19.2 h]; Excavator [14.5 h]; Excavator Operator [95.54 h] → SIC- Cost [74446.6]; Plumbing Helper [19.2 h]; Labor [19.2 h]; Plumber [19.2 h]; Excavator [14.5 h]; Excavator Operator [95.54 h] |
| 8 | **Backfilling** |  | 2027-01-11 → 2027-08-19 (+220d) |  |  |  |  |
| SDR-2-CON-TS-ZA-3140 | Backfilling of TSE HDPE Pipe 450 mm. |  | 2027-01-11 → 2027-08-19 (+220d) |  | 100d → -86d | SDR-2-CON-TS-ZA-3120 FF → SDR-2-CON-TS-ZA-3120 | resources SIC- Cost [111666]; Plumbing Helper [19.2 h]; Labor [19.2 h]; Plumber [19.2 h]; Excavator [8.68 h]; Excavator Operator [81.48 h] → SIC- Cost [148893]; Plumbing Helper [19.2 h]; Labor [19.2 h]; Plumber [19.2 h]; Excavator [8.68 h]; Excavator Operator [81.48 h] |
| 3 | **Valve Chambers & Valves** | 2026-12-02 → 2027-01-20 (+49d) | 2027-04-12 → 2027-06-17 (+66d) |  |  |  |  |
| 3 | **Excavation** | 2026-12-02 → 2027-01-20 (+49d) | 2027-01-16 → 2027-03-23 (+66d) |  |  |  |  |
| SDR-2-CON-TS-ZA-3390 | Excavation for Valve Chambers Section 1 | 2026-12-02 → 2027-01-20 (+49d) | 2026-12-24 → 2027-02-11 (+49d) |  | 27d → -21d |  | resources SIC- Cost [43105.5]; Plumbing Helper [219.73 h]; Labor [44.81 h]; Plumber [219.73 h]; Excavator [18 h]; Excavator Operator [274.67 h] → SIC- Cost [5842.24]; Plumbing Helper [219.73 h]; Labor [44.81 h]; Plumber [219.73 h]; Excavator [18 h]; Excavator Operator [274.67 h] |
| SDR-2-CON-TS-ZA-3160 | Excavation for Valve Chambers Section 2 | 2026-12-26 → 2027-02-25 (+61d) | 2027-01-16 → 2027-03-23 (+66d) |  | 27d → -31d |  | resources SIC- Cost [43105.5]; Plumbing Helper [219.73 h]; Labor [44.81 h]; Plumber [219.73 h]; Excavator [5 h]; Excavator Operator [274.67 h] → SIC- Cost [5842.24]; Plumbing Helper [219.73 h]; Labor [44.81 h]; Plumber [219.73 h]; Excavator [5 h]; Excavator Operator [274.67 h] |
| 1 | **bedding Works** | 2027-01-17 → 2027-03-24 (+66d) | 2027-02-06 → 2027-04-13 (+66d) |  |  |  |  |
| SDR-2-CON-TS-ZA-3150 | Sand bedding for Valve Chambers | 2027-01-17 → 2027-03-24 (+66d) | 2027-02-06 → 2027-04-13 (+66d) |  | 27d → -31d |  | resources SIC- Cost [9271.88]; Plumbing Helper [76.43 h]; Labor [51.21 h]; Plumber [76.43 h]; Excavator [6 h]; Excavator Operator [95.54 h] → SIC- Cost [7789.66]; Plumbing Helper [76.43 h]; Labor [51.21 h]; Plumber [76.43 h]; Excavator [6 h]; Excavator Operator [95.54 h] |
| 4 | **Install Chambers & Valves** | 2027-02-07 → 2027-04-14 (+66d) | 2027-03-03 → 2027-05-08 (+66d) |  |  |  |  |
| SDR-2-CON-TS-ZA-3170 | Valve Chambers & Valves Installation | 2027-02-07 → 2027-04-14 (+66d) | 2027-03-03 → 2027-05-08 (+66d) |  | 27d → -31d |  | resources SIC- Cost [13106.5]; Plumbing Helper [114.64 h]; Labor [44.81 h]; Plumber [114.64 h]; Excavator [12 h]; Excavator Operator [143.3 h] → SIC- Cost [35053.4]; Plumbing Helper [114.64 h]; Labor [44.81 h]; Plumber [114.64 h]; Excavator [12 h]; Excavator Operator [143.3 h] |
| 5 | **Testing** | 2027-03-04 → 2027-05-09 (+66d) | 2027-03-20 → 2027-05-25 (+66d) |  |  |  |  |
| SDR-2-CON-TS-ZA-3180 | Testing Chambers & Valves Installation | 2027-03-04 → 2027-05-09 (+66d) | 2027-03-20 → 2027-05-25 (+66d) |  | 27d → -31d |  | resources SIC- Cost [1806.63]; Plumbing Helper [76.43 h]; Labor [44.81 h]; Plumber [76.43 h]; Excavator [6 h]; Excavator Operator [95.54 h] → SIC- Cost [7789.66]; Plumbing Helper [76.43 h]; Labor [44.81 h]; Plumber [76.43 h]; Excavator [6 h]; Excavator Operator [95.54 h] |
| 6 | **Backfilling** | 2027-03-21 → 2027-05-26 (+66d) | 2027-04-12 → 2027-06-17 (+66d) |  |  |  |  |
| SDR-2-CON-TS-ZA-3190 | Backfilling Chambers & Valves Installation | 2027-03-21 → 2027-05-26 (+66d) | 2027-04-12 → 2027-06-17 (+66d) |  | 27d → -31d |  | resources SIC- Cost [1334.15]; Plumbing Helper [90.29 h]; Labor [44.81 h]; Plumber [90.29 h]; Excavator [16.2 h]; Excavator Operator [79.47 h] → SIC- Cost [15579.3]; Plumbing Helper [90.29 h]; Labor [44.81 h]; Plumber [90.29 h]; Excavator [16.2 h]; Excavator Operator [79.47 h] |
| ZG | **ZONE G** |  | 2027-06-20 → 2027-10-30 (+132d) |  |  |  |  |
| 1 | **TSE NETWORK IN ( PH2-G-MCA0 )** |  | 2027-03-29 → 2027-07-20 (+113d) |  |  |  |  |
| 6 | **Pipes Work** |  | 2026-12-17 → 2027-05-06 (+140d) |  |  |  |  |
| 1 | **Excavation** |  | 2026-11-09 → 2027-03-15 (+126d) |  |  |  |  |
| SDR-2-CON-TS-ZA-2300 | Excavation for TSE HDPE Pipes 225 mm Section 2 |  | 2026-11-09 → 2027-03-15 (+126d) |  | 59d → -41d | SDR-2-CON-TS-ZA-3400 FF → SDR-2-CON-TS-ZA-3400 | resources SIC- Cost [43139.2]; Plumbing Helper [67.9 h]; Labor [51.21 h]; Plumber [67.9 h]; Excavator [12 h]; Excavator Operator [67.9 h] → SIC- Cost [21569.6]; Plumbing Helper [67.9 h]; Labor [51.21 h]; Plumber [67.9 h]; Excavator [12 h]; Excavator Operator [67.9 h] |
| SDR-2-CON-TS-ZA-3400 | Excavation for TSE HDPE Pipes 225 mm Section 1 |  | 2026-11-09 → 2027-03-03 (+114d) |  | 39d → -59d |  | resources SIC- Cost [43139.2]; Plumbing Helper [67.9 h]; Labor [51.21 h]; Plumber [67.9 h]; Excavator [12 h]; Excavator Operator [67.9 h] → SIC- Cost [21569.6]; Plumbing Helper [67.9 h]; Labor [51.21 h]; Plumber [67.9 h]; Excavator [12 h]; Excavator Operator [67.9 h] |
| 6 | **bedding Works** |  | 2026-11-09 → 2027-03-22 (+133d) |  |  |  |  |

| ID | Task | Start | Finish | Total float | Predecessors | Other |
| --- | --- | --- | --- | --- | --- | --- |
| SDR-2-CON-TS-ZA-2380 | Sand bedding for TSE HDPE Pipes 225 mm |  | 2026-11-09 → 2027-03-22 (+133d) | 121d → 0d | SDR-2-CON-TS-ZA-2300 FF → SDR-2-CON-TS-ZA-2300 | resources SIC- Cost [43139.2]; Plumbing Helper [95.54 h]; Labor [51.21 h]; Plumber [95.54 h]; Excavator [12 h]; Excavator Operator [119.42 h] → SIC- Cost [10784.8]; Plumbing Helper [95.54 h]; Labor [51.21 h]; Plumber [95.54 h]; Excavator [12 h]; Excavator Operator [119.42 h] |
| 2 | **Pipes Laying** |  | 2026-11-09 → 2027-03-29 (+140d) |  |  |  |
| SDR-2-CON-TS-ZA-2310 | Install TSE 225 mm HDPE Pipe |  | 2026-11-09 → 2027-03-29 (+140d) | 121d → 0d | SDR-2-CON-TS-ZA-2300 FF, SDR-2-CON-TS-ZA-2380 FF → SDR-2-CON-TS-ZA-2300, SDR-2-CON-TS-ZA-2380 | resources SIC- Cost; Plumbing Helper [81.48 h]; Labor [96.01 h]; Plumber [81.48 h]; Excavator [12 h]; Excavator Operator [135.79 h] → SIC- Cost [97063.1]; Plumbing Helper [81.48 h]; Labor [96.01 h]; Plumber [81.48 h]; Excavator [12 h]; Excavator Operator [135.79 h] |
| 5 | **Testing** | 2026-11-10 → 2027-03-30 (+140d) | 2026-11-24 → 2027-04-13 (+140d) |  |  |  |
| SDR-2-CON-TS-ZA-2370 | Testing of TSE HDPE Pipe 225 mm. | 2026-11-10 → 2027-03-30 (+140d) | 2026-11-24 → 2027-04-13 (+140d) | 121d → 0d |  | resources SIC- Cost [32354.4]; Plumbing Helper [76.43 h]; Labor [32 h]; Plumber [76.43 h]; Excavator [12 h]; Excavator Operator [95.54 h] → SIC- Cost [21569.6]; Plumbing Helper [76.43 h]; Labor [32 h]; Plumber [76.43 h]; Excavator [12 h]; Excavator Operator [95.54 h] |
| 7 | **Backfilling** | 2026-11-25 → 2027-04-14 (+140d) | 2026-12-17 → 2027-05-06 (+140d) |  |  |  |
| SDR-2-CON-TS-ZA-2390 | Backfilling of TSE HDPE Pipe 225 mm. | 2026-11-25 → 2027-04-14 (+140d) | 2026-12-17 → 2027-05-06 (+140d) | 121d → 0d |  | resources SIC- Cost [32354.4]; Plumbing Helper [64.5 h]; Labor [32 h]; Plumber [64.5 h]; Excavator [8.28 h]; Excavator Operator [72 h] → SIC- Cost [43139.2]; Plumbing Helper [64.5 h]; Labor [32 h]; Plumber [64.5 h]; Excavator [8.28 h]; Excavator Operator [72 h] |
| 3 | **Valve Chambers & Valves** | 2026-11-09 → 2027-02-25 (+108d) | 2027-03-29 → 2027-07-20 (+113d) |  |  |  |
| 3 | **Excavation** | 2026-11-09 → 2027-02-25 (+108d) | 2026-12-24 → 2027-04-17 (+114d) |  |  |  |
| SDR-2-CON-TS-ZA-3410 | Excavation for Valve Chambers Section 1 | 2026-11-09 → 2027-02-25 (+108d) | 2026-12-01 → 2027-03-24 (+113d) | 39d → -59d |  | resources SIC- Cost [43105.5]; Plumbing Helper [171.96 h]; Labor [44.81 h]; Plumber [171.96 h]; Excavator [12 h]; Excavator Operator [214.96 h] → SIC- Cost [5842.24]; Plumbing Helper [171.96 h]; Labor [44.81 h]; Plumber [171.96 h]; Excavator [12 h]; Excavator Operator [214.96 h] |
| SDR-2-CON-TS-ZA-2330 | Excavation for Valve Chambers Section 2 | 2026-12-02 → 2027-03-25 (+113d) | 2026-12-24 → 2027-04-17 (+114d) | 39d → -59d |  | resources SIC- Cost [43105.5]; Plumbing Helper [171.96 h]; Labor [44.81 h]; Plumber [171.96 h]; Excavator [12 h]; Excavator Operator [214.96 h] → SIC- Cost [5842.24]; Plumbing Helper [171.96 h]; Labor [44.81 h]; Plumber [171.96 h]; Excavator [12 h]; Excavator Operator [214.96 h] |
| 1 | **bedding Works** | 2026-12-26 → 2027-04-18 (+113d) | 2027-01-18 → 2027-05-11 (+113d) |  |  |  |
| SDR-2-CON-TS-ZA-2320 | Sand bedding for Valve Chambers | 2026-12-26 → 2027-04-18 (+113d) | 2027-01-18 → 2027-05-11 (+113d) | 39d → -59d |  | resources SIC- Cost [9271.88]; Plumbing Helper [95.54 h]; Labor [51.21 h]; Plumber [95.54 h]; Excavator [12 h]; Excavator Operator [119.42 h] → SIC- Cost [7789.66]; Plumbing Helper [95.54 h]; Labor [51.21 h]; Plumber [95.54 h]; Excavator [12 h]; Excavator Operator [119.42 h] |
| 4 | **Install Chambers & Valves** | 2027-01-19 → 2027-05-12 (+113d) | 2027-02-11 → 2027-06-10 (+119d) |  |  |  |
| SDR-2-CON-TS-ZA-2340 | Valve Chambers & Valves Installation | 2027-01-19 → 2027-05-12 (+113d) | 2027-02-11 → 2027-06-10 (+119d) | 39d → -59d |  | resources SIC- Cost [13106.5]; Plumbing Helper [133.75 h]; Labor [44.81 h]; Plumber [133.75 h]; Excavator [12 h]; Excavator Operator [167.19 h] → SIC- Cost [35053.4]; Plumbing Helper [133.75 h]; Labor [44.81 h]; Plumber [133.75 h]; Excavator [12 h]; Excavator Operator [167.19 h] |
| 5 | **Testing** | 2027-02-13 → 2027-06-12 (+119d) | 2027-02-28 → 2027-06-26 (+118d) |  |  |  |
| SDR-2-CON-TS-ZA-2350 | Testing Chambers & Valves Installation | 2027-02-13 → 2027-06-12 (+119d) | 2027-02-28 → 2027-06-26 (+118d) | 39d → -59d |  | resources SIC- Cost [1806.63]; Plumbing Helper [76.43 h]; Labor [44.81 h]; Plumber [76.43 h]; Excavator [12 h]; Excavator Operator [95.54 h] → SIC- Cost [7789.66]; Plumbing Helper [76.43 h]; Labor [44.81 h]; Plumber [76.43 h]; Excavator [12 h]; Excavator Operator [95.54 h] |
| 6 | **Backfilling** | 2027-03-02 → 2027-06-28 (+118d) | 2027-03-29 → 2027-07-20 (+113d) |  |  |  |
| SDR-2-CON-TS-ZA-2360 | Backfilling Chambers & Valves Installation | 2027-03-02 → 2027-06-28 (+118d) | 2027-03-29 → 2027-07-20 (+113d) | 39d → -59d |  | resources SIC- Cost [1334.15]; Plumbing Helper [70.71 h]; Labor [44.81 h]; Plumber [70.71 h]; Excavator [8 h]; Excavator Operator [70.14 h] → SIC- Cost [15579.3]; Plumbing Helper [70.71 h]; Labor [44.81 h]; Plumber [70.71 h]; Excavator [8 h]; Excavator Operator [70.14 h] |
| 2 | **TSE NETWORK IN ( PH2-G-MCE0 )** |  | 2027-05-06 → 2027-08-11 (+97d) |  |  |  |
| 6 | **Pipes Work** |  | 2027-02-02 → 2027-06-14 (+132d) |  |  |  |
| 1 | **Excavation** |  | 2026-11-09 → 2027-03-15 (+126d) |  |  |  |
| SDR-2-CON-TS-ZA-2400 | Excavation for TSE HDPE Pipes 125 mm Section 2 |  | 2026-11-09 → 2027-03-15 (+126d) | 68d → -35d | SDR-2-CON-TS-ZA-3420 FF → SDR-2-CON-TS-ZA-3420 | resources SIC- Cost; Plumbing Helper [81.48 h]; Labor [51.21 h]; Plumber [81.48 h]; Excavator [6.14 h]; Excavator Operator [81.48 h] → SIC- Cost [15714]; Plumbing Helper [81.48 h]; Labor [51.21 h]; Plumber [81.48 h]; Excavator [6.14 h]; Excavator Operator [81.48 h] |
| SDR-2-CON-TS-ZA-3420 | Excavation for TSE HDPE Pipes 125 mm Section 1 |  | 2026-11-09 → 2027-03-03 (+114d) | 68d → -58d |  | resources SIC- Cost; Plumbing Helper [81.48 h]; Labor [51.21 h]; Plumber [81.48 h]; Excavator [12 h]; Excavator Operator [81.48 h] → SIC- Cost [15714]; Plumbing Helper [81.48 h]; Labor [51.21 h]; Plumber [81.48 h]; Excavator [12 h]; Excavator Operator [81.48 h] |
| 3 | **bedding Works** | 2026-11-10 → 2027-03-16 (+126d) | 2026-12-03 → 2027-04-08 (+126d) |  |  |  |
| SDR-2-CON-TS-ZA-2430 | Sand bedding for TSE HDPE Pipes 125 mm | 2026-11-10 → 2027-03-16 (+126d) | 2026-12-03 → 2027-04-08 (+126d) | 81d → -28d |  | resources SIC- Cost [31428.1]; Plumbing Helper [67.9 h]; Labor [51.21 h]; Plumber [67.9 h]; Excavator [12 h]; Excavator Operator [67.9 h] → SIC- Cost [7857.01]; Plumbing Helper [67.9 h]; Labor [51.21 h]; Plumber [67.9 h]; Excavator [12 h]; Excavator Operator [67.9 h] |
| 2 | **Pipes Laying** | 2026-12-05 → 2027-04-10 (+126d) | 2026-12-28 → 2027-05-03 (+126d) |  |  |  |
| SDR-2-CON-TS-ZA-2410 | Install TSE 125 mm HDPE Pipe | 2026-12-05 → 2027-04-10 (+126d) | 2026-12-28 → 2027-05-03 (+126d) | 81d → -28d |  | resources SIC- Cost; Plumbing Helper [67.9 h]; Labor [67.9 h]; Plumber [67.9 h]; Excavator [16 h]; Excavator Operator [67.9 h] → SIC- Cost [70713.1]; Plumbing Helper [67.9 h]; Labor [67.9 h]; Plumber [67.9 h]; Excavator [16 h]; Excavator Operator [67.9 h] |
| 5 | **Testing** | 2026-12-29 → 2027-05-04 (+126d) | 2027-01-09 → 2027-05-15 (+126d) |  |  |  |
| SDR-2-CON-TS-ZA-2420 | Testing of TSE HDPE Pipe 125 mm. | 2026-12-29 → 2027-05-04 (+126d) | 2027-01-09 → 2027-05-15 (+126d) | 81d → -28d |  | resources SIC- Cost [23571]; Plumbing Helper [76.43 h]; Labor [25.6 h]; Plumber [76.43 h]; Excavator [9.5 h]; Excavator Operator [95.54 h] → SIC- Cost [15714]; Plumbing Helper [76.43 h]; Labor [25.6 h]; Plumber [76.43 h]; Excavator [9.5 h]; Excavator Operator [95.54 h] |
| 4 | **Backfilling** | 2027-01-10 → 2027-05-22 (+132d) | 2027-02-02 → 2027-06-14 (+132d) |  |  |  |
| SDR-2-CON-TS-ZA-2440 | Backfilling of TSE HDPE Pipe 125 mm. | 2027-01-10 → 2027-05-22 (+132d) | 2027-02-02 → 2027-06-14 (+132d) | 81d → -28d |  | resources SIC- Cost [23571]; Plumbing Helper [81.08 h]; Labor [25.6 h]; Plumber [59.53 h]; Excavator [8.26 h]; Excavator Operator [81.48 h] → SIC- Cost [31428.1]; Plumbing Helper [81.08 h]; Labor [25.6 h]; Plumber [59.53 h]; Excavator [8.26 h]; Excavator Operator [81.48 h] |
| 3 | **Valve Chambers & Valves** | 2026-11-10 → 2027-02-25 (+107d) | 2027-05-06 → 2027-08-11 (+97d) |  |  |  |
| 3 | **Excavation** | 2026-11-10 → 2027-02-25 (+107d) | 2026-12-28 → 2027-05-13 (+136d) |  |  |  |
| SDR-2-CON-TS-ZA-3430 | Excavation for Valve Chambers Section 1 | 2026-11-10 → 2027-02-25 (+107d) | 2026-12-03 → 2027-03-25 (+112d) | 49d → -58d | SDR-2-CON-TS-ZA-3400 → SDR-2-CON-TS-ZA-3420 SS | resources SIC- Cost [43105.5]; Plumbing Helper [229.29 h]; Labor [44.81 h]; Plumber [229.29 h]; Excavator [12 h]; Excavator Operator [286.61 h] → SIC- Cost [5842.24]; Plumbing Helper [229.29 h]; Labor [44.81 h]; Plumber [229.29 h]; Excavator [12 h]; Excavator Operator [286.61 h] |
| SDR-2-CON-TS-ZA-2460 | Excavation for Valve Chambers Section 2 | 2026-12-05 → 2027-04-20 (+136d) | 2026-12-28 → 2027-05-13 (+136d) | 49d → -79d | SDR-2-CON-TS-ZA-3430 → SDR-2-CON-TS-ZA-3430, SDR-2-CON-ST-ZA-4430 | resources SIC- Cost [43105.5]; Plumbing Helper [229.29 h]; Labor [44.81 h]; Plumber [229.29 h]; Excavator [6.06 h]; Excavator Operator [286.61 h] → SIC- Cost [5842.24]; Plumbing Helper [229.29 h]; Labor [44.81 h]; Plumber [229.29 h]; Excavator [6.06 h]; Excavator Operator [286.61 h] |
| 1 | **bedding Works** | 2026-12-29 → 2027-05-15 (+137d) | 2027-01-21 → 2027-06-13 (+143d) |  |  |  |
| SDR-2-CON-TS-ZA-2450 | Sand bedding for Valve Chambers | 2026-12-29 → 2027-05-15 (+137d) | 2027-01-21 → 2027-06-13 (+143d) | 49d → -79d |  | resources SIC- Cost [9271.88]; Plumbing Helper [76.43 h]; Labor [51.21 h]; Plumber [76.43 h]; Excavator [12 h]; Excavator Operator [95.54 h] → SIC- Cost [7789.66]; Plumbing Helper [76.43 h]; Labor [51.21 h]; Plumber [76.43 h]; Excavator [12 h]; Excavator Operator [95.54 h] |
| 4 | **Install Chambers & Valves** | 2027-03-04 → 2027-06-14 (+102d) | 2027-04-01 → 2027-07-07 (+97d) |  |  |  |
| SDR-2-CON-TS-ZA-2470 | Valve Chambers & Valves Installation | 2027-03-04 → 2027-06-14 (+102d) | 2027-04-01 → 2027-07-07 (+97d) | 15d → -79d | SDR-2-CON-TS-ZA-2530 SS, SDR-2-CON-TS-ZA-2460, SDR-2-CON-TS-ZA-2450 → SDR-2-CON-TS-ZA-2460, SDR-2-CON-TS-ZA-2450, SDR-2-CON-TS-ZA-2530 | resources SIC- Cost [13106.5]; Plumbing Helper [143.3 h]; Labor [44.81 h]; Plumber [143.3 h]; Excavator [12 h]; Excavator Operator [179.13 h] → SIC- Cost [35053.4]; Plumbing Helper [143.3 h]; Labor [44.81 h]; Plumber [143.3 h]; Excavator [12 h]; Excavator Operator [179.13 h] |
| 5 | **Testing** | 2027-04-03 → 2027-07-08 (+96d) | 2027-04-12 → 2027-07-18 (+97d) |  |  |  |
| SDR-2-CON-TS-ZA-2480 | Testing Chambers & Valves Installation | 2027-04-03 → 2027-07-08 (+96d) | 2027-04-12 → 2027-07-18 (+97d) | 15d → -79d |  | resources SIC- Cost [1806.63]; Plumbing Helper [76.43 h]; Labor [44.81 h]; Plumber [76.43 h]; Excavator [6 h]; Excavator Operator [95.54 h] → SIC- Cost [7789.66]; Plumbing Helper [76.43 h]; Labor [44.81 h]; Plumber [76.43 h]; Excavator [6 h]; Excavator Operator [95.54 h] |
| 6 | **Backfilling** | 2027-04-13 → 2027-07-20 (+98d) | 2027-05-06 → 2027-08-11 (+97d) |  |  |  |
| SDR-2-CON-TS-ZA-2490 | Backfilling Chambers & Valves Installation | 2027-04-13 → 2027-07-20 (+98d) | 2027-05-06 → 2027-08-11 (+97d) | 15d → -79d | SDR-2-CON-TS-ZA-2480 → SDR-2-CON-TS-ZA-2480 FS+1d | resources SIC- Cost [1334.15]; Plumbing Helper [74.71 h]; Labor [44.81 h]; Plumber [74.71 h]; Excavator [8 h]; Excavator Operator [65.65 h] → SIC- Cost [15579.3]; Plumbing Helper [74.71 h]; Labor [44.81 h]; Plumber [74.71 h]; Excavator [8 h]; Excavator Operator [65.65 h] |
| 3 | **TSE NETWORK IN ( PH2-G-MCF0 )** |  | 2027-05-25 → 2027-09-07 (+105d) |  |  |  |
| 6 | **Pipes Work** |  | 2027-05-08 → 2027-08-24 (+108d) |  |  |  |
| 1 | **Excavation** |  | 2027-01-11 → 2027-05-15 (+124d) |  |  |  |
| SDR-2-CON-TS-ZA-2900 | Excavation for TSE HDPE Pipes 90 mm Section 2 |  | 2027-01-11 → 2027-05-15 (+124d) | 7d → -96d | SDR-2-CON-TS-ZA-3440 FF, SDR-2-CON-SL-ZA-2970 FF → SDR-2-CON-TS-ZA-3440, SDR-2-CON-SL-ZA-2820, SDR-2-CON-SL-ZA-2970 | resources SIC- Cost [6976.73]; Plumbing Helper [67.9 h]; Labor [51.21 h]; Plumber [67.9 h]; Excavator [12 h]; Excavator Operator [67.9 h] → SIC- Cost [3488.37]; Plumbing Helper [67.9 h]; Labor [51.21 h]; Plumber [67.9 h]; Excavator [12 h]; Excavator Operator [67.9 h] |
| SDR-2-CON-TS-ZA-3440 | Excavation for TSE HDPE Pipes 90 mm Section 1 |  | 2026-11-09 → 2027-03-03 (+114d) | 43d → -64d | SDR-2-CON-SE-ZA-2260, SDR-2-PRO-ST-E-1200 FF → SDR-2-CON-SE-ZA-2260, SDR-2-PRO-ST-E-1200 FS+5d | resources SIC- Cost [6976.73]; Plumbing Helper [67.9 h]; Labor [51.21 h]; Plumber [67.9 h]; Excavator [12 h]; Excavator Operator [67.9 h] → SIC- Cost [3488.37]; Plumbing Helper [67.9 h]; Labor [51.21 h]; Plumber [67.9 h]; Excavator [12 h]; Excavator Operator [67.9 h] |
| 3 | **bedding Works** | 2027-01-24 → 2027-05-22 (+118d) | 2027-02-16 → 2027-06-14 (+118d) |  |  |  |
| SDR-2-CON-TS-ZA-2930 | Sand bedding for TSE HDPE Pipes 90 mm | 2027-01-24 → 2027-05-22 (+118d) | 2027-02-16 → 2027-06-14 (+118d) | 17d → -90d | SDR-2-CON-ST-ZA-4430 SS, SDR-2-CON-RW-ZG-2110, SDR-2-CON-SL-ZA-3130, SDR-2-CON-TS-ZA-2900 → SDR-2-CON-TS-ZA-2900, SDR-2-CON-ST-ZA-4430, SDR-2-CON-RW-ZG-2110, SDR-2-CON-SL-ZA-3130 | resources SIC- Cost [6976.73]; Plumbing Helper [67.9 h]; Labor [51.21 h]; Plumber [67.9 h]; Excavator [5 h]; Excavator Operator [67.9 h] → SIC- Cost [1744.18]; Plumbing Helper [67.9 h]; Labor [51.21 h]; Plumber [67.9 h]; Excavator [5 h]; Excavator Operator [67.9 h] |
| 2 | **Pipes Laying** | 2027-02-17 → 2027-06-15 (+118d) | 2027-03-18 → 2027-07-08 (+112d) |  |  |  |
| SDR-2-CON-TS-ZA-2910 | Install TSE 90 mm HDPE Pipe | 2027-02-17 → 2027-06-15 (+118d) | 2027-03-18 → 2027-07-08 (+112d) | 17d → -90d |  | resources SIC- Cost; Plumbing Helper [67.9 h]; Labor [67.9 h]; Plumber [67.9 h]; Excavator [12 h]; Excavator Operator [67.9 h] → SIC- Cost [15697.6]; Plumbing Helper [67.9 h]; Labor [67.9 h]; Plumber [67.9 h]; Excavator [12 h]; Excavator Operator [67.9 h] |
| 5 | **Testing** | 2027-04-03 → 2027-07-10 (+98d) | 2027-04-25 → 2027-08-01 (+98d) |  |  |  |
| SDR-2-CON-TS-ZA-2920 | Testing of TSE HDPE Pipe 90 mm. | 2027-04-03 → 2027-07-10 (+98d) | 2027-04-25 → 2027-08-01 (+98d) | 5d → -90d |  | resources SIC- Cost [5232.55]; Plumbing Helper [76.43 h]; Labor [19.2 h]; Plumber [76.43 h]; Excavator [6 h]; Excavator Operator [95.54 h] → SIC- Cost [3488.37]; Plumbing Helper [76.43 h]; Labor [19.2 h]; Plumber [76.43 h]; Excavator [6 h]; Excavator Operator [95.54 h] |
| 4 | **Backfilling** | 2027-04-14 → 2027-08-02 (+110d) | 2027-05-08 → 2027-08-24 (+108d) |  |  |  |
| SDR-2-CON-TS-ZA-2940 | Backfilling of TSE HDPE Pipe 90 mm. | 2027-04-14 → 2027-08-02 (+110d) | 2027-05-08 → 2027-08-24 (+108d) | 5d → -90d | SDR-2-CON-TS-ZA-2920 SS+10d → SDR-2-CON-TS-ZA-2920 | resources SIC- Cost [5232.55]; Plumbing Helper [152.86 h]; Labor [19.2 h]; Plumber [152.86 h]; Excavator [14.41 h]; Excavator Operator [110.45 h] → SIC- Cost [6976.73]; Plumbing Helper [152.86 h]; Labor [19.2 h]; Plumber [152.86 h]; Excavator [14.41 h]; Excavator Operator [110.45 h] |
| 3 | **Valve Chambers & Valves** | 2026-11-09 → 2027-02-25 (+108d) | 2027-05-25 → 2027-09-07 (+105d) |  |  |  |
| 3 | **Excavation** | 2026-11-09 → 2027-02-25 (+108d) | 2026-12-24 → 2027-04-17 (+114d) |  |  |  |
| SDR-2-CON-TS-ZA-3450 | Excavation for Valve Chambers Section 1 | 2026-11-09 → 2027-02-25 (+108d) | 2026-12-01 → 2027-03-24 (+113d) | 43d → -64d |  | resources SIC- Cost [43105.5]; Plumbing Helper [238.84 h]; Labor [44.81 h]; Plumber [238.84 h]; Excavator [12 h]; Excavator Operator [298.55 h] → SIC- Cost [5842.24]; Plumbing Helper [238.84 h]; Labor [44.81 h]; Plumber [238.84 h]; Excavator [12 h]; Excavator Operator [298.55 h] |
| SDR-2-CON-TS-ZA-2960 | Excavation for Valve Chambers Section 2 | 2026-12-02 → 2027-03-25 (+113d) | 2026-12-24 → 2027-04-17 (+114d) | 43d → -64d |  | resources SIC- Cost [43105.5]; Plumbing Helper [238.84 h]; Labor [44.81 h]; Plumber [238.84 h]; Excavator [12 h]; Excavator Operator [298.55 h] → SIC- Cost [5842.24]; Plumbing Helper [238.84 h]; Labor [44.81 h]; Plumber [238.84 h]; Excavator [12 h]; Excavator Operator [298.55 h] |
| 1 | **bedding Works** | 2027-02-09 → 2027-04-20 (+70d) | 2027-03-02 → 2027-05-10 (+69d) |  |  |  |
| SDR-2-CON-TS-ZA-2950 | Sand bedding for Valve Chambers | 2027-02-09 → 2027-04-20 (+70d) | 2027-03-02 → 2027-05-10 (+69d) | 4d → -66d |  | resources SIC- Cost [9271.88]; Plumbing Helper [76.43 h]; Labor [51.21 h]; Plumber [76.43 h]; Excavator [5 h]; Excavator Operator [95.54 h] → SIC- Cost [7789.66]; Plumbing Helper [76.43 h]; Labor [51.21 h]; Plumber [76.43 h]; Excavator [5 h]; Excavator Operator [95.54 h] |
| 4 | **Install Chambers & Valves** | 2027-03-03 → 2027-06-28 (+117d) | 2027-03-31 → 2027-07-21 (+112d) |  |  |  |
| SDR-2-CON-TS-ZA-2970 | Valve Chambers & Valves Installation | 2027-03-03 → 2027-06-28 (+117d) | 2027-03-31 → 2027-07-21 (+112d) | 4d → -102d |  | resources SIC- Cost [13106.5]; Plumbing Helper [152.86 h]; Labor [44.81 h]; Plumber [152.86 h]; Excavator [12 h]; Excavator Operator [191.07 h] → SIC- Cost [35053.4]; Plumbing Helper [152.86 h]; Labor [44.81 h]; Plumber [152.86 h]; Excavator [12 h]; Excavator Operator [191.07 h] |
| 5 | **Testing** | 2027-04-01 → 2027-07-22 (+112d) | 2027-04-24 → 2027-08-12 (+110d) |  |  |  |
| SDR-2-CON-TS-ZA-2980 | Testing Chambers & Valves Installation | 2027-04-01 → 2027-07-22 (+112d) | 2027-04-24 → 2027-08-12 (+110d) | 4d → -102d |  | resources SIC- Cost [1806.63]; Plumbing Helper [76.43 h]; Labor [44.81 h]; Plumber [76.43 h]; Excavator [6 h]; Excavator Operator [95.54 h] → SIC- Cost [7789.66]; Plumbing Helper [76.43 h]; Labor [44.81 h]; Plumber [76.43 h]; Excavator [6 h]; Excavator Operator [95.54 h] |
| 6 | **Backfilling** | 2027-04-26 → 2027-08-15 (+111d) | 2027-05-25 → 2027-09-07 (+105d) |  |  |  |
| SDR-2-CON-TS-ZA-2990 | Backfilling Chambers & Valves Installation | 2027-04-26 → 2027-08-15 (+111d) | 2027-05-25 → 2027-09-07 (+105d) | 4d → -102d |  | resources SIC- Cost [1334.15]; Plumbing Helper [171.96 h]; Labor [44.81 h]; Plumber [171.96 h]; Excavator [14.72 h]; Excavator Operator [144.42 h] → SIC- Cost [15579.3]; Plumbing Helper [171.96 h]; Labor [44.81 h]; Plumber [171.96 h]; Excavator [14.72 h]; Excavator Operator [144.42 h] |
| 4 | **TSE NETWORK IN ( PH2-G-MCG0 )** |  | 2027-06-20 → 2027-07-31 (+41d) |  |  |  |

| ID | Task | Start | Finish | Total float | Predecessors | Other |
| --- | --- | --- | --- | --- | --- | --- |
| 6 | **Pipes Work** |  | 2027-02-21 → 2027-06-10 (+109d) |  |  |  |
| 1 | **Excavation** |  | 2026-11-09 → 2027-03-03 (+114d) |  |  |  |
| SDR-2-CON-TS-ZA-3000 | Excavation for TSE HDPE Pipes 90 mm Section 2 |  | 2026-11-09 → 2027-03-03 (+114d) | 56d → -31d | SDR-2-CON-TS-ZA-3460 FF → SDR-2-CON-TS-ZA-3460 | resources SIC- Cost [6976.73]; Plumbing Helper [81.48 h]; Labor [51.21 h]; Plumber [81.48 h]; Excavator [12 h]; Excavator Operator [81.48 h] → SIC- Cost [3488.37]; Plumbing Helper [81.48 h]; Labor [51.21 h]; Plumber [81.48 h]; Excavator [12 h]; Excavator Operator [81.48 h] |
| SDR-2-CON-TS-ZA-3460 | Excavation for TSE HDPE Pipes 90 mm Section 1 |  |  |  |  | resources SIC- Cost [6976.73]; Plumbing Helper [81.48 h]; Labor [51.21 h]; Plumber [81.48 h]; Excavator [12 h]; Excavator Operator [81.48 h] → SIC- Cost [3488.37]; Plumbing Helper [81.48 h]; Labor [51.21 h]; Plumber [81.48 h]; Excavator [12 h]; Excavator Operator [81.48 h] |
| 3 | **bedding Works** | 2026-11-10 → 2027-03-04 (+114d) | 2026-12-03 → 2027-04-01 (+119d) |  |  |  |
| SDR-2-CON-TS-ZA-3030 | Sand bedding for TSE HDPE Pipes 90 mm | 2026-11-10 → 2027-03-04 (+114d) | 2026-12-03 → 2027-04-01 (+119d) | 78d → -25d |  | resources SIC- Cost; Plumbing Helper [67.9 h]; Labor [51.21 h]; Plumber [67.9 h]; Excavator [12 h]; Excavator Operator [67.9 h] → SIC- Cost [1744.18]; Plumbing Helper [67.9 h]; Labor [51.21 h]; Plumber [67.9 h]; Excavator [12 h]; Excavator Operator [67.9 h] |
| 2 | **Pipes Laying** | 2026-12-05 → 2027-04-03 (+119d) | 2026-12-28 → 2027-04-26 (+119d) |  |  |  |
| SDR-2-CON-TS-ZA-3010 | Install TSE 90 mm HDPE Pipe | 2026-12-05 → 2027-04-03 (+119d) | 2026-12-28 → 2027-04-26 (+119d) | 78d → -25d |  | resources SIC- Cost [22674.4]; Plumbing Helper [81.48 h]; Labor [96.01 h]; Plumber [81.48 h]; Excavator [12 h]; Excavator Operator [81.48 h] → SIC- Cost [15697.6]; Plumbing Helper [81.48 h]; Labor [96.01 h]; Plumber [81.48 h]; Excavator [12 h]; Excavator Operator [81.48 h] |
| 5 | **Testing** | 2026-12-29 → 2027-04-27 (+119d) | 2027-01-12 → 2027-05-11 (+119d) |  |  |  |
| SDR-2-CON-TS-ZA-3020 | Testing of TSE HDPE Pipe 90 mm. | 2026-12-29 → 2027-04-27 (+119d) | 2027-01-12 → 2027-05-11 (+119d) | 78d → -25d |  | resources SIC- Cost [5232.55]; Plumbing Helper [57.32 h]; Labor [19.2 h]; Plumber [57.32 h]; Excavator [12 h]; Excavator Operator [71.65 h] → SIC- Cost [3488.37]; Plumbing Helper [57.32 h]; Labor [19.2 h]; Plumber [57.32 h]; Excavator [12 h]; Excavator Operator [71.65 h] |
| 4 | **Backfilling** | 2027-01-28 → 2027-05-12 (+104d) | 2027-02-21 → 2027-06-10 (+109d) |  |  |  |
| SDR-2-CON-TS-ZA-3040 | Backfilling of TSE HDPE Pipe 90 mm. | 2027-01-28 → 2027-05-12 (+104d) | 2027-02-21 → 2027-06-10 (+109d) | 65d → -25d |  | resources SIC- Cost [5232.55]; Plumbing Helper [76.53 h]; Labor [19.2 h]; Plumber [76.53 h]; Excavator [8.26 h]; Excavator Operator [70.14 h] → SIC- Cost [6976.73]; Plumbing Helper [76.53 h]; Labor [19.2 h]; Plumber [76.53 h]; Excavator [8.26 h]; Excavator Operator [70.14 h] |
| 3 | **Valve Chambers & Valves** | 2026-11-09 → 2027-02-25 (+108d) | 2027-06-20 → 2027-07-31 (+41d) |  |  |  |
| 3 | **Excavation** | 2026-11-09 → 2027-02-25 (+108d) | 2026-12-24 → 2027-04-17 (+114d) |  |  |  |
| SDR-2-CON-TS-ZA-3470 | Excavation for Valve Chambers Section 1 | 2026-11-09 → 2027-02-25 (+108d) | 2026-12-01 → 2027-03-24 (+113d) | 66d → -66d |  | resources SIC- Cost [43105.5]; Plumbing Helper [191.07 h]; Labor [44.81 h]; Plumber [191.07 h]; Excavator [12 h]; Excavator Operator [238.84 h] → SIC- Cost [5842.24]; Plumbing Helper [191.07 h]; Labor [44.81 h]; Plumber [191.07 h]; Excavator [12 h]; Excavator Operator [238.84 h] |
| SDR-2-CON-TS-ZA-3060 | Excavation for Valve Chambers Section 2 | 2026-12-02 → 2027-03-25 (+113d) | 2026-12-24 → 2027-04-17 (+114d) | 66d → -66d |  | resources SIC- Cost [43105.5]; Plumbing Helper [191.07 h]; Labor [44.81 h]; Plumber [191.07 h]; Excavator [12 h]; Excavator Operator [238.84 h] → SIC- Cost [5842.24]; Plumbing Helper [191.07 h]; Labor [44.81 h]; Plumber [191.07 h]; Excavator [12 h]; Excavator Operator [238.84 h] |
| 1 | **bedding Works** | 2027-02-16 → 2027-04-20 (+63d) | 2027-03-17 → 2027-05-13 (+57d) |  |  |  |
| SDR-2-CON-TS-ZA-3050 | Sand bedding for Valve Chambers | 2027-02-16 → 2027-04-20 (+63d) | 2027-03-17 → 2027-05-13 (+57d) | 21d → -68d |  | resources SIC- Cost [9271.88]; Plumbing Helper [76.43 h]; Labor [51.21 h]; Plumber [76.43 h]; Excavator [12 h]; Excavator Operator [95.54 h] → SIC- Cost [7789.66]; Plumbing Helper [76.43 h]; Labor [51.21 h]; Plumber [76.43 h]; Excavator [12 h]; Excavator Operator [95.54 h] |
| 4 | **Install Chambers & Valves** | 2027-04-12 → 2027-05-15 (+33d) | 2027-05-05 → 2027-06-13 (+39d) |  |  |  |
| SDR-2-CON-TS-ZA-3070 | Valve Chambers & Valves Installation | 2027-04-12 → 2027-05-15 (+33d) | 2027-05-05 → 2027-06-13 (+39d) | 0d → -68d |  | resources SIC- Cost [13106.5]; Plumbing Helper [114.64 h]; Labor [44.81 h]; Plumber [114.64 h]; Excavator [12 h]; Excavator Operator [143.3 h] → SIC- Cost [35053.4]; Plumbing Helper [114.64 h]; Labor [44.81 h]; Plumber [114.64 h]; Excavator [12 h]; Excavator Operator [143.3 h] |
| 5 | **Testing** | 2027-04-29 → 2027-06-14 (+46d) | 2027-05-26 → 2027-07-05 (+40d) |  |  |  |
| SDR-2-CON-TS-ZA-3080 | Testing Chambers & Valves Installation | 2027-04-29 → 2027-06-14 (+46d) | 2027-05-26 → 2027-07-05 (+40d) | 0d → -68d | SDR-2-CON-SE-ZA-2030, SDR-2-CON-ST-ZA-5480, SDR-2-CON-TS-ZA-3070 SS+15d → SDR-2-CON-TS-ZA-3070, SDR-2-CON-SE-ZA-2030, SDR-2-CON-ST-ZA-5480 | resources SIC- Cost [1806.63]; Plumbing Helper [76.43 h]; Labor [44.81 h]; Plumber [76.43 h]; Excavator [6 h]; Excavator Operator [95.54 h] → SIC- Cost [7789.66]; Plumbing Helper [76.43 h]; Labor [44.81 h]; Plumber [76.43 h]; Excavator [6 h]; Excavator Operator [95.54 h] |
| 6 | **Backfilling** | 2027-05-27 → 2027-07-07 (+41d) | 2027-06-20 → 2027-07-31 (+41d) |  |  |  |
| SDR-2-CON-TS-ZA-3090 | Backfilling Chambers & Valves Installation | 2027-05-27 → 2027-07-07 (+41d) | 2027-06-20 → 2027-07-31 (+41d) | 0d → -68d | SDR-2-CON-TS-ZA-3080 → SDR-2-CON-TS-ZA-3080 FS+1d | resources SIC- Cost [1334.15]; Plumbing Helper [40.13 h]; Labor [44.81 h]; Plumber [40.13 h]; Excavator [16.2 h]; Excavator Operator [120.53 h] → SIC- Cost [15579.3]; Plumbing Helper [40.13 h]; Labor [44.81 h]; Plumber [40.13 h]; Excavator [16.2 h]; Excavator Operator [120.53 h] |
| 5 | **TSE NETWORK IN ( PH2-G-MCZ0 )** |  | 2027-06-20 → 2027-10-30 (+132d) |  |  |  |
| 6 | **Pipes Work** |  | 2027-06-20 → 2027-10-30 (+132d) |  |  |  |
| 1 | **Excavation** |  | 2026-11-09 → 2027-03-15 (+126d) |  |  |  |
| SDR-2-CON-TS-ZA-2500 | Excavation for TSE HDPE Pipes 125 mm Section 2 |  | 2026-11-09 → 2027-03-15 (+126d) | 55d → -40d | SDR-2-CON-RW-ZG-2540, SDR-2-CON-TS-ZA-3480 FF → SDR-2-CON-TS-ZA-3480, SDR-2-CON-RW-ZG-2540 | resources SIC- Cost [31428.1]; Plumbing Helper [67.9 h]; Labor [51.21 h]; Plumber [67.9 h]; Excavator [10.6 h]; Excavator Operator [67.9 h] → SIC- Cost [15714]; Plumbing Helper [67.9 h]; Labor [51.21 h]; Plumber [67.9 h]; Excavator [10.6 h]; Excavator Operator [67.9 h] |
| SDR-2-CON-TS-ZA-3480 | Excavation for TSE HDPE Pipes 125 mm Section 1 |  | 2026-11-09 → 2027-03-03 (+114d) | 55d → -59d |  | resources SIC- Cost [31428.1]; Plumbing Helper [67.9 h]; Labor [51.21 h]; Plumber [67.9 h]; Excavator [20 h]; Excavator Operator [67.9 h] → SIC- Cost [15714]; Plumbing Helper [67.9 h]; Labor [51.21 h]; Plumber [67.9 h]; Excavator [20 h]; Excavator Operator [67.9 h] |
| 3 | **bedding Works** | 2027-03-04 → 2027-04-20 (+47d) | 2027-04-01 → 2027-05-13 (+42d) |  |  |  |
| SDR-2-CON-TS-ZA-2530 | Sand bedding for TSE HDPE Pipes 125 mm | 2027-03-04 → 2027-04-20 (+47d) | 2027-04-01 → 2027-05-13 (+42d) | 5d → -58d |  | resources SIC- Cost [31428.1]; Plumbing Helper [95.54 h]; Labor [51.21 h]; Plumber [95.54 h]; Excavator [12 h]; Excavator Operator [119.42 h] → SIC- Cost [7857.01]; Plumbing Helper [95.54 h]; Labor [51.21 h]; Plumber [95.54 h]; Excavator [12 h]; Excavator Operator [119.42 h] |
| 2 | **Pipes Laying** | 2027-04-03 → 2027-08-07 (+126d) | 2027-04-26 → 2027-08-30 (+126d) |  |  |  |
| SDR-2-CON-TS-ZA-2510 | Install TSE 125 mm HDPE Pipe | 2027-04-03 → 2027-08-07 (+126d) | 2027-04-26 → 2027-08-30 (+126d) | 7d → -103d | SDR-2-CON-TS-ZA-2500, SDR-2-CON-TS-ZA-2530 → SDR-2-CON-TS-ZA-2500, SDR-2-CON-TS-ZA-2530, SDR-2-CLO-AS-E-1010 | resources SIC- Cost [102141]; Plumbing Helper [67.9 h]; Labor [96.01 h]; Plumber [81.48 h]; Excavator [13.66 h]; Excavator Operator [81.48 h] → SIC- Cost [70713.1]; Plumbing Helper [67.9 h]; Labor [96.01 h]; Plumber [81.48 h]; Excavator [13.66 h]; Excavator Operator [81.48 h] |
| 5 | **Testing** | 2027-04-27 → 2027-09-12 (+138d) | 2027-05-05 → 2027-09-20 (+138d) |  |  |  |
| SDR-2-CON-TS-ZA-2520 | Testing of TSE HDPE Pipe 125 mm. | 2027-04-27 → 2027-09-12 (+138d) | 2027-05-05 → 2027-09-20 (+138d) | 7d → -113d |  | resources SIC- Cost [23571]; Plumbing Helper [76.43 h]; Labor [25.6 h]; Plumber [76.43 h]; Excavator [10 h]; Excavator Operator [95.54 h] → SIC- Cost [15714]; Plumbing Helper [76.43 h]; Labor [25.6 h]; Plumber [76.43 h]; Excavator [10 h]; Excavator Operator [95.54 h] |
| 4 | **Backfilling** | 2027-05-31 → 2027-10-10 (+132d) | 2027-06-20 → 2027-10-30 (+132d) |  |  |  |
| SDR-2-CON-TS-ZA-2540 | Backfilling of TSE HDPE Pipe 125 mm. | 2027-05-31 → 2027-10-10 (+132d) | 2027-06-20 → 2027-10-30 (+132d) | 0d → -129d | SDR-2-TC-CW-1010, SDR-2-CON-PW-ZA-2320, SDR-2-CON-PW-ZA-2350, SDR-2-CON-PW-ZA-1070 SS, SDR-2-CON-PW-ZA-2210, SDR-2-CON-TS-ZA-2590, SDR-2-CON-TS-ZA-3040, SDR-2-CON-TS-ZA-2990, SDR-2-CON-TS-ZA-2940, SDR-2-CON-TS-ZA-2490, SDR-2-CON-TS-ZA-2440, SDR-2-CON-TS-ZA-2360, SDR-2-CON-TS-ZA-2390, SDR-2-CON-TS-ZA-3190, SDR-2-CON-TS-ZA-3140, SDR-2-CON-TS-ZA-2190, SDR-2-CON-TS-ZA-1990, SDR-2-CON-TS-ZA-2140, SDR-2-CON-TS-ZA-1970, SDR-2-CON-TS-ZA-2890, SDR-2-CON-TS-ZA-2840, SDR-2-CON-TS-ZA-2740, SDR-2-CON-TS-ZA-2690 SS, SDR-2-CON-TS-ZA-2090, SDR-2-CON-TS-ZA-1950 SS, SDR-2-CON-TS-ZA-2040, SDR-2-CON-TS-ZA-1930 SS, SDR-2-CON-TS-ZA-1930 FF, SDR-2-CON-TS-ZA-2260, SDR-2-CON-TS-ZA-2290, SDR-2-CON-TS-ZA-1070, SDR-2-CON-TS-ZA-1910 SS, SDR-2-CON-ST-ZA-5070 SS, SDR-2-CON-ST-ZA-4920 SS, SDR-2-CON-ST-ZA-4770, SDR-2-CON-ST-ZA-4620, SDR-2-CON-ST-ZA-4470, SDR-2-CON-ST-ZA-4320, SDR-2-CON-ST-ZA-4020, SDR-2-CON-RW-ZG-2210, SDR-2-CON-RW-ZG-2060, SDR-2-CON-RW-ZG-1910, SDR-2-CON-RW-ZG-1760, SDR-2-CON-RW-ZG-1610, SDR-2-CON-RW-ZG-1460, SDR-2-CON-RW-ZG-1310, SDR-2-CON-RW-ZG-1160 SS, SDR-2-CON-RW-ZA-2830, SDR-2-CON-RW-ZA-2690, SDR-2-CON-RW-ZA-2550, SDR-2-CON-RW-ZA-2410, SDR-2-CON-RW-ZA-2270, SDR-2-CON-RW-ZA-2130, SDR-2-CON-RW-ZA-1990, SDR-2-CON-RW-ZA-1850, SDR-2-CON-RW-ZA-1710, SDR-2-CON-RW-ZA-1570, SDR-2-CON-RW-ZA-1290, SDR-2-CON-RW-ZA-1150 SS, SDR-2-CON-TS-ZA-2520 → SDR-2-CON-TS-ZA-2520, SDR-2-TC-SN-1030 SS, SDR-2-TC-CW-1010, SDR-2-CON-PW-ZA-2320, SDR-2-CON-PW-ZA-2350, SDR-2-CON-PW-ZA-1070 SS, SDR-2-CON-PW-ZA-2210, SDR-2-CON-TS-ZA-2590, SDR-2-CON-TS-ZA-3090 SS, SDR-2-CON-TS-ZA-3040, SDR-2-CON-TS-ZA-2990, SDR-2-CON-TS-ZA-2940, SDR-2-CON-TS-ZA-2490, SDR-2-CON-TS-ZA-2440, SDR-2-CON-TS-ZA-2360, SDR-2-CON-TS-ZA-2390, SDR-2-CON-TS-ZA-3190, SDR-2-CON-TS-ZA-3140, SDR-2-CON-TS-ZA-2190, SDR-2-CON-TS-ZA-1990, SDR-2-CON-TS-ZA-2140, SDR-2-CON-TS-ZA-1970, SDR-2-CON-TS-ZA-2890, SDR-2-CON-TS-ZA-2840, SDR-2-CON-TS-ZA-2790, SDR-2-CON-TS-ZA-2740, SDR-2-CON-TS-ZA-2690 SS, SDR-2-CON-TS-ZA-2640, SDR-2-CON-TS-ZA-2090, SDR-2-CON-TS-ZA-1950, SDR-2-CON-TS-ZA-2040, SDR-2-CON-TS-ZA-1930 SS, SDR-2-CON-TS-ZA-1930 FF, SDR-2-CON-TS-ZA-2260, SDR-2-CON-TS-ZA-2290, SDR-2-CON-TS-ZA-1070, SDR-2-CON-TS-ZA-1910, SDR-2-CON-ST-ZA-6120 SS, SDR-2-CON-ST-ZA-5520 SS, SDR-2-CON-ST-ZA-5970 SS, SDR-2-CON-ST-ZA-5220 SS, SDR-2-CON-ST-ZA-5070 SS, SDR-2-CON-ST-ZA-4920 SS, SDR-2-CON-ST-ZA-4770, SDR-2-CON-ST-ZA-4620, SDR-2-CON-ST-ZA-4470, SDR-2-CON-ST-ZA-4320, SDR-2-CON-ST-ZA-4170, SDR-2-CON-ST-ZA-4020, SDR-2-CON-RW-ZG-2210, SDR-2-CON-RW-ZG-2060, SDR-2-CON-RW-ZG-1910, SDR-2-CON-RW-ZG-1760, SDR-2-CON-RW-ZG-1610, SDR-2-CON-RW-ZG-1460, SDR-2-CON-RW-ZG-1310, SDR-2-CON-RW-ZG-1160, SDR-2-CON-RW-ZA-2830, SDR-2-CON-RW-ZA-2690, SDR-2-CON-RW-ZA-2550, SDR-2-CON-RW-ZA-2410, SDR-2-CON-RW-ZA-2270, SDR-2-CON-RW-ZA-2130, SDR-2-CON-RW-ZA-1990, SDR-2-CON-RW-ZA-1850, SDR-2-CON-RW-ZA-1710, SDR-2-CON-RW-ZA-1570, SDR-2-CON-RW-ZA-1290, SDR-2-CON-RW-ZA-1150 | resources SIC- Cost [23571]; Plumbing Helper [143.3 h]; Labor [25.6 h]; Plumber [143.3 h]; Excavator [14.4 h]; Excavator Operator [179.13 h] → SIC- Cost [31428.1]; Plumbing Helper [143.3 h]; Labor [25.6 h]; Plumber [143.3 h]; Excavator [14.4 h]; Excavator Operator [179.13 h] |
| 3 | **Valve Chambers & Valves** | 2026-11-09 → 2027-02-25 (+108d) | 2027-05-12 → 2027-09-02 (+113d) |  |  |  |
| 3 | **Excavation** | 2026-11-09 → 2027-02-25 (+108d) | 2026-12-24 → 2027-04-17 (+114d) |  |  |  |
| SDR-2-CON-TS-ZA-3490 | Excavation for Valve Chambers Section 1 | 2026-11-09 → 2027-02-25 (+108d) | 2026-12-01 → 2027-03-24 (+113d) | 57d → -59d |  | resources SIC- Cost [43105.5]; Plumbing Helper [238.84 h]; Labor [44.81 h]; Plumber [238.84 h]; Excavator [12 h]; Excavator Operator [298.55 h] → SIC- Cost [5842.24]; Plumbing Helper [238.84 h]; Labor [44.81 h]; Plumber [238.84 h]; Excavator [12 h]; Excavator Operator [298.55 h] |
| SDR-2-CON-TS-ZA-2560 | Excavation for Valve Chambers Section 2 | 2026-12-02 → 2027-03-25 (+113d) | 2026-12-24 → 2027-04-17 (+114d) | 57d → -59d |  | resources SIC- Cost [43105.5]; Plumbing Helper [238.84 h]; Labor [44.81 h]; Plumber [238.84 h]; Excavator [12 h]; Excavator Operator [298.55 h] → SIC- Cost [5842.24]; Plumbing Helper [238.84 h]; Labor [44.81 h]; Plumber [238.84 h]; Excavator [12 h]; Excavator Operator [298.55 h] |
| 1 | **bedding Works** | 2027-02-16 → 2027-06-08 (+112d) | 2027-03-17 → 2027-07-01 (+106d) |  |  |  |
| SDR-2-CON-TS-ZA-2550 | Sand bedding for Valve Chambers | 2027-02-16 → 2027-06-08 (+112d) | 2027-03-17 → 2027-07-01 (+106d) | 12d → -98d |  | resources SIC- Cost [9271.88]; Plumbing Helper [76.43 h]; Labor [51.21 h]; Plumber [76.43 h]; Excavator [10.74 h]; Excavator Operator [95.54 h] → SIC- Cost [7789.66]; Plumbing Helper [76.43 h]; Labor [51.21 h]; Plumber [76.43 h]; Excavator [10.74 h]; Excavator Operator [95.54 h] |
| 4 | **Install Chambers & Valves** | 2027-03-18 → 2027-07-03 (+107d) | 2027-04-11 → 2027-07-26 (+106d) |  |  |  |
| SDR-2-CON-TS-ZA-2570 | Valve Chambers & Valves Installation | 2027-03-18 → 2027-07-03 (+107d) | 2027-04-11 → 2027-07-26 (+106d) | 12d → -98d |  | resources SIC- Cost [13106.5]; Plumbing Helper [133.75 h]; Labor [44.81 h]; Plumber [133.75 h]; Excavator [12 h]; Excavator Operator [167.19 h] → SIC- Cost [35053.4]; Plumbing Helper [133.75 h]; Labor [44.81 h]; Plumber [133.75 h]; Excavator [12 h]; Excavator Operator [167.19 h] |
| 5 | **Testing** | 2027-04-12 → 2027-07-27 (+106d) | 2027-04-28 → 2027-08-11 (+105d) |  |  |  |
| SDR-2-CON-TS-ZA-2580 | Testing Chambers & Valves Installation | 2027-04-12 → 2027-07-27 (+106d) | 2027-04-28 → 2027-08-11 (+105d) | 1d → -98d | SDR-2-CON-ST-ZA-3350, SDR-2-CON-SE-ZA-1930, SDR-2-CON-SE-ZA-1430, SDR-2-CON-TS-ZA-2570 SS+10d → SDR-2-CON-TS-ZA-2570, SDR-2-CON-ST-ZA-3350, SDR-2-CON-SE-ZA-1930, SDR-2-CON-SE-ZA-1430 | resources SIC- Cost [1806.63]; Plumbing Helper [66.88 h]; Labor [44.81 h]; Plumber [66.88 h]; Excavator [6 h]; Excavator Operator [83.59 h] → SIC- Cost [7789.66]; Plumbing Helper [66.88 h]; Labor [44.81 h]; Plumber [66.88 h]; Excavator [6 h]; Excavator Operator [83.59 h] |
| 6 | **Backfilling** | 2027-04-24 → 2027-08-15 (+113d) | 2027-05-12 → 2027-09-02 (+113d) |  |  |  |
| SDR-2-CON-TS-ZA-2590 | Backfilling Chambers & Valves Installation | 2027-04-24 → 2027-08-15 (+113d) | 2027-05-12 → 2027-09-02 (+113d) | 1d → -98d | SDR-2-CON-SE-ZA-2040, SDR-2-CON-TS-ZA-2580 SS+10d → SDR-2-CON-TS-ZA-2580 FS+2d, SDR-2-CON-SE-ZA-2040 | resources SIC- Cost [1334.15]; Plumbing Helper [49.13 h]; Labor [44.81 h]; Plumber [49.13 h]; Excavator [8 h]; Excavator Operator [70.14 h] → SIC- Cost [15579.3]; Plumbing Helper [49.13 h]; Labor [44.81 h]; Plumber [49.13 h]; Excavator [8 h]; Excavator Operator [70.14 h] |
| PW | **Portable Water** |  | 2027-06-20 → 2027-10-09 (+111d) |  |  |  |
| ZA | **ZONE A** |  | 2027-06-20 → 2027-10-09 (+111d) |  |  |  |
| 1 | **PORTABLE WATER IN ( PH2-COL-MC10 )** |  | 2027-06-08 → 2027-08-11 (+64d) |  |  |  |
| 7 | **Pipes Work** |  | 2027-05-09 → 2027-07-26 (+78d) |  |  |  |
| 1 | **Excavation** |  | 2027-02-15 → 2027-06-14 (+119d) |  |  |  |
| SDR-2-CON-PW-ZA-3710 | Excavation for PW HDPE Pipes 315 mm Section 1 |  | 2026-12-20 → 2027-02-17 (+59d) | 10d → -37d | SDR-2-CON-RW-ZG-2340 FF, SDR-2-CON-TS-ZA-1000 FF → SDR-2-CON-TS-ZA-1000 SS, SDR-2-CON-RW-ZG-2340 | resources SIC- Cost; Plumbing Helper [67.9 h]; Labor [38.41 h]; Plumber [67.9 h]; Excavator [12.88 h]; Excavator Operator [67.9 h]; Un-Skilled Labor [135.79 h]; Skilled Labor [135.79 h] → SIC- Cost [41173.5]; Plumbing Helper [67.9 h]; Labor [38.41 h]; Plumber [67.9 h]; Excavator [12.88 h]; Excavator Operator [67.9 h]; Un-Skilled Labor [135.79 h]; Skilled Labor [135.79 h] |
| SDR-2-CON-PW-ZA-1000 | Excavation for PW HDPE Pipes 315 mm Section 2 |  | 2027-02-15 → 2027-06-14 (+119d) | 46d → -64d | SDR-2-CON-RW-ZG-1360, SDR-2-CON-PW-ZA-3710 FF, SDR-2-CON-RW-ZA-1620 FF, SDR-2-CON-RW-ZG-1660 FF, SDR-2-CON-ST-ZA-4730 FF, SDR-2-CON-ST-ZA-4650 FF, SDR-2-CON-SL-ZA-3490 FF → SDR-2-CON-PW-ZA-3710, SDR-2-CON-ST-ZA-4730, SDR-2-CON-ST-ZA-4650, SDR-2-CON-RW-ZG-1360, SDR-2-CON-RW-ZA-1620, SDR-2-CON-SL-ZA-3490, SDR-2-CON-RW-ZG-1660 | resources SIC- Cost; Plumbing Helper [67.9 h]; Labor [38.41 h]; Plumber [67.9 h]; Excavator [7.16 h]; Excavator Operator [67.9 h]; Un-Skilled Labor [135.79 h]; Skilled Labor [135.79 h] → SIC- Cost [41173.5]; Plumbing Helper [67.9 h]; Labor [38.41 h]; Plumber [67.9 h]; Excavator [7.16 h]; Excavator Operator [67.9 h]; Un-Skilled Labor [135.79 h]; Skilled Labor [135.79 h] |
| 8 | **bedding Works** |  | 2027-04-06 → 2027-06-21 (+76d) |  |  |  |
| SDR-2-CON-PW-ZA-2200 | Sand bedding for PW HDPE Pipes 315 mm |  | 2027-04-06 → 2027-06-21 (+76d) | 8d → -64d | SDR-2-CON-PW-ZA-1000 FF, SDR-2-CON-CC-ZA-1820 FF → SDR-2-CON-PW-ZA-1000, SDR-2-CON-CC-ZA-1820 | resources SIC- Cost [82341.5]; Plumbing Helper [114.64 h]; Labor [38.41 h]; Plumber [114.64 h]; Excavator [6 h]; Excavator Operator [143.3 h]; Un-Skilled Labor [143.3 h]; Skilled Labor [143.3 h] → SIC- Cost [20586.8]; Plumbing Helper [114.64 h]; Labor [38.41 h]; Plumber [114.64 h]; Excavator [6 h]; Excavator Operator [143.3 h]; Un-Skilled Labor [143.3 h]; Skilled Labor [143.3 h] |
| 2 | **Pipes Laying** |  | 2027-04-11 → 2027-06-28 (+78d) |  |  |  |
| SDR-2-CON-PW-ZA-1010 | Install PW 315 mm HDPE Pipe |  | 2027-04-11 → 2027-06-28 (+78d) | 4d → -64d | SDR-2-CON-PW-ZA-2200 FF, SDR-2-CON-ST-ZA-3350 FF, SDR-2-CON-SE-ZA-1440 FF → SDR-2-CON-PW-ZA-2200, SDR-2-CON-ST-ZA-3350, SDR-2-CON-SE-ZA-1440 | resources SIC- Cost [267610]; Plumbing Helper [152.86 h]; Labor [76.81 h]; Plumber [152.86 h]; Excavator [12 h]; Excavator Operator [191.07 h]; Un-Skilled Labor [191.07 h]; Skilled Labor [191.07 h] → SIC- Cost [185281]; Plumbing Helper [152.86 h]; Labor [76.81 h]; Plumber [152.86 h]; Excavator [12 h]; Excavator Operator [191.07 h]; Un-Skilled Labor [191.07 h]; Skilled Labor [191.07 h] |
| 5 | **Testing** | 2027-04-12 → 2027-06-29 (+78d) | 2027-04-19 → 2027-07-06 (+78d) |  |  |  |
| SDR-2-CON-PW-ZA-1080 | Testing of PW HDPE Pipe 315 mm. | 2027-04-12 → 2027-06-29 (+78d) | 2027-04-19 → 2027-07-06 (+78d) | 4d → -64d |  | resources SIC- Cost [61756.1]; Plumbing Helper [76.43 h]; Labor [25.6 h]; Plumber [76.43 h]; Excavator [12 h]; Excavator Operator [95.54 h]; Un-Skilled Labor [95.54 h]; Skilled Labor [95.54 h] → SIC- Cost [41173.5]; Plumbing Helper [76.43 h]; Labor [25.6 h]; Plumber [76.43 h]; Excavator [12 h]; Excavator Operator [95.54 h]; Un-Skilled Labor [95.54 h]; Skilled Labor [95.54 h] |
| 9 | **Backfilling** | 2027-04-20 → 2027-07-07 (+78d) | 2027-05-09 → 2027-07-26 (+78d) |  |  |  |
| SDR-2-CON-PW-ZA-2210 | Backfilling of PW HDPE Pipe 315 mm. | 2027-04-20 → 2027-07-07 (+78d) | 2027-05-09 → 2027-07-26 (+78d) | 4d → -64d |  | resources SIC- Cost [61756.1]; Plumbing Helper [133.75 h]; Labor [25.6 h]; Plumber [48 h]; Excavator [6 h]; Excavator Operator [66.41 h]; Un-Skilled Labor [167.19 h]; Skilled Labor [76.49 h] → SIC- Cost [82347]; Plumbing Helper [133.75 h]; Labor [25.6 h]; Plumber [48 h]; Excavator [6 h]; Excavator Operator [66.41 h]; Un-Skilled Labor [167.19 h]; Skilled Labor [76.49 h] |
| 3 | **Valve Chambers & Valves & Fire Hydrant** | 2026-12-20 → 2027-02-11 (+53d) | 2027-06-08 → 2027-08-11 (+64d) |  |  |  |
| 3 | **Excavation** | 2026-12-20 → 2027-02-11 (+53d) | 2027-02-03 → 2027-04-04 (+60d) |  |  |  |
| SDR-2-CON-PW-ZA-3720 | Excavation for Valve Chambers Section 1 | 2026-12-20 → 2027-02-11 (+53d) | 2027-01-11 → 2027-03-07 (+55d) | 44d → -37d |  | resources SIC- Cost [56482.5]; Plumbing Helper [229.29 h]; Labor [25.6 h]; Plumber [229.29 h]; Excavator [14.1 h]; Excavator Operator [286.61 h]; Un-Skilled Labor [286.61 h]; Skilled Labor [286.61 h] → SIC- Cost [15062.8]; Plumbing Helper [229.29 h]; Labor [25.6 h]; Plumber [229.29 h]; Excavator [14.1 h]; Excavator Operator [286.61 h]; Un-Skilled Labor [286.61 h]; Skilled Labor [286.61 h] |
| SDR-2-CON-PW-ZA-1040 | Excavation for Valve Chambers Section 2 | 2027-01-12 → 2027-03-08 (+55d) | 2027-02-03 → 2027-04-04 (+60d) | 44d → -37d |  | resources SIC- Cost [56482.5]; Plumbing Helper [229.29 h]; Labor [25.6 h]; Plumber [229.29 h]; Excavator [7.57 h]; Excavator Operator [286.61 h]; Un-Skilled Labor [286.61 h]; Skilled Labor [286.61 h] → SIC- Cost [15062.8]; Plumbing Helper [229.29 h]; Labor [25.6 h]; Plumber [229.29 h]; Excavator [7.57 h]; Excavator Operator [286.61 h]; Un-Skilled Labor [286.61 h]; Skilled Labor [286.61 h] |
| 1 | **bedding Works** | 2027-02-04 → 2027-04-05 (+60d) | 2027-02-23 → 2027-04-22 (+58d) |  |  |  |
| SDR-2-CON-PW-ZA-1020 | Sand bedding for Valve Chambers | 2027-02-04 → 2027-04-05 (+60d) | 2027-02-23 → 2027-04-22 (+58d) | 44d → -37d |  | resources SIC- Cost [23901.1]; Plumbing Helper [76.43 h]; Labor [25.6 h]; Plumber [76.43 h]; Excavator [6 h]; Excavator Operator [95.54 h]; Un-Skilled Labor [95.54 h]; Skilled Labor [95.54 h] → SIC- Cost [20083.7]; Plumbing Helper [76.43 h]; Labor [25.6 h]; Plumber [76.43 h]; Excavator [6 h]; Excavator Operator [95.54 h]; Un-Skilled Labor [95.54 h]; Skilled Labor [95.54 h] |

| ID | Task | Start | Finish | Complete | Total float | Predecessors | Other |
| --- | --- | --- | --- | --- | --- | --- | --- |
| 4 | **Install Chambers & Valves & Fire Hydrant** | 2027-02-24 → 2027-04-24 (+59d) | 2027-03-23 → 2027-05-22 (+60d) |  |  |  |  |
| SDR-2-CON-PW-ZA-1050 | Install Chambers & Valves | 2027-02-24 → 2027-04-24 (+59d) | 2027-03-23 → 2027-05-22 (+60d) |  | 44d → -37d |  | resources SIC- Cost [18906.2]; Plumbing Helper [191.07 h]; Labor [25.6 h]; Plumber [191.07 h]; Excavator [12 h]; Excavator Operator [238.84 h]; Un-Skilled Labor [238.84 h]; Skilled Labor [238.84 h] → SIC- Cost [90376.7]; Plumbing Helper [191.07 h]; Labor [25.6 h]; Plumber [191.07 h]; Excavator [12 h]; Excavator Operator [238.84 h]; Un-Skilled Labor [238.84 h]; Skilled Labor [238.84 h] |
| 2 | **Testing** | 2027-05-05 → 2027-07-11 (+67d) | 2027-05-13 → 2027-07-19 (+67d) |  |  |  |  |
| SDR-2-CON-PW-ZA-1030 | Testing for Chambers & Valves | 2027-05-05 → 2027-07-11 (+67d) | 2027-05-13 → 2027-07-19 (+67d) |  | 10d → -79d |  | resources SIC- Cost [23901.1]; Plumbing Helper [76.43 h]; Labor [25.6 h]; Plumber [76.43 h]; Excavator [12 h]; Excavator Operator [95.54 h]; Un-Skilled Labor [95.54 h]; Skilled Labor [95.54 h] → SIC- Cost [20083.7]; Plumbing Helper [76.43 h]; Labor [25.6 h]; Plumber [76.43 h]; Excavator [12 h]; Excavator Operator [95.54 h]; Un-Skilled Labor [95.54 h]; Skilled Labor [95.54 h] |
| 6 | **Backfilling** | 2027-05-10 → 2027-07-20 (+71d) | 2027-06-08 → 2027-08-11 (+64d) |  |  |  |  |
| SDR-2-CON-PW-ZA-1070 | Backfilling for Chambers & Valves | 2027-05-10 → 2027-07-20 (+71d) | 2027-06-08 → 2027-08-11 (+64d) |  | 10d → -79d | SDR-2-CON-RW-ZG-1760 SS+2d, SDR-2-CON-PW-ZA-1030 SS+4d → SDR-2-CON-PW-ZA-1030, SDR-2-CON-RW-ZG-1760 | resources SIC- Cost [1798.57]; Plumbing Helper [61.97 h]; Labor [25.6 h]; Plumber [61.97 h]; Excavator [265.6 h]; Excavator Operator [90.29 h]; Un-Skilled Labor [100.37 h]; Skilled Labor [80.22 h] → SIC- Cost [40167.4]; Plumbing Helper [61.97 h]; Labor [25.6 h]; Plumber [61.97 h]; Excavator [265.6 h]; Excavator Operator [90.29 h]; Un-Skilled Labor [100.37 h]; Skilled Labor [80.22 h] |
| 2 | **PORTABLE WATER IN ( PH2-COL-MC20 )** |  | 2027-05-03 → 2027-07-05 (+63d) |  |  |  |  |
| 7 | **Pipes Work** |  | 2027-05-03 → 2027-07-05 (+63d) |  |  |  |  |
| SDR-2-CON-PW-ZA-2260 | Excavation for PW HDPE Pipes 315 mm Section 2 |  |  |  |  | SDR-2-CON-PW-ZA-3730 FF, SDR-2-CON-RW-ZG-1510, SDR-2-CON-RW-ZG-1660 FF, SDR-2-CON-ST-ZA-4130 FF, SDR-2-CON-SL-ZA-3460 FF → SDR-2-CON-PW-ZA-3730, SDR-2-CON-ST-ZA-4130, SDR-2-CON-RW-ZG-1660, SDR-2-CON-RW-ZG-1510, SDR-2-CON-SL-ZA-3460, SDR-2-CON-ST-ZA-3350 | resources SIC- Cost; Plumbing Helper [67.9 h]; Labor [38.41 h]; Plumber [67.9 h]; Excavator [8.78 h]; Excavator Operator [67.9 h]; Un-Skilled Labor [67.9 h]; Skilled Labor [67.9 h] → SIC- Cost [41173.5]; Plumbing Helper [67.9 h]; Labor [38.41 h]; Plumber [67.9 h]; Excavator [8.78 h]; Excavator Operator [67.9 h]; Un-Skilled Labor [67.9 h]; Skilled Labor [67.9 h] |
| SDR-2-CON-PW-ZA-3730 | Excavation for PW HDPE Pipes 315 mm Section 1 |  |  |  |  | SDR-2-CON-PW-ZA-3710 FF → SDR-2-CON-PW-ZA-3710 SS+5d | resources SIC- Cost; Plumbing Helper [67.9 h]; Labor [38.41 h]; Plumber [67.9 h]; Excavator [13.81 h]; Excavator Operator [67.9 h]; Un-Skilled Labor [67.9 h]; Skilled Labor [67.9 h] → SIC- Cost [41173.5]; Plumbing Helper [67.9 h]; Labor [38.41 h]; Plumber [67.9 h]; Excavator [13.81 h]; Excavator Operator [67.9 h]; Un-Skilled Labor [67.9 h]; Skilled Labor [67.9 h] |
| 8 | **bedding Works** |  | 2027-02-11 → 2027-04-21 (+69d) |  |  |  |  |
| SDR-2-CON-PW-ZA-2340 | Sand bedding for PW HDPE Pipes 315 mm |  | 2027-02-11 → 2027-04-21 (+69d) |  | 73d → -5d | SDR-2-CON-PW-ZA-2260 FF, SDR-2-CON-RW-ZA-1050 → SDR-2-CON-PW-ZA-2260, SDR-2-CON-RW-ZA-1050 | resources SIC- Cost [82341.5]; Plumbing Helper [114.64 h]; Labor [38.41 h]; Plumber [114.64 h]; Excavator [10 h]; Excavator Operator [143.3 h]; Un-Skilled Labor [143.3 h]; Skilled Labor [143.3 h] → SIC- Cost [20586.8]; Plumbing Helper [114.64 h]; Labor [38.41 h]; Plumber [114.64 h]; Excavator [10 h]; Excavator Operator [143.3 h]; Un-Skilled Labor [143.3 h]; Skilled Labor [143.3 h] |
| 2 | **Pipes Laying** |  | 2027-02-11 → 2027-04-28 (+76d) |  |  |  |  |
| SDR-2-CON-PW-ZA-2270 | Install PW 315 mm HDPE Pipe |  | 2027-02-11 → 2027-04-28 (+76d) |  | 73d → -5d | SDR-2-CON-PW-ZA-2340 FF → SDR-2-CON-PW-ZA-2340 | resources SIC- Cost [267610]; Plumbing Helper [143.3 h]; Labor [76.81 h]; Plumber [143.3 h]; Excavator [27.25 h]; Excavator Operator [179.13 h]; Un-Skilled Labor [179.13 h]; Skilled Labor [179.13 h] → SIC- Cost [185281]; Plumbing Helper [143.3 h]; Labor [76.81 h]; Plumber [143.3 h]; Excavator [27.25 h]; Excavator Operator [179.13 h]; Un-Skilled Labor [179.13 h]; Skilled Labor [179.13 h] |
| 5 | **Testing** |  | 2027-03-06 → 2027-05-05 (+60d) |  |  |  |  |
| SDR-2-CON-PW-ZA-2330 | Testing of PW HDPE Pipe 315 mm. |  | 2027-03-06 → 2027-05-05 (+60d) |  | 55d → -5d | SDR-2-CON-PW-ZA-2270 FF, SDR-2-CON-SE-ZA-1940 FF, SDR-2-CON-SE-ZA-1930 FF → SDR-2-CON-PW-ZA-2270, SDR-2-CON-SE-ZA-1940, SDR-2-CON-SE-ZA-1930 | resources SIC- Cost [61756.1]; Plumbing Helper [76.43 h]; Labor [25.6 h]; Plumber [76.43 h]; Excavator [6 h]; Excavator Operator [95.54 h]; Un-Skilled Labor [95.54 h]; Skilled Labor [95.54 h] → SIC- Cost [41173.5]; Plumbing Helper [76.43 h]; Labor [25.6 h]; Plumber [76.43 h]; Excavator [6 h]; Excavator Operator [95.54 h]; Un-Skilled Labor [95.54 h]; Skilled Labor [95.54 h] |
| 9 | **Backfilling** |  | 2027-05-03 → 2027-07-05 (+63d) |  |  |  |  |
| SDR-2-CON-PW-ZA-2350 | Backfilling of PW HDPE Pipe 315 mm. |  | 2027-05-03 → 2027-07-05 (+63d) |  | 9d → -46d | SDR-2-CON-PW-ZA-2330 FF, SDR-2-CON-RW-ZG-1610 FF, SDR-2-CON-RW-ZG-1460 FF → SDR-2-CON-PW-ZA-2330, SDR-2-CON-RW-ZG-1610, SDR-2-CON-RW-ZG-1460 | resources SIC- Cost [61756.1]; Plumbing Helper [58.12 h]; Labor [25.6 h]; Plumber [58.12 h]; Excavator [8 h]; Excavator Operator [70.14 h]; Un-Skilled Labor [70.14 h]; Skilled Labor [80.22 h] → SIC- Cost [82347]; Plumbing Helper [58.12 h]; Labor [25.6 h]; Plumber [58.12 h]; Excavator [8 h]; Excavator Operator [70.14 h]; Un-Skilled Labor [70.14 h]; Skilled Labor [80.22 h] |
| 3 | **Valve Chambers & Valves & Fire Hydrant** | 2026-12-21 → 2027-02-11 (+52d) | 2027-04-19 → 2027-06-16 (+58d) |  |  |  |  |
| 3 | **Excavation** | 2026-12-21 → 2027-02-11 (+52d) | 2027-02-07 → 2027-04-06 (+58d) |  |  |  |  |
| SDR-2-CON-PW-ZA-3740 | Excavation for Valve Chambers Section 1 | 2026-12-21 → 2027-02-11 (+52d) | 2027-01-13 → 2027-03-08 (+54d) |  | 30d → -30d |  | resources SIC- Cost [56482.5]; Plumbing Helper [219.73 h]; Labor [25.6 h]; Plumber [219.73 h]; Excavator [18 h]; Excavator Operator [274.67 h]; Un-Skilled Labor [274.67 h]; Skilled Labor [274.67 h] → SIC- Cost [15062.8]; Plumbing Helper [219.73 h]; Labor [25.6 h]; Plumber [219.73 h]; Excavator [18 h]; Excavator Operator [274.67 h]; Un-Skilled Labor [274.67 h]; Skilled Labor [274.67 h] |
| SDR-2-CON-PW-ZA-2300 | Excavation for Valve Chambers Section 2 | 2027-01-14 → 2027-03-14 (+59d) | 2027-02-07 → 2027-04-06 (+58d) |  | 30d → -30d |  | resources SIC- Cost [56482.5]; Plumbing Helper [219.73 h]; Labor [25.6 h]; Plumber [219.73 h]; Excavator [18 h]; Excavator Operator [274.67 h]; Un-Skilled Labor [274.67 h]; Skilled Labor [274.67 h] → SIC- Cost [15062.8]; Plumbing Helper [219.73 h]; Labor [25.6 h]; Plumber [219.73 h]; Excavator [18 h]; Excavator Operator [274.67 h]; Un-Skilled Labor [274.67 h]; Skilled Labor [274.67 h] |
| 1 | **bedding Works** | 2027-02-08 → 2027-04-07 (+58d) | 2027-02-25 → 2027-04-24 (+58d) |  |  |  |  |
| SDR-2-CON-PW-ZA-2280 | Sand bedding for Valve Chambers | 2027-02-08 → 2027-04-07 (+58d) | 2027-02-25 → 2027-04-24 (+58d) |  | 30d → -30d |  | resources SIC- Cost [23901.1]; Plumbing Helper [95.54 h]; Labor [25.6 h]; Plumber [95.54 h]; Excavator [6 h]; Excavator Operator [119.42 h]; Un-Skilled Labor [119.42 h]; Skilled Labor [119.42 h] → SIC- Cost [20083.7]; Plumbing Helper [95.54 h]; Labor [25.6 h]; Plumber [95.54 h]; Excavator [6 h]; Excavator Operator [119.42 h]; Un-Skilled Labor [119.42 h]; Skilled Labor [119.42 h] |
| 4 | **Install Chambers & Valves & Fire Hydrant** | 2027-02-27 → 2027-04-25 (+57d) | 2027-03-20 → 2027-05-11 (+52d) |  |  |  |  |
| SDR-2-CON-PW-ZA-2310 | Install Chambers & Valves | 2027-02-27 → 2027-04-25 (+57d) | 2027-03-20 → 2027-05-11 (+52d) |  | 30d → -30d |  | resources SIC- Cost [18906.2]; Plumbing Helper [152.86 h]; Labor [25.6 h]; Plumber [152.86 h]; Excavator [12 h]; Excavator Operator [191.07 h]; Un-Skilled Labor [191.07 h]; Skilled Labor [191.07 h] → SIC- Cost [90376.7]; Plumbing Helper [152.86 h]; Labor [25.6 h]; Plumber [152.86 h]; Excavator [12 h]; Excavator Operator [191.07 h]; Un-Skilled Labor [191.07 h]; Skilled Labor [191.07 h] |
| 2 | **Testing** | 2027-03-21 → 2027-05-12 (+52d) | 2027-03-28 → 2027-05-25 (+58d) |  |  |  |  |
| SDR-2-CON-PW-ZA-2290 | Testing for Chambers & Valves | 2027-03-21 → 2027-05-12 (+52d) | 2027-03-28 → 2027-05-25 (+58d) |  | 30d → -30d |  | resources SIC- Cost [23901.1]; Plumbing Helper [76.43 h]; Labor [25.6 h]; Plumber [76.43 h]; Excavator [14 h]; Excavator Operator [95.54 h]; Un-Skilled Labor [95.54 h]; Skilled Labor [95.54 h] → SIC- Cost [20083.7]; Plumbing Helper [76.43 h]; Labor [25.6 h]; Plumber [76.43 h]; Excavator [14 h]; Excavator Operator [95.54 h]; Un-Skilled Labor [95.54 h]; Skilled Labor [95.54 h] |
| 6 | **Backfilling** | 2027-03-29 → 2027-05-26 (+58d) | 2027-04-19 → 2027-06-16 (+58d) |  |  |  |  |
| SDR-2-CON-PW-ZA-2320 | Backfilling for Chambers & Valves | 2027-03-29 → 2027-05-26 (+58d) | 2027-04-19 → 2027-06-16 (+58d) |  | 30d → -30d |  | resources SIC- Cost [1798.57]; Plumbing Helper [52.2 h]; Labor [25.6 h]; Plumber [52.2 h]; Excavator [6 h]; Excavator Operator [62.68 h]; Un-Skilled Labor [62.68 h]; Skilled Labor [62.68 h] → SIC- Cost [40167.4]; Plumbing Helper [52.2 h]; Labor [25.6 h]; Plumber [52.2 h]; Excavator [6 h]; Excavator Operator [62.68 h]; Un-Skilled Labor [62.68 h]; Skilled Labor [62.68 h] |
| 11 | **PORTABLE WATER IN ( PH2-A-MCA0 )** |  | 2027-06-08 → 2027-07-12 (+34d) |  |  |  |  |
| 7 | **Pipes Work** |  | 2027-06-08 → 2027-07-12 (+34d) |  |  |  |  |
| 1 | **Excavation** |  | 2027-03-18 → 2027-05-11 (+54d) |  |  |  |  |
| SDR-2-CON-PW-ZA-1200 | Excavation for PW HDPE Pipe 225 mm. Section 2 |  | 2027-03-18 → 2027-05-11 (+54d) | 50% → 75% | 1d → -52d | SDR-2-CON-PW-ZA-3750, SDR-2-CON-ST-ZA-5100 FS+2d → SDR-2-CON-PW-ZA-3750, SDR-2-CON-ST-ZA-5180 FS+3d, SDR-2-CON-ST-ZA-5100 FS+2d | resources SIC- Cost; Plumbing Helper [67.9 h]; Labor [38.41 h]; Plumber [67.9 h]; Excavator [17.38 h]; Excavator Operator [67.9 h]; Un-Skilled Labor [67.9 h]; Skilled Labor [67.9 h] → SIC- Cost [19451.3]; Plumbing Helper [67.9 h]; Labor [38.41 h]; Plumber [67.9 h]; Excavator [17.38 h]; Excavator Operator [67.9 h]; Un-Skilled Labor [67.9 h]; Skilled Labor [67.9 h] |
| SDR-2-CON-PW-ZA-3750 | Excavation for PW HDPE Pipe 225 mm. Section 1 |  | 2027-01-13 → 2027-02-28 (+46d) | 25% → 30% | 10d → -36d | SDR-2-CON-PW-ZA-3730 SS → SDR-2-CON-PW-ZA-3730 SS+3d | resources SIC- Cost; Plumbing Helper [67.9 h]; Labor [38.41 h]; Plumber [67.9 h]; Excavator [17.38 h]; Excavator Operator [67.9 h]; Un-Skilled Labor [67.9 h]; Skilled Labor [67.9 h] → SIC- Cost [19451.7]; Plumbing Helper [67.9 h]; Labor [38.41 h]; Plumber [67.9 h]; Excavator [17.38 h]; Excavator Operator [67.9 h]; Un-Skilled Labor [67.9 h]; Skilled Labor [67.9 h] |
| 3 | **bedding Works** |  | 2027-04-11 → 2027-05-30 (+49d) |  |  |  |  |
| SDR-2-CON-PW-ZA-2220 | Sand bedding for PW HDPE Pipe 225 mm. |  | 2027-04-11 → 2027-05-30 (+49d) | 25% → 45% | 1d → -52d |  | resources SIC- Cost [38897.9]; Plumbing Helper [114.64 h]; Labor [38.41 h]; Plumber [114.64 h]; Excavator [13 h]; Excavator Operator [143.3 h]; Un-Skilled Labor [143.3 h]; Skilled Labor [143.3 h] → SIC- Cost [9725.85]; Plumbing Helper [114.64 h]; Labor [38.41 h]; Plumber [114.64 h]; Excavator [13 h]; Excavator Operator [143.3 h]; Un-Skilled Labor [143.3 h]; Skilled Labor [143.3 h] |
| 2 | **Pipes Laying** |  | 2027-05-01 → 2027-06-10 (+40d) |  |  |  |  |
| SDR-2-CON-PW-ZA-1210 | Install PW 225 mm HDPE Pipe |  | 2027-05-01 → 2027-06-10 (+40d) | 25% → 45% | 1d → -52d |  | resources SIC- Cost [126418]; Plumbing Helper [114.64 h]; Labor [76.81 h]; Plumber [114.64 h]; Excavator [6 h]; Excavator Operator [143.3 h]; Un-Skilled Labor [143.3 h]; Skilled Labor [143.3 h] → SIC- Cost [87532.6]; Plumbing Helper [114.64 h]; Labor [76.81 h]; Plumber [114.64 h]; Excavator [6 h]; Excavator Operator [143.3 h]; Un-Skilled Labor [143.3 h]; Skilled Labor [143.3 h] |
| 5 | **Testing** | 2027-05-06 → 2027-06-15 (+40d) | 2027-05-13 → 2027-06-22 (+40d) |  |  |  |  |
| SDR-2-CON-PW-ZA-1280 | Testing of PW HDPE Pipe 225 mm. | 2027-05-06 → 2027-06-15 (+40d) | 2027-05-13 → 2027-06-22 (+40d) |  | 0d → -52d |  | resources SIC- Cost [29173.4]; Plumbing Helper [76.43 h]; Labor [25.6 h]; Plumber [76.43 h]; Excavator [8 h]; Excavator Operator [95.54 h]; Un-Skilled Labor [95.54 h]; Skilled Labor [95.54 h] → SIC- Cost [19451.7]; Plumbing Helper [76.43 h]; Labor [25.6 h]; Plumber [76.43 h]; Excavator [8 h]; Excavator Operator [95.54 h]; Un-Skilled Labor [95.54 h]; Skilled Labor [95.54 h] |
| 4 | **Backfilling** | 2027-05-15 → 2027-06-23 (+39d) | 2027-06-08 → 2027-07-12 (+34d) |  |  |  |  |
| SDR-2-CON-PW-ZA-2230 | Backfilling of PW HDPE Pipe 225 mm. | 2027-05-15 → 2027-06-23 (+39d) | 2027-06-08 → 2027-07-12 (+34d) |  | 0d → -52d |  | resources SIC- Cost [29173.4]; Plumbing Helper [171.96 h]; Labor [25.6 h]; Plumber [171.96 h]; Excavator [6 h]; Excavator Operator [184.73 h]; Un-Skilled Labor [214.96 h]; Skilled Labor [214.96 h] → SIC- Cost [38903.4]; Plumbing Helper [171.96 h]; Labor [25.6 h]; Plumber [171.96 h]; Excavator [6 h]; Excavator Operator [184.73 h]; Un-Skilled Labor [214.96 h]; Skilled Labor [214.96 h] |
| 3 | **Valve Chambers & Valves & Fire Hydrant** | 2026-12-21 → 2027-02-11 (+52d) | 2027-06-07 → 2027-06-28 (+21d) |  |  |  |  |
| 3 | **Excavation** | 2026-12-21 → 2027-02-11 (+52d) | 2027-02-11 → 2027-04-06 (+54d) |  |  |  |  |
| SDR-2-CON-PW-ZA-3760 | Excavation for Valve Chambers Section 1 | 2026-12-21 → 2027-02-11 (+52d) | 2027-01-12 → 2027-03-07 (+54d) |  | 39d → -23d |  | resources SIC- Cost [56482.5]; Plumbing Helper [229.29 h]; Labor [25.6 h]; Plumber [229.29 h]; Excavator [18 h]; Excavator Operator [286.61 h]; Un-Skilled Labor [286.61 h]; Skilled Labor [286.61 h] → SIC- Cost [15062.8]; Plumbing Helper [229.29 h]; Labor [25.6 h]; Plumber [229.29 h]; Excavator [18 h]; Excavator Operator [286.61 h]; Un-Skilled Labor [286.61 h]; Skilled Labor [286.61 h] |
| SDR-2-CON-PW-ZA-2680 | Excavation for Valve Chambers Section 2 | 2027-01-20 → 2027-03-15 (+54d) | 2027-02-11 → 2027-04-06 (+54d) |  | 33d → -25d |  | resources SIC- Cost [56482.5]; Plumbing Helper [229.29 h]; Labor [25.6 h]; Plumber [229.29 h]; Excavator [18 h]; Excavator Operator [286.61 h]; Un-Skilled Labor [286.61 h]; Skilled Labor [286.61 h] → SIC- Cost [15062.8]; Plumbing Helper [229.29 h]; Labor [25.6 h]; Plumber [229.29 h]; Excavator [18 h]; Excavator Operator [286.61 h]; Un-Skilled Labor [286.61 h]; Skilled Labor [286.61 h] |
| 1 | **bedding Works** | 2027-02-13 → 2027-04-07 (+53d) | 2027-03-08 → 2027-04-29 (+52d) |  |  |  |  |
| SDR-2-CON-PW-ZA-2660 | Sand bedding for Valve Chambers | 2027-02-13 → 2027-04-07 (+53d) | 2027-03-08 → 2027-04-29 (+52d) |  | 33d → -25d |  | resources SIC- Cost [23901.1]; Plumbing Helper [114.64 h]; Labor [25.6 h]; Plumber [114.64 h]; Excavator [6 h]; Excavator Operator [143.3 h]; Un-Skilled Labor [143.3 h]; Skilled Labor [143.3 h] → SIC- Cost [20083.7]; Plumbing Helper [114.64 h]; Labor [25.6 h]; Plumber [114.64 h]; Excavator [6 h]; Excavator Operator [143.3 h]; Un-Skilled Labor [143.3 h]; Skilled Labor [143.3 h] |
| 4 | **Install Chambers & Valves & Fire Hydrant** | 2027-03-14 → 2027-05-01 (+48d) | 2027-04-05 → 2027-05-29 (+54d) |  |  |  |  |
| SDR-2-CON-PW-ZA-2690 | Install Chambers & Valves | 2027-03-14 → 2027-05-01 (+48d) | 2027-04-05 → 2027-05-29 (+54d) |  | 33d → -25d |  | resources SIC- Cost [18906.2]; Plumbing Helper [133.75 h]; Labor [25.6 h]; Plumber [133.75 h]; Excavator [12 h]; Excavator Operator [167.19 h]; Un-Skilled Labor [167.19 h]; Skilled Labor [167.19 h] → SIC- Cost [90376.7]; Plumbing Helper [133.75 h]; Labor [25.6 h]; Plumber [133.75 h]; Excavator [12 h]; Excavator Operator [167.19 h]; Un-Skilled Labor [167.19 h]; Skilled Labor [167.19 h] |
| 2 | **Testing** | 2027-05-06 → 2027-06-02 (+27d) | 2027-05-15 → 2027-06-10 (+26d) |  |  |  |  |
| SDR-2-CON-PW-ZA-2670 | Testing for Chambers & Valves | 2027-05-06 → 2027-06-02 (+27d) | 2027-05-15 → 2027-06-10 (+26d) |  | 11d → -25d |  | resources SIC- Cost [23901.1]; Plumbing Helper [76.43 h]; Labor [25.6 h]; Plumber [40.13 h]; Excavator [8 h]; Excavator Operator [95.54 h]; Un-Skilled Labor [95.54 h]; Skilled Labor [95.54 h] → SIC- Cost [20083.7]; Plumbing Helper [76.43 h]; Labor [25.6 h]; Plumber [40.13 h]; Excavator [8 h]; Excavator Operator [95.54 h]; Un-Skilled Labor [95.54 h]; Skilled Labor [95.54 h] |
| 6 | **Backfilling** | 2027-05-22 → 2027-06-12 (+21d) | 2027-06-07 → 2027-06-28 (+21d) |  |  |  |  |
| SDR-2-CON-PW-ZA-2700 | Backfilling for Chambers & Valves | 2027-05-22 → 2027-06-12 (+21d) | 2027-06-07 → 2027-06-28 (+21d) |  | 11d → -25d |  | resources SIC- Cost [1798.57]; Plumbing Helper [124.2 h]; Labor [25.6 h]; Plumber [124.2 h]; Excavator [6 h]; Excavator Operator [155.25 h]; Un-Skilled Labor [155.25 h]; Skilled Labor [155.25 h] → SIC- Cost [40167.4]; Plumbing Helper [124.2 h]; Labor [25.6 h]; Plumber [124.2 h]; Excavator [6 h]; Excavator Operator [155.25 h]; Un-Skilled Labor [155.25 h]; Skilled Labor [155.25 h] |
| 12 | **PORTABLE WATER IN ( PH2-A-MCB0 )** |  | 2027-06-14 → 2027-10-09 (+117d) |  |  |  |  |
| 7 | **Pipes Work** |  | 2027-06-14 → 2027-10-09 (+117d) |  |  |  |  |
| 1 | **Excavation** |  | 2027-02-07 → 2027-02-21 (+14d) |  |  |  |  |
| SDR-2-CON-PW-ZA-2710 | Excavation for PW HDPE Pipe 225 mm. Section 2 |  | 2027-02-07 → 2027-02-21 (+14d) |  | 50d → 22d |  | resources SIC- Cost; Plumbing Helper [67.9 h]; Labor [38.41 h]; Plumber [67.9 h]; Excavator [17.38 h]; Excavator Operator [67.9 h]; Un-Skilled Labor [67.9 h]; Skilled Labor [67.9 h] → SIC- Cost [19451.7]; Plumbing Helper [67.9 h]; Labor [38.41 h]; Plumber [67.9 h]; Excavator [17.38 h]; Excavator Operator [67.9 h]; Un-Skilled Labor [67.9 h]; Skilled Labor [67.9 h] |
| SDR-2-CON-PW-ZA-3770 | Excavation for PW HDPE Pipe 225 mm. Section 1 |  | 2027-01-13 → 2027-02-14 (+32d) |  | 10d → -36d | SDR-2-CON-PW-ZA-3750 SS → SDR-2-CON-PW-ZA-3750 SS+3d | resources SIC- Cost; Plumbing Helper [67.9 h]; Labor [38.41 h]; Plumber [67.9 h]; Excavator [17.38 h]; Excavator Operator [67.9 h]; Un-Skilled Labor [67.9 h]; Skilled Labor [67.9 h] → SIC- Cost [19451.7]; Plumbing Helper [67.9 h]; Labor [38.41 h]; Plumber [67.9 h]; Excavator [17.38 h]; Excavator Operator [67.9 h]; Un-Skilled Labor [67.9 h]; Skilled Labor [67.9 h] |
| 3 | **bedding Works** |  | 2027-05-01 → 2027-06-01 (+31d) |  |  |  |  |
| SDR-2-CON-PW-ZA-2740 | Sand bedding for PW HDPE Pipe 225 mm. |  | 2027-05-01 → 2027-06-01 (+31d) |  | 5d → -47d |  | resources SIC- Cost; Plumbing Helper [105.09 h]; Labor [38.41 h]; Plumber [105.09 h]; Excavator [6 h]; Excavator Operator [131.36 h]; Un-Skilled Labor [131.36 h]; Skilled Labor [131.36 h] → SIC- Cost [9725.85]; Plumbing Helper [105.09 h]; Labor [38.41 h]; Plumber [105.09 h]; Excavator [6 h]; Excavator Operator [131.36 h]; Un-Skilled Labor [131.36 h]; Skilled Labor [131.36 h] |
| 2 | **Pipes Laying** |  | 2027-05-30 → 2027-06-08 (+9d) |  |  |  |  |
| SDR-2-CON-PW-ZA-2720 | Install PW 225 mm HDPE Pipe |  | 2027-05-30 → 2027-06-08 (+9d) |  | 5d → -47d |  | resources SIC- Cost [126418]; Plumbing Helper [171.96 h]; Labor [76.81 h]; Plumber [171.96 h]; Excavator [12 h]; Excavator Operator [214.96 h]; Un-Skilled Labor [214.96 h]; Skilled Labor [214.96 h] → SIC- Cost [87532.6]; Plumbing Helper [171.96 h]; Labor [76.81 h]; Plumber [171.96 h]; Excavator [12 h]; Excavator Operator [214.96 h]; Un-Skilled Labor [214.96 h]; Skilled Labor [214.96 h] |
| 5 | **Testing** | 2027-05-31 → 2027-09-15 (+107d) | 2027-06-08 → 2027-09-23 (+107d) |  |  |  |  |
| SDR-2-CON-PW-ZA-2730 | Testing of PW HDPE Pipe 225 mm. | 2027-05-31 → 2027-09-15 (+107d) | 2027-06-08 → 2027-09-23 (+107d) |  | 5d → -132d |  | resources SIC- Cost [29173.4]; Plumbing Helper [76.43 h]; Labor [25.6 h]; Plumber [76.43 h]; Excavator [8 h]; Excavator Operator [95.54 h]; Un-Skilled Labor [95.54 h]; Skilled Labor [95.54 h] → SIC- Cost [19451.7]; Plumbing Helper [76.43 h]; Labor [25.6 h]; Plumber [76.43 h]; Excavator [8 h]; Excavator Operator [95.54 h]; Un-Skilled Labor [95.54 h]; Skilled Labor [95.54 h] |
| 4 | **Backfilling** | 2027-05-31 → 2027-09-25 (+117d) | 2027-06-14 → 2027-10-09 (+117d) |  |  |  |  |
| SDR-2-CON-PW-ZA-2750 | Backfilling of PW HDPE Pipe 225 mm. | 2027-05-31 → 2027-09-25 (+117d) | 2027-06-14 → 2027-10-09 (+117d) |  | 5d → -132d | SDR-2-CON-PW-ZA-2730 SS → SDR-2-CON-PW-ZA-2730 | resources SIC- Cost [29173.4]; Plumbing Helper [40.13 h]; Labor [25.6 h]; Plumber [40.13 h]; Excavator [6 h]; Excavator Operator [214.96 h]; Un-Skilled Labor [214.96 h]; Skilled Labor [214.96 h] → SIC- Cost [38903.4]; Plumbing Helper [40.13 h]; Labor [25.6 h]; Plumber [40.13 h]; Excavator [6 h]; Excavator Operator [214.96 h]; Un-Skilled Labor [214.96 h]; Skilled Labor [214.96 h] |
| 3 | **Valve Chambers & Valves & Fire Hydrant** | 2026-12-21 → 2027-02-11 (+52d) | 2027-02-28 → 2027-06-20 (+112d) |  |  |  |  |
| 3 | **Excavation** | 2026-12-21 → 2027-02-11 (+52d) | 2027-01-13 → 2027-04-06 (+83d) |  |  |  |  |

| ID | Task | Start | Finish | Total float | Predecessors | Other |
| --- | --- | --- | --- | --- | --- | --- |
| SDR-2-CON-PW-ZA-3780 | Excavation for Valve Chambers Section 1 | 2026-12-21 → 2027-02-11 (+52d) | 2027-01-13 → 2027-03-08 (+54d) | 87d → -36d |  | resources SIC- Cost [56482.5]; Plumbing Helper [191.07 h]; Labor [25.6 h]; Plumber [191.07 h]; Excavator [18 h]; Excavator Operator [238.84 h]; Un-Skilled Labor [238.84 h]; Skilled Labor [238.84 h] → SIC- Cost [15062.8]; Plumbing Helper [191.07 h]; Labor [25.6 h]; Plumber [191.07 h]; Excavator [18 h]; Excavator Operator [238.84 h]; Un-Skilled Labor [238.84 h]; Skilled Labor [238.84 h] |
| SDR-2-CON-PW-ZA-2780 | Excavation for Valve Chambers Section 2 | 2026-12-21 → 2027-03-14 (+83d) | 2027-01-13 → 2027-04-06 (+83d) | 87d → -36d | SDR-2-CON-PW-ZA-3780 SS → SDR-2-CON-PW-ZA-3780 | resources SIC- Cost [56482.5]; Plumbing Helper [191.07 h]; Labor [25.6 h]; Plumber [191.07 h]; Excavator [18 h]; Excavator Operator [238.84 h]; Un-Skilled Labor [238.84 h]; Skilled Labor [238.84 h] → SIC- Cost [15062.8]; Plumbing Helper [191.07 h]; Labor [25.6 h]; Plumber [191.07 h]; Excavator [18 h]; Excavator Operator [238.84 h]; Un-Skilled Labor [238.84 h]; Skilled Labor [238.84 h] |
| 1 | **bedding Works** | 2026-12-21 → 2027-04-07 (+107d) | 2027-01-12 → 2027-04-29 (+107d) |  |  |  |
| SDR-2-CON-PW-ZA-2760 | Sand bedding for Valve Chambers | 2026-12-21 → 2027-04-07 (+107d) | 2027-01-12 → 2027-04-29 (+107d) | 87d → -36d | SDR-2-CON-PW-ZA-2780 SS → SDR-2-CON-PW-ZA-2780 | resources SIC- Cost [23901.1]; Plumbing Helper [105.09 h]; Labor [25.6 h]; Plumber [105.09 h]; Excavator [6 h]; Excavator Operator [131.36 h]; Un-Skilled Labor [131.36 h]; Skilled Labor [131.36 h] → SIC- Cost [20083.7]; Plumbing Helper [105.09 h]; Labor [25.6 h]; Plumber [105.09 h]; Excavator [6 h]; Excavator Operator [131.36 h]; Un-Skilled Labor [131.36 h]; Skilled Labor [131.36 h] |
| 4 | **Install Chambers & Valves & Fire Hydrant** | 2027-01-13 → 2027-05-01 (+108d) | 2027-02-03 → 2027-05-27 (+113d) |  |  |  |
| SDR-2-CON-PW-ZA-2790 | Install Chambers & Valves | 2027-01-13 → 2027-05-01 (+108d) | 2027-02-03 → 2027-05-27 (+113d) | 87d → -36d |  | resources SIC- Cost [18906.2]; Plumbing Helper [191.07 h]; Labor [25.6 h]; Plumber [191.07 h]; Excavator [13.89 h]; Excavator Operator [178.38 h]; Un-Skilled Labor [178.38 h]; Skilled Labor [178.38 h] → SIC- Cost [90376.7]; Plumbing Helper [191.07 h]; Labor [25.6 h]; Plumber [191.07 h]; Excavator [13.89 h]; Excavator Operator [178.38 h]; Un-Skilled Labor [178.38 h]; Skilled Labor [178.38 h] |
| 2 | **Testing** | 2027-02-04 → 2027-05-29 (+114d) | 2027-02-13 → 2027-06-06 (+113d) |  |  |  |
| SDR-2-CON-PW-ZA-2770 | Testing for Chambers & Valves | 2027-02-04 → 2027-05-29 (+114d) | 2027-02-13 → 2027-06-06 (+113d) | 87d → -36d |  | resources SIC- Cost [23901.1]; Plumbing Helper [76.43 h]; Labor [25.6 h]; Plumber [76.43 h]; Excavator [10 h]; Excavator Operator [95.54 h]; Un-Skilled Labor [95.54 h]; Skilled Labor [95.54 h] → SIC- Cost [20083.7]; Plumbing Helper [76.43 h]; Labor [25.6 h]; Plumber [76.43 h]; Excavator [10 h]; Excavator Operator [95.54 h]; Un-Skilled Labor [95.54 h]; Skilled Labor [95.54 h] |
| 6 | **Backfilling** | 2027-02-14 → 2027-06-07 (+113d) | 2027-02-28 → 2027-06-20 (+112d) |  |  |  |
| SDR-2-CON-PW-ZA-2800 | Backfilling for Chambers & Valves | 2027-02-14 → 2027-06-07 (+113d) | 2027-02-28 → 2027-06-20 (+112d) | 87d → -36d |  | resources SIC- Cost [1798.57]; Plumbing Helper [95.54 h]; Labor [25.6 h]; Plumber [95.54 h]; Excavator [6 h]; Excavator Operator [119.42 h]; Un-Skilled Labor [119.42 h]; Skilled Labor [119.42 h] → SIC- Cost [40167.4]; Plumbing Helper [95.54 h]; Labor [25.6 h]; Plumber [95.54 h]; Excavator [6 h]; Excavator Operator [119.42 h]; Un-Skilled Labor [119.42 h]; Skilled Labor [119.42 h] |
| 3 | **PORTABLE WATER IN ( PH2-A-MCC0 )** |  | 2027-05-24 → 2027-06-23 (+30d) |  |  |  |
| 7 | **Pipes Work** |  | 2027-03-30 → 2027-03-25 (-5d) |  |  |  |
| SDR-2-CON-PW-ZA-1400 | Excavation for PW HDPE Pipe 160 mm. Section 2 | 2026-10-01 A → 2026-09-24 A (-7d) | 2026-10-14 A → 2026-10-01 A (-13d) |  | SDR-2-CON-PW-ZA-3770 FF → SDR-2-CON-PW-ZA-3790 | resources SIC- Cost [11823.1]; Plumbing Helper [67.9 h]; Labor [38.41 h]; Plumber [67.9 h]; Excavator [12 h]; Excavator Operator [67.9 h]; Un-Skilled Labor [135.79 h]; Skilled Labor [135.79 h] → SIC- Cost [5914.33]; Plumbing Helper [67.9 h]; Labor [38.41 h]; Plumber [67.9 h]; Excavator [12 h]; Excavator Operator [67.9 h]; Un-Skilled Labor [135.79 h]; Skilled Labor [135.79 h] |
| SDR-2-CON-PW-ZA-3790 | Excavation for PW HDPE Pipe 160 mm. Section 1 | 2026-09-24 A → 2026-10-01 A (+7d) | 2026-10-01 A → 2026-10-14 A (+13d) |  | SDR-2-CON-PW-ZA-1400 → SDR-2-CON-PW-ZA-3770 SS | resources SIC- Cost [11823.1]; Plumbing Helper [67.9 h]; Labor [38.41 h]; Plumber [67.9 h]; Excavator [12 h]; Excavator Operator [67.9 h]; Un-Skilled Labor [135.79 h]; Skilled Labor [135.79 h] → SIC- Cost [5914.33]; Plumbing Helper [67.9 h]; Labor [38.41 h]; Plumber [67.9 h]; Excavator [12 h]; Excavator Operator [67.9 h]; Un-Skilled Labor [135.79 h]; Skilled Labor [135.79 h] |
| 3 | **bedding Works** |  | 2027-02-06 → 2027-02-17 (+11d) |  |  |  |
| SDR-2-CON-PW-ZA-2240 | Sand bedding for PW HDPE Pipe 160 mm. |  | 2027-02-06 → 2027-02-17 (+11d) | 65d → 36d | SDR-2-CON-PW-ZA-3790 → SDR-2-CON-PW-ZA-1400 | resources SIC- Cost [11823.1]; Plumbing Helper [95.54 h]; Labor [38.41 h]; Plumber [95.54 h]; Excavator [12 h]; Excavator Operator [119.42 h]; Un-Skilled Labor [119.42 h]; Skilled Labor [119.42 h] → SIC- Cost [2957.16]; Plumbing Helper [95.54 h]; Labor [38.41 h]; Plumber [95.54 h]; Excavator [12 h]; Excavator Operator [119.42 h]; Un-Skilled Labor [119.42 h]; Skilled Labor [119.42 h] |
| 2 | **Pipes Laying** |  | 2027-03-02 → 2027-02-25 (-5d) |  |  |  |
| SDR-2-CON-PW-ZA-1410 | Install PW 160 mm HDPE Pipe |  | 2027-03-02 → 2027-02-25 (-5d) | 65d → 36d |  | resources SIC- Cost [38425.2]; Plumbing Helper [171.96 h]; Labor [76.81 h]; Plumber [171.96 h]; Excavator [10.81 h]; Excavator Operator [164.57 h]; Un-Skilled Labor [164.57 h]; Skilled Labor [164.57 h] → SIC- Cost [26614.5]; Plumbing Helper [171.96 h]; Labor [76.81 h]; Plumber [171.96 h]; Excavator [10.81 h]; Excavator Operator [164.57 h]; Un-Skilled Labor [164.57 h]; Skilled Labor [164.57 h] |
| 5 | **Testing** | 2027-03-03 → 2027-02-27 (-4d) | 2027-03-16 → 2027-03-07 (-9d) |  |  |  |
| SDR-2-CON-PW-ZA-1480 | Testing of PW HDPE Pipe 160 mm. | 2027-03-03 → 2027-02-27 (-4d) | 2027-03-16 → 2027-03-07 (-9d) | 65d → 36d |  | resources SIC- Cost [8867.35]; Plumbing Helper [76.43 h]; Labor [25.6 h]; Plumber [76.43 h]; Excavator [6 h]; Excavator Operator [95.54 h]; Un-Skilled Labor [65.3 h]; Skilled Labor [95.54 h] → SIC- Cost [5914.33]; Plumbing Helper [76.43 h]; Labor [25.6 h]; Plumber [76.43 h]; Excavator [6 h]; Excavator Operator [95.54 h]; Un-Skilled Labor [65.3 h]; Skilled Labor [95.54 h] |
| 4 | **Backfilling** | 2027-03-17 → 2027-03-08 (-9d) | 2027-03-30 → 2027-03-25 (-5d) |  |  |  |
| SDR-2-CON-PW-ZA-2250 | Backfilling of PW HDPE Pipe 160 mm. | 2027-03-17 → 2027-03-08 (-9d) | 2027-03-30 → 2027-03-25 (-5d) | 65d → 36d |  | resources SIC- Cost [8867.35]; Plumbing Helper [51.28 h]; Labor [25.6 h]; Plumber [51.28 h]; Excavator [6 h]; Excavator Operator [167.19 h]; Un-Skilled Labor [167.19 h]; Skilled Labor [167.19 h] → SIC- Cost [11828.6]; Plumbing Helper [51.28 h]; Labor [25.6 h]; Plumber [51.28 h]; Excavator [6 h]; Excavator Operator [167.19 h]; Un-Skilled Labor [167.19 h]; Skilled Labor [167.19 h] |
| 3 | **Valve Chambers & Valves & Fire Hydrant** | 2027-01-14 → 2027-02-11 (+28d) | 2027-05-24 → 2027-06-23 (+30d) |  |  |  |
| 3 | **Excavation** | 2027-01-14 → 2027-02-11 (+28d) | 2027-03-04 → 2027-04-08 (+35d) |  |  |  |
| SDR-2-CON-PW-ZA-3800 | Excavation for Valve Chambers Section 1 | 2027-01-14 → 2027-02-11 (+28d) | 2027-02-07 → 2027-03-08 (+29d) | 23d → -34d | SDR-2-CON-PW-ZA-1400 SS → SDR-2-CON-PW-ZA-3790 SS | resources SIC- Cost [56482.5]; Plumbing Helper [191.07 h]; Labor [25.6 h]; Plumber [191.07 h]; Excavator [12 h]; Excavator Operator [238.84 h]; Un-Skilled Labor [238.84 h]; Skilled Labor [238.84 h] → SIC- Cost [15062.8]; Plumbing Helper [191.07 h]; Labor [25.6 h]; Plumber [191.07 h]; Excavator [12 h]; Excavator Operator [238.84 h]; Un-Skilled Labor [238.84 h]; Skilled Labor [238.84 h] |
| SDR-2-CON-PW-ZA-3230 | Excavation for Valve Chambers Section 2 | 2027-02-08 → 2027-03-16 (+36d) | 2027-03-04 → 2027-04-08 (+35d) | 23d → -36d |  | resources SIC- Cost [56482.5]; Plumbing Helper [191.07 h]; Labor [25.6 h]; Plumber [191.07 h]; Excavator [12 h]; Excavator Operator [238.84 h]; Un-Skilled Labor [238.84 h]; Skilled Labor [238.84 h] → SIC- Cost [15062.8]; Plumbing Helper [191.07 h]; Labor [25.6 h]; Plumber [191.07 h]; Excavator [12 h]; Excavator Operator [238.84 h]; Un-Skilled Labor [238.84 h]; Skilled Labor [238.84 h] |
| 1 | **bedding Works** | 2027-03-06 → 2027-04-10 (+35d) | 2027-04-01 → 2027-05-02 (+31d) |  |  |  |
| SDR-2-CON-PW-ZA-3210 | Sand bedding for Valve Chambers | 2027-03-06 → 2027-04-10 (+35d) | 2027-04-01 → 2027-05-02 (+31d) | 23d → -36d |  | resources SIC- Cost [23901.1]; Plumbing Helper [114.64 h]; Labor [25.6 h]; Plumber [114.64 h]; Excavator [12 h]; Excavator Operator [143.3 h]; Un-Skilled Labor [143.3 h]; Skilled Labor [143.3 h] → SIC- Cost [20083.7]; Plumbing Helper [114.64 h]; Labor [25.6 h]; Plumber [114.64 h]; Excavator [12 h]; Excavator Operator [143.3 h]; Un-Skilled Labor [143.3 h]; Skilled Labor [143.3 h] |
| 4 | **Install Chambers & Valves & Fire Hydrant** | 2027-04-03 → 2027-05-03 (+30d) | 2027-04-25 → 2027-05-31 (+36d) |  |  |  |
| SDR-2-CON-PW-ZA-3240 | Install Chambers & Valves | 2027-04-03 → 2027-05-03 (+30d) | 2027-04-25 → 2027-05-31 (+36d) | 23d → -36d |  | resources SIC- Cost [18906.2]; Plumbing Helper [191.07 h]; Labor [25.6 h]; Plumber [191.07 h]; Excavator [6 h]; Excavator Operator [168.3 h]; Un-Skilled Labor [168.3 h]; Skilled Labor [178.37 h] → SIC- Cost [90376.7]; Plumbing Helper [191.07 h]; Labor [25.6 h]; Plumber [191.07 h]; Excavator [6 h]; Excavator Operator [168.3 h]; Un-Skilled Labor [168.3 h]; Skilled Labor [178.37 h] |
| 2 | **Testing** | 2027-04-26 → 2027-06-01 (+36d) | 2027-05-02 → 2027-06-07 (+36d) |  |  |  |
| SDR-2-CON-PW-ZA-3220 | Testing for Chambers & Valves | 2027-04-26 → 2027-06-01 (+36d) | 2027-05-02 → 2027-06-07 (+36d) | 23d → -36d |  | resources SIC- Cost [23901.1]; Plumbing Helper [76.43 h]; Labor [25.6 h]; Plumber [76.43 h]; Excavator [8 h]; Excavator Operator [95.54 h]; Un-Skilled Labor [95.54 h]; Skilled Labor [95.54 h] → SIC- Cost [20083.7]; Plumbing Helper [76.43 h]; Labor [25.6 h]; Plumber [76.43 h]; Excavator [8 h]; Excavator Operator [95.54 h]; Un-Skilled Labor [95.54 h]; Skilled Labor [95.54 h] |
| 6 | **Backfilling** | 2027-05-03 → 2027-06-08 (+36d) | 2027-05-24 → 2027-06-23 (+30d) |  |  |  |
| SDR-2-CON-PW-ZA-3250 | Backfilling for Chambers & Valves | 2027-05-03 → 2027-06-08 (+36d) | 2027-05-24 → 2027-06-23 (+30d) | 23d → -36d |  | resources SIC- Cost [1798.57]; Plumbing Helper [49.69 h]; Labor [25.6 h]; Plumber [49.69 h]; Excavator [10 h]; Excavator Operator [167.19 h]; Un-Skilled Labor [167.19 h]; Skilled Labor [167.19 h] → SIC- Cost [40167.4]; Plumbing Helper [49.69 h]; Labor [25.6 h]; Plumber [49.69 h]; Excavator [10 h]; Excavator Operator [167.19 h]; Un-Skilled Labor [167.19 h]; Skilled Labor [167.19 h] |
| 4 | **PORTABLE WATER IN ( PH2-A-MCD0 )** |  | 2027-05-31 → 2027-08-24 (+85d) |  |  |  |
| 7 | **Pipes Work** |  | 2027-05-06 → 2027-04-22 (-14d) |  |  |  |
| SDR-2-CON-PW-ZA-3260 | Excavation for PW HDPE Pipe 160 mm. Section 2 | 2026-10-05 A → 2026-09-24 A (-11d) | 2026-10-20 A → 2026-10-04 A (-16d) |  | SDR-2-CON-TS-ZA-3260 SS, SDR-2-CON-PW-ZA-1400 FF, SDR-2-CON-SL-ZA-3290 → SDR-2-CON-PW-ZA-3810, SDR-2-CON-TE-ZA-4170, SDR-2-CON-TE-ZA-4180, SDR-2-CON-TE-ZA-4080, SDR-2-CON-TE-ZA-4090, SDR-2-CON-TE-ZA-3990, SDR-2-CON-TE-ZA-4000, SDR-2-CON-TE-ZA-3900, SDR-2-CON-TE-ZA-3910, SDR-2-CON-TE-ZA-3810, SDR-2-CON-TE-ZA-3820, SDR-2-CON-TE-ZA-3720 | resources SIC- Cost; Plumbing Helper [67.9 h]; Labor [38.41 h]; Plumber [67.9 h]; Excavator [28.88 h]; Excavator Operator [67.9 h]; Un-Skilled Labor [67.9 h]; Skilled Labor [67.9 h] → SIC- Cost [5914.33]; Plumbing Helper [67.9 h]; Labor [38.41 h]; Plumber [67.9 h]; Excavator [28.88 h]; Excavator Operator [67.9 h]; Un-Skilled Labor [67.9 h]; Skilled Labor [67.9 h] |
| SDR-2-CON-PW-ZA-3810 | Excavation for PW HDPE Pipe 160 mm. Section 1 | 2026-09-24 A → 2026-10-05 A (+11d) | 2026-10-04 A → 2026-10-20 A (+16d) |  | SDR-2-CON-PW-ZA-3260, SDR-2-CON-TE-ZA-4170, SDR-2-CON-TE-ZA-4180, SDR-2-CON-TE-ZA-4080, SDR-2-CON-TE-ZA-4090, SDR-2-CON-TE-ZA-3990, SDR-2-CON-TE-ZA-4000, SDR-2-CON-TE-ZA-3900, SDR-2-CON-TE-ZA-3910, SDR-2-CON-TE-ZA-3810, SDR-2-CON-TE-ZA-3820, SDR-2-CON-TE-ZA-3720 → SDR-2-CON-TS-ZA-1270 SS, SDR-2-CON-PW-ZA-3790 SS+3d, SDR-2-CON-SL-ZA-3290 | resources SIC- Cost; Plumbing Helper [67.9 h]; Labor [38.41 h]; Plumber [67.9 h]; Excavator [28.88 h]; Excavator Operator [67.9 h]; Un-Skilled Labor [67.9 h]; Skilled Labor [67.9 h] → SIC- Cost [5914.33]; Plumbing Helper [67.9 h]; Labor [38.41 h]; Plumber [67.9 h]; Excavator [28.88 h]; Excavator Operator [67.9 h]; Un-Skilled Labor [67.9 h]; Skilled Labor [67.9 h] |
| 3 | **bedding Works** |  | 2027-03-23 → 2027-03-25 (+2d) |  |  |  |
| SDR-2-CON-PW-ZA-3290 | Sand bedding for PW HDPE Pipe 160 mm. |  | 2027-03-23 → 2027-03-25 (+2d) | 16d → 9.2d | SDR-2-CON-PW-ZA-3810 → SDR-2-CON-PW-ZA-3260 | resources SIC- Cost [11823.1]; Plumbing Helper [95.54 h]; Labor [38.41 h]; Plumber [95.54 h]; Excavator [12 h]; Excavator Operator [67.9 h]; Un-Skilled Labor [67.9 h]; Skilled Labor [67.9 h] → SIC- Cost [2957.16]; Plumbing Helper [95.54 h]; Labor [38.41 h]; Plumber [95.54 h]; Excavator [12 h]; Excavator Operator [67.9 h]; Un-Skilled Labor [67.9 h]; Skilled Labor [67.9 h] |
| 2 | **Pipes Laying** |  | 2027-04-15 → 2027-04-01 (-14d) |  |  |  |
| SDR-2-CON-PW-ZA-3270 | Install PW 160 mm HDPE Pipe |  | 2027-04-15 → 2027-04-01 (-14d) | 16d → 9.2d |  | resources SIC- Cost [38425.2]; Plumbing Helper [152.86 h]; Labor [76.81 h]; Plumber [152.86 h]; Excavator [12 h]; Excavator Operator [140.68 h]; Un-Skilled Labor [140.68 h]; Skilled Labor [150.76 h] → SIC- Cost [26614.5]; Plumbing Helper [152.86 h]; Labor [76.81 h]; Plumber [152.86 h]; Excavator [12 h]; Excavator Operator [140.68 h]; Un-Skilled Labor [140.68 h]; Skilled Labor [150.76 h] |
| 5 | **Testing** | 2027-04-17 → 2027-04-03 (-14d) | 2027-04-25 → 2027-04-11 (-14d) |  |  |  |
| SDR-2-CON-PW-ZA-3280 | Testing of PW HDPE Pipe 160 mm. | 2027-04-17 → 2027-04-03 (-14d) | 2027-04-25 → 2027-04-11 (-14d) | 16d → 9.2d |  | resources SIC- Cost [8867.35]; Plumbing Helper [76.43 h]; Labor [25.6 h]; Plumber [76.43 h]; Excavator [6 h]; Excavator Operator [95.54 h]; Un-Skilled Labor [95.54 h]; Skilled Labor [95.54 h] → SIC- Cost [5914.33]; Plumbing Helper [76.43 h]; Labor [25.6 h]; Plumber [76.43 h]; Excavator [6 h]; Excavator Operator [95.54 h]; Un-Skilled Labor [95.54 h]; Skilled Labor [95.54 h] |
| 4 | **Backfilling** | 2027-04-26 → 2027-04-12 (-14d) | 2027-05-06 → 2027-04-22 (-14d) |  |  |  |
| SDR-2-CON-PW-ZA-3300 | Backfilling of PW HDPE Pipe 160 mm. | 2027-04-26 → 2027-04-12 (-14d) | 2027-05-06 → 2027-04-22 (-14d) | 33d → 9.2d |  | resources SIC- Cost [8867.35]; Plumbing Helper [143.3 h]; Labor [25.6 h]; Plumber [40.13 h]; Excavator [6 h]; Excavator Operator [179.13 h]; Un-Skilled Labor [179.13 h]; Skilled Labor [179.13 h] → SIC- Cost [11828.6]; Plumbing Helper [143.3 h]; Labor [25.6 h]; Plumber [40.13 h]; Excavator [6 h]; Excavator Operator [179.13 h]; Un-Skilled Labor [179.13 h]; Skilled Labor [179.13 h] |
| 3 | **Valve Chambers & Valves & Fire Hydrant** | 2027-01-20 → 2027-03-15 (+54d) | 2027-05-31 → 2027-08-24 (+85d) |  |  |  |
| 3 | **Excavation** | 2027-01-20 → 2027-03-15 (+54d) | 2027-03-21 → 2027-06-21 (+92d) |  |  |  |
| SDR-2-CON-PW-ZA-3820 | Excavation for Valve Chambers Section 1 | 2027-01-20 → 2027-03-15 (+54d) | 2027-02-13 → 2027-04-07 (+53d) | 5d → -52d | SDR-2-CON-PW-ZA-3260 SS → SDR-2-CON-PW-ZA-3810 SS | resources SIC- Cost [56482.5]; Plumbing Helper [229.29 h]; Labor [25.6 h]; Plumber [229.29 h]; Excavator [12 h]; Excavator Operator [286.61 h]; Un-Skilled Labor [286.61 h]; Skilled Labor [286.61 h] → SIC- Cost [15062.8]; Plumbing Helper [229.29 h]; Labor [25.6 h]; Plumber [229.29 h]; Excavator [12 h]; Excavator Operator [286.61 h]; Un-Skilled Labor [286.61 h]; Skilled Labor [286.61 h] |
| SDR-2-CON-PW-ZA-3330 | Excavation for Valve Chambers Section 2 | 2027-02-20 → 2027-05-29 (+98d) | 2027-03-21 → 2027-06-21 (+92d) | 0d → -90d | SDR-2-CON-PW-ZA-3820, SDR-2-CON-CC-ZA-1780, SDR-2-CON-TE-ZA-3630 → SDR-2-CON-PW-ZA-3820, SDR-2-CON-CC-ZA-1820 FS+8d, SDR-2-CON-CC-ZA-1780, SDR-2-CON-CC-ZA-1660, SDR-2-CON-TE-ZA-3630 | resources SIC- Cost [56482.5]; Plumbing Helper [229.29 h]; Labor [25.6 h]; Plumber [229.29 h]; Excavator [12 h]; Excavator Operator [286.61 h]; Un-Skilled Labor [286.61 h]; Skilled Labor [286.61 h] → SIC- Cost [15062.8]; Plumbing Helper [229.29 h]; Labor [25.6 h]; Plumber [229.29 h]; Excavator [12 h]; Excavator Operator [286.61 h]; Un-Skilled Labor [286.61 h]; Skilled Labor [286.61 h] |
| 1 | **bedding Works** | 2027-03-22 → 2027-06-22 (+92d) | 2027-04-11 → 2027-07-12 (+92d) |  |  |  |
| SDR-2-CON-PW-ZA-3310 | Sand bedding for Valve Chambers | 2027-03-22 → 2027-06-22 (+92d) | 2027-04-11 → 2027-07-12 (+92d) | 0d → -90d |  | resources SIC- Cost [23901.1]; Plumbing Helper [95.54 h]; Labor [25.6 h]; Plumber [95.54 h]; Excavator [12 h]; Excavator Operator [119.42 h]; Un-Skilled Labor [119.42 h]; Skilled Labor [119.42 h] → SIC- Cost [20083.7]; Plumbing Helper [95.54 h]; Labor [25.6 h]; Plumber [95.54 h]; Excavator [12 h]; Excavator Operator [119.42 h]; Un-Skilled Labor [119.42 h]; Skilled Labor [119.42 h] |
| 4 | **Install Chambers & Valves & Fire Hydrant** | 2027-04-12 → 2027-07-13 (+92d) | 2027-05-04 → 2027-08-04 (+92d) |  |  |  |
| SDR-2-CON-PW-ZA-3340 | Install Chambers & Valves | 2027-04-12 → 2027-07-13 (+92d) | 2027-05-04 → 2027-08-04 (+92d) | 0d → -90d |  | resources SIC- Cost [18906.2]; Plumbing Helper [191.07 h]; Labor [25.6 h]; Plumber [191.07 h]; Excavator [12 h]; Excavator Operator [158.22 h]; Un-Skilled Labor [158.22 h]; Skilled Labor [168.3 h] → SIC- Cost [90376.7]; Plumbing Helper [191.07 h]; Labor [25.6 h]; Plumber [191.07 h]; Excavator [12 h]; Excavator Operator [158.22 h]; Un-Skilled Labor [158.22 h]; Skilled Labor [168.3 h] |
| 2 | **Testing** | 2027-05-05 → 2027-08-05 (+92d) | 2027-05-13 → 2027-08-12 (+91d) |  |  |  |
| SDR-2-CON-PW-ZA-3320 | Testing for Chambers & Valves | 2027-05-05 → 2027-08-05 (+92d) | 2027-05-13 → 2027-08-12 (+91d) | 0d → -90d |  | resources SIC- Cost [23901.1]; Plumbing Helper [66.88 h]; Labor [25.6 h]; Plumber [66.88 h]; Excavator [6 h]; Excavator Operator [83.59 h]; Un-Skilled Labor [83.59 h]; Skilled Labor [83.59 h] → SIC- Cost [20083.7]; Plumbing Helper [66.88 h]; Labor [25.6 h]; Plumber [66.88 h]; Excavator [6 h]; Excavator Operator [83.59 h]; Un-Skilled Labor [83.59 h]; Skilled Labor [83.59 h] |
| 6 | **Backfilling** | 2027-05-15 → 2027-08-14 (+91d) | 2027-05-31 → 2027-08-24 (+85d) |  |  |  |
| SDR-2-CON-PW-ZA-3350 | Backfilling for Chambers & Valves | 2027-05-15 → 2027-08-14 (+91d) | 2027-05-31 → 2027-08-24 (+85d) | 0d → -90d |  | resources SIC- Cost [1798.57]; Plumbing Helper [40.13 h]; Labor [25.6 h]; Plumber [40.13 h]; Excavator [6 h]; Excavator Operator [191.07 h]; Un-Skilled Labor [191.07 h]; Skilled Labor [191.07 h] → SIC- Cost [40167.4]; Plumbing Helper [40.13 h]; Labor [25.6 h]; Plumber [40.13 h]; Excavator [6 h]; Excavator Operator [191.07 h]; Un-Skilled Labor [191.07 h]; Skilled Labor [191.07 h] |
| 5 | **PORTABLE WATER IN ( PH2-A-MCE0 )** |  | 2027-06-17 → 2027-08-26 (+70d) |  |  |  |
| 7 | **Pipes Work** |  | 2027-02-14 → 2027-06-15 (+121d) |  |  |  |
| SDR-2-CON-PW-ZA-3830 | Excavation for PW HDPE Pipe 160 mm. Section 1 |  |  |  | SDR-2-CON-TE-ZA-4540 SS, SDR-2-CON-TE-ZA-4360 SS → SDR-2-CON-PW-ZA-3810 SS+3d, SDR-2-CON-CC-ZA-1640, SDR-2-CON-CC-ZA-1620, SDR-2-CON-TE-ZA-4530, SDR-2-CON-TE-ZA-4540, SDR-2-CON-TE-ZA-4350, SDR-2-CON-TE-ZA-4360, SDR-2-CON-TE-ZA-4260, SDR-2-CON-TE-ZA-4270, SDR-2-CON-MV-ZA-1340, SDR-2-CON-TE-ZA-3730, SDR-2-CON-TE-ZA-3640 | resources SIC- Cost [11823.1]; Plumbing Helper [219.73 h]; Labor [38.41 h]; Plumber [219.73 h]; Excavator [26.85 h]; Excavator Operator [274.67 h]; Un-Skilled Labor [274.67 h]; Skilled Labor [274.67 h] → SIC- Cost [5914.33]; Plumbing Helper [219.73 h]; Labor [38.41 h]; Plumber [219.73 h]; Excavator [26.85 h]; Excavator Operator [274.67 h]; Un-Skilled Labor [274.67 h]; Skilled Labor [274.67 h] |
| SDR-2-CON-PW-ZA-3360 | Excavation for PW HDPE Pipe 160 mm. Section 2 |  |  |  |  | resources SIC- Cost [11823.1]; Plumbing Helper [219.73 h]; Labor [38.41 h]; Plumber [219.73 h]; Excavator [26.85 h]; Excavator Operator [274.67 h]; Un-Skilled Labor [274.67 h]; Skilled Labor [274.67 h] → SIC- Cost [5914.33]; Plumbing Helper [219.73 h]; Labor [38.41 h]; Plumber [219.73 h]; Excavator [26.85 h]; Excavator Operator [274.67 h]; Un-Skilled Labor [274.67 h]; Skilled Labor [274.67 h] |
| 3 | **bedding Works** |  | 2026-12-31 → 2027-05-06 (+126d) |  |  |  |
| SDR-2-CON-PW-ZA-3390 | Sand bedding for PW HDPE Pipe 160 mm. |  | 2026-12-31 → 2027-05-06 (+126d) | 71d → -29d |  | resources SIC- Cost [11823.1]; Plumbing Helper [76.43 h]; Labor [38.41 h]; Plumber [76.43 h]; Excavator [6 h]; Excavator Operator [95.54 h]; Un-Skilled Labor [95.54 h]; Skilled Labor [95.54 h] → SIC- Cost [2957.16]; Plumbing Helper [76.43 h]; Labor [38.41 h]; Plumber [76.43 h]; Excavator [6 h]; Excavator Operator [95.54 h]; Un-Skilled Labor [95.54 h]; Skilled Labor [95.54 h] |
| 2 | **Pipes Laying** |  | 2027-01-18 → 2027-05-13 (+115d) |  |  |  |
| SDR-2-CON-PW-ZA-3370 | Install PW 160 mm HDPE Pipe |  | 2027-01-18 → 2027-05-13 (+115d) | 71d → -29d |  | resources SIC- Cost [38425.2]; Plumbing Helper [143.3 h]; Labor [76.81 h]; Plumber [143.3 h]; Excavator [12 h]; Excavator Operator [128.74 h]; Un-Skilled Labor [128.74 h]; Skilled Labor [128.74 h] → SIC- Cost [26614.5]; Plumbing Helper [143.3 h]; Labor [76.81 h]; Plumber [143.3 h]; Excavator [12 h]; Excavator Operator [128.74 h]; Un-Skilled Labor [128.74 h]; Skilled Labor [128.74 h] |
| 5 | **Testing** | 2027-01-19 → 2027-05-15 (+116d) | 2027-01-27 → 2027-05-29 (+122d) |  |  |  |
| SDR-2-CON-PW-ZA-3380 | Testing of PW HDPE Pipe 160 mm. | 2027-01-19 → 2027-05-15 (+116d) | 2027-01-27 → 2027-05-29 (+122d) | 71d → -29d |  | resources SIC- Cost [8867.35]; Plumbing Helper [76.43 h]; Labor [25.6 h]; Plumber [76.43 h]; Excavator [12 h]; Excavator Operator [95.54 h]; Un-Skilled Labor [95.54 h]; Skilled Labor [95.54 h] → SIC- Cost [5914.33]; Plumbing Helper [76.43 h]; Labor [25.6 h]; Plumber [76.43 h]; Excavator [12 h]; Excavator Operator [95.54 h]; Un-Skilled Labor [95.54 h]; Skilled Labor [95.54 h] |
| 4 | **Backfilling** | 2027-01-28 → 2027-05-30 (+122d) | 2027-02-14 → 2027-06-15 (+121d) |  |  |  |
| SDR-2-CON-PW-ZA-3400 | Backfilling of PW HDPE Pipe 160 mm. | 2027-01-28 → 2027-05-30 (+122d) | 2027-02-14 → 2027-06-15 (+121d) | 71d → -29d |  | resources SIC- Cost [8867.35]; Plumbing Helper [124.2 h]; Labor [25.6 h]; Plumber [65.31 h]; Excavator [10 h]; Excavator Operator [155.25 h]; Un-Skilled Labor [155.25 h]; Skilled Labor [155.25 h] → SIC- Cost [11828.6]; Plumbing Helper [124.2 h]; Labor [25.6 h]; Plumber [65.31 h]; Excavator [10 h]; Excavator Operator [155.25 h]; Un-Skilled Labor [155.25 h]; Skilled Labor [155.25 h] |

| ID | Task | Start | Finish | Total float | Other |
| --- | --- | --- | --- | --- | --- |
| 3 | **Valve Chambers & Valves & Fire Hydrant** | 2026-11-09 → 2027-05-01 (+173d) | 2027-06-17 → 2027-08-26 (+70d) |  |  |
| 3 | **Excavation** | 2026-11-09 → 2027-05-01 (+173d) | 2027-04-05 → 2027-06-21 (+77d) |  |  |
| SDR-2-CON-PW-ZA-3840 | Excavation for Valve Chambers Section 1 | 2026-11-09 → 2027-05-01 (+173d) | 2026-12-01 → 2027-05-29 (+179d) | 84d → -92d | resources SIC- Cost [56482.5]; Plumbing Helper [200.63 h]; Labor [25.6 h]; Plumber [200.63 h]; Excavator [18 h]; Excavator Operator [250.78 h]; Un-Skilled Labor [250.78 h]; Skilled Labor [250.78 h] → SIC- Cost [15062.8]; Plumbing Helper [200.63 h]; Labor [25.6 h]; Plumber [200.63 h]; Excavator [18 h]; Excavator Operator [250.78 h]; Un-Skilled Labor [250.78 h]; Skilled Labor [250.78 h] |
| SDR-2-CON-PW-ZA-3430 | Excavation for Valve Chambers Section 2 | 2027-03-08 → 2027-05-30 (+83d) | 2027-04-05 → 2027-06-21 (+77d) | 2.81d → -92d | resources SIC- Cost [56482.5]; Plumbing Helper [200.63 h]; Labor [25.6 h]; Plumber [200.63 h]; Excavator [18 h]; Excavator Operator [250.78 h]; Un-Skilled Labor [250.78 h]; Skilled Labor [250.78 h] → SIC- Cost [15062.8]; Plumbing Helper [200.63 h]; Labor [25.6 h]; Plumber [200.63 h]; Excavator [18 h]; Excavator Operator [250.78 h]; Un-Skilled Labor [250.78 h]; Skilled Labor [250.78 h] |
| 1 | **bedding Works** | 2027-04-05 → 2027-06-22 (+78d) | 2027-04-26 → 2027-07-12 (+77d) |  |  |
| SDR-2-CON-PW-ZA-3410 | Sand bedding for Valve Chambers | 2027-04-05 → 2027-06-22 (+78d) | 2027-04-26 → 2027-07-12 (+77d) | 2.81d → -92d | resources SIC- Cost [23901.1]; Plumbing Helper [76.43 h]; Labor [25.6 h]; Plumber [76.43 h]; Excavator [6 h]; Excavator Operator [95.54 h]; Un-Skilled Labor [95.54 h]; Skilled Labor [95.54 h] → SIC- Cost [20083.7]; Plumbing Helper [76.43 h]; Labor [25.6 h]; Plumber [76.43 h]; Excavator [6 h]; Excavator Operator [95.54 h]; Un-Skilled Labor [95.54 h]; Skilled Labor [95.54 h] |
| 4 | **Install Chambers & Valves & Fire Hydrant** | 2027-04-26 → 2027-07-13 (+78d) | 2027-05-22 → 2027-08-01 (+71d) |  |  |
| SDR-2-CON-PW-ZA-3440 | Install Chambers & Valves | 2027-04-26 → 2027-07-13 (+78d) | 2027-05-22 → 2027-08-01 (+71d) | 2.81d → -92d | resources SIC- Cost [18906.2]; Plumbing Helper [162.41 h]; Labor [25.6 h]; Plumber [162.41 h]; Excavator [16 h]; Excavator Operator [142.55 h]; Un-Skilled Labor [152.62 h]; Skilled Labor [142.55 h] → SIC- Cost [90376.7]; Plumbing Helper [162.41 h]; Labor [25.6 h]; Plumber [162.41 h]; Excavator [16 h]; Excavator Operator [142.55 h]; Un-Skilled Labor [152.62 h]; Skilled Labor [142.55 h] |
| 2 | **Testing** | 2027-05-22 → 2027-08-02 (+72d) | 2027-05-31 → 2027-08-09 (+70d) |  |  |
| SDR-2-CON-PW-ZA-3420 | Testing for Chambers & Valves | 2027-05-22 → 2027-08-02 (+72d) | 2027-05-31 → 2027-08-09 (+70d) | 2.81d → -92d | resources SIC- Cost [23901.1]; Plumbing Helper [76.43 h]; Labor [25.6 h]; Plumber [76.43 h]; Excavator [12 h]; Excavator Operator [95.54 h]; Un-Skilled Labor [95.54 h]; Skilled Labor [95.54 h] → SIC- Cost [20083.7]; Plumbing Helper [76.43 h]; Labor [25.6 h]; Plumber [76.43 h]; Excavator [12 h]; Excavator Operator [95.54 h]; Un-Skilled Labor [95.54 h]; Skilled Labor [95.54 h] |
| 6 | **Backfilling** | 2027-05-31 → 2027-08-10 (+71d) | 2027-06-17 → 2027-08-26 (+70d) |  |  |
| SDR-2-CON-PW-ZA-3450 | Backfilling for Chambers & Valves | 2027-05-31 → 2027-08-10 (+71d) | 2027-06-17 → 2027-08-26 (+70d) | 2.81d → -92d | resources SIC- Cost [1798.57]; Plumbing Helper [114.64 h]; Labor [25.6 h]; Plumber [114.64 h]; Excavator [6 h]; Excavator Operator [143.3 h]; Un-Skilled Labor [143.3 h]; Skilled Labor [143.3 h] → SIC- Cost [40167.4]; Plumbing Helper [114.64 h]; Labor [25.6 h]; Plumber [114.64 h]; Excavator [6 h]; Excavator Operator [143.3 h]; Un-Skilled Labor [143.3 h]; Skilled Labor [143.3 h] |
| 6 | **PORTABLE WATER IN ( PH2-A-MCF0 )** |  | 2027-06-07 → 2027-08-26 (+80d) |  |  |
| 7 | **Pipes Work** |  | 2027-04-13 → 2027-06-09 (+57d) |  |  |
| 1 | **Excavation** |  | 2027-01-06 → 2026-11-15 (-52d) |  |  |
| SDR-2-CON-PW-ZA-3850 | Excavation for PW HDPE Pipe 160 mm. Section 1 |  | 2027-01-06 A → 2026-11-15 A (-52d) |  | resources SIC- Cost [62.6]; Plumbing Helper [135.79 h]; Labor [38.41 h]; Plumber [135.79 h]; Excavator [18 h]; Excavator Operator [135.79 h]; Un-Skilled Labor [135.79 h]; Skilled Labor [135.79 h] → SIC- Cost [5914.33]; Plumbing Helper [135.79 h]; Labor [38.41 h]; Plumber [135.79 h]; Excavator [18 h]; Excavator Operator [135.79 h]; Un-Skilled Labor [135.79 h]; Skilled Labor [135.79 h] |
| SDR-2-CON-PW-ZA-3460 | Excavation for PW HDPE Pipe 160 mm. Section 2 |  |  |  | resources SIC- Cost [11823.1]; Plumbing Helper [135.79 h]; Labor [38.41 h]; Plumber [135.79 h]; Excavator [18 h]; Excavator Operator [135.79 h]; Un-Skilled Labor [135.79 h]; Skilled Labor [135.79 h] → SIC- Cost [5914.33]; Plumbing Helper [135.79 h]; Labor [38.41 h]; Plumber [135.79 h]; Excavator [18 h]; Excavator Operator [135.79 h]; Un-Skilled Labor [135.79 h]; Skilled Labor [135.79 h] |
| 3 | **bedding Works** |  | 2027-02-23 → 2027-05-06 (+72d) |  |  |
| SDR-2-CON-PW-ZA-3490 | Sand bedding for PW HDPE Pipe 160 mm. |  | 2027-02-23 → 2027-05-06 (+72d) | 26d → -12d | resources SIC- Cost [11823.1]; Plumbing Helper [76.43 h]; Labor [38.41 h]; Plumber [76.43 h]; Excavator [6 h]; Excavator Operator [95.54 h]; Un-Skilled Labor [95.54 h]; Skilled Labor [95.54 h] → SIC- Cost [2957.16]; Plumbing Helper [76.43 h]; Labor [38.41 h]; Plumber [76.43 h]; Excavator [6 h]; Excavator Operator [95.54 h]; Un-Skilled Labor [95.54 h]; Skilled Labor [95.54 h] |
| 2 | **Pipes Laying** |  | 2027-03-23 → 2027-05-13 (+51d) |  |  |
| SDR-2-CON-PW-ZA-3470 | Install PW 160 mm HDPE Pipe |  | 2027-03-23 → 2027-05-13 (+51d) | 26d → -12d | resources SIC- Cost [38425.2]; Plumbing Helper [143.3 h]; Labor [76.81 h]; Plumber [143.3 h]; Excavator [12 h]; Excavator Operator [88.44 h]; Un-Skilled Labor [88.44 h]; Skilled Labor [98.51 h] → SIC- Cost [26614.5]; Plumbing Helper [143.3 h]; Labor [76.81 h]; Plumber [143.3 h]; Excavator [12 h]; Excavator Operator [88.44 h]; Un-Skilled Labor [88.44 h]; Skilled Labor [98.51 h] |
| 5 | **Testing** | 2027-03-24 → 2027-05-15 (+52d) | 2027-03-30 → 2027-05-26 (+57d) |  |  |
| SDR-2-CON-PW-ZA-3480 | Testing of PW HDPE Pipe 160 mm. | 2027-03-24 → 2027-05-15 (+52d) | 2027-03-30 → 2027-05-26 (+57d) | 26d → -12d | resources SIC- Cost [8867.35]; Plumbing Helper [76.43 h]; Labor [25.6 h]; Plumber [76.43 h]; Excavator [12 h]; Excavator Operator [95.54 h]; Un-Skilled Labor [95.54 h]; Skilled Labor [95.54 h] → SIC- Cost [5914.33]; Plumbing Helper [76.43 h]; Labor [25.6 h]; Plumber [76.43 h]; Excavator [12 h]; Excavator Operator [95.54 h]; Un-Skilled Labor [95.54 h]; Skilled Labor [95.54 h] |
| 4 | **Backfilling** | 2027-03-31 → 2027-05-27 (+57d) | 2027-04-13 → 2027-06-09 (+57d) |  |  |
| SDR-2-CON-PW-ZA-3500 | Backfilling of PW HDPE Pipe 160 mm. | 2027-03-31 → 2027-05-27 (+57d) | 2027-04-13 → 2027-06-09 (+57d) | 26d → -12d | resources SIC- Cost [8867.35]; Plumbing Helper [133.75 h]; Labor [25.6 h]; Plumber [133.75 h]; Excavator [6 h]; Excavator Operator [167.19 h]; Un-Skilled Labor [167.19 h]; Skilled Labor [167.19 h] → SIC- Cost [11828.6]; Plumbing Helper [133.75 h]; Labor [25.6 h]; Plumber [133.75 h]; Excavator [6 h]; Excavator Operator [167.19 h]; Un-Skilled Labor [167.19 h]; Skilled Labor [167.19 h] |
| 3 | **Valve Chambers & Valves & Fire Hydrant** | 2027-02-02 → 2027-05-01 (+88d) | 2027-06-07 → 2027-08-26 (+80d) |  |  |
| 3 | **Excavation** | 2027-02-02 → 2027-05-01 (+88d) | 2027-03-28 → 2027-06-23 (+87d) |  |  |
| SDR-2-CON-PW-ZA-3860 | Excavation for Valve Chambers Section 1 | 2027-02-02 → 2027-05-01 (+88d) | 2027-02-27 → 2027-05-30 (+92d) | 11d → -81d | resources SIC- Cost [56482.5]; Plumbing Helper [191.07 h]; Labor [25.6 h]; Plumber [191.07 h]; Excavator [18 h]; Excavator Operator [238.84 h]; Un-Skilled Labor [238.84 h]; Skilled Labor [238.84 h] → SIC- Cost [15062.8]; Plumbing Helper [191.07 h]; Labor [25.6 h]; Plumber [191.07 h]; Excavator [18 h]; Excavator Operator [238.84 h]; Un-Skilled Labor [238.84 h]; Skilled Labor [238.84 h] |
| SDR-2-CON-PW-ZA-3530 | Excavation for Valve Chambers Section 2 | 2027-02-28 → 2027-05-31 (+92d) | 2027-03-28 → 2027-06-23 (+87d) | 11d → -81d | resources SIC- Cost [56482.5]; Plumbing Helper [191.07 h]; Labor [25.6 h]; Plumber [191.07 h]; Excavator [18 h]; Excavator Operator [238.84 h]; Un-Skilled Labor [238.84 h]; Skilled Labor [238.84 h] → SIC- Cost [15062.8]; Plumbing Helper [191.07 h]; Labor [25.6 h]; Plumber [191.07 h]; Excavator [18 h]; Excavator Operator [238.84 h]; Un-Skilled Labor [238.84 h]; Skilled Labor [238.84 h] |
| 1 | **bedding Works** | 2027-03-29 → 2027-06-24 (+87d) | 2027-04-18 → 2027-07-14 (+87d) |  |  |
| SDR-2-CON-PW-ZA-3510 | Sand bedding for Valve Chambers | 2027-03-29 → 2027-06-24 (+87d) | 2027-04-18 → 2027-07-14 (+87d) | 11d → -81d | resources SIC- Cost [23901.1]; Plumbing Helper [76.43 h]; Labor [25.6 h]; Plumber [76.43 h]; Excavator [6 h]; Excavator Operator [95.54 h]; Un-Skilled Labor [95.54 h]; Skilled Labor [95.54 h] → SIC- Cost [20083.7]; Plumbing Helper [76.43 h]; Labor [25.6 h]; Plumber [76.43 h]; Excavator [6 h]; Excavator Operator [95.54 h]; Un-Skilled Labor [95.54 h]; Skilled Labor [95.54 h] |
| 4 | **Install Chambers & Valves & Fire Hydrant** | 2027-04-19 → 2027-07-15 (+87d) | 2027-05-11 → 2027-08-06 (+87d) |  |  |
| SDR-2-CON-PW-ZA-3540 | Install Chambers & Valves | 2027-04-19 → 2027-07-15 (+87d) | 2027-05-11 → 2027-08-06 (+87d) | 11d → -81d | resources SIC- Cost [18906.2]; Plumbing Helper [107.01 h]; Labor [25.6 h]; Plumber [107.01 h]; Excavator [16.04 h]; Excavator Operator [77.6 h]; Un-Skilled Labor [87.67 h]; Skilled Labor [87.67 h] → SIC- Cost [90376.7]; Plumbing Helper [107.01 h]; Labor [25.6 h]; Plumber [107.01 h]; Excavator [16.04 h]; Excavator Operator [77.6 h]; Un-Skilled Labor [87.67 h]; Skilled Labor [87.67 h] |
| 2 | **Testing** | 2027-05-12 → 2027-08-07 (+87d) | 2027-05-25 → 2027-08-14 (+81d) |  |  |
| SDR-2-CON-PW-ZA-3520 | Testing for Chambers & Valves | 2027-05-12 → 2027-08-07 (+87d) | 2027-05-25 → 2027-08-14 (+81d) | 11d → -81d | resources SIC- Cost [23901.1]; Plumbing Helper [76.43 h]; Labor [25.6 h]; Plumber [76.43 h]; Excavator [6 h]; Excavator Operator [95.54 h]; Un-Skilled Labor [95.54 h]; Skilled Labor [95.54 h] → SIC- Cost [20083.7]; Plumbing Helper [76.43 h]; Labor [25.6 h]; Plumber [76.43 h]; Excavator [6 h]; Excavator Operator [95.54 h]; Un-Skilled Labor [95.54 h]; Skilled Labor [95.54 h] |
| 6 | **Backfilling** | 2027-05-26 → 2027-08-15 (+81d) | 2027-06-07 → 2027-08-26 (+80d) |  |  |
| SDR-2-CON-PW-ZA-3550 | Backfilling for Chambers & Valves | 2027-05-26 → 2027-08-15 (+81d) | 2027-06-07 → 2027-08-26 (+80d) | 11d → -81d | resources SIC- Cost [1798.57]; Plumbing Helper [114.64 h]; Labor [25.6 h]; Plumber [114.64 h]; Excavator [6 h]; Excavator Operator [143.3 h]; Un-Skilled Labor [143.3 h]; Skilled Labor [143.3 h] → SIC- Cost [40167.4]; Plumbing Helper [114.64 h]; Labor [25.6 h]; Plumber [114.64 h]; Excavator [6 h]; Excavator Operator [143.3 h]; Un-Skilled Labor [143.3 h]; Skilled Labor [143.3 h] |
| 7 | **PORTABLE WATER IN ( PH2-A-MCG0 )** |  | 2027-06-19 → 2027-09-06 (+79d) |  |  |
| 7 | **Pipes Work** |  | 2027-06-06 → 2027-06-23 (+17d) |  |  |
| 1 | **Excavation** |  | 2027-03-28 → 2027-05-10 (+43d) |  |  |
| SDR-2-CON-PW-ZA-3870 | Excavation for PW HDPE Pipe 160 mm. Section 1 |  | 2027-02-27 → 2027-05-06 (+68d) | 3d → -83d | resources SIC- Cost; Plumbing Helper [67.9 h]; Labor [38.41 h]; Plumber [67.9 h]; Excavator [50 h]; Excavator Operator [67.9 h]; Grader [60 h]; Un-Skilled Labor [67.9 h]; Skilled Labor [67.9 h] → SIC- Cost [5914.33]; Plumbing Helper [67.9 h]; Labor [38.41 h]; Plumber [67.9 h]; Excavator [50 h]; Excavator Operator [67.9 h]; Grader [60 h]; Un-Skilled Labor [67.9 h]; Skilled Labor [67.9 h] |
| SDR-2-CON-PW-ZA-3560 | Excavation for PW HDPE Pipe 160 mm. Section 2 |  | 2027-03-28 → 2027-05-10 (+43d) | 12d → -66d | resources SIC- Cost; Plumbing Helper [67.9 h]; Labor [38.41 h]; Plumber [67.9 h]; Excavator [50 h]; Excavator Operator [67.9 h]; Grader [330 h]; Un-Skilled Labor [67.9 h]; Skilled Labor [67.9 h] → SIC- Cost [5914.33]; Plumbing Helper [67.9 h]; Labor [38.41 h]; Plumber [67.9 h]; Excavator [50 h]; Excavator Operator [67.9 h]; Grader [330 h]; Un-Skilled Labor [67.9 h]; Skilled Labor [67.9 h] |
| 3 | **bedding Works** |  | 2027-04-20 → 2027-05-26 (+36d) |  |  |
| SDR-2-CON-PW-ZA-3590 | Sand bedding for PW HDPE Pipe 160 mm. |  | 2027-04-20 → 2027-05-26 (+36d) | 12d → -23d | resources SIC- Cost [11823.1]; Plumbing Helper [76.43 h]; Compactor [140 h]; Labor [38.41 h]; Plumber [76.43 h]; Excavator [12 h]; Excavator Operator [95.54 h]; Grader [60 h]; Loader [537.49 h]; Un-Skilled Labor [95.54 h]; Skilled Labor [95.54 h] → SIC- Cost [2957.16]; Plumbing Helper [76.43 h]; Compactor [140 h]; Labor [38.41 h]; Plumber [76.43 h]; Excavator [12 h]; Excavator Operator [95.54 h]; Grader [60 h]; Loader [537.49 h]; Un-Skilled Labor [95.54 h]; Skilled Labor [95.54 h] |
| 2 | **Pipes Laying** |  | 2027-05-06 → 2027-05-30 (+24d) |  |  |
| SDR-2-CON-PW-ZA-3570 | Install PW 160 mm HDPE Pipe |  | 2027-05-06 → 2027-05-30 (+24d) | 12d → -23d | resources SIC- Cost [38425.2]; Plumbing Helper [143.3 h]; Dump Truck [944.29 h]; Compactor [140 h]; Labor [76.81 h]; Plumber [60.61 h]; Excavator [8 h]; Excavator Operator [58.2 h]; Grader [60 h]; Loader [40 h]; Un-Skilled Labor [68.28 h]; Skilled Labor [88.43 h] → SIC- Cost [26614.5]; Plumbing Helper [143.3 h]; Dum Truck [944.29 h]; Compactor [140 h]; Labor [76.81 h]; Plumber [60.61 h]; Excavator [8 h]; Excavator Operator [58.2 h]; Grader [60 h]; Loader [40 h]; Un-Skilled Labor [68.28 h]; Skilled Labor [88.43 h] |
| 5 | **Testing** | 2027-05-08 → 2027-05-31 (+23d) | 2027-05-22 → 2027-06-08 (+17d) |  |  |
| SDR-2-CON-PW-ZA-3580 | Testing of PW HDPE Pipe 160 mm. | 2027-05-08 → 2027-05-31 (+23d) | 2027-05-22 → 2027-06-08 (+17d) | 12d → -23d | resources SIC- Cost [8867.35]; Plumbing Helper [76.43 h]; Dump Truck [74 h]; Compactor [80 h]; Loader [64 h]; Labor [25.6 h]; Plumber [76.43 h]; Excavator [16 h]; Excavator Operator [95.54 h]; Grader [100 h]; Un-Skilled Labor [95.54 h]; Skilled Labor [95.54 h] → SIC- Cost [5914.33]; Plumbing Helper [76.43 h]; Dum Truck [74 h]; Compactor [80 h]; Loader [64 h]; Labor [25.6 h]; Plumber [76.43 h]; Excavator [16 h]; Excavator Operator [95.54 h]; Grader [100 h]; Un-Skilled Labor [95.54 h]; Skilled Labor [95.54 h] |
| 4 | **Backfilling** | 2027-05-23 → 2027-06-09 (+17d) | 2027-06-06 → 2027-06-23 (+17d) |  |  |
| SDR-2-CON-PW-ZA-3600 | Backfilling of PW HDPE Pipe 160 mm. | 2027-05-23 → 2027-06-09 (+17d) | 2027-06-06 → 2027-06-23 (+17d) | 12d → -23d | resources SIC- Cost [8867.35]; Plumbing Helper [152.86 h]; Dump Truck [50 h]; Loader [40 h]; Labor [25.6 h]; Plumber [152.86 h]; Excavator [10 h]; Excavator Operator [191.07 h]; Grader [40 h]; Un-Skilled Labor [191.07 h]; Skilled Labor [191.07 h] → SIC- Cost [11828.6]; Plumbing Helper [152.86 h]; Dum Truck [50 h]; Loader [40 h]; Labor [25.6 h]; Plumber [152.86 h]; Excavator [10 h]; Excavator Operator [191.07 h]; Grader [40 h]; Un-Skilled Labor [191.07 h]; Skilled Labor [191.07 h] |
| 3 | **Valve Chambers & Valves & Fire Hydrant** | 2027-02-15 → 2027-05-12 (+86d) | 2027-06-19 → 2027-09-06 (+79d) |  |  |
| 3 | **Excavation** | 2027-02-15 → 2027-05-12 (+86d) | 2027-04-10 → 2027-07-05 (+86d) |  |  |
| SDR-2-CON-PW-ZA-3880 | Excavation for Valve Chambers Section 1 | 2027-02-15 → 2027-05-12 (+86d) | 2027-03-16 → 2027-06-10 (+86d) | 1d → -91d | resources SIC- Cost [56482.5]; Plumbing Helper [219.73 h]; Dump Truck [380 h]; Labor [25.6 h]; Plumber [219.73 h]; Excavator [12 h]; Excavator Operator [274.67 h]; Grader [60 h]; Loader [20 h]; Un-Skilled Labor [274.67 h]; Skilled Labor [274.67 h] → SIC- Cost [15062.8]; Plumbing Helper [219.73 h]; Dum Truck [380 h]; Labor [25.6 h]; Plumber [219.73 h]; Excavator [12 h]; Excavator Operator [274.67 h]; Grader [60 h]; Loader [20 h]; Un-Skilled Labor [274.67 h]; Skilled Labor [274.67 h] |
| SDR-2-CON-PW-ZA-3630 | Excavation for Valve Chambers Section 2 | 2027-03-17 → 2027-06-12 (+87d) | 2027-04-10 → 2027-07-05 (+86d) | 1d → -91d | resources SIC- Cost [56482.5]; Plumbing Helper [219.73 h]; Dump Truck [572.76 h]; Labor [25.6 h]; Plumber [219.73 h]; Excavator [12 h]; Excavator Operator [274.67 h]; Grader [291 h]; Loader [289.8 h]; Un-Skilled Labor [274.67 h]; Skilled Labor [274.67 h] → SIC- Cost [15062.8]; Plumbing Helper [219.73 h]; Dum Truck [572.76 h]; Labor [25.6 h]; Plumber [219.73 h]; Excavator [12 h]; Excavator Operator [274.67 h]; Grader [291 h]; Loader [289.8 h]; Un-Skilled Labor [274.67 h]; Skilled Labor [274.67 h] |
| 1 | **bedding Works** | 2027-04-11 → 2027-07-06 (+86d) | 2027-05-03 → 2027-07-28 (+86d) |  |  |
| SDR-2-CON-PW-ZA-3610 | Sand bedding for Valve Chambers | 2027-04-11 → 2027-07-06 (+86d) | 2027-05-03 → 2027-07-28 (+86d) | 1d → -91d | resources SIC- Cost [23901.1]; Plumbing Helper [76.43 h]; Dump Truck [183 h]; Loader [102 h]; Labor [25.6 h]; Plumber [76.43 h]; Excavator [12 h]; Excavator Operator [95.54 h]; Grader [160 h]; Un-Skilled Labor [95.54 h]; Skilled Labor [95.54 h] → SIC- Cost [20083.7]; Plumbing Helper [76.43 h]; Dum Truck [183 h]; Loader [102 h]; Labor [25.6 h]; Plumber [76.43 h]; Excavator [12 h]; Excavator Operator [95.54 h]; Grader [160 h]; Un-Skilled Labor [95.54 h]; Skilled Labor [95.54 h] |
| 4 | **Install Chambers & Valves & Fire Hydrant** | 2027-05-04 → 2027-07-29 (+86d) | 2027-05-29 → 2027-08-16 (+79d) |  |  |
| SDR-2-CON-PW-ZA-3640 | Install Chambers & Valves | 2027-05-04 → 2027-07-29 (+86d) | 2027-05-29 → 2027-08-16 (+79d) | 1d → -91d | resources SIC- Cost [18906.2]; Plumbing Helper [62.61 h]; Dump Truck [40 h]; Loader [30 h]; Labor [25.6 h]; Plumber [62.61 h]; Excavator [8.12 h]; Excavator Operator [67.52 h]; Grader [63.75 h]; Un-Skilled Labor [67.52 h]; Skilled Labor [87.67 h] → SIC- Cost [90376.7]; Plumbing Helper [62.61 h]; Dum Truck [40 h]; Loader [30 h]; Labor [25.6 h]; Plumber [62.61 h]; Excavator [8.12 h]; Excavator Operator [67.52 h]; Grader [63.75 h]; Un-Skilled Labor [67.52 h]; Skilled Labor [87.67 h] |
| 2 | **Testing** | 2027-05-30 → 2027-08-17 (+79d) | 2027-06-07 → 2027-08-25 (+79d) |  |  |
| SDR-2-CON-PW-ZA-3620 | Testing for Chambers & Valves | 2027-05-30 → 2027-08-17 (+79d) | 2027-06-07 → 2027-08-25 (+79d) | 1d → -91d | resources SIC- Cost [23901.1]; Plumbing Helper [76.43 h]; Dump Truck [80 h]; Loader [56 h]; Labor [25.6 h]; Plumber [76.43 h]; Excavator [6 h]; Excavator Operator [95.54 h]; Grader [150 h]; Un-Skilled Labor [95.54 h]; Skilled Labor [95.54 h] → SIC- Cost [20083.7]; Plumbing Helper [76.43 h]; Dum Truck [80 h]; Loader [56 h]; Labor [25.6 h]; Plumber [76.43 h]; Excavator [6 h]; Excavator Operator [95.54 h]; Grader [150 h]; Un-Skilled Labor [95.54 h]; Skilled Labor [95.54 h] |
| 6 | **Backfilling** | 2027-06-08 → 2027-08-26 (+79d) | 2027-06-19 → 2027-09-06 (+79d) |  |  |
| SDR-2-CON-PW-ZA-3650 | Backfilling for Chambers & Valves | 2027-06-08 → 2027-08-26 (+79d) | 2027-06-19 → 2027-09-06 (+79d) | 1d → -91d | resources SIC- Cost [1798.57]; Plumbing Helper [124.2 h]; Dump Truck [50 h]; Loader [40 h]; Labor [25.6 h]; Plumber [124.2 h]; Excavator [6 h]; Excavator Operator [155.25 h]; Grader [60 h]; Un-Skilled Labor [155.25 h]; Skilled Labor [155.25 h] → SIC- Cost [40167.4]; Plumbing Helper [124.2 h]; Dum Truck [50 h]; Loader [40 h]; Labor [25.6 h]; Plumber [124.2 h]; Excavator [6 h]; Excavator Operator [155.25 h]; Grader [60 h]; Un-Skilled Labor [155.25 h]; Skilled Labor [155.25 h] |
| 8 | **PORTABLE WATER IN ( PH2-A-MCH0 )** | 2027-02-02 → 2027-05-01 (+88d) | 2027-06-05 → 2027-08-24 (+80d) |  |  |
| 7 | **Pipes Work** | 2027-02-02 → 2027-05-01 (+88d) | 2027-05-30 → 2027-08-24 (+86d) |  |  |
| 1 | **Excavation** | 2027-02-02 → 2027-05-01 (+88d) | 2027-03-28 → 2027-06-23 (+87d) |  |  |
| SDR-2-CON-PW-ZA-3890 | Excavation for PW HDPE Pipe 225 mm. Section 1 | 2027-02-02 → 2027-05-01 (+88d) | 2027-02-27 → 2027-05-30 (+92d) | 3d → -83d | resources SIC- Cost [38897.9]; Plumbing Helper [135.79 h]; Dump Truck [400 h]; Loader [80 h]; Labor [38.41 h]; Plumber [135.79 h]; Excavator [12.75 h]; Excavator Operator [135.79 h]; Grader [110 h]; Un-Skilled Labor [135.79 h]; Skilled Labor [135.79 h] → SIC- Cost [19451.7]; Plumbing Helper [135.79 h]; Dum Truck [400 h]; Loader [80 h]; Labor [38.41 h]; Plumber [135.79 h]; Excavator [12.75 h]; Excavator Operator [135.79 h]; Grader [110 h]; Un-Skilled Labor [135.79 h]; Skilled Labor [135.79 h] |
| SDR-2-CON-PW-ZA-2810 | Excavation for PW HDPE Pipe 225 mm. Section 2 | 2027-02-28 → 2027-05-31 (+92d) | 2027-03-28 → 2027-06-23 (+87d) | 3d → -78d | resources SIC- Cost [38897.9]; Plumbing Helper [135.79 h]; Dump Truck [500 h]; Loader [195.44 h]; Labor [38.41 h]; Plumber [135.79 h]; Excavator [12.75 h]; Excavator Operator [135.79 h]; Grader [220 h]; Un-Skilled Labor [135.79 h]; Skilled Labor [135.79 h] → SIC- Cost [19451.7]; Plumbing Helper [135.79 h]; Dum Truck [500 h]; Loader [195.44 h]; Labor [38.41 h]; Plumber [135.79 h]; Excavator [12.75 h]; Excavator Operator [135.79 h]; Grader [220 h]; Un-Skilled Labor [135.79 h]; Skilled Labor [135.79 h] |
| 3 | **bedding Works** | 2027-03-29 → 2027-06-24 (+87d) | 2027-04-20 → 2027-07-17 (+88d) |  |  |
| SDR-2-CON-PW-ZA-2840 | Sand bedding for PW HDPE Pipe 225 mm. | 2027-03-29 → 2027-06-24 (+87d) | 2027-04-20 → 2027-07-17 (+88d) | 3d → -78d | resources SIC- Cost [38897.9]; Plumbing Helper [76.43 h]; Dump Truck [338 h]; Loader [40 h]; Labor [38.41 h]; Plumber [76.43 h]; Excavator [12 h]; Excavator Operator [95.54 h]; Grader [168.75 h]; Un-Skilled Labor [95.54 h]; Skilled Labor [95.54 h] → SIC- Cost [9725.85]; Plumbing Helper [76.43 h]; Dum Truck [338 h]; Loader [40 h]; Labor [38.41 h]; Plumber [76.43 h]; Excavator [12 h]; Excavator Operator [95.54 h]; Grader [168.75 h]; Un-Skilled Labor [95.54 h]; Skilled Labor [95.54 h] |
| 2 | **Pipes Laying** | 2027-04-15 → 2027-07-18 (+94d) | 2027-05-02 → 2027-08-03 (+93d) |  |  |

| ID | Task | Start | Finish | Total float | Predecessors | Other |
| --- | --- | --- | --- | --- | --- | --- |
| SDR-2-CON-PW-ZA-2820 | Install PW 225 mm HDPE Pipe | 2027-04-15 → 2027-07-18 (+94d) | 2027-05-02 → 2027-08-03 (+93d) | 3d → -78d | SDR-2-CON-PW-ZA-2840 SS+15d → SDR-2-CON-PW-ZA-2840 | resources SIC- Cost [126418]; Plumbing Helper [40.13 h]; Dump Truck [40 h]; Loader [30 h]; Labor [76.81 h]; Plumber [40.13 h]; Excavator [6 h]; Excavator Operator [68.28 h]; Grader [40 h]; Un-Skilled Labor [68.28 h]; Skilled Labor [78.35 h] → SIC- Cost [87532.6]; Plumbing Helper [40.13 h]; Dum Truck [40 h]; Loader [30 h]; Labor [76.81 h]; Plumber [40.13 h]; Excavator [6 h]; Excavator Operator [68.28 h]; Grader [40 h]; Un-Skilled Labor [68.28 h]; Skilled Labor [78.35 h] |
| 5 | **Testing** | 2027-05-03 → 2027-08-04 (+93d) | 2027-05-10 → 2027-08-10 (+92d) |  |  |  |
| SDR-2-CON-PW-ZA-2830 | Testing of PW HDPE Pipe 225 mm. | 2027-05-03 → 2027-08-04 (+93d) | 2027-05-10 → 2027-08-10 (+92d) | 3d → -78d |  | resources SIC- Cost [29173.4]; Plumbing Helper [66.88 h]; Dump Truck [90 h]; Loader [46 h]; Labor [25.6 h]; Plumber [66.88 h]; Excavator [12 h]; Excavator Operator [83.59 h]; Grader [47.5 h]; Un-Skilled Labor [83.59 h]; Skilled Labor [83.59 h] → SIC- Cost [19451.7]; Plumbing Helper [66.88 h]; Dum Truck [90 h]; Loader [46 h]; Labor [25.6 h]; Plumber [66.88 h]; Excavator [12 h]; Excavator Operator [83.59 h]; Grader [47.5 h]; Un-Skilled Labor [83.59 h]; Skilled Labor [83.59 h] |
| 4 | **Backfilling** | 2027-05-11 → 2027-08-11 (+92d) | 2027-05-30 → 2027-08-24 (+86d) |  |  |  |
| SDR-2-CON-PW-ZA-2850 | Backfilling of PW HDPE Pipe 225 mm. | 2027-05-11 → 2027-08-11 (+92d) | 2027-05-30 → 2027-08-24 (+86d) | 18d → -78d |  | resources SIC- Cost [29173.4]; Plumbing Helper [171.96 h]; Dump Truck [50 h]; Loader [40 h]; Labor [25.6 h]; Plumber [171.96 h]; Excavator [6 h]; Excavator Operator [214.96 h]; Grader [40 h]; Un-Skilled Labor [214.96 h]; Skilled Labor [214.96 h] → SIC- Cost [38903.4]; Plumbing Helper [171.96 h]; Dum Truck [50 h]; Loader [40 h]; Labor [25.6 h]; Plumber [171.96 h]; Excavator [6 h]; Excavator Operator [214.96 h]; Grader [40 h]; Un-Skilled Labor [214.96 h]; Skilled Labor [214.96 h] |
| 3 | **Valve Chambers & Valves & Fire Hydrant** | 2027-02-02 → 2027-05-01 (+88d) | 2027-06-05 → 2027-08-24 (+80d) |  |  |  |
| 3 | **Excavation** | 2027-02-02 → 2027-05-01 (+88d) | 2027-03-28 → 2027-06-23 (+87d) |  |  |  |
| SDR-2-CON-PW-ZA-3900 | Excavation for Valve Chambers Section 1 | 2027-02-02 → 2027-05-01 (+88d) | 2027-02-27 → 2027-05-30 (+92d) | 5d → -78d |  | resources SIC- Cost [56482.5]; Plumbing Helper [152.86 h]; Dump Truck [400 h]; Loader [80 h]; Labor [25.6 h]; Plumber [152.86 h]; Excavator [12.9 h]; Excavator Operator [191.07 h]; Grader [110 h]; Un-Skilled Labor [191.07 h]; Skilled Labor [191.07 h] → SIC- Cost [15062.8]; Plumbing Helper [152.86 h]; Dum Truck [400 h]; Loader [80 h]; Labor [25.6 h]; Plumber [152.86 h]; Excavator [12.9 h]; Excavator Operator [191.07 h]; Grader [110 h]; Un-Skilled Labor [191.07 h]; Skilled Labor [191.07 h] |
| SDR-2-CON-PW-ZA-2880 | Excavation for Valve Chambers Section 2 | 2027-02-28 → 2027-05-31 (+92d) | 2027-03-28 → 2027-06-23 (+87d) | 5d → -78d |  | resources SIC- Cost [56482.5]; Plumbing Helper [152.86 h]; Dump Truck [600 h]; Loader [210 h]; Labor [25.6 h]; Plumber [152.86 h]; Excavator [12.9 h]; Excavator Operator [191.07 h]; Grader [220 h]; Un-Skilled Labor [191.07 h]; Skilled Labor [191.07 h] → SIC- Cost [15062.8]; Plumbing Helper [152.86 h]; Dum Truck [600 h]; Loader [210 h]; Labor [25.6 h]; Plumber [152.86 h]; Excavator [12.9 h]; Excavator Operator [191.07 h]; Grader [220 h]; Un-Skilled Labor [191.07 h]; Skilled Labor [191.07 h] |
| 1 | **bedding Works** | 2027-03-29 → 2027-06-24 (+87d) | 2027-04-20 → 2027-07-17 (+88d) |  |  |  |
| SDR-2-CON-PW-ZA-2860 | Sand bedding for Valve Chambers | 2027-03-29 → 2027-06-24 (+87d) | 2027-04-20 → 2027-07-17 (+88d) | 5d → -78d |  | resources SIC- Cost [23901.1]; Plumbing Helper [95.54 h]; Dump Truck [362 h]; Loader [50 h]; Labor [25.6 h]; Plumber [95.54 h]; Excavator [12 h]; Excavator Operator [119.42 h]; Grader [93.75 h]; Un-Skilled Labor [119.42 h]; Skilled Labor [119.42 h] → SIC- Cost [20083.7]; Plumbing Helper [95.54 h]; Dum Truck [362 h]; Loader [50 h]; Labor [25.6 h]; Plumber [95.54 h]; Excavator [12 h]; Excavator Operator [119.42 h]; Grader [93.75 h]; Un-Skilled Labor [119.42 h]; Skilled Labor [119.42 h] |
| 4 | **Install Chambers & Valves & Fire Hydrant** | 2027-04-21 → 2027-07-18 (+88d) | 2027-05-08 → 2027-08-03 (+87d) |  |  |  |
| SDR-2-CON-PW-ZA-2890 | Install Chambers & Valves | 2027-04-21 → 2027-07-18 (+88d) | 2027-05-08 → 2027-08-03 (+87d) | 5d → -78d |  | resources SIC- Cost [18906.2]; Plumbing Helper [40.13 h]; Dump Truck [40 h]; Loader [40 h]; Labor [25.6 h]; Plumber [40.13 h]; Excavator [8 h]; Excavator Operator [70.14 h]; Grader [60 h]; Un-Skilled Labor [70.14 h]; Skilled Labor [80.22 h] → SIC- Cost [90376.7]; Plumbing Helper [40.13 h]; Dum Truck [40 h]; Loader [40 h]; Labor [25.6 h]; Plumber [40.13 h]; Excavator [8 h]; Excavator Operator [70.14 h]; Grader [60 h]; Un-Skilled Labor [70.14 h]; Skilled Labor [80.22 h] |
| 2 | **Testing** | 2027-05-09 → 2027-08-04 (+87d) | 2027-05-22 → 2027-08-10 (+80d) |  |  |  |
| SDR-2-CON-PW-ZA-2870 | Testing for Chambers & Valves | 2027-05-09 → 2027-08-04 (+87d) | 2027-05-22 → 2027-08-10 (+80d) | 13d → -78d |  | resources SIC- Cost [23901.1]; Plumbing Helper [76.43 h]; Dump Truck [80 h]; Loader [44 h]; Labor [25.6 h]; Plumber [76.43 h]; Excavator [6 h]; Excavator Operator [95.54 h]; Grader [147 h]; Un-Skilled Labor [95.54 h]; Skilled Labor [95.54 h] → SIC- Cost [20083.7]; Plumbing Helper [76.43 h]; Dum Truck [80 h]; Loader [44 h]; Labor [25.6 h]; Plumber [76.43 h]; Excavator [6 h]; Excavator Operator [95.54 h]; Grader [147 h]; Un-Skilled Labor [95.54 h]; Skilled Labor [95.54 h] |
| 6 | **Backfilling** | 2027-05-23 → 2027-08-11 (+80d) | 2027-06-05 → 2027-08-24 (+80d) |  |  |  |
| SDR-2-CON-PW-ZA-2900 | Backfilling for Chambers & Valves | 2027-05-23 → 2027-08-11 (+80d) | 2027-06-05 → 2027-08-24 (+80d) | 13d → -78d |  | resources SIC- Cost [1798.57]; Plumbing Helper [105.09 h]; Dump Truck [110 h]; Loader [40 h]; Labor [25.6 h]; Plumber [105.09 h]; Excavator [6 h]; Excavator Operator [131.36 h]; Grader [67.5 h]; Un-Skilled Labor [131.36 h]; Skilled Labor [131.36 h] → SIC- Cost [40167.4]; Plumbing Helper [105.09 h]; Dum Truck [110 h]; Loader [40 h]; Labor [25.6 h]; Plumber [105.09 h]; Excavator [6 h]; Excavator Operator [131.36 h]; Grader [67.5 h]; Un-Skilled Labor [131.36 h]; Skilled Labor [131.36 h] |
| 9 | **PORTABLE WATER IN ( PH2-ART-MC00 )** |  | 2027-06-06 → 2027-08-25 (+80d) |  |  |  |
| 7 | **Pipes Work** |  | 2027-05-06 → 2027-07-15 (+70d) |  |  |  |
| 1 | **Excavation** |  | 2027-03-02 → 2027-05-10 (+69d) |  |  |  |
| SDR-2-CON-PW-ZA-3910 | Excavation for PW HDPE Pipes 315 mm Section 1 |  |  |  |  | resources SIC- Cost; Plumbing Helper [67.9 h]; Dump Truck [400 h]; Loader [80 h]; Labor [38.41 h]; Plumber [67.9 h]; Excavator [20.55 h]; Excavator Operator [67.9 h]; Grader [285 h]; Un-Skilled Labor [67.9 h]; Skilled Labor [67.9 h] → SIC- Cost [41173.5]; Plumbing Helper [67.9 h]; Dum Truck [400 h]; Loader [80 h]; Labor [38.41 h]; Plumber [67.9 h]; Excavator [20.55 h]; Excavator Operator [67.9 h]; Grader [285 h]; Un-Skilled Labor [67.9 h]; Skilled Labor [67.9 h] |
| SDR-2-CON-PW-ZA-2360 | Excavation for PW HDPE Pipes 315 mm Section 2 |  | 2027-03-02 → 2027-05-10 (+69d) | 6d → -47d |  | resources SIC- Cost; Plumbing Helper [67.9 h]; Dump Truck [600 h]; Loader [180 h]; Labor [38.41 h]; Plumber [67.9 h]; Excavator [20.55 h]; Excavator Operator [67.9 h]; Grader [120 h]; Un-Skilled Labor [67.9 h]; Skilled Labor [67.9 h] → SIC- Cost [41173.5]; Plumbing Helper [67.9 h]; Dum Truck [600 h]; Loader [180 h]; Labor [38.41 h]; Plumber [67.9 h]; Excavator [20.55 h]; Excavator Operator [67.9 h]; Grader [120 h]; Un-Skilled Labor [67.9 h]; Skilled Labor [67.9 h] |
| 8 | **bedding Works** | 2027-03-03 → 2027-05-11 (+69d) | 2027-03-30 → 2027-06-08 (+70d) |  |  |  |
| SDR-2-CON-PW-ZA-2440 | Sand bedding for PW HDPE Pipes 315 mm | 2027-03-03 → 2027-05-11 (+69d) | 2027-03-30 → 2027-06-08 (+70d) | 6d → -47d |  | resources SIC- Cost [82341.5]; Plumbing Helper [95.54 h]; Dump Truck [239 h]; Loader [40 h]; Labor [38.41 h]; Plumber [95.54 h]; Excavator [6 h]; Excavator Operator [119.42 h]; Grader [322 h]; Un-Skilled Labor [119.42 h]; Skilled Labor [119.42 h] → SIC- Cost [20586.8]; Plumbing Helper [95.54 h]; Dum Truck [239 h]; Loader [40 h]; Labor [38.41 h]; Plumber [95.54 h]; Excavator [6 h]; Excavator Operator [119.42 h]; Grader [322 h]; Un-Skilled Labor [119.42 h]; Skilled Labor [119.42 h] |
| 2 | **Pipes Laying** | 2027-03-31 → 2027-06-09 (+70d) | 2027-04-19 → 2027-06-28 (+70d) |  |  |  |
| SDR-2-CON-PW-ZA-2370 | Install PW 315 mm HDPE Pipe | 2027-03-31 → 2027-06-09 (+70d) | 2027-04-19 → 2027-06-28 (+70d) | 6d → -47d |  | resources SIC- Cost [267610]; Plumbing Helper [40.13 h]; Dump Truck [89.64 h]; Loader [41.33 h]; Labor [76.81 h]; Plumber [40.13 h]; Excavator [12 h]; Excavator Operator [110.45 h]; Grader [57 h]; Un-Skilled Labor [110.45 h]; Skilled Labor [120.53 h] → SIC- Cost [185281]; Plumbing Helper [40.13 h]; Dum Truck [89.64 h]; Loader [41.33 h]; Labor [76.81 h]; Plumber [40.13 h]; Excavator [12 h]; Excavator Operator [110.45 h]; Grader [57 h]; Un-Skilled Labor [110.45 h]; Skilled Labor [120.53 h] |
| 5 | **Testing** | 2027-04-20 → 2027-06-29 (+70d) | 2027-04-27 → 2027-07-06 (+70d) |  |  |  |
| SDR-2-CON-PW-ZA-2430 | Testing of PW HDPE Pipe 315 mm. | 2027-04-20 → 2027-06-29 (+70d) | 2027-04-27 → 2027-07-06 (+70d) | 6d → -47d |  | resources SIC- Cost [61756.1]; Plumbing Helper [76.43 h]; Dump Truck [50 h]; Loader [40 h]; Labor [25.6 h]; Plumber [76.43 h]; Excavator [16 h]; Excavator Operator [95.54 h]; Grader [40 h]; Un-Skilled Labor [95.54 h]; Skilled Labor [95.54 h] → SIC- Cost [41173.5]; Plumbing Helper [76.43 h]; Dum Truck [50 h]; Loader [40 h]; Labor [25.6 h]; Plumber [76.43 h]; Excavator [16 h]; Excavator Operator [95.54 h]; Grader [40 h]; Un-Skilled Labor [95.54 h]; Skilled Labor [95.54 h] |
| 9 | **Backfilling** | 2027-04-28 → 2027-07-07 (+70d) | 2027-05-06 → 2027-07-15 (+70d) |  |  |  |
| SDR-2-CON-PW-ZA-2450 | Backfilling of PW HDPE Pipe 315 mm. | 2027-04-28 → 2027-07-07 (+70d) | 2027-05-06 → 2027-07-15 (+70d) | 6d → -47d |  | resources SIC- Cost [61756.1]; Plumbing Helper [152.86 h]; Dump Truck [50 h]; Loader [40 h]; Labor [25.6 h]; Plumber [152.86 h]; Excavator [10 h]; Excavator Operator [191.07 h]; Grader [60 h]; Un-Skilled Labor [191.07 h]; Skilled Labor [191.07 h] → SIC- Cost [82347]; Plumbing Helper [152.86 h]; Dum Truck [50 h]; Loader [40 h]; Labor [25.6 h]; Plumber [152.86 h]; Excavator [10 h]; Excavator Operator [191.07 h]; Grader [60 h]; Un-Skilled Labor [191.07 h]; Skilled Labor [191.07 h] |
| 3 | **Valve Chambers & Valves & Fire Hydrant** | 2027-02-06 → 2027-05-04 (+87d) | 2027-06-06 → 2027-08-25 (+80d) |  |  |  |
| 3 | **Excavation** | 2027-02-06 → 2027-05-04 (+87d) | 2027-03-31 → 2027-06-27 (+88d) |  |  |  |
| SDR-2-CON-PW-ZA-3920 | Excavation for Valve Chambers Section 1 | 2027-02-06 → 2027-05-04 (+87d) | 2027-03-02 → 2027-06-02 (+92d) | 12d → -83d |  | resources SIC- Cost [56482.5]; Plumbing Helper [143.3 h]; Dump Truck [400 h]; Loader [80 h]; Labor [25.6 h]; Plumber [143.3 h]; Excavator [18 h]; Excavator Operator [179.13 h]; Grader [285 h]; Un-Skilled Labor [179.13 h]; Skilled Labor [179.13 h] → SIC- Cost [15062.8]; Plumbing Helper [143.3 h]; Dum Truck [400 h]; Loader [80 h]; Labor [25.6 h]; Plumber [143.3 h]; Excavator [18 h]; Excavator Operator [179.13 h]; Grader [285 h]; Un-Skilled Labor [179.13 h]; Skilled Labor [179.13 h] |
| SDR-2-CON-PW-ZA-2400 | Excavation for Valve Chambers Section 2 | 2027-03-03 → 2027-06-03 (+92d) | 2027-03-31 → 2027-06-27 (+88d) | 12d → -83d |  | resources SIC- Cost [56482.5]; Plumbing Helper [143.3 h]; Dump Truck [600 h]; Loader [116.6 h]; Labor [25.6 h]; Plumber [143.3 h]; Excavator [18 h]; Excavator Operator [179.13 h]; Grader [120 h]; Un-Skilled Labor [179.13 h]; Skilled Labor [179.13 h] → SIC- Cost [15062.8]; Plumbing Helper [143.3 h]; Dum Truck [600 h]; Loader [116.6 h]; Labor [25.6 h]; Plumber [143.3 h]; Excavator [18 h]; Excavator Operator [179.13 h]; Grader [120 h]; Un-Skilled Labor [179.13 h]; Skilled Labor [179.13 h] |
| 1 | **bedding Works** | 2027-04-01 → 2027-06-28 (+88d) | 2027-04-24 → 2027-07-20 (+87d) |  |  |  |
| SDR-2-CON-PW-ZA-2380 | Sand bedding for Valve Chambers | 2027-04-01 → 2027-06-28 (+88d) | 2027-04-24 → 2027-07-20 (+87d) | 12d → -83d |  | resources SIC- Cost [23901.1]; Plumbing Helper [95.54 h]; Dump Truck [239 h]; Loader [118 h]; Labor [25.6 h]; Plumber [95.54 h]; Excavator [6 h]; Excavator Operator [119.42 h]; Grader [60 h]; Un-Skilled Labor [119.42 h]; Skilled Labor [119.42 h] → SIC- Cost [20083.7]; Plumbing Helper [95.54 h]; Dum Truck [239 h]; Loader [118 h]; Labor [25.6 h]; Plumber [95.54 h]; Excavator [6 h]; Excavator Operator [119.42 h]; Grader [60 h]; Un-Skilled Labor [119.42 h]; Skilled Labor [119.42 h] |
| 4 | **Install Chambers & Valves & Fire Hydrant** | 2027-04-25 → 2027-07-21 (+87d) | 2027-05-12 → 2027-08-07 (+87d) |  |  |  |
| SDR-2-CON-PW-ZA-2410 | Install Chambers & Valves | 2027-04-25 → 2027-07-21 (+87d) | 2027-05-12 → 2027-08-07 (+87d) | 12d → -83d |  | resources SIC- Cost [18906.2]; Plumbing Helper [40.13 h]; Dump Truck [74 h]; Loader [41.33 h]; Labor [25.6 h]; Plumber [40.13 h]; Excavator [12 h]; Excavator Operator [114.18 h]; Grader [57 h]; Un-Skilled Labor [114.18 h]; Skilled Labor [214.96 h] → SIC- Cost [90376.7]; Plumbing Helper [40.13 h]; Dum Truck [74 h]; Loader [41.33 h]; Labor [25.6 h]; Plumber [40.13 h]; Excavator [12 h]; Excavator Operator [114.18 h]; Grader [57 h]; Un-Skilled Labor [114.18 h]; Skilled Labor [214.96 h] |
| 2 | **Testing** | 2027-05-13 → 2027-08-08 (+87d) | 2027-05-27 → 2027-08-16 (+81d) |  |  |  |
| SDR-2-CON-PW-ZA-2390 | Testing for Chambers & Valves | 2027-05-13 → 2027-08-08 (+87d) | 2027-05-27 → 2027-08-16 (+81d) | 12d → -83d |  | resources SIC- Cost [23901.1]; Plumbing Helper [76.43 h]; Dump Truck [50 h]; Loader [40 h]; Labor [25.6 h]; Plumber [76.43 h]; Excavator [12 h]; Excavator Operator [95.54 h]; Grader [40 h]; Un-Skilled Labor [95.54 h]; Skilled Labor [95.54 h] → SIC- Cost [20083.7]; Plumbing Helper [76.43 h]; Dum Truck [50 h]; Loader [40 h]; Labor [25.6 h]; Plumber [76.43 h]; Excavator [12 h]; Excavator Operator [95.54 h]; Grader [40 h]; Un-Skilled Labor [95.54 h]; Skilled Labor [95.54 h] |
| 6 | **Backfilling** | 2027-05-29 → 2027-08-17 (+80d) | 2027-06-06 → 2027-08-25 (+80d) |  |  |  |
| SDR-2-CON-PW-ZA-2420 | Backfilling for Chambers & Valves | 2027-05-29 → 2027-08-17 (+80d) | 2027-06-06 → 2027-08-25 (+80d) | 12d → -83d |  | resources SIC- Cost [1798.57]; Plumbing Helper [152.86 h]; Dump Truck [50 h]; Loader [40 h]; Labor [25.6 h]; Plumber [152.86 h]; Excavator [6 h]; Excavator Operator [191.07 h]; Grader [60 h]; Un-Skilled Labor [191.07 h]; Skilled Labor [191.07 h] → SIC- Cost [40167.4]; Plumbing Helper [152.86 h]; Dum Truck [50 h]; Loader [40 h]; Labor [25.6 h]; Plumber [152.86 h]; Excavator [6 h]; Excavator Operator [191.07 h]; Grader [60 h]; Un-Skilled Labor [191.07 h]; Skilled Labor [191.07 h] |
| 10 | **PORTABLE WATER IN ( PH2-ART-MC10 )** |  | 2027-06-20 → 2027-08-25 (+66d) |  |  |  |
| 7 | **Pipes Work** |  | 2027-06-20 → 2027-07-24 (+34d) |  |  |  |
| 1 | **Excavation** |  | 2027-03-02 → 2027-05-23 (+82d) |  |  |  |
| SDR-2-CON-PW-ZA-3930 | Excavation for PW HDPE Pipes 315 mm Section 1 |  | 2027-02-04 → 2027-05-10 (+95d) | 16d → -81d | SDR-2-CON-PW-ZA-3910 FF+2d → SDR-2-CON-PW-ZA-3910 SS+2d | resources SIC- Cost; Plumbing Helper [67.9 h]; Labor [38.41 h]; Plumber [67.9 h]; Excavator [12 h]; Excavator Operator [67.9 h]; Un-Skilled Labor [67.9 h]; Skilled Labor [67.9 h] → SIC- Cost [41173.5]; Plumbing Helper [67.9 h]; Labor [38.41 h]; Plumber [67.9 h]; Excavator [12 h]; Excavator Operator [67.9 h]; Un-Skilled Labor [67.9 h]; Skilled Labor [67.9 h] |
| SDR-2-CON-PW-ZA-2460 | Excavation for PW HDPE Pipes 315 mm Section 2 |  | 2027-03-02 → 2027-05-23 (+82d) | 16d → -28d |  | resources SIC- Cost; Plumbing Helper [67.9 h]; Labor [38.41 h]; Plumber [67.9 h]; Excavator [12 h]; Excavator Operator [67.9 h]; Un-Skilled Labor [67.9 h]; Skilled Labor [67.9 h] → SIC- Cost [41173.5]; Plumbing Helper [67.9 h]; Labor [38.41 h]; Plumber [67.9 h]; Excavator [12 h]; Excavator Operator [67.9 h]; Un-Skilled Labor [67.9 h]; Skilled Labor [67.9 h] |
| 8 | **bedding Works** |  | 2027-03-30 → 2027-05-30 (+61d) |  |  |  |
| SDR-2-CON-PW-ZA-2540 | Sand bedding for PW HDPE Pipes 315 mm |  | 2027-03-30 → 2027-05-30 (+61d) | 16d → -28d |  | resources SIC- Cost; Plumbing Helper [67.9 h]; Labor [38.41 h]; Plumber [114.64 h]; Excavator [12 h]; Excavator Operator [67.9 h]; Un-Skilled Labor [143.3 h]; Skilled Labor [143.3 h] → SIC- Cost [20586.8]; Plumbing Helper [67.9 h]; Labor [38.41 h]; Plumber [114.64 h]; Excavator [12 h]; Excavator Operator [67.9 h]; Un-Skilled Labor [143.3 h]; Skilled Labor [143.3 h] |
| 2 | **Pipes Laying** |  | 2027-04-17 → 2027-06-06 (+50d) |  |  |  |
| SDR-2-CON-PW-ZA-2470 | Install PW 315 mm HDPE Pipe |  | 2027-04-17 → 2027-06-06 (+50d) | 16d → -28d |  | resources SIC- Cost [267610]; Plumbing Helper [40.13 h]; Labor [76.81 h]; Plumber [40.13 h]; Excavator [10.5 h]; Excavator Operator [114.18 h]; Un-Skilled Labor [114.18 h]; Skilled Labor [124.26 h] → SIC- Cost [185281]; Plumbing Helper [40.13 h]; Labor [76.81 h]; Plumber [40.13 h]; Excavator [10.5 h]; Excavator Operator [114.18 h]; Un-Skilled Labor [114.18 h]; Skilled Labor [124.26 h] |
| 5 | **Testing** | 2027-04-18 → 2027-06-07 (+50d) | 2027-04-25 → 2027-06-14 (+50d) |  |  |  |
| SDR-2-CON-PW-ZA-2530 | Testing of PW HDPE Pipe 315 mm. | 2027-04-18 → 2027-06-07 (+50d) | 2027-04-25 → 2027-06-14 (+50d) | 16d → -28d |  | resources SIC- Cost [61756.1]; Plumbing Helper [76.43 h]; Labor [25.6 h]; Plumber [76.43 h]; Excavator [6 h]; Excavator Operator [95.54 h]; Un-Skilled Labor [95.54 h]; Skilled Labor [95.54 h] → SIC- Cost [41173.5]; Plumbing Helper [76.43 h]; Labor [25.6 h]; Plumber [76.43 h]; Excavator [6 h]; Excavator Operator [95.54 h]; Un-Skilled Labor [95.54 h]; Skilled Labor [95.54 h] |
| 9 | **Backfilling** | 2027-06-09 → 2027-07-13 (+34d) | 2027-06-20 → 2027-07-24 (+34d) |  |  |  |
| SDR-2-CON-PW-ZA-2550 | Backfilling of PW HDPE Pipe 315 mm. | 2027-06-09 → 2027-07-13 (+34d) | 2027-06-20 → 2027-07-24 (+34d) | 0d → -52d |  | resources SIC- Cost [61756.1]; Plumbing Helper [152.86 h]; Labor [25.6 h]; Plumber [152.86 h]; Excavator [6 h]; Excavator Operator [191.07 h]; Un-Skilled Labor [191.07 h]; Skilled Labor [191.07 h] → SIC- Cost [82347]; Plumbing Helper [152.86 h]; Labor [25.6 h]; Plumber [152.86 h]; Excavator [6 h]; Excavator Operator [191.07 h]; Un-Skilled Labor [191.07 h]; Skilled Labor [191.07 h] |
| 3 | **Valve Chambers & Valves & Fire Hydrant** | 2027-01-17 → 2027-05-04 (+107d) | 2027-05-11 → 2027-08-25 (+106d) |  |  |  |
| 3 | **Excavation** | 2027-01-17 → 2027-05-04 (+107d) | 2027-03-07 → 2027-06-27 (+112d) |  |  |  |
| SDR-2-CON-PW-ZA-3940 | Excavation for Valve Chambers Section 1 | 2027-01-17 → 2027-05-04 (+107d) | 2027-02-09 → 2027-06-02 (+113d) | 29d → -81d |  | resources SIC- Cost [56482.5]; Plumbing Helper [191.07 h]; Labor [25.6 h]; Plumber [191.07 h]; Excavator [12 h]; Excavator Operator [238.84 h]; Un-Skilled Labor [238.84 h]; Skilled Labor [238.84 h] → SIC- Cost [15062.8]; Plumbing Helper [191.07 h]; Labor [25.6 h]; Plumber [191.07 h]; Excavator [12 h]; Excavator Operator [238.84 h]; Un-Skilled Labor [238.84 h]; Skilled Labor [238.84 h] |
| SDR-2-CON-PW-ZA-2500 | Excavation for Valve Chambers Section 2 | 2027-02-10 → 2027-06-03 (+113d) | 2027-03-07 → 2027-06-27 (+112d) | 29d → -81d |  | resources SIC- Cost [56482.5]; Plumbing Helper [191.07 h]; Labor [25.6 h]; Plumber [191.07 h]; Excavator [12 h]; Excavator Operator [238.84 h]; Un-Skilled Labor [238.84 h]; Skilled Labor [238.84 h] → SIC- Cost [15062.8]; Plumbing Helper [191.07 h]; Labor [25.6 h]; Plumber [191.07 h]; Excavator [12 h]; Excavator Operator [238.84 h]; Un-Skilled Labor [238.84 h]; Skilled Labor [238.84 h] |
| 1 | **bedding Works** | 2027-03-08 → 2027-06-28 (+112d) | 2027-04-04 → 2027-07-20 (+107d) |  |  |  |
| SDR-2-CON-PW-ZA-2480 | Sand bedding for Valve Chambers | 2027-03-08 → 2027-06-28 (+112d) | 2027-04-04 → 2027-07-20 (+107d) | 29d → -81d |  | resources SIC- Cost [23901.1]; Plumbing Helper [76.43 h]; Labor [25.6 h]; Plumber [76.43 h]; Excavator [12 h]; Excavator Operator [95.54 h]; Un-Skilled Labor [95.54 h]; Skilled Labor [95.54 h] → SIC- Cost [20083.7]; Plumbing Helper [76.43 h]; Labor [25.6 h]; Plumber [76.43 h]; Excavator [12 h]; Excavator Operator [95.54 h]; Un-Skilled Labor [95.54 h]; Skilled Labor [95.54 h] |
| 4 | **Install Chambers & Valves & Fire Hydrant** | 2027-04-05 → 2027-07-21 (+107d) | 2027-04-20 → 2027-08-05 (+107d) |  |  |  |
| SDR-2-CON-PW-ZA-2510 | Install Chambers & Valves | 2027-04-05 → 2027-07-21 (+107d) | 2027-04-20 → 2027-08-05 (+107d) | 29d → -81d |  | resources SIC- Cost [18906.2]; Plumbing Helper [40.13 h]; Labor [25.6 h]; Plumber [40.13 h]; Excavator [8.25 h]; Excavator Operator [127.99 h]; Un-Skilled Labor [127.99 h]; Skilled Labor [138.07 h] → SIC- Cost [90376.7]; Plumbing Helper [40.13 h]; Labor [25.6 h]; Plumber [40.13 h]; Excavator [8.25 h]; Excavator Operator [127.99 h]; Un-Skilled Labor [127.99 h]; Skilled Labor [138.07 h] |
| 2 | **Testing** | 2027-04-21 → 2027-08-06 (+107d) | 2027-04-29 → 2027-08-14 (+107d) |  |  |  |
| SDR-2-CON-PW-ZA-2490 | Testing for Chambers & Valves | 2027-04-21 → 2027-08-06 (+107d) | 2027-04-29 → 2027-08-14 (+107d) | 29d → -81d |  | resources SIC- Cost [23901.1]; Plumbing Helper [76.43 h]; Labor [25.6 h]; Plumber [76.43 h]; Excavator [6 h]; Excavator Operator [95.54 h]; Un-Skilled Labor [95.54 h]; Skilled Labor [95.54 h] → SIC- Cost [20083.7]; Plumbing Helper [76.43 h]; Labor [25.6 h]; Plumber [76.43 h]; Excavator [6 h]; Excavator Operator [95.54 h]; Un-Skilled Labor [95.54 h]; Skilled Labor [95.54 h] |
| 6 | **Backfilling** | 2027-05-01 → 2027-08-15 (+106d) | 2027-05-11 → 2027-08-25 (+106d) |  |  |  |
| SDR-2-CON-PW-ZA-2520 | Backfilling for Chambers & Valves | 2027-05-01 → 2027-08-15 (+106d) | 2027-05-11 → 2027-08-25 (+106d) | 29d → -81d |  | resources SIC- Cost [1798.57]; Plumbing Helper [143.3 h]; Dump Truck [50 h]; Labor [25.6 h]; Plumber [143.3 h]; Excavator [6 h]; Excavator Operator [179.13 h]; Grader [60 h]; Un-Skilled Labor [179.13 h]; Skilled Labor [179.13 h] → SIC- Cost [40167.4]; Plumbing Helper [143.3 h]; Dum Truck [50 h]; Labor [25.6 h]; Plumber [143.3 h]; Excavator [6 h]; Excavator Operator [179.13 h]; Grader [60 h]; Un-Skilled Labor [179.13 h]; Skilled Labor [179.13 h] |
| ZG | **ZONE G** |  | 2027-06-02 → 2027-09-19 (+109d) |  |  |  |
| 1 | **PORTABLE WATER IN ( PH2-G-MCA0 )** |  | 2027-03-01 → 2027-07-11 (+132d) |  |  |  |
| 7 | **Pipes Work** |  | 2026-12-05 → 2027-04-24 (+140d) |  |  |  |

| ID | Task | Start | Finish | Total float | Predecessors | Other |
| --- | --- | --- | --- | --- | --- | --- |
| SDR-2-CON-PW-ZG-1520 | Excavation for PW HDPE Pipes 400 mm Section 1 |  |  |  | SDR-2-CON-TS-ZA-2300 SS → SDR-2-CON-TS-ZA-2300, SDR-2-CON-MV-ZA-1180 | resources SIC- Cost; Plumbing Helper [135.79 h]; Labor [38.41 h]; Plumber [135.79 h]; Excavator [18 h]; Excavator Operator [135.79 h]; Un-Skilled Labor [135.79 h]; Skilled Labor [135.79 h] → SIC- Cost [84474.4]; Plumbing Helper [135.79 h]; Labor [38.41 h]; Plumber [135.79 h]; Excavator [18 h]; Excavator Operator [135.79 h]; Un-Skilled Labor [135.79 h]; Skilled Labor [135.79 h] |
| SDR-2-CON-PW-ZG-1000 | Excavation for PW HDPE Pipes 400 mm Section 2 |  |  |  |  | resources SIC- Cost; Plumbing Helper [135.79 h]; Labor [38.41 h]; Plumber [135.79 h]; Excavator [18 h]; Excavator Operator [135.79 h]; Un-Skilled Labor [135.79 h]; Skilled Labor [135.79 h] → SIC- Cost [84474.4]; Plumbing Helper [135.79 h]; Labor [38.41 h]; Plumber [135.79 h]; Excavator [18 h]; Excavator Operator [135.79 h]; Un-Skilled Labor [135.79 h]; Skilled Labor [135.79 h] |
| 3 | **bedding Works** |  | 2026-11-09 → 2027-03-22 (+133d) |  |  |  |
| SDR-2-CON-PW-ZG-1500 | Sand bedding for PW HDPE Pipes 400 mm |  | 2026-11-09 → 2027-03-22 (+133d) | 132d → 23d |  | resources SIC- Cost [168943]; Plumbing Helper [95.54 h]; Labor [38.41 h]; Plumber [95.54 h]; Excavator [6 h]; Excavator Operator [119.42 h]; Un-Skilled Labor [119.42 h]; Skilled Labor [119.42 h] → SIC- Cost [42237.2]; Plumbing Helper [95.54 h]; Labor [38.41 h]; Plumber [95.54 h]; Excavator [6 h]; Excavator Operator [119.42 h]; Un-Skilled Labor [119.42 h]; Skilled Labor [119.42 h] |
| 2 | **Pipes Laying** |  | 2026-11-09 → 2027-03-29 (+140d) |  |  |  |
| SDR-2-CON-PW-ZG-1010 | Install PW 400 mm HDPE Pipe |  | 2026-11-09 → 2027-03-29 (+140d) | 132d → 23d | SDR-2-CON-PW-ZG-1500 FF → SDR-2-CON-PW-ZG-1500 | resources SIC- Cost [549065]; Plumbing Helper [40.13 h]; Labor [76.81 h]; Plumber [40.13 h]; Excavator [8 h]; Excavator Operator [70.14 h]; Un-Skilled Labor [70.14 h]; Skilled Labor [70.14 h] → SIC- Cost [380135]; Plumbing Helper [40.13 h]; Labor [76.81 h]; Plumber [40.13 h]; Excavator [8 h]; Excavator Operator [70.14 h]; Un-Skilled Labor [70.14 h]; Skilled Labor [70.14 h] |
| 5 | **Testing** | 2026-11-10 → 2027-03-30 (+140d) | 2026-11-21 → 2027-04-10 (+140d) |  |  |  |
| SDR-2-CON-PW-ZG-1080 | Testing of PW HDPE Pipe 400 mm. | 2026-11-10 → 2027-03-30 (+140d) | 2026-11-21 → 2027-04-10 (+140d) | 132d → 23d |  | resources SIC- Cost [126707]; Plumbing Helper [76.43 h]; Labor [25.6 h]; Plumber [76.43 h]; Excavator [12 h]; Excavator Operator [95.54 h]; Un-Skilled Labor [95.54 h]; Skilled Labor [95.54 h] → SIC- Cost [84474.4]; Plumbing Helper [76.43 h]; Labor [25.6 h]; Plumber [76.43 h]; Excavator [12 h]; Excavator Operator [95.54 h]; Un-Skilled Labor [95.54 h]; Skilled Labor [95.54 h] |
| 4 | **Backfilling** | 2026-11-22 → 2027-04-11 (+140d) | 2026-12-05 → 2027-04-24 (+140d) |  |  |  |
| SDR-2-CON-PW-ZG-1510 | Backfilling of PW HDPE Pipe 400 mm. | 2026-11-22 → 2027-04-11 (+140d) | 2026-12-05 → 2027-04-24 (+140d) | 132d → 23d |  | resources SIC- Cost [126707]; Plumbing Helper [152.86 h]; Labor [25.6 h]; Plumber [152.86 h]; Excavator [6 h]; Excavator Operator [191.07 h]; Un-Skilled Labor [191.07 h]; Skilled Labor [191.07 h] → SIC- Cost [168949]; Plumbing Helper [152.86 h]; Labor [25.6 h]; Plumber [152.86 h]; Excavator [6 h]; Excavator Operator [191.07 h]; Un-Skilled Labor [191.07 h]; Skilled Labor [191.07 h] |
| 3 | **Valve Chambers & Valves & Fire Hydrant** | 2026-11-09 → 2027-03-16 (+127d) | 2027-03-01 → 2027-07-11 (+132d) |  |  |  |
| 3 | **Excavation** | 2026-11-09 → 2027-03-16 (+127d) | 2026-12-27 → 2027-05-03 (+127d) |  |  |  |
| SDR-2-CON-PW-ZA-3950 | Excavation for Valve Chambers Section 1 | 2026-11-09 → 2027-03-16 (+127d) | 2026-12-02 → 2027-04-08 (+127d) | 59d → -41d |  | resources SIC- Cost [56482.5]; Plumbing Helper [171.96 h]; Labor [25.6 h]; Plumber [171.96 h]; Excavator [18 h]; Excavator Operator [214.96 h]; Un-Skilled Labor [214.96 h]; Skilled Labor [214.96 h] → SIC- Cost [15062.8]; Plumbing Helper [171.96 h]; Labor [25.6 h]; Plumber [171.96 h]; Excavator [18 h]; Excavator Operator [214.96 h]; Un-Skilled Labor [214.96 h]; Skilled Labor [214.96 h] |
| SDR-2-CON-PW-ZA-3680 | Excavation for Valve Chambers Section 2 | 2026-12-03 → 2027-04-10 (+128d) | 2026-12-27 → 2027-05-03 (+127d) | 59d → -41d |  | resources SIC- Cost [56482.5]; Plumbing Helper [171.96 h]; Labor [25.6 h]; Plumber [171.96 h]; Excavator [18 h]; Excavator Operator [214.96 h]; Un-Skilled Labor [214.96 h]; Skilled Labor [214.96 h] → SIC- Cost [15062.8]; Plumbing Helper [171.96 h]; Labor [25.6 h]; Plumber [171.96 h]; Excavator [18 h]; Excavator Operator [214.96 h]; Un-Skilled Labor [214.96 h]; Skilled Labor [214.96 h] |
| 1 | **bedding Works** | 2026-12-28 → 2027-05-04 (+127d) | 2027-01-17 → 2027-05-30 (+133d) |  |  |  |
| SDR-2-CON-PW-ZA-3660 | Sand bedding for Valve Chambers | 2026-12-28 → 2027-05-04 (+127d) | 2027-01-17 → 2027-05-30 (+133d) | 59d → -41d |  | resources SIC- Cost [23901.1]; Plumbing Helper [76.43 h]; Labor [25.6 h]; Plumber [76.43 h]; Excavator [6 h]; Excavator Operator [95.54 h]; Un-Skilled Labor [95.54 h]; Skilled Labor [95.54 h] → SIC- Cost [20083.7]; Plumbing Helper [76.43 h]; Labor [25.6 h]; Plumber [76.43 h]; Excavator [6 h]; Excavator Operator [95.54 h]; Un-Skilled Labor [95.54 h]; Skilled Labor [95.54 h] |
| 4 | **Install Chambers & Valves & Fire Hydrant** | 2027-01-18 → 2027-05-31 (+133d) | 2027-02-04 → 2027-06-17 (+133d) |  |  |  |
| SDR-2-CON-PW-ZA-3690 | Install Chambers & Valves | 2027-01-18 → 2027-05-31 (+133d) | 2027-02-04 → 2027-06-17 (+133d) | 59d → -41d |  | resources SIC- Cost [18906.2]; Plumbing Helper [152.86 h]; Labor [25.6 h]; Plumber [40.13 h]; Excavator [8 h]; Excavator Operator [60.06 h]; Un-Skilled Labor [70.14 h]; Skilled Labor [90.29 h] → SIC- Cost [90376.7]; Plumbing Helper [152.86 h]; Labor [25.6 h]; Plumber [40.13 h]; Excavator [8 h]; Excavator Operator [60.06 h]; Un-Skilled Labor [70.14 h]; Skilled Labor [90.29 h] |
| 2 | **Testing** | 2027-02-06 → 2027-06-19 (+133d) | 2027-02-16 → 2027-06-29 (+133d) |  |  |  |
| SDR-2-CON-PW-ZA-3670 | Testing for Chambers & Valves | 2027-02-06 → 2027-06-19 (+133d) | 2027-02-16 → 2027-06-29 (+133d) | 59d → -41d |  | resources SIC- Cost [23901.1]; Plumbing Helper [66.88 h]; Labor [25.6 h]; Plumber [66.88 h]; Excavator [12 h]; Excavator Operator [83.59 h]; Un-Skilled Labor [83.59 h]; Skilled Labor [83.59 h] → SIC- Cost [20083.7]; Plumbing Helper [66.88 h]; Labor [25.6 h]; Plumber [66.88 h]; Excavator [12 h]; Excavator Operator [83.59 h]; Un-Skilled Labor [83.59 h]; Skilled Labor [83.59 h] |
| 6 | **Backfilling** | 2027-02-17 → 2027-06-30 (+133d) | 2027-03-01 → 2027-07-11 (+132d) |  |  |  |
| SDR-2-CON-PW-ZA-3700 | Backfilling for Chambers & Valves | 2027-02-17 → 2027-06-30 (+133d) | 2027-03-01 → 2027-07-11 (+132d) | 59d → -41d |  | resources SIC- Cost [1798.57]; Plumbing Helper [124.2 h]; Labor [25.6 h]; Plumber [124.2 h]; Excavator [6 h]; Excavator Operator [155.25 h]; Un-Skilled Labor [155.25 h]; Skilled Labor [155.25 h] → SIC- Cost [40167.4]; Plumbing Helper [124.2 h]; Labor [25.6 h]; Plumber [124.2 h]; Excavator [6 h]; Excavator Operator [155.25 h]; Un-Skilled Labor [155.25 h]; Skilled Labor [155.25 h] |
| 2 | **PORTABLE WATER IN ( PH2-G-MCE0 )** |  | 2027-06-02 → 2027-07-14 (+42d) |  |  |  |
| 7 | **Pipes Work** |  | 2026-12-02 → 2027-04-21 (+140d) |  |  |  |
| SDR-2-CON-PW-ZA-3960 | Excavation for PW HDPE Pipe 225 mm. Section 1 |  |  |  | SDR-2-CON-TS-ZA-2400 SS → SDR-2-CON-TS-ZA-2400 | resources SIC- Cost; Plumbing Helper [67.9 h]; Labor [38.41 h]; Plumber [67.9 h]; Excavator [12.9 h]; Excavator Operator [67.9 h]; Un-Skilled Labor [135.79 h]; Skilled Labor [135.79 h] → SIC- Cost [19451.7]; Plumbing Helper [67.9 h]; Labor [38.41 h]; Plumber [67.9 h]; Excavator [12.9 h]; Excavator Operator [67.9 h]; Un-Skilled Labor [135.79 h]; Skilled Labor [135.79 h] |
| SDR-2-CON-PW-ZA-2910 | Excavation for PW HDPE Pipe 225 mm. Section 2 |  |  |  |  | resources SIC- Cost; Plumbing Helper [67.9 h]; Labor [38.41 h]; Plumber [67.9 h]; Excavator [12.9 h]; Excavator Operator [67.9 h]; Un-Skilled Labor [135.79 h]; Skilled Labor [135.79 h] → SIC- Cost [19451.7]; Plumbing Helper [67.9 h]; Labor [38.41 h]; Plumber [67.9 h]; Excavator [12.9 h]; Excavator Operator [67.9 h]; Un-Skilled Labor [135.79 h]; Skilled Labor [135.79 h] |
| 3 | **bedding Works** |  | 2026-11-09 → 2027-03-22 (+133d) |  |  |  |
| SDR-2-CON-PW-ZA-2940 | Sand bedding for PW HDPE Pipe 225 mm. |  | 2026-11-09 → 2027-03-22 (+133d) | 134d → 26d |  | resources SIC- Cost [38897.9]; Plumbing Helper [95.54 h]; Labor [38.41 h]; Plumber [95.54 h]; Excavator [6 h]; Excavator Operator [119.42 h]; Un-Skilled Labor [119.42 h]; Skilled Labor [119.42 h] → SIC- Cost [9725.85]; Plumbing Helper [95.54 h]; Labor [38.41 h]; Plumber [95.54 h]; Excavator [6 h]; Excavator Operator [119.42 h]; Un-Skilled Labor [119.42 h]; Skilled Labor [119.42 h] |
| 2 | **Pipes Laying** |  | 2026-11-09 → 2027-03-29 (+140d) |  |  |  |
| SDR-2-CON-PW-ZA-2920 | Install PW 225 mm HDPE Pipe |  | 2026-11-09 → 2027-03-29 (+140d) | 134d → 26d | SDR-2-CON-PW-ZA-2940 FF → SDR-2-CON-PW-ZA-2940 | resources SIC- Cost [126418]; Plumbing Helper [40.13 h]; Labor [76.81 h]; Plumber [40.13 h]; Excavator [12 h]; Excavator Operator [102.24 h]; Un-Skilled Labor [102.24 h]; Skilled Labor [112.31 h] → SIC- Cost [87532.6]; Plumbing Helper [40.13 h]; Labor [76.81 h]; Plumber [40.13 h]; Excavator [12 h]; Excavator Operator [102.24 h]; Un-Skilled Labor [102.24 h]; Skilled Labor [112.31 h] |
| 5 | **Testing** | 2026-11-10 → 2027-03-30 (+140d) | 2026-11-17 → 2027-04-06 (+140d) |  |  |  |
| SDR-2-CON-PW-ZA-2930 | Testing of PW HDPE Pipe 225 mm. | 2026-11-10 → 2027-03-30 (+140d) | 2026-11-17 → 2027-04-06 (+140d) | 134d → 26d |  | resources SIC- Cost [29173.4]; Plumbing Helper [76.43 h]; Labor [25.6 h]; Plumber [76.43 h]; Excavator [12 h]; Excavator Operator [95.54 h]; Un-Skilled Labor [95.54 h]; Skilled Labor [95.54 h] → SIC- Cost [19451.7]; Plumbing Helper [76.43 h]; Labor [25.6 h]; Plumber [76.43 h]; Excavator [12 h]; Excavator Operator [95.54 h]; Un-Skilled Labor [95.54 h]; Skilled Labor [95.54 h] |
| 4 | **Backfilling** | 2026-11-18 → 2027-04-07 (+140d) | 2026-12-02 → 2027-04-21 (+140d) |  |  |  |
| SDR-2-CON-PW-ZA-2950 | Backfilling of PW HDPE Pipe 225 mm. | 2026-11-18 → 2027-04-07 (+140d) | 2026-12-02 → 2027-04-21 (+140d) | 134d → 26d |  | resources SIC- Cost [29173.4]; Plumbing Helper [152.86 h]; Labor [25.6 h]; Plumber [152.86 h]; Excavator [6 h]; Excavator Operator [191.07 h]; Un-Skilled Labor [191.07 h]; Skilled Labor [191.07 h] → SIC- Cost [38903.4]; Plumbing Helper [152.86 h]; Labor [25.6 h]; Plumber [152.86 h]; Excavator [6 h]; Excavator Operator [191.07 h]; Un-Skilled Labor [191.07 h]; Skilled Labor [191.07 h] |
| 3 | **Valve Chambers & Valves & Fire Hydrant** | 2027-01-27 → 2027-03-16 (+48d) | 2027-06-02 → 2027-07-14 (+42d) |  |  |  |
| 3 | **Excavation** | 2027-01-27 → 2027-03-16 (+48d) | 2027-03-22 → 2027-05-03 (+42d) |  |  |  |
| SDR-2-CON-PW-ZA-3970 | Excavation for Valve Chambers Section 1 | 2027-01-27 → 2027-03-16 (+48d) | 2027-02-20 → 2027-04-08 (+47d) | 0d → -35d |  | resources SIC- Cost [56482.5]; Plumbing Helper [210.18 h]; Labor [25.6 h]; Plumber [210.18 h]; Excavator [12 h]; Excavator Operator [262.72 h]; Un-Skilled Labor [262.72 h]; Skilled Labor [262.72 h] → SIC- Cost [15062.8]; Plumbing Helper [210.18 h]; Labor [25.6 h]; Plumber [210.18 h]; Excavator [12 h]; Excavator Operator [262.72 h]; Un-Skilled Labor [262.72 h]; Skilled Labor [262.72 h] |
| SDR-2-CON-PW-ZA-2980 | Excavation for Valve Chambers Section 2 | 2027-02-21 → 2027-04-10 (+48d) | 2027-03-22 → 2027-05-03 (+42d) | 0d → -35d |  | resources SIC- Cost [56482.5]; Plumbing Helper [210.18 h]; Labor [25.6 h]; Plumber [210.18 h]; Excavator [12 h]; Excavator Operator [262.72 h]; Un-Skilled Labor [262.72 h]; Skilled Labor [262.72 h] → SIC- Cost [15062.8]; Plumbing Helper [210.18 h]; Labor [25.6 h]; Plumber [210.18 h]; Excavator [12 h]; Excavator Operator [262.72 h]; Un-Skilled Labor [262.72 h]; Skilled Labor [262.72 h] |
| 1 | **bedding Works** | 2027-03-23 → 2027-05-04 (+42d) | 2027-04-12 → 2027-05-30 (+48d) |  |  |  |
| SDR-2-CON-PW-ZA-2960 | Sand bedding for Valve Chambers | 2027-03-23 → 2027-05-04 (+42d) | 2027-04-12 → 2027-05-30 (+48d) | 0d → -35d |  | resources SIC- Cost [23901.1]; Plumbing Helper [76.43 h]; Labor [25.6 h]; Plumber [76.43 h]; Excavator [14.67 h]; Excavator Operator [95.54 h]; Un-Skilled Labor [95.54 h]; Skilled Labor [95.54 h] → SIC- Cost [20083.7]; Plumbing Helper [76.43 h]; Labor [25.6 h]; Plumber [76.43 h]; Excavator [14.67 h]; Excavator Operator [95.54 h]; Un-Skilled Labor [95.54 h]; Skilled Labor [95.54 h] |
| 4 | **Install Chambers & Valves & Fire Hydrant** | 2027-04-13 → 2027-05-31 (+48d) | 2027-05-02 → 2027-06-19 (+48d) |  |  |  |
| SDR-2-CON-PW-ZA-2990 | Install Chambers & Valves | 2027-04-13 → 2027-05-31 (+48d) | 2027-05-02 → 2027-06-19 (+48d) | 0d → -35d |  | resources SIC- Cost [18906.2]; Plumbing Helper [162.41 h]; Labor [25.6 h]; Plumber [40.13 h]; Excavator [12 h]; Excavator Operator [92.16 h]; Un-Skilled Labor [92.16 h]; Skilled Labor [102.24 h] → SIC- Cost [90376.7]; Plumbing Helper [162.41 h]; Labor [25.6 h]; Plumber [40.13 h]; Excavator [12 h]; Excavator Operator [92.16 h]; Un-Skilled Labor [92.16 h]; Skilled Labor [102.24 h] |
| 2 | **Testing** | 2027-05-03 → 2027-06-20 (+48d) | 2027-05-13 → 2027-06-30 (+48d) |  |  |  |
| SDR-2-CON-PW-ZA-2970 | Testing for Chambers & Valves | 2027-05-03 → 2027-06-20 (+48d) | 2027-05-13 → 2027-06-30 (+48d) | 0d → -35d |  | resources SIC- Cost [23901.1]; Plumbing Helper [76.43 h]; Labor [25.6 h]; Plumber [76.43 h]; Excavator [9.6 h]; Excavator Operator [95.54 h]; Un-Skilled Labor [95.54 h]; Skilled Labor [95.54 h] → SIC- Cost [20083.7]; Plumbing Helper [76.43 h]; Labor [25.6 h]; Plumber [76.43 h]; Excavator [9.6 h]; Excavator Operator [95.54 h]; Un-Skilled Labor [95.54 h]; Skilled Labor [95.54 h] |
| 6 | **Backfilling** | 2027-05-15 → 2027-07-01 (+47d) | 2027-06-02 → 2027-07-14 (+42d) |  |  |  |
| SDR-2-CON-PW-ZA-3000 | Backfilling for Chambers & Valves | 2027-05-15 → 2027-07-01 (+47d) | 2027-06-02 → 2027-07-14 (+42d) | 15d → -35d |  | resources SIC- Cost [1798.57]; Plumbing Helper [124.2 h]; Labor [25.6 h]; Plumber [124.2 h]; Excavator [6 h]; Excavator Operator [155.25 h]; Un-Skilled Labor [155.25 h]; Skilled Labor [155.25 h] → SIC- Cost [40167.4]; Plumbing Helper [124.2 h]; Labor [25.6 h]; Plumber [124.2 h]; Excavator [6 h]; Excavator Operator [155.25 h]; Un-Skilled Labor [155.25 h]; Skilled Labor [155.25 h] |
| 3 | **PORTABLE WATER IN ( PH2-G-MCF0 )** |  | 2027-05-05 → 2027-09-19 (+137d) |  |  |  |
| 7 | **Pipes Work** |  | 2027-02-09 → 2027-06-27 (+138d) |  |  |  |
| SDR-2-CON-PW-ZA-3980 | Excavation for PW HDPE Pipe 225 mm. Section 1 |  |  |  | SDR-2-CON-TS-ZA-2900 SS → SDR-2-CON-TS-ZA-2900, SDR-2-CON-TE-ZA-3280 | resources SIC- Cost; Plumbing Helper [67.9 h]; Labor [38.41 h]; Plumber [67.9 h]; Excavator [20.47 h]; Excavator Operator [67.9 h]; Un-Skilled Labor [135.79 h]; Skilled Labor [135.79 h] → SIC- Cost [19451.7]; Plumbing Helper [67.9 h]; Labor [38.41 h]; Plumber [67.9 h]; Excavator [20.47 h]; Excavator Operator [67.9 h]; Un-Skilled Labor [135.79 h]; Skilled Labor [135.79 h] |
| SDR-2-CON-PW-ZA-3010 | Excavation for PW HDPE Pipe 225 mm. Section 2 |  |  |  | SDR-2-CON-PW-ZA-3980 → SDR-2-CON-PW-ZA-3980, SDR-2-CON-SL-ZA-3290, SDR-2-CON-TE-ZA-3640 FS+4d, SDR-2-CON-TE-ZA-3370 | resources SIC- Cost; Plumbing Helper [67.9 h]; Labor [38.41 h]; Plumber [67.9 h]; Excavator [20.47 h]; Excavator Operator [67.9 h]; Un-Skilled Labor [135.79 h]; Skilled Labor [135.79 h] → SIC- Cost [19451.7]; Plumbing Helper [67.9 h]; Labor [38.41 h]; Plumber [67.9 h]; Excavator [20.47 h]; Excavator Operator [67.9 h]; Un-Skilled Labor [135.79 h]; Skilled Labor [135.79 h] |
| 3 | **bedding Works** |  | 2027-01-11 → 2027-05-27 (+136d) |  |  |  |
| SDR-2-CON-PW-ZA-3040 | Sand bedding for PW HDPE Pipe 225 mm. |  | 2027-01-11 → 2027-05-27 (+136d) | 75d → -21d |  | resources SIC- Cost [38897.9]; Plumbing Helper [95.54 h]; Labor [38.41 h]; Plumber [95.54 h]; Excavator [6 h]; Excavator Operator [119.42 h]; Un-Skilled Labor [119.42 h]; Skilled Labor [119.42 h] → SIC- Cost [9725.85]; Plumbing Helper [95.54 h]; Labor [38.41 h]; Plumber [95.54 h]; Excavator [6 h]; Excavator Operator [119.42 h]; Un-Skilled Labor [119.42 h]; Skilled Labor [119.42 h] |
| SDR-2-CON-PW-ZA-3020 | Install PW 225 mm HDPE Pipe |  |  |  | SDR-2-CON-PW-ZA-3040 SS → SDR-2-CON-PW-ZA-3040 | resources SIC- Cost [126418]; Plumbing Helper [152.86 h]; Labor [76.81 h]; Plumber [152.86 h]; Excavator [12 h]; Excavator Operator [191.07 h]; Un-Skilled Labor [130.6 h]; Skilled Labor [130.6 h] → SIC- Cost [87532.6]; Plumbing Helper [152.86 h]; Labor [76.81 h]; Plumber [152.86 h]; Excavator [12 h]; Excavator Operator [191.07 h]; Un-Skilled Labor [130.6 h]; Skilled Labor [130.6 h] |
| 5 | **Testing** | 2027-01-11 → 2027-05-29 (+138d) | 2027-01-19 → 2027-06-06 (+138d) |  |  |  |
| SDR-2-CON-PW-ZA-3030 | Testing of PW HDPE Pipe 225 mm. | 2027-01-11 → 2027-05-29 (+138d) | 2027-01-19 → 2027-06-06 (+138d) | 75d → -21d |  | resources SIC- Cost [29173.4]; Plumbing Helper [76.43 h]; Labor [25.6 h]; Plumber [76.43 h]; Excavator [8 h]; Excavator Operator [95.54 h]; Un-Skilled Labor [95.54 h]; Skilled Labor [65.3 h] → SIC- Cost [19451.7]; Plumbing Helper [76.43 h]; Labor [25.6 h]; Plumber [76.43 h]; Excavator [8 h]; Excavator Operator [95.54 h]; Un-Skilled Labor [95.54 h]; Skilled Labor [65.3 h] |
| 4 | **Backfilling** | 2027-01-20 → 2027-06-07 (+138d) | 2027-02-09 → 2027-06-27 (+138d) |  |  |  |
| SDR-2-CON-PW-ZA-3050 | Backfilling of PW HDPE Pipe 225 mm. | 2027-01-20 → 2027-06-07 (+138d) | 2027-02-09 → 2027-06-27 (+138d) | 75d → -21d |  | resources SIC- Cost [29173.4]; Plumbing Helper [143.3 h]; Labor [25.6 h]; Plumber [143.3 h]; Excavator [6 h]; Excavator Operator [179.13 h]; Un-Skilled Labor [179.13 h]; Skilled Labor [179.13 h] → SIC- Cost [38903.4]; Plumbing Helper [143.3 h]; Labor [25.6 h]; Plumber [143.3 h]; Excavator [6 h]; Excavator Operator [179.13 h]; Un-Skilled Labor [179.13 h]; Skilled Labor [179.13 h] |
| 3 | **Valve Chambers & Valves & Fire Hydrant** | 2027-01-11 → 2027-05-22 (+131d) | 2027-05-05 → 2027-09-19 (+137d) |  |  |  |
| 3 | **Excavation** | 2027-01-11 → 2027-05-22 (+131d) | 2027-02-15 → 2027-07-08 (+143d) |  |  |  |
| SDR-2-CON-PW-ZA-3990 | Excavation for Valve Chambers Section 1 | 2027-01-11 → 2027-05-22 (+131d) | 2027-02-03 → 2027-06-14 (+131d) | 7d → -96d |  | resources SIC- Cost [56482.5]; Plumbing Helper [200.63 h]; Labor [25.6 h]; Plumber [200.63 h]; Excavator [22 h]; Excavator Operator [250.78 h]; Un-Skilled Labor [250.78 h]; Skilled Labor [250.78 h] → SIC- Cost [15062.8]; Plumbing Helper [200.63 h]; Labor [25.6 h]; Plumber [200.63 h]; Excavator [22 h]; Excavator Operator [250.78 h]; Un-Skilled Labor [250.78 h]; Skilled Labor [250.78 h] |
| SDR-2-CON-PW-ZA-3080 | Excavation for Valve Chambers Section 2 | 2027-01-23 → 2027-06-15 (+143d) | 2027-02-15 → 2027-07-08 (+143d) | 7d → -96d | SDR-2-CON-PW-ZA-3990 SS+10d → SDR-2-CON-PW-ZA-3990 | resources SIC- Cost [56482.5]; Plumbing Helper [200.63 h]; Labor [25.6 h]; Plumber [200.63 h]; Excavator [22 h]; Excavator Operator [250.78 h]; Un-Skilled Labor [250.78 h]; Skilled Labor [250.78 h] → SIC- Cost [15062.8]; Plumbing Helper [200.63 h]; Labor [25.6 h]; Plumber [200.63 h]; Excavator [22 h]; Excavator Operator [250.78 h]; Un-Skilled Labor [250.78 h]; Skilled Labor [250.78 h] |
| 1 | **bedding Works** | 2027-02-16 → 2027-07-10 (+144d) | 2027-03-16 → 2027-08-01 (+138d) |  |  |  |
| SDR-2-CON-PW-ZA-3060 | Sand bedding for Valve Chambers | 2027-02-16 → 2027-07-10 (+144d) | 2027-03-16 → 2027-08-01 (+138d) | 7d → -96d |  | resources SIC- Cost [23901.1]; Plumbing Helper [85.98 h]; Labor [25.6 h]; Plumber [85.98 h]; Excavator [6 h]; Excavator Operator [107.48 h]; Un-Skilled Labor [107.48 h]; Skilled Labor [107.48 h] → SIC- Cost [20083.7]; Plumbing Helper [85.98 h]; Labor [25.6 h]; Plumber [85.98 h]; Excavator [6 h]; Excavator Operator [107.48 h]; Un-Skilled Labor [107.48 h]; Skilled Labor [107.48 h] |
| 4 | **Install Chambers & Valves & Fire Hydrant** | 2027-03-17 → 2027-08-02 (+138d) | 2027-04-07 → 2027-08-22 (+137d) |  |  |  |
| SDR-2-CON-PW-ZA-3090 | Install Chambers & Valves | 2027-03-17 → 2027-08-02 (+138d) | 2027-04-07 → 2027-08-22 (+137d) | 7d → -96d |  | resources SIC- Cost [18906.2]; Plumbing Helper [130.64 h]; Labor [25.6 h]; Plumber [130.64 h]; Excavator [12 h]; Excavator Operator [127.99 h]; Un-Skilled Labor [127.99 h]; Skilled Labor [138.07 h] → SIC- Cost [90376.7]; Plumbing Helper [130.64 h]; Labor [25.6 h]; Plumber [130.64 h]; Excavator [12 h]; Excavator Operator [127.99 h]; Un-Skilled Labor [127.99 h]; Skilled Labor [138.07 h] |
| 2 | **Testing** | 2027-04-08 → 2027-08-23 (+137d) | 2027-04-17 → 2027-08-31 (+136d) |  |  |  |
| SDR-2-CON-PW-ZA-3070 | Testing for Chambers & Valves | 2027-04-08 → 2027-08-23 (+137d) | 2027-04-17 → 2027-08-31 (+136d) | 7d → -96d |  | resources SIC- Cost [23901.1]; Plumbing Helper [76.43 h]; Labor [25.6 h]; Plumber [76.43 h]; Excavator [12 h]; Excavator Operator [95.54 h]; Un-Skilled Labor [95.54 h]; Skilled Labor [95.54 h] → SIC- Cost [20083.7]; Plumbing Helper [76.43 h]; Labor [25.6 h]; Plumber [76.43 h]; Excavator [12 h]; Excavator Operator [95.54 h]; Un-Skilled Labor [95.54 h]; Skilled Labor [95.54 h] |
| 6 | **Backfilling** | 2027-04-18 → 2027-09-01 (+136d) | 2027-05-05 → 2027-09-19 (+137d) |  |  |  |
| SDR-2-CON-PW-ZA-3100 | Backfilling for Chambers & Valves | 2027-04-18 → 2027-09-01 (+136d) | 2027-05-05 → 2027-09-19 (+137d) | 7d → -96d |  | resources SIC- Cost [1798.57]; Plumbing Helper [143.3 h]; Labor [25.6 h]; Plumber [143.3 h]; Excavator [6 h]; Excavator Operator [179.13 h]; Un-Skilled Labor [179.13 h]; Skilled Labor [179.13 h] → SIC- Cost [40167.4]; Plumbing Helper [143.3 h]; Labor [25.6 h]; Plumber [143.3 h]; Excavator [6 h]; Excavator Operator [179.13 h]; Un-Skilled Labor [179.13 h]; Skilled Labor [179.13 h] |
| 4 | **PORTABLE WATER IN ( PH2-G-MCG0 )** |  | 2027-03-04 → 2027-07-07 (+125d) |  |  |  |

| ID | Task | Start | Finish | Complete | Total float | Predecessors | Other |
| --- | --- | --- | --- | --- | --- | --- | --- |
| 7 | **Pipes Work** |  | 2026-12-07 → 2027-04-13 (+127d) |  |  |  |  |
| SDR-2-CON-PW-ZA-4000 | Excavation for PW HDPE Pipe 225 mm. Section 1 |  |  |  |  | SDR-2-CON-TS-ZA-3000 SS → SDR-2-CON-TS-ZA-3000, SDR-2-CON-MV-ZA-1180 | resources SIC- Cost; Plumbing Helper [135.79 h]; Labor [38.41 h]; Plumber [135.79 h]; Excavator [18 h]; Excavator Operator [135.79 h]; Un-Skilled Labor [135.79 h]; Skilled Labor [135.79 h] → SIC- Cost [19451.7]; Plumbing Helper [135.79 h]; Labor [38.41 h]; Plumber [135.79 h]; Excavator [18 h]; Excavator Operator [135.79 h]; Un-Skilled Labor [135.79 h]; Skilled Labor [135.79 h] |
| SDR-2-CON-PW-ZA-3110 | Excavation for PW HDPE Pipe 225 mm. Section 2 |  |  |  |  |  | resources SIC- Cost; Plumbing Helper [135.79 h]; Labor [38.41 h]; Plumber [135.79 h]; Excavator [18 h]; Excavator Operator [135.79 h]; Un-Skilled Labor [135.79 h]; Skilled Labor [135.79 h] → SIC- Cost [19451.7]; Plumbing Helper [135.79 h]; Labor [38.41 h]; Plumber [135.79 h]; Excavator [18 h]; Excavator Operator [135.79 h]; Un-Skilled Labor [135.79 h]; Skilled Labor [135.79 h] |
| 3 | **bedding Works** |  | 2026-11-09 → 2027-03-15 (+126d) |  |  |  |  |
| SDR-2-CON-PW-ZA-3140 | Sand bedding for PW HDPE Pipe 225 mm. |  | 2026-11-09 → 2027-03-15 (+126d) |  | 130d → 37d |  | resources SIC- Cost [38897.9]; Plumbing Helper [76.43 h]; Labor [38.41 h]; Plumber [76.43 h]; Excavator [6 h]; Excavator Operator [95.54 h]; Un-Skilled Labor [95.54 h]; Skilled Labor [95.54 h] → SIC- Cost [9725.85]; Plumbing Helper [76.43 h]; Labor [38.41 h]; Plumber [76.43 h]; Excavator [6 h]; Excavator Operator [95.54 h]; Un-Skilled Labor [95.54 h]; Skilled Labor [95.54 h] |
| SDR-2-CON-PW-ZA-3120 | Install PW 225 mm HDPE Pipe |  |  |  |  | SDR-2-CON-PW-ZA-3140 SS → SDR-2-CON-PW-ZA-3140 | resources SIC- Cost [126418]; Plumbing Helper [152.86 h]; Labor [76.81 h]; Plumber [40.13 h]; Excavator [8 h]; Excavator Operator [70.14 h]; Un-Skilled Labor [70.14 h]; Skilled Labor [80.22 h] → SIC- Cost [87532.6]; Plumbing Helper [152.86 h]; Labor [76.81 h]; Plumber [40.13 h]; Excavator [8 h]; Excavator Operator [70.14 h]; Un-Skilled Labor [70.14 h]; Skilled Labor [80.22 h] |
| 5 | **Testing** | 2026-11-09 → 2027-03-16 (+127d) | 2026-11-17 → 2027-03-24 (+127d) |  |  |  |  |
| SDR-2-CON-PW-ZA-3130 | Testing of PW HDPE Pipe 225 mm. | 2026-11-09 → 2027-03-16 (+127d) | 2026-11-17 → 2027-03-24 (+127d) |  | 130d → 37d |  | resources SIC- Cost [29173.4]; Plumbing Helper [76.43 h]; Labor [25.6 h]; Plumber [76.43 h]; Excavator [12 h]; Excavator Operator [95.54 h]; Un-Skilled Labor [95.54 h]; Skilled Labor [95.54 h] → SIC- Cost [19451.7]; Plumbing Helper [76.43 h]; Labor [25.6 h]; Plumber [76.43 h]; Excavator [12 h]; Excavator Operator [95.54 h]; Un-Skilled Labor [95.54 h]; Skilled Labor [95.54 h] |
| 4 | **Backfilling** | 2026-11-18 → 2027-03-25 (+127d) | 2026-12-07 → 2027-04-13 (+127d) |  |  |  |  |
| SDR-2-CON-PW-ZA-3150 | Backfilling of PW HDPE Pipe 225 mm. | 2026-11-18 → 2027-03-25 (+127d) | 2026-12-07 → 2027-04-13 (+127d) |  | 130d → 37d |  | resources SIC- Cost [29173.4]; Plumbing Helper [171.96 h]; Labor [25.6 h]; Plumber [171.96 h]; Excavator [10 h]; Excavator Operator [214.96 h]; Un-Skilled Labor [214.96 h]; Skilled Labor [214.96 h] → SIC- Cost [38903.4]; Plumbing Helper [171.96 h]; Labor [25.6 h]; Plumber [171.96 h]; Excavator [10 h]; Excavator Operator [214.96 h]; Un-Skilled Labor [214.96 h]; Skilled Labor [214.96 h] |
| 3 | **Valve Chambers & Valves & Fire Hydrant** | 2026-11-09 → 2027-03-04 (+115d) | 2027-03-04 → 2027-07-07 (+125d) |  |  |  |  |
| 3 | **Excavation** | 2026-11-09 → 2027-03-04 (+115d) | 2026-12-27 → 2027-04-26 (+120d) |  |  |  |  |
| SDR-2-CON-PW-ZA-4010 | Excavation for Valve Chambers Section 1 | 2026-11-09 → 2027-03-04 (+115d) | 2026-12-02 → 2027-04-01 (+120d) |  | 56d → -31d |  | resources SIC- Cost [56482.5]; Plumbing Helper [152.86 h]; Labor [25.6 h]; Plumber [152.86 h]; Excavator [18 h]; Excavator Operator [191.07 h]; Un-Skilled Labor [191.07 h]; Skilled Labor [191.07 h] → SIC- Cost [15062.8]; Plumbing Helper [152.86 h]; Labor [25.6 h]; Plumber [152.86 h]; Excavator [18 h]; Excavator Operator [191.07 h]; Un-Skilled Labor [191.07 h]; Skilled Labor [191.07 h] |
| SDR-2-CON-PW-ZA-3180 | Excavation for Valve Chambers Section 2 | 2026-12-03 → 2027-04-03 (+121d) | 2026-12-27 → 2027-04-26 (+120d) |  | 56d → -31d |  | resources SIC- Cost [56482.5]; Plumbing Helper [152.86 h]; Labor [25.6 h]; Plumber [152.86 h]; Excavator [18 h]; Excavator Operator [191.07 h]; Un-Skilled Labor [191.07 h]; Skilled Labor [191.07 h] → SIC- Cost [15062.8]; Plumbing Helper [152.86 h]; Labor [25.6 h]; Plumber [152.86 h]; Excavator [18 h]; Excavator Operator [191.07 h]; Un-Skilled Labor [191.07 h]; Skilled Labor [191.07 h] |
| 1 | **bedding Works** | 2026-12-28 → 2027-04-27 (+120d) | 2027-01-17 → 2027-05-23 (+126d) |  |  |  |  |
| SDR-2-CON-PW-ZA-3160 | Sand bedding for Valve Chambers | 2026-12-28 → 2027-04-27 (+120d) | 2027-01-17 → 2027-05-23 (+126d) |  | 56d → -31d |  | resources SIC- Cost [23901.1]; Plumbing Helper [76.43 h]; Labor [25.6 h]; Plumber [76.43 h]; Excavator [6 h]; Excavator Operator [95.54 h]; Un-Skilled Labor [95.54 h]; Skilled Labor [95.54 h] → SIC- Cost [20083.7]; Plumbing Helper [76.43 h]; Labor [25.6 h]; Plumber [76.43 h]; Excavator [6 h]; Excavator Operator [95.54 h]; Un-Skilled Labor [95.54 h]; Skilled Labor [95.54 h] |
| 4 | **Install Chambers & Valves & Fire Hydrant** | 2027-01-18 → 2027-05-24 (+126d) | 2027-02-02 → 2027-06-08 (+126d) |  |  |  |  |
| SDR-2-CON-PW-ZA-3190 | Install Chambers & Valves | 2027-01-18 → 2027-05-24 (+126d) | 2027-02-02 → 2027-06-08 (+126d) |  | 56d → -31d |  | resources SIC- Cost [18906.2]; Plumbing Helper [40.13 h]; Labor [25.6 h]; Plumber [40.13 h]; Excavator [8 h]; Excavator Operator [70.14 h]; Un-Skilled Labor [70.14 h]; Skilled Labor [80.22 h] → SIC- Cost [90376.7]; Plumbing Helper [40.13 h]; Labor [25.6 h]; Plumber [40.13 h]; Excavator [8 h]; Excavator Operator [70.14 h]; Un-Skilled Labor [70.14 h]; Skilled Labor [80.22 h] |
| 2 | **Testing** | 2027-02-03 → 2027-06-09 (+126d) | 2027-02-11 → 2027-06-17 (+126d) |  |  |  |  |
| SDR-2-CON-PW-ZA-3170 | Testing for Chambers & Valves | 2027-02-03 → 2027-06-09 (+126d) | 2027-02-11 → 2027-06-17 (+126d) |  | 56d → -31d |  | resources SIC- Cost [23901.1]; Plumbing Helper [76.43 h]; Labor [25.6 h]; Plumber [76.43 h]; Excavator [12 h]; Excavator Operator [95.54 h]; Un-Skilled Labor [95.54 h]; Skilled Labor [95.54 h] → SIC- Cost [20083.7]; Plumbing Helper [76.43 h]; Labor [25.6 h]; Plumber [76.43 h]; Excavator [12 h]; Excavator Operator [95.54 h]; Un-Skilled Labor [95.54 h]; Skilled Labor [95.54 h] |
| 6 | **Backfilling** | 2027-02-13 → 2027-06-19 (+126d) | 2027-03-04 → 2027-07-07 (+125d) |  |  |  |  |
| SDR-2-CON-PW-ZA-3200 | Backfilling for Chambers & Valves | 2027-02-13 → 2027-06-19 (+126d) | 2027-03-04 → 2027-07-07 (+125d) |  | 56d → -31d |  | resources SIC- Cost [1798.57]; Plumbing Helper [124.2 h]; Labor [25.6 h]; Plumber [124.2 h]; Excavator [10 h]; Excavator Operator [155.25 h]; Un-Skilled Labor [155.25 h]; Skilled Labor [155.25 h] → SIC- Cost [40167.4]; Plumbing Helper [124.2 h]; Labor [25.6 h]; Plumber [124.2 h]; Excavator [10 h]; Excavator Operator [155.25 h]; Un-Skilled Labor [155.25 h]; Skilled Labor [155.25 h] |
| 5 | **PORTABLE WATER IN ( PH2-G-MCZ0 )** |  | 2027-03-06 → 2027-07-18 (+134d) |  |  |  |  |
| 7 | **Pipes Work** |  | 2026-12-06 → 2027-04-27 (+142d) |  |  |  |  |
| SDR-2-CON-PW-ZA-4020 | Excavation for PW HDPE Pipes 315 mm Section 1 |  |  |  |  | SDR-2-CON-TS-ZA-2500 SS → SDR-2-CON-TS-ZA-2500 FS+2d | resources SIC- Cost; Plumbing Helper [135.79 h]; Labor [38.41 h]; Plumber [135.79 h]; Excavator [18 h]; Excavator Operator [135.79 h]; Un-Skilled Labor [135.79 h]; Skilled Labor [135.79 h] → SIC- Cost [41173.5]; Plumbing Helper [135.79 h]; Labor [38.41 h]; Plumber [135.79 h]; Excavator [18 h]; Excavator Operator [135.79 h]; Un-Skilled Labor [135.79 h]; Skilled Labor [135.79 h] |
| SDR-2-CON-PW-ZA-2560 | Excavation for PW HDPE Pipes 315 mm Section 2 |  |  |  |  |  | resources SIC- Cost; Plumbing Helper [135.79 h]; Labor [38.41 h]; Plumber [135.79 h]; Excavator [18 h]; Excavator Operator [135.79 h]; Un-Skilled Labor [135.79 h]; Skilled Labor [135.79 h] → SIC- Cost [41173.5]; Plumbing Helper [135.79 h]; Labor [38.41 h]; Plumber [135.79 h]; Excavator [18 h]; Excavator Operator [135.79 h]; Un-Skilled Labor [135.79 h]; Skilled Labor [135.79 h] |
| 8 | **bedding Works** |  | 2026-11-09 → 2027-03-24 (+135d) |  |  |  |  |
| SDR-2-CON-PW-ZA-2640 | Sand bedding for PW HDPE Pipes 315 mm |  | 2026-11-09 → 2027-03-24 (+135d) |  | 131d → 25d |  | resources SIC- Cost [82341.5]; Plumbing Helper [76.43 h]; Labor [38.41 h]; Plumber [76.43 h]; Excavator [6 h]; Excavator Operator [95.54 h]; Un-Skilled Labor [95.54 h]; Skilled Labor [95.54 h] → SIC- Cost [20586.8]; Plumbing Helper [76.43 h]; Labor [38.41 h]; Plumber [76.43 h]; Excavator [6 h]; Excavator Operator [95.54 h]; Un-Skilled Labor [95.54 h]; Skilled Labor [95.54 h] |
| 2 | **Pipes Laying** |  | 2026-11-09 → 2027-03-31 (+142d) |  |  |  |  |
| SDR-2-CON-PW-ZA-2570 | Install PW 315 mm HDPE Pipe |  | 2026-11-09 → 2027-03-31 (+142d) |  | 131d → 25d | SDR-2-CON-PW-ZA-2640 FF → SDR-2-CON-PW-ZA-2640 | resources SIC- Cost [267610]; Plumbing Helper [40.13 h]; Labor [76.81 h]; Plumber [40.13 h]; Excavator [8.65 h]; Excavator Operator [80.22 h]; Un-Skilled Labor [80.22 h]; Skilled Labor [90.29 h] → SIC- Cost [185281]; Plumbing Helper [40.13 h]; Labor [76.81 h]; Plumber [40.13 h]; Excavator [8.65 h]; Excavator Operator [80.22 h]; Un-Skilled Labor [80.22 h]; Skilled Labor [90.29 h] |
| 5 | **Testing** | 2026-11-10 → 2027-04-01 (+142d) | 2026-11-16 → 2027-04-07 (+142d) |  |  |  |  |
| SDR-2-CON-PW-ZA-2630 | Testing of PW HDPE Pipe 315 mm. | 2026-11-10 → 2027-04-01 (+142d) | 2026-11-16 → 2027-04-07 (+142d) |  | 131d → 25d |  | resources SIC- Cost [61756.1]; Plumbing Helper [57.32 h]; Labor [25.6 h]; Plumber [57.32 h]; Excavator [12 h]; Excavator Operator [71.65 h]; Un-Skilled Labor [71.65 h]; Skilled Labor [71.65 h] → SIC- Cost [41173.5]; Plumbing Helper [57.32 h]; Labor [25.6 h]; Plumber [57.32 h]; Excavator [12 h]; Excavator Operator [71.65 h]; Un-Skilled Labor [71.65 h]; Skilled Labor [71.65 h] |
| 9 | **Backfilling** | 2026-11-17 → 2027-04-08 (+142d) | 2026-12-06 → 2027-04-27 (+142d) |  |  |  |  |
| SDR-2-CON-PW-ZA-2650 | Backfilling of PW HDPE Pipe 315 mm. | 2026-11-17 → 2027-04-08 (+142d) | 2026-12-06 → 2027-04-27 (+142d) |  | 131d → 25d |  | resources SIC- Cost [61756.1]; Plumbing Helper [133.75 h]; Labor [25.6 h]; Plumber [133.75 h]; Excavator [10 h]; Excavator Operator [167.19 h]; Un-Skilled Labor [167.19 h]; Skilled Labor [167.19 h] → SIC- Cost [82347]; Plumbing Helper [133.75 h]; Labor [25.6 h]; Plumber [133.75 h]; Excavator [10 h]; Excavator Operator [167.19 h]; Un-Skilled Labor [167.19 h]; Skilled Labor [167.19 h] |
| 3 | **Valve Chambers & Valves & Fire Hydrant** | 2026-11-09 → 2027-03-18 (+129d) | 2027-03-06 → 2027-07-18 (+134d) |  |  |  |  |
| 3 | **Excavation** | 2026-11-09 → 2027-03-18 (+129d) | 2026-12-27 → 2027-05-05 (+129d) |  |  |  |  |
| SDR-2-CON-PW-ZA-4030 | Excavation for Valve Chambers Section 1 | 2026-11-09 → 2027-03-18 (+129d) | 2026-12-02 → 2027-04-11 (+130d) |  | 55d → -40d |  | resources SIC- Cost [56482.5]; Plumbing Helper [200.63 h]; Labor [25.6 h]; Plumber [200.63 h]; Excavator [18 h]; Excavator Operator [250.78 h]; Un-Skilled Labor [250.78 h]; Skilled Labor [250.78 h] → SIC- Cost [15062.8]; Plumbing Helper [200.63 h]; Labor [25.6 h]; Plumber [200.63 h]; Excavator [18 h]; Excavator Operator [250.78 h]; Un-Skilled Labor [250.78 h]; Skilled Labor [250.78 h] |
| SDR-2-CON-PW-ZA-2600 | Excavation for Valve Chambers Section 2 | 2026-12-03 → 2027-04-12 (+130d) | 2026-12-27 → 2027-05-05 (+129d) |  | 55d → -40d |  | resources SIC- Cost [56482.5]; Plumbing Helper [200.63 h]; Labor [25.6 h]; Plumber [200.63 h]; Excavator [18 h]; Excavator Operator [250.78 h]; Un-Skilled Labor [250.78 h]; Skilled Labor [250.78 h] → SIC- Cost [15062.8]; Plumbing Helper [200.63 h]; Labor [25.6 h]; Plumber [200.63 h]; Excavator [18 h]; Excavator Operator [250.78 h]; Un-Skilled Labor [250.78 h]; Skilled Labor [250.78 h] |
| 1 | **bedding Works** | 2026-12-28 → 2027-05-06 (+129d) | 2027-01-18 → 2027-06-02 (+135d) |  |  |  |  |
| SDR-2-CON-PW-ZA-2580 | Sand bedding for Valve Chambers | 2026-12-28 → 2027-05-06 (+129d) | 2027-01-18 → 2027-06-02 (+135d) |  | 55d → -40d |  | resources SIC- Cost [23901.1]; Plumbing Helper [76.43 h]; Labor [25.6 h]; Plumber [76.43 h]; Excavator [6 h]; Excavator Operator [95.54 h]; Un-Skilled Labor [95.54 h]; Skilled Labor [95.54 h] → SIC- Cost [20083.7]; Plumbing Helper [76.43 h]; Labor [25.6 h]; Plumber [76.43 h]; Excavator [6 h]; Excavator Operator [95.54 h]; Un-Skilled Labor [95.54 h]; Skilled Labor [95.54 h] |
| 4 | **Install Chambers & Valves & Fire Hydrant** | 2027-01-19 → 2027-06-03 (+135d) | 2027-02-06 → 2027-06-21 (+135d) |  |  |  |  |
| SDR-2-CON-PW-ZA-2610 | Install Chambers & Valves | 2027-01-19 → 2027-06-03 (+135d) | 2027-02-06 → 2027-06-21 (+135d) |  | 55d → -40d |  | resources SIC- Cost [18906.2]; Plumbing Helper [40.13 h]; Labor [25.6 h]; Plumber [40.13 h]; Excavator [13.8 h]; Excavator Operator [87.67 h]; Un-Skilled Labor [87.67 h]; Skilled Labor [97.75 h] → SIC- Cost [90376.7]; Plumbing Helper [40.13 h]; Labor [25.6 h]; Plumber [40.13 h]; Excavator [13.8 h]; Excavator Operator [87.67 h]; Un-Skilled Labor [87.67 h]; Skilled Labor [97.75 h] |
| 2 | **Testing** | 2027-02-07 → 2027-06-22 (+135d) | 2027-02-13 → 2027-06-28 (+135d) |  |  |  |  |
| SDR-2-CON-PW-ZA-2590 | Testing for Chambers & Valves | 2027-02-07 → 2027-06-22 (+135d) | 2027-02-13 → 2027-06-28 (+135d) |  | 55d → -40d |  | resources SIC- Cost [23901.1]; Plumbing Helper [57.32 h]; Labor [25.6 h]; Plumber [57.32 h]; Excavator [6 h]; Excavator Operator [71.65 h]; Un-Skilled Labor [71.65 h]; Skilled Labor [71.65 h] → SIC- Cost [20083.7]; Plumbing Helper [57.32 h]; Labor [25.6 h]; Plumber [57.32 h]; Excavator [6 h]; Excavator Operator [71.65 h]; Un-Skilled Labor [71.65 h]; Skilled Labor [71.65 h] |
| 6 | **Backfilling** | 2027-02-14 → 2027-06-29 (+135d) | 2027-03-06 → 2027-07-18 (+134d) |  |  |  |  |
| SDR-2-CON-PW-ZA-2620 | Backfilling for Chambers & Valves | 2027-02-14 → 2027-06-29 (+135d) | 2027-03-06 → 2027-07-18 (+134d) |  | 55d → -40d |  | resources SIC- Cost [1798.57]; Plumbing Helper [133.75 h]; Labor [25.6 h]; Plumber [133.75 h]; Excavator [10 h]; Excavator Operator [167.19 h]; Un-Skilled Labor [167.19 h]; Skilled Labor [167.19 h] → SIC- Cost [40167.4]; Plumbing Helper [133.75 h]; Labor [25.6 h]; Plumber [133.75 h]; Excavator [10 h]; Excavator Operator [167.19 h]; Un-Skilled Labor [167.19 h]; Skilled Labor [167.19 h] |
| EW | **Electrical Works** |  | 2027-04-06 → 2027-06-06 (+61d) |  |  |  |  |
| ZA | **ZONE A** |  | 2027-04-06 → 2027-06-06 (+61d) |  |  |  |  |
| 1 | **Street Lighting Network** |  | 2027-04-06 → 2027-06-06 (+61d) |  |  |  |  |
| 16 | **Street Lighting Network IN ( PH2-COL-MC10 )** |  | 2027-03-30 → 2027-06-02 (+64d) |  |  |  |  |
| 10 | **Excavation** |  | 2026-11-09 → 2026-12-14 (+35d) |  |  |  |  |
| SDR-2-CON-SL-ZA-3590 | Excavation for LV Cable trench Section 1 |  |  |  |  |  | was named Excavation for LV Cable Drawpits; resources SIC- Cost; Electrical Forman [135.79 h]; Electrical Technician [135.79 h]; Electrical Helper [135.79 h]; Labor [135.79 h]; Excavator [22.22 h]; Excavator Operator [135.79 h] → SIC- Cost [17966.8]; Electrical Forman [135.79 h]; Electrical Technician [135.79 h]; Electrical Helper [135.79 h]; Labor [135.79 h]; Excavator [22.22 h]; Excavator Operator [135.79 h] |
| SDR-2-CON-SL-ZA-1000 | Excavation for LV Cable trench Section 2 |  | 2026-11-09 → 2026-12-14 (+35d) | 20% → 22% | 0d → -65d | SDR-2-PRO-DEL-E-1060, SDR-2-CON-SL-ZA-3590 FF → SDR-2-PRO-DEL-E-1060, SDR-2-CON-SL-ZA-3590 FS+2d | was named Excavation for LV Cable Trenches; resources SIC- Cost; Electrical Forman [135.79 h]; Electrical Technician [135.79 h]; Electrical Helper [135.79 h]; Labor [135.79 h]; Excavator [235.22 h]; Excavator Operator [135.79 h] → SIC- Cost [17966.8]; Electrical Forman [135.79 h]; Electrical Technician [135.79 h]; Electrical Helper [135.79 h]; Labor [135.79 h]; Excavator [235.22 h]; Excavator Operator [135.79 h] |
| 11 | **Install Footings** |  | 2027-01-17 → 2027-03-22 (+64d) |  |  |  |  |
| SDR-2-CON-SL-ZA-1010 | Install Footings |  | 2027-01-17 → 2027-03-22 (+64d) | 35% → 37% | 5d → -132d | SDR-2-CON-SL-ZA-1000 FF, SDR-2-PRO-DEL-E-1030 FF, SDR-2-PRO-DEL-E-1020 FF, SDR-2-PRO-DEL-E-1070 FF, SDR-2-PRO-DEL-E-1000, SDR-2-PRO-DEL-E-1010, SDR-2-PRO-DEL-E-1210 → SDR-2-CON-SL-ZA-1000, SDR-2-PRO-DEL-E-1000, SDR-2-PRO-DEL-E-1010, SDR-2-PRO-DEL-E-1210, SDR-2-PRO-DEL-E-1030, SDR-2-PRO-DEL-E-1020, SDR-2-PRO-DEL-E-1090 FS+12d, SDR-2-PRO-DEL-E-1090 FF, SDR-2-PRO-DEL-E-1070 FS+11d | resources SIC- Cost; Electrical Forman [135.79 h]; Electrical Technician [135.79 h]; Electrical Helper [135.79 h]; Labor [135.79 h] → SIC- Cost [35933.6]; Electrical Forman [135.79 h]; Electrical Technician [135.79 h]; Electrical Helper [135.79 h]; Labor [135.79 h] |
| 12 | **Backfilling** | 2027-01-18 → 2027-03-23 (+64d) | 2027-02-10 → 2027-04-15 (+64d) |  |  |  |  |
| SDR-2-CON-SL-ZA-1110 | Backfilling over LV Cables of Street lighting | 2027-01-18 → 2027-03-23 (+64d) | 2027-02-10 → 2027-04-15 (+64d) |  | 5d → -132d |  | resources SIC- Cost; Electrical Forman [67.9 h]; Electrical Technician [67.9 h]; Electrical Helper [67.9 h]; Labor [12.8 h]; Excavator [12 h]; Excavator Operator [67.9 h] → SIC- Cost [35933.6]; Electrical Forman [67.9 h]; Electrical Technician [67.9 h]; Electrical Helper [67.9 h]; Labor [12.8 h]; Excavator [12 h]; Excavator Operator [67.9 h] |
| 13 | **Install pole** | 2027-03-02 → 2027-05-04 (+63d) | 2027-03-30 → 2027-06-02 (+64d) |  |  |  |  |
| SDR-2-CON-SL-ZA-1100 | Install Pole | 2027-03-02 → 2027-05-04 (+63d) | 2027-03-30 → 2027-06-02 (+64d) |  | 5d → -132d |  | resources SIC- Cost; Electrical Forman [67.9 h]; Electrical Technician [67.9 h]; Electrical Helper [67.9 h]; Labor [67.9 h] → SIC- Cost [251535]; Electrical Forman [67.9 h]; Electrical Technician [67.9 h]; Electrical Helper [67.9 h]; Labor [67.9 h] |
| 17 | **Street Lighting Network IN ( PH2-COL-MC20 )** |  | 2027-02-20 → 2027-03-20 (+28d) |  |  |  |  |
| 10 | **Excavation** |  | 2026-11-09 → 2026-12-08 (+29d) |  |  |  |  |
| SDR-2-CON-SL-ZA-3600 | Excavation for LV Cable trench Section 1 |  |  |  |  | SDR-2-PRO-DES-E-1010, SDR-2-CON-SL-ZA-3590 FF → SDR-2-PRO-DES-E-1010, SDR-2-CON-SL-ZA-3590 SS+5d | was named Excavation for LV Cable Drawpits; resources SIC- Cost; Electrical Forman [135.79 h]; Electrical Technician [135.79 h]; Electrical Helper [135.79 h]; Labor [135.79 h]; Excavator [32.22 h]; Excavator Operator [135.79 h] → SIC- Cost [17966.8]; Electrical Forman [135.79 h]; Electrical Technician [135.79 h]; Electrical Helper [135.79 h]; Labor [135.79 h]; Excavator [32.22 h]; Excavator Operator [135.79 h] |
| SDR-2-CON-SL-ZA-2870 | Excavation for LV Cable trench Section 2 |  | 2026-11-09 → 2026-12-08 (+29d) | 50% → 53% | 64d → -61d | SDR-2-CON-SL-ZA-3600 FF → SDR-2-CON-SL-ZA-3600 | was named Excavation for LV Cable Trenches; resources SIC- Cost; Electrical Forman [135.79 h]; Electrical Technician [135.79 h]; Electrical Helper [135.79 h]; Labor [135.79 h]; Excavator [32.22 h]; Excavator Operator [135.79 h] → SIC- Cost [17966.8]; Electrical Forman [135.79 h]; Electrical Technician [135.79 h]; Electrical Helper [135.79 h]; Labor [135.79 h]; Excavator [32.22 h]; Excavator Operator [135.79 h] |
| 11 | **Install Footings** |  | 2026-12-15 → 2027-01-06 (+22d) |  |  |  |  |
| SDR-2-CON-SL-ZA-2880 | Install Footings |  | 2026-12-15 → 2027-01-06 (+22d) | 40% → 42% | 33d → -73d | SDR-2-CON-SL-ZA-2870 FF, SDR-2-PRO-DES-E-1020 FF → SDR-2-CON-SL-ZA-2870, SDR-2-PRO-DES-E-1020 | resources SIC- Cost; Electrical Forman [67.9 h]; Electrical Technician [67.9 h]; Electrical Helper [67.9 h]; Labor [67.9 h] → SIC- Cost [35933.6]; Electrical Forman [67.9 h]; Electrical Technician [67.9 h]; Electrical Helper [67.9 h]; Labor [67.9 h] |
| 12 | **Backfilling** | 2026-12-16 → 2027-01-07 (+22d) | 2027-01-09 → 2027-01-31 (+22d) |  |  |  |  |
| SDR-2-CON-SL-ZA-2900 | Backfilling over LV Cables of Street lighting | 2026-12-16 → 2027-01-07 (+22d) | 2027-01-09 → 2027-01-31 (+22d) |  | 33d → -73d |  | resources SIC- Cost; Electrical Forman [67.9 h]; Electrical Technician [67.9 h]; Electrical Helper [67.9 h]; Labor [135.79 h]; Excavator [12 h]; Excavator Operator [135.79 h] → SIC- Cost [35933.6]; Electrical Forman [67.9 h]; Electrical Technician [67.9 h]; Electrical Helper [67.9 h]; Labor [135.79 h]; Excavator [12 h]; Excavator Operator [135.79 h] |
| 13 | **Install pole** | 2027-01-27 → 2027-02-18 (+22d) | 2027-02-20 → 2027-03-20 (+28d) |  |  |  |  |
| SDR-2-CON-SL-ZA-2890 | Install Pole | 2027-01-27 → 2027-02-18 (+22d) | 2027-02-20 → 2027-03-20 (+28d) |  | 33d → -73d |  | resources SIC- Cost; Electrical Forman [67.9 h]; Electrical Technician [67.9 h]; Electrical Helper [67.9 h]; Labor [67.9 h] → SIC- Cost [251535]; Electrical Forman [67.9 h]; Electrical Technician [67.9 h]; Electrical Helper [67.9 h]; Labor [67.9 h] |
| 18 | **Street Lighting Network IN ( PH2-A-MCA0 )** |  | 2027-01-23 → 2027-03-03 (+39d) |  |  |  |  |

| ID | Task | Start | Finish | Complete | Total float | Predecessors | Other |
| --- | --- | --- | --- | --- | --- | --- | --- |
| 10 | **Excavation** |  | 2026-11-09 → 2026-12-19 (+40d) |  |  |  |  |
| SDR-2-CON-SL-ZA-3610 | Excavation for LV Cable trench Section 1 |  | 2026-11-09 → 2026-12-07 (+28d) | 70% → 80% | 9d → -69d | SDR-2-CON-SL-ZA-3600 FF → SDR-2-CON-SL-ZA-3600 SS+5d | was named Excavation for LV Cable Drawpits; resources SIC- Cost; Electrical Forman [135.79 h]; Electrical Technician [135.79 h]; Electrical Helper [135.79 h]; Labor [135.79 h]; Excavator [22.22 h]; Excavator Operator [135.79 h] → SIC- Cost [20112.8]; Electrical Forman [135.79 h]; Electrical Technician [135.79 h]; Electrical Helper [135.79 h]; Labor [135.79 h]; Excavator [22.22 h]; Excavator Operator [135.79 h] |
| SDR-2-CON-SL-ZA-1300 | Excavation for LV Cable trench Section 2 |  | 2026-11-09 → 2026-12-19 (+40d) | 50% → 52% | 42d → -69d | SDR-2-CON-SL-ZA-3610 FF → SDR-2-CON-SL-ZA-3610 | was named Excavation for LV Cable Trenches; resources SIC- Cost; Electrical Forman [135.79 h]; Electrical Technician [135.79 h]; Electrical Helper [135.79 h]; Labor [135.79 h]; Excavator [22.22 h]; Excavator Operator [135.79 h] → SIC- Cost [20112.6]; Electrical Forman [135.79 h]; Electrical Technician [135.79 h]; Electrical Helper [135.79 h]; Labor [135.79 h]; Excavator [22.22 h]; Excavator Operator [135.79 h] |
| 11 | **Install Footings** |  | 2026-12-12 → 2026-12-31 (+19d) |  |  |  |  |
| SDR-2-CON-SL-ZA-1310 | Install Footings |  | 2026-12-12 → 2026-12-31 (+19d) |  | 14d → -69d | SDR-2-CON-SL-ZA-1300 FF, SDR-2-CON-ST-ZA-6290 FF → SDR-2-CON-SL-ZA-1300, SDR-2-CON-ST-ZA-6290 | resources SIC- Cost; Electrical Forman [135.79 h]; Electrical Technician [135.79 h]; Electrical Helper [135.79 h]; Labor [135.79 h] → SIC- Cost [40225.5]; Electrical Forman [135.79 h]; Electrical Technician [135.79 h]; Electrical Helper [135.79 h]; Labor [135.79 h] |
| 12 | **Backfilling** | 2026-12-06 → 2027-01-02 (+27d) | 2026-12-29 → 2027-01-25 (+27d) |  |  |  |  |
| SDR-2-CON-SL-ZA-1410 | Backfilling over LV Cables of Street lighting | 2026-12-06 → 2027-01-02 (+27d) | 2026-12-29 → 2027-01-25 (+27d) |  | 14d → -69d | SDR-2-CON-SL-ZA-1310 SS → SDR-2-CON-SL-ZA-1310 | resources SIC- Cost; Electrical Forman [67.9 h]; Electrical Technician [67.9 h]; Electrical Helper [67.9 h]; Labor [67.9 h]; Excavator [6 h]; Excavator Operator [67.9 h] → SIC- Cost [40225.5]; Electrical Forman [67.9 h]; Electrical Technician [67.9 h]; Electrical Helper [67.9 h]; Labor [67.9 h]; Excavator [6 h]; Excavator Operator [67.9 h] |
| 13 | **Install pole** | 2026-12-30 → 2027-02-07 (+39d) | 2027-01-23 → 2027-03-03 (+39d) |  |  |  |  |
| SDR-2-CON-SL-ZA-1400 | Install Pole | 2026-12-30 → 2027-02-07 (+39d) | 2027-01-23 → 2027-03-03 (+39d) |  | 14d → -69d | SDR-2-CON-SL-ZA-1410 → SDR-2-CON-SL-ZA-1410 FS+10d | resources SIC- Cost; Electrical Forman [135.79 h]; Electrical Technician [135.79 h]; Electrical Helper [135.79 h]; Labor [135.79 h] → SIC- Cost [281579]; Electrical Forman [135.79 h]; Electrical Technician [135.79 h]; Electrical Helper [135.79 h]; Labor [135.79 h] |
| 19 | **Street Lighting Network IN ( PH2-A-MCB0 )** |  | 2027-01-11 → 2027-02-20 (+40d) |  |  |  |  |
| 10 | **Excavation** |  | 2026-11-09 → 2026-12-14 (+35d) |  |  |  |  |
| SDR-2-CON-SL-ZA-3620 | Excavation for LV Cable trench Section 1 |  | 2026-11-09 → 2026-12-03 (+24d) | 80% → 90% | 9d → -51d | SDR-2-CON-SL-ZA-3610 FF → SDR-2-CON-SL-ZA-3610 SS+5d | was named Excavation for LV Cable Drawpits; resources SIC- Cost; Electrical Forman [51.21 h]; Electrical Technician [135.79 h]; Electrical Helper [135.79 h]; Labor [135.79 h]; Excavator [32.22 h]; Excavator Operator [135.79 h] → SIC- Cost [20112.8]; Electrical Forman [51.21 h]; Electrical Technician [135.79 h]; Electrical Helper [135.79 h]; Labor [135.79 h]; Excavator [32.22 h]; Excavator Operator [135.79 h] |
| SDR-2-CON-SL-ZA-2950 | Excavation for LV Cable trench Section 2 |  | 2026-11-09 → 2026-12-14 (+35d) | 50% → 55% | 9d → -46d | SDR-2-CON-SL-ZA-3620 FF → SDR-2-CON-SL-ZA-3620 | was named Excavation for LV Cable Trenches; resources SIC- Cost; Electrical Forman [51.21 h]; Electrical Technician [135.79 h]; Electrical Helper [135.79 h]; Labor [135.79 h]; Excavator [32.22 h]; Excavator Operator [135.79 h] → SIC- Cost [20112.8]; Electrical Forman [51.21 h]; Electrical Technician [135.79 h]; Electrical Helper [135.79 h]; Labor [135.79 h]; Excavator [32.22 h]; Excavator Operator [135.79 h] |
| 11 | **Install Footings** |  | 2026-11-11 → 2026-12-21 (+40d) |  |  |  |  |
| SDR-2-CON-SL-ZA-2960 | Install Footings |  | 2026-11-11 → 2026-12-21 (+40d) |  | 7d → -46d | SDR-2-CON-SL-ZA-2950 FF → SDR-2-CON-SL-ZA-2950 | resources SIC- Cost; Electrical Forman [135.79 h]; Electrical Technician [135.79 h]; Electrical Helper [135.79 h]; Labor [135.79 h] → SIC- Cost [40225.5]; Electrical Forman [135.79 h]; Electrical Technician [135.79 h]; Electrical Helper [135.79 h]; Labor [135.79 h] |
| 12 | **Backfilling** | 2026-11-12 → 2026-12-22 (+40d) | 2026-12-06 → 2027-01-14 (+39d) |  |  |  |  |
| SDR-2-CON-SL-ZA-2980 | Backfilling over LV Cables of Street lighting | 2026-11-12 → 2026-12-22 (+40d) | 2026-12-06 → 2027-01-14 (+39d) |  | 7d → -46d |  | resources SIC- Cost; Electrical Forman [67.9 h]; Electrical Technician [67.9 h]; Electrical Helper [67.9 h]; Labor [67.9 h]; Excavator [12 h]; Excavator Operator [67.9 h]; Dumper Operator [67.9 h]; Dumper Truck [50 h] → SIC- Cost [40225.5]; Electrical Forman [67.9 h]; Electrical Technician [67.9 h]; Electrical Helper [67.9 h]; Labor [67.9 h]; Excavator [12 h]; Excavator Operator [67.9 h]; Dumper Operator [67.9 h]; Dumper Truck [50 h] |
| 13 | **Install pole** | 2026-12-19 → 2027-01-27 (+39d) | 2027-01-11 → 2027-02-20 (+40d) |  |  |  |  |
| SDR-2-CON-SL-ZA-2970 | Install Pole | 2026-12-19 → 2027-01-27 (+39d) | 2027-01-11 → 2027-02-20 (+40d) |  | 7d → -46d |  | resources SIC- Cost; Electrical Forman [67.9 h]; Electrical Technician [67.9 h]; Electrical Helper [67.9 h]; Labor [67.9 h] → SIC- Cost [281579]; Electrical Forman [67.9 h]; Electrical Technician [67.9 h]; Electrical Helper [67.9 h]; Labor [67.9 h] |
| 20 | **Street Lighting Network IN ( PH2-A-MCC0 )** |  | 2027-01-20 → 2027-02-27 (+38d) |  |  |  |  |
| 10 | **Excavation** |  | 2026-11-09 → 2026-12-09 (+30d) |  |  |  |  |
| SDR-2-CON-SL-ZA-3630 | Excavation for LV Cable trench Section 1 |  | 2026-11-09 → 2026-11-13 A (+4d) | 80% → 100% | 25d → none | SDR-2-CON-SL-ZA-3620 FF → SDR-2-CON-SL-ZA-3620 SS+5d | was named Excavation for LV Cable Drawpits; resources SIC- Cost; Electrical Forman [135.79 h]; Electrical Technician [135.79 h]; Electrical Helper [135.79 h]; Labor [135.79 h]; Excavator [32.22 h]; Excavator Operator [135.79 h] → SIC- Cost [20112.8]; Electrical Forman [135.79 h]; Electrical Technician [135.79 h]; Electrical Helper [135.79 h]; Labor [135.79 h]; Excavator [32.22 h]; Excavator Operator [135.79 h] |
| SDR-2-CON-SL-ZA-2990 | Excavation for LV Cable trench Section 2 |  | 2026-11-09 → 2026-12-09 (+30d) | 50% → 55% | 45d → -51d | SDR-2-CON-SL-ZA-3630 FF → SDR-2-CON-SL-ZA-3630 | was named Excavation for LV Cable Trenches; resources SIC- Cost; Electrical Forman [135.79 h]; Electrical Technician [135.79 h]; Electrical Helper [135.79 h]; Labor [135.79 h]; Excavator [32.22 h]; Excavator Operator [135.79 h] → SIC- Cost [20112.8]; Electrical Forman [135.79 h]; Electrical Technician [135.79 h]; Electrical Helper [135.79 h]; Labor [135.79 h]; Excavator [32.22 h]; Excavator Operator [135.79 h] |
| 11 | **Install Footings** |  | 2026-11-15 → 2026-12-21 (+36d) |  |  |  |  |
| SDR-2-CON-SL-ZA-3000 | Install Footings |  | 2026-11-15 → 2026-12-21 (+36d) |  | 40d → -51d | SDR-2-CON-SL-ZA-2990 FF → SDR-2-CON-SL-ZA-2990 | resources SIC- Cost; Electrical Forman [67.9 h]; Electrical Technician [135.79 h]; Electrical Helper [67.9 h]; Labor [67.9 h] → SIC- Cost [40225.5]; Electrical Forman [67.9 h]; Electrical Technician [135.79 h]; Electrical Helper [67.9 h]; Labor [67.9 h] |
| 12 | **Backfilling** | 2026-11-16 → 2026-12-22 (+36d) | 2026-12-09 → 2027-01-14 (+36d) |  |  |  |  |
| SDR-2-CON-SL-ZA-3020 | Backfilling over LV Cables of Street lighting | 2026-11-16 → 2026-12-22 (+36d) | 2026-12-09 → 2027-01-14 (+36d) |  | 40d → -51d |  | resources SIC- Cost; Electrical Forman [67.9 h]; Electrical Technician [67.9 h]; Electrical Helper [67.9 h]; Labor [67.9 h]; Excavator [12 h]; Excavator Operator [67.9 h]; Dumper Operator [67.9 h]; Dumper Truck [50 h] → SIC- Cost [40225.5]; Electrical Forman [67.9 h]; Electrical Technician [67.9 h]; Electrical Helper [67.9 h]; Labor [67.9 h]; Excavator [12 h]; Excavator Operator [67.9 h]; Dumper Operator [67.9 h]; Dumper Truck [50 h] |
| 13 | **Install pole** | 2026-12-28 → 2027-02-02 (+36d) | 2027-01-20 → 2027-02-27 (+38d) |  |  |  |  |
| SDR-2-CON-SL-ZA-3010 | Install Pole | 2026-12-28 → 2027-02-02 (+36d) | 2027-01-20 → 2027-02-27 (+38d) |  | 40d → -51d |  | resources SIC- Cost; Electrical Forman [67.9 h]; Electrical Technician [67.9 h]; Electrical Helper [67.9 h]; Labor [67.9 h] → SIC- Cost [281579]; Electrical Forman [67.9 h]; Electrical Technician [67.9 h]; Electrical Helper [67.9 h]; Labor [67.9 h] |
| 21 | **Street Lighting Network IN ( PH2-A-MCD0 )** |  | 2027-04-06 → 2027-04-18 (+12d) |  |  |  |  |
| 10 | **Excavation** |  | 2026-11-09 → 2026-12-10 (+31d) |  |  |  |  |
| SDR-2-CON-SL-ZA-3640 | Excavation for LV Cable trench Section 1 |  | 2026-11-09 → 2026-11-11 A (+2d) | 80% → 100% | 25d → none | SDR-2-PRO-DES-E-1000 FS+12d, SDR-2-CON-SL-ZA-3630 FF → SDR-2-CON-SL-ZA-3630 SS+5d, SDR-2-PRO-DES-E-1000 FS+12d | was named Excavation for LV Cable Drawpits; resources SIC- Cost; Electrical Forman [135.79 h]; Electrical Technician [135.79 h]; Electrical Helper [135.79 h]; Labor [135.79 h]; Excavator [32.22 h]; Excavator Operator [135.79 h]; Dumper Operator [135.79 h]; Dumper Truck [100 h] → SIC- Cost [20112.8]; Electrical Forman [135.79 h]; Electrical Technician [135.79 h]; Electrical Helper [135.79 h]; Labor [135.79 h]; Excavator [32.22 h]; Excavator Operator [135.79 h]; Dumper Operator [135.79 h]; Dumper Truck [100 h] |
| SDR-2-CON-SL-ZA-3030 | Excavation for LV Cable trench Section 2 |  | 2026-11-09 → 2026-12-10 (+31d) | 50% → 55% | 66d → -51d | SDR-2-CON-SL-ZA-3640 FF → SDR-2-CON-SL-ZA-3640 | was named Excavation for LV Cable Trenches; resources SIC- Cost; Electrical Forman [135.79 h]; Electrical Technician [135.79 h]; Electrical Helper [135.79 h]; Labor [135.79 h]; Excavator [32.22 h]; Excavator Operator [135.79 h]; Dumper Operator [135.79 h]; Dumper Truck [100 h] → SIC- Cost [20112.8]; Electrical Forman [135.79 h]; Electrical Technician [135.79 h]; Electrical Helper [135.79 h]; Labor [135.79 h]; Excavator [32.22 h]; Excavator Operator [135.79 h]; Dumper Operator [135.79 h]; Dumper Truck [100 h] |
| 11 | **Install Footings** |  | 2026-11-15 → 2026-12-21 (+36d) |  |  |  |  |
| SDR-2-CON-SL-ZA-3040 | Install Footings |  | 2026-11-15 → 2026-12-21 (+36d) |  | 61d → -51d | SDR-2-CON-SL-ZA-3030 FF → SDR-2-CON-SL-ZA-3030 | resources SIC- Cost; Electrical Forman [67.9 h]; Electrical Technician [67.9 h]; Electrical Helper [67.9 h]; Labor [67.9 h] → SIC- Cost [40225.5]; Electrical Forman [67.9 h]; Electrical Technician [67.9 h]; Electrical Helper [67.9 h]; Labor [67.9 h] |
| 12 | **Backfilling** | 2026-11-16 → 2026-12-22 (+36d) | 2026-12-09 → 2027-01-14 (+36d) |  |  |  |  |
| SDR-2-CON-SL-ZA-3060 | Backfilling over LV Cables of Street lighting | 2026-11-16 → 2026-12-22 (+36d) | 2026-12-09 → 2027-01-14 (+36d) |  | 61d → -51d |  | resources SIC- Cost; Electrical Forman [67.9 h]; Electrical Technician [67.9 h]; Electrical Helper [67.9 h]; Labor [67.9 h]; Excavator [12 h]; Excavator Operator [67.9 h]; Dumper Operator [67.9 h]; Dumper Truck [50 h] → SIC- Cost [40225.5]; Electrical Forman [67.9 h]; Electrical Technician [67.9 h]; Electrical Helper [67.9 h]; Labor [67.9 h]; Excavator [12 h]; Excavator Operator [67.9 h]; Dumper Operator [67.9 h]; Dumper Truck [50 h] |
| 13 | **Install pole** | 2027-03-14 → 2027-03-25 (+11d) | 2027-04-06 → 2027-04-18 (+12d) |  |  |  |  |
| SDR-2-CON-SL-ZA-3050 | Install Pole | 2027-03-14 → 2027-03-25 (+11d) | 2027-04-06 → 2027-04-18 (+12d) |  | 1d → -90d | SDR-2-CON-MV-ZA-1100, SDR-2-CON-SL-ZA-3550 SS+10d, SDR-2-CON-SL-ZA-3520, SDR-2-CON-SL-ZA-3060 FS+15d → SDR-2-CON-SL-ZA-3060 FS+15d, SDR-2-CON-MV-ZA-1100, SDR-2-CON-SL-ZA-3550, SDR-2-CON-SL-ZA-3520 | resources SIC- Cost [80938.3]; Electrical Forman [25.6 h]; Electrical Technician [25.6 h]; Electrical Helper [25.6 h]; Labor [25.6 h] → SIC- Cost [281579]; Electrical Forman [25.6 h]; Electrical Technician [25.6 h]; Electrical Helper [25.6 h]; Labor [25.6 h] |
| 22 | **Street Lighting Network IN ( PH2-A-MCE0 )** |  | 2027-01-18 → 2027-02-24 (+37d) |  |  |  |  |
| 10 | **Excavation** |  | 2026-11-09 → 2026-12-07 (+28d) |  |  |  |  |
| SDR-2-CON-SL-ZA-3650 | Excavation for LV Cable trench Section 1 |  | 2026-11-09 → 2026-11-12 A (+3d) | 65% → 100% | 25d → none | SDR-2-PRO-ST-E-1050, SDR-2-CON-SL-ZA-3640 FF, SDR-2-PRO-ST-E-1020 FF → SDR-2-CON-SL-ZA-3640 SS+5d, SDR-2-PRO-ST-E-1050, SDR-2-PRO-ST-E-1020 | was named Excavation for LV Cable Drawpits; resources SIC- Cost; Electrical Forman [135.79 h]; Electrical Technician [135.79 h]; Electrical Helper [135.79 h]; Labor [135.79 h]; Excavator [32.22 h]; Excavator Operator [135.79 h] → SIC- Cost [20112.8]; Electrical Forman [135.79 h]; Electrical Technician [135.79 h]; Electrical Helper [135.79 h]; Labor [135.79 h]; Excavator [32.22 h]; Excavator Operator [135.79 h] |
| SDR-2-CON-SL-ZA-3070 | Excavation for LV Cable trench Section 2 |  | 2026-11-09 → 2026-12-07 (+28d) | 50% → 55% | 88d → -24d | SDR-2-CON-SL-ZA-3650 FF → SDR-2-CON-SL-ZA-3650 | was named Excavation for LV Cable Trenches; resources SIC- Cost; Electrical Forman [135.79 h]; Electrical Technician [135.79 h]; Electrical Helper [135.79 h]; Labor [135.79 h]; Excavator [32.22 h]; Excavator Operator [135.79 h] → SIC- Cost [20112.8]; Electrical Forman [135.79 h]; Electrical Technician [135.79 h]; Electrical Helper [135.79 h]; Labor [135.79 h]; Excavator [32.22 h]; Excavator Operator [135.79 h] |
| 11 | **Install Footings** |  | 2026-11-15 → 2026-12-21 (+36d) |  |  |  |  |
| SDR-2-CON-SL-ZA-3080 | Install Footings |  | 2026-11-15 → 2026-12-21 (+36d) |  | 83d → -24d | SDR-2-CON-SL-ZA-3070 FF → SDR-2-CON-SL-ZA-3070 | resources SIC- Cost; Electrical Forman [67.9 h]; Electrical Technician [67.9 h]; Electrical Helper [67.9 h]; Labor [67.9 h] → SIC- Cost [40225.5]; Electrical Forman [67.9 h]; Electrical Technician [67.9 h]; Electrical Helper [67.9 h]; Labor [67.9 h] |
| 12 | **Backfilling** | 2026-11-16 → 2026-12-22 (+36d) | 2026-12-09 → 2027-01-14 (+36d) |  |  |  |  |
| SDR-2-CON-SL-ZA-3100 | Backfilling over LV Cables of Street lighting | 2026-11-16 → 2026-12-22 (+36d) | 2026-12-09 → 2027-01-14 (+36d) |  | 83d → -24d |  | resources SIC- Cost; Electrical Forman [67.9 h]; Electrical Technician [67.9 h]; Electrical Helper [67.9 h]; Labor [67.9 h]; Excavator [17.4 h]; Excavator Operator [67.9 h]; Dumper Operator [67.9 h]; Dumper Truck [50 h] → SIC- Cost [40225.5]; Electrical Forman [67.9 h]; Electrical Technician [67.9 h]; Electrical Helper [67.9 h]; Labor [67.9 h]; Excavator [17.4 h]; Excavator Operator [67.9 h]; Dumper Operator [67.9 h]; Dumper Truck [50 h] |
| 13 | **Install pole** | 2026-12-28 → 2027-02-02 (+36d) | 2027-01-18 → 2027-02-24 (+37d) |  |  |  |  |
| SDR-2-CON-SL-ZA-3090 | Install Pole | 2026-12-28 → 2027-02-02 (+36d) | 2027-01-18 → 2027-02-24 (+37d) |  | 83d → -24d |  | resources SIC- Cost; Electrical Forman [67.9 h]; Electrical Technician [67.9 h]; Electrical Helper [67.9 h]; Labor [67.9 h] → SIC- Cost [281579]; Electrical Forman [67.9 h]; Electrical Technician [67.9 h]; Electrical Helper [67.9 h]; Labor [67.9 h] |
| 23 | **Street Lighting Network IN ( PH2-A-MCF0 )** |  | 2027-01-23 → 2027-05-13 (+110d) |  |  |  |  |
| 10 | **Excavation** |  | 2026-11-18 → 2027-02-25 (+99d) |  |  |  |  |
| SDR-2-CON-SL-ZA-3660 | Excavation for LV Cable trench Section 1 |  | 2026-11-18 → 2027-02-11 (+85d) | 65% → 90% | 17d → -106d | SDR-2-CON-SL-ZA-3650 FF, SDR-2-PRO-ST-E-1040 FF, SDR-2-PRO-ST-E-1030 FF → SDR-2-CON-SL-ZA-3650 SS+5d, SDR-2-PRO-ST-E-1040, SDR-2-PRO-ST-E-1030 | was named Excavation for LV Cable Drawpits; resources SIC- Cost; Electrical Forman [135.79 h]; Electrical Technician [51.21 h]; Electrical Helper [135.79 h]; Labor [51.21 h]; Excavator [32.22 h]; Excavator Operator [135.79 h] → SIC- Cost [20112.8]; Electrical Forman [135.79 h]; Electrical Technician [51.21 h]; Electrical Helper [135.79 h]; Labor [51.21 h]; Excavator [32.22 h]; Excavator Operator [135.79 h] |
| SDR-2-CON-SL-ZA-3110 | Excavation for LV Cable trench Section 2 |  | 2026-11-18 → 2027-02-25 (+99d) | 50% → 52% | 17d → -89d | SDR-2-CON-SL-ZA-3660 FF → SDR-2-CON-SL-ZA-3660 | was named Excavation for LV Cable Trenches; resources SIC- Cost; Electrical Forman [135.79 h]; Electrical Technician [51.21 h]; Electrical Helper [135.79 h]; Labor [51.21 h]; Excavator [32.22 h]; Excavator Operator [135.79 h] → SIC- Cost [20112.8]; Electrical Forman [135.79 h]; Electrical Technician [51.21 h]; Electrical Helper [135.79 h]; Labor [51.21 h]; Excavator [32.22 h]; Excavator Operator [135.79 h] |
| 11 | **Install Footings** |  | 2026-11-18 → 2027-03-04 (+106d) |  |  |  |  |
| SDR-2-CON-SL-ZA-3120 | Install Footings |  | 2026-11-18 → 2027-03-04 (+106d) |  | 17d → -89d | SDR-2-CON-SL-ZA-3110 FF → SDR-2-CON-SL-ZA-3110 | resources SIC- Cost; Electrical Forman [67.9 h]; Electrical Technician [67.9 h]; Electrical Helper [67.9 h]; Labor [67.9 h] → SIC- Cost [40225.5]; Electrical Forman [67.9 h]; Electrical Technician [67.9 h]; Electrical Helper [67.9 h]; Labor [67.9 h] |
| 12 | **Backfilling** | 2026-11-19 → 2027-03-06 (+107d) | 2026-12-12 → 2027-04-01 (+110d) |  |  |  |  |
| SDR-2-CON-SL-ZA-3140 | Backfilling over LV Cables of Street lighting | 2026-11-19 → 2027-03-06 (+107d) | 2026-12-12 → 2027-04-01 (+110d) |  | 17d → -89d |  | resources SIC- Cost; Electrical Forman [67.9 h]; Electrical Technician [67.9 h]; Electrical Helper [67.9 h]; Labor [67.9 h]; Excavator [12 h]; Excavator Operator [67.9 h] → SIC- Cost [40225.5]; Electrical Forman [67.9 h]; Electrical Technician [67.9 h]; Electrical Helper [67.9 h]; Labor [67.9 h]; Excavator [12 h]; Excavator Operator [67.9 h] |
| 13 | **Install pole** | 2026-12-30 → 2027-04-20 (+111d) | 2027-01-23 → 2027-05-13 (+110d) |  |  |  |  |
| SDR-2-CON-SL-ZA-3130 | Install Pole | 2026-12-30 → 2027-04-20 (+111d) | 2027-01-23 → 2027-05-13 (+110d) |  | 17d → -89d |  | resources SIC- Cost; Electrical Forman [67.9 h]; Electrical Technician [67.9 h]; Electrical Helper [67.9 h]; Labor [135.79 h] → SIC- Cost [281579]; Electrical Forman [67.9 h]; Electrical Technician [67.9 h]; Electrical Helper [67.9 h]; Labor [135.79 h] |
| 24 | **Street Lighting Network IN ( PH2-A-MCG0 )** |  | 2027-01-11 → 2027-05-02 (+111d) |  |  |  |  |
| 10 | **Excavation** |  | 2026-11-18 → 2027-02-25 (+99d) |  |  |  |  |
| SDR-2-CON-SL-ZA-3670 | Excavation for LV Cable trench Section 1 |  | 2026-11-18 → 2027-02-11 (+85d) | 65% → 90% | 18d → -106d | SDR-2-CON-SL-ZA-3660 FF → SDR-2-CON-SL-ZA-3660 SS+5d | was named Excavation for LV Cable Drawpits; resources SIC- Cost; Electrical Forman [135.79 h]; Electrical Technician [135.79 h]; Electrical Helper [135.79 h]; Labor [135.79 h]; Excavator [20 h]; Excavator Operator [135.79 h] → SIC- Cost [20112.8]; Electrical Forman [135.79 h]; Electrical Technician [135.79 h]; Electrical Helper [135.79 h]; Labor [135.79 h]; Excavator [20 h]; Excavator Operator [135.79 h] |
| SDR-2-CON-SL-ZA-3150 | Excavation for LV Cable trench Section 2 |  | 2026-11-18 → 2027-02-25 (+99d) | 50% → 55% | 89d → -77d | SDR-2-CON-SL-ZA-3670 FF → SDR-2-CON-SL-ZA-3670 | was named Excavation for LV Cable Trenches; resources SIC- Cost; Electrical Forman [135.79 h]; Electrical Technician [135.79 h]; Electrical Helper [135.79 h]; Labor [135.79 h]; Excavator [20 h]; Excavator Operator [135.79 h] → SIC- Cost [20112.8]; Electrical Forman [135.79 h]; Electrical Technician [135.79 h]; Electrical Helper [135.79 h]; Labor [135.79 h]; Excavator [20 h]; Excavator Operator [135.79 h] |
| 11 | **Install Footings** |  | 2026-11-18 → 2027-03-04 (+106d) |  |  |  |  |
| SDR-2-CON-SL-ZA-3160 | Install Footings |  | 2026-11-18 → 2027-03-04 (+106d) |  | 89d → -77d | SDR-2-CON-SL-ZA-3150 FF → SDR-2-CON-SL-ZA-3150 | resources SIC- Cost; Electrical Forman [67.9 h]; Electrical Technician [67.9 h]; Electrical Helper [67.9 h]; Labor [67.9 h] → SIC- Cost [40225.5]; Electrical Forman [67.9 h]; Electrical Technician [67.9 h]; Electrical Helper [67.9 h]; Labor [67.9 h] |
| 12 | **Backfilling** | 2026-11-19 → 2027-03-06 (+107d) | 2026-12-10 → 2027-03-31 (+111d) |  |  |  |  |
| SDR-2-CON-SL-ZA-3180 | Backfilling over LV Cables of Street lighting | 2026-11-19 → 2027-03-06 (+107d) | 2026-12-10 → 2027-03-31 (+111d) |  | 89d → -77d |  | resources SIC- Cost; Electrical Forman [67.9 h]; Electrical Technician [67.9 h]; Electrical Helper [67.9 h]; Labor [67.9 h]; Excavator [12 h]; Excavator Operator [67.9 h] → SIC- Cost [40225.5]; Electrical Forman [67.9 h]; Electrical Technician [67.9 h]; Electrical Helper [67.9 h]; Labor [67.9 h]; Excavator [12 h]; Excavator Operator [67.9 h] |
| 13 | **Install pole** | 2026-12-29 → 2027-04-19 (+111d) | 2027-01-11 → 2027-05-02 (+111d) |  |  |  |  |
| SDR-2-CON-SL-ZA-3170 | Install Pole | 2026-12-29 → 2027-04-19 (+111d) | 2027-01-11 → 2027-05-02 (+111d) |  | 89d → -77d |  | resources SIC- Cost; Electrical Forman [67.9 h]; Electrical Technician [67.9 h]; Electrical Helper [67.9 h]; Labor [67.9 h] → SIC- Cost [281579]; Electrical Forman [67.9 h]; Electrical Technician [67.9 h]; Electrical Helper [67.9 h]; Labor [67.9 h] |
| 25 | **Street Lighting Network IN ( PH2-A-MCH0 )** |  | 2027-01-17 → 2027-05-04 (+107d) |  |  |  |  |

| ID | Task | Start | Finish | Complete | Total float | Predecessors | Other |
| --- | --- | --- | --- | --- | --- | --- | --- |
| 10 | **Excavation** |  | 2026-11-18 → 2027-02-21 (+95d) |  |  |  |  |
| SDR-2-CON-SL-ZA-3680 | Excavation for LV Cable trench Section 1 |  | 2026-11-18 → 2027-02-09 (+83d) | 65% → 95% | 18d → -106d | SDR-2-CON-SL-ZA-3670 FF → SDR-2-CON-SL-ZA-3670 SS+6d | was named Excavation for LV Cable Drawpits; resources SIC- Cost; Electrical Forman [135.79 h]; Electrical Technician [135.79 h]; Electrical Helper [135.79 h]; Labor [135.79 h]; Excavator [20 h]; Excavator Operator [135.79 h] → SIC- Cost [20112.8]; Electrical Forman [135.79 h]; Electrical Technician [135.79 h]; Electrical Helper [135.79 h]; Labor [135.79 h]; Excavator [20 h]; Excavator Operator [135.79 h] |
| SDR-2-CON-SL-ZA-3190 | Excavation for LV Cable trench Section 2 |  | 2026-11-18 → 2027-02-21 (+95d) | 50% → 55% | 18d → -75d | SDR-2-CON-SL-ZA-3680 FF → SDR-2-CON-SL-ZA-3680 | was named Excavation for LV Cable Trenches; resources SIC- Cost; Electrical Forman [135.79 h]; Electrical Technician [135.79 h]; Electrical Helper [135.79 h]; Labor [135.79 h]; Excavator [20 h]; Excavator Operator [135.79 h] → SIC- Cost [20112.8]; Electrical Forman [135.79 h]; Electrical Technician [135.79 h]; Electrical Helper [135.79 h]; Labor [135.79 h]; Excavator [20 h]; Excavator Operator [135.79 h] |
| 11 | **Install Footings** |  | 2026-11-18 → 2027-03-01 (+103d) |  |  |  |  |
| SDR-2-CON-SL-ZA-3200 | Install Footings |  | 2026-11-18 → 2027-03-01 (+103d) |  | 18d → -75d | SDR-2-CON-SL-ZA-3190 FF → SDR-2-CON-SL-ZA-3190 | resources SIC- Cost; Electrical Forman [67.9 h]; Electrical Technician [67.9 h]; Electrical Helper [67.9 h]; Labor [67.9 h] → SIC- Cost [40225.5]; Electrical Forman [67.9 h]; Electrical Technician [67.9 h]; Electrical Helper [67.9 h]; Labor [67.9 h] |
| 12 | **Backfilling** | 2026-11-19 → 2027-03-02 (+103d) | 2026-12-10 → 2027-03-28 (+108d) |  |  |  |  |
| SDR-2-CON-SL-ZA-3220 | Backfilling over LV Cables of Street lighting | 2026-11-19 → 2027-03-02 (+103d) | 2026-12-10 → 2027-03-28 (+108d) |  | 18d → -75d |  | resources SIC- Cost; Electrical Forman [67.9 h]; Electrical Technician [67.9 h]; Electrical Helper [67.9 h]; Labor [67.9 h]; Excavator [12 h]; Excavator Operator [67.9 h]; Dumper Operator [67.9 h]; Dumper Truck [50 h] → SIC- Cost [40225.5]; Electrical Forman [67.9 h]; Electrical Technician [67.9 h]; Electrical Helper [67.9 h]; Labor [67.9 h]; Excavator [12 h]; Excavator Operator [67.9 h]; Dumper Operator [67.9 h]; Dumper Truck [50 h] |
| 13 | **Install pole** | 2026-12-29 → 2027-04-15 (+107d) | 2027-01-17 → 2027-05-04 (+107d) |  |  |  |  |
| SDR-2-CON-SL-ZA-3210 | Install Pole | 2026-12-29 → 2027-04-15 (+107d) | 2027-01-17 → 2027-05-04 (+107d) |  | 18d → -75d |  | resources SIC- Cost; Electrical Forman [67.9 h]; Electrical Technician [67.9 h]; Electrical Helper [67.9 h]; Labor [67.9 h] → SIC- Cost [281579]; Electrical Forman [67.9 h]; Electrical Technician [67.9 h]; Electrical Helper [67.9 h]; Labor [67.9 h] |
| 27 | **Street Lighting Network IN ( PH2-ART-MC10 )** |  | 2027-01-21 → 2027-05-11 (+110d) |  |  |  |  |
| 10 | **Excavation** |  | 2026-11-18 → 2027-02-13 (+87d) |  |  |  |  |
| SDR-2-CON-SL-ZA-3690 | Excavation for LV Cable trench Section 1 |  | 2026-11-18 → 2026-11-12 A (-6d) | 70% → 100% | 28d → none | SDR-2-CON-SL-ZA-3680 FF → SDR-2-CON-SL-ZA-3680 SS+6d | was named Excavation for LV Cable Drawpits; resources SIC- Cost; Electrical Forman [135.79 h]; Electrical Technician [135.79 h]; Electrical Helper [135.79 h]; Labor [135.79 h]; Excavator [26 h]; Excavator Operator [135.79 h] → SIC- Cost [17966.8]; Electrical Forman [135.79 h]; Electrical Technician [135.79 h]; Electrical Helper [135.79 h]; Labor [135.79 h]; Excavator [26 h]; Excavator Operator [135.79 h] |
| SDR-2-CON-SL-ZA-2910 | Excavation for LV Cable trench Section 2 |  | 2026-11-18 → 2027-02-13 (+87d) | 50% → 55% | 28d → -67d | SDR-2-CON-SL-ZA-3690 FF → SDR-2-CON-SL-ZA-3690 | was named Excavation for LV Cable Trenches; resources SIC- Cost; Electrical Forman [135.79 h]; Electrical Technician [135.79 h]; Electrical Helper [135.79 h]; Labor [135.79 h]; Excavator [26 h]; Excavator Operator [135.79 h] → SIC- Cost [17966.8]; Electrical Forman [135.79 h]; Electrical Technician [135.79 h]; Electrical Helper [135.79 h]; Labor [135.79 h]; Excavator [26 h]; Excavator Operator [135.79 h] |
| 11 | **Install Footings** |  | 2026-11-18 → 2027-03-03 (+105d) |  |  |  |  |
| SDR-2-CON-SL-ZA-2920 | Install Footings |  | 2026-11-18 → 2027-03-03 (+105d) | 30% → 35% | 28d → -67d | SDR-2-CON-SL-ZA-2910 FF → SDR-2-CON-SL-ZA-2910 | resources SIC- Cost; Electrical Forman [67.9 h]; Electrical Technician [67.9 h]; Electrical Helper [67.9 h]; Labor [67.9 h] → SIC- Cost [35933.6]; Electrical Forman [67.9 h]; Electrical Technician [67.9 h]; Electrical Helper [67.9 h]; Labor [67.9 h] |
| 12 | **Backfilling** | 2026-11-19 → 2027-03-04 (+105d) | 2026-12-13 → 2027-04-01 (+109d) |  |  |  |  |
| SDR-2-CON-SL-ZA-2940 | Backfilling over LV Cables of Street lighting | 2026-11-19 → 2027-03-04 (+105d) | 2026-12-13 → 2027-04-01 (+109d) |  | 28d → -67d |  | resources SIC- Cost; Electrical Forman [67.9 h]; Electrical Technician [67.9 h]; Electrical Helper [67.9 h]; Labor [67.9 h]; Excavator [12 h]; Excavator Operator [67.9 h] → SIC- Cost [35933.6]; Electrical Forman [67.9 h]; Electrical Technician [67.9 h]; Electrical Helper [67.9 h]; Labor [67.9 h]; Excavator [12 h]; Excavator Operator [67.9 h] |
| 13 | **Install pole** | 2026-12-29 → 2027-04-18 (+110d) | 2027-01-21 → 2027-05-11 (+110d) |  |  |  |  |
| SDR-2-CON-SL-ZA-2930 | Install Pole | 2026-12-29 → 2027-04-18 (+110d) | 2027-01-21 → 2027-05-11 (+110d) |  | 84d → -53d |  | resources SIC- Cost; Electrical Forman [67.9 h]; Electrical Technician [67.9 h]; Electrical Helper [67.9 h]; Labor [67.9 h] → SIC- Cost [251535]; Electrical Forman [67.9 h]; Electrical Technician [67.9 h]; Electrical Helper [67.9 h]; Labor [67.9 h] |
| 10 | **Lighting Pole Panels** | 2026-11-19 → 2027-02-04 (+77d) | 2027-03-15 → 2027-06-06 (+83d) |  |  |  |  |
| 1 | **Excavation** | 2026-11-19 → 2027-02-04 (+77d) | 2026-12-13 → 2027-03-01 (+78d) |  |  |  |  |
| SDR-2-CON-SL-ZA-2650 | Street Lighting Panels Excavation | 2026-11-19 → 2027-02-04 (+77d) | 2026-12-13 → 2027-03-01 (+78d) |  | 34d → -106d |  | resources SIC- Cost; Electrical Forman [67.9 h]; Electrical Technician [76.43 h]; Electrical Helper [67.9 h]; Labor [76.43 h]; Excavator [8.2 h]; Excavator Operator [76.43 h] → SIC- Cost [3965]; Electrical Forman [67.9 h]; Electrical Technician [76.43 h]; Electrical Helper [67.9 h]; Labor [76.43 h]; Excavator [8.2 h]; Excavator Operator [76.43 h] |
| 2 | **Install Footings** | 2026-12-14 → 2027-03-02 (+78d) | 2027-01-05 → 2027-03-29 (+83d) |  |  |  |  |
| SDR-2-CON-SL-ZA-2760 | Installation Footings Street Lighting Panels | 2026-12-14 → 2027-03-02 (+78d) | 2027-01-05 → 2027-03-29 (+83d) |  | 44d → -101d |  | resources SIC- Cost; Electrical Forman [74.52 h]; Electrical Technician [74.52 h]; Electrical Helper [74.52 h]; Labor [74.52 h] → SIC- Cost [3965]; Electrical Forman [74.52 h]; Electrical Technician [74.52 h]; Electrical Helper [74.52 h]; Labor [74.52 h] |
| 3 | **Backfilling** | 2027-01-06 → 2027-03-30 (+83d) | 2027-01-26 → 2027-04-19 (+83d) |  |  |  |  |
| SDR-2-CON-SL-ZA-2770 | Street Lighting Panels Backfilling | 2027-01-06 → 2027-03-30 (+83d) | 2027-01-26 → 2027-04-19 (+83d) |  | 44d → -101d |  | resources SIC- Cost; Electrical Forman [67.9 h]; Electrical Technician [67.9 h]; Electrical Helper [67.9 h]; Labor [67.9 h]; Excavator [6 h]; Excavator Operator [67.9 h]; Dumper Operator [67.9 h]; Dumper Truck [50 h] → SIC- Cost [3965]; Electrical Forman [67.9 h]; Electrical Technician [67.9 h]; Electrical Helper [67.9 h]; Labor [67.9 h]; Excavator [6 h]; Excavator Operator [67.9 h]; Dumper Operator [67.9 h]; Dumper Truck [50 h] |
| 4 | **Install pole** | 2027-02-14 → 2027-05-08 (+83d) | 2027-03-15 → 2027-06-06 (+83d) |  |  |  |  |
| SDR-2-CON-SL-ZA-2780 | Street Lighting Panels Installation | 2027-02-14 → 2027-05-08 (+83d) | 2027-03-15 → 2027-06-06 (+83d) |  | 44d → -101d |  | resources SIC- Cost; Electrical Forman [85.98 h]; Electrical Technician [85.98 h]; Electrical Helper [85.98 h]; Labor [85.98 h] → SIC- Cost [27755]; Electrical Forman [85.98 h]; Electrical Technician [85.98 h]; Electrical Helper [85.98 h]; Labor [85.98 h] |
| 11 | **Ring Main Unit** | 2026-11-19 → 2027-02-04 (+77d) | 2027-02-08 → 2027-05-02 (+83d) |  |  |  |  |
| 1 | **Leveling** | 2026-11-19 → 2027-02-04 (+77d) | 2026-12-12 → 2027-02-28 (+78d) |  |  |  |  |
| SDR-2-CON-SL-ZA-2660 | Ring Main Unit leveling | 2026-11-19 → 2027-02-04 (+77d) | 2026-12-12 → 2027-02-28 (+78d) |  | 34d → -106d |  | resources SIC- Cost; Electrical Forman [50.28 h]; Electrical Technician [50.28 h]; Electrical Helper [50.28 h]; Labor [50.28 h] → SIC- Cost [11326]; Electrical Forman [50.28 h]; Electrical Technician [50.28 h]; Electrical Helper [50.28 h]; Labor [50.28 h] |
| 2 | **Lean Concrete** | 2026-12-13 → 2027-03-01 (+78d) | 2027-01-04 → 2027-03-28 (+83d) |  |  |  |  |
| SDR-2-CON-SL-ZA-2790 | Ring Main Unit Lean Concrete | 2026-12-13 → 2027-03-01 (+78d) | 2027-01-04 → 2027-03-28 (+83d) |  | 69d → -105d |  | resources SIC- Cost; Electrical Forman [67.9 h]; Electrical Technician [67.9 h]; Electrical Helper [67.9 h]; Labor [67.9 h] → SIC- Cost [22652]; Electrical Forman [67.9 h]; Electrical Technician [67.9 h]; Electrical Helper [67.9 h]; Labor [67.9 h] |
| 3 | **Installation** | 2027-01-17 → 2027-04-10 (+83d) | 2027-02-08 → 2027-05-02 (+83d) |  |  |  |  |
| SDR-2-CON-SL-ZA-2800 | Ring Main Unit installation for Street Lighting | 2027-01-17 → 2027-04-10 (+83d) | 2027-02-08 → 2027-05-02 (+83d) |  | 69d → -105d |  | resources SIC- Cost; Electrical Forman [135.79 h]; Electrical Technician [135.79 h]; Electrical Helper [135.79 h]; Labor [135.79 h] → SIC- Cost [79281.9]; Electrical Forman [135.79 h]; Electrical Technician [135.79 h]; Electrical Helper [135.79 h]; Labor [135.79 h] |
| 12 | **Feeder Pillars** | 2026-11-21 → 2027-02-04 (+75d) | 2027-02-15 → 2027-05-08 (+82d) |  |  |  |  |
| 1 | **Leveling** | 2026-11-21 → 2027-02-04 (+75d) | 2026-12-13 → 2027-02-28 (+77d) |  |  |  |  |
| SDR-2-CON-SL-ZA-2670 | Feeder Pillars Leveling | 2026-11-21 → 2027-02-04 (+75d) | 2026-12-13 → 2027-02-28 (+77d) |  | 33d → -106d |  | resources SIC- Cost; Electrical Forman [67.9 h]; Electrical Technician [67.9 h]; Electrical Helper [67.9 h]; Labor [67.9 h] → SIC- Cost [1062.69]; Electrical Forman [67.9 h]; Electrical Technician [67.9 h]; Electrical Helper [67.9 h]; Labor [67.9 h] |
| 2 | **Lean Concrete** | 2026-12-14 → 2027-03-01 (+77d) | 2027-01-05 → 2027-03-28 (+82d) |  |  |  |  |
| SDR-2-CON-SL-ZA-2810 | Feeder Pillars Lean Concrete | 2026-12-14 → 2027-03-01 (+77d) | 2027-01-05 → 2027-03-28 (+82d) |  | 63d → -98d |  | resources SIC- Cost; Electrical Forman [67.9 h]; Electrical Technician [67.9 h]; Electrical Helper [67.9 h]; Labor [67.9 h] → SIC- Cost [2125.37]; Electrical Forman [67.9 h]; Electrical Technician [67.9 h]; Electrical Helper [67.9 h]; Labor [67.9 h] |
| 3 | **Installation** | 2027-01-24 → 2027-04-15 (+81d) | 2027-02-15 → 2027-05-08 (+82d) |  |  |  |  |
| SDR-2-CON-SL-ZA-2820 | Feeder Pillars Installation | 2027-01-24 → 2027-04-15 (+81d) | 2027-02-15 → 2027-05-08 (+82d) |  | 63d → -98d |  | resources SIC- Cost; Electrical Forman [135.79 h]; Electrical Technician [135.79 h]; Electrical Helper [135.79 h]; Labor [135.79 h] → SIC- Cost [7438.82]; Electrical Forman [135.79 h]; Electrical Technician [135.79 h]; Electrical Helper [135.79 h]; Labor [135.79 h] |
| 13 | **KWH Frame** | 2027-01-09 → 2027-02-06 (+28d) | 2027-03-24 → 2027-04-21 (+28d) |  |  |  |  |
| 1 | **Leveling** | 2027-01-09 → 2027-02-06 (+28d) | 2027-01-31 → 2027-03-01 (+29d) |  |  |  |  |
| SDR-2-CON-SL-ZA-2680 | KWH meter mounting frame Leveling | 2027-01-09 → 2027-02-06 (+28d) | 2027-01-31 → 2027-03-01 (+29d) |  | 1d → -106d |  | resources SIC- Cost; Electrical Forman [64.01 h]; Electrical Technician [67.9 h]; Electrical Helper [67.38 h]; Labor [67.9 h] → SIC- Cost [1416.84]; Electrical Forman [64.01 h]; Electrical Technician [67.9 h]; Electrical Helper [67.38 h]; Labor [67.9 h] |
| 2 | **Lean Concrete** | 2027-02-01 → 2027-03-02 (+29d) | 2027-02-24 → 2027-03-29 (+33d) |  |  |  |  |
| SDR-2-CON-SL-ZA-2830 | KWH meter mounting frame Lean Concrete | 2027-02-01 → 2027-03-02 (+29d) | 2027-02-24 → 2027-03-29 (+33d) |  | 36d → -104d |  | resources SIC- Cost; Electrical Forman [64.01 h]; Electrical Technician [95.54 h]; Electrical Helper [67.9 h]; Labor [95.54 h] → SIC- Cost [2833.69]; Electrical Forman [64.01 h]; Electrical Technician [95.54 h]; Electrical Helper [67.9 h]; Labor [95.54 h] |
| 3 | **Installation** | 2027-02-25 → 2027-03-30 (+33d) | 2027-03-24 → 2027-04-21 (+28d) |  |  |  |  |
| SDR-2-CON-SL-ZA-2840 | KWH meter mounting frame installation | 2027-02-25 → 2027-03-30 (+33d) | 2027-03-24 → 2027-04-21 (+28d) |  | 36d → -104d |  | resources SIC- Cost; Electrical Forman [95.54 h]; Electrical Technician [95.54 h]; Electrical Helper [135.79 h]; Labor [95.54 h] → SIC- Cost [9917.9]; Electrical Forman [95.54 h]; Electrical Technician [95.54 h]; Electrical Helper [135.79 h]; Labor [95.54 h] |
| 14 | **Street Lighting Sub-station** | 2027-01-10 → 2027-03-07 (+56d) | 2027-03-27 → 2027-05-26 (+60d) |  |  |  |  |
| 1 | **Leveling** | 2027-01-10 → 2027-03-07 (+56d) | 2027-02-01 → 2027-04-03 (+61d) |  |  |  |  |
| SDR-2-CON-SL-ZA-2690 | Unit Substation Leveling | 2027-01-10 → 2027-03-07 (+56d) | 2027-02-01 → 2027-04-03 (+61d) |  | 26d → -129d |  | resources SIC- Cost; Electrical Forman [50.28 h]; Electrical Technician [67.9 h]; Electrical Helper [99.36 h]; Labor [67.9 h] → SIC- Cost [21900.1]; Electrical Forman [50.28 h]; Electrical Technician [67.9 h]; Electrical Helper [99.36 h]; Labor [67.9 h] |
| 2 | **Lean Concrete** | 2027-02-02 → 2027-04-04 (+61d) | 2027-02-25 → 2027-04-26 (+60d) |  |  |  |  |
| SDR-2-CON-SL-ZA-2850 | Unit Substation Lean Concrete | 2027-02-02 → 2027-04-04 (+61d) | 2027-02-25 → 2027-04-26 (+60d) |  | 34d → -129d |  | resources SIC- Cost; Electrical Forman [67.9 h]; Electrical Technician [67.9 h]; Electrical Helper [67.9 h]; Labor [67.9 h] → SIC- Cost [43800.2]; Electrical Forman [67.9 h]; Electrical Technician [67.9 h]; Electrical Helper [67.9 h]; Labor [67.9 h] |
| 3 | **Installation** | 2027-02-27 → 2027-04-27 (+59d) | 2027-03-27 → 2027-05-26 (+60d) |  |  |  |  |
| SDR-2-CON-SL-ZA-2860 | Unit Substation Install for Street Lighting | 2027-02-27 → 2027-04-27 (+59d) | 2027-03-27 → 2027-05-26 (+60d) |  | 34d → -129d |  | resources SIC- Cost; Electrical Forman [80.46 h]; Electrical Technician [80.46 h]; Electrical Helper [80.46 h]; Labor [80.46 h] → SIC- Cost [153301]; Electrical Forman [80.46 h]; Electrical Technician [80.46 h]; Electrical Helper [80.46 h]; Labor [80.46 h] |
| 2 | **MV Network** |  | 2027-01-13 → 2027-02-24 (+42d) |  |  |  |  |
| 1 | **LOOP 3** |  | 2026-12-03 → 2027-01-16 (+44d) |  |  |  |  |
| 6 | **Excavation** |  | 2026-11-09 → 2026-12-06 (+27d) |  |  |  |  |
| SDR-2-CON-MV-ZA-1000 | Excavation Works |  | 2026-11-09 → 2026-12-06 (+27d) | 70% → 75% | 0d → -65d | SDR-2-CON-SL-ZA-1000 FF → SDR-2-CON-SL-ZA-1000 SS+5d | resources SIC- Cost; Electrical Forman [135.79 h]; Electrical Technician [135.79 h]; Electrical Helper [135.79 h]; Labor [135.79 h]; Excavator [16 h]; Excavator Operator [135.79 h] → SIC- Cost [184031]; Electrical Forman [135.79 h]; Electrical Technician [135.79 h]; Electrical Helper [135.79 h]; Labor [135.79 h]; Excavator [16 h]; Excavator Operator [135.79 h] |
| 7 | **Pipe laying** |  | 2026-11-09 → 2026-12-15 (+36d) |  |  |  |  |
| SDR-2-CON-MV-ZA-1070 | Pipe Laying |  | 2026-11-09 → 2026-12-15 (+36d) | 70% → 75% | 15d → -37d | SDR-2-CON-MV-ZA-1000 FF → SDR-2-CON-MV-ZA-1000 | resources SIC- Cost; Electrical Forman [135.79 h]; Electrical Technician [135.79 h]; Electrical Helper [135.79 h]; Labor [135.79 h] → SIC- Cost [368062]; Electrical Forman [135.79 h]; Electrical Technician [135.79 h]; Electrical Helper [135.79 h]; Labor [135.79 h] |
| 8 | **Backfilling** |  | 2026-11-09 → 2026-12-22 (+43d) |  |  |  |  |
| SDR-2-CON-MV-ZA-1150 | Backfilling Works |  | 2026-11-09 → 2026-12-22 (+43d) |  | 15d → -37d | SDR-2-CON-MV-ZA-1070 FF, SDR-2-PRO-MAL-E-1000 → SDR-2-PRO-MAL-E-1000, SDR-2-CON-MV-ZA-1070 | resources SIC- Cost; Electrical Forman [135.79 h]; Electrical Technician [135.79 h]; Electrical Helper [401.25 h]; Labor [135.79 h]; Excavator [12 h]; Excavator Operator [135.79 h] → SIC- Cost [184031]; Electrical Forman [135.79 h]; Electrical Technician [135.79 h]; Electrical Helper [401.25 h]; Labor [135.79 h]; Excavator [12 h]; Excavator Operator [135.79 h] |
| 9 | **Pulling Cable** | 2026-11-10 → 2026-12-23 (+43d) | 2026-12-03 → 2027-01-16 (+44d) |  |  |  |  |
| SDR-2-CON-MV-ZA-1100 | Pulling Cable | 2026-11-10 → 2026-12-23 (+43d) | 2026-12-03 → 2027-01-16 (+44d) |  | 15d → -37d | SDR-2-PRO-ST-E-1000, SDR-2-CON-MV-ZA-1070, SDR-2-CON-MV-ZA-1150, SDR-2-PRO-ST-E-1010 → SDR-2-PRO-ST-E-1000, SDR-2-CON-MV-ZA-1070, SDR-2-CON-MV-ZA-1150 | resources SIC- Cost; Electrical Forman [135.79 h]; Electrical Technician [135.79 h]; Electrical Helper [135.79 h]; Labor [135.79 h] → SIC- Cost [1104186]; Electrical Forman [135.79 h]; Electrical Technician [135.79 h]; Electrical Helper [135.79 h]; Labor [135.79 h] |
| 2 | **LOOP 4** |  | 2027-01-13 → 2027-02-24 (+42d) |  |  |  |  |
| 6 | **Excavation** |  | 2026-11-09 → 2026-12-06 (+27d) |  |  |  |  |
| SDR-2-CON-MV-ZA-1160 | Excavation Works |  | 2026-11-09 → 2026-12-06 (+27d) | 70% → 75% | 1d → -40d | SDR-2-CON-MV-ZA-1000 FF → SDR-2-CON-MV-ZA-1000 SS+10d | resources SIC- Cost; Electrical Forman [135.79 h]; Electrical Technician [135.79 h]; Electrical Helper [135.79 h]; Labor [135.79 h] → SIC- Cost [184031]; Electrical Forman [135.79 h]; Electrical Technician [135.79 h]; Electrical Helper [135.79 h]; Labor [135.79 h] |
| 7 | **Pipe laying** |  | 2026-11-09 → 2026-12-20 (+41d) |  |  |  |  |

| ID | Task | Start | Finish | Complete | Total float | Predecessors | Other |
| --- | --- | --- | --- | --- | --- | --- | --- |
| SDR-2-CON-MV-ZA-1170 | Pipe Laying |  | 2026-11-09 → 2026-12-20 (+41d) | 62% → 65% | 1d → -40d | SDR-2-CON-MV-ZA-1160 FF → SDR-2-CON-MV-ZA-1160 | resources SIC- Cost; Electrical Forman [135.79 h]; Electrical Technician [135.79 h]; Electrical Helper [135.79 h]; Labor [135.79 h] → SIC- Cost [368062]; Electrical Forman [135.79 h]; Electrical Technician [135.79 h]; Electrical Helper [135.79 h]; Labor [135.79 h] |
| 8 | **Backfilling** | 2026-11-10 → 2026-12-21 (+41d) | 2026-12-03 → 2027-01-13 (+41d) |  |  |  |  |
| SDR-2-CON-MV-ZA-1190 | Backfilling Works | 2026-11-10 → 2026-12-21 (+41d) | 2026-12-03 → 2027-01-13 (+41d) |  | 1d → -40d |  | resources SIC- Cost; Electrical Forman [19.2 h]; Electrical Technician [19.2 h]; Electrical Helper [19.2 h]; Labor [19.2 h]; Excavator [12 h]; Excavator Operator [67.9 h] → SIC- Cost [184031]; Electrical Forman [19.2 h]; Electrical Technician [19.2 h]; Electrical Helper [19.2 h]; Labor [19.2 h]; Excavator [12 h]; Excavator Operator [67.9 h] |
| 9 | **Pulling Cable** | 2026-12-21 → 2027-01-31 (+41d) | 2027-01-13 → 2027-02-24 (+42d) |  |  |  |  |
| SDR-2-CON-MV-ZA-1180 | Pulling Cable | 2026-12-21 → 2027-01-31 (+41d) | 2027-01-13 → 2027-02-24 (+42d) |  | 1d → -40d |  | resources SIC- Cost; Electrical Forman [67.9 h]; Electrical Technician [67.9 h]; Electrical Helper [67.9 h]; Labor [67.9 h] → SIC- Cost [1104186]; Electrical Forman [67.9 h]; Electrical Technician [67.9 h]; Electrical Helper [67.9 h]; Labor [67.9 h] |
| 3 | **LOOP 5** |  | 2027-01-06 → 2027-02-11 (+36d) |  |  |  |  |
| 6 | **Excavation** |  | 2026-11-09 → 2026-12-06 (+27d) |  |  |  |  |
| SDR-2-CON-MV-ZA-1200 | Excavation Works |  | 2026-11-09 → 2026-12-06 (+27d) | 50% → 60% | 7d → -30d | SDR-2-CON-MV-ZA-1160 FF → SDR-2-CON-MV-ZA-1160 SS+9d | resources SIC- Cost; Labor [135.79 h]; Excavator [20 h]; Excavator Operator [135.79 h] → SIC- Cost [184031]; Labor [135.79 h]; Excavator [20 h]; Excavator Operator [135.79 h] |
| 7 | **Pipe laying** |  | 2026-11-09 → 2026-12-15 (+36d) |  |  |  |  |
| SDR-2-CON-MV-ZA-1210 | Pipe Laying |  | 2026-11-09 → 2026-12-15 (+36d) | 50% → 55% | 7d → -30d | SDR-2-CON-MV-ZA-1200 FF → SDR-2-CON-MV-ZA-1200 | resources SIC- Cost; Electrical Forman [67.9 h]; Electrical Technician [67.9 h]; Electrical Helper [67.9 h]; Labor [67.9 h] → SIC- Cost [368062]; Electrical Forman [67.9 h]; Electrical Technician [67.9 h]; Electrical Helper [67.9 h]; Labor [67.9 h] |
| 8 | **Backfilling** | 2026-11-10 → 2026-12-16 (+36d) | 2026-12-03 → 2027-01-09 (+37d) |  |  |  |  |
| SDR-2-CON-MV-ZA-1230 | Backfilling Works | 2026-11-10 → 2026-12-16 (+36d) | 2026-12-03 → 2027-01-09 (+37d) |  | 7d → -30d |  | resources SIC- Cost; Labor [67.9 h]; Excavator [12 h]; Excavator Operator [67.9 h] → SIC- Cost [184031]; Labor [67.9 h]; Excavator [12 h]; Excavator Operator [67.9 h] |
| 9 | **Pulling Cable** | 2026-12-14 → 2027-01-19 (+36d) | 2027-01-06 → 2027-02-11 (+36d) |  |  |  |  |
| SDR-2-CON-MV-ZA-1220 | Pulling Cable | 2026-12-14 → 2027-01-19 (+36d) | 2027-01-06 → 2027-02-11 (+36d) |  | 7d → -30d |  | resources SIC- Cost; Electrical Forman [67.9 h]; Electrical Technician [67.9 h]; Electrical Helper [67.9 h]; Labor [135.79 h] → SIC- Cost [1104186]; Electrical Forman [67.9 h]; Electrical Technician [67.9 h]; Electrical Helper [67.9 h]; Labor [135.79 h] |
| 4 | **LOOP 6** |  | 2027-01-04 → 2027-02-10 (+37d) |  |  |  |  |
| 6 | **Excavation** |  | 2026-11-09 → 2026-12-07 (+28d) |  |  |  |  |
| SDR-2-CON-MV-ZA-1240 | Excavation Works |  | 2026-11-09 → 2026-12-07 (+28d) | 50% → 55% | 36d → -23d | SDR-2-CON-MV-ZA-1200 FF → SDR-2-CON-MV-ZA-1200 SS+8d | resources SIC- Cost; Labor [135.79 h]; Excavator [20 h]; Excavator Operator [135.79 h] → SIC- Cost [184031]; Labor [135.79 h]; Excavator [20 h]; Excavator Operator [135.79 h] |
| 7 | **Pipe laying** |  | 2026-11-09 → 2026-12-16 (+37d) |  |  |  |  |
| SDR-2-CON-MV-ZA-1250 | Pipe Laying |  | 2026-11-09 → 2026-12-16 (+37d) | 50% → 52% | 36d → -23d | SDR-2-CON-MV-ZA-1240 FF → SDR-2-CON-MV-ZA-1240 | resources SIC- Cost; Electrical Forman [67.9 h]; Electrical Technician [67.9 h]; Electrical Helper [67.9 h]; Labor [135.79 h] → SIC- Cost [368062]; Electrical Forman [67.9 h]; Electrical Technician [67.9 h]; Electrical Helper [67.9 h]; Labor [135.79 h] |
| 8 | **Backfilling** | 2026-11-10 → 2026-12-17 (+37d) | 2026-12-03 → 2027-01-10 (+38d) |  |  |  |  |
| SDR-2-CON-MV-ZA-1270 | Backfilling Works | 2026-11-10 → 2026-12-17 (+37d) | 2026-12-03 → 2027-01-10 (+38d) |  | 36d → -23d |  | resources SIC- Cost; Labor [67.9 h]; Excavator [12 h]; Excavator Operator [67.9 h] → SIC- Cost [184031]; Labor [67.9 h]; Excavator [12 h]; Excavator Operator [67.9 h] |
| 9 | **Pulling Cable** | 2026-12-12 → 2027-01-18 (+37d) | 2027-01-04 → 2027-02-10 (+37d) |  |  |  |  |
| SDR-2-CON-MV-ZA-1260 | Pulling Cable | 2026-12-12 → 2027-01-18 (+37d) | 2027-01-04 → 2027-02-10 (+37d) |  | 36d → -23d |  | resources SIC- Cost; Electrical Forman [67.9 h]; Electrical Technician [67.9 h]; Electrical Helper [67.9 h]; Labor [67.9 h] → SIC- Cost [1104186]; Electrical Forman [67.9 h]; Electrical Technician [67.9 h]; Electrical Helper [67.9 h]; Labor [67.9 h] |
| 3 | **TELECOMMUNICATIONS Works** |  | 2027-03-14 → 2027-04-17 (+34d) |  |  |  |  |
| 1 | **TELECOMMUNICATION IN ( PH2-COL-MC10 )** |  | 2027-03-14 → 2027-04-17 (+34d) |  |  |  |  |
| 3 | **Ducts** |  | 2027-03-14 → 2027-04-17 (+34d) |  |  |  |  |
| 2 | **Excavation** |  | 2026-12-19 → 2027-01-21 (+33d) |  |  |  |  |
| SDR-2-CON-TE-ZA-4560 | Excavation for telecom trench Section 1 |  | 2026-11-24 → 2026-12-28 (+34d) | 50% → 55% | 18d → -60d | SDR-2-CON-SL-ZA-1000 FF → SDR-2-CON-SL-ZA-1000 | was named Excavation for telecom crossing ducts; resources SIC- Cost; Excavator [12 h]; Excavator Operator [135.79 h] → SIC- Cost [3594.88]; Excavator [12 h]; Excavator Operator [135.79 h] |
| SDR-2-CON-TE-ZA-1000 | Excavation for telecom trench Section 2 | 2026-11-25 → 2026-12-29 (+34d) | 2026-12-19 → 2027-01-21 (+33d) |  | 18d → -60d |  | was named Excavation for telecom trenches; resources SIC- Cost; Excavator [12 h]; Excavator Operator [135.79 h] → SIC- Cost [3594.88]; Excavator [12 h]; Excavator Operator [135.79 h] |
| 5 | **Pipe laying** | 2026-12-20 → 2027-01-23 (+34d) | 2027-01-10 → 2027-02-13 (+34d) |  |  |  |  |
| SDR-2-CON-TE-ZA-1010 | HDPE Pipes for Telecom Installation | 2026-12-20 → 2027-01-23 (+34d) | 2027-01-10 → 2027-02-13 (+34d) |  | 18d → -60d |  | resources SIC- Cost; Electrical Forman [135.79 h]; Electrical Technician [135.79 h]; Electrical Helper [135.79 h] → SIC- Cost [14379.5]; Electrical Forman [135.79 h]; Electrical Technician [135.79 h]; Electrical Helper [135.79 h] |
| 6 | **Backfilling** | 2027-01-11 → 2027-02-14 (+34d) | 2027-01-31 → 2027-03-07 (+35d) |  |  |  |  |
| SDR-2-CON-TE-ZA-1020 | Backfilling over HDPE Telecom Pipes | 2027-01-11 → 2027-02-14 (+34d) | 2027-01-31 → 2027-03-07 (+35d) |  | 18d → -60d |  | resources SIC- Cost; Excavator [6 h]; Excavator Operator [6.03 h] → SIC- Cost [7189.75]; Excavator [6 h]; Excavator Operator [6.03 h] |
| 7 | **Pulling Cable** | 2027-02-13 → 2027-03-24 (+39d) | 2027-03-14 → 2027-04-17 (+34d) |  |  |  |  |
| SDR-2-CON-TE-ZA-1840 | Pulling Cable | 2027-02-13 → 2027-03-24 (+39d) | 2027-03-14 → 2027-04-17 (+34d) |  | 18d → -60d |  | resources SIC- Cost; Electrical Forman [67.9 h]; Electrical Technician [67.9 h]; Electrical Helper [67.9 h] → SIC- Cost [43138.5]; Electrical Forman [67.9 h]; Electrical Technician [67.9 h]; Electrical Helper [67.9 h] |
| 4 | **Manholes** |  | 2027-01-16 → 2027-02-09 (+24d) |  |  |  |  |
| SDR-2-CON-TE-ZA-1030 | Excavation for Telecom Manhole |  |  |  |  | SDR-2-CON-TE-ZA-4560 FF → SDR-2-CON-TE-ZA-4560 SS | was named Excavation for Telecom Manholes; resources SIC- Cost; Excavator [12 h]; Excavator Operator [67.9 h] → SIC- Cost [8073.39]; Excavator [12 h]; Excavator Operator [67.9 h] |
| SDR-2-CON-TE-ZA-1850 | Sand bedding for Telecom Manhole |  |  |  |  | SDR-2-CON-TE-ZA-1030 FF → SDR-2-CON-TE-ZA-1030 | resources SIC- Cost; Labor [67.9 h]; Excavator [8.5 h]; Excavator Operator [67.9 h] → SIC- Cost [5382.27]; Labor [67.9 h]; Excavator [8.5 h]; Excavator Operator [67.9 h] |
| SDR-2-CON-TE-ZA-1040 | Installation of Telecom Manhole |  |  |  |  |  | resources SIC- Cost; Electrical Forman [67.9 h]; Electrical Technician [67.9 h]; Electrical Helper [67.9 h] → SIC- Cost [24220.2]; Electrical Forman [67.9 h]; Electrical Technician [67.9 h]; Electrical Helper [67.9 h] |
| 4 | **Testting** | 2026-11-25 → 2026-12-15 (+20d) | 2026-12-10 → 2026-12-30 (+20d) |  |  |  |  |
| SDR-2-CON-TE-ZA-1050 | Telecom Manhole finishing works | 2026-11-25 → 2026-12-15 (+20d) | 2026-12-10 → 2026-12-30 (+20d) |  | 29d → -11d |  | resources SIC- Cost; Electrical Forman [60.34 h]; Electrical Technician [60.34 h]; Electrical Helper [60.34 h] → SIC- Cost [5382.27]; Electrical Forman [60.34 h]; Electrical Technician [60.34 h]; Electrical Helper [60.34 h] |
| 5 | **Backfilling** | 2026-12-23 → 2027-01-17 (+25d) | 2027-01-16 → 2027-02-09 (+24d) |  |  |  |  |
| SDR-2-CON-TE-ZA-1060 | Backfilling over Telecom Manhole | 2026-12-23 → 2027-01-17 (+25d) | 2027-01-16 → 2027-02-09 (+24d) |  | 29d → -15d |  | resources SIC- Cost; Excavator [8.22 h]; Excavator Operator [67.9 h] → SIC- Cost [10764.5]; Excavator [8.22 h]; Excavator Operator [67.9 h] |
| 2 | **TELECOMMUNICATION IN ( PH2-COL-MC20 )** |  | 2027-01-06 → 2027-02-23 (+48d) |  |  |  |  |
| 3 | **Ducts** |  | 2026-12-03 → 2027-02-07 (+66d) |  |  |  |  |
| 2 | **Excavation** |  | 2026-11-09 → 2026-12-28 (+49d) |  |  |  |  |
| SDR-2-CON-TE-ZA-3210 | Excavation for telecom trench |  | 2026-11-09 → 2026-12-28 (+49d) | 80% → 87% | 0d → -48d | SDR-2-CON-SL-ZA-1000 FF → SDR-2-CON-SL-ZA-1000 FS+5d | was named Excavation for telecom crossing ducts & trenches; resources SIC- Cost; Excavator [12 h]; Excavator Operator [135.79 h] → SIC- Cost [7189.75]; Excavator [12 h]; Excavator Operator [135.79 h] |
| 5 | **Pipe laying** |  | 2026-11-09 → 2027-01-05 (+57d) |  |  |  |  |
| SDR-2-CON-TE-ZA-3220 | HDPE Pipes for Telecom Installation |  | 2026-11-09 → 2027-01-05 (+57d) | 70% → 80% | 126d → -38d | SDR-2-CON-TE-ZA-3210 FF → SDR-2-CON-TE-ZA-3210 | resources SIC- Cost; Electrical Forman [67.9 h]; Electrical Technician [67.9 h]; Electrical Helper [67.9 h] → SIC- Cost [14379.5]; Electrical Forman [67.9 h]; Electrical Technician [67.9 h]; Electrical Helper [67.9 h] |
| 6 | **Backfilling** |  | 2026-11-09 → 2027-01-13 (+65d) |  |  |  |  |
| SDR-2-CON-TE-ZA-3230 | Backfilling over HDPE Telecom Pipes |  | 2026-11-09 → 2027-01-13 (+65d) | 70% → 75% | 126d → -38d | SDR-2-CON-TE-ZA-3220 FF → SDR-2-CON-TE-ZA-3220 | resources SIC- Cost; Excavator [6 h]; Excavator Operator [6.03 h] → SIC- Cost [7189.75]; Excavator [6 h]; Excavator Operator [6.03 h] |
| 7 | **Pulling Cable** | 2026-11-10 → 2027-01-14 (+65d) | 2026-12-03 → 2027-02-07 (+66d) |  |  |  |  |
| SDR-2-CON-TE-ZA-3280 | Pulling Cable | 2026-11-10 → 2027-01-14 (+65d) | 2026-12-03 → 2027-02-07 (+66d) |  | 126d → -38d |  | resources SIC- Cost; Electrical Forman [67.9 h]; Electrical Technician [67.9 h]; Electrical Helper [67.9 h] → SIC- Cost [43138.5]; Electrical Forman [67.9 h]; Electrical Technician [67.9 h]; Electrical Helper [67.9 h] |
| 4 | **Manholes** |  | 2027-01-06 → 2027-02-23 (+48d) |  |  |  |  |
| SDR-2-CON-TE-ZA-3240 | Excavation for Telecom Manhole |  |  |  |  | SDR-2-CON-TE-ZA-3210 FF → SDR-2-CON-TE-ZA-3210 SS | was named Excavation for Telecom Manholes; resources SIC- Cost [5379.14]; Excavator [12 h]; Excavator Operator [67.9 h] → SIC- Cost [8073.39]; Excavator [12 h]; Excavator Operator [67.9 h] |
| 2 | **Bedding Work** |  | 2026-11-15 → 2026-12-26 (+41d) |  |  |  |  |
| SDR-2-CON-TE-ZA-3290 | Sand bedding for Telecom Manhole |  | 2026-11-15 → 2026-12-26 (+41d) | 80% → 90% | 25d → -31d | SDR-2-CON-TE-ZA-3240 FF → SDR-2-CON-TE-ZA-3240 | resources SIC- Cost [5379.14]; Excavator [12 h]; Excavator Operator [67.9 h] → SIC- Cost [5382.27]; Excavator [12 h]; Excavator Operator [67.9 h] |
| 3 | **Install Manholes** |  | 2026-11-15 → 2026-12-31 (+46d) |  |  |  |  |
| SDR-2-CON-TE-ZA-3250 | Installation of Telecom Manhole |  | 2026-11-15 → 2026-12-31 (+46d) | 80% → 85% | 25d → -31d | SDR-2-CON-TE-ZA-3240 FF, SDR-2-CON-TE-ZA-3290 FF → SDR-2-CON-TE-ZA-3240, SDR-2-CON-TE-ZA-3290 | resources SIC- Cost; Electrical Forman [67.9 h]; Electrical Technician [67.9 h]; Electrical Helper [67.9 h] → SIC- Cost [24220.2]; Electrical Forman [67.9 h]; Electrical Technician [67.9 h]; Electrical Helper [67.9 h] |
| 4 | **Testting** | 2026-11-16 → 2027-01-02 (+47d) | 2026-12-01 → 2027-01-17 (+47d) |  |  |  |  |
| SDR-2-CON-TE-ZA-3260 | Telecom Manhole finishing works | 2026-11-16 → 2027-01-02 (+47d) | 2026-12-01 → 2027-01-17 (+47d) |  | 25d → -31d |  | resources SIC- Cost; Electrical Forman [67.9 h]; Electrical Technician [67.9 h]; Electrical Helper [67.9 h] → SIC- Cost [5382.27]; Electrical Forman [67.9 h]; Electrical Technician [67.9 h]; Electrical Helper [67.9 h] |
| 5 | **Backfilling** | 2026-12-14 → 2027-01-30 (+47d) | 2027-01-06 → 2027-02-23 (+48d) |  |  |  |  |
| SDR-2-CON-TE-ZA-3270 | Backfilling over Telecom Manhole | 2026-12-14 → 2027-01-30 (+47d) | 2027-01-06 → 2027-02-23 (+48d) |  | 25d → -31d |  | resources SIC- Cost; Excavator [5 h]; Excavator Operator [67.9 h] → SIC- Cost [10764.5]; Excavator [5 h]; Excavator Operator [67.9 h] |
| 11 | **TELECOMMUNICATION IN ( PH2-A-MCA0 )** |  | 2027-02-23 → 2027-03-03 (+8d) |  |  |  |  |
| 3 | **Ducts** |  | 2027-01-26 → 2027-03-03 (+36d) |  |  |  |  |
| 2 | **Excavation** |  | 2026-11-09 → 2026-12-28 (+49d) |  |  |  |  |
| SDR-2-CON-TE-ZA-3300 | Excavation for telecom trench |  | 2026-11-09 → 2026-12-28 (+49d) | 60% → 75% | 0d → -48d | SDR-2-CON-SL-ZA-1000 FF, SDR-2-CON-TE-ZA-3210 FF → SDR-2-CON-SL-ZA-1000, SDR-2-CON-TE-ZA-3210 SS+3d | was named Excavation for telecom crossing ducts & trenches; resources SIC- Cost; Excavator [12 h]; Excavator Operator [135.79 h] → SIC- Cost [7189.75]; Excavator [12 h]; Excavator Operator [135.79 h] |
| 5 | **Pipe laying** | 2026-11-10 → 2026-11-08 (-2d) | 2026-12-01 → 2027-01-11 (+41d) |  |  |  |  |
| SDR-2-CON-TE-ZA-3310 | HDPE Pipes for Telecom Installation | 2026-11-10 → 2026-11-08 A (-2d) | 2026-12-01 → 2027-01-11 (+41d) | 0% → 45% | 0d → -38d |  | resources SIC- Cost; Electrical Forman [67.9 h]; Electrical Technician [67.9 h]; Electrical Helper [67.9 h] → SIC- Cost [14379.5]; Electrical Forman [67.9 h]; Electrical Technician [67.9 h]; Electrical Helper [67.9 h] |
| 6 | **Backfilling** | 2026-12-02 → 2026-11-08 (-24d) | 2026-12-24 → 2027-01-26 (+33d) |  |  |  |  |

| ID | Task | Start | Finish | Complete | Total float | Predecessors | Other |
| --- | --- | --- | --- | --- | --- | --- | --- |
| SDR-2-CON-TE-ZA-3320 | Backfilling over HDPE Telecom Pipes | 2026-12-02 → 2026-11-08 A (-24d) | 2026-12-24 → 2027-01-26 (+33d) | 0% → 5% | 0d → -38d |  | resources SIC- Cost; Excavator [6 h]; Excavator Operator [6.03 h] → SIC- Cost [7189.75]; Excavator [6 h]; Excavator Operator [6.03 h] |
| 7 | **Pulling Cable** | 2027-01-04 → 2027-02-08 (+35d) | 2027-01-26 → 2027-03-03 (+36d) |  |  |  |  |
| SDR-2-CON-TE-ZA-3370 | Pulling Cable | 2027-01-04 → 2027-02-08 (+35d) | 2027-01-26 → 2027-03-03 (+36d) |  | 0d → -38d | SDR-2-CON-MV-ZA-1100 FS+5d, SDR-2-CON-TE-ZA-3320 FS+8d → SDR-2-CON-TE-ZA-3320 FS+10d, SDR-2-CON-MV-ZA-1100 FS+5d | resources SIC- Cost; Electrical Forman [67.9 h]; Electrical Technician [67.9 h]; Electrical Helper [67.9 h] → SIC- Cost [43138.5]; Electrical Forman [67.9 h]; Electrical Technician [67.9 h]; Electrical Helper [67.9 h] |
| 4 | **Manholes** |  | 2027-02-23 → 2027-03-03 (+8d) |  |  |  |  |
| SDR-2-CON-TE-ZA-3330 | Excavation for Telecom Manhole |  |  |  |  | SDR-2-CON-TE-ZA-3300 FF → SDR-2-CON-TE-ZA-3300 SS | was named Excavation for Telecom Manholes; resources SIC- Cost; Loader Operator [67.9 h]; Labor [67.9 h]; Excavator [12 h]; Excavator Operator [67.9 h] → SIC- Cost [8073.39]; Labor [67.9 h]; Loader Operator [67.9 h]; Excavator [12 h]; Excavator Operator [67.9 h] |
| 2 | **Bedding Work** |  | 2026-12-02 → 2026-12-28 (+26d) |  |  |  |  |
| SDR-2-CON-TE-ZA-3380 | Sand bedding for Telecom Manhole |  | 2026-12-02 → 2026-12-28 (+26d) | 50% → 70% | 13d → -27d |  | resources SIC- Cost; Excavator [14.5 h]; Excavator Operator [67.9 h] → SIC- Cost [5382.27]; Excavator [14.5 h]; Excavator Operator [67.9 h] |
| 3 | **Install Manholes** |  | 2026-12-26 → 2027-01-03 (+8d) |  |  |  |  |
| SDR-2-CON-TE-ZA-3340 | Installation of Telecom Manhole |  | 2026-12-26 → 2027-01-03 (+8d) | 50% → 95% | 13d → -27d |  | resources SIC- Cost; Electrical Forman [67.9 h]; Electrical Technician [67.9 h]; Electrical Helper [67.9 h] → SIC- Cost [24220.2]; Electrical Forman [67.9 h]; Electrical Technician [67.9 h]; Electrical Helper [67.9 h] |
| 4 | **Testting** | 2026-12-27 → 2027-01-04 (+8d) | 2027-01-18 → 2027-01-26 (+8d) |  |  |  |  |
| SDR-2-CON-TE-ZA-3350 | Telecom Manhole finishing works | 2026-12-27 → 2027-01-04 (+8d) | 2027-01-18 → 2027-01-26 (+8d) |  | 13d → -27d |  | resources SIC- Cost; Electrical Forman [67.9 h]; Electrical Technician [67.9 h]; Electrical Helper [67.9 h] → SIC- Cost [5382.27]; Electrical Forman [67.9 h]; Electrical Technician [67.9 h]; Electrical Helper [67.9 h] |
| 5 | **Backfilling** | 2027-01-31 → 2027-02-08 (+8d) | 2027-02-23 → 2027-03-03 (+8d) |  |  |  |  |
| SDR-2-CON-TE-ZA-3360 | Backfilling over Telecom Manhole | 2027-01-31 → 2027-02-08 (+8d) | 2027-02-23 → 2027-03-03 (+8d) |  | 13d → -27d |  | resources SIC- Cost; Excavator [6.92 h]; Excavator Operator [67.9 h] → SIC- Cost [10764.5]; Excavator [6.92 h]; Excavator Operator [67.9 h] |
| 12 | **TELECOMMUNICATION IN ( PH2-A-MCB0 )** |  | 2027-03-08 → 2027-03-28 (+20d) |  |  |  |  |
| 3 | **Ducts** |  | 2027-02-01 → 2027-03-20 (+47d) |  |  |  |  |
| 2 | **Excavation** |  | 2026-11-09 → 2026-12-30 (+51d) |  |  |  |  |
| SDR-2-CON-TE-ZA-3390 | Excavation for telecom trench |  | 2026-11-09 → 2026-12-30 (+51d) | 30% → 60% | 3d → -48d | SDR-2-CON-SL-ZA-1000 FF, SDR-2-CON-TE-ZA-3300 FF → SDR-2-CON-SL-ZA-1000, SDR-2-CON-TE-ZA-3300 SS+5d | was named Excavation for telecom crossing ducts & trenches; resources SIC- Cost; Excavator [12 h]; Excavator Operator [67.9 h] → SIC- Cost [7189.75]; Excavator [12 h]; Excavator Operator [67.9 h] |
| 5 | **Pipe laying** | 2026-11-10 → 2026-11-09 (-1d) | 2026-12-03 → 2027-01-17 (+45d) |  |  |  |  |
| SDR-2-CON-TE-ZA-3400 | HDPE Pipes for Telecom Installation | 2026-11-10 → 2026-11-09 A (-1d) | 2026-12-03 → 2027-01-17 (+45d) | 0% → 35% | 3d → -48d |  | resources SIC- Cost; Electrical Forman [67.9 h]; Electrical Technician [203.69 h]; Electrical Helper [67.9 h] → SIC- Cost [14379.5]; Electrical Forman [67.9 h]; Electrical Technician [203.69 h]; Electrical Helper [67.9 h] |
| 6 | **Backfilling** | 2026-12-05 → 2026-11-12 (-23d) | 2026-12-27 → 2027-02-06 (+41d) |  |  |  |  |
| SDR-2-CON-TE-ZA-3410 | Backfilling over HDPE Telecom Pipes | 2026-12-05 → 2026-11-12 A (-23d) | 2026-12-27 → 2027-02-06 (+41d) | 0% → 10% | 3d → -48d |  | resources SIC- Cost; Excavator [6 h]; Excavator Operator [6.03 h] → SIC- Cost [7189.75]; Excavator [6 h]; Excavator Operator [6.03 h] |
| 7 | **Pulling Cable** | 2027-01-09 → 2027-02-18 (+40d) | 2027-02-01 → 2027-03-20 (+47d) |  |  |  |  |
| SDR-2-CON-TE-ZA-3460 | Pulling Cable | 2027-01-09 → 2027-02-18 (+40d) | 2027-02-01 → 2027-03-20 (+47d) |  | 3d → -48d |  | resources SIC- Cost; Electrical Forman [67.9 h]; Electrical Technician [67.9 h]; Electrical Helper [67.9 h] → SIC- Cost [43138.5]; Electrical Forman [67.9 h]; Electrical Technician [67.9 h]; Electrical Helper [67.9 h] |
| 4 | **Manholes** |  | 2027-03-08 → 2027-03-28 (+20d) |  |  |  |  |
| 1 | **Excavation** |  | 2026-11-25 → 2026-12-26 (+31d) |  |  |  |  |
| SDR-2-CON-TE-ZA-3420 | Excavation for Telecom Manhole |  | 2026-11-25 → 2026-12-26 (+31d) | 75% → 85% | 2.81d → -40d | SDR-2-CON-TE-ZA-3390 FF → SDR-2-CON-TE-ZA-3390 SS | was named Excavation for Telecom Manholes; resources SIC- Cost; Excavator [12 h]; Excavator Operator [67.9 h] → SIC- Cost [8073.39]; Excavator [12 h]; Excavator Operator [67.9 h] |
| 2 | **Bedding Work** |  | 2026-12-19 → 2027-01-09 (+21d) |  |  |  |  |
| SDR-2-CON-TE-ZA-3470 | Sand bedding for Telecom Manhole |  | 2026-12-19 → 2027-01-09 (+21d) | 50% → 60% | 2.81d → -40d |  | resources SIC- Cost; Excavator [12 h]; Excavator Operator [95.54 h] → SIC- Cost [5382.27]; Excavator [12 h]; Excavator Operator [95.54 h] |
| 3 | **Install Manholes** |  | 2027-01-11 → 2027-01-16 (+5d) |  |  |  |  |
| SDR-2-CON-TE-ZA-3430 | Installation of Telecom Manhole |  | 2027-01-11 → 2027-01-16 (+5d) |  | 2.81d → -40d |  | resources SIC- Cost; Electrical Forman [67.9 h]; Electrical Technician [67.9 h]; Electrical Helper [67.9 h] → SIC- Cost [24220.2]; Electrical Forman [67.9 h]; Electrical Technician [67.9 h]; Electrical Helper [67.9 h] |
| 4 | **Testting** | 2027-01-11 → 2027-01-17 (+6d) | 2027-02-04 → 2027-02-09 (+5d) |  |  |  |  |
| SDR-2-CON-TE-ZA-3440 | Telecom Manhole finishing works | 2027-01-11 → 2027-01-17 (+6d) | 2027-02-04 → 2027-02-09 (+5d) |  | 2.81d → -40d |  | resources SIC- Cost; Electrical Forman [67.9 h]; Electrical Technician [67.9 h]; Electrical Helper [67.9 h] → SIC- Cost [5382.27]; Electrical Forman [67.9 h]; Electrical Technician [67.9 h]; Electrical Helper [67.9 h] |
| 5 | **Backfilling** | 2027-02-10 → 2027-02-28 (+18d) | 2027-03-08 → 2027-03-28 (+20d) |  |  |  |  |
| SDR-2-CON-TE-ZA-3450 | Backfilling over Telecom Manhole | 2027-02-10 → 2027-02-28 (+18d) | 2027-03-08 → 2027-03-28 (+20d) |  | 2.81d → -44d | SDR-2-CON-TE-ZA-4350, SDR-2-CON-TE-ZA-4360, SDR-2-CON-TE-ZA-4260, SDR-2-CON-TE-ZA-4270, SDR-2-CON-MV-ZA-1340, SDR-2-CON-TE-ZA-3440 FS+5d → SDR-2-CON-TE-ZA-3440 FS+10d, SDR-2-CON-TE-ZA-4350, SDR-2-CON-TE-ZA-4360, SDR-2-CON-TE-ZA-4260, SDR-2-CON-TE-ZA-4270, SDR-2-CON-MV-ZA-1340 | resources SIC- Cost; Electrical Forman [67.9 h]; Electrical Technician [67.9 h]; Electrical Helper [67.9 h]; Excavator [12 h]; Excavator Operator [67.9 h] → SIC- Cost [10764.5]; Electrical Forman [67.9 h]; Electrical Technician [67.9 h]; Electrical Helper [67.9 h]; Excavator [12 h]; Excavator Operator [67.9 h] |
| 13 | **TELECOMMUNICATION IN ( PH2-A-MCC0 )** |  | 2027-01-12 → 2027-03-07 (+54d) |  |  |  |  |
| 3 | **Ducts** |  | 2027-01-12 → 2027-03-07 (+54d) |  |  |  |  |
| 2 | **Excavation** |  | 2026-11-09 → 2026-12-29 (+50d) |  |  |  |  |
| SDR-2-CON-TE-ZA-3480 | Excavation for telecom trench |  | 2026-11-09 → 2026-12-29 (+50d) | 75% → 78% | 16d → -47d | SDR-2-CON-SL-ZA-1000 FF, SDR-2-CON-TE-ZA-3390 FF → SDR-2-CON-SL-ZA-1000, SDR-2-CON-TE-ZA-3390 SS+5d | was named Excavation for telecom crossing ducts & trenches; resources SIC- Cost; Electrical Forman [135.79 h]; Electrical Technician [135.79 h]; Electrical Helper [135.79 h]; Excavator [16 h]; Excavator Operator [135.79 h] → SIC- Cost [7189.75]; Electrical Forman [135.79 h]; Electrical Technician [135.79 h]; Electrical Helper [135.79 h]; Excavator [16 h]; Excavator Operator [135.79 h] |
| 5 | **Pipe laying** |  | 2026-11-14 → 2027-01-09 (+56d) |  |  |  |  |
| SDR-2-CON-TE-ZA-3490 | HDPE Pipes for Telecom Installation |  | 2026-11-14 → 2027-01-09 (+56d) | 25% → 55% | 20d → -41d | SDR-2-CON-TE-ZA-3480 FF → SDR-2-CON-TE-ZA-3480 | resources SIC- Cost; Electrical Forman [67.9 h]; Electrical Technician [67.9 h]; Electrical Helper [67.9 h] → SIC- Cost [14379.5]; Electrical Forman [67.9 h]; Electrical Technician [67.9 h]; Electrical Helper [67.9 h] |
| 6 | **Backfilling** | 2026-11-15 → 2026-11-12 (-3d) | 2026-12-07 → 2027-01-28 (+52d) |  |  |  |  |
| SDR-2-CON-TE-ZA-3500 | Backfilling over HDPE Telecom Pipes | 2026-11-15 → 2026-11-12 A (-3d) | 2026-12-07 → 2027-01-28 (+52d) | 0% → 45% | 20d → -41d |  | resources SIC- Cost; Electrical Forman [67.9 h]; Electrical Technician [67.9 h]; Electrical Helper [67.9 h]; Excavator [6 h]; Excavator Operator [67.9 h] → SIC- Cost [7189.75]; Electrical Forman [67.9 h]; Electrical Technician [67.9 h]; Electrical Helper [67.9 h]; Excavator [6 h]; Excavator Operator [67.9 h] |
| 7 | **Pulling Cable** | 2026-12-20 → 2027-02-10 (+52d) | 2027-01-12 → 2027-03-07 (+54d) |  |  |  |  |
| SDR-2-CON-TE-ZA-3550 | Pulling Cable | 2026-12-20 → 2027-02-10 (+52d) | 2027-01-12 → 2027-03-07 (+54d) |  | 20d → -41d |  | resources SIC- Cost; Electrical Forman [67.9 h]; Electrical Technician [135.79 h]; Electrical Helper [67.9 h] → SIC- Cost [43138.5]; Electrical Forman [67.9 h]; Electrical Technician [135.79 h]; Electrical Helper [67.9 h] |
| 4 | **Manholes** |  | 2026-12-19 → 2027-01-28 (+40d) |  |  |  |  |
| SDR-2-CON-TE-ZA-3510 | Excavation for Telecom Manhole |  |  |  |  | SDR-2-CON-TE-ZA-3480 FF → SDR-2-CON-TE-ZA-3480 SS | was named Excavation for Telecom Manholes; resources SIC- Cost; Electrical Forman [67.9 h]; Electrical Technician [67.9 h]; Electrical Helper [67.9 h]; Excavator [12 h]; Excavator Operator [67.9 h] → SIC- Cost [8073.39]; Electrical Forman [67.9 h]; Electrical Technician [67.9 h]; Electrical Helper [67.9 h]; Excavator [12 h]; Excavator Operator [67.9 h] |
| SDR-2-CON-TE-ZA-3560 | Sand bedding for Telecom Manhole |  |  |  |  | SDR-2-CON-TE-ZA-3510 FF → SDR-2-CON-TE-ZA-3510 | resources SIC- Cost; Electrical Forman [67.9 h]; Electrical Technician [67.9 h]; Electrical Helper [67.9 h]; Excavator [12 h]; Excavator Operator [67.9 h] → SIC- Cost [5382.27]; Electrical Forman [67.9 h]; Electrical Technician [67.9 h]; Electrical Helper [67.9 h]; Excavator [12 h]; Excavator Operator [67.9 h] |
| SDR-2-CON-TE-ZA-3520 | Installation of Telecom Manhole |  |  |  |  |  | resources SIC- Cost; Electrical Forman [67.9 h]; Electrical Technician [67.9 h]; Electrical Helper [67.9 h] → SIC- Cost [24220.2]; Electrical Forman [67.9 h]; Electrical Technician [67.9 h]; Electrical Helper [67.9 h] |
| 4 | **Testting** | 2026-11-10 → 2026-12-21 (+41d) | 2026-11-25 → 2027-01-05 (+41d) |  |  |  |  |
| SDR-2-CON-TE-ZA-3530 | Telecom Manhole finishing works | 2026-11-10 → 2026-12-21 (+41d) | 2026-11-25 → 2027-01-05 (+41d) |  | 41d → -10d |  | resources SIC- Cost; Electrical Forman [67.9 h]; Electrical Technician [67.9 h]; Electrical Helper [67.9 h] → SIC- Cost [5382.27]; Electrical Forman [67.9 h]; Electrical Technician [67.9 h]; Electrical Helper [67.9 h] |
| 5 | **Backfilling** | 2026-11-26 → 2027-01-06 (+41d) | 2026-12-19 → 2027-01-28 (+40d) |  |  |  |  |
| SDR-2-CON-TE-ZA-3540 | Backfilling over Telecom Manhole | 2026-11-26 → 2027-01-06 (+41d) | 2026-12-19 → 2027-01-28 (+40d) |  | 41d → -10d |  | resources SIC- Cost; Electrical Forman [67.9 h]; Electrical Technician [67.9 h]; Electrical Helper [67.9 h]; Excavator [5 h]; Excavator Operator [67.9 h] → SIC- Cost [10764.5]; Electrical Forman [67.9 h]; Electrical Technician [67.9 h]; Electrical Helper [67.9 h]; Excavator [5 h]; Excavator Operator [67.9 h] |
| 14 | **TELECOMMUNICATION IN ( PH2-A-MCD0 )** |  | 2027-02-02 → 2027-03-28 (+54d) |  |  |  |  |
| 3 | **Ducts** |  | 2026-12-29 → 2027-02-24 (+57d) |  |  |  |  |
| 2 | **Excavation** |  | 2026-11-09 → 2026-12-28 (+49d) |  |  |  |  |
| SDR-2-CON-TE-ZA-3570 | Excavation for telecom trench |  | 2026-11-09 → 2026-12-28 (+49d) | 80% → 82% | 16d → -47d | SDR-2-CON-SL-ZA-1000 FF, SDR-2-CON-TE-ZA-3480 FF → SDR-2-CON-SL-ZA-1000, SDR-2-CON-TE-ZA-3480 SS+5d | was named Excavation for telecom crossing ducts & trenches; resources SIC- Cost; Electrical Forman [67.9 h]; Electrical Technician [67.9 h]; Electrical Helper [67.9 h]; Excavator [12 h]; Excavator Operator [67.9 h] → SIC- Cost [7189.75]; Electrical Forman [67.9 h]; Electrical Technician [67.9 h]; Electrical Helper [67.9 h]; Excavator [12 h]; Excavator Operator [67.9 h] |
| 5 | **Pipe laying** |  | 2026-11-14 → 2027-01-12 (+59d) |  |  |  |  |
| SDR-2-CON-TE-ZA-3580 | HDPE Pipes for Telecom Installation |  | 2026-11-14 → 2027-01-12 (+59d) | 25% → 40% | 104d → -41d | SDR-2-CON-TE-ZA-3570 FF → SDR-2-CON-TE-ZA-3570 | resources SIC- Cost; Electrical Forman [67.9 h]; Electrical Technician [67.9 h]; Electrical Helper [67.9 h] → SIC- Cost [14379.5]; Electrical Forman [67.9 h]; Electrical Technician [67.9 h]; Electrical Helper [67.9 h] |
| 6 | **Backfilling** | 2026-11-15 → 2026-11-12 (-3d) | 2026-12-05 → 2027-01-30 (+56d) |  |  |  |  |
| SDR-2-CON-TE-ZA-3590 | Backfilling over HDPE Telecom Pipes | 2026-11-15 → 2026-11-12 A (-3d) | 2026-12-05 → 2027-01-30 (+56d) | 0% → 5% | 104d → -41d |  | resources SIC- Cost; Electrical Forman [67.9 h]; Electrical Technician [67.9 h]; Electrical Helper [67.9 h]; Excavator [6 h]; Excavator Operator [67.9 h] → SIC- Cost [7189.75]; Electrical Forman [67.9 h]; Electrical Technician [67.9 h]; Electrical Helper [67.9 h]; Excavator [6 h]; Excavator Operator [67.9 h] |
| 7 | **Pulling Cable** | 2026-12-06 → 2027-01-31 (+56d) | 2026-12-29 → 2027-02-24 (+57d) |  |  |  |  |
| SDR-2-CON-TE-ZA-3640 | Pulling Cable | 2026-12-06 → 2027-01-31 (+56d) | 2026-12-29 → 2027-02-24 (+57d) |  | 104d → -41d |  | resources SIC- Cost; Electrical Forman [67.9 h]; Electrical Technician [67.9 h]; Electrical Helper [67.9 h] → SIC- Cost [43138.5]; Electrical Forman [67.9 h]; Electrical Technician [67.9 h]; Electrical Helper [67.9 h] |
| 4 | **Manholes** |  | 2027-02-02 → 2027-03-28 (+54d) |  |  |  |  |
| SDR-2-CON-TE-ZA-3600 | Excavation for Telecom Manhole |  |  |  |  | SDR-2-CON-TE-ZA-3570 FF → SDR-2-CON-TE-ZA-3570 SS | was named Excavation for Telecom Manholes; resources SIC- Cost; Electrical Forman [62.1 h]; Electrical Technician [62.1 h]; Electrical Helper [62.1 h]; Excavator [12 h]; Excavator Operator [67.9 h] → SIC- Cost [8073.39]; Electrical Forman [62.1 h]; Electrical Technician [62.1 h]; Electrical Helper [62.1 h]; Excavator [12 h]; Excavator Operator [67.9 h] |
| 2 | **Bedding Work** |  | 2026-11-26 → 2026-12-28 (+32d) |  |  |  |  |
| SDR-2-CON-TE-ZA-3650 | Sand bedding for Telecom Manhole |  | 2026-11-26 → 2026-12-28 (+32d) | 75% → 80% | 18.81d → -9d | SDR-2-CON-TE-ZA-3600 FF → SDR-2-CON-TE-ZA-3600 | resources SIC- Cost [5379.14]; Electrical Forman [47.77 h]; Electrical Technician [47.77 h]; Electrical Helper [47.77 h]; Excavator [14.5 h]; Excavator Operator [95.54 h] → SIC- Cost [5382.27]; Electrical Forman [47.77 h]; Electrical Technician [47.77 h]; Electrical Helper [47.77 h]; Excavator [14.5 h]; Excavator Operator [95.54 h] |
| 3 | **Install Manholes** |  | 2026-12-21 → 2027-01-03 (+13d) |  |  |  |  |
| SDR-2-CON-TE-ZA-3610 | Installation of Telecom Manhole |  | 2026-12-21 → 2027-01-03 (+13d) | 75% → 78% | 18.81d → -9d |  | resources SIC- Cost; Electrical Forman [67.9 h]; Electrical Technician [67.9 h]; Electrical Helper [67.9 h] → SIC- Cost [24220.2]; Electrical Forman [67.9 h]; Electrical Technician [67.9 h]; Electrical Helper [67.9 h] |
| 4 | **Testting** | 2026-12-27 → 2027-02-13 (+48d) | 2027-01-09 → 2027-02-27 (+49d) |  |  |  |  |
| SDR-2-CON-TE-ZA-3620 | Telecom Manhole finishing works | 2026-12-27 → 2027-02-13 (+48d) | 2027-01-09 → 2027-02-27 (+49d) |  | 14d → -43d |  | resources SIC- Cost; Electrical Forman [66.88 h]; Electrical Technician [66.88 h]; Electrical Helper [67.9 h] → SIC- Cost [5382.27]; Electrical Forman [66.88 h]; Electrical Technician [66.88 h]; Electrical Helper [67.9 h] |

| ID | Task | Start | Finish | Complete | Total float | Predecessors | Other |
| --- | --- | --- | --- | --- | --- | --- | --- |
| 5 | **Backfilling** | 2027-01-10 → 2027-02-28 (+49d) | 2027-02-02 → 2027-03-28 (+54d) |  |  |  |  |
| SDR-2-CON-TE-ZA-3630 | Backfilling over Telecom Manhole | 2027-01-10 → 2027-02-28 (+49d) | 2027-02-02 → 2027-03-28 (+54d) |  | 14d → -43d |  | resources SIC- Cost; Electrical Forman [47.77 h]; Electrical Technician [47.77 h]; Electrical Helper [47.77 h]; Excavator [6.4 h]; Excavator Operator [67.9 h] → SIC- Cost [10764.5]; Electrical Forman [47.77 h]; Electrical Technician [47.77 h]; Electrical Helper [47.77 h]; Excavator [6.4 h]; Excavator Operator [67.9 h] |
| 5 | **TELECOMMUNICATION IN ( PH2-A-MCE0 )** |  | 2027-02-25 → 2027-03-18 (+21d) |  |  |  |  |
| 3 | **Ducts** |  | 2026-12-28 → 2027-03-03 (+65d) |  |  |  |  |
| 2 | **Excavation** |  | 2026-11-09 → 2026-12-28 (+49d) |  |  |  |  |
| SDR-2-CON-TE-ZA-3660 | Excavation for telecom trench |  | 2026-11-09 → 2026-12-28 (+49d) | 75% → 80% | 16d → -47d | SDR-2-CON-SL-ZA-1000 FF, SDR-2-CON-TE-ZA-3570 FF → SDR-2-CON-SL-ZA-1000, SDR-2-CON-TE-ZA-3570 SS+4d | was named Excavation for telecom crossing ducts & trenches; resources SIC- Cost; Electrical Forman [124.2 h]; Electrical Technician [124.2 h]; Electrical Helper [124.2 h]; Excavator [12 h]; Excavator Operator [135.79 h] → SIC- Cost [7189.75]; Electrical Forman [124.2 h]; Electrical Technician [124.2 h]; Electrical Helper [124.2 h]; Excavator [12 h]; Excavator Operator [135.79 h] |
| 5 | **Pipe laying** |  | 2026-11-09 → 2027-01-12 (+64d) |  |  |  |  |
| SDR-2-CON-TE-ZA-3670 | HDPE Pipes for Telecom Installation |  | 2026-11-09 → 2027-01-12 (+64d) | 25% → 45% | 105d → -47d | SDR-2-CON-TE-ZA-3660 FF → SDR-2-CON-TE-ZA-3660 | resources SIC- Cost; Electrical Forman [67.9 h]; Electrical Technician [67.9 h]; Electrical Helper [67.9 h] → SIC- Cost [14379.5]; Electrical Forman [67.9 h]; Electrical Technician [67.9 h]; Electrical Helper [67.9 h] |
| 6 | **Backfilling** | 2026-11-10 → 2027-01-13 (+64d) | 2026-12-03 → 2027-02-06 (+65d) |  |  |  |  |
| SDR-2-CON-TE-ZA-3680 | Backfilling over HDPE Telecom Pipes | 2026-11-10 → 2027-01-13 (+64d) | 2026-12-03 → 2027-02-06 (+65d) |  | 105d → -47d |  | resources SIC- Cost; Electrical Forman [60.34 h]; Electrical Technician [60.34 h]; Electrical Helper [60.34 h]; Excavator [6 h]; Excavator Operator [6.03 h] → SIC- Cost [7189.75]; Electrical Forman [60.34 h]; Electrical Technician [60.34 h]; Electrical Helper [60.34 h]; Excavator [6 h]; Excavator Operator [6.03 h] |
| 7 | **Pulling Cable** | 2026-12-05 → 2027-02-07 (+64d) | 2026-12-28 → 2027-03-03 (+65d) |  |  |  |  |
| SDR-2-CON-TE-ZA-3730 | Pulling Cable | 2026-12-05 → 2027-02-07 (+64d) | 2026-12-28 → 2027-03-03 (+65d) |  | 105d → -47d |  | resources SIC- Cost; Electrical Forman [67.9 h]; Electrical Technician [67.9 h]; Electrical Helper [67.9 h] → SIC- Cost [43138.5]; Electrical Forman [67.9 h]; Electrical Technician [67.9 h]; Electrical Helper [67.9 h] |
| 4 | **Manholes** |  | 2027-02-25 → 2027-03-18 (+21d) |  |  |  |  |
| 1 | **Excavation** |  | 2026-12-02 → 2026-12-28 (+26d) |  |  |  |  |
| SDR-2-CON-TE-ZA-3690 | Excavation for Telecom Manhole |  | 2026-12-02 → 2026-12-28 (+26d) | 25% → 70% | 16d → 9.2d |  | was named Excavation for Telecom Manholes; resources SIC- Cost [5379.14]; Electrical Forman [62.1 h]; Electrical Technician [62.1 h]; Electrical Helper [62.1 h]; Excavator [12 h]; Excavator Operator [124.2 h] → SIC- Cost [8073.39]; Electrical Forman [62.1 h]; Electrical Technician [62.1 h]; Electrical Helper [62.1 h]; Excavator [12 h]; Excavator Operator [124.2 h] |
| 2 | **Bedding Work** |  | 2026-12-26 → 2027-01-11 (+16d) |  |  |  |  |
| SDR-2-CON-TE-ZA-3740 | Sand bedding for Telecom Manhole |  | 2026-12-26 → 2027-01-11 (+16d) | 20% → 45% | 16d → 9.2d |  | resources SIC- Cost [5379.14]; Electrical Forman [95.54 h]; Electrical Technician [95.54 h]; Electrical Helper [95.54 h]; Excavator [6 h]; Excavator Operator [95.54 h] → SIC- Cost [5382.27]; Electrical Forman [95.54 h]; Electrical Technician [95.54 h]; Electrical Helper [95.54 h]; Excavator [6 h]; Excavator Operator [95.54 h] |
| 3 | **Install Manholes** | 2026-12-27 → 2027-01-12 (+16d) | 2027-01-18 → 2027-02-03 (+16d) |  |  |  |  |
| SDR-2-CON-TE-ZA-3700 | Installation of Telecom Manhole | 2026-12-27 → 2027-01-12 (+16d) | 2027-01-18 → 2027-02-03 (+16d) |  | 16d → 9.2d |  | resources SIC- Cost; Electrical Forman [67.9 h]; Electrical Technician [67.9 h]; Electrical Helper [67.9 h] → SIC- Cost [24220.2]; Electrical Forman [67.9 h]; Electrical Technician [67.9 h]; Electrical Helper [67.9 h] |
| 4 | **Testting** | 2027-01-19 → 2027-02-04 (+16d) | 2027-02-01 → 2027-02-17 (+16d) |  |  |  |  |
| SDR-2-CON-TE-ZA-3710 | Telecom Manhole finishing works | 2027-01-19 → 2027-02-04 (+16d) | 2027-02-01 → 2027-02-17 (+16d) |  | 16d → 9.2d |  | resources SIC- Cost; Electrical Forman [66.88 h]; Electrical Technician [66.88 h]; Electrical Helper [67.9 h] → SIC- Cost [5382.27]; Electrical Forman [66.88 h]; Electrical Technician [66.88 h]; Electrical Helper [67.9 h] |
| 5 | **Backfilling** | 2027-02-02 → 2027-02-18 (+16d) | 2027-02-25 → 2027-03-18 (+21d) |  |  |  |  |
| SDR-2-CON-TE-ZA-3720 | Backfilling over Telecom Manhole | 2027-02-02 → 2027-02-18 (+16d) | 2027-02-25 → 2027-03-18 (+21d) |  | 16d → 9.2d |  | resources SIC- Cost; Electrical Forman [47.77 h]; Electrical Technician [47.77 h]; Electrical Helper [47.77 h]; Excavator [12 h]; Excavator Operator [95.54 h] → SIC- Cost [10764.5]; Electrical Forman [47.77 h]; Electrical Technician [47.77 h]; Electrical Helper [47.77 h]; Excavator [12 h]; Excavator Operator [95.54 h] |
| 6 | **TELECOMMUNICATION IN ( PH2-A-MCF0 )** |  | 2027-02-01 → 2027-03-02 (+29d) |  |  |  |  |
| 3 | **Ducts** |  | 2026-12-27 → 2027-03-02 (+65d) |  |  |  |  |
| 2 | **Excavation** |  | 2026-11-09 → 2026-12-28 (+49d) |  |  |  |  |
| SDR-2-CON-TE-ZA-3750 | Excavation for telecom trench |  | 2026-11-09 → 2026-12-28 (+49d) | 75% → 82% | 16d → 12.2d | SDR-2-CON-SL-ZA-1000 FF, SDR-2-CON-TE-ZA-3660 FF → SDR-2-CON-SL-ZA-1000, SDR-2-CON-TE-ZA-3660 SS+3d | was named Excavation for telecom crossing ducts & trenches; resources SIC- Cost; Electrical Forman [124.2 h]; Electrical Technician [124.2 h]; Electrical Helper [124.2 h]; Excavator [12 h]; Excavator Operator [135.79 h] → SIC- Cost [7189.75]; Electrical Forman [124.2 h]; Electrical Technician [124.2 h]; Electrical Helper [124.2 h]; Excavator [12 h]; Excavator Operator [135.79 h] |
| 5 | **Pipe laying** |  | 2026-11-09 → 2027-01-12 (+64d) |  |  |  |  |
| SDR-2-CON-TE-ZA-3760 | HDPE Pipes for Telecom Installation |  | 2026-11-09 → 2027-01-12 (+64d) | 25% → 40% | 67d → 19.2d | SDR-2-CON-TE-ZA-3750 FF → SDR-2-CON-TE-ZA-3750 | resources SIC- Cost; Electrical Forman [135.79 h]; Electrical Technician [135.79 h]; Electrical Helper [135.79 h] → SIC- Cost [14379.5]; Electrical Forman [135.79 h]; Electrical Technician [135.79 h]; Electrical Helper [135.79 h] |
| 6 | **Backfilling** | 2026-11-10 → 2027-01-13 (+64d) | 2026-12-03 → 2027-02-06 (+65d) |  |  |  |  |
| SDR-2-CON-TE-ZA-3770 | Backfilling over HDPE Telecom Pipes | 2026-11-10 → 2027-01-13 (+64d) | 2026-12-03 → 2027-02-06 (+65d) |  | 67d → 19.2d |  | resources SIC- Cost; Electrical Forman [135.79 h]; Electrical Technician [135.79 h]; Electrical Helper [135.79 h]; Excavator [6 h]; Excavator Operator [135.79 h] → SIC- Cost [7189.75]; Electrical Forman [135.79 h]; Electrical Technician [135.79 h]; Electrical Helper [135.79 h]; Excavator [6 h]; Excavator Operator [135.79 h] |
| 7 | **Pulling Cable** | 2026-12-05 → 2027-02-07 (+64d) | 2026-12-27 → 2027-03-02 (+65d) |  |  |  |  |
| SDR-2-CON-TE-ZA-3820 | Pulling Cable | 2026-12-05 → 2027-02-07 (+64d) | 2026-12-27 → 2027-03-02 (+65d) |  | 67d → 19.2d |  | resources SIC- Cost; Electrical Forman [135.79 h]; Electrical Technician [135.79 h]; Electrical Helper [135.79 h] → SIC- Cost [43138.5]; Electrical Forman [135.79 h]; Electrical Technician [135.79 h]; Electrical Helper [135.79 h] |
| 4 | **Manholes** |  | 2027-02-01 → 2027-02-13 (+12d) |  |  |  |  |
| SDR-2-CON-TE-ZA-3780 | Excavation for Telecom Manhole |  |  |  |  |  | was named Excavation for Telecom Manholes; resources SIC- Cost; Electrical Forman [135.79 h]; Electrical Technician [135.79 h]; Electrical Helper [135.79 h] → SIC- Cost [8073.39]; Electrical Forman [135.79 h]; Electrical Technician [135.79 h]; Electrical Helper [135.79 h] |
| 2 | **Bedding Work** |  | 2026-12-01 → 2026-12-28 (+27d) |  |  |  |  |
| SDR-2-CON-TE-ZA-3830 | Sand bedding for Telecom Manhole |  | 2026-12-01 → 2026-12-28 (+27d) | 75% → 80% | 36d → 33.2d |  | resources SIC- Cost; Electrical Forman [135.79 h]; Electrical Technician [135.79 h]; Electrical Helper [135.79 h] → SIC- Cost [5382.27]; Electrical Forman [135.79 h]; Electrical Technician [135.79 h]; Electrical Helper [135.79 h] |
| 3 | **Install Manholes** |  | 2026-12-24 → 2027-01-05 (+12d) |  |  |  |  |
| SDR-2-CON-TE-ZA-3790 | Installation of Telecom Manhole |  | 2026-12-24 → 2027-01-05 (+12d) | 75% → 80% | 36d → 33.2d |  | resources SIC- Cost; Electrical Forman [67.9 h]; Electrical Technician [67.9 h]; Electrical Helper [67.9 h] → SIC- Cost [24220.2]; Electrical Forman [67.9 h]; Electrical Technician [67.9 h]; Electrical Helper [67.9 h] |
| 4 | **Testting** | 2026-12-26 → 2027-01-06 (+11d) | 2027-01-07 → 2027-01-19 (+12d) |  |  |  |  |
| SDR-2-CON-TE-ZA-3800 | Telecom Manhole finishing works | 2026-12-26 → 2027-01-06 (+11d) | 2027-01-07 → 2027-01-19 (+12d) |  | 36d → 33.2d |  | resources SIC- Cost; Electrical Forman [66.88 h]; Electrical Technician [66.88 h]; Electrical Helper [66.88 h] → SIC- Cost [5382.27]; Electrical Forman [66.88 h]; Electrical Technician [66.88 h]; Electrical Helper [66.88 h] |
| 5 | **Backfilling** | 2027-01-09 → 2027-01-20 (+11d) | 2027-02-01 → 2027-02-13 (+12d) |  |  |  |  |
| SDR-2-CON-TE-ZA-3810 | Backfilling over Telecom Manhole | 2027-01-09 → 2027-01-20 (+11d) | 2027-02-01 → 2027-02-13 (+12d) |  | 36d → 33.2d |  | resources SIC- Cost; Electrical Forman [67.9 h]; Electrical Technician [67.9 h]; Electrical Helper [67.9 h]; Excavator [12 h]; Excavator Operator [67.9 h] → SIC- Cost [10764.5]; Electrical Forman [67.9 h]; Electrical Technician [67.9 h]; Electrical Helper [67.9 h]; Excavator [12 h]; Excavator Operator [67.9 h] |
| 7 | **TELECOMMUNICATION IN ( PH2-A-MCG0 )** |  | 2027-02-25 → 2027-03-15 (+18d) |  |  |  |  |
| 3 | **Ducts** |  | 2027-01-06 → 2027-03-15 (+68d) |  |  |  |  |
| 2 | **Excavation** |  | 2026-11-09 → 2026-12-28 (+49d) |  |  |  |  |
| SDR-2-CON-TE-ZA-3840 | Excavation for telecom trench |  | 2026-11-09 → 2026-12-28 (+49d) | 75% → 82% | 16d → 12.2d | SDR-2-CON-SL-ZA-1000 FF, SDR-2-CON-TE-ZA-3750 FF → SDR-2-CON-SL-ZA-1000, SDR-2-CON-TE-ZA-3750 SS+3d | was named Excavation for telecom crossing ducts & trenches; resources SIC- Cost; Electrical Forman [135.79 h]; Electrical Technician [135.79 h]; Electrical Helper [135.79 h]; Excavator [12.01 h]; Excavator Operator [135.79 h] → SIC- Cost [7189.75]; Electrical Forman [135.79 h]; Electrical Technician [135.79 h]; Electrical Helper [135.79 h]; Excavator [12.01 h]; Excavator Operator [135.79 h] |
| 5 | **Pipe laying** |  | 2026-11-09 → 2027-01-10 (+62d) |  |  |  |  |
| SDR-2-CON-TE-ZA-3850 | HDPE Pipes for Telecom Installation |  | 2026-11-09 → 2027-01-10 (+62d) | 25% → 45% | 58d → 12.2d | SDR-2-CON-TE-ZA-3840 FF → SDR-2-CON-TE-ZA-3840 | resources SIC- Cost; Electrical Forman [67.9 h]; Electrical Technician [67.9 h]; Electrical Helper [67.9 h] → SIC- Cost [14379.5]; Electrical Forman [67.9 h]; Electrical Technician [67.9 h]; Electrical Helper [67.9 h] |
| 6 | **Backfilling** | 2026-11-10 → 2027-01-11 (+62d) | 2026-12-02 → 2027-02-02 (+62d) |  |  |  |  |
| SDR-2-CON-TE-ZA-3860 | Backfilling over HDPE Telecom Pipes | 2026-11-10 → 2027-01-11 (+62d) | 2026-12-02 → 2027-02-02 (+62d) |  | 58d → 12.2d |  | resources SIC- Cost; Electrical Forman [40.23 h]; Electrical Technician [40.23 h]; Electrical Helper [40.23 h]; Excavator [6 h]; Excavator Operator [6.03 h] → SIC- Cost [7189.75]; Electrical Forman [40.23 h]; Electrical Technician [40.23 h]; Electrical Helper [40.23 h]; Excavator [6 h]; Excavator Operator [6.03 h] |
| 7 | **Pulling Cable** | 2026-12-14 → 2027-02-14 (+62d) | 2027-01-06 → 2027-03-15 (+68d) |  |  |  |  |
| SDR-2-CON-TE-ZA-3910 | Pulling Cable | 2026-12-14 → 2027-02-14 (+62d) | 2027-01-06 → 2027-03-15 (+68d) |  | 58d → 12.2d |  | resources SIC- Cost; Electrical Forman [67.9 h]; Electrical Technician [67.9 h]; Electrical Helper [67.9 h] → SIC- Cost [43138.5]; Electrical Forman [67.9 h]; Electrical Technician [67.9 h]; Electrical Helper [67.9 h] |
| 4 | **Manholes** |  | 2027-02-25 → 2027-02-16 (-9d) |  |  |  |  |
| 1 | **Excavation** |  | 2026-12-02 → 2026-12-27 (+25d) |  |  |  |  |
| SDR-2-CON-TE-ZA-3870 | Excavation for Telecom Manhole |  | 2026-12-02 → 2026-12-27 (+25d) |  | 16d → 30.2d |  | was named Excavation for Telecom Manholes; resources SIC- Cost; Electrical Forman [67.9 h]; Electrical Technician [67.9 h]; Electrical Helper [67.9 h]; Excavator [12 h]; Excavator Operator [124.2 h] → SIC- Cost [8073.39]; Electrical Forman [67.9 h]; Electrical Technician [67.9 h]; Electrical Helper [67.9 h]; Excavator [12 h]; Excavator Operator [124.2 h] |
| 2 | **Bedding Work** |  | 2026-12-26 → 2027-01-03 (+8d) |  |  |  |  |
| SDR-2-CON-TE-ZA-3920 | Sand bedding for Telecom Manhole |  | 2026-12-26 → 2027-01-03 (+8d) |  | 16d → 30.2d |  | resources SIC- Cost; Electrical Forman [67.9 h]; Electrical Technician [67.9 h]; Electrical Helper [67.9 h] → SIC- Cost [5382.27]; Electrical Forman [67.9 h]; Electrical Technician [67.9 h]; Electrical Helper [67.9 h] |
| 3 | **Install Manholes** |  | 2027-01-18 → 2027-01-10 (-8d) |  |  |  |  |
| SDR-2-CON-TE-ZA-3880 | Installation of Telecom Manhole |  | 2027-01-18 → 2027-01-10 (-8d) |  | 16d → 30.2d |  | resources SIC- Cost; Electrical Forman [67.9 h]; Electrical Technician [67.9 h]; Electrical Helper [67.9 h] → SIC- Cost [24220.2]; Electrical Forman [67.9 h]; Electrical Technician [67.9 h]; Electrical Helper [67.9 h] |
| 4 | **Testting** | 2027-01-19 → 2027-01-11 (-8d) | 2027-02-01 → 2027-01-24 (-8d) |  |  |  |  |
| SDR-2-CON-TE-ZA-3890 | Telecom Manhole finishing works | 2027-01-19 → 2027-01-11 (-8d) | 2027-02-01 → 2027-01-24 (-8d) |  | 16d → 30.2d |  | resources SIC- Cost; Electrical Forman [66.88 h]; Electrical Technician [66.88 h]; Electrical Helper [66.88 h] → SIC- Cost [5382.27]; Electrical Forman [66.88 h]; Electrical Technician [66.88 h]; Electrical Helper [66.88 h] |
| 5 | **Backfilling** | 2027-02-02 → 2027-01-25 (-8d) | 2027-02-25 → 2027-02-16 (-9d) |  |  |  |  |
| SDR-2-CON-TE-ZA-3900 | Backfilling over Telecom Manhole | 2027-02-02 → 2027-01-25 (-8d) | 2027-02-25 → 2027-02-16 (-9d) |  | 16d → 30.2d |  | resources SIC- Cost; Electrical Forman [67.9 h]; Electrical Technician [67.9 h]; Electrical Helper [67.9 h]; Excavator [12 h]; Excavator Operator [67.9 h]; Dumper Operator [67.9 h]; Dumper Truck [50 h] → SIC- Cost [10764.5]; Electrical Forman [67.9 h]; Electrical Technician [67.9 h]; Electrical Helper [67.9 h]; Excavator [12 h]; Excavator Operator [67.9 h]; Dumper Operator [67.9 h]; Dumper Truck [50 h] |
| 8 | **TELECOMMUNICATION IN ( PH2-A-MCH0 )** |  | 2027-02-23 → 2027-03-03 (+8d) |  |  |  |  |
| 3 | **Ducts** |  | 2027-01-19 → 2027-03-03 (+43d) |  |  |  |  |
| 2 | **Excavation** |  | 2026-11-09 → 2026-12-28 (+49d) |  |  |  |  |
| SDR-2-CON-TE-ZA-3930 | Excavation for telecom trench |  | 2026-11-09 → 2026-12-28 (+49d) | 80% → 85% | 18d → 16.2d | SDR-2-CON-SL-ZA-1000 FF, SDR-2-CON-TE-ZA-3840 FF → SDR-2-CON-SL-ZA-1000, SDR-2-CON-TE-ZA-3840 SS+2d | was named Excavation for telecom crossing ducts & trenches; resources SIC- Cost; Electrical Forman [135.79 h]; Electrical Technician [135.79 h]; Electrical Helper [135.79 h] → SIC- Cost [7189.75]; Electrical Forman [135.79 h]; Electrical Technician [135.79 h]; Electrical Helper [135.79 h] |
| 5 | **Pipe laying** | 2026-11-10 → 2026-11-09 (-1d) | 2026-12-02 → 2027-01-13 (+42d) |  |  |  |  |
| SDR-2-CON-TE-ZA-3940 | HDPE Pipes for Telecom Installation | 2026-11-10 → 2026-11-09 A (-1d) | 2026-12-02 → 2027-01-13 (+42d) | 0% → 40% | 47d → 18.2d |  | resources SIC- Cost; Electrical Forman [67.9 h]; Electrical Technician [67.9 h]; Electrical Helper [67.9 h] → SIC- Cost [14379.5]; Electrical Forman [67.9 h]; Electrical Technician [67.9 h]; Electrical Helper [67.9 h] |

| ID | Task | Start | Finish | Complete | Total float | Predecessors | Other |
| --- | --- | --- | --- | --- | --- | --- | --- |
| 6 | **Backfilling** | 2026-12-03 → 2027-01-14 (+42d) | 2026-12-26 → 2027-02-06 (+42d) |  |  |  |  |
| SDR-2-CON-TE-ZA-3950 | Backfilling over HDPE Telecom Pipes | 2026-12-03 → 2027-01-14 (+42d) | 2026-12-26 → 2027-02-06 (+42d) |  | 47d → 18.2d |  | resources SIC- Cost; Electrical Forman [40.23 h]; Electrical Technician [40.23 h]; Electrical Helper [40.23 h]; Excavator [6 h]; Excavator Operator [40.23 h] → SIC- Cost [7189.75]; Electrical Forman [40.23 h]; Electrical Technician [40.23 h]; Electrical Helper [40.23 h]; Excavator [6 h]; Excavator Operator [40.23 h] |
| 7 | **Pulling Cable** | 2026-12-27 → 2027-02-07 (+42d) | 2027-01-19 → 2027-03-03 (+43d) |  |  |  |  |
| SDR-2-CON-TE-ZA-4000 | Pulling Cable | 2026-12-27 → 2027-02-07 (+42d) | 2027-01-19 → 2027-03-03 (+43d) |  | 47d → 18.2d |  | resources SIC- Cost; Electrical Forman [67.9 h]; Electrical Technician [67.9 h]; Electrical Helper [67.9 h] → SIC- Cost [43138.5]; Electrical Forman [67.9 h]; Electrical Technician [67.9 h]; Electrical Helper [67.9 h] |
| 4 | **Manholes** |  | 2027-02-23 → 2027-03-03 (+8d) |  |  |  |  |
| 1 | **Excavation** |  | 2026-12-02 → 2027-01-03 (+32d) |  |  |  |  |
| SDR-2-CON-TE-ZA-3960 | Excavation for Telecom Manhole |  | 2026-12-02 → 2027-01-03 (+32d) | 25% → 45% | 18d → 18.2d |  | was named Excavation for Telecom Manholes; resources SIC- Cost; Electrical Forman [67.9 h]; Electrical Technician [67.9 h]; Electrical Helper [67.9 h]; Excavator [12 h]; Excavator Operator [67.9 h] → SIC- Cost [8073.39]; Electrical Forman [67.9 h]; Electrical Technician [67.9 h]; Electrical Helper [67.9 h]; Excavator [12 h]; Excavator Operator [67.9 h] |
| 2 | **Bedding Work** |  | 2026-12-26 → 2027-01-19 (+24d) |  |  |  |  |
| SDR-2-CON-TE-ZA-4010 | Sand bedding for Telecom Manhole |  | 2026-12-26 → 2027-01-19 (+24d) | 10% → 35% | 18d → 18.2d |  | resources SIC- Cost; Electrical Forman [67.9 h]; Electrical Technician [67.9 h]; Electrical Helper [67.9 h] → SIC- Cost [5382.27]; Electrical Forman [67.9 h]; Electrical Technician [67.9 h]; Electrical Helper [67.9 h] |
| 3 | **Install Manholes** |  | 2027-01-18 → 2027-01-26 (+8d) |  |  |  |  |
| SDR-2-CON-TE-ZA-3970 | Installation of Telecom Manhole |  | 2027-01-18 → 2027-01-26 (+8d) |  | 18d → 18.2d |  | resources SIC- Cost; Electrical Forman [40.23 h]; Electrical Technician [40.23 h]; Electrical Helper [40.23 h] → SIC- Cost [24220.2]; Electrical Forman [40.23 h]; Electrical Technician [40.23 h]; Electrical Helper [40.23 h] |
| 4 | **Testting** | 2027-01-19 → 2027-01-27 (+8d) | 2027-02-01 → 2027-02-09 (+8d) |  |  |  |  |
| SDR-2-CON-TE-ZA-3980 | Telecom Manhole finishing works | 2027-01-19 → 2027-01-27 (+8d) | 2027-02-01 → 2027-02-09 (+8d) |  | 18d → 18.2d |  | resources SIC- Cost; Electrical Forman [67.9 h]; Electrical Technician [67.9 h]; Electrical Helper [67.9 h] → SIC- Cost [5382.27]; Electrical Forman [67.9 h]; Electrical Technician [67.9 h]; Electrical Helper [67.9 h] |
| 5 | **Backfilling** | 2027-02-02 → 2027-02-10 (+8d) | 2027-02-23 → 2027-03-03 (+8d) |  |  |  |  |
| SDR-2-CON-TE-ZA-3990 | Backfilling over Telecom Manhole | 2027-02-02 → 2027-02-10 (+8d) | 2027-02-23 → 2027-03-03 (+8d) |  | 18d → 18.2d |  | resources SIC- Cost; Electrical Forman [67.9 h]; Electrical Technician [67.9 h]; Electrical Helper [67.9 h]; Excavator [12 h]; Excavator Operator [67.9 h] → SIC- Cost [10764.5]; Electrical Forman [67.9 h]; Electrical Technician [67.9 h]; Electrical Helper [67.9 h]; Excavator [12 h]; Excavator Operator [67.9 h] |
| 9 | **TELECOMMUNICATION IN ( PH2-ART-MC00 )** |  | 2027-01-28 → 2027-03-06 (+37d) |  |  |  |  |
| 3 | **Ducts** |  | 2027-01-18 → 2027-03-06 (+47d) |  |  |  |  |
| 2 | **Excavation** |  | 2026-11-09 → 2026-12-28 (+49d) |  |  |  |  |
| SDR-2-CON-TE-ZA-4020 | Excavation for telecom trench |  | 2026-11-09 → 2026-12-28 (+49d) | 70% → 82% | 39d → 16.2d | SDR-2-CON-SL-ZA-1000 FF, SDR-2-CON-TE-ZA-3930 FF → SDR-2-CON-SL-ZA-1000, SDR-2-CON-TE-ZA-3930 SS | was named Excavation for telecom crossing ducts & trenches; resources SIC- Cost; Electrical Forman [135.79 h]; Electrical Technician [135.79 h]; Electrical Helper [135.79 h]; Excavator [12 h]; Excavator Operator [135.79 h] → SIC- Cost [7189.75]; Electrical Forman [135.79 h]; Electrical Technician [135.79 h]; Electrical Helper [135.79 h]; Excavator [12 h]; Excavator Operator [135.79 h] |
| 5 | **Pipe laying** | 2026-11-10 → 2026-11-12 (+2d) | 2026-12-02 → 2027-01-17 (+46d) |  |  |  |  |
| SDR-2-CON-TE-ZA-4030 | HDPE Pipes for Telecom Installation | 2026-11-10 → 2026-11-12 A (+2d) | 2026-12-02 → 2027-01-17 (+46d) | 0% → 25% | 48d → 16.2d |  | resources SIC- Cost; Electrical Forman [67.9 h]; Electrical Technician [67.9 h]; Electrical Helper [67.9 h] → SIC- Cost [14379.5]; Electrical Forman [67.9 h]; Electrical Technician [67.9 h]; Electrical Helper [67.9 h] |
| 6 | **Backfilling** | 2026-12-03 → 2027-01-18 (+46d) | 2026-12-24 → 2027-02-08 (+46d) |  |  |  |  |
| SDR-2-CON-TE-ZA-4040 | Backfilling over HDPE Telecom Pipes | 2026-12-03 → 2027-01-18 (+46d) | 2026-12-24 → 2027-02-08 (+46d) |  | 48d → 16.2d |  | resources SIC- Cost; Electrical Forman [67.9 h]; Electrical Technician [67.9 h]; Electrical Helper [67.9 h]; Excavator [6 h]; Excavator Operator [67.9 h] → SIC- Cost [7189.75]; Electrical Forman [67.9 h]; Electrical Technician [67.9 h]; Electrical Helper [67.9 h]; Excavator [6 h]; Excavator Operator [67.9 h] |
| 7 | **Pulling Cable** | 2026-12-26 → 2027-02-09 (+45d) | 2027-01-18 → 2027-03-06 (+47d) |  |  |  |  |
| SDR-2-CON-TE-ZA-4090 | Pulling Cable | 2026-12-26 → 2027-02-09 (+45d) | 2027-01-18 → 2027-03-06 (+47d) |  | 48d → 16.2d |  | resources SIC- Cost; Electrical Forman [135.79 h]; Electrical Technician [135.79 h]; Electrical Helper [135.79 h] → SIC- Cost [43138.5]; Electrical Forman [135.79 h]; Electrical Technician [135.79 h]; Electrical Helper [135.79 h] |
| 4 | **Manholes** |  | 2027-01-28 → 2027-02-14 (+17d) |  |  |  |  |
| SDR-2-CON-TE-ZA-4050 | Excavation for Telecom Manhole |  |  |  |  |  | was named Excavation for Telecom Manholes; resources SIC- Cost; Electrical Forman [135.79 h]; Electrical Technician [135.79 h]; Electrical Helper [135.79 h]; Excavator [12 h]; Excavator Operator [248.39 h] → SIC- Cost [8073.39]; Electrical Forman [135.79 h]; Electrical Technician [135.79 h]; Electrical Helper [135.79 h]; Excavator [12 h]; Excavator Operator [248.39 h] |
| 2 | **Bedding Work** |  | 2026-12-01 → 2026-12-30 (+29d) |  |  |  |  |
| SDR-2-CON-TE-ZA-4100 | Sand bedding for Telecom Manhole |  | 2026-12-01 → 2026-12-30 (+29d) | 50% → 55% | 39d → 32.2d |  | resources SIC- Cost; Electrical Forman [135.79 h]; Electrical Technician [135.79 h]; Electrical Helper [135.79 h] → SIC- Cost [5382.27]; Electrical Forman [135.79 h]; Electrical Technician [135.79 h]; Electrical Helper [135.79 h] |
| 3 | **Install Manholes** |  | 2026-12-24 → 2027-01-10 (+17d) |  |  |  |  |
| SDR-2-CON-TE-ZA-4060 | Installation of Telecom Manhole |  | 2026-12-24 → 2027-01-10 (+17d) | 50% → 55% | 39d → 32.2d |  | resources SIC- Cost; Electrical Forman [67.9 h]; Electrical Technician [60.34 h]; Electrical Helper [67.9 h] → SIC- Cost [24220.2]; Electrical Forman [67.9 h]; Electrical Technician [60.34 h]; Electrical Helper [67.9 h] |
| 4 | **Testting** | 2026-12-26 → 2027-01-11 (+16d) | 2027-01-07 → 2027-01-24 (+17d) |  |  |  |  |
| SDR-2-CON-TE-ZA-4070 | Telecom Manhole finishing works | 2026-12-26 → 2027-01-11 (+16d) | 2027-01-07 → 2027-01-24 (+17d) |  | 39d → 32.2d |  | resources SIC- Cost; Electrical Forman [67.9 h]; Electrical Technician [67.9 h]; Electrical Helper [67.9 h] → SIC- Cost [5382.27]; Electrical Forman [67.9 h]; Electrical Technician [67.9 h]; Electrical Helper [67.9 h] |
| 5 | **Backfilling** | 2027-01-09 → 2027-01-25 (+16d) | 2027-01-28 → 2027-02-14 (+17d) |  |  |  |  |
| SDR-2-CON-TE-ZA-4080 | Backfilling over Telecom Manhole | 2027-01-09 → 2027-01-25 (+16d) | 2027-01-28 → 2027-02-14 (+17d) |  | 39d → 32.2d |  | resources SIC- Cost; Electrical Forman [67.9 h]; Electrical Technician [67.9 h]; Electrical Helper [67.9 h]; Excavator [12 h]; Excavator Operator [67.9 h] → SIC- Cost [10764.5]; Electrical Forman [67.9 h]; Electrical Technician [67.9 h]; Electrical Helper [67.9 h]; Excavator [12 h]; Excavator Operator [67.9 h] |
| 10 | **TELECOMMUNICATION IN ( PH2-ART-MC10 )** |  | 2027-01-02 → 2027-03-02 (+59d) |  |  |  |  |
| 3 | **Ducts** |  | 2026-12-27 → 2027-03-02 (+65d) |  |  |  |  |
| 2 | **Excavation** |  | 2026-11-09 → 2026-12-28 (+49d) |  |  |  |  |
| SDR-2-CON-TE-ZA-4110 | Excavation for telecom trench |  | 2026-11-09 → 2026-12-28 (+49d) | 75% → 82% | 67d → 19.2d | SDR-2-CON-SL-ZA-1000 FF, SDR-2-CON-TE-ZA-3930 FF → SDR-2-CON-SL-ZA-1000, SDR-2-CON-TE-ZA-3930 SS | was named Excavation for telecom crossing ducts & trenches; resources SIC- Cost; Electrical Forman [135.79 h]; Electrical Technician [135.79 h]; Electrical Helper [135.79 h]; Excavator [12 h]; Excavator Operator [135.79 h] → SIC- Cost [7189.75]; Electrical Forman [135.79 h]; Electrical Technician [135.79 h]; Electrical Helper [135.79 h]; Excavator [12 h]; Excavator Operator [135.79 h] |
| 5 | **Pipe laying** |  | 2026-11-09 → 2027-01-12 (+64d) |  |  |  |  |
| SDR-2-CON-TE-ZA-4120 | HDPE Pipes for Telecom Installation |  | 2026-11-09 → 2027-01-12 (+64d) | 25% → 40% | 67d → 19.2d | SDR-2-CON-TE-ZA-4110 FF → SDR-2-CON-TE-ZA-4110 | resources SIC- Cost; Electrical Forman [67.9 h]; Electrical Technician [67.9 h]; Electrical Helper [67.9 h] → SIC- Cost [14379.5]; Electrical Forman [67.9 h]; Electrical Technician [67.9 h]; Electrical Helper [67.9 h] |
| 6 | **Backfilling** | 2026-11-10 → 2027-01-13 (+64d) | 2026-12-02 → 2027-02-04 (+64d) |  |  |  |  |
| SDR-2-CON-TE-ZA-4130 | Backfilling over HDPE Telecom Pipes | 2026-11-10 → 2027-01-13 (+64d) | 2026-12-02 → 2027-02-04 (+64d) |  | 67d → 19.2d |  | resources SIC- Cost; Electrical Forman [80.46 h]; Electrical Technician [80.46 h]; Electrical Helper [80.46 h]; Excavator [6 h]; Excavator Operator [6.03 h] → SIC- Cost [7189.75]; Electrical Forman [80.46 h]; Electrical Technician [80.46 h]; Electrical Helper [80.46 h]; Excavator [6 h]; Excavator Operator [6.03 h] |
| 7 | **Pulling Cable** | 2026-12-03 → 2027-02-06 (+65d) | 2026-12-27 → 2027-03-02 (+65d) |  |  |  |  |
| SDR-2-CON-TE-ZA-4180 | Pulling Cable | 2026-12-03 → 2027-02-06 (+65d) | 2026-12-27 → 2027-03-02 (+65d) |  | 67d → 19.2d |  | resources SIC- Cost; Electrical Forman [67.9 h]; Electrical Technician [67.9 h]; Electrical Helper [67.9 h] → SIC- Cost [43138.5]; Electrical Forman [67.9 h]; Electrical Technician [67.9 h]; Electrical Helper [67.9 h] |
| 4 | **Manholes** |  | 2027-01-02 → 2027-02-14 (+43d) |  |  |  |  |
| SDR-2-CON-TE-ZA-4140 | Excavation for Telecom Manhole |  |  |  |  | SDR-2-CON-TE-ZA-4110 FF → SDR-2-CON-TE-ZA-4110 SS | was named Excavation for Telecom Manholes; resources SIC- Cost; Electrical Forman [135.79 h]; Electrical Technician [135.79 h]; Electrical Helper [135.79 h] → SIC- Cost [8073.39]; Electrical Forman [135.79 h]; Electrical Technician [135.79 h]; Electrical Helper [135.79 h] |
| 2 | **Bedding Work** |  | 2026-11-25 → 2026-12-28 (+33d) |  |  |  |  |
| SDR-2-CON-TE-ZA-4190 | Sand bedding for Telecom Manhole |  | 2026-11-25 → 2026-12-28 (+33d) | 60% → 75% | 62.46d → 32.2d | SDR-2-CON-TE-ZA-4140 FF → SDR-2-CON-TE-ZA-4140 | resources SIC- Cost; Electrical Forman [135.79 h]; Electrical Technician [135.79 h]; Electrical Helper [135.79 h] → SIC- Cost [5382.27]; Electrical Forman [135.79 h]; Electrical Technician [135.79 h]; Electrical Helper [135.79 h] |
| 3 | **Install Manholes** |  | 2026-11-25 → 2027-01-07 (+43d) |  |  |  |  |
| SDR-2-CON-TE-ZA-4150 | Installation of Telecom Manhole |  | 2026-11-25 → 2027-01-07 (+43d) | 60% → 65% | 62.46d → 32.2d | SDR-2-CON-TE-ZA-4140 FF, SDR-2-CON-TE-ZA-4190 FF → SDR-2-CON-TE-ZA-4140, SDR-2-CON-TE-ZA-4190 | resources SIC- Cost; Electrical Forman [80.46 h]; Electrical Technician [80.46 h]; Electrical Helper [80.46 h] → SIC- Cost [24220.2]; Electrical Forman [80.46 h]; Electrical Technician [80.46 h]; Electrical Helper [80.46 h] |
| 4 | **Testting** | 2026-11-25 → 2027-01-09 (+45d) | 2026-12-08 → 2027-01-20 (+43d) |  |  |  |  |
| SDR-2-CON-TE-ZA-4160 | Telecom Manhole finishing works | 2026-11-25 → 2027-01-09 (+45d) | 2026-12-08 → 2027-01-20 (+43d) |  | 62.46d → 32.2d |  | resources SIC- Cost; Electrical Forman [67.9 h]; Electrical Technician [67.9 h]; Electrical Helper [67.9 h] → SIC- Cost [5382.27]; Electrical Forman [67.9 h]; Electrical Technician [67.9 h]; Electrical Helper [67.9 h] |
| 5 | **Backfilling** | 2026-12-08 → 2027-01-21 (+44d) | 2027-01-02 → 2027-02-14 (+43d) |  |  |  |  |
| SDR-2-CON-TE-ZA-4170 | Backfilling over Telecom Manhole | 2026-12-08 → 2027-01-21 (+44d) | 2027-01-02 → 2027-02-14 (+43d) |  | 62.46d → 32.2d |  | resources SIC- Cost; Electrical Forman [67.9 h]; Electrical Technician [67.9 h]; Electrical Helper [67.9 h]; Excavator [12 h]; Excavator Operator [67.9 h] → SIC- Cost [10764.5]; Electrical Forman [67.9 h]; Electrical Technician [67.9 h]; Electrical Helper [67.9 h]; Excavator [12 h]; Excavator Operator [67.9 h] |
| ZG | **ZONE G** |  | 2027-04-05 → 2027-05-09 (+34d) |  |  |  |  |
| 1 | **Street Lighting Network** |  | 2027-04-05 → 2027-05-09 (+34d) |  |  |  |  |
| 5 | **Street Lighting IN ( PH2-G-MCA0 )** |  | 2027-01-04 → 2027-03-15 (+70d) |  |  |  |  |
| 10 | **Excavation** |  | 2026-11-09 → 2027-01-07 (+59d) |  |  |  |  |
| SDR-2-CON-SL-ZA-3230 | Excavation for LV Cable trench |  | 2026-11-09 → 2027-01-07 (+59d) |  | 37d → -36d | SDR-2-CON-SL-ZA-3590 FF, SDR-2-CON-SL-ZA-1000 FF, SDR-2-CON-SL-ZA-2950 FF → SDR-2-CON-SL-ZA-3590, SDR-2-CON-SL-ZA-1000, SDR-2-CON-SL-ZA-2950 FS+15d | was named Excavation for LV Cable drawpits & trenches; resources SIC- Cost; Electrical Forman [135.79 h]; Electrical Technician [1060.45 h]; Electrical Helper [135.79 h]; Labor [135.79 h] → SIC- Cost [35933.6]; Electrical Forman [135.79 h]; Electrical Technician [1060.45 h]; Electrical Helper [135.79 h]; Labor [135.79 h] |
| 11 | **Install Footings** |  | 2026-11-09 → 2027-01-14 (+66d) |  |  |  |  |
| SDR-2-CON-SL-ZA-3240 | Install Footings |  | 2026-11-09 → 2027-01-14 (+66d) |  | 52d → -36d | SDR-2-CON-SL-ZA-3230 FF → SDR-2-CON-SL-ZA-3230 | resources SIC- Cost; Electrical Engineer [135.79 h]; Electrical Forman [135.79 h]; Electrical Technician [1480.81 h]; Electrical Helper [592.32 h]; Labor [135.79 h] → SIC- Cost [35933.6]; Electrical Engineer [135.79 h]; Electrical Forman [135.79 h]; Electrical Technician [1480.81 h]; Electrical Helper [592.32 h]; Labor [135.79 h] |
| 12 | **Backfilling** |  | 2026-12-02 → 2027-02-04 (+64d) |  |  |  |  |
| SDR-2-CON-SL-ZA-3260 | Backfilling over LV Cables of Street lighting |  | 2026-12-02 → 2027-02-04 (+64d) |  | 52d → -36d |  | resources SIC- Cost; Electrical Engineer [12.8 h]; Electrical Forman [12.8 h]; Electrical Technician [12.8 h]; Electrical Helper [12.8 h]; Excavator [20 h]; Dump Truck [10 h]; Compactor [20 h]; Compactor Operator [6.4 h]; Dum Truck Operator [6.4 h]; Labor [12.8 h] → SIC- Cost [35933.6]; Electrical Engineer [12.8 h]; Electrical Forman [12.8 h]; Electrical Technician [12.8 h]; Electrical Helper [12.8 h]; Excavator [20 h]; Dum Truck [10 h]; Compactor [20 h]; Compactor Operator [6.4 h]; Dum Truck Operator [6.4 h]; Labor [12.8 h] |
| 13 | **Install pole** | 2026-12-12 → 2027-02-14 (+64d) | 2027-01-04 → 2027-03-15 (+70d) |  |  |  |  |
| SDR-2-CON-SL-ZA-3250 | Install Pole | 2026-12-12 → 2027-02-14 (+64d) | 2027-01-04 → 2027-03-15 (+70d) |  | 52d → -36d |  | resources SIC- Cost; Electrical Engineer [67.9 h]; Electrical Forman [67.9 h]; Electrical Technician [67.9 h]; Electrical Helper [67.9 h]; Labor [67.9 h] → SIC- Cost [251535]; Electrical Engineer [67.9 h]; Electrical Forman [67.9 h]; Electrical Technician [67.9 h]; Electrical Helper [67.9 h]; Labor [67.9 h] |
| 6 | **Street Lighting IN ( PH2-G-MCE0 )** |  | 2027-01-19 → 2027-03-14 (+54d) |  |  |  |  |
| 10 | **Excavation** |  | 2026-11-09 → 2026-11-14 (+5d) |  |  |  |  |
| SDR-2-CON-SL-ZA-3270 | Excavation for LV Cable trench |  | 2026-11-09 → 2026-11-14 A (+5d) | 90% → 100% | 15d → none | SDR-2-CON-SL-ZA-3590 FF, SDR-2-CON-SL-ZA-2950 FF → SDR-2-CON-SL-ZA-3590 FS+15d, SDR-2-CON-SL-ZA-2950 | was named Excavation for LV Cable drawpits & trenches; resources SIC- Cost; Electrical Forman [135.79 h]; Electrical Technician [135.79 h]; Electrical Helper [135.79 h]; Labor [135.79 h]; Excavator [25.9 h]; Excavator Operator [706.97 h] → SIC- Cost [40225.5]; Electrical Forman [135.79 h]; Electrical Technician [135.79 h]; Electrical Helper [135.79 h]; Labor [135.79 h]; Excavator [25.9 h]; Excavator Operator [706.97 h] |
| 11 | **Install Footings** |  | 2026-11-09 → 2026-12-21 (+42d) |  |  |  |  |

| ID | Task | Start | Finish | Complete | Total float | Predecessors | Other |
| --- | --- | --- | --- | --- | --- | --- | --- |
| SDR-2-CON-SL-ZA-3280 | Install Footings |  | 2026-11-09 → 2026-12-21 (+42d) |  | 15d → -20d | SDR-2-CON-SL-ZA-3270 FF → SDR-2-CON-SL-ZA-3270 | resources SIC- Cost; Electrical Forman [135.79 h]; Electrical Technician [135.79 h]; Electrical Helper [135.79 h]; Labor [135.79 h] → SIC- Cost [40225.5]; Electrical Forman [135.79 h]; Electrical Technician [135.79 h]; Electrical Helper [135.79 h]; Labor [135.79 h] |
| 12 | **Backfilling** |  | 2026-12-02 → 2026-12-24 (+22d) |  |  |  |  |
| SDR-2-CON-SL-ZA-3300 | Backfilling over LV Cables of Street lighting |  | 2026-12-02 → 2026-12-24 (+22d) |  | 15d → -20d |  | resources SIC- Cost; Electrical Forman [135.79 h]; Electrical Technician [135.79 h]; Electrical Helper [135.79 h]; Labor [135.79 h] → SIC- Cost [40225.5]; Electrical Forman [135.79 h]; Electrical Technician [135.79 h]; Electrical Helper [135.79 h]; Labor [135.79 h] |
| 13 | **Install pole** | 2026-12-27 → 2027-02-13 (+48d) | 2027-01-19 → 2027-03-14 (+54d) |  |  |  |  |
| SDR-2-CON-SL-ZA-3290 | Install Pole | 2026-12-27 → 2027-02-13 (+48d) | 2027-01-19 → 2027-03-14 (+54d) |  | 5d → -52d |  | resources SIC- Cost; Electrical Forman [67.9 h]; Electrical Technician [67.9 h]; Electrical Helper [67.9 h]; Labor [67.9 h] → SIC- Cost [281579]; Electrical Forman [67.9 h]; Electrical Technician [67.9 h]; Electrical Helper [67.9 h]; Labor [67.9 h] |
| 7 | **Street Lighting IN ( PH2-G-MCF0 )** |  | 2026-12-07 → 2027-02-01 (+56d) |  |  |  |  |
| SDR-2-CON-SL-ZA-3310 | Excavation for LV Cable trench |  |  |  |  | SDR-2-CON-SL-ZA-3230 FF, SDR-2-CON-SL-ZA-3270 FF → SDR-2-CON-SL-ZA-3230 SS, SDR-2-CON-SL-ZA-3270 SS+3d | was named Excavation for LV Cable drawpits & trenches; resources SIC- Cost; Electrical Forman [135.79 h]; Electrical Technician [135.79 h]; Electrical Helper [135.79 h]; Labor [135.79 h]; Excavator [25.9 h]; Excavator Operator [135.79 h] → SIC- Cost [40225.5]; Electrical Forman [135.79 h]; Electrical Technician [135.79 h]; Electrical Helper [135.79 h]; Labor [135.79 h]; Excavator [25.9 h]; Excavator Operator [135.79 h] |
| 11 | **Install Footings** |  | 2026-11-09 → 2027-01-07 (+59d) |  |  |  |  |
| SDR-2-CON-SL-ZA-3320 | Install Footings |  | 2026-11-09 → 2027-01-07 (+59d) |  | 82d → 33d | SDR-2-CON-SL-ZA-3310 FF → SDR-2-CON-SL-ZA-3310 | resources SIC- Cost; Electrical Forman [135.79 h]; Electrical Technician [135.79 h]; Electrical Helper [135.79 h]; Labor [135.79 h] → SIC- Cost [40225.5]; Electrical Forman [135.79 h]; Electrical Technician [135.79 h]; Electrical Helper [135.79 h]; Labor [135.79 h] |
| SDR-2-CON-SL-ZA-3340 | Backfilling over LV Cables of Street lighting |  |  |  |  |  | resources SIC- Cost; Electrical Forman [135.79 h]; Electrical Technician [135.79 h]; Electrical Helper [135.79 h]; Labor [135.79 h]; Excavator [12 h]; Excavator Operator [135.79 h] → SIC- Cost [40225.5]; Electrical Forman [135.79 h]; Electrical Technician [135.79 h]; Electrical Helper [135.79 h]; Labor [135.79 h]; Excavator [12 h]; Excavator Operator [135.79 h] |
| 13 | **Install pole** | 2026-11-14 → 2027-01-09 (+56d) | 2026-12-07 → 2027-02-01 (+56d) |  |  |  |  |
| SDR-2-CON-SL-ZA-3330 | Install Pole | 2026-11-14 → 2027-01-09 (+56d) | 2026-12-07 → 2027-02-01 (+56d) |  | 82d → 33d |  | resources SIC- Cost; Electrical Forman [67.9 h]; Electrical Technician [67.9 h]; Electrical Helper [67.9 h]; Labor [67.9 h] → SIC- Cost [281579]; Electrical Forman [67.9 h]; Electrical Technician [67.9 h]; Electrical Helper [67.9 h]; Labor [67.9 h] |
| 4 | **Street Lighting IN ( PH2-G-MCG0 )** |  | 2026-12-07 → 2027-02-01 (+56d) |  |  |  |  |
| SDR-2-CON-SL-ZA-3350 | Excavation for LV Cable trench |  |  |  |  | SDR-2-CON-SL-ZA-3310 FF → SDR-2-CON-SL-ZA-3310 SS | was named Excavation for LV Cable drawpits & trenches; resources SIC- Cost; Electrical Forman [135.79 h]; Electrical Technician [135.79 h]; Electrical Helper [135.79 h]; Labor [135.79 h]; Excavator [25.75 h]; Excavator Operator [135.79 h] → SIC- Cost [40225.5]; Electrical Forman [135.79 h]; Electrical Technician [135.79 h]; Electrical Helper [135.79 h]; Labor [135.79 h]; Excavator [25.75 h]; Excavator Operator [135.79 h] |
| 11 | **Install Footings** |  | 2026-11-09 → 2027-01-07 (+59d) |  |  |  |  |
| SDR-2-CON-SL-ZA-3360 | Install Footings |  | 2026-11-09 → 2027-01-07 (+59d) |  | 82d → 33d | SDR-2-CON-SL-ZA-3350 FF → SDR-2-CON-SL-ZA-3350 | resources SIC- Cost; Electrical Forman [135.79 h]; Electrical Technician [135.79 h]; Electrical Helper [135.79 h]; Labor [135.79 h] → SIC- Cost [40225.5]; Electrical Forman [135.79 h]; Electrical Technician [135.79 h]; Electrical Helper [135.79 h]; Labor [135.79 h] |
| SDR-2-CON-SL-ZA-3380 | Backfilling over LV Cables of Street lighting |  |  |  |  |  | resources SIC- Cost; Electrical Forman [135.79 h]; Electrical Technician [135.79 h]; Electrical Helper [135.79 h]; Labor [135.79 h]; Excavator [12 h]; Excavator Operator [135.79 h] → SIC- Cost [40225.5]; Electrical Forman [135.79 h]; Electrical Technician [135.79 h]; Electrical Helper [135.79 h]; Labor [135.79 h]; Excavator [12 h]; Excavator Operator [135.79 h] |
| 13 | **Install pole** | 2026-11-14 → 2027-01-09 (+56d) | 2026-12-07 → 2027-02-01 (+56d) |  |  |  |  |
| SDR-2-CON-SL-ZA-3370 | Install Pole | 2026-11-14 → 2027-01-09 (+56d) | 2026-12-07 → 2027-02-01 (+56d) |  | 82d → 33d |  | resources SIC- Cost; Electrical Forman [67.9 h]; Electrical Technician [67.9 h]; Electrical Helper [67.9 h]; Labor [67.9 h] → SIC- Cost [281579]; Electrical Forman [67.9 h]; Electrical Technician [67.9 h]; Electrical Helper [67.9 h]; Labor [67.9 h] |
| 1 | **Street Lighting IN ( PH2-G-MCZ0 )** |  | 2026-11-09 → 2027-01-16 (+68d) |  |  |  |  |
| SDR-2-CON-SL-ZA-3390 | Excavation for LV Cable trench |  |  |  |  | SDR-2-CON-SL-ZA-3350 FF → SDR-2-CON-SL-ZA-3350 SS+3d | was named Excavation for LV Cable drawpits & trenches; resources SIC- Cost; Electrical Forman [135.79 h]; Electrical Technician [135.79 h]; Electrical Helper [135.79 h]; Labor [135.79 h] → SIC- Cost [40225.5]; Electrical Forman [135.79 h]; Electrical Technician [135.79 h]; Electrical Helper [135.79 h]; Labor [135.79 h] |
| 11 | **Install Footings** |  | 2026-11-09 → 2027-01-09 (+61d) |  |  |  |  |
| SDR-2-CON-SL-ZA-3400 | Install Footings |  | 2026-11-09 → 2027-01-09 (+61d) | 60% → 70% | 106d → 34d | SDR-2-CON-SL-ZA-3390 FF → SDR-2-CON-SL-ZA-3390 | resources SIC- Cost; Electrical Forman [135.79 h]; Electrical Technician [135.79 h]; Electrical Helper [135.79 h]; Labor [135.79 h] → SIC- Cost [40225.5]; Electrical Forman [135.79 h]; Electrical Technician [135.79 h]; Electrical Helper [135.79 h]; Labor [135.79 h] |
| SDR-2-CON-SL-ZA-3420 | Backfilling over LV Cables of Street lighting |  |  |  |  | SDR-2-CON-SL-ZA-3400 FF → SDR-2-CON-SL-ZA-3400 | resources SIC- Cost; Electrical Forman [135.79 h]; Electrical Technician [135.79 h]; Electrical Helper [135.79 h]; Labor [135.79 h]; Excavator [12 h]; Excavator Operator [135.79 h] → SIC- Cost [40225.5]; Electrical Forman [135.79 h]; Electrical Technician [135.79 h]; Electrical Helper [135.79 h]; Labor [135.79 h]; Excavator [12 h]; Excavator Operator [135.79 h] |
| 13 | **Install pole** |  | 2026-11-09 → 2027-01-16 (+68d) |  |  |  |  |
| SDR-2-CON-SL-ZA-3410 | Install Pole |  | 2026-11-09 → 2027-01-16 (+68d) |  | 106d → 34d | SDR-2-CON-SL-ZA-3420 FF → SDR-2-CON-SL-ZA-3420 FS+10d | resources SIC- Cost; Electrical Forman [67.9 h]; Electrical Technician [67.9 h]; Electrical Helper [67.9 h]; Labor [67.9 h] → SIC- Cost [281579]; Electrical Forman [67.9 h]; Electrical Technician [67.9 h]; Electrical Helper [67.9 h]; Labor [67.9 h] |
| 10 | **Lighting Pole Panels** | 2026-11-10 → 2026-11-01 (-9d) | 2027-02-11 → 2027-03-15 (+32d) |  |  |  |  |
| 1 | **Excavation** | 2026-11-10 → 2026-11-01 (-9d) | 2026-12-03 → 2027-01-10 (+38d) |  |  |  |  |
| SDR-2-CON-SL-ZA-3430 | Street Lighting Panels Excavation | 2026-11-10 → 2026-11-01 A (-9d) | 2026-12-03 → 2027-01-10 (+38d) | 0% → 50% | 37d → -31d |  | resources SIC- Cost; Electrical Forman [76.43 h]; Electrical Technician [76.43 h]; Electrical Helper [76.43 h]; Labor [76.43 h]; Excavator [12 h]; Excavator Operator [76.43 h] → SIC- Cost [3965]; Electrical Forman [76.43 h]; Electrical Technician [76.43 h]; Electrical Helper [76.43 h]; Labor [76.43 h]; Excavator [12 h]; Excavator Operator [76.43 h] |
| 2 | **Install Footings** | 2026-12-05 → 2026-11-04 (-31d) | 2026-12-26 → 2027-01-20 (+25d) |  |  |  |  |
| SDR-2-CON-SL-ZA-3440 | Installation Footings Street Lighting Panels | 2026-12-05 → 2026-11-04 A (-31d) | 2026-12-26 → 2027-01-20 (+25d) | 0% → 50% | 66d → 21d |  | resources SIC- Cost; Electrical Forman [57.32 h]; Electrical Technician [57.32 h]; Electrical Helper [57.32 h]; Labor [57.32 h] → SIC- Cost [3965]; Electrical Forman [57.32 h]; Electrical Technician [57.32 h]; Electrical Helper [57.32 h]; Labor [57.32 h] |
| 3 | **Backfilling** | 2026-12-27 → 2027-01-21 (+25d) | 2027-01-18 → 2027-02-13 (+26d) |  |  |  |  |
| SDR-2-CON-SL-ZA-3450 | Street Lighting Panels Backfilling | 2026-12-27 → 2027-01-21 (+25d) | 2027-01-18 → 2027-02-13 (+26d) |  | 66d → 21d |  | resources SIC- Cost; Electrical Forman [50.28 h]; Electrical Technician [50.28 h]; Electrical Helper [50.28 h]; Labor [50.28 h] → SIC- Cost [3965]; Electrical Forman [50.28 h]; Electrical Technician [50.28 h]; Electrical Helper [50.28 h]; Labor [50.28 h] |
| 4 | **Install pole** | 2027-01-19 → 2027-02-14 (+26d) | 2027-02-11 → 2027-03-15 (+32d) |  |  |  |  |
| SDR-2-CON-SL-ZA-3460 | Street Lighting Panels Installation | 2027-01-19 → 2027-02-14 (+26d) | 2027-02-11 → 2027-03-15 (+32d) |  | 66d → 21d |  | resources SIC- Cost; Electrical Forman [67.9 h]; Electrical Technician [85.98 h]; Electrical Helper [67.9 h]; Labor [81.48 h] → SIC- Cost [27755]; Electrical Forman [67.9 h]; Electrical Technician [85.98 h]; Electrical Helper [67.9 h]; Labor [81.48 h] |
| 11 | **Ring Main Unit** | 2026-12-05 → 2026-11-12 (-23d) | 2027-02-07 → 2027-04-12 (+64d) |  |  |  |  |
| 1 | **Leveling** | 2026-12-05 → 2026-11-12 (-23d) | 2026-12-27 → 2027-02-24 (+59d) |  |  |  |  |
| SDR-2-CON-SL-ZA-3470 | Ring Main Unit leveling | 2026-12-05 → 2026-11-12 A (-23d) | 2026-12-27 → 2027-02-24 (+59d) | 0% → 50% | 37d → -52d |  | resources SIC- Cost; Electrical Forman [114.64 h]; Electrical Technician [114.64 h]; Electrical Helper [114.64 h]; Labor [114.64 h] → SIC- Cost [11326]; Electrical Forman [114.64 h]; Electrical Technician [114.64 h]; Electrical Helper [114.64 h]; Labor [114.64 h] |
| 2 | **Lean Concrete** | 2026-12-28 → 2027-02-25 (+59d) | 2027-01-14 → 2027-03-20 (+65d) |  |  |  |  |
| SDR-2-CON-SL-ZA-3480 | Ring Main Unit Lean Concrete | 2026-12-28 → 2027-02-25 (+59d) | 2027-01-14 → 2027-03-20 (+65d) |  | 37d → -52d |  | resources SIC- Cost; Electrical Forman [50.28 h]; Electrical Technician [50.28 h]; Electrical Helper [50.28 h]; Labor [50.28 h] → SIC- Cost [22652]; Electrical Forman [50.28 h]; Electrical Technician [50.28 h]; Electrical Helper [50.28 h]; Labor [50.28 h] |
| 3 | **Installation** | 2027-01-16 → 2027-03-21 (+64d) | 2027-02-07 → 2027-04-12 (+64d) |  |  |  |  |
| SDR-2-CON-SL-ZA-3490 | Ring Main Unit installation for Street Lighting | 2027-01-16 → 2027-03-21 (+64d) | 2027-02-07 → 2027-04-12 (+64d) |  | 37d → -52d |  | resources SIC- Cost; Electrical Forman [135.79 h]; Electrical Technician [135.79 h]; Electrical Helper [124.2 h]; Labor [124.2 h] → SIC- Cost [79281.9]; Electrical Forman [135.79 h]; Electrical Technician [135.79 h]; Electrical Helper [124.2 h]; Labor [124.2 h] |
| 12 | **Feeder Pillars** | 2026-11-21 → 2026-11-04 (-17d) | 2027-01-28 → 2027-03-21 (+52d) |  |  |  |  |
| 1 | **Leveling** | 2026-11-21 → 2026-11-04 (-17d) | 2026-12-13 → 2027-02-15 (+64d) |  |  |  |  |
| SDR-2-CON-SL-ZA-3500 | Feeder Pillars Leveling | 2026-11-21 → 2026-11-04 A (-17d) | 2026-12-13 → 2027-02-15 (+64d) | 0% → 50% | 33d → -87d |  | resources SIC- Cost; Electrical Forman [95.54 h]; Electrical Technician [95.54 h]; Electrical Helper [95.54 h]; Labor [95.54 h] → SIC- Cost [1062.69]; Electrical Forman [95.54 h]; Electrical Technician [95.54 h]; Electrical Helper [95.54 h]; Labor [95.54 h] |
| 2 | **Lean Concrete** | 2026-12-14 → 2026-11-07 (-37d) | 2027-01-05 → 2027-03-02 (+56d) |  |  |  |  |
| SDR-2-CON-SL-ZA-3510 | Feeder Pillars Lean Concrete | 2026-12-14 → 2026-11-07 A (-37d) | 2027-01-05 → 2027-03-02 (+56d) | 0% → 50% | 33d → -87d |  | resources SIC- Cost; Electrical Forman [40.23 h]; Electrical Technician [40.23 h]; Electrical Helper [40.23 h]; Labor [40.23 h] → SIC- Cost [2125.37]; Electrical Forman [40.23 h]; Electrical Technician [40.23 h]; Electrical Helper [40.23 h]; Labor [40.23 h] |
| 3 | **Installation** | 2027-01-06 → 2026-11-07 (-60d) | 2027-01-28 → 2027-03-21 (+52d) |  |  |  |  |
| SDR-2-CON-SL-ZA-3520 | Feeder Pillars Installation | 2027-01-06 → 2026-11-07 A (-60d) | 2027-01-28 → 2027-03-21 (+52d) | 0% → 50% | 33d → -87d |  | resources SIC- Cost; Electrical Forman [136.62 h]; Electrical Technician [136.62 h]; Electrical Helper [136.62 h]; Labor [136.62 h] → SIC- Cost [7438.82]; Electrical Forman [136.62 h]; Electrical Technician [136.62 h]; Electrical Helper [136.62 h]; Labor [136.62 h] |
| 13 | **KWH Frame** | 2027-01-09 → 2026-11-07 (-63d) |  |  |  |  |  |
| 1 | **Leveling** | 2027-01-09 → 2026-11-07 (-63d) | 2027-01-31 → 2027-02-18 (+18d) |  |  |  |  |
| SDR-2-CON-SL-ZA-3530 | KWH meter mounting frame Leveling | 2027-01-09 → 2026-11-07 A (-63d) | 2027-01-31 → 2027-02-18 (+18d) | 0% → 50% | 1d → -90d |  | resources SIC- Cost; Electrical Forman [67.9 h]; Electrical Technician [67.9 h]; Electrical Helper [67.9 h]; Labor [67.9 h] → SIC- Cost [1416.84]; Electrical Forman [67.9 h]; Electrical Technician [67.9 h]; Electrical Helper [67.9 h]; Labor [67.9 h] |
| 2 | **Lean Concrete** | 2027-02-01 → 2026-11-07 (-86d) | 2027-02-24 → 2027-03-06 (+10d) |  |  |  |  |
| SDR-2-CON-SL-ZA-3540 | KWH meter mounting frame Lean Concrete | 2027-02-01 → 2026-11-07 A (-86d) | 2027-02-24 → 2027-03-06 (+10d) | 0% → 50% | 1d → -90d |  | resources SIC- Cost; Electrical Forman [67.9 h]; Electrical Technician [67.9 h]; Electrical Helper [67.9 h]; Labor [67.9 h] → SIC- Cost [2833.69]; Electrical Forman [67.9 h]; Electrical Technician [67.9 h]; Electrical Helper [67.9 h]; Labor [67.9 h] |
| 3 | **Installation** | 2027-02-25 → 2026-11-07 (-110d) |  |  |  |  |  |
| SDR-2-CON-SL-ZA-3550 | KWH meter mounting frame installation | 2027-02-25 → 2026-11-07 A (-110d) |  | 0% → 50% | 1d → -90d |  | resources SIC- Cost; Electrical Forman [67.9 h]; Electrical Technician [67.9 h]; Electrical Helper [67.9 h]; Labor [67.9 h] → SIC- Cost [9917.9]; Electrical Forman [67.9 h]; Electrical Technician [67.9 h]; Electrical Helper [67.9 h]; Labor [67.9 h] |
| 14 | **Street Lighting Sub-station** | 2027-01-10 → 2026-11-09 (-62d) | 2027-04-05 → 2027-05-09 (+34d) |  |  |  |  |
| 1 | **Leveling** | 2027-01-10 → 2026-11-09 (-62d) | 2027-02-01 → 2027-03-27 (+54d) |  |  |  |  |
| SDR-2-CON-SL-ZA-3560 | Unit Substation Leveling | 2027-01-10 → 2026-11-09 A (-62d) | 2027-02-01 → 2027-03-27 (+54d) | 0% → 50% | 26d → -111d |  | resources SIC- Cost; Electrical Forman [67.9 h]; Electrical Technician [67.9 h]; Electrical Helper [67.9 h]; Labor [67.9 h] → SIC- Cost [21900.1]; Electrical Forman [67.9 h]; Electrical Technician [67.9 h]; Electrical Helper [67.9 h]; Labor [67.9 h] |
| 2 | **Lean Concrete** | 2027-02-02 → 2026-11-09 (-85d) | 2027-02-24 → 2027-04-11 (+46d) |  |  |  |  |
| SDR-2-CON-SL-ZA-3570 | Unit Substation Lean Concrete | 2027-02-02 → 2026-11-09 A (-85d) | 2027-02-24 → 2027-04-11 (+46d) | 0% → 50% | 26d → -111d |  | resources SIC- Cost; Electrical Forman [85.98 h]; Electrical Technician [85.98 h]; Electrical Helper [85.98 h]; Labor [85.98 h] → SIC- Cost [43800.2]; Electrical Forman [85.98 h]; Electrical Technician [85.98 h]; Electrical Helper [85.98 h]; Labor [85.98 h] |
| 3 | **Installation** | 2027-03-14 → 2026-11-09 (-125d) | 2027-04-05 → 2027-05-09 (+34d) |  |  |  |  |
| SDR-2-CON-SL-ZA-3580 | Unit Substation Install for Street Lighting | 2027-03-14 → 2026-11-09 A (-125d) | 2027-04-05 → 2027-05-09 (+34d) | 0% → 20% | 26d → -111d |  | resources SIC- Cost; Electrical Forman [67.9 h]; Electrical Technician [67.9 h]; Electrical Helper [67.9 h]; Labor [67.9 h] → SIC- Cost [153301]; Electrical Forman [67.9 h]; Electrical Technician [67.9 h]; Electrical Helper [67.9 h]; Labor [67.9 h] |
| 2 | **MV Network** |  | 2026-12-14 → 2027-02-08 (+56d) |  |  |  |  |
| 1 | **LOOP 1** |  | 2026-12-14 → 2027-02-08 (+56d) |  |  |  |  |
| 6 | **Excavation** |  | 2026-11-09 → 2026-12-21 (+42d) |  |  |  |  |
| SDR-2-CON-MV-ZA-1280 | Excavation Works |  | 2026-11-09 → 2026-12-21 (+42d) |  | 48d → -50d | SDR-2-CON-SL-ZA-1000 FF → SDR-2-CON-SL-ZA-1000 | resources SIC- Cost; Electrical Forman [108.63 h]; Electrical Technician [108.63 h]; Electrical Helper [108.63 h]; Labor [108.63 h]; Excavator [12 h]; Excavator Operator [108.63 h] → SIC- Cost [184031]; Electrical Forman [108.63 h]; Electrical Technician [108.63 h]; Electrical Helper [108.63 h]; Labor [108.63 h]; Excavator [12 h]; Excavator Operator [108.63 h] |
| 7 | **Pipe laying** |  | 2026-11-09 → 2026-12-28 (+49d) |  |  |  |  |
| SDR-2-CON-MV-ZA-1290 | Pipe Laying |  | 2026-11-09 → 2026-12-28 (+49d) |  | 48d → -50d | SDR-2-CON-MV-ZA-1280 FF → SDR-2-CON-MV-ZA-1280 | resources SIC- Cost; Electrical Forman [108.63 h]; Electrical Technician [108.63 h]; Electrical Helper [191.07 h]; Labor [108.63 h] → SIC- Cost [368062]; Electrical Forman [108.63 h]; Electrical Technician [108.63 h]; Electrical Helper [191.07 h]; Labor [108.63 h] |
| 8 | **Backfilling** |  | 2026-11-09 → 2027-01-04 (+56d) |  |  |  |  |

| ID | Task | Start | Finish | Complete | Total float | Predecessors | Other |
| --- | --- | --- | --- | --- | --- | --- | --- |
| SDR-2-CON-MV-ZA-1310 | Backfilling Works |  | 2026-11-09 → 2027-01-04 (+56d) |  | 48d → -50d | SDR-2-CON-MV-ZA-1290 FF → SDR-2-CON-MV-ZA-1290 | resources SIC- Cost; Electrical Forman [108.63 h]; Electrical Technician [108.63 h]; Electrical Helper [108.63 h]; Labor [108.63 h]; Excavator [6 h]; Excavator Operator [108.63 h] → SIC- Cost [184031]; Electrical Forman [108.63 h]; Electrical Technician [108.63 h]; Electrical Helper [108.63 h]; Labor [108.63 h]; Excavator [6 h]; Excavator Operator [108.63 h] |
| 9 | **Pulling Cable** | 2026-11-22 → 2027-01-17 (+56d) | 2026-12-14 → 2027-02-08 (+56d) |  |  |  |  |
| SDR-2-CON-MV-ZA-1300 | Pulling Cable | 2026-11-22 → 2027-01-17 (+56d) | 2026-12-14 → 2027-02-08 (+56d) |  | 48d → -50d |  | resources SIC- Cost; Electrical Forman [108.63 h]; Electrical Technician [108.63 h]; Electrical Helper [108.63 h]; Labor [108.63 h] → SIC- Cost [1104186]; Electrical Forman [108.63 h]; Electrical Technician [108.63 h]; Electrical Helper [108.63 h]; Labor [108.63 h] |
| 2 | **LOOP 2** |  | 2026-12-14 → 2027-02-08 (+56d) |  |  |  |  |
| 6 | **Excavation** |  | 2026-11-09 → 2026-12-21 (+42d) |  |  |  |  |
| SDR-2-CON-MV-ZA-1320 | Excavation Works |  | 2026-11-09 → 2026-12-21 (+42d) |  | 52d → -29d | SDR-2-CON-MV-ZA-1280 FF → SDR-2-CON-MV-ZA-1280 SS | resources SIC- Cost; Electrical Forman [108.63 h]; Electrical Technician [108.63 h]; Electrical Helper [108.63 h]; Labor [108.63 h]; Excavator [12 h]; Excavator Operator [108.63 h] → SIC- Cost [184031]; Electrical Forman [108.63 h]; Electrical Technician [108.63 h]; Electrical Helper [108.63 h]; Labor [108.63 h]; Excavator [12 h]; Excavator Operator [108.63 h] |
| 7 | **Pipe laying** |  | 2026-11-09 → 2026-12-28 (+49d) |  |  |  |  |
| SDR-2-CON-MV-ZA-1330 | Pipe Laying |  | 2026-11-09 → 2026-12-28 (+49d) |  | 52d → -29d | SDR-2-CON-MV-ZA-1320 FF → SDR-2-CON-MV-ZA-1320 | resources SIC- Cost; Electrical Forman [108.63 h]; Electrical Technician [108.63 h]; Electrical Helper [108.63 h]; Labor [108.63 h] → SIC- Cost [368062]; Electrical Forman [108.63 h]; Electrical Technician [108.63 h]; Electrical Helper [108.63 h]; Labor [108.63 h] |
| 8 | **Backfilling** |  | 2026-11-09 → 2027-01-04 (+56d) |  |  |  |  |
| SDR-2-CON-MV-ZA-1350 | Backfilling Works |  | 2026-11-09 → 2027-01-04 (+56d) |  | 52d → -29d | SDR-2-CON-MV-ZA-1330 FF → SDR-2-CON-MV-ZA-1330 | resources SIC- Cost; Electrical Forman [108.63 h]; Electrical Technician [108.63 h]; Electrical Helper [108.63 h]; Labor [108.63 h]; Excavator [6 h]; Excavator Operator [6.03 h] → SIC- Cost [184031]; Electrical Forman [108.63 h]; Electrical Technician [108.63 h]; Electrical Helper [108.63 h]; Labor [108.63 h]; Excavator [6 h]; Excavator Operator [6.03 h] |
| 9 | **Pulling Cable** | 2026-11-22 → 2027-01-17 (+56d) | 2026-12-14 → 2027-02-08 (+56d) |  |  |  |  |
| SDR-2-CON-MV-ZA-1340 | Pulling Cable | 2026-11-22 → 2027-01-17 (+56d) | 2026-12-14 → 2027-02-08 (+56d) |  | 52d → -29d |  | resources SIC- Cost; Electrical Forman [67.9 h]; Electrical Technician [67.9 h]; Electrical Helper [67.9 h]; Labor [67.9 h] → SIC- Cost [1104186]; Electrical Forman [67.9 h]; Electrical Technician [67.9 h]; Electrical Helper [67.9 h]; Labor [67.9 h] |
| 3 | **TELECOMMUNICATIONS Works** |  | 2026-12-26 → 2027-02-27 (+63d) |  |  |  |  |
| 5 | **TELECOMMUNICATION IN ( PH2-G-MCA0 )** |  | 2026-12-26 → 2027-02-27 (+63d) |  |  |  |  |
| 3 | **Ducts** |  | 2026-12-26 → 2027-02-27 (+63d) |  |  |  |  |
| 2 | **Excavation** |  | 2026-11-09 → 2027-01-07 (+59d) |  |  |  |  |
| SDR-2-CON-TE-ZA-4200 | Excavation for telecom trench |  | 2026-11-09 → 2027-01-07 (+59d) |  | 42d → -44d | SDR-2-CON-SL-ZA-1000 FF → SDR-2-CON-SL-ZA-1000 FS+15d | was named Excavation for telecom crossing ducts & trenches; resources SIC- Cost; Electrical Forman [135.79 h]; Electrical Technician [135.79 h]; Electrical Helper [135.79 h]; Excavator [12 h]; Excavator Operator [135.79 h] → SIC- Cost [7189.75]; Electrical Forman [135.79 h]; Electrical Technician [135.79 h]; Electrical Helper [135.79 h]; Excavator [12 h]; Excavator Operator [135.79 h] |
| 5 | **Pipe laying** |  | 2026-11-09 → 2027-01-14 (+66d) |  |  |  |  |
| SDR-2-CON-TE-ZA-4210 | HDPE Pipes for Telecom Installation |  | 2026-11-09 → 2027-01-14 (+66d) |  | 42d → -44d | SDR-2-CON-TE-ZA-4200 FF → SDR-2-CON-TE-ZA-4200 | resources SIC- Cost; Electrical Forman [135.79 h]; Electrical Technician [135.79 h]; Electrical Helper [135.79 h] → SIC- Cost [14379.5]; Electrical Forman [135.79 h]; Electrical Technician [135.79 h]; Electrical Helper [135.79 h] |
| 6 | **Backfilling** | 2026-11-10 → 2026-11-11 (+1d) | 2026-12-02 → 2027-02-02 (+62d) |  |  |  |  |
| SDR-2-CON-TE-ZA-4220 | Backfilling over HDPE Telecom Pipes | 2026-11-10 → 2026-11-11 A (+1d) | 2026-12-02 → 2027-02-02 (+62d) | 0% → 50% | 42d → -44d |  | resources SIC- Cost; Electrical Forman [135.79 h]; Electrical Technician [135.79 h]; Electrical Helper [135.79 h] → SIC- Cost [7189.75]; Electrical Forman [135.79 h]; Electrical Technician [135.79 h]; Electrical Helper [135.79 h] |
| 7 | **Pulling Cable** | 2026-12-03 → 2027-02-03 (+62d) | 2026-12-26 → 2027-02-27 (+63d) |  |  |  |  |
| SDR-2-CON-TE-ZA-4270 | Pulling Cable | 2026-12-03 → 2027-02-03 (+62d) | 2026-12-26 → 2027-02-27 (+63d) |  | 42d → -44d |  | resources SIC- Cost; Electrical Forman [25.6 h]; Electrical Technician [25.6 h]; Electrical Helper [25.6 h] → SIC- Cost [43138.5]; Electrical Forman [25.6 h]; Electrical Technician [25.6 h]; Electrical Helper [25.6 h] |
| 4 | **Manholes** |  | 2026-12-02 → 2027-02-18 (+78d) |  |  |  |  |
| 1 | **Excavation** |  | 2026-11-09 → 2027-01-06 (+58d) |  |  |  |  |
| SDR-2-CON-TE-ZA-4230 | Excavation for Telecom Manhole |  | 2026-11-09 → 2027-01-06 (+58d) | 60% → 90% | 62d → -38d | SDR-2-CON-TE-ZA-4200 FF → SDR-2-CON-TE-ZA-4200 SS | was named Excavation for Telecom Manholes; resources SIC- Cost; Electrical Forman [135.79 h]; Electrical Technician [135.79 h]; Electrical Helper [135.79 h]; Excavator [12 h]; Excavator Operator [124.2 h] → SIC- Cost [8073.39]; Electrical Forman [135.79 h]; Electrical Technician [135.79 h]; Electrical Helper [135.79 h]; Excavator [12 h]; Excavator Operator [124.2 h] |
| 2 | **Bedding Work** |  | 2026-11-09 → 2027-01-12 (+64d) |  |  |  |  |
| SDR-2-CON-TE-ZA-4280 | Sand bedding for Telecom Manhole |  | 2026-11-09 → 2027-01-12 (+64d) | 25% → 90% | 62d → -38d | SDR-2-CON-TE-ZA-4230 FF → SDR-2-CON-TE-ZA-4230 | resources SIC- Cost; Electrical Forman [143.3 h]; Electrical Technician [143.3 h]; Electrical Helper [143.3 h] → SIC- Cost [5382.27]; Electrical Forman [143.3 h]; Electrical Technician [143.3 h]; Electrical Helper [143.3 h] |
| 3 | **Install Manholes** |  | 2026-11-09 → 2027-01-19 (+71d) |  |  |  |  |
| SDR-2-CON-TE-ZA-4240 | Installation of Telecom Manhole |  | 2026-11-09 → 2027-01-19 (+71d) |  | 62d → -38d | SDR-2-CON-TE-ZA-4230 FF, SDR-2-CON-TE-ZA-4280 FF → SDR-2-CON-TE-ZA-4230, SDR-2-CON-TE-ZA-4280 | resources SIC- Cost; Electrical Forman [135.79 h]; Electrical Technician [135.79 h]; Electrical Helper [135.79 h] → SIC- Cost [24220.2]; Electrical Forman [135.79 h]; Electrical Technician [135.79 h]; Electrical Helper [135.79 h] |
| 4 | **Testting** |  | 2026-11-09 → 2027-01-26 (+78d) |  |  |  |  |
| SDR-2-CON-TE-ZA-4250 | Telecom Manhole finishing works |  | 2026-11-09 → 2027-01-26 (+78d) |  | 62d → -38d | SDR-2-CON-TE-ZA-4240 FF → SDR-2-CON-TE-ZA-4240 | resources SIC- Cost; Electrical Forman [100.31 h]; Electrical Technician [100.31 h]; Electrical Helper [100.31 h] → SIC- Cost [5382.27]; Electrical Forman [100.31 h]; Electrical Technician [100.31 h]; Electrical Helper [100.31 h] |
| 5 | **Backfilling** | 2026-11-10 → 2027-01-27 (+78d) | 2026-12-02 → 2027-02-18 (+78d) |  |  |  |  |
| SDR-2-CON-TE-ZA-4260 | Backfilling over Telecom Manhole | 2026-11-10 → 2027-01-27 (+78d) | 2026-12-02 → 2027-02-18 (+78d) |  | 62d → -38d |  | resources SIC- Cost; Electrical Forman [135.79 h]; Electrical Technician [135.79 h]; Electrical Helper [135.79 h] → SIC- Cost [10764.5]; Electrical Forman [135.79 h]; Electrical Technician [135.79 h]; Electrical Helper [135.79 h] |
| 6 | **TELECOMMUNICATION IN ( PH2-G-MCE0 )** |  | 2026-12-12 → 2027-02-02 (+52d) |  |  |  |  |
| 3 | **Ducts** |  | 2026-11-09 → 2027-01-21 (+73d) |  |  |  |  |
| SDR-2-CON-TE-ZA-4290 | Excavation for telecom trench |  |  |  |  | SDR-2-CON-SL-ZA-1000 SS → SDR-2-CON-SL-ZA-1000 FS+15d | was named Excavation for telecom crossing ducts & trenches; resources SIC- Cost; Electrical Forman [135.79 h]; Electrical Technician [135.79 h]; Electrical Helper [135.79 h]; Excavator [12 h]; Excavator Operator [135.79 h] → SIC- Cost [7189.75]; Electrical Forman [135.79 h]; Electrical Technician [135.79 h]; Electrical Helper [135.79 h]; Excavator [12 h]; Excavator Operator [135.79 h] |
| 5 | **Pipe laying** |  | 2026-11-09 → 2027-01-07 (+59d) |  |  |  |  |
| SDR-2-CON-TE-ZA-4300 | HDPE Pipes for Telecom Installation |  | 2026-11-09 → 2027-01-07 (+59d) |  | 76d → -14d |  | resources SIC- Cost; Electrical Forman [135.81 h]; Electrical Technician [135.79 h]; Electrical Helper [135.79 h] → SIC- Cost [14379.5]; Electrical Forman [135.81 h]; Electrical Technician [135.79 h]; Electrical Helper [135.79 h] |
| 6 | **Backfilling** |  | 2026-11-09 → 2027-01-14 (+66d) |  |  |  |  |
| SDR-2-CON-TE-ZA-4310 | Backfilling over HDPE Telecom Pipes |  | 2026-11-09 → 2027-01-14 (+66d) |  | 76d → -14d | SDR-2-CON-TE-ZA-4300 FF → SDR-2-CON-TE-ZA-4300 | resources SIC- Cost; Electrical Forman [135.79 h]; Electrical Technician [135.79 h]; Electrical Helper [135.79 h]; Excavator [6 h]; Excavator Operator [6.03 h] → SIC- Cost [7189.75]; Electrical Forman [135.79 h]; Electrical Technician [135.79 h]; Electrical Helper [135.79 h]; Excavator [6 h]; Excavator Operator [6.03 h] |
| 7 | **Pulling Cable** |  | 2026-11-09 → 2027-01-21 (+73d) |  |  |  |  |
| SDR-2-CON-TE-ZA-4360 | Pulling Cable |  | 2026-11-09 → 2027-01-21 (+73d) |  | 76d → -14d | SDR-2-CON-TE-ZA-4310 FF → SDR-2-CON-TE-ZA-4310 | resources SIC- Cost; Electrical Forman [135.79 h]; Electrical Technician [135.79 h]; Electrical Helper [135.79 h] → SIC- Cost [43138.5]; Electrical Forman [135.79 h]; Electrical Technician [135.79 h]; Electrical Helper [135.79 h] |
| 4 | **Manholes** |  | 2026-12-12 → 2027-02-02 (+52d) |  |  |  |  |
| 1 | **Excavation** |  | 2026-11-09 → 2026-11-15 (+6d) |  |  |  |  |
| SDR-2-CON-TE-ZA-4320 | Excavation for Telecom Manhole |  | 2026-11-09 → 2026-11-15 A (+6d) | 55% → 100% | 54d → none |  | was named Excavation for Telecom Manholes; resources SIC- Cost; Electrical Forman [135.79 h]; Electrical Technician [135.79 h]; Electrical Helper [135.79 h]; Excavator [12 h]; Excavator Operator [135.79 h] → SIC- Cost [8073.39]; Electrical Forman [135.79 h]; Electrical Technician [135.79 h]; Electrical Helper [135.79 h]; Excavator [12 h]; Excavator Operator [135.79 h] |
| 2 | **Bedding Work** |  | 2026-11-09 → 2026-11-15 (+6d) |  |  |  |  |
| SDR-2-CON-TE-ZA-4370 | Sand bedding for Telecom Manhole |  | 2026-11-09 → 2026-11-15 A (+6d) | 50% → 100% | 54d → none | SDR-2-CON-TE-ZA-4320 FF → SDR-2-CON-TE-ZA-4320 | resources SIC- Cost; Electrical Forman [38.41 h]; Electrical Technician [38.41 h]; Electrical Helper [38.41 h] → SIC- Cost [5382.27]; Electrical Forman [38.41 h]; Electrical Technician [38.41 h]; Electrical Helper [38.41 h] |
| 3 | **Install Manholes** |  | 2026-11-09 → 2026-11-15 (+6d) |  |  |  |  |
| SDR-2-CON-TE-ZA-4330 | Installation of Telecom Manhole |  | 2026-11-09 → 2026-11-15 A (+6d) | 50% → 100% | 54d → none | SDR-2-CON-TE-ZA-4320 FF, SDR-2-CON-TE-ZA-4370 FF → SDR-2-CON-TE-ZA-4320, SDR-2-CON-TE-ZA-4370 | resources SIC- Cost; Electrical Forman [143.3 h]; Electrical Technician [143.3 h]; Electrical Helper [143.3 h] → SIC- Cost [24220.2]; Electrical Forman [143.3 h]; Electrical Technician [143.3 h]; Electrical Helper [143.3 h] |
| 4 | **Testting** | 2026-11-10 → 2027-01-02 (+53d) | 2026-11-17 → 2027-01-09 (+53d) |  |  |  |  |
| SDR-2-CON-TE-ZA-4340 | Telecom Manhole finishing works | 2026-11-10 → 2027-01-02 (+53d) | 2026-11-17 → 2027-01-09 (+53d) |  | 54d → -24d |  | resources SIC- Cost; Electrical Forman [66.88 h]; Electrical Technician [66.88 h]; Electrical Helper [66.88 h] → SIC- Cost [5382.27]; Electrical Forman [66.88 h]; Electrical Technician [66.88 h]; Electrical Helper [66.88 h] |
| 5 | **Backfilling** | 2026-11-18 → 2027-01-10 (+53d) | 2026-12-12 → 2027-02-02 (+52d) |  |  |  |  |
| SDR-2-CON-TE-ZA-4350 | Backfilling over Telecom Manhole | 2026-11-18 → 2027-01-10 (+53d) | 2026-12-12 → 2027-02-02 (+52d) |  | 54d → -24d |  | resources SIC- Cost; Electrical Forman [143.3 h]; Electrical Technician [143.3 h]; Electrical Helper [143.3 h] → SIC- Cost [10764.5]; Electrical Forman [143.3 h]; Electrical Technician [143.3 h]; Electrical Helper [143.3 h] |
| 7 | **TELECOMMUNICATION IN ( PH2-G-MCF0 )** |  | 2026-12-10 → 2027-02-18 (+70d) |  |  |  |  |
| 3 | **Ducts** |  | 2026-11-09 → 2027-02-03 (+86d) |  |  |  |  |
| 2 | **Excavation** |  | 2026-11-09 → 2027-01-11 (+63d) |  |  |  |  |
| SDR-2-CON-TE-ZA-4380 | Excavation for telecom trench |  | 2026-11-09 → 2027-01-11 (+63d) | 50% → 60% | 71d → 26d | SDR-2-CON-SL-ZA-1000 FF, SDR-2-CON-TE-ZA-4320 FF → SDR-2-CON-SL-ZA-1000, SDR-2-CON-TE-ZA-4320 | was named Excavation for telecom crossing ducts & trenches; resources SIC- Cost; Electrical Forman [135.79 h]; Electrical Technician [135.79 h]; Electrical Helper [135.79 h]; Excavator [12 h]; Excavator Operator [135.79 h] → SIC- Cost [7189.75]; Electrical Forman [135.79 h]; Electrical Technician [135.79 h]; Electrical Helper [135.79 h]; Excavator [12 h]; Excavator Operator [135.79 h] |
| 5 | **Pipe laying** |  | 2026-11-09 → 2027-01-20 (+72d) |  |  |  |  |
| SDR-2-CON-TE-ZA-4390 | HDPE Pipes for Telecom Installation |  | 2026-11-09 → 2027-01-20 (+72d) | 50% → 58% | 98d → 39d | SDR-2-CON-TE-ZA-4380 FF → SDR-2-CON-TE-ZA-4380 | resources SIC- Cost; Electrical Forman [135.79 h]; Electrical Technician [135.79 h]; Electrical Helper [135.79 h] → SIC- Cost [14379.5]; Electrical Forman [135.79 h]; Electrical Technician [135.79 h]; Electrical Helper [135.79 h] |
| 6 | **Backfilling** |  | 2026-11-09 → 2027-01-27 (+79d) |  |  |  |  |
| SDR-2-CON-TE-ZA-4400 | Backfilling over HDPE Telecom Pipes |  | 2026-11-09 → 2027-01-27 (+79d) |  | 98d → 39d | SDR-2-CON-TE-ZA-4390 FF → SDR-2-CON-TE-ZA-4390 | resources SIC- Cost; Electrical Forman [135.79 h]; Electrical Technician [135.79 h]; Electrical Helper [135.79 h] → SIC- Cost [7189.75]; Electrical Forman [135.79 h]; Electrical Technician [135.79 h]; Electrical Helper [135.79 h] |
| 7 | **Pulling Cable** |  | 2026-11-09 → 2027-02-03 (+86d) |  |  |  |  |
| SDR-2-CON-TE-ZA-4450 | Pulling Cable |  | 2026-11-09 → 2027-02-03 (+86d) |  | 98d → 39d | SDR-2-CON-TE-ZA-4400 FF → SDR-2-CON-TE-ZA-4400 | resources SIC- Cost; Electrical Forman [135.79 h]; Electrical Technician [135.79 h]; Electrical Helper [135.79 h] → SIC- Cost [43138.5]; Electrical Forman [135.79 h]; Electrical Technician [135.79 h]; Electrical Helper [135.79 h] |
| 4 | **Manholes** |  | 2026-12-10 → 2027-02-18 (+70d) |  |  |  |  |
| 1 | **Excavation** |  | 2026-11-09 → 2026-11-15 (+6d) |  |  |  |  |
| SDR-2-CON-TE-ZA-4410 | Excavation for Telecom Manhole |  | 2026-11-09 → 2026-11-15 A (+6d) | 56% → 100% | 71d → none | SDR-2-CON-TE-ZA-4380 FF → SDR-2-CON-TE-ZA-4380 SS | was named Excavation for Telecom Manholes; resources SIC- Cost; Electrical Forman [186.29 h]; Electrical Technician [186.29 h]; Electrical Helper [186.29 h]; Excavator [12 h]; Excavator Operator [124.2 h] → SIC- Cost [8073.39]; Electrical Forman [186.29 h]; Electrical Technician [186.29 h]; Electrical Helper [186.29 h]; Excavator [12 h]; Excavator Operator [124.2 h] |
| 2 | **Bedding Work** |  | 2026-11-09 → 2027-01-11 (+63d) |  |  |  |  |
| SDR-2-CON-TE-ZA-4460 | Sand bedding for Telecom Manhole |  | 2026-11-09 → 2027-01-11 (+63d) | 50% → 55% | 71d → 26d | SDR-2-CON-TE-ZA-4410 FF → SDR-2-CON-TE-ZA-4410 | resources SIC- Cost; Electrical Forman [143.3 h]; Electrical Technician [143.3 h]; Electrical Helper [143.3 h] → SIC- Cost [5382.27]; Electrical Forman [143.3 h]; Electrical Technician [143.3 h]; Electrical Helper [143.3 h] |
| 3 | **Install Manholes** |  | 2026-11-09 → 2027-01-18 (+70d) |  |  |  |  |

| ID | Task | Start | Finish | Duration | Complete | Total float | Predecessors | Other |
| --- | --- | --- | --- | --- | --- | --- | --- | --- |
| SDR-2-CON-TE-ZA-4420 | Installation of Telecom Manhole |  | 2026-11-09 → 2027-01-18 (+70d) |  |  | 71d → 26d | SDR-2-CON-TE-ZA-4410 FF, SDR-2-CON-TE-ZA-4460 FF → SDR-2-CON-TE-ZA-4410, SDR-2-CON-TE-ZA-4460 | resources SIC- Cost; Electrical Forman [67.9 h]; Electrical Technician [67.9 h]; Electrical Helper [67.9 h] → SIC- Cost [24220.2]; Electrical Forman [67.9 h]; Electrical Technician [67.9 h]; Electrical Helper [67.9 h] |
| 4 | **Testting** | 2026-11-10 → 2027-01-19 (+70d) | 2026-11-17 → 2027-01-26 (+70d) |  |  |  |  |  |
| SDR-2-CON-TE-ZA-4430 | Telecom Manhole finishing works | 2026-11-10 → 2027-01-19 (+70d) | 2026-11-17 → 2027-01-26 (+70d) |  |  | 71d → 26d |  | resources SIC- Cost; Electrical Forman [67.9 h]; Electrical Technician [67.9 h]; Electrical Helper [67.9 h] → SIC- Cost [5382.27]; Electrical Forman [67.9 h]; Electrical Technician [67.9 h]; Electrical Helper [67.9 h] |
| 5 | **Backfilling** | 2026-11-18 → 2027-01-27 (+70d) | 2026-12-10 → 2027-02-18 (+70d) |  |  |  |  |  |
| SDR-2-CON-TE-ZA-4440 | Backfilling over Telecom Manhole | 2026-11-18 → 2027-01-27 (+70d) | 2026-12-10 → 2027-02-18 (+70d) |  |  | 71d → 26d |  | resources SIC- Cost; Electrical Forman [67.9 h]; Electrical Technician [67.9 h]; Electrical Helper [67.9 h] → SIC- Cost [10764.5]; Electrical Forman [67.9 h]; Electrical Technician [67.9 h]; Electrical Helper [67.9 h] |
| 4 | **TELECOMMUNICATION IN ( PH2-G-MCG0 )** |  | 2026-12-23 → 2027-02-23 (+62d) |  |  |  |  |  |
| 3 | **Ducts** |  | 2026-11-09 → 2027-01-28 (+80d) |  |  |  |  |  |
| 2 | **Excavation** |  | 2026-11-09 → 2027-01-07 (+59d) |  |  |  |  |  |
| SDR-2-CON-TE-ZA-4470 | Excavation for telecom trench |  | 2026-11-09 → 2027-01-07 (+59d) |  |  | 66d → -40d | SDR-2-CON-SL-ZA-1000 FF → SDR-2-CON-SL-ZA-1000 FS+15d | was named Excavation for telecom crossing ducts & trenches; resources SIC- Cost; Electrical Forman [135.79 h]; Electrical Technician [135.79 h]; Electrical Helper [135.79 h]; Excavator [12 h]; Excavator Operator [135.79 h] → SIC- Cost [7189.75]; Electrical Forman [135.79 h]; Electrical Technician [135.79 h]; Electrical Helper [135.79 h]; Excavator [12 h]; Excavator Operator [135.79 h] |
| 5 | **Pipe laying** |  | 2026-11-09 → 2027-01-14 (+66d) |  |  |  |  |  |
| SDR-2-CON-TE-ZA-4480 | HDPE Pipes for Telecom Installation |  | 2026-11-09 → 2027-01-14 (+66d) |  |  | 66d → -19d | SDR-2-CON-TE-ZA-4470 FF → SDR-2-CON-TE-ZA-4470 | resources SIC- Cost; Electrical Forman [133.75 h]; Electrical Technician [133.75 h]; Electrical Helper [135.79 h] → SIC- Cost [14379.5]; Electrical Forman [133.75 h]; Electrical Technician [133.75 h]; Electrical Helper [135.79 h] |
| 6 | **Backfilling** |  | 2026-11-09 → 2027-01-21 (+73d) |  |  |  |  |  |
| SDR-2-CON-TE-ZA-4490 | Backfilling over HDPE Telecom Pipes |  | 2026-11-09 → 2027-01-21 (+73d) |  |  | 66d → -19d | SDR-2-CON-TE-ZA-4480 FF → SDR-2-CON-TE-ZA-4480 | resources SIC- Cost; Electrical Forman [135.79 h]; Electrical Technician [135.79 h]; Electrical Helper [135.79 h] → SIC- Cost [7189.75]; Electrical Forman [135.79 h]; Electrical Technician [135.79 h]; Electrical Helper [135.79 h] |
| 7 | **Pulling Cable** |  | 2026-11-09 → 2027-01-28 (+80d) |  |  |  |  |  |
| SDR-2-CON-TE-ZA-4540 | Pulling Cable |  | 2026-11-09 → 2027-01-28 (+80d) |  |  | 66d → -19d | SDR-2-CON-TE-ZA-4490 FF → SDR-2-CON-TE-ZA-4490 | resources SIC- Cost; Electrical Forman [67.9 h]; Electrical Technician [67.9 h]; Electrical Helper [67.9 h] → SIC- Cost [43138.5]; Electrical Forman [67.9 h]; Electrical Technician [67.9 h]; Electrical Helper [67.9 h] |
| 4 | **Manholes** |  | 2026-12-23 → 2027-02-23 (+62d) |  |  |  |  |  |
| 1 | **Excavation** |  | 2026-11-09 → 2026-11-15 (+6d) |  |  |  |  |  |
| SDR-2-CON-TE-ZA-4500 | Excavation for Telecom Manhole |  | 2026-11-09 → 2026-11-15 A (+6d) |  | 76% → 100% | 109d → none | SDR-2-CON-TE-ZA-4470 FF → SDR-2-CON-TE-ZA-4470 SS | was named Excavation for Telecom Manholes; resources SIC- Cost; Electrical Forman [67.9 h]; Electrical Technician [67.9 h]; Electrical Helper [67.9 h]; Excavator [12 h]; Excavator Operator [67.9 h] → SIC- Cost [8073.39]; Electrical Forman [67.9 h]; Electrical Technician [67.9 h]; Electrical Helper [67.9 h]; Excavator [12 h]; Excavator Operator [67.9 h] |
| 2 | **Bedding Work** |  | 2026-11-09 → 2026-11-15 (+6d) |  |  |  |  |  |
| SDR-2-CON-TE-ZA-4550 | Sand bedding for Telecom Manhole |  | 2026-11-09 → 2026-11-15 A (+6d) |  | 75% → 100% | 109d → none | SDR-2-CON-TE-ZA-4500 FF → SDR-2-CON-TE-ZA-4500 | resources SIC- Cost; Electrical Forman [67.9 h]; Electrical Technician [67.9 h]; Electrical Helper [67.9 h] → SIC- Cost [5382.27]; Electrical Forman [67.9 h]; Electrical Technician [67.9 h]; Electrical Helper [67.9 h] |
| 3 | **Install Manholes** |  | 2026-11-09 → 2027-01-09 (+61d) |  |  |  |  |  |
| SDR-2-CON-TE-ZA-4510 | Installation of Telecom Manhole |  | 2026-11-09 → 2027-01-09 (+61d) |  | 75% → 85% | 109d → -40d | SDR-2-CON-TE-ZA-4500 FF, SDR-2-CON-TE-ZA-4550 FF → SDR-2-CON-TE-ZA-4500, SDR-2-CON-TE-ZA-4550 | resources SIC- Cost; Electrical Forman [67.9 h]; Electrical Technician [67.9 h]; Electrical Helper [67.9 h] → SIC- Cost [24220.2]; Electrical Forman [67.9 h]; Electrical Technician [67.9 h]; Electrical Helper [67.9 h] |
| 4 | **Testting** | 2026-11-10 → 2027-01-10 (+61d) | 2026-11-17 → 2027-01-17 (+61d) |  |  |  |  |  |
| SDR-2-CON-TE-ZA-4520 | Telecom Manhole finishing works | 2026-11-10 → 2027-01-10 (+61d) | 2026-11-17 → 2027-01-17 (+61d) |  |  | 109d → -40d |  | resources SIC- Cost; Electrical Forman [67.9 h]; Electrical Technician [67.9 h]; Electrical Helper [67.9 h] → SIC- Cost [5382.27]; Electrical Forman [67.9 h]; Electrical Technician [67.9 h]; Electrical Helper [67.9 h] |
| 5 | **Backfilling** | 2026-11-30 → 2027-01-30 (+61d) | 2026-12-23 → 2027-02-23 (+62d) |  |  |  |  |  |
| SDR-2-CON-TE-ZA-4530 | Backfilling over Telecom Manhole | 2026-11-30 → 2027-01-30 (+61d) | 2026-12-23 → 2027-02-23 (+62d) |  |  | 109d → -40d |  | resources SIC- Cost; Electrical Forman [67.9 h]; Electrical Technician [67.9 h]; Electrical Helper [67.9 h]; Excavator [5 h]; Excavator Operator [67.9 h] → SIC- Cost [10764.5]; Electrical Forman [67.9 h]; Electrical Technician [67.9 h]; Electrical Helper [67.9 h]; Excavator [5 h]; Excavator Operator [67.9 h] |
| LI | **Landscape & Irrigation Works** |  | 2027-07-05 → 2027-12-05 (+153d) |  |  |  |  |  |
| ZA | **ZONE A** |  | 2027-07-05 → 2027-12-05 (+153d) |  |  |  |  |  |
| 2 | **IRRIGATION WORKS** |  | 2027-07-05 → 2027-12-05 (+153d) |  |  |  |  |  |
| 1 | **IRRIGATION WORKS IN ( PH2-COL-MC10 )** |  | 2027-07-05 → 2027-11-30 (+148d) |  |  |  |  |  |
| 7 | **Pre install** |  | 2027-05-13 → 2027-10-26 (+166d) |  |  |  |  |  |
| SDR-2-CON-IR-ZA-1000 | Pre Install for irrigation Works |  | 2027-05-13 → 2027-10-26 (+166d) |  |  | 0d → -132d | SDR-2-CON-SE-ZA-1490, SDR-2-CON-SE-ZA-1550, SDR-2-CON-SE-ZA-1560, SDR-2-CON-SE-ZA-1620, SDR-2-CON-SE-ZA-1590, SDR-2-CON-SE-ZA-1650, SDR-2-CON-SE-ZA-1660, SDR-2-CON-SE-ZA-1720, SDR-2-CON-SE-ZA-1690, SDR-2-CON-SE-ZA-1750, SDR-2-CON-SE-ZA-1760, SDR-2-CON-SE-ZA-1820, SDR-2-CON-SE-ZA-1790, SDR-2-CON-SE-ZA-1850, SDR-2-CON-SE-ZA-1860, SDR-2-CON-SE-ZA-1920, SDR-2-CON-SE-ZA-1890, SDR-2-CON-SE-ZA-1950, SDR-2-CON-SE-ZA-1960, SDR-2-CON-SE-ZA-2020, SDR-2-CON-SE-ZA-1990, SDR-2-CON-SE-ZA-2050, SDR-2-CON-SE-ZA-2060, SDR-2-CON-SE-ZA-2120, SDR-2-CON-SE-ZA-2070, SDR-2-CON-SE-ZA-2080, SDR-2-CON-SE-ZA-2130, SDR-2-CON-SE-ZA-2090, SDR-2-CON-SE-ZA-2150, SDR-2-CON-SE-ZA-2100, SDR-2-CON-SE-ZA-2140, SDR-2-CON-SE-ZA-2160, SDR-2-CON-SE-ZA-2220, SDR-2-CON-SE-ZA-2170, SDR-2-CON-SE-ZA-2230, SDR-2-CON-SE-ZA-2190, SDR-2-CON-SE-ZA-2250, SDR-2-CON-SE-ZA-2200, SDR-2-CON-SE-ZA-2240, SDR-2-CON-SE-ZA-2260, SDR-2-CON-SE-ZA-2320, SDR-2-CON-SE-ZA-2270, SDR-2-CON-SE-ZA-2280, SDR-2-CON-SE-ZA-2330, SDR-2-CON-SE-ZA-2290, SDR-2-CON-SE-ZA-2350, SDR-2-CON-SE-ZA-2300, SDR-2-CON-SE-ZA-2340, SDR-2-CON-SE-ZA-2360, SDR-2-CON-SE-ZA-2420, SDR-2-CON-SE-ZA-2370, SDR-2-CON-SE-ZA-2380, SDR-2-CON-SE-ZA-2430, SDR-2-CON-SE-ZA-2390, SDR-2-CON-SE-ZA-2450, SDR-2-CON-SE-ZA-2400, SDR-2-CON-SE-ZA-2440, SDR-2-CON-PW-ZG-1000, SDR-2-CON-PW-ZA-2910, SDR-2-CON-PW-ZA-3010, SDR-2-CON-PW-ZA-3020, SDR-2-CON-PW-ZA-3110, SDR-2-CON-PW-ZA-3120, SDR-2-CON-PW-ZA-2560, SDR-2-CON-TE-ZA-4290, SDR-2-CON-RW-ZA-1720, SDR-2-CON-RW-ZA-1720 FF, SDR-2-CON-ST-ZA-6120, SDR-2-CON-SE-ZA-1010 FF, SDR-2-CON-SE-ZA-1020 FF, SDR-2-CON-SE-ZA-1040 FF, SDR-2-CON-SE-ZA-1050 FF, SDR-2-CON-SE-ZA-1470 FF, SDR-2-CON-SE-ZA-1480 FF, SDR-2-CON-SE-ZA-1500 FF, SDR-2-CON-SE-ZA-1510 FF, SDR-2-CON-SE-ZA-1570 FF, SDR-2-CON-SE-ZA-1580 FF, SDR-2-CON-SE-ZA-1600 FF, SDR-2-CON-SE-ZA-1610 FF, SDR-2-CON-SE-ZA-1670 FF, SDR-2-CON-SE-ZA-1680 FF, SDR-2-CON-SE-ZA-1700 FF, SDR-2-CON-SE-ZA-1710 FF, SDR-2-CON-SE-ZA-1770 FF, SDR-2-CON-SE-ZA-1780 FF, SDR-2-CON-SE-ZA-1800 FF, SDR-2-CON-SE-ZA-1810 FF, SDR-2-CON-SE-ZA-1870 FF, SDR-2-CON-SE-ZA-1880 FF, SDR-2-CON-SE-ZA-1900 FF, SDR-2-CON-SE-ZA-1910 FF, SDR-2-CON-SE-ZA-1970 FF, SDR-2-CON-SE-ZA-2000 FF, SDR-2-CON-SE-ZA-2110 FF, SDR-2-CON-SE-ZA-2180 FF, SDR-2-CON-SE-ZA-2210 FF, SDR-2-CON-SE-ZA-2310 FF, SDR-2-CON-SE-ZA-2410 FF, SDR-2-CON-TS-ZA-3100 FF, SDR-2-CON-TS-ZA-3130 FF, SDR-2-CON-TS-ZA-3110 FF, SDR-2-CON-TS-ZA-3120 FF, SDR-2-CON-TS-ZA-3140 FF, SDR-2-CON-TS-ZA-2300 FF, SDR-2-CON-TS-ZA-2380 FF, SDR-2-CON-TS-ZA-2310 FF, SDR-2-CON-TS-ZA-2400 FF, SDR-2-CON-TS-ZA-2900 FF, SDR-2-CON-TS-ZA-3000 FF, SDR-2-CON-TS-ZA-2500 FF, SDR-2-CON-PW-ZA-1000 FF, SDR-2-CON-PW-ZA-2200 FF, SDR-2-CON-PW-ZA-1010 FF, SDR-2-CON-PW-ZA-2260 FF, SDR-2-CON-PW-ZA-2340 FF, SDR-2-CON-PW-ZA-2270 FF, SDR-2-CON-PW-ZA-2330 FF, SDR-2-CON-PW-ZA-2350 FF, SDR-2-CON-PW-ZG-1500 FF, SDR-2-CON-PW-ZG-1010 FF, SDR-2-CON-PW-ZA-2940 FF, SDR-2-CON-PW-ZA-2920 FF, SDR-2-CON-PW-ZA-3040 FF, SDR-2-CON-PW-ZA-3140 FF, SDR-2-CON-PW-ZA-2640 FF, SDR-2-CON-PW-ZA-2570 FF, SDR-2-CON-SL-ZA-2870 FF, SDR-2-CON-SL-ZA-2880 FF, SDR-2-CON-SL-ZA-1300 FF, SDR-2-CON-SL-ZA-1310 FF, SDR-2-CON-SL-ZA-2950 FF, SDR-2-CON-SL-ZA-2960 FF, SDR-2-CON-SL-ZA-2990 FF, SDR-2-CON-SL-ZA-3000 FF, SDR-2-CON-SL-ZA-3030 FF, SDR-2-CON-SL-ZA-3040 FF, SDR-2-CON-SL-ZA-3070 FF, SDR-2-CON-SL-ZA-3080 FF, SDR-2-CON-SL-ZA-3110 FF, SDR-2-CON-SL-ZA-3120 FF, SDR-2-CON-SL-ZA-3150 FF, SDR-2-CON-SL-ZA-3160 FF, SDR-2-CON-SL-ZA-3190 FF, SDR-2-CON-SL-ZA-3200 FF, SDR-2-CON-SL-ZA-2910 FF, SDR-2-CON-SL-ZA-2920 FF, SDR-2-CON-MV-ZA-1000 FF, SDR-2-CON-MV-ZA-1070 FF, SDR-2-CON-MV-ZA-1150 FF, SDR-2-CON-MV-ZA-1160 FF, SDR-2-CON-MV-ZA-1170 FF, SDR-2-CON-MV-ZA-1200 FF, SDR-2-CON-MV-ZA-1210 FF, SDR-2-CON-MV-ZA-1240 FF, SDR-2-CON-MV-ZA-1250 FF, SDR-2-CON-TE-ZA-1030 FF, SDR-2-CON-TE-ZA-3220 FF, SDR-2-CON-TE-ZA-3230 FF, SDR-2-CON-TE-ZA-3240 FF, SDR-2-CON-TE-ZA-3290 FF, SDR-2-CON-TE-ZA-3250 FF, SDR-2-CON-TE-ZA-3330 FF, SDR-2-CON-TE-ZA-3490 FF, SDR-2-CON-TE-ZA-3510 FF, SDR-2-CON-TE-ZA-3560 FF, SDR-2-CON-TE-ZA-3570 FF, SDR-2-CON-TE-ZA-3580 FF, SDR-2-CON-TE-ZA-3600 FF, SDR-2-CON-TE-ZA-3650 FF, SDR-2-CON-TE-ZA-3660 FF, SDR-2-CON-TE-ZA-3670 FF, SDR-2-CON-TE-ZA-3750 FF, SDR-2-CON-TE-ZA-3760 FF, SDR-2-CON-TE-ZA-3840 FF, SDR-2-CON-TE-ZA-3850 FF, SDR-2-CON-TE-ZA-3930 FF, SDR-2-CON-TE-ZA-4020 FF, SDR-2-CON-TE-ZA-4110 FF, SDR-2-CON-TE-ZA-4120 FF, SDR-2-CON-TE-ZA-4140 FF, SDR-2-CON-TE-ZA-4190 FF, SDR-2-CON-TE-ZA-4150 FF, SDR-2-CON-SL-ZA-3230 FF, SDR-2-CON-SL-ZA-3240 FF, SDR-2-CON-SL-ZA-3270 FF, SDR-2-CON-SL-ZA-3280 FF, SDR-2-CON-SL-ZA-3310 FF, SDR-2-CON-SL-ZA-3320 FF, SDR-2-CON-SL-ZA-3350 FF, SDR-2-CON-SL-ZA-3360 FF, SDR-2-CON-SL-ZA-3390 FF, SDR-2-CON-SL-ZA-3400 FF, SDR-2-CON-SL-ZA-3420 FF, SDR-2-CON-SL-ZA-3410 FF, SDR-2-CON-MV-ZA-1280 FF, SDR-2-CON-MV-ZA-1290 FF, SDR-2-CON-MV-ZA-1310 FF, SDR-2-CON-MV-ZA-1320 FF, SDR-2-CON-MV-ZA-1330 FF, SDR-2-CON-MV-ZA-1350 FF, SDR-2-CON-TE-ZA-4200 FF, SDR-2-CON-TE-ZA-4210 FF, SDR-2-CON-TE-ZA-4230 FF, SDR-2-CON-TE-ZA-4280 FF, SDR-2-CON-TE-ZA-4240 FF, SDR-2-CON-TE-ZA-4250 FF, SDR-2-CON-TE-ZA-4300 FF, SDR-2-CON-TE-ZA-4310 FF, SDR-2-CON-TE-ZA-4360 FF, SDR-2-CON-TE-ZA-4320 FF, SDR-2-CON-TE-ZA-4370 FF, SDR-2-CON-TE-ZA-4330 FF, SDR-2-CON-TE-ZA-4380 FF, SDR-2-CON-TE-ZA-4390 FF, SDR-2-CON-TE-ZA-4400 FF, SDR-2-CON-TE-ZA-4450 FF, SDR-2-CON-TE-ZA-4410 FF, SDR-2-CON-TE-ZA-4460 FF, SDR-2-CON-TE-ZA-4420 FF, SDR-2-CON-TE-ZA-4470 FF, SDR-2-CON-TE-ZA-4480 FF, SDR-2-CON-TE-ZA-4490 FF, SDR-2-CON-TE-ZA-4540 FF, SDR-2-CON-TE-ZA-4500 FF, SDR-2-CON-TE-ZA-4550 FF, SDR-2-CON-TE-ZA-4510 FF, SDR-2-CON-CC-ZA-1000 FF, SDR-2-CON-CC-ZA-1090 FF, SDR-2-CON-CC-ZA-1250 FF, SDR-2-CON-CC-ZA-1390 FF, SDR-2-CON-CC-ZA-1670 FF, SDR-2-CON-CC-ZA-1700 FF, SDR-2-CON-CC-ZA-1750 FF, SDR-2-CON-CC-ZA-1790 FF, SDR-2-CON-CC-ZA-1830 FF, SDR-2-CON-ST-ZA-4020 FF, SDR-2-CON-SE-ZA-1430 FF, SDR-2-CON-SE-ZA-1440 FF, SDR-2-CON-SE-ZA-1530 FF, SDR-2-CON-SE-ZA-1540 FF, SDR-2-CON-SE-ZA-1630 FF, SDR-2-CON-SE-ZA-1730 FF, SDR-2-CON-SE-ZA-1740 FF, SDR-2-CON-SE-ZA-1830 FF, SDR-2-CON-SE-ZA-1840 FF, SDR-2-CON-SE-ZA-1930 FF, SDR-2-CON-SE-ZA-1940 FF, SDR-2-CON-SE-ZA-1980 FF, SDR-2-CON-SE-ZA-2030 FF, SDR-2-CON-SE-ZA-2010 FF, SDR-2-CON-SE-ZA-2040 FF, SDR-2-CON-TS-ZA-1900 FF, SDR-2-CON-TS-ZA-1010 FF, SDR-2-CON-TS-ZA-1080 FF, SDR-2-CON-TS-ZA-1910 FF, SDR-2-CON-TS-ZA-1040 FF, SDR-2-CON-TS-ZA-1020 FF, SDR-2-CON-TS-ZA-1050 FF, SDR-2-CON-TS-ZA-1060 FF, SDR-2-CON-TS-ZA-1070 FF, SDR-2-CON-TS-ZA-2200 FF, SDR-2-CON-TS-ZA-2280 FF, SDR-2-CON-TS-ZA-2210 FF, SDR-2-CON-TS-ZA-2270 FF, SDR-2-CON-TS-ZA-2290 FF, SDR-2-CON-TS-ZA-2230 FF, SDR-2-CON-TS-ZA-2240 FF, SDR-2-CON-TS-ZA-2250 FF, SDR-2-CON-TS-ZA-2260 FF, SDR-2-CON-TS-ZA-3240 FF, SDR-2-CON-TS-ZA-1920 FF, SDR-2-CON-TS-ZA-1190 FF, SDR-2-CON-TS-ZA-1260 FF, SDR-2-CON-TS-ZA-1930 FF, SDR-2-CON-TS-ZA-2010 FF, SDR-2-CON-TS-ZA-2000 FF, SDR-2-CON-TS-ZA-2020 FF, SDR-2-CON-TS-ZA-2030 FF, SDR-2-CON-TS-ZA-2040 FF, SDR-2-CON-TS-ZA-3260 FF, SDR-2-CON-TS-ZA-1940 FF, SDR-2-CON-TS-ZA-1280 FF, SDR-2-CON-TS-ZA-1350 FF, SDR-2-CON-TS-ZA-1950 FF, SDR-2-CON-TS-ZA-2060 FF, SDR-2-CON-TS-ZA-2050 FF, SDR-2-CON-TS-ZA-2660 FF, SDR-2-CON-TS-ZA-2650 FF, SDR-2-CON-TS-ZA-2670 FF, SDR-2-CON-TS-ZA-2680 FF, SDR-2-CON-TS-ZA-2690 FF, SDR-2-CON-TS-ZA-2700 FF, SDR-2-CON-TS-ZA-2730 FF, SDR-2-CON-TS-ZA-2710 FF, SDR-2-CON-TS-ZA-2720 FF, SDR-2-CON-TS-ZA-2740 FF, SDR-2-CON-TS-ZA-2760 FF, SDR-2-CON-TS-ZA-2750 FF, SDR-2-CON-TS-ZA-2770 FF, SDR-2-CON-TS-ZA-2780 FF, SDR-2-CON-TS-ZA-2800 FF, SDR-2-CON-TS-ZA-2830 FF, SDR-2-CON-TS-ZA-2810 FF, SDR-2-CON-TS-ZA-2820 FF, SDR-2-CON-TS-ZA-2840 FF, SDR-2-CON-TS-ZA-2860 FF, SDR-2-CON-TS-ZA-2850 FF, SDR-2-CON-TS-ZA-2870 FF, SDR-2-CON-TS-ZA-2880 FF, SDR-2-CON-TS-ZA-2890 FF, SDR-2-CON-TS-ZA-1630 FF, SDR-2-CON-TS-ZA-1960 FF, SDR-2-CON-TS-ZA-1640 FF, SDR-2-CON-TS-ZA-1710 FF, SDR-2-CON-TS-ZA-1970 FF, SDR-2-CON-TS-ZA-2110 FF, SDR-2-CON-TS-ZA-2100 FF, SDR-2-CON-TS-ZA-2120 FF, SDR-2-CON-TS-ZA-2130 FF, SDR-2-CON-TS-ZA-2140 FF, SDR-2-CON-TS-ZA-1720 FF, SDR-2-CON-TS-ZA-1980 FF, SDR-2-CON-TS-ZA-1730 FF, SDR-2-CON-TS-ZA-1800 FF, SDR-2-CON-TS-ZA-1990 FF, SDR-2-CON-TS-ZA-2160 FF, SDR-2-CON-TS-ZA-2150 FF, SDR-2-CON-TS-ZA-2170 FF, SDR-2-CON-TS-ZA-2180 FF, SDR-2-CON-TS-ZA-2190 FF, SDR-2-CON-TS-ZA-3160 FF, SDR-2-CON-TS-ZA-3150 FF, SDR-2-CON-TS-ZA-3170 FF, SDR-2-CON-TS-ZA-3180 FF, SDR-2-CON-TS-ZA-3190 FF, SDR-2-CON-TS-ZA-2370 FF, SDR-2-CON-TS-ZA-2390 FF, SDR-2-CON-TS-ZA-2330 FF, SDR-2-CON-TS-ZA-2320 FF, SDR-2-CON-TS-ZA-2340 FF, SDR-2-CON-TS-ZA-2350 FF, SDR-2-CON-TS-ZA-2360 FF, SDR-2-CON-TS-ZA-2430 FF, SDR-2-CON-TS-ZA-2410 FF, SDR-2-CON-TS-ZA-2420 FF, SDR-2-CON-TS-ZA-2440 FF, SDR-2-CON-TS-ZA-2460 FF, SDR-2-CON-TS-ZA-2450 FF, SDR-2-CON-TS-ZA-2930 FF, SDR-2-CON-TS-ZA-2910 FF, SDR-2-CON-TS-ZA-2920 FF, SDR-2-CON-TS-ZA-2940 FF, SDR-2-CON-TS-ZA-2960 FF, SDR-2-CON-TS-ZA-3030 FF, SDR-2-CON-TS-ZA-3010 FF, SDR-2-CON-TS-ZA-3020 FF, SDR-2-CON-TS-ZA-3040 FF, SDR-2-CON-TS-ZA-3060 FF, SDR-2-CON-TS-ZA-3050 FF, SDR-2-CON-TS-ZA-2510 FF, SDR-2-CON-TS-ZA-2520 FF, SDR-2-CON-TS-ZA-2560 FF, SDR-2-CON-TS-ZA-2550 FF, SDR-2-CON-TS-ZA-2570 FF, SDR-2-CON-TS-ZA-2580 FF, SDR-2-CON-TS-ZA-2590 FF, SDR-2-CON-PW-ZA-1080 FF, SDR-2-CON-PW-ZA-2210 FF, SDR-2-CON-PW-ZA-1040 FF, SDR-2-CON-PW-ZA-1020 FF, SDR-2-CON-PW-ZA-1050 FF, SDR-2-CON-PW-ZA-2300 FF, SDR-2-CON-PW-ZA-2280 FF, SDR-2-CON-PW-ZA-2310 FF, SDR-2-CON-PW-ZA-2290 FF, SDR-2-CON-PW-ZA-2680 FF, SDR-2-CON-PW-ZA-2660 FF, SDR-2-CON-PW-ZA-2690 FF, SDR-2-CON-PW-ZA-2710 FF, SDR-2-CON-PW-ZA-3810 FF, SDR-2-CON-PW-ZA-3290 FF, SDR-2-CON-PW-ZA-3270 FF, SDR-2-CON-PW-ZA-3280 FF, SDR-2-CON-PW-ZA-3360 FF, SDR-2-CON-PW-ZA-3390 FF, SDR-2-CON-PW-ZA-3370 FF, SDR-2-CON-PW-ZA-3380 FF, SDR-2-CON-PW-ZA-3400 FF, SDR-2-CON-PW-ZA-3460 FF, SDR-2-CON-PW-ZA-3490 FF, SDR-2-CON-PW-ZA-3470 FF, SDR-2-CON-PW-ZA-3480 FF, SDR-2-CON-PW-ZA-3500 FF, SDR-2-CON-PW-ZA-2810 FF, SDR-2-CON-PW-ZA-2840 FF, SDR-2-CON-PW-ZA-2820 FF, SDR-2-CON-PW-ZA-2830 FF, SDR-2-CON-PW-ZA-2880 FF, SDR-2-CON-PW-ZA-2860 FF, SDR-2-CON-PW-ZA-2890 FF, SDR-2-CON-PW-ZA-2360 FF, SDR-2-CON-PW-ZA-2440 FF, SDR-2-CON-PW-ZA-2370 FF, SDR-2-CON-PW-ZA-2430 FF, SDR-2-CON-PW-ZA-2450 FF, SDR-2-CON-PW-ZA-2460 FF, SDR-2-CON-PW-ZA-2540 FF, SDR-2-CON-PW-ZA-2470 FF, SDR-2-CON-PW-ZA-2530 FF, SDR-2-CON-PW-ZG-1080 FF, SDR-2-CON-PW-ZG-1510 FF, SDR-2-CON-PW-ZA-3680 FF, SDR-2-CON-PW-ZA-3660 FF, SDR-2-CON-PW-ZA-3690 FF, SDR-2-CON-PW-ZA-3670 FF, SDR-2-CON-PW-ZA-3700 FF, SDR-2-CON-PW-ZA-2930 FF, SDR-2-CON-PW-ZA-2950 FF, SDR-2-CON-PW-ZA-2980 FF, SDR-2-CON-PW-ZA-2960 FF, SDR-2-CON-PW-ZA-2990 FF, SDR-2-CON-PW-ZA-2970 FF, SDR-2-CON-PW-ZA-3030 FF, SDR-2-CON-PW-ZA-3050 FF, SDR-2-CON-PW-ZA-3080 FF, SDR-2-CON-PW-ZA-3060 FF, SDR-2-CON-PW-ZA-3090 FF, SDR-2-CON-PW-ZA-3070 FF, SDR-2-CON-PW-ZA-3100 FF, SDR-2-CON-PW-ZA-3130 FF, SDR-2-CON-PW-ZA-3150 FF, SDR-2-CON-PW-ZA-3180 FF, SDR-2-CON-PW-ZA-3160 FF, SDR-2-CON-PW-ZA-3190 FF, SDR-2-CON-PW-ZA-3170 FF, SDR-2-CON-PW-ZA-3200 FF, SDR-2-CON-PW-ZA-2630 FF, SDR-2-CON-PW-ZA-2650 FF, SDR-2-CON-PW-ZA-2600 FF, SDR-2-CON-PW-ZA-2580 FF, SDR-2-CON-PW-ZA-2610 FF, SDR-2-CON-PW-ZA-2590 FF, SDR-2-CON-PW-ZA-2620 FF, SDR-2-CON-SL-ZA-2900 FF, SDR-2-CON-SL-ZA-2890 FF, SDR-2-CON-SL-ZA-1410 FF, SDR-2-CON-SL-ZA-1400 FF, SDR-2-CON-SL-ZA-2980 FF, SDR-2-CON-SL-ZA-2970 FF, SDR-2-CON-SL-ZA-3020 FF, SDR-2-CON-SL-ZA-3010 FF, SDR-2-CON-SL-ZA-3060 FF, SDR-2-CON-SL-ZA-3050 FF, SDR-2-CON-SL-ZA-3100 FF, SDR-2-CON-SL-ZA-3090 FF, SDR-2-CON-SL-ZA-3140 FF, SDR-2-CON-SL-ZA-3130 FF, SDR-2-CON-SL-ZA-3180 FF, SDR-2-CON-SL-ZA-3170 FF, SDR-2-CON-SL-ZA-3220 FF, SDR-2-CON-SL-ZA-3210 FF, SDR-2-CON-SL-ZA-2940 FF, SDR-2-CON-SL-ZA-2930 FF, SDR-2-CON-SL-ZA-2650 FF, SDR-2-CON-SL-ZA-2660 FF, SDR-2-CON-SL-ZA-2800 FF, SDR-2-CON-SL-ZA-2670 FF, SDR-2-CON-SL-ZA-2810 FF, SDR-2-CON-SL-ZA-2820 FF, SDR-2-CON-SL-ZA-2830 FF, SDR-2-CON-SL-ZA-2840 FF, SDR-2-CON-SL-ZA-2850 FF, SDR-2-CON-SL-ZA-2860 FF, SDR-2-CON-MV-ZA-1100 FF, SDR-2-CON-MV-ZA-1190 FF, SDR-2-CON-MV-ZA-1180 FF, SDR-2-CON-MV-ZA-1230 FF, SDR-2-CON-MV-ZA-1220 FF, SDR-2-CON-MV-ZA-1270 FF, SDR-2-CON-MV-ZA-1260 FF, SDR-2-CON-TE-ZA-3280 FF, SDR-2-CON-TE-ZA-3260 FF, SDR-2-CON-TE-ZA-3270 FF, SDR-2-CON-TE-ZA-3310 FF, SDR-2-CON-TE-ZA-3320 FF, SDR-2-CON-TE-ZA-3370 FF, SDR-2-CON-TE-ZA-3380 FF, SDR-2-CON-TE-ZA-3340 FF, SDR-2-CON-TE-ZA-3350 FF, SDR-2-CON-TE-ZA-3360 FF, SDR-2-CON-TE-ZA-3500 FF, SDR-2-CON-TE-ZA-3550 FF, SDR-2-CON-TE-ZA-3520 FF, SDR-2-CON-TE-ZA-3530 FF, SDR-2-CON-TE-ZA-3540 FF, SDR-2-CON-TE-ZA-3590 FF, SDR-2-CON-TE-ZA-3640 FF, SDR-2-CON-TE-ZA-3610 FF, SDR-2-CON-TE-ZA-3620 FF, SDR-2-CON-TE-ZA-3630 FF, SDR-2-CON-TE-ZA-3680 FF, SDR-2-CON-TE-ZA-3730 FF, SDR-2-CON-TE-ZA-3690 FF, SDR-2-CON-TE-ZA-3740 FF, SDR-2-CON-TE-ZA-3700 FF, SDR-2-CON-TE-ZA-3710 FF, SDR-2-CON-TE-ZA-3720 FF, SDR-2-CON-TE-ZA-3770 FF, SDR-2-CON-TE-ZA-3820 FF, SDR-2-CON-TE-ZA-3780 FF, SDR-2-CON-TE-ZA-3830 FF, SDR-2-CON-TE-ZA-3790 FF, SDR-2-CON-TE-ZA-3800 FF, SDR-2-CON-TE-ZA-3810 FF, SDR-2-CON-TE-ZA-3860 FF, SDR-2-CON-TE-ZA-3910 FF, SDR-2-CON-TE-ZA-3870 FF, SDR-2-CON-TE-ZA-3920 FF, SDR-2-CON-TE-ZA-3880 FF, SDR-2-CON-TE-ZA-3890 FF, SDR-2-CON-TE-ZA-3900 FF, SDR-2-CON-TE-ZA-3940 FF, SDR-2-CON-TE-ZA-3950 FF, SDR-2-CON-TE-ZA-4000 FF, SDR-2-CON-TE-ZA-3960 FF, SDR-2-CON-TE-ZA-4010 FF, SDR-2-CON-TE-ZA-3970 FF, SDR-2-CON-TE-ZA-3980 FF, SDR-2-CON-TE-ZA-3990 FF, SDR-2-CON-TE-ZA-4030 FF, SDR-2-CON-TE-ZA-4040 FF, SDR-2-CON-TE-ZA-4090 FF, SDR-2-CON-TE-ZA-4050 FF, SDR-2-CON-TE-ZA-4100 FF, SDR-2-CON-TE-ZA-4060 FF, SDR-2-CON-TE-ZA-4070 FF, SDR-2-CON-TE-ZA-4080 FF, SDR-2-CON-TE-ZA-4130 FF, SDR-2-CON-TE-ZA-4180 FF, SDR-2-CON-TE-ZA-4160 FF, SDR-2-CON-TE-ZA-4170 FF, SDR-2-CON-SL-ZA-3260 FF, SDR-2-CON-SL-ZA-3250 FF, SDR-2-CON-SL-ZA-3300 FF, SDR-2-CON-SL-ZA-3290 FF, SDR-2-CON-SL-ZA-3340 FF, SDR-2-CON-SL-ZA-3330 FF, SDR-2-CON-SL-ZA-3380 FF, SDR-2-CON-SL-ZA-3370 FF, SDR-2-CON-SL-ZA-3430 FF, SDR-2-CON-SL-ZA-3440 FF, SDR-2-CON-SL-ZA-3450 FF, SDR-2-CON-SL-ZA-3460 FF, SDR-2-CON-SL-ZA-3470 FF, SDR-2-CON-SL-ZA-3480 FF, SDR-2-CON-SL-ZA-3490 FF, SDR-2-CON-SL-ZA-3500 FF, SDR-2-CON-SL-ZA-3510 FF, SDR-2-CON-SL-ZA-3520 FF, SDR-2-CON-SL-ZA-3530 FF, SDR-2-CON-SL-ZA-3540 FF, SDR-2-CON-SL-ZA-3550 FF, SDR-2-CON-MV-ZA-1300 FF, SDR-2-CON-MV-ZA-1340 FF, SDR-2-CON-TE-ZA-4220 FF, SDR-2-CON-TE-ZA-4270 FF, SDR-2-CON-TE-ZA-4260 FF, SDR-2-CON-TE-ZA-4340 FF, SDR-2-CON-TE-ZA-4350 FF, SDR-2-CON-TE-ZA-4430 FF, SDR-2-CON-TE-ZA-4440 FF, SDR-2-CON-TE-ZA-4520 FF, SDR-2-CON-TE-ZA-4530 FF, SDR-2-CON-CC-ZA-1260 FF, SDR-2-CON-CC-ZA-1270 FF, SDR-2-CON-CC-ZA-1620 FF, SDR-2-CON-CC-ZA-1630 FF, SDR-2-CON-CC-ZA-1640 FF, SDR-2-CON-CC-ZA-1650 FF, SDR-2-CON-CC-ZA-1660 FF, SDR-2-CON-CC-ZA-1720 FF, SDR-2-CON-CC-ZA-1730 FF, SDR-2-CON-CC-ZA-1760 FF, SDR-2-CON-CC-ZA-1770 FF, SDR-2-CON-CC-ZA-1780 FF, SDR-2-CON-CC-ZA-1800 FF, SDR-2-CON-CC-ZA-1810 FF, SDR-2-CON-CC-ZA-1820 FF, SDR-2-CON-CC-ZA-1840 FF, SDR-2-CON-CC-ZA-1850 FF, SDR-2-CON-CC-ZA-1860 FF, SDR-2-CON-CC-ZG-1500 FF, SDR-2-CON-CC-ZG-1540 FF, SDR-2-CON-CC-ZG-1550 FF, SDR-2-CON-CC-ZG-1510 FF, SDR-2-CON-CC-ZG-1560 FF, SDR-2-CON-CC-ZG-1570 FF, SDR-2-CON-CC-ZG-1580 FF, SDR-2-CON-CC-ZG-1520 FF, SDR-2-CON-CC-ZG-1590 FF, SDR-2-CON-CC-ZG-1530 FF, SDR-2-CON-CC-ZG-1600 FF, SDR-2-CON-CC-ZG-1610 FF, SDR-2-CON-CC-ZG-1620 FF, SDR-2-CON-CC-ZG-1630 FF, SDR-2-CON-CC-ZG-1640 FF, SDR-2-CON-CC-ZG-1650 FF, SDR-2-MILS-1050 FF, SDR-2-CON-ST-ZA-5970 FF, SDR-2-CON-SE-ZA-1000, SDR-2-CON-SE-ZA-1420, SDR-2-CON-SE-ZA-1030, SDR-2-CON-SE-ZA-1450, SDR-2-CON-SE-ZA-1460, SDR-2-CON-SE-ZA-1520 → SDR-2-CON-ST-ZA-4020 SS, SDR-2-CON-SE-ZA-1000, SDR-2-CON-SE-ZA-1420, SDR-2-CON-SE-ZA-1010, SDR-2-CON-SE-ZA-1020, SDR-2-CON-SE-ZA-1430, SDR-2-CON-SE-ZA-1030, SDR-2-CON-SE-ZA-1450, SDR-2-CON-SE-ZA-1040, SDR-2-CON-SE-ZA-1050, SDR-2-CON-SE-ZA-1440, SDR-2-CON-SE-ZA-1460, SDR-2-CON-SE-ZA-1520, SDR-2-CON-SE-ZA-1470, SDR-2-CON-SE-ZA-1480, SDR-2-CON-SE-ZA-1530, SDR-2-CON-SE-ZA-1490, SDR-2-CON-SE-ZA-1550, SDR-2-CON-SE-ZA-1500, SDR-2-CON-SE-ZA-1510, SDR-2-CON-SE-ZA-1540, SDR-2-CON-SE-ZA-1560, SDR-2-CON-SE-ZA-1620, SDR-2-CON-SE-ZA-1570, SDR-2-CON-SE-ZA-1580, SDR-2-CON-SE-ZA-1630, SDR-2-CON-SE-ZA-1590, SDR-2-CON-SE-ZA-1650, SDR-2-CON-SE-ZA-1600, SDR-2-CON-SE-ZA-1610, SDR-2-CON-SE-ZA-1660, SDR-2-CON-SE-ZA-1720, SDR-2-CON-SE-ZA-1670, SDR-2-CON-SE-ZA-1680, SDR-2-CON-SE-ZA-1730, SDR-2-CON-SE-ZA-1690, SDR-2-CON-SE-ZA-1750, SDR-2-CON-SE-ZA-1700, SDR-2-CON-SE-ZA-1710, SDR-2-CON-SE-ZA-1740, SDR-2-CON-SE-ZA-1760, SDR-2-CON-SE-ZA-1820, SDR-2-CON-SE-ZA-1770, SDR-2-CON-SE-ZA-1780, SDR-2-CON-SE-ZA-1830, SDR-2-CON-SE-ZA-1790, SDR-2-CON-SE-ZA-1850, SDR-2-CON-SE-ZA-1800, SDR-2-CON-SE-ZA-1810, SDR-2-CON-SE-ZA-1840, SDR-2-CON-SE-ZA-1860, SDR-2-CON-SE-ZA-1920, SDR-2-CON-SE-ZA-1870, SDR-2-CON-SE-ZA-1880, SDR-2-CON-SE-ZA-1930, SDR-2-CON-SE-ZA-1890, SDR-2-CON-SE-ZA-1950, SDR-2-CON-SE-ZA-1900, SDR-2-CON-SE-ZA-1910, SDR-2-CON-SE-ZA-1940, SDR-2-CON-SE-ZA-1960, SDR-2-CON-SE-ZA-2020, SDR-2-CON-SE-ZA-1970, SDR-2-CON-SE-ZA-1980, SDR-2-CON-SE-ZA-2030, SDR-2-CON-SE-ZA-1990, SDR-2-CON-SE-ZA-2050, SDR-2-CON-SE-ZA-2000, SDR-2-CON-SE-ZA-2010, SDR-2-CON-SE-ZA-2040, SDR-2-CON-SE-ZA-2060, SDR-2-CON-SE-ZA-2120, SDR-2-CON-SE-ZA-2070, SDR-2-CON-SE-ZA-2080, SDR-2-CON-SE-ZA-2130, SDR-2-CON-SE-ZA-2090, SDR-2-CON-SE-ZA-2150, SDR-2-CON-SE-ZA-2100, SDR-2-CON-SE-ZA-2110, SDR-2-CON-SE-ZA-2140, SDR-2-CON-SE-ZA-2160, SDR-2-CON-SE-ZA-2220, SDR-2-CON-SE-ZA-2170, SDR-2-CON-SE-ZA-2180, SDR-2-CON-SE-ZA-2230, SDR-2-CON-SE-ZA-2190, SDR-2-CON-SE-ZA-2250, SDR-2-CON-SE-ZA-2200, SDR-2-CON-SE-ZA-2210, SDR-2-CON-SE-ZA-2240, SDR-2-CON-SE-ZA-2260, SDR-2-CON-SE-ZA-2320, SDR-2-CON-SE-ZA-2270, SDR-2-CON-SE-ZA-2280, SDR-2-CON-SE-ZA-2330, SDR-2-CON-SE-ZA-2290, SDR-2-CON-SE-ZA-2350, SDR-2-CON-SE-ZA-2300, SDR-2-CON-SE-ZA-2310, SDR-2-CON-SE-ZA-2340, SDR-2-CON-SE-ZA-2360, SDR-2-CON-SE-ZA-2420, SDR-2-CON-SE-ZA-2370, SDR-2-CON-SE-ZA-2380, SDR-2-CON-SE-ZA-2430, SDR-2-CON-SE-ZA-2390, SDR-2-CON-SE-ZA-2450, SDR-2-CON-SE-ZA-2400, SDR-2-CON-SE-ZA-2410, SDR-2-CON-SE-ZA-2440, SDR-2-CON-TS-ZA-1000, SDR-2-CON-TS-ZA-1900, SDR-2-CON-TS-ZA-1010, SDR-2-CON-TS-ZA-1080, SDR-2-CON-TS-ZA-1910, SDR-2-CON-TS-ZA-1040, SDR-2-CON-TS-ZA-1020, SDR-2-CON-TS-ZA-1050, SDR-2-CON-TS-ZA-1060, SDR-2-CON-TS-ZA-1070, SDR-2-CON-TS-ZA-2200, SDR-2-CON-TS-ZA-2280, SDR-2-CON-TS-ZA-2210, SDR-2-CON-TS-ZA-2270, SDR-2-CON-TS-ZA-2290, SDR-2-CON-TS-ZA-2230, SDR-2-CON-TS-ZA-2220, SDR-2-CON-TS-ZA-2240, SDR-2-CON-TS-ZA-2250, SDR-2-CON-TS-ZA-2260, SDR-2-CON-TS-ZA-1180, SDR-2-CON-TS-ZA-1920, SDR-2-CON-TS-ZA-1190, SDR-2-CON-TS-ZA-1260, SDR-2-CON-TS-ZA-1930, SDR-2-CON-TS-ZA-2010, SDR-2-CON-TS-ZA-2000, SDR-2-CON-TS-ZA-2020, SDR-2-CON-TS-ZA-2030, SDR-2-CON-TS-ZA-2040, SDR-2-CON-TS-ZA-1270, SDR-2-CON-TS-ZA-1940, SDR-2-CON-TS-ZA-1280, SDR-2-CON-TS-ZA-1350, SDR-2-CON-TS-ZA-1950, SDR-2-CON-TS-ZA-2060, SDR-2-CON-TS-ZA-2050, SDR-2-CON-TS-ZA-2070, SDR-2-CON-TS-ZA-2080, SDR-2-CON-TS-ZA-2090, SDR-2-CON-TS-ZA-2600, SDR-2-CON-TS-ZA-2630, SDR-2-CON-TS-ZA-2610, SDR-2-CON-TS-ZA-2620, SDR-2-CON-TS-ZA-2640, SDR-2-CON-TS-ZA-2660, SDR-2-CON-TS-ZA-2650, SDR-2-CON-TS-ZA-2670, SDR-2-CON-TS-ZA-2680, SDR-2-CON-TS-ZA-2690, SDR-2-CON-TS-ZA-2700, SDR-2-CON-TS-ZA-2730, SDR-2-CON-TS-ZA-2710, SDR-2-CON-TS-ZA-2720, SDR-2-CON-TS-ZA-2740, SDR-2-CON-TS-ZA-2760, SDR-2-CON-TS-ZA-2750, SDR-2-CON-TS-ZA-2770, SDR-2-CON-TS-ZA-2780, SDR-2-CON-TS-ZA-2790, SDR-2-CON-TS-ZA-2800, SDR-2-CON-TS-ZA-2830, SDR-2-CON-TS-ZA-2810, SDR-2-CON-TS-ZA-2820, SDR-2-CON-TS-ZA-2840, SDR-2-CON-TS-ZA-2860, SDR-2-CON-TS-ZA-2850, SDR-2-CON-TS-ZA-2870, SDR-2-CON-TS-ZA-2880, SDR-2-CON-TS-ZA-2890, SDR-2-CON-TS-ZA-1630, SDR-2-CON-TS-ZA-1960, SDR-2-CON-TS-ZA-1640, SDR-2-CON-TS-ZA-1710, SDR-2-CON-TS-ZA-1970, SDR-2-CON-TS-ZA-2110, SDR-2-CON-TS-ZA-2100, SDR-2-CON-TS-ZA-2120, SDR-2-CON-TS-ZA-2130, SDR-2-CON-TS-ZA-2140, SDR-2-CON-TS-ZA-1720, SDR-2-CON-TS-ZA-1980, SDR-2-CON-TS-ZA-1730, SDR-2-CON-TS-ZA-1800, SDR-2-CON-TS-ZA-1990, SDR-2-CON-TS-ZA-2160, SDR-2-CON-TS-ZA-2150, SDR-2-CON-TS-ZA-2170, SDR-2-CON-TS-ZA-2180, SDR-2-CON-TS-ZA-2190, SDR-2-CON-TS-ZA-3100, SDR-2-CON-TS-ZA-3130, SDR-2-CON-TS-ZA-3110, SDR-2-CON-TS-ZA-3120, SDR-2-CON-TS-ZA-3140, SDR-2-CON-TS-ZA-3160, SDR-2-CON-TS-ZA-3150, SDR-2-CON-TS-ZA-3170, SDR-2-CON-TS-ZA-3180, SDR-2-CON-TS-ZA-3190, SDR-2-CON-TS-ZA-2300, SDR-2-CON-TS-ZA-2380, SDR-2-CON-TS-ZA-2310, SDR-2-CON-TS-ZA-2370, SDR-2-CON-TS-ZA-2390, SDR-2-CON-TS-ZA-2330, SDR-2-CON-TS-ZA-2320, SDR-2-CON-TS-ZA-2340, SDR-2-CON-TS-ZA-2350, SDR-2-CON-TS-ZA-2360, SDR-2-CON-TS-ZA-2400, SDR-2-CON-TS-ZA-2430, SDR-2-CON-TS-ZA-2410, SDR-2-CON-TS-ZA-2420, SDR-2-CON-TS-ZA-2440, SDR-2-CON-TS-ZA-2460, SDR-2-CON-TS-ZA-2450, SDR-2-CON-TS-ZA-2470, SDR-2-CON-TS-ZA-2480, SDR-2-CON-TS-ZA-2490, SDR-2-CON-TS-ZA-2900, SDR-2-CON-TS-ZA-2930, SDR-2-CON-TS-ZA-2910, SDR-2-CON-TS-ZA-2920, SDR-2-CON-TS-ZA-2940, SDR-2-CON-TS-ZA-2960, SDR-2-CON-TS-ZA-2950, SDR-2-CON-TS-ZA-2970, SDR-2-CON-TS-ZA-2980, SDR-2-CON-TS-ZA-2990, SDR-2-CON-TS-ZA-3000, SDR-2-CON-TS-ZA-3030, SDR-2-CON-TS-ZA-3010, SDR-2-CON-TS-ZA-3020, SDR-2-CON-TS-ZA-3040, SDR-2-CON-TS-ZA-3060, SDR-2-CON-TS-ZA-3050, SDR-2-CON-TS-ZA-3070, SDR-2-CON-TS-ZA-3080, SDR-2-CON-TS-ZA-3090, SDR-2-CON-TS-ZA-2500, SDR-2-CON-TS-ZA-2530, SDR-2-CON-TS-ZA-2510, SDR-2-CON-TS-ZA-2520, SDR-2-CON-TS-ZA-2540 SS, SDR-2-CON-TS-ZA-2560, SDR-2-CON-TS-ZA-2550, SDR-2-CON-TS-ZA-2570, SDR-2-CON-TS-ZA-2580, SDR-2-CON-TS-ZA-2590, SDR-2-CON-PW-ZA-1000, SDR-2-CON-PW-ZA-2200, SDR-2-CON-PW-ZA-1010, SDR-2-CON-PW-ZA-1080, SDR-2-CON-PW-ZA-2210 SS, SDR-2-CON-PW-ZA-1040, SDR-2-CON-PW-ZA-1020, SDR-2-CON-PW-ZA-1050, SDR-2-CON-PW-ZA-1030, SDR-2-CON-PW-ZA-1070, SDR-2-CON-PW-ZA-2260, SDR-2-CON-PW-ZA-2340, SDR-2-CON-PW-ZA-2270, SDR-2-CON-PW-ZA-2330, SDR-2-CON-PW-ZA-2350 SS, SDR-2-CON-PW-ZA-2300, SDR-2-CON-PW-ZA-2280, SDR-2-CON-PW-ZA-2310, SDR-2-CON-PW-ZA-2290, SDR-2-CON-PW-ZA-1200, SDR-2-CON-PW-ZA-2220, SDR-2-CON-PW-ZA-1210, SDR-2-CON-PW-ZA-1280, SDR-2-CON-PW-ZA-2230 SS, SDR-2-CON-PW-ZA-2680, SDR-2-CON-PW-ZA-2660, SDR-2-CON-PW-ZA-2690, SDR-2-CON-PW-ZA-2670, SDR-2-CON-PW-ZA-2700 SS, SDR-2-CON-PW-ZA-2710, SDR-2-CON-PW-ZA-2740, SDR-2-CON-PW-ZA-2720, SDR-2-CON-PW-ZA-2730, SDR-2-CON-PW-ZA-2750 FS+3d, SDR-2-CON-PW-ZA-2780, SDR-2-CON-PW-ZA-2760, SDR-2-CON-PW-ZA-2790, SDR-2-CON-PW-ZA-2770, SDR-2-CON-PW-ZA-2800 FS+3d, SDR-2-CON-PW-ZA-1400, SDR-2-CON-PW-ZA-2240, SDR-2-CON-PW-ZA-1410, SDR-2-CON-PW-ZA-1480, SDR-2-CON-PW-ZA-2250, SDR-2-CON-PW-ZA-3230, SDR-2-CON-PW-ZA-3210, SDR-2-CON-PW-ZA-3240, SDR-2-CON-PW-ZA-3220, SDR-2-CON-PW-ZA-3250, SDR-2-CON-PW-ZA-3260, SDR-2-CON-PW-ZA-3290, SDR-2-CON-PW-ZA-3270, SDR-2-CON-PW-ZA-3280, SDR-2-CON-PW-ZA-3300 FS+2.8d, SDR-2-CON-PW-ZA-3330, SDR-2-CON-PW-ZA-3310, SDR-2-CON-PW-ZA-3340, SDR-2-CON-PW-ZA-3320, SDR-2-CON-PW-ZA-3350, SDR-2-CON-PW-ZA-3360, SDR-2-CON-PW-ZA-3390, SDR-2-CON-PW-ZA-3370, SDR-2-CON-PW-ZA-3380, SDR-2-CON-PW-ZA-3400, SDR-2-CON-PW-ZA-3430, SDR-2-CON-PW-ZA-3410, SDR-2-CON-PW-ZA-3440, SDR-2-CON-PW-ZA-3420, SDR-2-CON-PW-ZA-3450, SDR-2-CON-PW-ZA-3460, SDR-2-CON-PW-ZA-3490, SDR-2-CON-PW-ZA-3470, SDR-2-CON-PW-ZA-3480, SDR-2-CON-PW-ZA-3500 SS, SDR-2-CON-PW-ZA-3530, SDR-2-CON-PW-ZA-3510, SDR-2-CON-PW-ZA-3540, SDR-2-CON-PW-ZA-3520, SDR-2-CON-PW-ZA-3550 SS, SDR-2-CON-PW-ZA-3560, SDR-2-CON-PW-ZA-3590, SDR-2-CON-PW-ZA-3570, SDR-2-CON-PW-ZA-3580, SDR-2-CON-PW-ZA-3600 SS, SDR-2-CON-PW-ZA-3630, SDR-2-CON-PW-ZA-3610, SDR-2-CON-PW-ZA-3640, SDR-2-CON-PW-ZA-3620, SDR-2-CON-PW-ZA-3650 SS, SDR-2-CON-PW-ZA-2810, SDR-2-CON-PW-ZA-2840, SDR-2-CON-PW-ZA-2820, SDR-2-CON-PW-ZA-2830, SDR-2-CON-PW-ZA-2850 SS, SDR-2-CON-PW-ZA-2880, SDR-2-CON-PW-ZA-2860, SDR-2-CON-PW-ZA-2890, SDR-2-CON-PW-ZA-2870, SDR-2-CON-PW-ZA-2900 SS, SDR-2-CON-PW-ZA-2360, SDR-2-CON-PW-ZA-2440, SDR-2-CON-PW-ZA-2370, SDR-2-CON-PW-ZA-2430, SDR-2-CON-PW-ZA-2450 SS, SDR-2-CON-PW-ZA-2400, SDR-2-CON-PW-ZA-2380, SDR-2-CON-PW-ZA-2410, SDR-2-CON-PW-ZA-2390, SDR-2-CON-PW-ZA-2420 SS, SDR-2-CON-PW-ZA-2460, SDR-2-CON-PW-ZA-2540, SDR-2-CON-PW-ZA-2470, SDR-2-CON-PW-ZA-2530, SDR-2-CON-PW-ZA-2550 SS, SDR-2-CON-PW-ZA-2500, SDR-2-CON-PW-ZA-2480, SDR-2-CON-PW-ZA-2510, SDR-2-CON-PW-ZA-2490, SDR-2-CON-PW-ZA-2520 SS, SDR-2-CON-PW-ZG-1000, SDR-2-CON-PW-ZG-1500, SDR-2-CON-PW-ZG-1010, SDR-2-CON-PW-ZG-1080, SDR-2-CON-PW-ZG-1510 SS, SDR-2-CON-PW-ZA-3680, SDR-2-CON-PW-ZA-3660, SDR-2-CON-PW-ZA-3690, SDR-2-CON-PW-ZA-3670, SDR-2-CON-PW-ZA-3700 SS, SDR-2-CON-PW-ZA-2910, SDR-2-CON-PW-ZA-2940, SDR-2-CON-PW-ZA-2920, SDR-2-CON-PW-ZA-2930, SDR-2-CON-PW-ZA-2950 SS, SDR-2-CON-PW-ZA-2980, SDR-2-CON-PW-ZA-2960, SDR-2-CON-PW-ZA-2990, SDR-2-CON-PW-ZA-2970 SS, SDR-2-CON-PW-ZA-3010, SDR-2-CON-PW-ZA-3040, SDR-2-CON-PW-ZA-3020, SDR-2-CON-PW-ZA-3030, SDR-2-CON-PW-ZA-3050 SS, SDR-2-CON-PW-ZA-3080, SDR-2-CON-PW-ZA-3060, SDR-2-CON-PW-ZA-3090, SDR-2-CON-PW-ZA-3070, SDR-2-CON-PW-ZA-3100 SS, SDR-2-CON-PW-ZA-3110, SDR-2-CON-PW-ZA-3140, SDR-2-CON-PW-ZA-3120, SDR-2-CON-PW-ZA-3130, SDR-2-CON-PW-ZA-3150 SS, SDR-2-CON-PW-ZA-3180, SDR-2-CON-PW-ZA-3160, SDR-2-CON-PW-ZA-3190, SDR-2-CON-PW-ZA-3170, SDR-2-CON-PW-ZA-3200 SS, SDR-2-CON-PW-ZA-2560, SDR-2-CON-PW-ZA-2640, SDR-2-CON-PW-ZA-2570, SDR-2-CON-PW-ZA-2630, SDR-2-CON-PW-ZA-2650 SS, SDR-2-CON-PW-ZA-2600, SDR-2-CON-PW-ZA-2580, SDR-2-CON-PW-ZA-2610, SDR-2-CON-PW-ZA-2590, SDR-2-CON-PW-ZA-2620 SS, SDR-2-CON-SL-ZA-1000, SDR-2-CON-SL-ZA-1010, SDR-2-CON-SL-ZA-1110, SDR-2-CON-SL-ZA-1100, SDR-2-CON-SL-ZA-2870, SDR-2-CON-SL-ZA-2880, SDR-2-CON-SL-ZA-2900, SDR-2-CON-SL-ZA-2890, SDR-2-CON-SL-ZA-1300, SDR-2-CON-SL-ZA-1310, SDR-2-CON-SL-ZA-1410, SDR-2-CON-SL-ZA-1400, SDR-2-CON-SL-ZA-2950, SDR-2-CON-SL-ZA-2960, SDR-2-CON-SL-ZA-2980, SDR-2-CON-SL-ZA-2970, SDR-2-CON-SL-ZA-2990, SDR-2-CON-SL-ZA-3000, SDR-2-CON-SL-ZA-3020, SDR-2-CON-SL-ZA-3010, SDR-2-CON-SL-ZA-3030, SDR-2-CON-SL-ZA-3040, SDR-2-CON-SL-ZA-3060, SDR-2-CON-SL-ZA-3050, SDR-2-CON-SL-ZA-3070, SDR-2-CON-SL-ZA-3080, SDR-2-CON-SL-ZA-3100, SDR-2-CON-SL-ZA-3090, SDR-2-CON-SL-ZA-3110, SDR-2-CON-SL-ZA-3120, SDR-2-CON-SL-ZA-3140, SDR-2-CON-SL-ZA-3130, SDR-2-CON-SL-ZA-3150, SDR-2-CON-SL-ZA-3160, SDR-2-CON-SL-ZA-3180, SDR-2-CON-SL-ZA-3170, SDR-2-CON-SL-ZA-3190, SDR-2-CON-SL-ZA-3200, SDR-2-CON-SL-ZA-3220, SDR-2-CON-SL-ZA-3210, SDR-2-CON-SL-ZA-2910, SDR-2-CON-SL-ZA-2920, SDR-2-CON-SL-ZA-2940, SDR-2-CON-SL-ZA-2930, SDR-2-CON-SL-ZA-2650, SDR-2-CON-SL-ZA-2760, SDR-2-CON-SL-ZA-2770, SDR-2-CON-SL-ZA-2780, SDR-2-CON-SL-ZA-2660, SDR-2-CON-SL-ZA-2790, SDR-2-CON-SL-ZA-2800, SDR-2-CON-SL-ZA-2670, SDR-2-CON-SL-ZA-2810, SDR-2-CON-SL-ZA-2820, SDR-2-CON-SL-ZA-2680, SDR-2-CON-SL-ZA-2830, SDR-2-CON-SL-ZA-2840, SDR-2-CON-SL-ZA-2690, SDR-2-CON-SL-ZA-2850, SDR-2-CON-SL-ZA-2860, SDR-2-CON-MV-ZA-1000, SDR-2-CON-MV-ZA-1070, SDR-2-CON-MV-ZA-1150, SDR-2-CON-MV-ZA-1100, SDR-2-CON-MV-ZA-1160, SDR-2-CON-MV-ZA-1170, SDR-2-CON-MV-ZA-1190, SDR-2-CON-MV-ZA-1180, SDR-2-CON-MV-ZA-1200, SDR-2-CON-MV-ZA-1210, SDR-2-CON-MV-ZA-1230, SDR-2-CON-MV-ZA-1220, SDR-2-CON-MV-ZA-1240, SDR-2-CON-MV-ZA-1250, SDR-2-CON-MV-ZA-1270, SDR-2-CON-MV-ZA-1260, SDR-2-CON-TE-ZA-1000, SDR-2-CON-TE-ZA-1010, SDR-2-CON-TE-ZA-1020, SDR-2-CON-TE-ZA-1840, SDR-2-CON-TE-ZA-1030, SDR-2-CON-TE-ZA-1850, SDR-2-CON-TE-ZA-1040, SDR-2-CON-TE-ZA-1050, SDR-2-CON-TE-ZA-1060, SDR-2-CON-TE-ZA-3210, SDR-2-CON-TE-ZA-3220, SDR-2-CON-TE-ZA-3230, SDR-2-CON-TE-ZA-3280, SDR-2-CON-TE-ZA-3240, SDR-2-CON-TE-ZA-3290, SDR-2-CON-TE-ZA-3250, SDR-2-CON-TE-ZA-3260, SDR-2-CON-TE-ZA-3270, SDR-2-CON-TE-ZA-3300, SDR-2-CON-TE-ZA-3310, SDR-2-CON-TE-ZA-3320, SDR-2-CON-TE-ZA-3370, SDR-2-CON-TE-ZA-3330, SDR-2-CON-TE-ZA-3380, SDR-2-CON-TE-ZA-3340, SDR-2-CON-TE-ZA-3350, SDR-2-CON-TE-ZA-3360, SDR-2-CON-TE-ZA-3390, SDR-2-CON-TE-ZA-3400, SDR-2-CON-TE-ZA-3410, SDR-2-CON-TE-ZA-3460, SDR-2-CON-TE-ZA-3420, SDR-2-CON-TE-ZA-3470, SDR-2-CON-TE-ZA-3430, SDR-2-CON-TE-ZA-3440, SDR-2-CON-TE-ZA-3450, SDR-2-CON-TE-ZA-3480, SDR-2-CON-TE-ZA-3490, SDR-2-CON-TE-ZA-3500, SDR-2-CON-TE-ZA-3550, SDR-2-CON-TE-ZA-3510, SDR-2-CON-TE-ZA-3560, SDR-2-CON-TE-ZA-3520, SDR-2-CON-TE-ZA-3530, SDR-2-CON-TE-ZA-3540, SDR-2-CON-TE-ZA-3570, SDR-2-CON-TE-ZA-3580, SDR-2-CON-TE-ZA-3590, SDR-2-CON-TE-ZA-3640, SDR-2-CON-TE-ZA-3600, SDR-2-CON-TE-ZA-3650, SDR-2-CON-TE-ZA-3610, SDR-2-CON-TE-ZA-3620, SDR-2-CON-TE-ZA-3630, SDR-2-CON-TE-ZA-3660, SDR-2-CON-TE-ZA-3670, SDR-2-CON-TE-ZA-3680, SDR-2-CON-TE-ZA-3730, SDR-2-CON-TE-ZA-3690, SDR-2-CON-TE-ZA-3740, SDR-2-CON-TE-ZA-3700, SDR-2-CON-TE-ZA-3710, SDR-2-CON-TE-ZA-3720, SDR-2-CON-TE-ZA-3750, SDR-2-CON-TE-ZA-3760, SDR-2-CON-TE-ZA-3770, SDR-2-CON-TE-ZA-3820, SDR-2-CON-TE-ZA-3780, SDR-2-CON-TE-ZA-3830, SDR-2-CON-TE-ZA-3790, SDR-2-CON-TE-ZA-3800, SDR-2-CON-TE-ZA-3810, SDR-2-CON-TE-ZA-3840, SDR-2-CON-TE-ZA-3850, SDR-2-CON-TE-ZA-3860, SDR-2-CON-TE-ZA-3910, SDR-2-CON-TE-ZA-3870, SDR-2-CON-TE-ZA-3920, SDR-2-CON-TE-ZA-3880, SDR-2-CON-TE-ZA-3890, SDR-2-CON-TE-ZA-3900, SDR-2-CON-TE-ZA-3930, SDR-2-CON-TE-ZA-3940, SDR-2-CON-TE-ZA-3950, SDR-2-CON-TE-ZA-4000, SDR-2-CON-TE-ZA-3960, SDR-2-CON-TE-ZA-4010, SDR-2-CON-TE-ZA-3970, SDR-2-CON-TE-ZA-3980, SDR-2-CON-TE-ZA-3990, SDR-2-CON-TE-ZA-4020, SDR-2-CON-TE-ZA-4030, SDR-2-CON-TE-ZA-4040, SDR-2-CON-TE-ZA-4090, SDR-2-CON-TE-ZA-4050, SDR-2-CON-TE-ZA-4100, SDR-2-CON-TE-ZA-4060, SDR-2-CON-TE-ZA-4070, SDR-2-CON-TE-ZA-4080, SDR-2-CON-TE-ZA-4110, SDR-2-CON-TE-ZA-4120, SDR-2-CON-TE-ZA-4130, SDR-2-CON-TE-ZA-4180, SDR-2-CON-TE-ZA-4140, SDR-2-CON-TE-ZA-4190, SDR-2-CON-TE-ZA-4150, SDR-2-CON-TE-ZA-4160, SDR-2-CON-TE-ZA-4170, SDR-2-CON-SL-ZA-3230, SDR-2-CON-SL-ZA-3240, SDR-2-CON-SL-ZA-3260, SDR-2-CON-SL-ZA-3250, SDR-2-CON-SL-ZA-3270, SDR-2-CON-SL-ZA-3280, SDR-2-CON-SL-ZA-3300, SDR-2-CON-SL-ZA-3290, SDR-2-CON-SL-ZA-3310, SDR-2-CON-SL-ZA-3320, SDR-2-CON-SL-ZA-3340, SDR-2-CON-SL-ZA-3330, SDR-2-CON-SL-ZA-3350, SDR-2-CON-SL-ZA-3360, SDR-2-CON-SL-ZA-3380, SDR-2-CON-SL-ZA-3370, SDR-2-CON-SL-ZA-3390, SDR-2-CON-SL-ZA-3400, SDR-2-CON-SL-ZA-3420, SDR-2-CON-SL-ZA-3410, SDR-2-CON-SL-ZA-3430, SDR-2-CON-SL-ZA-3440, SDR-2-CON-SL-ZA-3450, SDR-2-CON-SL-ZA-3460, SDR-2-CON-SL-ZA-3470, SDR-2-CON-SL-ZA-3480, SDR-2-CON-SL-ZA-3490, SDR-2-CON-SL-ZA-3500, SDR-2-CON-SL-ZA-3510, SDR-2-CON-SL-ZA-3520, SDR-2-CON-SL-ZA-3530, SDR-2-CON-SL-ZA-3540, SDR-2-CON-SL-ZA-3550, SDR-2-CON-SL-ZA-3560, SDR-2-CON-SL-ZA-3570, SDR-2-CON-SL-ZA-3580, SDR-2-CON-MV-ZA-1280, SDR-2-CON-MV-ZA-1290, SDR-2-CON-MV-ZA-1310, SDR-2-CON-MV-ZA-1300, SDR-2-CON-MV-ZA-1320, SDR-2-CON-MV-ZA-1330, SDR-2-CON-MV-ZA-1350, SDR-2-CON-MV-ZA-1340, SDR-2-CON-TE-ZA-4200, SDR-2-CON-TE-ZA-4210, SDR-2-CON-TE-ZA-4220, SDR-2-CON-TE-ZA-4270, SDR-2-CON-TE-ZA-4230, SDR-2-CON-TE-ZA-4280, SDR-2-CON-TE-ZA-4240, SDR-2-CON-TE-ZA-4250, SDR-2-CON-TE-ZA-4260, SDR-2-CON-TE-ZA-4290, SDR-2-CON-TE-ZA-4300, SDR-2-CON-TE-ZA-4310, SDR-2-CON-TE-ZA-4360, SDR-2-CON-TE-ZA-4320, SDR-2-CON-TE-ZA-4370, SDR-2-CON-TE-ZA-4330, SDR-2-CON-TE-ZA-4340, SDR-2-CON-TE-ZA-4350, SDR-2-CON-TE-ZA-4380, SDR-2-CON-TE-ZA-4390, SDR-2-CON-TE-ZA-4400, SDR-2-CON-TE-ZA-4450, SDR-2-CON-TE-ZA-4410, SDR-2-CON-TE-ZA-4460, SDR-2-CON-TE-ZA-4420, SDR-2-CON-TE-ZA-4430, SDR-2-CON-TE-ZA-4440, SDR-2-CON-TE-ZA-4470, SDR-2-CON-TE-ZA-4480, SDR-2-CON-TE-ZA-4490, SDR-2-CON-TE-ZA-4540, SDR-2-CON-TE-ZA-4500, SDR-2-CON-TE-ZA-4550, SDR-2-CON-TE-ZA-4510, SDR-2-CON-TE-ZA-4520, SDR-2-CON-TE-ZA-4530, SDR-2-CON-CC-ZA-1000, SDR-2-CON-CC-ZA-1030, SDR-2-CON-CC-ZA-1050, SDR-2-CON-CC-ZA-1060, SDR-2-CON-CC-ZA-1080, SDR-2-CON-CC-ZA-1090, SDR-2-CON-CC-ZA-1100, SDR-2-CON-CC-ZA-1110, SDR-2-CON-CC-ZA-1240, SDR-2-CON-CC-ZA-1250, SDR-2-CON-CC-ZA-1260, SDR-2-CON-CC-ZA-1270, SDR-2-CON-CC-ZA-1380, SDR-2-CON-CC-ZA-1390, SDR-2-CON-CC-ZA-1400, SDR-2-CON-CC-ZA-1410, SDR-2-CON-CC-ZA-1500, SDR-2-CON-CC-ZA-1510, SDR-2-CON-CC-ZA-1520, SDR-2-CON-CC-ZA-1530, SDR-2-CON-CC-ZA-1540, SDR-2-CON-CC-ZA-1550, SDR-2-CON-CC-ZA-1560, SDR-2-CON-CC-ZA-1570, SDR-2-CON-CC-ZA-1580, SDR-2-CON-CC-ZA-1590, SDR-2-CON-CC-ZA-1600, SDR-2-CON-CC-ZA-1610, SDR-2-CON-CC-ZA-1620, SDR-2-CON-CC-ZA-1630, SDR-2-CON-CC-ZA-1640, SDR-2-CON-CC-ZA-1650, SDR-2-CON-CC-ZA-1660, SDR-2-CON-CC-ZA-1670, SDR-2-CON-CC-ZA-1700, SDR-2-CON-CC-ZA-1720, SDR-2-CON-CC-ZA-1730, SDR-2-CON-CC-ZA-1750, SDR-2-CON-CC-ZA-1760, SDR-2-CON-CC-ZA-1770, SDR-2-CON-CC-ZA-1780, SDR-2-CON-CC-ZA-1790, SDR-2-CON-CC-ZA-1800, SDR-2-CON-CC-ZA-1810, SDR-2-CON-CC-ZA-1820, SDR-2-CON-CC-ZA-1830, SDR-2-CON-CC-ZA-1840, SDR-2-CON-CC-ZA-1850, SDR-2-CON-CC-ZA-1860, SDR-2-CON-CC-ZG-1500, SDR-2-CON-CC-ZG-1540, SDR-2-CON-CC-ZG-1550, SDR-2-CON-CC-ZG-1510, SDR-2-CON-CC-ZG-1560, SDR-2-CON-CC-ZG-1570, SDR-2-CON-CC-ZG-1580, SDR-2-CON-CC-ZG-1520, SDR-2-CON-CC-ZG-1590, SDR-2-CON-CC-ZG-1530, SDR-2-CON-CC-ZG-1600, SDR-2-CON-CC-ZG-1610, SDR-2-CON-CC-ZG-1620, SDR-2-CON-CC-ZG-1630, SDR-2-CON-CC-ZG-1640, SDR-2-CON-CC-ZG-1650, SDR-2-CON-CC-ZG-1660, SDR-2-CON-RW-ZA-1720, SDR-2-CON-RW-ZA-1720 FF, SDR-2-CON-ST-ZA-6120, SDR-2-CON-SE-ZA-2690, SDR-2-MILS-1050, SDR-2-CON-ST-ZA-5970, SDR-2-CON-ST-ZA-5220 | resources SIC- Cost [8286.74]; Loader [200 h]; Labor [1086.35 h]; Landscape Crew [1086.35 h]; Dumper Operator [1086.35 h]; Dumper Truck [800 h]; Grader [250 h] → SIC- Cost [31068.9]; Loader [200 h]; Labor [1086.35 h]; Landscape Crew [1086.35 h]; Dumper Operator [1086.35 h]; Dumper Truck [800 h]; Grader [250 h] |
| 8 | **install** | 2027-06-21 → 2027-10-31 (+132d) | 2027-07-05 → 2027-11-14 (+132d) |  |  |  |  |  |
| SDR-2-CON-IR-ZA-1010 | Installation of HDPE Pipe | 2027-06-21 → 2027-10-31 (+132d) | 2027-07-05 → 2027-11-14 (+132d) |  |  | 0d → -128d | SDR-2-TC-PW-1050 SS, SDR-2-CON-PW-ZA-3500, SDR-2-CON-PW-ZA-3600, SDR-2-CON-PW-ZA-2850, SDR-2-CON-PW-ZA-2450, SDR-2-CON-PW-ZG-1510, SDR-2-CON-PW-ZA-2950, SDR-2-CON-PW-ZA-3050, SDR-2-CON-PW-ZA-3150, SDR-2-CON-IR-ZA-1000 → SDR-2-CON-IR-ZA-1000, SDR-2-TC-PW-1050 SS, SDR-2-TC-TSE-1040 SS, SDR-2-CON-PW-ZA-3500, SDR-2-CON-PW-ZA-3600, SDR-2-CON-PW-ZA-2850, SDR-2-CON-PW-ZA-2450, SDR-2-CON-PW-ZA-2550, SDR-2-CON-PW-ZG-1510, SDR-2-CON-PW-ZA-2950, SDR-2-CON-PW-ZA-3050, SDR-2-CON-PW-ZA-3150 | resources SIC- Cost [38671.4]; Labor [271.59 h]; Landscape Crew [271.59 h]; Dumper Truck [150 h]; Grader [60 h] → SIC- Cost [51781.5]; Labor [271.59 h]; Landscape Crew [271.59 h]; Dumper Truck [150 h]; Grader [60 h] |
| 9 | **Finishing** | 2027-06-23 → 2027-11-15 (+145d) | 2027-07-04 → 2027-11-25 (+144d) |  |  |  |  |  |
| SDR-2-CON-IR-ZA-1020 | Finishing Works for irrigation | 2027-06-23 → 2027-11-15 (+145d) | 2027-07-04 → 2027-11-25 (+144d) |  |  | 1d → -128d | SDR-2-CON-IR-ZA-1010 SS+2d → SDR-2-CON-IR-ZA-1010 | resources SIC- Cost [15211.8]; Excavator [200 h]; Labor [95.54 h]; Landscape Crew [191.07 h]; Dumper Truck [40 h]; Grader [60 h] → SIC- Cost [10356.3]; Excavator [200 h]; Labor [95.54 h]; Landscape Crew [191.07 h]; Dumper Truck [40 h]; Grader [60 h] |
| 10 | **Repairs** | 2027-06-23 → 2027-11-27 (+157d) | 2027-06-27 → 2027-11-30 (+156d) |  |  |  |  |  |
| SDR-2-CON-IR-ZA-1030 | Repair for irrigation Works | 2027-06-23 → 2027-11-27 (+157d) | 2027-06-27 → 2027-11-30 (+156d) |  |  | 7d → -128d | SDR-2-CON-IR-ZA-1020 SS → SDR-2-CON-IR-ZA-1020 | resources SIC- Cost [200]; Labor [95.54 h]; Landscape Crew [95.54 h]; Dumper Truck [288.12 h]; Grader [50 h] → SIC- Cost [10356.3]; Labor [95.54 h]; Landscape Crew [95.54 h]; Dumper Truck [288.12 h]; Grader [50 h] |
| 2 | **IRRIGATION WORKS IN ( PH2-COL-MC20 )** | 2027-05-13 → 2027-10-13 (+153d) | 2027-06-29 → 2027-12-05 (+159d) |  |  |  |  |  |
| 7 | **Pre install** | 2027-05-13 → 2027-10-13 (+153d) | 2027-06-10 → 2027-11-04 (+147d) |  |  |  |  |  |
| SDR-2-CON-IR-ZA-2120 | Pre Install for irrigation Works | 2027-05-13 → 2027-10-13 (+153d) | 2027-06-10 → 2027-11-04 (+147d) |  |  | 4d → -132d |  | resources SIC- Cost [8286.74]; Dump Truck [200 h]; Excavator Operator [1086.35 h]; Loader [100 h]; Labor [1086.35 h]; Landscape Crew [1086.35 h]; Grader [80 h] → SIC- Cost [31068.9]; Dum Truck [200 h]; Excavator Operator [1086.35 h]; Loader [100 h]; Labor [1086.35 h]; Landscape Crew [1086.35 h]; Grader [80 h] |
| 8 | **install** | 2027-05-31 → 2027-11-06 (+159d) | 2027-06-13 → 2027-11-18 (+158d) |  |  |  |  |  |
| SDR-2-CON-IR-ZA-2130 | Installation of HDPE Pipe | 2027-05-31 → 2027-11-06 (+159d) | 2027-06-13 → 2027-11-18 (+158d) |  |  | 4d → -132d | SDR-2-CON-IR-ZA-2120 SS+10d → SDR-2-CON-IR-ZA-2120 | resources SIC- Cost [38671.4]; Dump Truck [130 h]; Excavator Operator [90.19 h]; Loader [130 h]; Labor [80.12 h]; Landscape Crew [1086.35 h]; Grader [60 h] → SIC- Cost [51781.5]; Dum Truck [130 h]; Excavator Operator [90.19 h]; Loader [130 h]; Labor [80.12 h]; Landscape Crew [1086.35 h]; Grader [60 h] |
| 9 | **Finishing** | 2027-06-14 → 2027-11-20 (+159d) | 2027-06-23 → 2027-11-29 (+159d) |  |  |  |  |  |
| SDR-2-CON-IR-ZA-2140 | Finishing Works for irrigation | 2027-06-14 → 2027-11-20 (+159d) | 2027-06-23 → 2027-11-29 (+159d) |  |  | 5d → -132d |  | resources SIC- Cost [15211.8]; Excavator [200 h]; Dump Truck [100 h]; Excavator Operator [25.6 h]; Loader [100 h]; Labor [25.6 h]; Landscape Crew [25.6 h]; Grader [40 h] → SIC- Cost [10356.3]; Excavator [200 h]; Dum Truck [100 h]; Excavator Operator [25.6 h]; Loader [100 h]; Labor [25.6 h]; Landscape Crew [25.6 h]; Grader [40 h] |
| 10 | **Repairs** | 2027-06-24 → 2027-11-30 (+159d) | 2027-06-29 → 2027-12-05 (+159d) |  |  |  |  |  |
| SDR-2-CON-IR-ZA-2150 | Repair for irrigation Works | 2027-06-24 → 2027-11-30 (+159d) | 2027-06-29 → 2027-12-05 (+159d) |  |  | 5d → -132d |  | resources SIC- Cost [198.55]; Dump Truck [40 h]; Excavator Operator [38.41 h]; Loader [40 h]; Labor [38.41 h]; Landscape Crew [38.41 h]; Grader [60 h] → SIC- Cost [10356.3]; Dum Truck [40 h]; Excavator Operator [38.41 h]; Loader [40 h]; Labor [38.41 h]; Landscape Crew [38.41 h]; Grader [60 h] |
| 11 | **IRRIGATION WORKS IN ( PH2-A-MCA0 )** | 2027-05-13 → 2027-10-13 (+153d) | 2027-06-29 → 2027-12-01 (+155d) |  |  |  |  |  |
| 7 | **Pre install** | 2027-05-13 → 2027-10-13 (+153d) | 2027-06-01 → 2027-11-03 (+155d) |  |  |  |  |  |
| SDR-2-CON-IR-ZA-2160 | Pre Install for irrigation Works | 2027-05-13 → 2027-10-13 (+153d) | 2027-06-01 → 2027-11-03 (+155d) | 12d → 19d |  | 0d → -132d |  | resources SIC- Cost [8286.74]; Excavator [412 h]; Dump Truck [200 h]; Excavator Operator [1086.35 h]; Loader [100 h]; Labor [1086.35 h]; Landscape Crew [1086.35 h]; Grader [80 h] → SIC- Cost [31068.9]; Excavator [412 h]; Dum Truck [200 h]; Excavator Operator [1086.35 h]; Loader [100 h]; Labor [1086.35 h]; Landscape Crew [1086.35 h]; Grader [80 h] |
| 8 | **install** | 2027-06-02 → 2027-11-04 (+155d) | 2027-06-16 → 2027-11-18 (+155d) |  |  |  |  |  |
| SDR-2-CON-IR-ZA-2170 | Installation of HDPE Pipe | 2027-06-02 → 2027-11-04 (+155d) | 2027-06-16 → 2027-11-18 (+155d) |  |  | 0d → -132d |  | resources SIC- Cost [38671.4]; Excavator [200 h]; Dump Truck [130 h]; Excavator Operator [90.19 h]; Loader [130 h]; Labor [80.12 h]; Landscape Crew [1086.35 h]; Grader [60 h] → SIC- Cost [51781.5]; Excavator [200 h]; Dum Truck [130 h]; Excavator Operator [90.19 h]; Loader [130 h]; Labor [80.12 h]; Landscape Crew [1086.35 h]; Grader [60 h] |
| 9 | **Finishing** | 2027-06-17 → 2027-11-20 (+156d) | 2027-06-27 → 2027-11-29 (+155d) |  |  |  |  |  |
| SDR-2-CON-IR-ZA-2180 | Finishing Works for irrigation | 2027-06-17 → 2027-11-20 (+156d) | 2027-06-27 → 2027-11-29 (+155d) |  |  | 0d → -132d |  | resources SIC- Cost [15211.8]; Dump Truck [100 h]; Excavator Operator [25.6 h]; Loader [100 h]; Labor [25.6 h]; Landscape Crew [25.6 h]; Grader [40 h] → SIC- Cost [10356.3]; Dum Truck [100 h]; Excavator Operator [25.6 h]; Loader [100 h]; Labor [25.6 h]; Landscape Crew [25.6 h]; Grader [40 h] |
| 10 | **Repairs** | 2027-06-28 → 2027-11-30 (+155d) | 2027-06-29 → 2027-12-01 (+155d) |  |  |  |  |  |
| SDR-2-CON-IR-ZA-2190 | Repair for irrigation Works | 2027-06-28 → 2027-11-30 (+155d) | 2027-06-29 → 2027-12-01 (+155d) |  |  | 0d → -132d |  | resources SIC- Cost [198.55]; Dump Truck [40 h]; Excavator Operator [683.25 h]; Loader [40 h]; Labor [673.17 h]; Landscape Crew [1086.35 h]; Grader [60 h] → SIC- Cost [10356.3]; Dum Truck [40 h]; Excavator Operator [683.25 h]; Loader [40 h]; Labor [673.17 h]; Landscape Crew [1086.35 h]; Grader [60 h] |
| 12 | **IRRIGATION WORKS IN ( PH2-A-MCB0 )** | 2027-05-13 → 2027-10-13 (+153d) | 2027-07-04 → 2027-12-05 (+154d) |  |  |  |  |  |
| 7 | **Pre install** | 2027-05-13 → 2027-10-13 (+153d) | 2027-06-03 → 2027-11-04 (+154d) |  |  |  |  |  |
| SDR-2-CON-IR-ZA-2200 | Pre Install for irrigation Works | 2027-05-13 → 2027-10-13 (+153d) | 2027-06-03 → 2027-11-04 (+154d) | 14d → 20d |  | 1d → -132d |  | resources SIC- Cost [8286.74]; Dump Truck [200 h]; Excavator Operator [1086.35 h]; Loader [100 h]; Labor [1086.35 h]; Landscape Crew [1086.35 h]; Grader [80 h] → SIC- Cost [31068.9]; Dum Truck [200 h]; Excavator Operator [1086.35 h]; Loader [100 h]; Labor [1086.35 h]; Landscape Crew [1086.35 h]; Grader [80 h] |
| 8 | **install** | 2027-06-05 → 2027-11-06 (+154d) | 2027-06-17 → 2027-11-18 (+154d) |  |  |  |  |  |
| SDR-2-CON-IR-ZA-2210 | Installation of HDPE Pipe | 2027-06-05 → 2027-11-06 (+154d) | 2027-06-17 → 2027-11-18 (+154d) |  |  | 1d → -132d |  | resources SIC- Cost [38671.4]; Excavator [200 h]; Dump Truck [130 h]; Excavator Operator [96.01 h]; Loader [130 h]; Labor [96.01 h]; Landscape Crew [96.01 h]; Grader [60 h] → SIC- Cost [51781.5]; Excavator [200 h]; Dum Truck [130 h]; Excavator Operator [96.01 h]; Loader [130 h]; Labor [96.01 h]; Landscape Crew [96.01 h]; Grader [60 h] |
| 9 | **Finishing** | 2027-06-19 → 2027-11-20 (+154d) | 2027-06-27 → 2027-11-28 (+154d) |  |  |  |  |  |
| SDR-2-CON-IR-ZA-2220 | Finishing Works for irrigation | 2027-06-19 → 2027-11-20 (+154d) | 2027-06-27 → 2027-11-28 (+154d) |  |  | 1d → -132d |  | resources SIC- Cost [15211.8]; Dump Truck [100 h]; Excavator Operator [25.6 h]; Loader [100 h]; Labor [25.6 h]; Landscape Crew [25.6 h]; Grader [40 h] → SIC- Cost [10356.3]; Dum Truck [100 h]; Excavator Operator [25.6 h]; Loader [100 h]; Labor [25.6 h]; Landscape Crew [25.6 h]; Grader [40 h] |
| 10 | **Repairs** | 2027-06-28 → 2027-11-29 (+154d) | 2027-07-04 → 2027-12-05 (+154d) |  |  |  |  |  |
| SDR-2-CON-IR-ZA-2230 | Repair for irrigation Works | 2027-06-28 → 2027-11-29 (+154d) | 2027-07-04 → 2027-12-05 (+154d) |  |  | 1d → -132d |  | resources SIC- Cost [198.55]; Dump Truck [40 h]; Excavator Operator [532.08 h]; Loader [40 h]; Labor [532.08 h]; Landscape Crew [1086.35 h]; Grader [60 h] → SIC- Cost [10356.3]; Dum Truck [40 h]; Excavator Operator [532.08 h]; Loader [40 h]; Labor [532.08 h]; Landscape Crew [1086.35 h]; Grader [60 h] |
| 3 | **IRRIGATION WORKS IN ( PH2-A-MCC0 )** |  | 2027-06-29 → 2027-11-24 (+148d) |  |  |  |  |  |
| 7 | **Pre install** |  | 2027-06-03 → 2027-10-26 (+145d) |  |  |  |  |  |
| SDR-2-CON-IR-ZA-2240 | Pre Install for irrigation Works |  | 2027-06-03 → 2027-10-26 (+145d) | 14d → 20d |  | 5d → -124d |  | resources SIC- Cost [8286.74]; Excavator [412 h]; Excavator Operator [1086.35 h]; Loader [46.4 h]; Labor [1086.35 h]; Landscape Crew [1086.35 h] → SIC- Cost [31068.9]; Excavator [412 h]; Excavator Operator [1086.35 h]; Loader [46.4 h]; Labor [1086.35 h]; Landscape Crew [1086.35 h] |
| 8 | **install** | 2027-06-05 → 2027-10-27 (+144d) | 2027-06-19 → 2027-11-10 (+144d) |  |  |  |  |  |
| SDR-2-CON-IR-ZA-2250 | Installation of HDPE Pipe | 2027-06-05 → 2027-10-27 (+144d) | 2027-06-19 → 2027-11-10 (+144d) |  |  | 5d → -124d |  | resources SIC- Cost [38671.4]; Excavator Operator [96.01 h]; Labor [96.01 h]; Landscape Crew [96.01 h] → SIC- Cost [51781.5]; Excavator Operator [96.01 h]; Labor [96.01 h]; Landscape Crew [96.01 h] |

| ID | Task | Start | Finish | Duration | Total float | Predecessors | Other |
| --- | --- | --- | --- | --- | --- | --- | --- |
| 9 | **Finishing** | 2027-06-16 → 2027-11-11 (+148d) | 2027-06-27 → 2027-11-22 (+148d) |  |  |  |  |
| SDR-2-CON-IR-ZA-2260 | Finishing Works for irrigation | 2027-06-16 → 2027-11-11 (+148d) | 2027-06-27 → 2027-11-22 (+148d) |  | 5d → -124d | SDR-2-CON-IR-ZA-2250 SS+10d → SDR-2-CON-IR-ZA-2250 | resources SIC- Cost [15211.8]; Excavator Operator [25.6 h]; Labor [25.6 h]; Landscape Crew [25.6 h] → SIC- Cost [10356.3]; Excavator Operator [25.6 h]; Labor [25.6 h]; Landscape Crew [25.6 h] |
| 10 | **Repairs** | 2027-06-28 → 2027-11-23 (+148d) | 2027-06-29 → 2027-11-24 (+148d) |  |  |  |  |
| SDR-2-CON-IR-ZA-2270 | Repair for irrigation Works | 2027-06-28 → 2027-11-23 (+148d) | 2027-06-29 → 2027-11-24 (+148d) |  | 5d → -124d |  | resources SIC- Cost [198.55]; Excavator Operator [38.41 h]; Labor [38.41 h]; Landscape Crew [38.41 h] → SIC- Cost [10356.3]; Excavator Operator [38.41 h]; Labor [38.41 h]; Landscape Crew [38.41 h] |
| 4 | **IRRIGATION WORKS IN ( PH2-A-MCD0 )** |  | 2027-06-20 → 2027-11-10 (+143d) |  |  |  |  |
| 7 | **Pre install** |  | 2027-06-10 → 2027-10-19 (+131d) |  |  |  |  |
| SDR-2-CON-IR-ZA-2280 | Pre Install for irrigation Works |  | 2027-06-10 → 2027-10-19 (+131d) |  | 13d → -111d |  | resources SIC- Cost [8286.74]; Excavator Operator [1086.35 h]; Loader [52 h]; Labor [1086.35 h]; Landscape Crew [1086.35 h] → SIC- Cost [31068.9]; Excavator Operator [1086.35 h]; Loader [52 h]; Labor [1086.35 h]; Landscape Crew [1086.35 h] |
| 8 | **install** |  | 2027-06-10 → 2027-10-26 (+138d) |  |  |  |  |
| SDR-2-CON-IR-ZA-2290 | Installation of HDPE Pipe |  | 2027-06-10 → 2027-10-26 (+138d) |  | 13d → -111d | SDR-2-CON-IR-ZA-2280 FF → SDR-2-CON-IR-ZA-2280 | resources SIC- Cost [38671.4]; Excavator Operator [96.01 h]; Labor [96.01 h]; Landscape Crew [96.01 h] → SIC- Cost [51781.5]; Excavator Operator [96.01 h]; Labor [96.01 h]; Landscape Crew [96.01 h] |
| 9 | **Finishing** | 2027-06-12 → 2027-10-27 (+137d) | 2027-06-15 → 2027-11-06 (+144d) |  |  |  |  |
| SDR-2-CON-IR-ZA-2300 | Finishing Works for irrigation | 2027-06-12 → 2027-10-27 (+137d) | 2027-06-15 → 2027-11-06 (+144d) | 4d → 9d | 13d → -111d |  | resources SIC- Cost [15211.8]; Excavator Operator [25.6 h]; Labor [25.6 h]; Landscape Crew [25.6 h] → SIC- Cost [10356.3]; Excavator Operator [25.6 h]; Labor [25.6 h]; Landscape Crew [25.6 h] |
| 10 | **Repairs** | 2027-06-16 → 2027-11-07 (+144d) | 2027-06-20 → 2027-11-10 (+143d) |  |  |  |  |
| SDR-2-CON-IR-ZA-2310 | Repair for irrigation Works | 2027-06-16 → 2027-11-07 (+144d) | 2027-06-20 → 2027-11-10 (+143d) |  | 13d → -111d |  | resources SIC- Cost [198.55]; Excavator Operator [38.41 h]; Labor [38.41 h]; Landscape Crew [38.41 h] → SIC- Cost [10356.3]; Excavator Operator [38.41 h]; Labor [38.41 h]; Landscape Crew [38.41 h] |
| 5 | **IRRIGATION WORKS IN ( PH2-A-MCE0 )** |  | 2027-07-04 → 2027-11-10 (+129d) |  |  |  |  |
| 7 | **Pre install** |  | 2027-06-03 → 2027-10-19 (+138d) |  |  |  |  |
| SDR-2-CON-IR-ZA-2320 | Pre Install for irrigation Works |  | 2027-06-03 → 2027-10-19 (+138d) | 14d → 20d | 1d → -111d |  | resources SIC- Cost [8286.74]; Excavator Operator [1086.35 h]; Loader [46.4 h]; Labor [1086.35 h]; Landscape Crew [1086.35 h] → SIC- Cost [31068.9]; Excavator Operator [1086.35 h]; Loader [46.4 h]; Labor [1086.35 h]; Landscape Crew [1086.35 h] |
| 8 | **install** |  | 2027-06-19 → 2027-10-26 (+129d) |  |  |  |  |
| SDR-2-CON-IR-ZA-2330 | Installation of HDPE Pipe |  | 2027-06-19 → 2027-10-26 (+129d) |  | 1d → -111d |  | resources SIC- Cost [38671.4]; Excavator Operator [96.01 h]; Labor [96.01 h]; Landscape Crew [96.01 h] → SIC- Cost [51781.5]; Excavator Operator [96.01 h]; Labor [96.01 h]; Landscape Crew [96.01 h] |
| 9 | **Finishing** | 2027-06-20 → 2027-10-27 (+129d) | 2027-06-30 → 2027-11-07 (+130d) |  |  |  |  |
| SDR-2-CON-IR-ZA-2340 | Finishing Works for irrigation | 2027-06-20 → 2027-10-27 (+129d) | 2027-06-30 → 2027-11-07 (+130d) |  | 1d → -111d |  | resources SIC- Cost [15211.8]; Excavator Operator [25.6 h]; Labor [25.6 h]; Landscape Crew [25.6 h] → SIC- Cost [10356.3]; Excavator Operator [25.6 h]; Labor [25.6 h]; Landscape Crew [25.6 h] |
| 10 | **Repairs** | 2027-07-01 → 2027-11-08 (+130d) | 2027-07-04 → 2027-11-10 (+129d) |  |  |  |  |
| SDR-2-CON-IR-ZA-2350 | Repair for irrigation Works | 2027-07-01 → 2027-11-08 (+130d) | 2027-07-04 → 2027-11-10 (+129d) |  | 1d → -111d |  | resources SIC- Cost [198.55]; Excavator Operator [38.41 h]; Labor [38.41 h]; Landscape Crew [38.41 h] → SIC- Cost [10356.3]; Excavator Operator [38.41 h]; Labor [38.41 h]; Landscape Crew [38.41 h] |
| 6 | **IRRIGATION WORKS IN ( PH2-A-MCF0 )** | 2027-05-13 → 2027-10-13 (+153d) | 2027-07-04 → 2027-12-05 (+154d) |  |  |  |  |
| 7 | **Pre install** | 2027-05-13 → 2027-10-13 (+153d) | 2027-06-03 → 2027-11-04 (+154d) |  |  |  |  |
| SDR-2-CON-IR-ZA-2360 | Pre Install for irrigation Works | 2027-05-13 → 2027-10-13 (+153d) | 2027-06-03 → 2027-11-04 (+154d) | 14d → 20d | 1d → -132d |  | resources SIC- Cost [8286.74]; Excavator Operator [1086.35 h]; Loader [46.4 h]; Labor [1086.35 h]; Landscape Crew [1086.35 h] → SIC- Cost [31068.9]; Excavator Operator [1086.35 h]; Loader [46.4 h]; Labor [1086.35 h]; Landscape Crew [1086.35 h] |
| 8 | **install** | 2027-06-05 → 2027-11-06 (+154d) | 2027-06-19 → 2027-11-20 (+154d) |  |  |  |  |
| SDR-2-CON-IR-ZA-2370 | Installation of HDPE Pipe | 2027-06-05 → 2027-11-06 (+154d) | 2027-06-19 → 2027-11-20 (+154d) |  | 1d → -132d |  | resources SIC- Cost [38671.4]; Excavator Operator [96.01 h]; Labor [96.01 h]; Landscape Crew [96.01 h] → SIC- Cost [51781.5]; Excavator Operator [96.01 h]; Labor [96.01 h]; Landscape Crew [96.01 h] |
| 9 | **Finishing** | 2027-06-20 → 2027-11-21 (+154d) | 2027-06-30 → 2027-12-01 (+154d) |  |  |  |  |
| SDR-2-CON-IR-ZA-2380 | Finishing Works for irrigation | 2027-06-20 → 2027-11-21 (+154d) | 2027-06-30 → 2027-12-01 (+154d) |  | 1d → -132d |  | resources SIC- Cost [15211.8]; Excavator Operator [25.6 h]; Labor [25.6 h]; Landscape Crew [25.6 h] → SIC- Cost [10356.3]; Excavator Operator [25.6 h]; Labor [25.6 h]; Landscape Crew [25.6 h] |
| 10 | **Repairs** | 2027-07-01 → 2027-12-02 (+154d) | 2027-07-04 → 2027-12-05 (+154d) |  |  |  |  |
| SDR-2-CON-IR-ZA-2390 | Repair for irrigation Works | 2027-07-01 → 2027-12-02 (+154d) | 2027-07-04 → 2027-12-05 (+154d) |  | 1d → -132d |  | resources SIC- Cost [198.55]; Excavator Operator [38.41 h]; Labor [38.41 h]; Landscape Crew [38.41 h] → SIC- Cost [10356.3]; Excavator Operator [38.41 h]; Labor [38.41 h]; Landscape Crew [38.41 h] |
| 7 | **IRRIGATION WORKS IN ( PH2-A-MCG0 )** | 2027-05-13 → 2027-10-13 (+153d) | 2027-07-04 → 2027-12-05 (+154d) |  |  |  |  |
| 7 | **Pre install** | 2027-05-13 → 2027-10-13 (+153d) | 2027-06-03 → 2027-11-04 (+154d) |  |  |  |  |
| SDR-2-CON-IR-ZA-2400 | Pre Install for irrigation Works | 2027-05-13 → 2027-10-13 (+153d) | 2027-06-03 → 2027-11-04 (+154d) | 14d → 20d | 1d → -132d |  | resources SIC- Cost [8286.74]; Excavator Operator [1086.35 h]; Loader [46.4 h]; Labor [1086.35 h]; Landscape Crew [1086.35 h] → SIC- Cost [31068.9]; Excavator Operator [1086.35 h]; Loader [46.4 h]; Labor [1086.35 h]; Landscape Crew [1086.35 h] |
| 8 | **install** | 2027-06-05 → 2027-11-06 (+154d) | 2027-06-19 → 2027-11-20 (+154d) |  |  |  |  |
| SDR-2-CON-IR-ZA-2410 | Installation of HDPE Pipe | 2027-06-05 → 2027-11-06 (+154d) | 2027-06-19 → 2027-11-20 (+154d) |  | 1d → -132d |  | resources SIC- Cost [38671.4]; Excavator Operator [96.01 h]; Labor [96.01 h]; Landscape Crew [96.01 h] → SIC- Cost [51781.5]; Excavator Operator [96.01 h]; Labor [96.01 h]; Landscape Crew [96.01 h] |
| 9 | **Finishing** | 2027-06-20 → 2027-11-21 (+154d) | 2027-07-01 → 2027-12-02 (+154d) |  |  |  |  |
| SDR-2-CON-IR-ZA-2420 | Finishing Works for irrigation | 2027-06-20 → 2027-11-21 (+154d) | 2027-07-01 → 2027-12-02 (+154d) |  | 1d → -132d |  | resources SIC- Cost [15211.8]; Excavator Operator [25.6 h]; Labor [25.6 h]; Landscape Crew [25.6 h] → SIC- Cost [10356.3]; Excavator Operator [25.6 h]; Labor [25.6 h]; Landscape Crew [25.6 h] |
| 10 | **Repairs** | 2027-07-03 → 2027-12-04 (+154d) | 2027-07-04 → 2027-12-05 (+154d) |  |  |  |  |
| SDR-2-CON-IR-ZA-2430 | Repair for irrigation Works | 2027-07-03 → 2027-12-04 (+154d) | 2027-07-04 → 2027-12-05 (+154d) |  | 1d → -132d |  | resources SIC- Cost [198.55]; Excavator Operator [38.41 h]; Labor [38.41 h]; Landscape Crew [38.41 h] → SIC- Cost [10356.3]; Excavator Operator [38.41 h]; Labor [38.41 h]; Landscape Crew [38.41 h] |
| 8 | **IRRIGATION WORKS IN ( PH2-A-MCH0 )** | 2027-05-13 → 2027-10-13 (+153d) | 2027-07-04 → 2027-12-05 (+154d) |  |  |  |  |
| 7 | **Pre install** | 2027-05-13 → 2027-10-13 (+153d) | 2027-06-03 → 2027-11-04 (+154d) |  |  |  |  |
| SDR-2-CON-IR-ZA-2440 | Pre Install for irrigation Works | 2027-05-13 → 2027-10-13 (+153d) | 2027-06-03 → 2027-11-04 (+154d) | 14d → 20d | 1d → -132d |  | resources SIC- Cost [8286.74]; Excavator Operator [1086.35 h]; Loader [46.4 h]; Labor [1086.35 h]; Landscape Crew [1086.35 h] → SIC- Cost [31068.9]; Excavator Operator [1086.35 h]; Loader [46.4 h]; Labor [1086.35 h]; Landscape Crew [1086.35 h] |
| 8 | **install** | 2027-06-05 → 2027-11-06 (+154d) | 2027-06-19 → 2027-11-20 (+154d) |  |  |  |  |
| SDR-2-CON-IR-ZA-2450 | Installation of HDPE Pipe | 2027-06-05 → 2027-11-06 (+154d) | 2027-06-19 → 2027-11-20 (+154d) |  | 1d → -132d |  | resources SIC- Cost [38671.4]; Excavator Operator [96.01 h]; Labor [96.01 h]; Landscape Crew [96.01 h] → SIC- Cost [51781.5]; Excavator Operator [96.01 h]; Labor [96.01 h]; Landscape Crew [96.01 h] |
| 9 | **Finishing** | 2027-06-20 → 2027-11-21 (+154d) | 2027-07-01 → 2027-12-02 (+154d) |  |  |  |  |
| SDR-2-CON-IR-ZA-2460 | Finishing Works for irrigation | 2027-06-20 → 2027-11-21 (+154d) | 2027-07-01 → 2027-12-02 (+154d) |  | 1d → -132d |  | resources SIC- Cost [15211.8]; Excavator Operator [25.6 h]; Labor [25.6 h]; Landscape Crew [25.6 h] → SIC- Cost [10356.3]; Excavator Operator [25.6 h]; Labor [25.6 h]; Landscape Crew [25.6 h] |
| 10 | **Repairs** | 2027-07-03 → 2027-12-04 (+154d) | 2027-07-04 → 2027-12-05 (+154d) |  |  |  |  |
| SDR-2-CON-IR-ZA-2470 | Repair for irrigation Works | 2027-07-03 → 2027-12-04 (+154d) | 2027-07-04 → 2027-12-05 (+154d) |  | 1d → -132d |  | resources SIC- Cost [198.55]; Excavator Operator [38.41 h]; Labor [38.41 h]; Landscape Crew [38.41 h] → SIC- Cost [10356.3]; Excavator Operator [38.41 h]; Labor [38.41 h]; Landscape Crew [38.41 h] |
| 9 | **IRRIGATION WORKS IN ( PH2-ART-MC00 )** |  | 2027-07-04 → 2027-12-05 (+154d) |  |  |  |  |
| 7 | **Pre install** |  | 2027-06-10 → 2027-10-19 (+131d) |  |  |  |  |
| SDR-2-CON-IR-ZA-2480 | Pre Install for irrigation Works |  | 2027-06-10 → 2027-10-19 (+131d) |  | 15d → -111d |  | resources SIC- Cost [8286.74]; Excavator Operator [271.59 h]; Loader [46.4 h]; Labor [271.59 h]; Landscape Crew [271.59 h] → SIC- Cost [31068.9]; Excavator Operator [271.59 h]; Loader [46.4 h]; Labor [271.59 h]; Landscape Crew [271.59 h] |
| 8 | **install** |  | 2027-06-02 → 2027-10-26 (+146d) |  |  |  |  |
| SDR-2-CON-IR-ZA-2490 | Installation of HDPE Pipe |  | 2027-06-02 → 2027-10-26 (+146d) |  | 15d → -111d | SDR-2-CON-IR-ZA-2480 SS+10d → SDR-2-CON-IR-ZA-2480 | resources SIC- Cost [38671.4]; Excavator Operator [90.19 h]; Labor [70.04 h]; Landscape Crew [271.59 h] → SIC- Cost [51781.5]; Excavator Operator [90.19 h]; Labor [70.04 h]; Landscape Crew [271.59 h] |
| 9 | **Finishing** | 2027-06-03 → 2027-10-27 (+146d) | 2027-06-15 → 2027-11-08 (+146d) |  |  |  |  |
| SDR-2-CON-IR-ZA-2500 | Finishing Works for irrigation | 2027-06-03 → 2027-10-27 (+146d) | 2027-06-15 → 2027-11-08 (+146d) |  | 15d → -111d |  | resources SIC- Cost [15211.8]; Excavator Operator [90.2 h]; Labor [70.04 h]; Landscape Crew [271.59 h] → SIC- Cost [10356.3]; Excavator Operator [90.2 h]; Labor [70.04 h]; Landscape Crew [271.59 h] |
| 10 | **Repairs** | 2027-07-03 → 2027-12-04 (+154d) | 2027-07-04 → 2027-12-05 (+154d) |  |  |  |  |
| SDR-2-CON-IR-ZA-2510 | Repair for irrigation Works | 2027-07-03 → 2027-12-04 (+154d) | 2027-07-04 → 2027-12-05 (+154d) |  | 1d → -132d |  | resources SIC- Cost [198.55]; Excavator Operator [38.41 h]; Labor [38.41 h]; Landscape Crew [38.41 h] → SIC- Cost [10356.3]; Excavator Operator [38.41 h]; Labor [38.41 h]; Landscape Crew [38.41 h] |
| 10 | **IRRIGATION WORKS IN ( PH2-ART-MC10 )** |  | 2027-07-04 → 2027-12-05 (+154d) |  |  |  |  |
| 7 | **Pre install** |  | 2027-05-13 → 2027-10-25 (+165d) |  |  |  |  |
| SDR-2-CON-IR-ZA-2520 | Pre Install for irrigation Works |  | 2027-05-13 → 2027-10-25 (+165d) |  | 0.7d → -132d | SDR-2-CON-IR-ZA-1000 FF, SDR-2-CON-ST-ZA-4920 FF → SDR-2-CON-ST-ZA-4920, SDR-2-CON-IR-ZA-1000 SS | resources SIC- Cost [8286.74]; Excavator Operator [271.59 h]; Loader [46.4 h]; Labor [271.59 h]; Landscape Crew [271.59 h] → SIC- Cost [31068.9]; Excavator Operator [271.59 h]; Loader [46.4 h]; Labor [271.59 h]; Landscape Crew [271.59 h] |
| 8 | **install** |  | 2027-06-03 → 2027-11-01 (+151d) |  |  |  |  |
| SDR-2-CON-IR-ZA-2530 | Installation of HDPE Pipe |  | 2027-06-03 → 2027-11-01 (+151d) |  | 14d → -116d |  | resources SIC- Cost [38671.4]; Excavator Operator [90.19 h]; Labor [80.12 h]; Landscape Crew [271.59 h] → SIC- Cost [51781.5]; Excavator Operator [90.19 h]; Labor [80.12 h]; Landscape Crew [271.59 h] |
| 9 | **Finishing** | 2027-06-05 → 2027-11-02 (+150d) | 2027-06-16 → 2027-11-14 (+151d) |  |  |  |  |
| SDR-2-CON-IR-ZA-2540 | Finishing Works for irrigation | 2027-06-05 → 2027-11-02 (+150d) | 2027-06-16 → 2027-11-14 (+151d) |  | 14d → -116d |  | resources SIC- Cost [15211.8]; Excavator Operator [90.2 h]; Labor [80.12 h]; Landscape Crew [271.59 h] → SIC- Cost [10356.3]; Excavator Operator [90.2 h]; Labor [80.12 h]; Landscape Crew [271.59 h] |
| 10 | **Repairs** | 2027-07-03 → 2027-12-04 (+154d) | 2027-07-04 → 2027-12-05 (+154d) |  |  |  |  |
| SDR-2-CON-IR-ZA-2550 | Repair for irrigation Works | 2027-07-03 → 2027-12-04 (+154d) | 2027-07-04 → 2027-12-05 (+154d) |  | 1d → -132d |  | resources SIC- Cost [198.55]; Excavator Operator [38.41 h]; Labor [38.41 h]; Landscape Crew [38.41 h] → SIC- Cost [10356.3]; Excavator Operator [38.41 h]; Labor [38.41 h]; Landscape Crew [38.41 h] |
| 13 | **Irrigation Controllers** | 2027-05-11 → 2027-10-13 (+155d) | 2027-07-03 → 2027-12-04 (+154d) |  |  |  |  |
| 1 | **Pre install** | 2027-05-11 → 2027-10-13 (+155d) | 2027-06-10 → 2027-11-06 (+149d) |  |  |  |  |
| SDR-2-CON-IR-ZA-2070 | Pre Install of Irrigation controllers | 2027-05-11 → 2027-10-13 (+155d) | 2027-06-10 → 2027-11-06 (+149d) |  | 8.7d → -132d |  | resources SIC- Cost [175932]; Loader [80 h]; Labor [271.59 h]; Landscape Crew [271.59 h] → SIC- Cost [52779.6]; Loader [80 h]; Labor [271.59 h]; Landscape Crew [271.59 h] |

| ID | Task | Start | Finish | Total float | Predecessors | Other |
| --- | --- | --- | --- | --- | --- | --- |
| 2 | **install** | 2027-05-29 → 2027-11-07 (+162d) | 2027-06-15 → 2027-11-23 (+161d) |  |  |  |
| SDR-2-CON-IR-ZA-2760 | Install Irrigation controllers | 2027-05-29 → 2027-11-07 (+162d) | 2027-06-15 → 2027-11-23 (+161d) | 8.7d → -132d | SDR-2-CON-IR-ZA-2070 SS+10d → SDR-2-CON-IR-ZA-2070 | resources SIC- Cost [175932]; Excavator Operator [90.19 h]; Labor [80.12 h]; Landscape Crew [271.59 h] → SIC- Cost [87966.1]; Excavator Operator [90.19 h]; Labor [80.12 h]; Landscape Crew [271.59 h] |
| 3 | **Finishing** | 2027-06-15 → 2027-11-24 (+162d) | 2027-06-24 → 2027-12-02 (+161d) |  |  |  |
| SDR-2-CON-IR-ZA-2770 | Finishing of Irrigation controllers | 2027-06-15 → 2027-11-24 (+162d) | 2027-06-24 → 2027-12-02 (+161d) | 8.7d → -132d |  | resources SIC- Cost [175932]; Excavator Operator [100.27 h]; Labor [90.19 h]; Landscape Crew [271.59 h] → SIC- Cost [17593.2]; Excavator Operator [100.27 h]; Labor [90.19 h]; Landscape Crew [271.59 h] |
| 4 | **Repairs** | 2027-07-03 → 2027-12-04 (+154d) | 2027-07-03 → 2027-12-04 (+154d) |  |  |  |
| SDR-2-CON-IR-ZA-2780 | Repairs of Irrigation controllers | 2027-07-03 → 2027-12-04 (+154d) | 2027-07-03 → 2027-12-04 (+154d) | 2d → -132d |  | resources SIC- Cost [175932]; Excavator Operator [51.21 h]; Labor [51.21 h]; Landscape Crew [51.21 h] → SIC- Cost [17593.2]; Excavator Operator [51.21 h]; Labor [51.21 h]; Landscape Crew [51.21 h] |
| 14 | **Decoder Cable & Conduit Works** | 2027-05-11 → 2027-10-13 (+155d) | 2027-07-05 → 2027-12-04 (+152d) |  |  |  |
| 1 | **Pre install** | 2027-05-11 → 2027-10-13 (+155d) | 2027-06-10 → 2027-11-06 (+149d) |  |  |  |
| SDR-2-CON-IR-ZA-2080 | Pre Install of Decoder Cable & Conduits Works | 2027-05-11 → 2027-10-13 (+155d) | 2027-06-10 → 2027-11-06 (+149d) | 0.7d → -129d |  | resources SIC- Cost [58976]; Loader [50 h]; Labor [271.59 h]; Landscape Crew [271.59 h] → SIC- Cost [44232]; Loader [50 h]; Labor [271.59 h]; Landscape Crew [271.59 h] |
| 2 | **install** | 2027-06-10 → 2027-11-07 (+150d) | 2027-06-28 → 2027-11-23 (+148d) |  |  |  |
| SDR-2-CON-IR-ZA-2090 | Install of Decoder Cable & Conduits Works | 2027-06-10 → 2027-11-07 (+150d) | 2027-06-28 → 2027-11-23 (+148d) | 0.7d → -129d |  | resources SIC- Cost [88464]; Labor [271.59 h]; Landscape Crew [271.59 h] → SIC- Cost [73720]; Labor [271.59 h]; Landscape Crew [271.59 h] |
| 3 | **Finishing** | 2027-06-28 → 2027-11-24 (+149d) | 2027-07-04 → 2027-11-29 (+148d) |  |  |  |
| SDR-2-CON-IR-ZA-2790 | Finishing of Decoder Cable & Conduits Works | 2027-06-28 → 2027-11-24 (+149d) | 2027-07-04 → 2027-11-29 (+148d) | 0.7d → -129d |  | resources SIC- Cost [88464]; Excavator Operator [110.34 h]; Labor [100.27 h]; Landscape Crew [271.59 h] → SIC- Cost [14744]; Excavator Operator [110.34 h]; Labor [100.27 h]; Landscape Crew [271.59 h] |
| 4 | **Repairs** | 2027-07-04 → 2027-12-04 (+153d) | 2027-07-05 → 2027-12-04 (+152d) |  |  |  |
| SDR-2-CON-IR-ZA-2800 | Repair of Decoder Cable & Conduits Works | 2027-07-04 → 2027-12-04 (+153d) | 2027-07-05 → 2027-12-04 (+152d) | 0.7d → -132d |  | resources SIC- Cost; Excavator Operator; Labor; Landscape Crew → SIC- Cost [14744]; Excavator Operator; Labor; Landscape Crew |
| 15 | **Solar Power System Installation** | 2027-05-11 → 2027-10-13 (+155d) | 2027-07-05 → 2027-12-05 (+153d) |  |  |  |
| 1 | **Pre install** | 2027-05-11 → 2027-10-13 (+155d) | 2027-06-10 → 2027-11-06 (+149d) |  |  |  |
| SDR-2-CON-IR-ZA-2100 | Pre Install of Solar Power System Installation | 2027-05-11 → 2027-10-13 (+155d) | 2027-06-10 → 2027-11-06 (+149d) | 0.7d → -129d |  | resources SIC- Cost [43281.5]; Labor [271.59 h]; Landscape Crew [271.59 h] → SIC- Cost [12984.5]; Labor [271.59 h]; Landscape Crew [271.59 h] |
| 2 | **install** | 2027-06-10 → 2027-11-07 (+150d) | 2027-06-28 → 2027-11-23 (+148d) |  |  |  |
| SDR-2-CON-IR-ZA-2810 | Install of Pre Install of Solar Power System Installation | 2027-06-10 → 2027-11-07 (+150d) | 2027-06-28 → 2027-11-23 (+148d) | 0.7d → -129d |  | resources SIC- Cost [43281.5]; Excavator Operator [90.19 h]; Labor [80.12 h]; Landscape Crew [271.59 h] → SIC- Cost [21640.8]; Excavator Operator [90.19 h]; Labor [80.12 h]; Landscape Crew [271.59 h] |
| 3 | **Finishing** | 2027-06-28 → 2027-11-24 (+149d) | 2027-07-05 → 2027-11-30 (+148d) |  |  |  |
| SDR-2-CON-IR-ZA-2820 | Finishing of Pre Install of Solar Power System Installation | 2027-06-28 → 2027-11-24 (+149d) | 2027-07-05 → 2027-11-30 (+148d) | 0.7d → -129d |  | resources SIC- Cost [43281.5]; Excavator Operator [120.43 h]; Labor [120.43 h]; Landscape Crew [271.59 h] → SIC- Cost [4328.15]; Excavator Operator [120.43 h]; Labor [120.43 h]; Landscape Crew [271.59 h] |
| 4 | **Repairs** | 2027-07-04 → 2027-12-05 (+154d) | 2027-07-05 → 2027-12-05 (+153d) |  |  |  |
| SDR-2-CON-IR-ZA-2830 | Repair of Solar Power System Installation | 2027-07-04 → 2027-12-05 (+154d) | 2027-07-05 → 2027-12-05 (+153d) | 0.7d → -132d | SDR-2-CON-IR-ZA-2820 SS, SDR-2-CON-IR-ZA-2800 SS → SDR-2-CON-IR-ZA-2820, SDR-2-CON-IR-ZA-2800 | resources SIC- Cost [43281.5]; Excavator Operator [271.59 h]; Labor [271.59 h]; Landscape Crew [271.59 h] → SIC- Cost [4328.15]; Excavator Operator [271.59 h]; Labor [271.59 h]; Landscape Crew [271.59 h] |
| 16 | **System Integration & Programming** | 2027-05-11 → 2027-10-13 (+155d) | 2027-07-05 → 2027-12-05 (+153d) |  |  |  |
| 1 | **Pre install** | 2027-05-11 → 2027-10-13 (+155d) | 2027-06-10 → 2027-11-06 (+149d) |  |  |  |
| SDR-2-CON-IR-ZA-2110 | Pre Install of System Integration & Programming | 2027-05-11 → 2027-10-13 (+155d) | 2027-06-10 → 2027-11-06 (+149d) | 8.7d → -132d |  | resources SIC- Cost [238542]; Labor [271.59 h]; Landscape Crew [271.59 h] → SIC- Cost [71562.6]; Labor [271.59 h]; Landscape Crew [271.59 h] |
| 2 | **install** | 2027-05-29 → 2027-11-07 (+162d) | 2027-06-15 → 2027-11-23 (+161d) |  |  |  |
| SDR-2-CON-IR-ZA-2840 | Install of System Integration & Programming | 2027-05-29 → 2027-11-07 (+162d) | 2027-06-15 → 2027-11-23 (+161d) | 8.7d → -132d | SDR-2-CON-IR-ZA-2110 SS+10d → SDR-2-CON-IR-ZA-2110 | resources SIC- Cost [238542]; Excavator Operator [90.19 h]; Labor [90.19 h]; Landscape Crew [271.59 h] → SIC- Cost [119271]; Excavator Operator [90.19 h]; Labor [90.19 h]; Landscape Crew [271.59 h] |
| 3 | **Finishing** | 2027-06-15 → 2027-11-24 (+162d) | 2027-06-24 → 2027-12-02 (+161d) |  |  |  |
| SDR-2-CON-IR-ZA-2850 | Finishing of System Integration & Programming | 2027-06-15 → 2027-11-24 (+162d) | 2027-06-24 → 2027-12-02 (+161d) | 8.7d → -132d |  | resources SIC- Cost [238542]; Excavator Operator [120.43 h]; Labor [120.43 h]; Landscape Crew [271.59 h] → SIC- Cost [23854.2]; Excavator Operator [120.43 h]; Labor [120.43 h]; Landscape Crew [271.59 h] |
| 4 | **Repairs** | 2027-07-04 → 2027-12-05 (+154d) | 2027-07-05 → 2027-12-05 (+153d) |  |  |  |
| SDR-2-CON-IR-ZA-2860 | Repair of System Integration & Programming | 2027-07-04 → 2027-12-05 (+154d) | 2027-07-05 → 2027-12-05 (+153d) | 0.7d → -132d | SDR-2-CON-IR-ZA-2850, SDR-2-CON-IR-ZA-2830 FF → SDR-2-CON-IR-ZA-2850 FS+1d, SDR-2-CON-IR-ZA-2830 FF | resources SIC- Cost [238542]; Excavator Operator [19.2 h]; Labor [19.2 h]; Landscape Crew [19.2 h] → SIC- Cost [23854.2]; Excavator Operator [19.2 h]; Labor [19.2 h]; Landscape Crew [19.2 h] |
| 1 | **Landscape Works** | 2027-05-22 → 2027-10-13 (+144d) | 2027-07-05 → 2027-12-05 (+153d) |  |  |  |
| 1 | **GROUND COVER** | 2027-05-22 → 2027-10-13 (+144d) | 2027-06-14 → 2027-11-15 (+154d) |  |  |  |
| SDR-2-CON-LS-ZA-1000 | Clearing & grubbing of landscape areas | 2027-05-22 → 2027-10-13 (+144d) | 2027-06-07 → 2027-10-30 (+145d) | 1d → -132d | SDR-2-CON-ST-ZA-6120, SDR-2-CLO-AS-C-1010 SS+2d, SDR-2-CON-IR-ZA-2520 SS → SDR-2-CON-IR-ZA-2520 SS, SDR-2-CON-ST-ZA-6120, SDR-2-CLO-AS-C-1010 |  |
| SDR-2-CON-LS-ZA-1010 | Grass laying | 2027-05-30 → 2027-10-31 (+154d) | 2027-06-14 → 2027-11-15 (+154d) | 1d → -132d | SDR-2-CON-LS-ZA-1000 SS+7d → SDR-2-CON-LS-ZA-1000 |  |
| 2 | **Trees** | 2027-06-15 → 2027-11-16 (+154d) | 2027-07-04 → 2027-12-05 (+154d) |  |  |  |
| SDR-2-CON-LS-ZA-1020 | Albizia lebbeck tress planting. | 2027-06-15 → 2027-11-16 (+154d) | 2027-06-30 → 2027-12-01 (+154d) | 1d → -132d |  |  |
| SDR-2-CON-LS-ZA-1030 | Tabopia tress planting. | 2027-06-15 → 2027-11-16 (+154d) | 2027-06-30 → 2027-12-01 (+154d) | 1d → -132d |  |  |
| SDR-2-CON-LS-ZA-1040 | Plumeria alba tress planting. | 2027-06-19 → 2027-11-20 (+154d) | 2027-07-04 → 2027-12-05 (+154d) | 1d → -132d |  |  |
| SDR-2-CON-LS-ZA-1050 | Cassia glauca tress planting. | 2027-06-19 → 2027-11-20 (+154d) | 2027-07-04 → 2027-12-05 (+154d) | 1d → -132d |  |  |
| 3 | **Miscellaneous landscaping items** | 2027-06-20 → 2027-11-21 (+154d) | 2027-07-05 → 2027-12-05 (+153d) |  |  |  |
| SDR-2-CON-LS-ZA-1060 | Gravel/Stone mulch: 75mm thick Hard, durable stone, washed free of loam, sand, clay, | 2027-06-20 → 2027-11-21 (+154d) | 2027-07-05 → 2027-12-05 (+153d) | 0.7d → -132d |  |  |
| ZG | **ZONE G** | 2027-05-11 → 2027-10-13 (+155d) | 2027-07-04 → 2027-12-05 (+154d) |  |  |  |
| 2 | **Irrigation Works** | 2027-05-11 → 2027-10-13 (+155d) | 2027-07-01 → 2027-12-05 (+157d) |  |  |  |
| 11 | **IRRIGATION WORKS IN ( PH2-G-MCE0 )** | 2027-05-13 → 2027-10-13 (+153d) | 2027-06-28 → 2027-12-05 (+160d) |  |  |  |
| 7 | **Pre install** | 2027-05-13 → 2027-10-13 (+153d) | 2027-06-10 → 2027-11-04 (+147d) |  |  |  |
| SDR-2-CON-IR-ZA-2560 | Pre Install for irrigation Works | 2027-05-13 → 2027-10-13 (+153d) | 2027-06-10 → 2027-11-04 (+147d) | 6d → -132d |  | resources SIC- Cost [8286.74]; Excavator Operator [271.59 h]; Labor [271.59 h]; Landscape Crew [271.59 h] → SIC- Cost [31068.9]; Excavator Operator [271.59 h]; Labor [271.59 h]; Landscape Crew [271.59 h] |
| 8 | **install** | 2027-06-12 → 2027-11-06 (+147d) | 2027-06-26 → 2027-11-20 (+147d) |  |  |  |
| SDR-2-CON-IR-ZA-2570 | Installation of HDPE Pipe | 2027-06-12 → 2027-11-06 (+147d) | 2027-06-26 → 2027-11-20 (+147d) | 6d → -132d |  | resources SIC- Cost [38671.4]; Excavator Operator [90.19 h]; Labor [271.59 h]; Landscape Crew [271.59 h] → SIC- Cost [51781.5]; Excavator Operator [90.19 h]; Labor [271.59 h]; Landscape Crew [271.59 h] |
| 9 | **Finishing** | 2027-06-17 → 2027-11-21 (+157d) | 2027-06-28 → 2027-12-01 (+156d) |  |  |  |
| SDR-2-CON-IR-ZA-2580 | Finishing Works for irrigation | 2027-06-17 → 2027-11-21 (+157d) | 2027-06-28 → 2027-12-01 (+156d) | 6d → -132d | SDR-2-CON-IR-ZA-2570 SS+5d → SDR-2-CON-IR-ZA-2570 | resources SIC- Cost [15211.8]; Excavator Operator [90.19 h]; Labor [80.12 h]; Landscape Crew [271.59 h] → SIC- Cost [10356.3]; Excavator Operator [90.19 h]; Labor [80.12 h]; Landscape Crew [271.59 h] |
| 10 | **Repairs** | 2027-06-17 → 2027-12-02 (+168d) | 2027-06-20 → 2027-12-05 (+168d) |  |  |  |
| SDR-2-CON-IR-ZA-2590 | Repair for irrigation Works | 2027-06-17 → 2027-12-02 (+168d) | 2027-06-20 → 2027-12-05 (+168d) | 13d → -132d | SDR-2-CON-IR-ZA-2580 SS → SDR-2-CON-IR-ZA-2580 | resources SIC- Cost [198.55]; Excavator Operator [271.59 h]; Labor [271.59 h]; Landscape Crew [271.59 h] → SIC- Cost [10356.3]; Excavator Operator [271.59 h]; Labor [271.59 h]; Landscape Crew [271.59 h] |
| 5 | **IRRIGATION WORKS IN ( PH2-G-MCZ0 )** | 2027-05-13 → 2027-10-13 (+153d) | 2027-06-30 → 2027-12-05 (+158d) |  |  |  |
| 7 | **Pre install** | 2027-05-13 → 2027-10-13 (+153d) | 2027-06-10 → 2027-11-04 (+147d) |  |  |  |
| SDR-2-CON-IR-ZA-2600 | Pre Install for irrigation Works | 2027-05-13 → 2027-10-13 (+153d) | 2027-06-10 → 2027-11-04 (+147d) | 4d → -132d |  | resources SIC- Cost [8286.74]; Excavator Operator [271.59 h]; Labor [271.59 h]; Landscape Crew [271.59 h] → SIC- Cost [31068.9]; Excavator Operator [271.59 h]; Labor [271.59 h]; Landscape Crew [271.59 h] |
| 8 | **install** | 2027-06-12 → 2027-11-06 (+147d) | 2027-06-26 → 2027-11-20 (+147d) |  |  |  |
| SDR-2-CON-IR-ZA-2610 | Installation of HDPE Pipe | 2027-06-12 → 2027-11-06 (+147d) | 2027-06-26 → 2027-11-20 (+147d) | 4d → -132d |  | resources SIC- Cost [38671.4]; Excavator Operator [90.19 h]; Labor [80.12 h]; Landscape Crew [271.59 h] → SIC- Cost [51781.5]; Excavator Operator [90.19 h]; Labor [80.12 h]; Landscape Crew [271.59 h] |
| 9 | **Finishing** | 2027-06-16 → 2027-11-21 (+158d) | 2027-06-27 → 2027-12-01 (+157d) |  |  |  |
| SDR-2-CON-IR-ZA-2620 | Finishing Works for irrigation | 2027-06-16 → 2027-11-21 (+158d) | 2027-06-27 → 2027-12-01 (+157d) | 4d → -132d | SDR-2-CON-IR-ZA-2610 SS+4d → SDR-2-CON-IR-ZA-2610 | resources SIC- Cost [15211.8]; Excavator Operator [90.19 h]; Labor [80.12 h]; Landscape Crew [271.59 h] → SIC- Cost [10356.3]; Excavator Operator [90.19 h]; Labor [80.12 h]; Landscape Crew [271.59 h] |
| 10 | **Repairs** | 2027-06-28 → 2027-12-02 (+157d) | 2027-06-30 → 2027-12-05 (+158d) |  |  |  |
| SDR-2-CON-IR-ZA-2630 | Repair for irrigation Works | 2027-06-28 → 2027-12-02 (+157d) | 2027-06-30 → 2027-12-05 (+158d) | 4d → -132d |  | resources SIC- Cost [198.55]; Excavator Operator [824.34 h]; Labor [271.59 h]; Landscape Crew [271.59 h] → SIC- Cost [10356.3]; Excavator Operator [824.34 h]; Labor [271.59 h]; Landscape Crew [271.59 h] |
| 1 | **IRRIGATION WORKS IN ( PH2-G-MCA0 )** | 2027-05-13 → 2027-10-13 (+153d) | 2027-06-30 → 2027-12-05 (+158d) |  |  |  |
| 7 | **Pre install** | 2027-05-13 → 2027-10-13 (+153d) | 2027-06-09 → 2027-11-03 (+147d) |  |  |  |
| SDR-2-CON-IR-ZA-2640 | Pre Install for irrigation Works | 2027-05-13 → 2027-10-13 (+153d) | 2027-06-09 → 2027-11-03 (+147d) | 5d → -132d |  | resources SIC- Cost [8286.74]; Excavator Operator [271.59 h]; Labor [271.59 h]; Landscape Crew [271.59 h] → SIC- Cost [31068.9]; Excavator Operator [271.59 h]; Labor [271.59 h]; Landscape Crew [271.59 h] |
| 8 | **install** | 2027-06-10 → 2027-11-04 (+147d) | 2027-06-24 → 2027-11-18 (+147d) |  |  |  |
| SDR-2-CON-IR-ZA-2650 | Installation of HDPE Pipe | 2027-06-10 → 2027-11-04 (+147d) | 2027-06-24 → 2027-11-18 (+147d) | 5d → -132d |  | resources SIC- Cost [38671.4]; Excavator Operator [90.19 h]; Labor [271.59 h]; Landscape Crew [271.59 h] → SIC- Cost [51781.5]; Excavator Operator [90.19 h]; Labor [271.59 h]; Landscape Crew [271.59 h] |
| 9 | **Finishing** | 2027-06-16 → 2027-11-20 (+157d) | 2027-06-29 → 2027-12-02 (+156d) |  |  |  |

| ID | Task | Start | Finish | Total float | Predecessors | Other |
| --- | --- | --- | --- | --- | --- | --- |
| SDR-2-CON-IR-ZA-2660 | Finishing Works for irrigation | 2027-06-16 → 2027-11-20 (+157d) | 2027-06-29 → 2027-12-02 (+156d) | 5d → -132d | SDR-2-CON-IR-ZA-2650 SS+5d → SDR-2-CON-IR-ZA-2650 | resources SIC- Cost [15211.8]; Excavator Operator [90.19 h]; Labor [80.12 h]; Landscape Crew [271.59 h] → SIC- Cost [10356.3]; Excavator Operator [90.19 h]; Labor [80.12 h]; Landscape Crew [271.59 h] |
| 10 | **Repairs** | 2027-06-29 → 2027-12-04 (+158d) | 2027-06-30 → 2027-12-05 (+158d) |  |  |  |
| SDR-2-CON-IR-ZA-2670 | Repair for irrigation Works | 2027-06-29 → 2027-12-04 (+158d) | 2027-06-30 → 2027-12-05 (+158d) | 4d → -132d | SDR-2-CON-IR-ZA-2660 SS, SDR-2-CON-IR-ZA-2630 FF → SDR-2-CON-IR-ZA-2660, SDR-2-CON-IR-ZA-2630 FF | resources SIC- Cost [198.55]; Excavator Operator [271.59 h]; Labor [271.59 h]; Landscape Crew [271.59 h] → SIC- Cost [10356.3]; Excavator Operator [271.59 h]; Labor [271.59 h]; Landscape Crew [271.59 h] |
| 2 | **IRRIGATION WORKS IN ( PH2-G-MCF0 )** | 2027-05-13 → 2027-10-13 (+153d) | 2027-07-01 → 2027-12-05 (+157d) |  |  |  |
| 7 | **Pre install** | 2027-05-13 → 2027-10-13 (+153d) | 2027-06-10 → 2027-11-04 (+147d) |  |  |  |
| SDR-2-CON-IR-ZA-2680 | Pre Install for irrigation Works | 2027-05-13 → 2027-10-13 (+153d) | 2027-06-10 → 2027-11-04 (+147d) | 3d → -132d |  | resources SIC- Cost [8286.74]; Excavator Operator [51.21 h]; Labor [51.21 h]; Landscape Crew [51.21 h] → SIC- Cost [31068.9]; Excavator Operator [51.21 h]; Labor [51.21 h]; Landscape Crew [51.21 h] |
| 8 | **install** | 2027-06-12 → 2027-11-06 (+147d) | 2027-06-26 → 2027-11-20 (+147d) |  |  |  |
| SDR-2-CON-IR-ZA-2690 | Installation of HDPE Pipe | 2027-06-12 → 2027-11-06 (+147d) | 2027-06-26 → 2027-11-20 (+147d) | 3d → -132d |  | resources SIC- Cost [38671.4]; Excavator Operator [96.01 h]; Labor [96.01 h]; Landscape Crew [96.01 h] → SIC- Cost [51781.5]; Excavator Operator [96.01 h]; Labor [96.01 h]; Landscape Crew [96.01 h] |
| 9 | **Finishing** | 2027-06-17 → 2027-11-21 (+157d) | 2027-06-29 → 2027-12-02 (+156d) |  |  |  |
| SDR-2-CON-IR-ZA-2700 | Finishing Works for irrigation | 2027-06-17 → 2027-11-21 (+157d) | 2027-06-29 → 2027-12-02 (+156d) | 3d → -132d | SDR-2-CON-IR-ZA-2690 SS+5d → SDR-2-CON-IR-ZA-2690 | resources SIC- Cost [15211.8]; Excavator Operator [25.6 h]; Labor [25.6 h]; Landscape Crew [25.6 h] → SIC- Cost [10356.3]; Excavator Operator [25.6 h]; Labor [25.6 h]; Landscape Crew [25.6 h] |
| 10 | **Repairs** | 2027-06-30 → 2027-12-04 (+157d) | 2027-07-01 → 2027-12-05 (+157d) |  |  |  |
| SDR-2-CON-IR-ZA-2710 | Repair for irrigation Works | 2027-06-30 → 2027-12-04 (+157d) | 2027-07-01 → 2027-12-05 (+157d) | 3d → -132d |  | resources SIC- Cost [198.55]; Excavator Operator [38.41 h]; Labor [38.41 h]; Landscape Crew [38.41 h] → SIC- Cost [10356.3]; Excavator Operator [38.41 h]; Labor [38.41 h]; Landscape Crew [38.41 h] |
| 3 | **IRRIGATION WORKS IN ( PH2-G-MCG0 )** | 2027-05-13 → 2027-10-13 (+153d) | 2027-07-01 → 2027-12-05 (+157d) |  |  |  |
| 7 | **Pre install** | 2027-05-13 → 2027-10-13 (+153d) | 2027-06-09 → 2027-11-03 (+147d) |  |  |  |
| SDR-2-CON-IR-ZA-2720 | Pre Install for irrigation Works | 2027-05-13 → 2027-10-13 (+153d) | 2027-06-09 → 2027-11-03 (+147d) | 5d → -132d |  | resources SIC- Cost [8286.74]; Excavator Operator [51.21 h]; Labor [51.21 h]; Landscape Crew [51.21 h] → SIC- Cost [31068.9]; Excavator Operator [51.21 h]; Labor [51.21 h]; Landscape Crew [51.21 h] |
| 8 | **install** | 2027-06-10 → 2027-11-04 (+147d) | 2027-06-24 → 2027-11-18 (+147d) |  |  |  |
| SDR-2-CON-IR-ZA-2730 | Installation of HDPE Pipe | 2027-06-10 → 2027-11-04 (+147d) | 2027-06-24 → 2027-11-18 (+147d) | 5d → -132d |  | resources SIC- Cost [38671.4]; Excavator Operator [96.01 h]; Labor [96.01 h]; Landscape Crew [96.01 h] → SIC- Cost [51781.5]; Excavator Operator [96.01 h]; Labor [96.01 h]; Landscape Crew [96.01 h] |
| 9 | **Finishing** | 2027-06-16 → 2027-11-20 (+157d) | 2027-06-29 → 2027-12-02 (+156d) |  |  |  |
| SDR-2-CON-IR-ZA-2740 | Finishing Works for irrigation | 2027-06-16 → 2027-11-20 (+157d) | 2027-06-29 → 2027-12-02 (+156d) | 5d → -132d | SDR-2-CON-IR-ZA-2730 SS+5d → SDR-2-CON-IR-ZA-2730 | resources SIC- Cost [15211.8]; Excavator Operator [25.6 h]; Labor [25.6 h]; Landscape Crew [25.6 h] → SIC- Cost [10356.3]; Excavator Operator [25.6 h]; Labor [25.6 h]; Landscape Crew [25.6 h] |
| 10 | **Repairs** | 2027-06-30 → 2027-12-04 (+157d) | 2027-07-01 → 2027-12-05 (+157d) |  |  |  |
| SDR-2-CON-IR-ZA-2750 | Repair for irrigation Works | 2027-06-30 → 2027-12-04 (+157d) | 2027-07-01 → 2027-12-05 (+157d) | 3d → -132d | SDR-2-CON-IR-ZA-2740 SS, SDR-2-CON-IR-ZA-2710 FF → SDR-2-CON-IR-ZA-2740, SDR-2-CON-IR-ZA-2710 FF | resources SIC- Cost [198.55]; Excavator Operator [38.41 h]; Labor [38.41 h]; Landscape Crew [38.41 h] → SIC- Cost [10356.3]; Excavator Operator [38.41 h]; Labor [38.41 h]; Landscape Crew [38.41 h] |
| 13 | **Irrigation Controllers** | 2027-05-11 → 2027-10-13 (+155d) | 2027-07-01 → 2027-12-05 (+157d) |  |  |  |
| 1 | **Pre install** | 2027-05-11 → 2027-10-13 (+155d) | 2027-06-10 → 2027-11-06 (+149d) |  |  |  |
| SDR-2-CON-IR-ZA-2870 | Pre Install of Irrigation controllers | 2027-05-11 → 2027-10-13 (+155d) | 2027-06-10 → 2027-11-06 (+149d) | 6.7d → -132d |  | resources SIC- Cost [175932]; Excavator Operator [51.21 h]; Labor [51.21 h]; Landscape Crew [51.21 h] → SIC- Cost [52779.6]; Excavator Operator [51.21 h]; Labor [51.21 h]; Landscape Crew [51.21 h] |
| 2 | **install** | 2027-06-10 → 2027-11-07 (+150d) | 2027-06-28 → 2027-11-23 (+148d) |  |  |  |
| SDR-2-CON-IR-ZA-2880 | Install Irrigation controllers | 2027-06-10 → 2027-11-07 (+150d) | 2027-06-28 → 2027-11-23 (+148d) | 6.7d → -132d |  | resources SIC- Cost [175932]; Excavator Operator [51.21 h]; Labor [51.21 h]; Landscape Crew [51.21 h] → SIC- Cost [87966.1]; Excavator Operator [51.21 h]; Labor [51.21 h]; Landscape Crew [51.21 h] |
| 3 | **Finishing** | 2027-06-17 → 2027-11-24 (+160d) | 2027-06-27 → 2027-12-02 (+158d) |  |  |  |
| SDR-2-CON-IR-ZA-2890 | Finishing of Irrigation controllers | 2027-06-17 → 2027-11-24 (+160d) | 2027-06-27 → 2027-12-02 (+158d) | 7.7d → -132d | SDR-2-CON-IR-ZA-2880 SS+6d → SDR-2-CON-IR-ZA-2880 | resources SIC- Cost [175932]; Excavator Operator [51.21 h]; Labor [51.21 h]; Landscape Crew [51.21 h] → SIC- Cost [17593.2]; Excavator Operator [51.21 h]; Labor [51.21 h]; Landscape Crew [51.21 h] |
| 4 | **Repairs** | 2027-06-30 → 2027-12-04 (+157d) | 2027-07-01 → 2027-12-05 (+157d) |  |  |  |
| SDR-2-CON-IR-ZA-2900 | Repairs of Irrigation controllers | 2027-06-30 → 2027-12-04 (+157d) | 2027-07-01 → 2027-12-05 (+157d) | 3d → -132d | SDR-2-CON-IR-ZA-2890 SS, SDR-2-CON-IR-ZA-2750 FF → SDR-2-CON-IR-ZA-2890, SDR-2-CON-IR-ZA-2750 FF | resources SIC- Cost [175932]; Excavator Operator [51.21 h]; Labor [51.21 h]; Landscape Crew [51.21 h] → SIC- Cost [17593.2]; Excavator Operator [51.21 h]; Labor [51.21 h]; Landscape Crew [51.21 h] |
| 14 | **Decoder Cable & Conduit Works** | 2027-05-11 → 2027-10-13 (+155d) | 2027-07-01 → 2027-12-05 (+157d) |  |  |  |
| 1 | **Pre install** | 2027-05-11 → 2027-10-13 (+155d) | 2027-06-10 → 2027-11-06 (+149d) |  |  |  |
| SDR-2-CON-IR-ZA-2910 | Pre Install of Decoder Cable & Conduits Works | 2027-05-11 → 2027-10-13 (+155d) | 2027-06-10 → 2027-11-06 (+149d) | 6.7d → -132d |  | resources SIC- Cost [58976]; Excavator Operator [32 h]; Labor [32 h]; Landscape Crew [32 h] → SIC- Cost [44232]; Excavator Operator [32 h]; Labor [32 h]; Landscape Crew [32 h] |
| 2 | **install** | 2027-06-10 → 2027-11-07 (+150d) | 2027-06-28 → 2027-11-23 (+148d) |  |  |  |
| SDR-2-CON-IR-ZA-2920 | Install of Decoder Cable & Conduits Works | 2027-06-10 → 2027-11-07 (+150d) | 2027-06-28 → 2027-11-23 (+148d) | 6.7d → -132d |  | resources SIC- Cost [88464]; Excavator Operator [32 h]; Labor [32 h]; Landscape Crew [32 h] → SIC- Cost [73720]; Excavator Operator [32 h]; Labor [32 h]; Landscape Crew [32 h] |
| 3 | **Finishing** | 2027-06-15 → 2027-11-24 (+162d) | 2027-06-26 → 2027-12-04 (+161d) |  |  |  |
| SDR-2-CON-IR-ZA-2930 | Finishing of Decoder Cable & Conduits Works | 2027-06-15 → 2027-11-24 (+162d) | 2027-06-26 → 2027-12-04 (+161d) | 8.7d → -132d | SDR-2-CON-IR-ZA-2920 SS+4d → SDR-2-CON-IR-ZA-2920 | resources SIC- Cost [88464]; Excavator Operator [32 h]; Labor [32 h]; Landscape Crew [32 h] → SIC- Cost [14744]; Excavator Operator [32 h]; Labor [32 h]; Landscape Crew [32 h] |
| 4 | **Repairs** | 2027-07-01 → 2027-12-05 (+157d) | 2027-07-01 → 2027-12-05 (+157d) |  |  |  |
| SDR-2-CON-IR-ZA-2940 | Repair of Decoder Cable & Conduits Works | 2027-07-01 → 2027-12-05 (+157d) | 2027-07-01 → 2027-12-05 (+157d) | 3d → -132d | SDR-2-CON-IR-ZA-2930 SS, SDR-2-CON-IR-ZA-2900 FF → SDR-2-CON-IR-ZA-2930, SDR-2-CON-IR-ZA-2900 FF | resources SIC- Cost [88464]; Excavator Operator [32 h]; Labor [32 h]; Landscape Crew [32 h] → SIC- Cost [14744]; Excavator Operator [32 h]; Labor [32 h]; Landscape Crew [32 h] |
| 15 | **Solar Power System Installation** | 2027-05-11 → 2027-10-13 (+155d) | 2027-06-28 → 2027-12-05 (+160d) |  |  |  |
| 1 | **Pre install** | 2027-05-11 → 2027-10-13 (+155d) | 2027-06-10 → 2027-11-06 (+149d) |  |  |  |
| SDR-2-CON-IR-ZA-2950 | Pre Install of Solar Power System Installation | 2027-05-11 → 2027-10-13 (+155d) | 2027-06-10 → 2027-11-06 (+149d) | 6.7d → -132d |  | resources SIC- Cost [43281.5]; Excavator Operator [64.01 h]; Labor [64.01 h]; Landscape Crew [64.01 h] → SIC- Cost [71562.6]; Excavator Operator [64.01 h]; Labor [64.01 h]; Landscape Crew [64.01 h] |
| 2 | **install** | 2027-06-10 → 2027-11-07 (+150d) | 2027-06-28 → 2027-11-23 (+148d) |  |  |  |
| SDR-2-CON-IR-ZA-2960 | Install of Pre Install of Solar Power System Installation | 2027-06-10 → 2027-11-07 (+150d) | 2027-06-28 → 2027-11-23 (+148d) | 6.7d → -132d |  | resources SIC- Cost [43281.5]; Excavator Operator [64.01 h]; Labor [64.01 h]; Landscape Crew [64.01 h] → SIC- Cost [119271]; Excavator Operator [64.01 h]; Labor [64.01 h]; Landscape Crew [64.01 h] |
| 3 | **Finishing** | 2027-06-16 → 2027-11-24 (+161d) | 2027-06-24 → 2027-12-01 (+160d) |  |  |  |
| SDR-2-CON-IR-ZA-2970 | Finishing of Pre Install of Solar Power System Installation | 2027-06-16 → 2027-11-24 (+161d) | 2027-06-24 → 2027-12-01 (+160d) | 9.7d → -132d | SDR-2-CON-IR-ZA-2960 SS+5d → SDR-2-CON-IR-ZA-2960 | resources SIC- Cost [43281.5]; Excavator Operator [64.01 h]; Labor [64.01 h]; Landscape Crew [64.01 h] → SIC- Cost [23854.2]; Excavator Operator [64.01 h]; Labor [64.01 h]; Landscape Crew [64.01 h] |
| 4 | **Repairs** | 2027-06-16 → 2027-12-02 (+169d) | 2027-06-20 → 2027-12-05 (+168d) |  |  |  |
| SDR-2-CON-IR-ZA-2980 | Repair of Solar Power System Installation | 2027-06-16 → 2027-12-02 (+169d) | 2027-06-20 → 2027-12-05 (+168d) | 13.7d → -132d | SDR-2-CON-IR-ZA-2970 SS → SDR-2-CON-IR-ZA-2970 | resources SIC- Cost [43281.5]; Excavator Operator [64.01 h]; Labor [64.01 h]; Landscape Crew [64.01 h] → SIC- Cost [23854.2]; Excavator Operator [64.01 h]; Labor [64.01 h]; Landscape Crew [64.01 h] |
| 1 | **Landscape Works** | 2027-05-22 → 2027-10-13 (+144d) | 2027-07-04 → 2027-12-05 (+154d) |  |  |  |
| 1 | **GROUND COVER** | 2027-05-22 → 2027-10-13 (+144d) | 2027-06-22 → 2027-11-14 (+145d) |  |  |  |
| SDR-2-CON-LS-ZG-1000 | Clearing & grubbing of landscape areas | 2027-05-22 → 2027-10-13 (+144d) | 2027-06-07 → 2027-10-30 (+145d) | 1d → -132d |  |  |
| SDR-2-CON-LS-ZG-1010 | Grass laying | 2027-06-08 → 2027-10-31 (+145d) | 2027-06-22 → 2027-11-14 (+145d) | 1d → -132d |  |  |
| 2 | **Trees** | 2027-06-14 → 2027-11-15 (+154d) | 2027-07-04 → 2027-12-05 (+154d) |  |  |  |
| SDR-2-CON-LS-ZG-1020 | Albizia lebbeck tress planting. | 2027-06-14 → 2027-11-15 (+154d) | 2027-07-04 → 2027-12-05 (+154d) | 1d → -132d | SDR-2-CON-LS-ZG-1010 SS+5d → SDR-2-CON-LS-ZG-1010 |  |
| SDR-2-CON-LS-ZG-1030 | Tabopia tress planting. | 2027-06-14 → 2027-11-15 (+154d) | 2027-07-04 → 2027-12-05 (+154d) | 1d → -132d |  |  |
| SDR-2-CON-LS-ZG-1040 | Plumeria alba tress planting. | 2027-06-14 → 2027-11-15 (+154d) | 2027-07-04 → 2027-12-05 (+154d) | 1d → -132d |  |  |
| SDR-2-CON-LS-ZG-1050 | Cassia glauca tress planting. | 2027-06-14 → 2027-11-15 (+154d) | 2027-07-04 → 2027-12-05 (+154d) | 1d → -132d |  |  |
| 3 | **Miscellaneous landscaping items** | 2027-06-14 → 2027-11-15 (+154d) | 2027-07-04 → 2027-12-05 (+154d) |  |  |  |
| SDR-2-CON-LS-ZG-1060 | Gravel/Stone mulch: 75mm thick Hard, durable stone, washed free of loam, sand, clay, | 2027-06-14 → 2027-11-15 (+154d) | 2027-07-04 → 2027-12-05 (+154d) | 1d → -132d |  |  |
| CC | **CCTV Works** |  | 2027-05-24 → 2027-07-21 (+58d) |  |  |  |
| ZA | **ZONE A** |  | 2027-05-24 → 2027-07-21 (+58d) |  |  |  |
| 1 | **Poles 1st and 2nd Fix Works** |  | 2027-01-21 → 2027-02-27 (+37d) |  |  |  |
| 1 | **Excavation** |  | 2027-01-02 → 2027-01-16 (+14d) |  |  |  |
| SDR-2-CON-CC-ZA-1000 | Excavation 1Sst & 2nd Fix Works |  | 2027-01-02 → 2027-01-16 (+14d) | 9d → -78d | SDR-2-CON-ST-ZA-6190, SDR-2-CON-MV-ZA-1000 FF, SDR-2-PRO-DEL-E-1130 FF, SDR-2-PRO-DEL-M-1070 FF, SDR-2-PRO-DEL-M-1060 FF, SDR-2-PRO-DEL-E-1100 FF, SDR-2-CON-ST-ZA-6280 FF, SDR-2-PRO-ST-E-1140 FF, SDR-2-PRO-ST-E-1170 FF → SDR-2-CON-MV-ZA-1000, SDR-2-PRO-DEL-E-1130, SDR-2-PRO-DEL-E-1100, SDR-2-CON-ST-ZA-6190, SDR-2-CON-ST-ZA-6280, SDR-2-PRO-DEL-M-1070, SDR-2-PRO-DEL-M-1060, SDR-2-PRO-ST-E-1140, SDR-2-PRO-ST-E-1170 | resources SIC- Cost [48735]; Electrical Forman [66.88 h]; Surveyor [66.88 h]; Labor [133.75 h] → SIC- Cost [34975.9]; Electrical Forman [66.88 h]; Surveyor [66.88 h]; Labor [133.75 h] |
| 2 | **Install Footings** |  | 2027-01-12 → 2027-02-08 (+27d) |  |  |  |
| SDR-2-CON-CC-ZA-1030 | Install Footings |  | 2027-01-12 → 2027-02-08 (+27d) | 0d → -92d | SDR-2-CON-CC-ZA-1000 FF, SDR-2-PRO-DEL-E-1120 FF, SDR-2-PRO-DEL-E-1110 FF, SDR-2-PRO-DEL-E-1140 FF, SDR-2-PRO-DEL-E-1080 FF → SDR-2-CON-CC-ZA-1000 SS, SDR-2-CON-CC-ZA-1000, SDR-2-PRO-DEL-E-1120, SDR-2-PRO-DEL-E-1110, SDR-2-PRO-DEL-E-1140, SDR-2-PRO-DEL-E-1080 | resources SIC- Cost [48735]; Electrical Forman [286.61 h]; Electrical Technician [191.07 h]; Electrical Helper [143.3 h]; Labor [238.84 h] → SIC- Cost [34975.9]; Electrical Forman [286.61 h]; Electrical Technician [191.07 h]; Electrical Helper [143.3 h]; Labor [238.84 h] |
| 3 | **Backfilling** | 2027-01-13 → 2027-02-09 (+27d) | 2027-01-20 → 2027-02-16 (+27d) |  |  |  |
| SDR-2-CON-CC-ZA-1050 | Backfilling 1Sst & 2nd Fix Works | 2027-01-13 → 2027-02-09 (+27d) | 2027-01-20 → 2027-02-16 (+27d) | 0d → -92d |  | resources SIC- Cost [48735]; Electrical Forman [191.07 h]; Electrical Technician [238.84 h]; Electrical Helper [191.07 h]; Labor [143.3 h]; Excavator [6 h]; Excavator Operator [382.14 h] → SIC- Cost [34975.9]; Electrical Forman [191.07 h]; Electrical Technician [238.84 h]; Electrical Helper [191.07 h]; Labor [143.3 h]; Excavator [6 h]; Excavator Operator [382.14 h] |
| 4 | **Install pole** | 2027-01-13 → 2027-02-17 (+35d) | 2027-01-21 → 2027-02-27 (+37d) |  |  |  |
| SDR-2-CON-CC-ZA-1060 | Install Pole | 2027-01-13 → 2027-02-17 (+35d) | 2027-01-21 → 2027-02-27 (+37d) | 0d → -92d | SDR-2-PRO-DEL-E-1150, SDR-2-CON-CC-ZA-1050 SS → SDR-2-CON-CC-ZA-1050, SDR-2-PRO-DEL-E-1150 | resources SIC- Cost [48735]; Electrical Forman [57.32 h]; Electrical Technician [143.3 h]; Electrical Helper [114.64 h]; Labor [171.96 h] → SIC- Cost [244832]; Electrical Forman [57.32 h]; Electrical Technician [143.3 h]; Electrical Helper [114.64 h]; Labor [171.96 h] |

| ID | Task | Start | Finish | Total float | Predecessors | Other |
| --- | --- | --- | --- | --- | --- | --- |
| 2 | **25m Pole Package** |  | 2027-04-29 → 2027-07-21 (+83d) |  |  |  |
| 1 | **Excavation** |  | 2027-01-23 → 2027-03-06 (+42d) |  |  |  |
| SDR-2-CON-CC-ZA-1080 | 25 Meters Pole Excavation |  | 2027-01-23 → 2027-03-06 (+42d) | 0d → -92d | SDR-2-PRO-ST-E-1090, SDR-2-PRO-MAS-C-1090, SDR-2-PRO-DEL-E-1150 FF, SDR-2-PRO-ST-C-1080 FF, SDR-2-CON-CC-ZA-1060 FF, SDR-2-PRO-ST-E-1160 FF, SDR-2-PRO-ST-E-1150 FF, SDR-2-PRO-MAS-E-1030 → SDR-2-PRO-ST-C-1080, SDR-2-PRO-MAS-C-1090, SDR-2-PRO-MAS-E-1030, SDR-2-CON-CC-ZA-1060, SDR-2-PRO-DEL-E-1150, SDR-2-PRO-ST-E-1160, SDR-2-PRO-ST-E-1090, SDR-2-PRO-ST-E-1150 | resources SIC- Cost [185175]; Electrical Forman [89.61 h]; Electrical Technician [89.61 h]; Electrical Helper [89.61 h]; Labor [89.61 h] → SIC- Cost [231959]; Electrical Forman [89.61 h]; Electrical Technician [89.61 h]; Electrical Helper [89.61 h]; Labor [89.61 h] |
| 2 | **Install Footings** |  | 2027-01-23 → 2027-03-17 (+53d) |  |  |  |
| SDR-2-CON-CC-ZA-1090 | 25 Meters pole installation Footings |  | 2027-01-23 → 2027-03-17 (+53d) | 50d → -79d | SDR-2-PRO-MAL-E-1110, SDR-2-CON-CC-ZA-1080 FF, SDR-2-PRO-DEL-E-1160 FF, SDR-2-PRO-DEL-E-1190 FF, SDR-2-PRO-DEL-E-1180 FF, SDR-2-PRO-DEL-E-1170 FF, SDR-2-PRO-ST-C-1090 FF → SDR-2-CON-CC-ZA-1080, SDR-2-PRO-ST-C-1090, SDR-2-PRO-MAL-E-1110, SDR-2-PRO-DEL-E-1160, SDR-2-PRO-DEL-E-1190, SDR-2-PRO-DEL-E-1180, SDR-2-PRO-DEL-E-1170 | resources SIC- Cost [592560]; Electrical Forman [89.61 h]; Electrical Technician [89.61 h]; Electrical Helper [89.61 h]; Labor [89.61 h] → SIC- Cost [231959]; Electrical Forman [89.61 h]; Electrical Technician [89.61 h]; Electrical Helper [89.61 h]; Labor [89.61 h] |
| 3 | **Backfilling** | 2027-03-31 → 2027-06-03 (+64d) | 2027-04-24 → 2027-06-27 (+64d) |  |  |  |
| SDR-2-CON-CC-ZA-1100 | 25 Meters pole Backfilling | 2027-03-31 → 2027-06-03 (+64d) | 2027-04-24 → 2027-06-27 (+64d) | 5d → -132d |  | resources SIC- Cost [150301]; Electrical Forman [44.81 h]; Electrical Technician [44.81 h]; Electrical Helper [44.81 h]; Labor [44.81 h] → SIC- Cost [231959]; Electrical Forman [44.81 h]; Electrical Technician [44.81 h]; Electrical Helper [44.81 h]; Labor [44.81 h] |
| 4 | **Install pole** | 2027-04-06 → 2027-06-28 (+83d) | 2027-04-29 → 2027-07-21 (+83d) |  |  |  |
| SDR-2-CON-CC-ZA-1110 | 25 Meters pole installation | 2027-04-06 → 2027-06-28 (+83d) | 2027-04-29 → 2027-07-21 (+83d) | 5d → -132d | SDR-2-CON-CC-ZA-1100 SS+5d → SDR-2-CON-CC-ZA-1100 | resources SIC- Cost [1470.13]; Electrical Forman [32 h]; Electrical Technician [32 h]; Electrical Helper [32 h]; Labor [32 h] → SIC- Cost [1623713]; Electrical Forman [32 h]; Electrical Technician [32 h]; Electrical Helper [32 h]; Labor [32 h] |
| 3 | **7m Pole Package** |  | 2027-03-27 → 2027-05-30 (+64d) |  |  |  |
| 1 | **Excavation** |  | 2027-01-23 → 2027-03-06 (+42d) |  |  |  |
| SDR-2-CON-CC-ZA-1240 | 7m Meters Pole Excavation |  | 2027-01-23 → 2027-03-06 (+42d) | 0d → -92d | SDR-2-CON-CC-ZA-1080 FF, SDR-2-CON-ST-ZA-6330 FF, SDR-2-PRO-ST-E-1190 FF → SDR-2-CON-CC-ZA-1080 SS, SDR-2-CON-ST-ZA-6330, SDR-2-PRO-ST-E-1190 | resources SIC- Cost [5323.36]; Electrical Forman [64.01 h]; Electrical Technician [64.01 h]; Electrical Helper [64.01 h]; Labor [64.01 h] → SIC- Cost [111023]; Electrical Forman [64.01 h]; Electrical Technician [64.01 h]; Electrical Helper [64.01 h]; Labor [64.01 h] |
| 2 | **Install Footings** |  | 2027-01-23 → 2027-03-27 (+63d) |  |  |  |
| SDR-2-CON-CC-ZA-1250 | 7m Meters pole installation Footings |  | 2027-01-23 → 2027-03-27 (+63d) | 34d → -87d | SDR-2-CON-CC-ZA-1240 FF → SDR-2-CON-CC-ZA-1240 | resources SIC- Cost [10646.7]; Electrical Forman [38.41 h]; Electrical Technician [38.41 h]; Electrical Helper [38.41 h]; Labor [38.41 h] → SIC- Cost [111023]; Electrical Forman [38.41 h]; Electrical Technician [38.41 h]; Electrical Helper [38.41 h]; Labor [38.41 h] |
| 3 | **Backfilling** | 2027-01-31 → 2027-04-05 (+64d) | 2027-02-24 → 2027-04-28 (+63d) |  |  |  |
| SDR-2-CON-CC-ZA-1260 | 7m Meters pole Backfilling | 2027-01-31 → 2027-04-05 (+64d) | 2027-02-24 → 2027-04-28 (+63d) | 34d → -87d |  | resources SIC- Cost [37263.5]; Electrical Forman [64.01 h]; Electrical Technician [64.01 h]; Electrical Helper [64.01 h]; Labor [64.01 h] → SIC- Cost [111023]; Electrical Forman [64.01 h]; Electrical Technician [64.01 h]; Electrical Helper [64.01 h]; Labor [64.01 h] |
| 4 | **Install pole** | 2027-02-27 → 2027-05-01 (+63d) | 2027-03-27 → 2027-05-30 (+64d) |  |  |  |
| SDR-2-CON-CC-ZA-1270 | 7 Meters pole Installation | 2027-02-27 → 2027-05-01 (+63d) | 2027-03-27 → 2027-05-30 (+64d) | 34d → -87d |  | resources SIC- Cost [99804.4]; Electrical Forman [25.6 h]; Electrical Technician [25.6 h]; Electrical Helper [25.6 h]; Labor [25.6 h] → SIC- Cost [777159]; Electrical Forman [25.6 h]; Electrical Technician [25.6 h]; Electrical Helper [25.6 h]; Labor [25.6 h] |
| 4 | **35m Pole Package** |  | 2027-05-24 → 2027-07-08 (+45d) |  |  |  |
| 1 | **Excavation** |  | 2027-01-23 → 2027-03-17 (+53d) |  |  |  |
| SDR-2-CON-CC-ZA-1380 | 35m Meters Pole Excavation |  | 2027-01-23 → 2027-03-17 (+53d) | 0d → -92d | SDR-2-CON-CC-ZA-1240 FF, SDR-2-PRO-ST-E-1180 FF, SDR-2-PRO-ST-E-1210 FF, SDR-2-PRO-ST-E-1220 FF, SDR-2-PRO-ST-E-1230 FF → SDR-2-CON-CC-ZA-1240, SDR-2-PRO-ST-E-1180, SDR-2-PRO-ST-E-1210, SDR-2-PRO-ST-E-1220, SDR-2-PRO-ST-E-1230 | resources SIC- Cost [14529.3]; Electrical Forman [44.81 h]; Electrical Technician [44.81 h]; Electrical Helper [44.81 h]; Labor [44.81 h] → SIC- Cost [48470.3]; Electrical Forman [44.81 h]; Electrical Technician [44.81 h]; Electrical Helper [44.81 h]; Labor [44.81 h] |
| 2 | **Install Footings** |  | 2027-01-23 → 2027-03-24 (+60d) |  |  |  |
| SDR-2-CON-CC-ZA-1390 | 35m Meters pole installation Footings |  | 2027-01-23 → 2027-03-24 (+60d) | 91d → -72d | SDR-2-CON-CC-ZA-1380 FF, SDR-2-CON-SL-ZA-3100 FF → SDR-2-CON-CC-ZA-1380, SDR-2-CON-SL-ZA-3100 | resources SIC- Cost [165335]; Electrical Forman [44.81 h]; Electrical Technician [44.81 h]; Electrical Helper [44.81 h]; Labor [44.81 h] → SIC- Cost [48470.3]; Electrical Forman [44.81 h]; Electrical Technician [44.81 h]; Electrical Helper [44.81 h]; Labor [44.81 h] |
| 3 | **Backfilling** | 2027-04-06 → 2027-05-27 (+51d) | 2027-04-25 → 2027-06-15 (+51d) |  |  |  |
| SDR-2-CON-CC-ZA-1400 | 35m Meters pole Backfilling | 2027-04-06 → 2027-05-27 (+51d) | 2027-04-25 → 2027-06-15 (+51d) | 36d → -121d |  | resources SIC- Cost [23297.2]; Electrical Forman [25.6 h]; Electrical Technician [25.6 h]; Electrical Helper [25.6 h]; Labor [25.6 h] → SIC- Cost [48470.3]; Electrical Forman [25.6 h]; Electrical Technician [25.6 h]; Electrical Helper [25.6 h]; Labor [25.6 h] |
| 4 | **Install pole** | 2027-04-26 → 2027-06-16 (+51d) | 2027-05-24 → 2027-07-08 (+45d) |  |  |  |
| SDR-2-CON-CC-ZA-1410 | 35 Meters pole Installation | 2027-04-26 → 2027-06-16 (+51d) | 2027-05-24 → 2027-07-08 (+45d) | 36d → -121d |  | resources SIC- Cost [1252.65]; Electrical Forman [25.6 h]; Electrical Technician [25.6 h]; Electrical Helper [25.6 h]; Labor [25.6 h] → SIC- Cost [339292]; Electrical Forman [25.6 h]; Electrical Technician [25.6 h]; Electrical Helper [25.6 h]; Labor [25.6 h] |
| 5 | **Control Room** | 2027-02-09 → 2027-04-05 (+55d) | 2027-03-04 → 2027-04-29 (+56d) |  |  |  |
| SDR-2-CON-CC-ZA-1500 | Existing Control Room Preparation to accomodate the new equipment | 2027-02-09 → 2027-04-05 (+55d) | 2027-02-15 → 2027-04-11 (+55d) | 0d → -92d |  |  |
| SDR-2-CON-CC-ZA-1510 | VMS Server | 2027-02-09 → 2027-04-05 (+55d) | 2027-02-13 → 2027-04-08 (+54d) | 0d → -92d |  |  |
| SDR-2-CON-CC-ZA-1520 | Surveillance-optimized server for recording CCTV support simultaneous cameras stream and recording at high resolution | 2027-02-10 → 2027-04-06 (+55d) | 2027-02-14 → 2027-04-10 (+55d) | 0d → -92d |  |  |
| SDR-2-CON-CC-ZA-1530 | Video analytic computing hardware | 2027-02-11 → 2027-04-07 (+55d) | 2027-02-15 → 2027-04-11 (+55d) | 0d → -92d |  |  |
| SDR-2-CON-CC-ZA-1540 | Workstation | 2027-02-13 → 2027-04-08 (+54d) | 2027-02-21 → 2027-04-17 (+55d) | 0d → -92d |  |  |
| SDR-2-CON-CC-ZA-1550 | Professional LED screen 32 inch for workstations | 2027-02-14 → 2027-04-10 (+55d) | 2027-02-17 → 2027-04-13 (+55d) | 0d → -92d |  |  |
| SDR-2-CON-CC-ZA-1560 | Professional 55" video wall cube | 2027-02-16 → 2027-04-12 (+55d) | 2027-02-20 → 2027-04-15 (+54d) | 0d → -92d |  |  |
| SDR-2-CON-CC-ZA-1570 | Industrial Rack-Mount Managed Modular Gigabit Ethernet PoE Switch (24-Port) for outdoor application | 2027-02-23 → 2027-04-18 (+54d) | 2027-03-03 → 2027-04-26 (+54d) | 0d → -92d |  |  |
| SDR-2-CON-CC-ZA-1580 | SFP 1000Base-X SM | 2027-02-23 → 2027-04-18 (+54d) | 2027-03-02 → 2027-04-25 (+54d) | 0d → -92d |  | resources SIC- Cost [8114.69]; Electrical Forman [25.6 h]; Electrical Technician [25.6 h]; Electrical Helper [25.6 h]; Labor [25.6 h] → SIC- Cost [8114.7]; Electrical Forman [25.6 h]; Electrical Technician [25.6 h]; Electrical Helper [25.6 h]; Labor [25.6 h] |
| SDR-2-CON-CC-ZA-1590 | Professional joystick for accurate control of PTZ and PT Thermal Cameras. | 2027-02-24 → 2027-04-19 (+54d) | 2027-02-28 → 2027-04-22 (+53d) | 0d → -92d |  |  |
| SDR-2-CON-CC-ZA-1600 | Fiber patch panel including all related accessories | 2027-02-25 → 2027-04-20 (+54d) | 2027-03-04 → 2027-04-27 (+54d) | 0d → -92d | SDR-2-CON-CC-ZA-1590 SS+1d → SDR-2-CON-CC-ZA-1590 SS+1d, SDR-2-CON-ST-ZA-6160 |  |
| SDR-2-CON-CC-ZA-1610 | UPS 5000VA to power for all servers, monitor, and switch in the cabinet | 2027-02-25 → 2027-04-20 (+54d) | 2027-03-01 → 2027-04-24 (+54d) | 0d → -92d |  |  |
| SDR-2-CON-CC-ZA-1620 | Outdoor Carrier Class Shielded Ethernet Cable for P-to-P access points 305 meter | 2027-02-25 → 2027-04-22 (+56d) | 2027-03-04 → 2027-04-29 (+56d) | 21d → -92d | SDR-2-CON-CC-ZA-1610 SS → SDR-2-CON-CC-ZA-1610 SS+2d |  |
| 6 | **Licenses,Documentation,Testing and Training** | 2027-03-01 → 2027-04-24 (+54d) | 2027-03-07 → 2027-05-06 (+60d) |  |  |  |
| SDR-2-CON-CC-ZA-1630 | VMS Lifetime Licenses | 2027-03-01 → 2027-04-24 (+54d) | 2027-03-07 → 2027-04-29 (+53d) | 49d → -92d |  |  |
| SDR-2-CON-CC-ZA-1640 | Camera-Interlink License | 2027-03-01 → 2027-04-24 (+54d) | 2027-03-07 → 2027-04-29 (+53d) | 49d → -92d | SDR-2-CON-CC-ZA-1630 SS, SDR-2-CON-SL-ZA-1400 → SDR-2-CON-CC-ZA-1630 SS, SDR-2-CON-SL-ZA-3050 |  |
| SDR-2-CON-CC-ZA-1650 | Video analytics license package | 2027-03-01 → 2027-05-03 (+63d) | 2027-03-04 → 2027-05-06 (+63d) | 49d → -77d | SDR-2-CON-SL-ZA-3170, SDR-2-CON-SL-ZA-3090, SDR-2-CON-CC-ZA-1640 SS → SDR-2-CON-CC-ZA-1640 SS+1d, SDR-2-CON-SL-ZA-3170, SDR-2-CON-SL-ZA-3090 |  |
| SDR-2-CON-CC-ZA-1660 | Video analytics license for ANPR | 2027-03-01 → 2027-05-03 (+63d) | 2027-03-04 → 2027-05-06 (+63d) | 49d → -77d |  |  |
| ZG | **ZONE G** |  | 2027-04-29 → 2027-07-21 (+83d) |  |  |  |
| 1 | **Poles 1st and 2nd Fix Works** |  | 2026-11-26 → 2027-01-06 (+41d) |  |  |  |
| 1 | **Excavation** |  | 2026-11-09 → 2026-12-13 (+34d) |  |  |  |
| SDR-2-CON-CC-ZA-1670 | Excavation 1Sst & 2nd Fix Works |  | 2026-11-09 → 2026-12-13 (+34d) | 0d → -65d | SDR-2-CON-MV-ZA-1000 FF → SDR-2-CON-MV-ZA-1000 | resources SIC- Cost [48735]; Labor [133.75 h]; Surveyor [66.88 h] → SIC- Cost [14989.7]; Labor [133.75 h]; Surveyor [66.88 h] |
| 2 | **Install Footings** |  | 2026-11-09 → 2026-12-20 (+41d) |  |  |  |
| SDR-2-CON-CC-ZA-1700 | Install Footings |  | 2026-11-09 → 2026-12-20 (+41d) | 0d → -65d | SDR-2-CON-CC-ZA-1670 FF → SDR-2-CON-CC-ZA-1670 | resources SIC- Cost [48735]; Electrical Forman [143.3 h]; Electrical Technician [47.77 h]; Electrical Helper [191.07 h]; Labor [286.61 h] → SIC- Cost [14989.7]; Electrical Forman [143.3 h]; Electrical Technician [47.77 h]; Electrical Helper [191.07 h]; Labor [286.61 h] |
| 3 | **Backfilling** | 2026-11-10 → 2026-12-21 (+41d) | 2026-11-17 → 2026-12-28 (+41d) |  |  |  |
| SDR-2-CON-CC-ZA-1720 | Backfilling 1Sst & 2nd Fix Works | 2026-11-10 → 2026-12-21 (+41d) | 2026-11-17 → 2026-12-28 (+41d) | 0d → -65d |  | resources SIC- Cost; Electrical Forman [67.9 h]; Electrical Technician [67.9 h]; Electrical Helper [67.9 h]; Labor [67.9 h] → SIC- Cost [14989.7]; Electrical Forman [67.9 h]; Electrical Technician [67.9 h]; Electrical Helper [67.9 h]; Labor [67.9 h] |
| 4 | **Install pole** | 2026-11-18 → 2026-12-29 (+41d) | 2026-11-26 → 2027-01-06 (+41d) |  |  |  |
| SDR-2-CON-CC-ZA-1730 | Install Pole | 2026-11-18 → 2026-12-29 (+41d) | 2026-11-26 → 2027-01-06 (+41d) | 0d → -65d |  | resources SIC- Cost; Electrical Forman [57.32 h]; Electrical Technician [85.98 h]; Electrical Helper [57.32 h]; Labor [57.32 h]; Excavator [6 h]; Excavator Operator [57.32 h] → SIC- Cost [104928]; Electrical Forman [57.32 h]; Electrical Technician [85.98 h]; Electrical Helper [57.32 h]; Labor [57.32 h]; Excavator [6 h]; Excavator Operator [57.32 h] |
| 2 | **25m Pole Package** |  | 2027-02-18 → 2027-04-13 (+54d) |  |  |  |
| 1 | **Excavation** |  | 2026-11-26 → 2027-01-13 (+48d) |  |  |  |
| SDR-2-CON-CC-ZA-1750 | 25 Meters Pole Excavation |  | 2026-11-26 → 2027-01-13 (+48d) | 0d → -65d | SDR-2-CON-CC-ZA-1730 FF → SDR-2-CON-CC-ZA-1730 | resources SIC- Cost; Electrical Forman [67.9 h]; Electrical Technician [67.9 h]; Electrical Helper [67.9 h]; Labor [191.07 h]; Excavator [12 h]; Excavator Operator [67.9 h] → SIC- Cost [99411]; Electrical Forman [67.9 h]; Electrical Technician [67.9 h]; Electrical Helper [67.9 h]; Labor [191.07 h]; Excavator [12 h]; Excavator Operator [67.9 h] |
| 2 | **Install Footings** | 2026-11-28 → 2027-01-14 (+47d) | 2026-12-21 → 2027-02-07 (+48d) |  |  |  |
| SDR-2-CON-CC-ZA-1760 | 25 Meters pole installation Footings | 2026-11-28 → 2027-01-14 (+47d) | 2026-12-21 → 2027-02-07 (+48d) | 0d → -57d |  | resources SIC- Cost; Electrical Forman [67.9 h]; Electrical Technician [67.9 h]; Electrical Helper [67.9 h]; Labor [67.9 h] → SIC- Cost [99411]; Electrical Forman [67.9 h]; Electrical Technician [67.9 h]; Electrical Helper [67.9 h]; Labor [67.9 h] |
| 3 | **Backfilling** | 2026-12-22 → 2027-02-08 (+48d) | 2027-01-13 → 2027-03-03 (+49d) |  |  |  |
| SDR-2-CON-CC-ZA-1770 | 25 Meters pole Backfilling | 2026-12-22 → 2027-02-08 (+48d) | 2027-01-13 → 2027-03-03 (+49d) | 0d → -57d |  | resources SIC- Cost; Electrical Forman [67.9 h]; Electrical Technician [67.9 h]; Electrical Helper [382.14 h]; Labor [67.9 h] → SIC- Cost [99411]; Electrical Forman [67.9 h]; Electrical Technician [67.9 h]; Electrical Helper [382.14 h]; Labor [67.9 h] |
| 4 | **Install pole** | 2027-01-26 → 2027-03-21 (+54d) | 2027-02-18 → 2027-04-13 (+54d) |  |  |  |
| SDR-2-CON-CC-ZA-1780 | 25 Meters pole installation | 2027-01-26 → 2027-03-21 (+54d) | 2027-02-18 → 2027-04-13 (+54d) | 0d → -57d |  | resources SIC- Cost; Electrical Forman [67.9 h]; Electrical Technician [67.9 h]; Electrical Helper [67.9 h]; Labor [67.9 h] → SIC- Cost [695877]; Electrical Forman [67.9 h]; Electrical Technician [67.9 h]; Electrical Helper [67.9 h]; Labor [67.9 h] |
| 3 | **7m Pole Package** |  | 2027-04-06 → 2027-05-12 (+36d) |  |  |  |
| 1 | **Excavation** |  | 2026-11-26 → 2027-01-13 (+48d) |  |  |  |
| SDR-2-CON-CC-ZA-1790 | 7m Meters Pole Excavation |  | 2026-11-26 → 2027-01-13 (+48d) | 4d → -65d | SDR-2-CON-CC-ZA-1750 FF → SDR-2-CON-CC-ZA-1750 SS | resources SIC- Cost; Electrical Forman [95.54 h]; Electrical Technician [47.77 h]; Electrical Helper [47.77 h]; Labor [67.9 h]; Excavator [12 h]; Excavator Operator [67.9 h] → SIC- Cost [47581.2]; Electrical Forman [95.54 h]; Electrical Technician [47.77 h]; Electrical Helper [47.77 h]; Labor [67.9 h]; Excavator [12 h]; Excavator Operator [67.9 h] |
| 2 | **Install Footings** | 2026-11-28 → 2027-01-14 (+47d) | 2026-12-20 → 2027-02-06 (+48d) |  |  |  |
| SDR-2-CON-CC-ZA-1800 | 7m Meters pole installation Footings | 2026-11-28 → 2027-01-14 (+47d) | 2026-12-20 → 2027-02-06 (+48d) | 36d → -65d |  | resources SIC- Cost; Electrical Forman [95.54 h]; Electrical Technician [95.54 h]; Electrical Helper [67.9 h]; Labor [67.9 h] → SIC- Cost [47581.2]; Electrical Forman [95.54 h]; Electrical Technician [95.54 h]; Electrical Helper [67.9 h]; Labor [67.9 h] |

| ID | Task | Start | Finish | Duration | Total float | Predecessors | Other |
| --- | --- | --- | --- | --- | --- | --- | --- |
| 3 | **Backfilling** | 2026-12-21 → 2027-02-07 (+48d) | 2027-01-12 → 2027-03-02 (+49d) |  |  |  |  |
| SDR-2-CON-CC-ZA-1810 | 7m Meters pole Backfilling | 2026-12-21 → 2027-02-07 (+48d) | 2027-01-12 → 2027-03-02 (+49d) |  | 36d → -65d |  | resources SIC- Cost; Electrical Forman [67.9 h]; Electrical Technician [47.77 h]; Electrical Helper [67.9 h]; Labor [67.9 h]; Excavator [6 h]; Excavator Operator [95.54 h] → SIC- Cost [47581.2]; Electrical Forman [67.9 h]; Electrical Technician [47.77 h]; Electrical Helper [67.9 h]; Labor [67.9 h]; Excavator [6 h]; Excavator Operator [95.54 h] |
| 4 | **Install pole** | 2027-03-14 → 2027-04-19 (+36d) | 2027-04-06 → 2027-05-12 (+36d) |  |  |  |  |
| SDR-2-CON-CC-ZA-1820 | 7 Meters pole Installation | 2027-03-14 → 2027-04-19 (+36d) | 2027-04-06 → 2027-05-12 (+36d) |  | 1d → -90d | SDR-2-CON-SL-ZA-3050 SS, SDR-2-CON-SL-ZA-3010, SDR-2-CON-SL-ZA-2970, SDR-2-CON-SL-ZA-1400, SDR-2-CON-CC-ZA-1810 FS+11d → SDR-2-CON-CC-ZA-1810 FS+11d, SDR-2-CON-SL-ZA-3050, SDR-2-CON-SL-ZA-3010, SDR-2-CON-SL-ZA-2970, SDR-2-CON-SL-ZA-1400 | resources SIC- Cost; Electrical Forman [67.9 h]; Electrical Technician [67.9 h]; Electrical Helper [67.9 h]; Labor [67.9 h] → SIC- Cost [333068]; Electrical Forman [67.9 h]; Electrical Technician [67.9 h]; Electrical Helper [67.9 h]; Labor [67.9 h] |
| 4 | **35m Pole Package** |  | 2027-01-25 → 2027-03-29 (+63d) |  |  |  |  |
| 1 | **Excavation** |  | 2026-11-26 → 2027-01-23 (+58d) |  |  |  |  |
| SDR-2-CON-CC-ZA-1830 | 35m Meters Pole Excavation |  | 2026-11-26 → 2027-01-23 (+58d) |  | 21d → -31d | SDR-2-CON-CC-ZA-1790 FF → SDR-2-CON-CC-ZA-1790 | resources SIC- Cost; Electrical Forman [13.58 h]; Electrical Technician [13.58 h]; Electrical Helper [13.58 h]; Labor [13.58 h]; Excavator [6 h]; Excavator Operator [13.58 h] → SIC- Cost [20773.7]; Electrical Forman [13.58 h]; Electrical Technician [13.58 h]; Electrical Helper [13.58 h]; Labor [13.58 h]; Excavator [6 h]; Excavator Operator [13.58 h] |
| 2 | **Install Footings** | 2026-11-28 → 2027-01-24 (+57d) | 2026-12-20 → 2027-02-15 (+57d) |  |  |  |  |
| SDR-2-CON-CC-ZA-1840 | 35m Meters pole installation Footings | 2026-11-28 → 2027-01-24 (+57d) | 2026-12-20 → 2027-02-15 (+57d) |  | 21d → -31d |  | resources SIC- Cost; Electrical Forman [13.58 h]; Electrical Technician [13.58 h]; Electrical Helper [13.58 h]; Labor [13.58 h] → SIC- Cost [20773.7]; Electrical Forman [13.58 h]; Electrical Technician [13.58 h]; Electrical Helper [13.58 h]; Labor [13.58 h] |
| 3 | **Backfilling** | 2026-12-01 → 2027-01-27 (+57d) | 2026-12-23 → 2027-02-18 (+57d) |  |  |  |  |
| SDR-2-CON-CC-ZA-1850 | 35m Meters pole Backfilling | 2026-12-01 → 2027-01-27 (+57d) | 2026-12-23 → 2027-02-18 (+57d) |  | 21d → -31d |  | resources SIC- Cost; Electrical Forman [13.58 h]; Electrical Technician [13.58 h]; Electrical Helper [13.58 h]; Labor [13.58 h]; Excavator [6 h]; Excavator Operator [13.58 h] → SIC- Cost [20773.7]; Electrical Forman [13.58 h]; Electrical Technician [13.58 h]; Electrical Helper [13.58 h]; Labor [13.58 h]; Excavator [6 h]; Excavator Operator [13.58 h] |
| 4 | **Install pole** | 2027-01-04 → 2027-03-03 (+58d) | 2027-01-25 → 2027-03-29 (+63d) |  |  |  |  |
| SDR-2-CON-CC-ZA-1860 | 35 Meters pole Installation | 2027-01-04 → 2027-03-03 (+58d) | 2027-01-25 → 2027-03-29 (+63d) |  | 21d → -31d |  | resources SIC- Cost; Electrical Forman [13.58 h]; Electrical Technician [13.58 h]; Electrical Helper [13.58 h]; Labor [13.58 h] → SIC- Cost [145416]; Electrical Forman [13.58 h]; Electrical Technician [13.58 h]; Electrical Helper [13.58 h]; Labor [13.58 h] |
| 5 | **Control Room** | 2026-11-28 → 2027-01-14 (+47d) | 2027-01-25 → 2027-03-29 (+63d) |  |  |  |  |
| SDR-2-CON-CC-ZG-1500 | Existing Control Room Preparation to accomodate the new equipments | 2026-11-28 → 2027-01-14 (+47d) | 2026-12-01 → 2027-01-18 (+48d) |  | 5d → -51d |  |  |
| SDR-2-CON-CC-ZG-1540 | Workstation | 2026-11-28 → 2027-01-14 (+47d) | 2026-12-10 → 2027-01-27 (+48d) |  | 4d → -52d |  | resources SIC- Cost; Electrical Forman [13.58 h]; Electrical Technician [13.58 h]; Electrical Helper [13.58 h]; Labor [13.58 h] → SIC- Cost [9662.4]; Electrical Forman [13.58 h]; Electrical Technician [13.58 h]; Electrical Helper [13.58 h]; Labor [13.58 h] |
| SDR-2-CON-CC-ZG-1550 | Professional LED screen 32 inch for workstations | 2026-11-28 → 2027-01-14 (+47d) | 2026-12-01 → 2027-01-18 (+48d) |  | 4d → -52d |  | resources SIC- Cost; Electrical Forman [13.58 h]; Electrical Technician [13.58 h]; Electrical Helper [13.58 h]; Labor [13.58 h] → SIC- Cost [7020.93]; Electrical Forman [13.58 h]; Electrical Technician [13.58 h]; Electrical Helper [13.58 h]; Labor [13.58 h] |
| SDR-2-CON-CC-ZG-1510 | VMS Server | 2026-12-02 → 2027-01-19 (+48d) | 2026-12-07 → 2027-01-24 (+48d) |  | 5d → -51d |  | resources SIC- Cost; Electrical Forman [95.54 h]; Electrical Technician [119.42 h]; Electrical Helper [67.9 h]; Labor [67.9 h] → SIC- Cost [82777.4]; Electrical Forman [95.54 h]; Electrical Technician [119.42 h]; Electrical Helper [67.9 h]; Labor [67.9 h] |
| SDR-2-CON-CC-ZG-1560 | Professional 55" video wall cube | 2026-12-02 → 2027-01-19 (+48d) | 2026-12-06 → 2027-01-23 (+48d) |  | 4d → -52d |  | resources SIC- Cost; Electrical Forman [13.58 h]; Electrical Technician [13.58 h]; Electrical Helper [13.58 h]; Labor [13.58 h] → SIC- Cost [24632.2]; Electrical Forman [13.58 h]; Electrical Technician [13.58 h]; Electrical Helper [13.58 h]; Labor [13.58 h] |
| SDR-2-CON-CC-ZG-1570 | Industrial Rack-Mount Managed Modular Gigabit Ethernet PoE Switch (24-Port) for outdoor application | 2026-12-05 → 2027-01-21 (+47d) | 2026-12-14 → 2027-01-31 (+48d) |  | 4d → -52d |  | resources SIC- Cost; Electrical Forman [13.58 h]; Electrical Technician [13.58 h]; Electrical Helper [13.58 h]; Labor [13.58 h] → SIC- Cost [22545.9]; Electrical Forman [13.58 h]; Electrical Technician [13.58 h]; Electrical Helper [13.58 h]; Labor [13.58 h] |
| SDR-2-CON-CC-ZG-1580 | SFP 1000Base-X SM | 2026-12-05 → 2027-01-21 (+47d) | 2026-12-08 → 2027-01-25 (+48d) |  | 4d → -52d |  | resources SIC- Cost; Electrical Forman [13.58 h]; Electrical Technician [13.58 h]; Electrical Helper [13.58 h]; Labor [13.58 h] → SIC- Cost [3477.73]; Electrical Forman [13.58 h]; Electrical Technician [13.58 h]; Electrical Helper [13.58 h]; Labor [13.58 h] |
| SDR-2-CON-CC-ZG-1520 | Surveillance-optimized server for recording CCTV support simultaneous cameras stream and recording at high resolution | 2026-12-08 → 2027-01-25 (+48d) | 2026-12-12 → 2027-01-28 (+47d) |  | 5d → -51d |  | resources SIC- Cost; Electrical Forman [76.43 h]; Electrical Technician [95.54 h]; Electrical Helper [114.64 h]; Labor [67.9 h] → SIC- Cost [154819]; Electrical Forman [76.43 h]; Electrical Technician [95.54 h]; Electrical Helper [114.64 h]; Labor [67.9 h] |
| SDR-2-CON-CC-ZG-1590 | Professional joystick for accurate control of PTZ and PT Thermal Cameras. | 2026-12-09 → 2027-01-26 (+48d) | 2026-12-13 → 2027-01-30 (+48d) |  | 4d → -52d |  | resources SIC- Cost; Electrical Forman [13.58 h]; Electrical Technician [13.58 h]; Electrical Helper [13.58 h]; Labor [13.58 h] → SIC- Cost [9018.48]; Electrical Forman [13.58 h]; Electrical Technician [13.58 h]; Electrical Helper [13.58 h]; Labor [13.58 h] |
| SDR-2-CON-CC-ZG-1530 | Video analytic computing hardware | 2026-12-13 → 2027-01-30 (+48d) | 2026-12-16 → 2027-02-02 (+48d) |  | 10d → -33d |  | resources SIC- Cost; Electrical Forman [95.54 h]; Electrical Technician [67.9 h]; Electrical Helper [67.9 h]; Labor [67.9 h] → SIC- Cost [115949]; Electrical Forman [95.54 h]; Electrical Technician [67.9 h]; Electrical Helper [67.9 h]; Labor [67.9 h] |
| SDR-2-CON-CC-ZG-1600 | Fiber patch panel including all related accessories | 2026-12-14 → 2027-01-31 (+48d) | 2026-12-17 → 2027-02-03 (+48d) |  | 4d → -52d |  | resources SIC- Cost [2]; Electrical Forman [13.58 h]; Electrical Technician [13.58 h]; Electrical Helper [13.58 h]; Labor [13.58 h] → SIC- Cost [4745.22]; Electrical Forman [13.58 h]; Electrical Technician [13.58 h]; Electrical Helper [13.58 h]; Labor [13.58 h] |
| SDR-2-CON-CC-ZG-1610 | UPS 5000VA to power for all servers, monitor, and switch in the cabinet | 2026-12-20 → 2027-02-06 (+48d) | 2026-12-26 → 2027-02-11 (+47d) |  | 4d → -52d |  | resources SIC- Cost; Electrical Forman [13.58 h]; Electrical Technician [13.58 h]; Electrical Helper [13.58 h]; Labor [13.58 h] → SIC- Cost [10972.1]; Electrical Forman [13.58 h]; Electrical Technician [13.58 h]; Electrical Helper [13.58 h]; Labor [13.58 h] |
| SDR-2-CON-CC-ZG-1620 | Outdoor Carrier Class Shielded Ethernet Cable for P-to-P access points 305 meter | 2027-01-21 → 2027-03-25 (+63d) | 2027-01-25 → 2027-03-29 (+63d) |  | 21d → -29d |  | resources SIC- Cost; Electrical Forman [67.9 h]; Electrical Technician [66.88 h]; Electrical Helper [67.9 h]; Labor [67.9 h] → SIC- Cost [11079.1]; Electrical Forman [67.9 h]; Electrical Technician [66.88 h]; Electrical Helper [67.9 h]; Labor [67.9 h] |
| 6 | **Licenses,Documentation,Testing and Training** | 2026-12-17 → 2027-02-03 (+48d) | 2027-04-29 → 2027-07-21 (+83d) |  |  |  |  |
| SDR-2-CON-CC-ZG-1630 | VMS Lifetime Licenses | 2026-12-17 → 2027-02-03 (+48d) | 2026-12-19 → 2027-02-04 (+47d) |  | 10d → -33d |  |  |
| SDR-2-CON-CC-ZG-1640 | Camera-Interlink License | 2026-12-20 → 2027-02-06 (+48d) | 2026-12-20 → 2027-02-06 (+48d) |  | 10d → -33d |  |  |
| SDR-2-CON-CC-ZG-1650 | Video analytics license package | 2026-12-20 → 2027-02-06 (+48d) | 2026-12-20 → 2027-02-06 (+48d) |  | 10d → -33d |  |  |
| SDR-2-CON-CC-ZG-1660 | Video analytics license for ANPR | 2027-04-29 → 2027-07-21 (+83d) | 2027-04-29 → 2027-07-21 (+83d) |  | 5d → -132d | SDR-2-CON-CC-ZG-1650 SS, SDR-2-CON-CC-ZA-1620 FF, SDR-2-CON-CC-ZA-1270 FF, SDR-2-CON-CC-ZA-1110 FF → SDR-2-CON-CC-ZG-1650 SS, SDR-2-CON-CC-ZA-1620 FF, SDR-2-CON-CC-ZA-1410 FF, SDR-2-CON-CC-ZA-1270 FF, SDR-2-CON-CC-ZA-1110 FF |  |
| TC | **Testing & Commissioning** | 2027-02-25 → 2027-04-20 (+54d) | 2027-07-05 → 2027-11-30 (+148d) |  |  |  |  |
| 1 | **Civil Works** | 2027-05-15 → 2027-09-15 (+123d) | 2027-05-24 → 2027-09-19 (+118d) |  |  |  |  |
| SDR-2-TC-CW-1010 | Testing & Commissioning of road works | 2027-05-15 → 2027-09-15 (+123d) | 2027-05-24 → 2027-09-19 (+118d) |  | 5d → -112d |  | resources SIC- Cost [12.5]; Civil Engineer [1424.06 h]; Civil Forman [1424.06 h] → Suppliers [1424.06 h]; SIC- Cost; Civil Forman [1424.06 h] |
| 2 | **Storm Water Drainage Network** | 2027-03-21 → 2027-09-23 (+186d) | 2027-04-03 → 2027-10-06 (+186d) |  |  |  |  |
| SDR-2-TC-SWDN-1020 | Testing & Commissioning of network work | 2027-03-21 → 2027-09-23 (+186d) | 2027-04-03 → 2027-10-06 (+186d) |  | 57d → -99d |  | resources SIC- Cost [12.5]; Mechanical Forman [1424.06 h]; Mechanical Engineer [1424.06 h] → SIC- Cost; Mechanical Forman [1424.06 h]; Mechanical Engineer [1424.06 h] |
| 3 | **Sewerage Network** | 2027-05-23 → 2027-08-07 (+76d) | 2027-06-05 → 2027-08-19 (+75d) |  |  |  |  |
| SDR-2-TC-SN-1030 | Testing & Commissioning of Sewage Network | 2027-05-23 → 2027-08-07 (+76d) | 2027-06-05 → 2027-08-19 (+75d) |  | 13d → -74d |  | resources SIC- Cost [5]; Civil Forman [1424.06 h]; Architecture [1424.06 h] → SIC- Cost; Civil Forman [1424.06 h]; Architecture [1424.06 h] |
| 4 | **TSE Network** | 2027-06-21 → 2027-10-31 (+132d) | 2027-07-05 → 2027-11-14 (+132d) |  |  |  |  |
| SDR-2-TC-TSE-1040 | Testing & Commissioning of TSE Network | 2027-06-21 → 2027-10-31 (+132d) | 2027-07-05 → 2027-11-14 (+132d) |  | 0d → -128d |  | resources SIC- Cost [15]; Mechanical Engineer [2848.11 h] → SIC- Cost; Mechanical Engineer [2848.11 h] |
| 5 | **Portable Water** | 2027-06-21 → 2027-09-20 (+91d) | 2027-06-30 → 2027-09-29 (+91d) |  |  |  |  |
| SDR-2-TC-PW-1050 | Testing & Commissioning of Potable Network | 2027-06-21 → 2027-09-20 (+91d) | 2027-06-30 → 2027-09-29 (+91d) |  | 0d → -93d | SDR-2-CON-PW-ZA-2650, SDR-2-CON-PW-ZA-1070 SS, SDR-2-CON-PW-ZA-2320, SDR-2-CON-PW-ZA-2620, SDR-2-CON-PW-ZA-3200, SDR-2-CON-PW-ZA-3100, SDR-2-CON-PW-ZA-3000, SDR-2-CON-PW-ZA-3700, SDR-2-CON-PW-ZA-2520, SDR-2-CON-PW-ZA-2420, SDR-2-CON-PW-ZA-2900, SDR-2-CON-PW-ZA-3650, SDR-2-CON-PW-ZA-3550, SDR-2-CON-PW-ZA-3450, SDR-2-CON-PW-ZA-3350, SDR-2-CON-PW-ZA-3250, SDR-2-CON-PW-ZA-2800, SDR-2-CON-PW-ZA-2700, SDR-2-CON-PW-ZA-1070, SDR-2-CON-PW-ZA-2750, SDR-2-CON-PW-ZA-2250, SDR-2-CON-PW-ZA-3300, SDR-2-CON-PW-ZA-2550 → SDR-2-CON-PW-ZA-1070 SS+2d, SDR-2-CON-PW-ZA-2320, SDR-2-CON-PW-ZA-2620, SDR-2-CON-PW-ZA-3200, SDR-2-CON-PW-ZA-3100, SDR-2-CON-PW-ZA-3000, SDR-2-CON-PW-ZA-3700, SDR-2-CON-PW-ZA-2520, SDR-2-CON-PW-ZA-2420, SDR-2-CON-PW-ZA-2900, SDR-2-CON-PW-ZA-3650, SDR-2-CON-PW-ZA-3550, SDR-2-CON-PW-ZA-3450, SDR-2-CON-PW-ZA-3350, SDR-2-CON-PW-ZA-3250, SDR-2-CON-PW-ZA-2800, SDR-2-CON-PW-ZA-2700, SDR-2-CON-PW-ZA-1070, SDR-2-CON-PW-ZA-2650 | resources SIC- Cost [12]; Mechanical Forman [1424.06 h]; Mechanical Engineer [1424.06 h] → SIC- Cost; Mechanical Forman [1424.06 h]; Mechanical Engineer [1424.06 h] |
| 6 | **Electrical Works** | 2027-05-01 → 2027-07-22 (+82d) | 2027-05-08 → 2027-07-29 (+82d) |  |  |  |  |
| SDR-2-TC-EW-1060 | Testing & Commissioning of Electrical Network | 2027-05-01 → 2027-07-22 (+82d) | 2027-05-08 → 2027-07-29 (+82d) |  | 8d → -109d |  | resources SIC- Cost [12]; Electrical Engineer [2848.11 h] → SIC- Cost; Electrical Engineer [2848.11 h] |
| 7 | **Landscape & Irrigation Works** | 2027-06-21 → 2027-11-24 (+156d) | 2027-06-27 → 2027-11-30 (+156d) |  |  |  |  |
| SDR-2-TC-LIW-1070 | Testing & Commissioning of Landscape & Irrigation Network | 2027-06-21 → 2027-11-24 (+156d) | 2027-06-27 → 2027-11-30 (+156d) |  | 7d → -128d | SDR-2-TC-CCTV-1080, SDR-2-CON-IR-ZA-1010 SS → SDR-2-CON-IR-ZA-1010 FS+8d, SDR-2-TC-CCTV-1080 | resources SIC- Cost [11]; Mechanical Engineer [2848.11 h] → SIC- Cost; Mechanical Engineer [2848.11 h] |
| 8 | **CCTV Works** | 2027-02-25 → 2027-04-20 (+54d) | 2027-03-08 → 2027-05-01 (+54d) |  |  |  |  |
| SDR-2-TC-CCTV-1080 | Testing & Commissioning of medium voltage works | 2027-02-25 → 2027-04-20 (+54d) | 2027-03-08 → 2027-05-01 (+54d) |  | 0d → -49d |  | resources SIC- Cost [12.5]; Electrical Forman [2848.11 h] → SIC- Cost; Electrical Forman [2848.11 h] |
| CO | **Close Out** | 2027-05-01 → 2027-07-22 (+82d) | 2027-07-05 → 2027-12-05 (+153d) |  |  |  |  |
| 1 | **As Built Drawings** | 2027-05-01 → 2027-07-22 (+82d) | 2027-06-19 → 2027-10-11 (+114d) |  |  |  |  |
| 1 | **Civil** | 2027-05-05 → 2027-07-22 (+78d) | 2027-05-24 → 2027-08-04 (+72d) |  |  |  |  |
| SDR-2-CLO-AS-C-1000 | Civil As-Built Drawing Submission | 2027-05-05 → 2027-07-22 (+78d) | 2027-05-12 → 2027-07-29 (+78d) |  | 1d → -72d |  | resources Civil Engineer [1035.67 h]; Civil Drafman [1035.67 h] → Suppliers [1035.67 h]; Civil Drafman [1035.67 h] |
| SDR-2-CLO-AS-C-1010 | Civil As-Built Drawing Approvals | 2027-05-13 → 2027-07-31 (+79d) | 2027-05-24 → 2027-08-04 (+72d) |  | 1d → -72d |  |  |
| 2 | **Mechanical** | 2027-06-01 → 2027-09-23 (+114d) | 2027-06-19 → 2027-10-11 (+114d) |  |  |  |  |
| SDR-2-CLO-AS-M-1000 | Mechanical As-Built Drawing Submission | 2027-06-01 → 2027-09-23 (+114d) | 2027-06-09 → 2027-10-02 (+115d) |  | 0d → -99d | SDR-2-CON-PW-ZA-3350, SDR-2-CON-PW-ZA-2320, SDR-2-TC-SWDN-1020 SS, SDR-2-CLO-AS-E-1010 SS+7d → SDR-2-TC-SWDN-1020 SS, SDR-2-CLO-AS-E-1010 SS+7d, SDR-2-CON-PW-ZA-3350 FS+5d, SDR-2-CON-PW-ZA-2320 |  |
| SDR-2-CLO-AS-M-1010 | Mechanical As-Built Drawing Approvals | 2027-06-10 → 2027-10-03 (+115d) | 2027-06-19 → 2027-10-11 (+114d) |  | 0d → -99d |  |  |
| 3 | **Electrical** | 2027-05-01 → 2027-07-22 (+82d) | 2027-05-22 → 2027-08-06 (+76d) |  |  |  |  |
| SDR-2-CLO-AS-E-1000 | Electrical As-Built Drawing Submission | 2027-05-01 → 2027-07-22 (+82d) | 2027-05-08 → 2027-07-29 (+82d) |  | 8d → -109d |  |  |
| SDR-2-CLO-AS-E-1010 | Electrical As-Built Drawing Approvals | 2027-05-09 → 2027-07-31 (+83d) | 2027-05-22 → 2027-08-06 (+76d) |  | 8d → -109d |  |  |
| 2 | **Training and Manuals** | 2027-06-20 → 2027-11-20 (+153d) | 2027-07-05 → 2027-12-05 (+153d) |  |  |  |  |
| SDR-2-CLO-TM-1000 | Training and Manuals | 2027-06-20 → 2027-11-20 (+153d) | 2027-07-05 → 2027-12-05 (+153d) |  | 0d → -132d | SDR-2-CLO-AS-M-1010, SDR-2-CLO-AS-E-1010 SS, SDR-2-CON-IR-ZA-2130 FS+1d → SDR-2-CLO-AS-E-1010 SS, SDR-2-CON-IR-ZA-2130, SDR-2-CLO-AS-M-1010 | resources Civil Engineer [690.45 h]; Mechanical Engineer [690.45 h]; Architecture [690.45 h] → Suppliers [690.45 h]; Mechanical Engineer [690.45 h]; Architecture [690.45 h] |
| 3 | **Demobilize Manpower** | 2027-06-20 → 2027-11-20 (+153d) | 2027-07-05 → 2027-12-05 (+153d) |  |  |  |  |
| SDR-2-CLO-DM-1000 | Manpower Demobilize | 2027-06-20 → 2027-11-20 (+153d) | 2027-07-05 → 2027-12-05 (+153d) |  | 0d → -132d |  |  |
| 4 | **Demobilize Equipment** | 2027-06-20 → 2027-11-20 (+153d) | 2027-07-05 → 2027-12-05 (+153d) |  |  |  |  |
| SDR-2-CLO-DE-1000 | Equipments Demobilize | 2027-06-20 → 2027-11-20 (+153d) | 2027-07-05 → 2027-12-05 (+153d) |  | 0d → -132d |  |  |
| 5 | **Removal of Site Offices and Structures** | 2027-06-20 → 2027-11-20 (+153d) | 2027-07-05 → 2027-12-05 (+153d) |  |  |  |  |
| SDR-2-CLO-RO-1000 | Site Office Removal | 2027-06-20 → 2027-11-20 (+153d) | 2027-07-05 → 2027-12-05 (+153d) |  | 0d → -132d |  |  |
| 6 | **Handover** | 2027-06-28 → 2027-11-30 (+155d) | 2027-07-05 → 2027-12-05 (+153d) |  |  |  |  |
| SDR-2-CLO-HO-1000 | Project Handover | 2027-06-28 → 2027-11-30 (+155d) | 2027-07-05 → 2027-12-05 (+153d) | 7d → 5d | 0d → -132d | SDR-2-ENG-APP-M-1010, SDR-2-PREL-1100, SDR-2-CON-SE-ZA-1610, SDR-2-CON-IR-ZA-2980 FF, SDR-2-TC-LIW-1070 FF, SDR-2-CLO-DE-1000 SS, SDR-2-CLO-RO-1000 SS, SDR-2-CON-RW-ZA-1150, SDR-2-CON-RW-ZA-1290, SDR-2-CON-ST-ZA-3310, SDR-2-CON-TS-ZA-1080, SDR-2-CON-TS-ZA-1260, SDR-2-CON-TS-ZA-1710, SDR-2-CON-TS-ZA-1800, SDR-2-CON-TE-ZA-1020, SDR-2-CON-TE-ZA-1060, SDR-2-CON-LS-ZA-1060 SS, SDR-2-CON-CC-ZA-1620, SDR-2-CON-CC-ZA-1660, SDR-2-CON-CC-ZG-1660, SDR-2-TC-CCTV-1080, SDR-2-CON-LS-ZG-1060 SS, SDR-2-CON-PW-ZA-1080, SDR-2-PRO-MAS-C-1100, SDR-2-PRO-MAL-M-1060, SDR-2-PRO-MAL-M-1070, SDR-2-CON-SL-ZA-2690 SS, SDR-2-PRO-MAS-E-1000, SDR-2-PRO-MAL-E-1030, SDR-2-PRO-MAL-E-1130, SDR-2-PRO-MAL-E-1120, SDR-2-CON-CC-ZA-1110 SS, SDR-2-PRO-MAL-E-1170, SDR-2-CON-CC-ZA-1270, SDR-2-CON-CC-ZA-1410 SS, SDR-2-CON-IR-ZA-1030 FF, SDR-2-PRO-MAS-E-1020, SDR-2-CON-SL-ZA-1110, SDR-2-PRO-MAS-C-1080, SDR-2-CON-MV-ZA-1150, SDR-2-PRO-MAL-M-1030, SDR-2-PRO-MAL-M-1040, SDR-2-PRO-MAL-E-1010, SDR-2-PRO-MAL-E-1020, SDR-2-PRO-MAL-E-1180, SDR-2-PRO-MAL-E-1060, SDR-2-CON-RW-ZA-1050, SDR-2-CON-RW-ZA-1200, SDR-2-CON-RW-ZA-1340, SDR-2-CON-RW-ZA-1430, SDR-2-CON-RW-ZA-1480, SDR-2-CON-RW-ZA-1570, SDR-2-CON-RW-ZA-1620, SDR-2-CON-RW-ZA-1710, SDR-2-CON-RW-ZA-1760, SDR-2-CON-RW-ZA-1850, SDR-2-CON-RW-ZA-1900, SDR-2-CON-RW-ZA-1990, SDR-2-CON-RW-ZA-3190, SDR-2-CON-RW-ZA-2130, SDR-2-CON-RW-ZA-2180, SDR-2-CON-RW-ZA-2270, SDR-2-CON-RW-ZA-2320, SDR-2-CON-RW-ZA-2410, SDR-2-CON-RW-ZA-2460, SDR-2-CON-RW-ZA-2550, SDR-2-CON-RW-ZA-2600, SDR-2-CON-RW-ZA-2690, SDR-2-CON-RW-ZA-2740, SDR-2-CON-RW-ZA-2830, SDR-2-CON-RW-ZG-1060, SDR-2-CON-RW-ZG-1210, SDR-2-CON-RW-ZG-1310, SDR-2-CON-RW-ZG-1360, SDR-2-CON-RW-ZG-1460, SDR-2-CON-RW-ZG-1510, SDR-2-CON-RW-ZG-1610, SDR-2-CON-RW-ZG-1660, SDR-2-CON-RW-ZG-1760, SDR-2-CON-RW-ZG-1810, SDR-2-CON-RW-ZG-1910, SDR-2-CON-RW-ZG-1960, SDR-2-CON-RW-ZG-2060, SDR-2-CON-RW-ZG-2110, SDR-2-CON-RW-ZG-2210, SDR-2-CON-ST-ZA-3760, SDR-2-CON-ST-ZA-4130, SDR-2-CON-ST-ZA-4280, SDR-2-CON-ST-ZA-4430, SDR-2-CON-ST-ZA-4580, SDR-2-CON-ST-ZA-4730, SDR-2-CON-ST-ZA-4880, SDR-2-CON-ST-ZA-5030, SDR-2-CON-ST-ZA-5070, SDR-2-CON-ST-ZA-5180, SDR-2-CON-ST-ZA-5220, SDR-2-CON-ST-ZA-5930, SDR-2-CON-ST-ZA-5970, SDR-2-CON-ST-ZA-5480, SDR-2-CON-ST-ZA-5630, SDR-2-CON-ST-ZA-6000, SDR-2-CON-ST-ZA-6080, SDR-2-CON-SE-ZA-1440, SDR-2-CON-SE-ZA-1540, SDR-2-CON-SE-ZA-1740, SDR-2-CON-SE-ZA-1840, SDR-2-CON-SE-ZA-1940, SDR-2-CON-SE-ZA-2040, SDR-2-CON-SE-ZA-2140, SDR-2-CON-SE-ZA-2240, SDR-2-CON-SE-ZA-2340, SDR-2-CON-SE-ZA-2440, SDR-2-CON-TS-ZA-1910, SDR-2-CON-TS-ZA-1070, SDR-2-CON-TS-ZA-2260, SDR-2-CON-TS-ZA-2040, SDR-2-CON-TS-ZA-2090, SDR-2-CON-TS-ZA-2690, SDR-2-CON-TS-ZA-2890, SDR-2-CON-TS-ZA-1960, SDR-2-CON-TS-ZA-1970, SDR-2-CON-TS-ZA-2140, SDR-2-CON-TS-ZA-1980, SDR-2-CON-TS-ZA-2190, SDR-2-CON-TS-ZA-3190, SDR-2-CON-TS-ZA-2360, SDR-2-CON-TS-ZA-2490, SDR-2-CON-TS-ZA-2990, SDR-2-CON-TS-ZA-3090, SDR-2-CON-TS-ZA-2590, SDR-2-CON-PW-ZA-2320, SDR-2-CON-PW-ZA-2700, SDR-2-CON-PW-ZA-2800, SDR-2-CON-PW-ZA-3250, SDR-2-CON-PW-ZA-3350, SDR-2-CON-PW-ZA-3450, SDR-2-CON-PW-ZA-3550, SDR-2-CON-PW-ZA-3650, SDR-2-CON-PW-ZA-2900, SDR-2-CON-PW-ZA-2420, SDR-2-CON-PW-ZA-2520, SDR-2-CON-PW-ZA-3700, SDR-2-CON-PW-ZA-3000, SDR-2-CON-PW-ZA-3100, SDR-2-CON-PW-ZA-3200, SDR-2-CON-PW-ZA-2620, SDR-2-CON-SL-ZA-1100, SDR-2-CON-SL-ZA-2890, SDR-2-CON-SL-ZA-1400, SDR-2-CON-SL-ZA-2970, SDR-2-CON-SL-ZA-3010, SDR-2-CON-SL-ZA-3050, SDR-2-CON-SL-ZA-3090, SDR-2-CON-SL-ZA-3130, SDR-2-CON-SL-ZA-3170, SDR-2-CON-SL-ZA-3210, SDR-2-CON-SL-ZA-2930, SDR-2-CON-SL-ZA-2780, SDR-2-CON-SL-ZA-2800, SDR-2-CON-SL-ZA-2820, SDR-2-CON-SL-ZA-2840, SDR-2-CON-SL-ZA-2860, SDR-2-CON-MV-ZA-1100, SDR-2-CON-MV-ZA-1180, SDR-2-CON-MV-ZA-1220, SDR-2-CON-MV-ZA-1260, SDR-2-CON-TE-ZA-1840, SDR-2-CON-TE-ZA-3280, SDR-2-CON-TE-ZA-3270, SDR-2-CON-TE-ZA-3370, SDR-2-CON-TE-ZA-3360, SDR-2-CON-TE-ZA-3460, SDR-2-CON-TE-ZA-3450, SDR-2-CON-TE-ZA-3550, SDR-2-CON-TE-ZA-3540, SDR-2-CON-TE-ZA-3640, SDR-2-CON-TE-ZA-3630, SDR-2-CON-TE-ZA-3730, SDR-2-CON-TE-ZA-3720, SDR-2-CON-TE-ZA-3820, SDR-2-CON-TE-ZA-3810, SDR-2-CON-TE-ZA-3910, SDR-2-CON-TE-ZA-3900, SDR-2-CON-TE-ZA-4000, SDR-2-CON-TE-ZA-3990, SDR-2-CON-TE-ZA-4090, SDR-2-CON-TE-ZA-4080, SDR-2-CON-TE-ZA-4180, SDR-2-CON-TE-ZA-4170, SDR-2-CON-SL-ZA-3250, SDR-2-CON-SL-ZA-3290, SDR-2-CON-SL-ZA-3330, SDR-2-CON-SL-ZA-3370, SDR-2-CON-SL-ZA-3410, SDR-2-CON-SL-ZA-3460, SDR-2-CON-SL-ZA-3490, SDR-2-CON-SL-ZA-3520, SDR-2-CON-SL-ZA-3550, SDR-2-CON-SL-ZA-3580, SDR-2-CON-MV-ZA-1300, SDR-2-CON-MV-ZA-1340, SDR-2-CON-TE-ZA-4270, SDR-2-CON-TE-ZA-4260, SDR-2-CON-TE-ZA-4360, SDR-2-CON-TE-ZA-4350, SDR-2-CON-TE-ZA-4450, SDR-2-CON-TE-ZA-4440, SDR-2-CON-TE-ZA-4540, SDR-2-CON-TE-ZA-4530, SDR-2-CON-IR-ZA-2150 FF, SDR-2-CON-IR-ZA-2190 SS → SDR-2-CLO-DE-1000 SS, SDR-2-CLO-RO-1000 SS, SDR-2-CON-RW-ZA-1150, SDR-2-CON-RW-ZA-1290, SDR-2-CON-ST-ZA-3310, SDR-2-CON-TS-ZA-1080, SDR-2-CON-TS-ZA-1260, SDR-2-CON-TS-ZA-1710, SDR-2-CON-TS-ZA-1800, SDR-2-CON-TE-ZA-1020, SDR-2-CON-TE-ZA-1060, SDR-2-CON-LS-ZA-1060 SS, SDR-2-CON-CC-ZA-1620, SDR-2-CON-CC-ZA-1660, SDR-2-CON-CC-ZG-1660, SDR-2-TC-CCTV-1080, SDR-2-CON-LS-ZG-1060 SS, SDR-2-CON-PW-ZA-1080, SDR-2-PRO-MAS-C-1100, SDR-2-PRO-MAL-M-1060, SDR-2-PRO-MAL-M-1070, SDR-2-CON-SL-ZA-2690 SS, SDR-2-PRO-MAS-E-1000, SDR-2-PRO-MAL-E-1030, SDR-2-PRO-MAL-E-1130, SDR-2-PRO-MAL-E-1120, SDR-2-CON-CC-ZA-1110 SS, SDR-2-PRO-MAL-E-1170, SDR-2-CON-CC-ZA-1270, SDR-2-CON-CC-ZA-1410 SS, SDR-2-CON-IR-ZA-1030 FF, SDR-2-PRO-MAS-E-1020, SDR-2-CON-SL-ZA-1110, SDR-2-PRO-MAS-C-1080, SDR-2-CON-MV-ZA-1150, SDR-2-PRO-MAL-M-1030, SDR-2-PRO-MAL-M-1040, SDR-2-PRO-MAL-E-1010, SDR-2-PRO-MAL-E-1020, SDR-2-PRO-MAL-E-1180, SDR-2-PRO-MAL-E-1060, SDR-2-CON-RW-ZA-1050, SDR-2-CON-RW-ZA-1200, SDR-2-CON-RW-ZA-1340, SDR-2-CON-RW-ZA-1430, SDR-2-CON-RW-ZA-1480, SDR-2-CON-RW-ZA-1570, SDR-2-CON-RW-ZA-1620, SDR-2-CON-RW-ZA-1710, SDR-2-CON-RW-ZA-1760, SDR-2-CON-RW-ZA-1850, SDR-2-CON-RW-ZA-1900, SDR-2-CON-RW-ZA-1990, SDR-2-CON-RW-ZA-2040, SDR-2-CON-RW-ZA-2130, SDR-2-CON-RW-ZA-2180, SDR-2-CON-RW-ZA-2270, SDR-2-CON-RW-ZA-2320, SDR-2-CON-RW-ZA-2410, SDR-2-CON-RW-ZA-2460, SDR-2-CON-RW-ZA-2550, SDR-2-CON-RW-ZA-2600, SDR-2-CON-RW-ZA-2690, SDR-2-CON-RW-ZA-2740, SDR-2-CON-RW-ZA-2830, SDR-2-CON-RW-ZG-1060, SDR-2-CON-RW-ZG-1210, SDR-2-CON-RW-ZG-1310, SDR-2-CON-RW-ZG-1360, SDR-2-CON-RW-ZG-1460, SDR-2-CON-RW-ZG-1510, SDR-2-CON-RW-ZG-1610, SDR-2-CON-RW-ZG-1660, SDR-2-CON-RW-ZG-1760, SDR-2-CON-RW-ZG-1810, SDR-2-CON-RW-ZG-1910, SDR-2-CON-RW-ZG-1960, SDR-2-CON-RW-ZG-2060, SDR-2-CON-RW-ZG-2110, SDR-2-CON-RW-ZG-2210, SDR-2-CON-ST-ZA-3760, SDR-2-CON-ST-ZA-4130, SDR-2-CON-ST-ZA-4280, SDR-2-CON-ST-ZA-4430, SDR-2-CON-ST-ZA-4580, SDR-2-CON-ST-ZA-4730, SDR-2-CON-ST-ZA-4880, SDR-2-CON-ST-ZA-5030, SDR-2-CON-ST-ZA-5070, SDR-2-CON-ST-ZA-5180, SDR-2-CON-ST-ZA-5220, SDR-2-CON-ST-ZA-5930, SDR-2-CON-ST-ZA-5970, SDR-2-CON-ST-ZA-5480, SDR-2-CON-ST-ZA-5630, SDR-2-CON-ST-ZA-6000, SDR-2-CON-ST-ZA-6080, SDR-2-CON-SE-ZA-1440, SDR-2-CON-SE-ZA-1540, SDR-2-CON-SE-ZA-1740, SDR-2-CON-SE-ZA-1840, SDR-2-CON-SE-ZA-1940, SDR-2-CON-SE-ZA-2040, SDR-2-CON-SE-ZA-2140, SDR-2-CON-SE-ZA-2240, SDR-2-CON-SE-ZA-2340, SDR-2-CON-SE-ZA-2440, SDR-2-CON-TS-ZA-1910, SDR-2-CON-TS-ZA-1070, SDR-2-CON-TS-ZA-2260, SDR-2-CON-TS-ZA-2040, SDR-2-CON-TS-ZA-2090, SDR-2-CON-TS-ZA-2690, SDR-2-CON-TS-ZA-2790, SDR-2-CON-TS-ZA-2890, SDR-2-CON-TS-ZA-1960, SDR-2-CON-TS-ZA-1970, SDR-2-CON-TS-ZA-2140, SDR-2-CON-TS-ZA-1980, SDR-2-CON-TS-ZA-2190, SDR-2-CON-TS-ZA-3190, SDR-2-CON-TS-ZA-2360, SDR-2-CON-TS-ZA-2490, SDR-2-CON-TS-ZA-2990, SDR-2-CON-TS-ZA-3090, SDR-2-CON-TS-ZA-2590, SDR-2-CON-PW-ZA-2320, SDR-2-CON-PW-ZA-2700, SDR-2-CON-PW-ZA-2800, SDR-2-CON-PW-ZA-3250, SDR-2-CON-PW-ZA-3350, SDR-2-CON-PW-ZA-3450, SDR-2-CON-PW-ZA-3550, SDR-2-CON-PW-ZA-3650, SDR-2-CON-PW-ZA-2900, SDR-2-CON-PW-ZA-2420, SDR-2-CON-PW-ZA-2520, SDR-2-CON-PW-ZA-3700, SDR-2-CON-PW-ZA-3000, SDR-2-CON-PW-ZA-3100, SDR-2-CON-PW-ZA-3200, SDR-2-CON-PW-ZA-2620, SDR-2-CON-SL-ZA-1100, SDR-2-CON-SL-ZA-2890, SDR-2-CON-SL-ZA-1400, SDR-2-CON-SL-ZA-2970, SDR-2-CON-SL-ZA-3010, SDR-2-CON-SL-ZA-3050, SDR-2-CON-SL-ZA-3090, SDR-2-CON-SL-ZA-3130, SDR-2-CON-SL-ZA-3170, SDR-2-CON-SL-ZA-3210, SDR-2-CON-SL-ZA-2930, SDR-2-CON-SL-ZA-2780, SDR-2-CON-SL-ZA-2800, SDR-2-CON-SL-ZA-2820, SDR-2-CON-SL-ZA-2840, SDR-2-CON-SL-ZA-2860, SDR-2-CON-MV-ZA-1100, SDR-2-CON-MV-ZA-1180, SDR-2-CON-MV-ZA-1220, SDR-2-CON-MV-ZA-1260, SDR-2-CON-TE-ZA-1840, SDR-2-CON-TE-ZA-3280, SDR-2-CON-TE-ZA-3270, SDR-2-CON-TE-ZA-3370, SDR-2-CON-TE-ZA-3360, SDR-2-CON-TE-ZA-3460, SDR-2-CON-TE-ZA-3450, SDR-2-CON-TE-ZA-3550, SDR-2-CON-TE-ZA-3540, SDR-2-CON-TE-ZA-3640, SDR-2-CON-TE-ZA-3630, SDR-2-CON-TE-ZA-3730, SDR-2-CON-TE-ZA-3720, SDR-2-CON-TE-ZA-3820, SDR-2-CON-TE-ZA-3810, SDR-2-CON-TE-ZA-3910, SDR-2-CON-TE-ZA-3900, SDR-2-CON-TE-ZA-4000, SDR-2-CON-TE-ZA-3990, SDR-2-CON-TE-ZA-4090, SDR-2-CON-TE-ZA-4080, SDR-2-CON-TE-ZA-4180, SDR-2-CON-TE-ZA-4170, SDR-2-CON-SL-ZA-3250, SDR-2-CON-SL-ZA-3290, SDR-2-CON-SL-ZA-3330, SDR-2-CON-SL-ZA-3370, SDR-2-CON-SL-ZA-3410, SDR-2-CON-SL-ZA-3460, SDR-2-CON-SL-ZA-3490, SDR-2-CON-SL-ZA-3520, SDR-2-CON-SL-ZA-3550, SDR-2-CON-SL-ZA-3580, SDR-2-CON-MV-ZA-1300, SDR-2-CON-MV-ZA-1340, SDR-2-CON-TE-ZA-4270, SDR-2-CON-TE-ZA-4260, SDR-2-CON-TE-ZA-4360, SDR-2-CON-TE-ZA-4350, SDR-2-CON-TE-ZA-4450, SDR-2-CON-TE-ZA-4440, SDR-2-CON-TE-ZA-4540, SDR-2-CON-TE-ZA-4530, SDR-2-CON-IR-ZA-2150 FF, SDR-2-CON-IR-ZA-2190 SS, SDR-2-ENG-APP-M-1010, SDR-2-PREL-1100, SDR-2-CON-SE-ZA-1610, SDR-2-CON-IR-ZA-2980 FF, SDR-2-TC-LIW-1070 FF | resources Civil Engineer [295.91 h]; Civil Forman [295.91 h]; Electrical Forman [295.91 h]; Mechanical Forman [295.91 h]; Helper [295.91 h]; Labor [295.91 h]; Mechanical Engineer [295.91 h] → Suppliers [295.91 h]; Civil Forman [295.91 h]; Electrical Forman [295.91 h]; Mechanical Forman [295.91 h]; Helper [295.91 h]; Labor [295.91 h]; Mechanical Engineer [295.91 h] |
